# JDH4-02-007 - Land Development of Jeddah Oasis -Recovcery Program R0

How a schedule from Primavera P6 changed from version to version. A marks actual dates.

## Version 1 (data date 2026-02-02, saved 2026-02-16, file 01. JHD4-02-007 Recovery BL Rev 0.0.xer)

| ID | WBS | Task | Duration | Start | Finish | Predecessors | Complete | Total float |
| --- | --- | --- | --- | --- | --- | --- | --- | --- |
|  | 1 | **Key Milestones** |  | 2025-11-24 | 2027-05-23 |  |  |  |
|  | 1 | **General Milestone** |  | 2025-11-24 | 2027-05-23 |  |  |  |
| JDH4-02-007-MS-1000 |  | Project Commencement Date | 0d | 2025-11-24 A | 2025-11-24 A |  | 100% |  |
| JDH4-02-007-MS-1010 |  | Project Completion Date | 0d | 2027-05-23 | 2027-05-23 | JDH4-02-007-DM-1000 FF, JDH4-02-007-DM-1010 FF, JDH4-02-007-DM-1020 FF, JDH4-02-007-DM-1030 FF, JDH4-02-007-DM-1040 FF, JDH4-02-007-MS-1110 FF, JDH4-02-007-MS-1100 FF, JDH4-02-007-MS-1090 FF, JDH4-02-007-MS-1080 FF, JDH4-02-007-MS-1070 FF, JDH4-02-007-MS-1060 FF, JDH4-02-007-MS-1050 FF, JDH4-02-007-AB-1120 FF |  | 0d |
|  | 2 | **Contractual Milestone** |  | 2025-12-23 | 2027-05-23 |  |  |  |
|  | 1 | **Engineering & Mobilization** |  | 2025-12-23 | 2026-03-23 |  |  |  |
| JDH4-02-007-MS-1020 |  | Completion of Mobilization | 0d | 2025-12-23 A | 2025-12-23 A | JDH4-02-007-MB-1040 FF, JDH4-02-007-PS-1070 FF, JDH4-02-007-PS-1080 FF, JDH4-02-007-PS-1090 FF, JDH4-02-007-PS-1100 FF, JDH4-02-007-PS-1110 FF | 100% |  |
| JDH4-02-007-MS-1030 |  | Submission of the Work Plan (Baseline Programme) | 0d | 2025-12-23 A | 2025-12-23 A | JDH4-02-007-PS-1000 FF | 100% |  |
| JDH4-02-007-MS-1040 |  | Submission and Approval of Drawings and Materials | 0d | 2026-03-23 | 2026-03-23 | JDH4-02-007-MA-1270 FF, JDH4-02-007-MA-1650 FF, JDH4-02-007-MA-1290 FF, JDH4-02-007-MA-1230 FF, JDH4-02-007-MA-1260 FF, JDH4-02-007-MA-1210 FF, JDH4-02-007-MA-1450 FF, JDH4-02-007-MA-1470 FF, JDH4-02-007-MA-1190 FF, JDH4-02-007-MA-1430 FF, JDH4-02-007-MA-1670 FF, JDH4-02-007-MA-1130 FF, JDH4-02-007-MA-1330 FF, JDH4-02-007-MA-1170 FF, JDH4-02-007-MA-1150 FF, JDH4-02-007-MA-1390 FF, JDH4-02-007-MA-1410 FF, JDH4-02-007-MA-1350 FF, JDH4-02-007-MA-1520 FF, JDH4-02-007-MA-1370 FF, JDH4-02-007-MA-1550 FF, JDH4-02-007-MA-1590 FF, JDH4-02-007-MA-1610 FF, JDH4-02-007-MA-1630 FF, JDH4-02-007-MA-1010 FF, JDH4-02-007-MA-1030 FF, JDH4-02-007-MA-1050 FF, JDH4-02-007-MA-1070 FF, JDH4-02-007-MA-1090 FF, JDH4-02-007-MA-1110 FF, JDH4-02-007-MA-1510 FF, JDH4-02-007-MA-1500 FF, JDH4-02-007-MA-1570 FF, JDH4-02-007-MA-1700 FF, JDH4-02-007-MA-1710 FF, JDH4-02-007-MA-1730 FF, JDH4-02-007-MA-1820 FF, JDH4-02-007-MA-1760 FF, JDH4-02-007-MA-1830 FF, JDH4-02-007-MA-1770 FF, JDH4-02-007-MA-1790 FF, JDH4-02-007-MA-1930 FF, JDH4-02-007-MA-1870 FF, JDH4-02-007-MA-1890 FF, JDH4-02-007-MA-1910 FF, JDH4-02-007-MA-2070 FF, JDH4-02-007-MA-2050 FF, JDH4-02-007-MA-2010 FF, JDH4-02-007-MA-2030 FF, JDH4-02-007-MA-1990 FF, JDH4-02-007-MA-1950 FF, JDH4-02-007-MA-1970 FF, JDH4-02-007-MA-2110 FF, JDH4-02-007-MA-2150 FF, JDH4-02-007-MA-2090 FF, JDH4-02-007-MA-2130 FF, JDH4-02-007-MA-2190 FF, JDH4-02-007-MA-2170 FF, JDH4-02-007-EN-1420 FF, JDH4-02-007-EN-1430 FF, JDH4-02-007-EN-1620 FF, JDH4-02-007-EN-1630 FF, JDH4-02-007-EN-1640 FF, JDH4-02-007-EN-1650 FF, JDH4-02-007-EN-1660 FF, JDH4-02-007-EN-1670 FF, JDH4-02-007-EN-1320 FF, JDH4-02-007-EN-1330 FF, JDH4-02-007-EN-1340 FF, JDH4-02-007-EN-1350 FF, JDH4-02-007-EN-1360 FF, JDH4-02-007-EN-1370 FF, JDH4-02-007-EN-1380 FF, JDH4-02-007-EN-1390 FF, JDH4-02-007-EN-1400 FF, JDH4-02-007-EN-1680 FF, JDH4-02-007-EN-1690 FF, JDH4-02-007-EN-1710 FF, JDH4-02-007-EN-1700 FF, JDH4-02-007-MA-1790R FF |  | 16d |
|  | 2 | **Construction** |  | 2026-03-23 | 2027-05-23 |  |  |  |
| JDH4-02-007-MS-1050 |  | Completion of Earthworks & Site Grading For Plots | 0d | 2026-03-23 | 2026-03-23 | JDH4-02-007-CN-1760 FF, JDH4-02-007-CN-1850 FF |  | 33d |
| JDH4-02-007-MS-1060 |  | Completion of Sewerage networks | 0d | 2026-07-22 | 2026-07-22 | JDH4-02-007-AB-1090 FF, JDH4-02-007-CN-5240 FF, JDH4-02-007-AB-1020 FF |  | 4d |
| JDH4-02-007-MS-1070 |  | Completion of Road Works | 0d | 2026-09-22 | 2026-09-22 | JDH4-02-007-CN-2090 FF, JDH4-02-007-CN-2060 FF, JDH4-02-007-CN-2050 FF, JDH4-02-007-CN-2070 FF |  | 28d |
| JDH4-02-007-MS-1080 |  | Completion of Potable Water Network | 0d | 2026-11-23 | 2026-11-23 | JDH4-02-007-AB-1070 FF, JDH4-02-007-CN-3940 FF, JDH4-02-007-CN-3680 FF |  | 13d |
| JDH4-02-007-MS-1090 |  | Completion of TSE Network | 0d | 2026-11-23 | 2026-11-23 | JDH4-02-007-AB-1080 FF, JDH4-02-007-CN-4530 FF |  | 10d |
| JDH4-02-007-MS-1100 |  | Completion of Electrical Networks | 0d | 2027-01-04 | 2027-01-04 | JDH4-02-007-MS-1130 FF, JDH4-02-007-MS-1120 FF, JDH4-02-007-AB-1110 FF, JDH4-02-007-CN-2840 FF, JDH4-02-007-CN-2620 FF |  | 24d |
| JDH4-02-007-MS-1110 |  | Completion of Entire Project | 0d | 2027-05-23 | 2027-05-23 | JDH4-02-007-DM-1040 FF, JDH4-02-007-DM-1030 FF, JDH4-02-007-DM-1020 FF, JDH4-02-007-DM-1010 FF, JDH4-02-007-DM-1000 FF |  | 0d |
|  | 3 | **Monitoring & Controlling Milestone** |  | 2026-10-14 | 2026-11-12 |  |  |  |
| JDH4-02-007-MS-1120 |  | Approval of Electrical Network Shop DWGs By SEC | 0d | 2026-10-14 | 2026-10-14 | JDH4-02-007-EN-1420 FF, JDH4-02-007-EN-1430 FF, JDH4-02-007-EN-1630 FF, JDH4-02-007-EN-1640 FF, JDH4-02-007-EN-1650 FF, JDH4-02-007-EN-1660 FF, JDH4-02-007-EN-1670 FF, JDH4-02-007-EN-1410 FF |  | 23d |
| JDH4-02-007-MS-1130 |  | Approval of Electrical Network Materials By SEC | 0d | 2026-11-12 | 2026-11-12 | JDH4-02-007-MA-1130 FF, JDH4-02-007-MA-1330 FF, JDH4-02-007-MA-1170 FF, JDH4-02-007-MA-1150 FF, JDH4-02-007-MA-1390 FF, JDH4-02-007-MA-1410 FF, JDH4-02-007-MA-1350 FF, JDH4-02-007-MA-1370 FF, JDH4-02-007-MA-1310 FF |  | 42d |
|  | 2 | **Mobilization** |  | 2025-11-24 | 2026-09-29 |  |  |  |
|  | 2 | **Site Facilities & Offices** |  | 2025-11-24 | 2026-01-10 |  |  |  |
| JDH4-02-007-MB-1000 |  | Site Layout Plan | 5d | 2025-11-24 A | 2025-11-29 A | JDH4-02-007-MS-1000 SS | 100% |  |
| JDH4-02-007-MB-1010 |  | Clear & Grub for Offices & Access Road | 4d | 2025-11-30 A | 2025-12-03 A | JDH4-02-007-MB-1000 | 100% |  |
| JDH4-02-007-MB-1020 |  | Construct Site Access Roads | 3d | 2025-11-30 A | 2025-12-02 A | JDH4-02-007-MB-1000 | 100% |  |
| JDH4-02-007-MB-1040 |  | Construct Site Offices & Storage | 17d | 2025-12-03 A | 2025-12-22 A | JDH4-02-007-MB-1020 | 100% |  |
| JDH4-02-007-MB-1030 |  | Construct Temporary Fence | 8d | 2025-12-04 A | 2025-12-13 A | JDH4-02-007-MB-1010 | 100% |  |
| JDH4-02-007-MB-1060 |  | Install Site Facilities | 4d | 2025-12-14 A | 2025-12-17 A | JDH4-02-007-MB-1030 | 100% |  |
| JDH4-02-007-MB-1070 |  | Electrical Works & Connections | 7d | 2025-12-14 A | 2025-12-21 A | JDH4-02-007-MB-1030 | 100% |  |
| JDH4-02-007-MB-1090 |  | Mobilization of Equipment | 7d | 2025-12-15 A | 2025-12-22 A | JDH4-02-007-MB-1050 | 100% |  |
| JDH4-02-007-MB-1100 |  | Mobilization of Manpower | 5d | 2025-12-18 A | 2025-12-23 A | JDH4-02-007-MB-1060 | 100% |  |
| JDH4-02-007-MB-1050 |  | Install Project Signs | 15d | 2025-12-24 A | 2026-01-10 A | JDH4-02-007-MB-1020 | 100% |  |
| JDH4-02-007-MB-1080 |  | Construct Parking Sheds | 3d | 2025-12-31 A | 2026-01-03 A | JDH4-02-007-MB-1030 | 100% |  |
|  | 4 | **Topographic Survey** |  | 2025-11-24 | 2025-12-03 |  |  |  |
| JDH4-02-007-TP-1000 |  | Site Survey Works | 9d | 2025-11-24 A | 2025-12-03 A | JDH4-02-007-MS-1000 SS | 100% |  |
|  | 1 | **Permit's and Authority Approvals** |  | 2025-11-24 | 2026-09-29 |  |  |  |
| JDH4-02-007-PA-1000 |  | Excavation & Backfilling Permit Permit | 20d | 2025-11-24 A | 2025-12-16 A | JDH4-02-007-MS-1000 SS | 100% |  |
| JDH4-02-007-PA-1010 |  | Saudi Electricity Company Permit | 20d | 2026-09-06 | 2026-09-29 | JDH4-02-007-MS-1000 SS+238d |  | 0d |
|  | 3 | **Preliminary Submittals** |  | 2025-12-03 | 2026-01-12 |  |  |  |
|  | 1 | **Preparation and Submittal by Contractor's** |  | 2025-12-03 | 2026-01-03 |  |  |  |
| JDH4-02-007-PS-1000 |  | Preparation and Submittal of Detailed Work Order Programme (baseline schedule) | 16d | 2025-12-03 A | 2025-12-21 A | JDH4-02-007-MB-1020 | 100% |  |
| JDH4-02-007-PS-1020 |  | Preparation and Submittal of Quality Management Plan | 8d | 2025-12-03 A | 2025-12-11 A | JDH4-02-007-MB-1020 | 100% |  |
| JDH4-02-007-PS-1030 |  | Preparation and Submittal of Safety Management Plan | 8d | 2025-12-03 A | 2025-12-11 A | JDH4-02-007-MB-1020 | 100% |  |
| JDH4-02-007-PS-1040 |  | Preparation and Submittal of Organization Chart | 7d | 2025-12-03 A | 2025-12-10 A | JDH4-02-007-MB-1020 | 100% |  |
| JDH4-02-007-PS-1050 |  | Preparation and Submittal of Communication Plan | 7d | 2025-12-03 A | 2025-12-10 A | JDH4-02-007-MB-1020 | 100% |  |
| JDH4-02-007-PS-1010 |  | Preparation and Submittal of Project Execution Plan | 3d | 2025-12-31 A | 2026-01-03 A | JDH4-02-007-MB-1020 | 100% |  |
|  | 2 | **Approval by the Employer's** |  | 2025-12-11 | 2026-01-12 |  |  |  |
| JDH4-02-007-PS-1100 |  | Approval of Organization Chart | 10d | 2025-12-11 A | 2025-12-22 A | JDH4-02-007-PS-1040 | 100% |  |
| JDH4-02-007-PS-1110 |  | Approval of Comminumcation Plan | 10d | 2025-12-11 A | 2025-12-22 A | JDH4-02-007-PS-1050 | 100% |  |
| JDH4-02-007-PS-1060 |  | Approval of Detailed Work Order Programme (baseline schedule) | 1d | 2025-12-21 A | 2025-12-21 A | JDH4-02-007-PS-1000 | 100% |  |
| JDH4-02-007-PS-1090 |  | Approval of Safety Management Plan | 3d | 2025-12-31 A | 2026-01-03 A | JDH4-02-007-PS-1030 | 100% |  |
| JDH4-02-007-PS-1080 |  | Approval of Quality Management Plan | 2d | 2026-01-11 A | 2026-01-12 A | JDH4-02-007-PS-1020 | 100% |  |
| JDH4-02-007-PS-1070 |  | Approval of Project Execution Plan | 1d | 2026-01-12 A | 2026-01-12 A | JDH4-02-007-PS-1010 | 100% |  |
|  | 3 | **Engineering** |  | 2025-11-30 | 2026-11-12 |  |  |  |
|  | 2 | **Shop Drawings** |  | 2025-12-04 | 2026-10-14 |  |  |  |
|  | 1 | **Shop Drawings Submittal** |  | 2025-12-04 | 2026-10-08 |  |  |  |
|  | 1 | **Shop Drawings Submittal for Road Works** |  | 2025-12-04 | 2026-01-03 |  |  |  |
| JDH4-02-007-EN-1040 |  | Shop DWG Submittal for Topographic Survey | 8d | 2025-12-04 A | 2025-12-13 A | JDH4-02-007-TP-1000 | 100% |  |
| JDH4-02-007-EN-1050 |  | Shop DWG Submittal for Road Layout Plan | 8d | 2025-12-14 A | 2025-12-22 A | JDH4-02-007-EN-1040 | 100% |  |
| JDH4-02-007-EN-1070 |  | Shop DWG Submittal for Road Setting Out | 8d | 2025-12-14 A | 2025-12-22 A | JDH4-02-007-EN-1040 | 100% |  |
| JDH4-02-007-EN-1080 |  | Shop DWG Submittal for Road Profiles | 8d | 2025-12-14 A | 2025-12-22 A | JDH4-02-007-EN-1040 | 100% |  |
| JDH4-02-007-EN-1090 |  | Shop DWG Submittal for Grading Layout Plan | 8d | 2025-12-14 A | 2025-12-22 A | JDH4-02-007-EN-1040 | 100% |  |
| JDH4-02-007-EN-1100 |  | Shop DWG Submittal for Curb Setting Out Points | 8d | 2025-12-14 A | 2025-12-22 A | JDH4-02-007-EN-1040 | 100% |  |
| JDH4-02-007-EN-1120 |  | Shop DWG Submittal for Standards Details | 8d | 2025-12-14 A | 2025-12-22 A | JDH4-02-007-EN-1040 | 100% |  |
| JDH4-02-007-EN-1060 |  | Shop DWG Submittal for Typical Cross Section | 2d | 2025-12-24 A | 2025-12-26 A | JDH4-02-007-EN-1040 | 100% |  |
| JDH4-02-007-EN-1110 |  | Shop DWG Submittal for Signing & Marking Layout Plan | 3d | 2025-12-31 A | 2026-01-03 A | JDH4-02-007-EN-1040 | 100% |  |
|  | 6 | **Shop Drawings Submittal for Stormwater Network** |  | 2026-01-04 | 2026-01-05 |  |  |  |
| JDH4-02-007-EN-1250 |  | Shop DWG Submittal for Stormwater Plans | 2d | 2026-01-04 A | 2026-01-05 A | JDH4-02-007-TP-1000 | 100% |  |
| JDH4-02-007-EN-1260 |  | Shop DWG Submittal for Stormwater Profiles | 2d | 2026-01-04 A | 2026-01-05 A | JDH4-02-007-TP-1000 | 100% |  |
| JDH4-02-007-EN-1270 |  | Shop DWG Submittal for Stormwater Standard Details | 2d | 2026-01-04 A | 2026-01-05 A | JDH4-02-007-TP-1000 | 100% |  |

| ID | WBS | Task | Duration | Start | Finish | Predecessors | Complete | Total float |
| --- | --- | --- | --- | --- | --- | --- | --- | --- |
|  | 5 | **Shop Drawings Submittal for Sanitary Sewerage** |  | 2026-01-03 | 2026-01-04 |  |  |  |
| JDH4-02-007-EN-1220 |  | Shop DWG Submittal for Sanitary Sewerage Plans | 2d | 2026-01-03 A | 2026-01-04 A | JDH4-02-007-EN-1250 | 100% |  |
| JDH4-02-007-EN-1230 |  | Shop DWG Submittal for Sanitary Sewerage Profiles | 2d | 2026-01-03 A | 2026-01-04 A | JDH4-02-007-EN-1250 | 100% |  |
| JDH4-02-007-EN-1240 |  | Shop DWG Submittal for Sanitary Sewerage Standard Details | 2d | 2026-01-03 A | 2026-01-04 A | JDH4-02-007-EN-1250 | 100% |  |
|  | 4 | **Shop Drawings Submittal for TSE Network** |  | 2026-01-01 | 2026-01-04 |  |  |  |
| JDH4-02-007-EN-1190 |  | Shop DWG Submittal for TSE Network Plans | 2d | 2026-01-01 A | 2026-01-03 A | JDH4-02-007-EN-1220 | 100% |  |
| JDH4-02-007-EN-1200 |  | Shop DWG Submittal for TSE Profiles | 2d | 2026-01-03 A | 2026-01-04 A | JDH4-02-007-EN-1220 | 100% |  |
| JDH4-02-007-EN-1210 |  | Shop DWG Submittal for TSE Standard Details | 1d | 2026-01-04 A | 2026-01-04 A | JDH4-02-007-EN-1220 | 100% |  |
|  | 3 | **Shop Drawings Submittal for Potable Water Network** |  | 2026-01-01 | 2026-01-05 |  |  |  |
| JDH4-02-007-EN-1160 |  | Shop DWG Submittal for Potable Water Plans | 4d | 2026-01-01 A | 2026-01-05 A | JDH4-02-007-EN-1220 | 100% |  |
| JDH4-02-007-EN-1170 |  | Shop DWG Submittal for Potable Water Profiles | 4d | 2026-01-01 A | 2026-01-05 A | JDH4-02-007-EN-1220 | 100% |  |
| JDH4-02-007-EN-1180 |  | Shop DWG Submittal for Potable Water Standard Details | 4d | 2026-01-01 A | 2026-01-05 A | JDH4-02-007-EN-1220 | 100% |  |
|  | 2 | **Shop Drawings Submittal for Electrical Network** |  | 2026-01-03 | 2026-10-08 |  |  |  |
| JDH4-02-007-EN-1140 |  | Shop DWG Submittal for Street Lighting | 3d | 2026-01-03 A | 2026-01-05 A | JDH4-02-007-EN-1180 | 100% |  |
| JDH4-02-007-EN-1150 |  | Shop DWG Submittal for Low Voltage Network | 3d | 2026-01-03 A | 2026-01-05 A | JDH4-02-007-EN-1210 | 100% |  |
| JDH4-02-007-EN-1130 |  | Shop DWG Submittal for Medium Voltage Network | 8d | 2026-09-30 | 2026-10-08 | JDH4-02-007-EN-1160, JDH4-02-007-EN-1220, JDH4-02-007-EN-1230, JDH4-02-007-EN-1240, JDH4-02-007-EN-1210, JDH4-02-007-EN-1200, JDH4-02-007-EN-1190, JDH4-02-007-EN-1180, JDH4-02-007-EN-1170, JDH4-02-007-PA-1010 |  | 0d |
|  | 8 | **Shop Drawings Submittal for Telecommunications** |  | 2026-01-01 | 2026-01-03 |  |  |  |
| JDH4-02-007-EN-1600 |  | Shop DWG Submittal for Telecommunications Works | 2d | 2026-01-01 A | 2026-01-03 A | JDH4-02-007-EN-1150 | 100% |  |
|  | 10 | **Shop Drawings Submittal for Earthing System** |  | 2026-01-01 | 2026-01-03 |  |  |  |
| JDH4-02-007-EN-1610 |  | Shop DWG Submittal for Earthing System | 2d | 2026-01-01 A | 2026-01-03 A | JDH4-02-007-EN-1600 | 100% |  |
|  | 11 | **Shop Drawings Submittal for Road Lighting** |  | 2026-01-01 | 2026-01-07 |  |  |  |
| JDH4-02-007-EN-1000 |  | Shop DWG Submittal for Street Lighting General Arrangement | 6d | 2026-01-01 A | 2026-01-07 A | JDH4-02-007-EN-1140 | 100% |  |
| JDH4-02-007-EN-1010 |  | Shop DWG Submittal for Street Lighting Network Layout | 6d | 2026-01-01 A | 2026-01-07 A | JDH4-02-007-EN-1000 | 100% |  |
| JDH4-02-007-EN-1020 |  | Shop DWG Submittal for Street Lighting Details | 6d | 2026-01-01 A | 2026-01-07 A | JDH4-02-007-EN-1010 | 100% |  |
| JDH4-02-007-EN-1030 |  | Shop DWG Submittal for Street Lighting Single Line Diagram | 6d | 2026-01-01 A | 2026-01-07 A | JDH4-02-007-EN-1020 | 100% |  |
|  | 7 | **Shop Drawings Submittal for Sewage Lift Station** |  | 2026-01-13 | 2026-01-14 |  |  |  |
| JDH4-02-007-EN-1280 |  | Shop DWG Submittal for the Sewage Lift Station - Civil Works | 2d | 2026-01-13 A | 2026-01-14 A | JDH4-02-007-EN-1030 | 100% |  |
| JDH4-02-007-EN-1290 |  | Shop DWG Submittal for the Sewage Lift Station - Mechanical Works | 2d | 2026-01-13 A | 2026-01-14 A | JDH4-02-007-EN-1280 | 100% |  |
| JDH4-02-007-EN-1300 |  | Shop DWG Submittal for the Sewage Lift Station - Electrical Works | 2d | 2026-01-13 A | 2026-01-14 A | JDH4-02-007-EN-1290 | 100% |  |
| JDH4-02-007-EN-1310 |  | Shop DWG Submittal for the Sewage Lift Station - Finishing Works | 2d | 2026-01-13 A | 2026-01-14 A | JDH4-02-007-EN-1300 | 100% |  |
|  | 2 | **Shop Drawings Approval** |  | 2025-12-26 | 2026-10-14 |  |  |  |
|  | 1 | **Shop Drawings Approval for Road Works** |  | 2025-12-26 | 2026-01-05 |  |  |  |
| JDH4-02-007-EN-1320 |  | Shop DWG Approval for Topographic Survey | 3d | 2025-12-26 A | 2025-12-29 A | JDH4-02-007-EN-1040 | 100% |  |
| JDH4-02-007-EN-1330 |  | Shop DWG Approval for Road Layout Plan | 3d | 2025-12-26 A | 2025-12-29 A | JDH4-02-007-EN-1050 | 100% |  |
| JDH4-02-007-EN-1340 |  | Shop DWG Approval for Typical Cross Section | 3d | 2025-12-26 A | 2025-12-29 A | JDH4-02-007-EN-1060 | 100% |  |
| JDH4-02-007-EN-1350 |  | Shop DWG Approval for Road Setting Out | 3d | 2025-12-26 A | 2025-12-29 A | JDH4-02-007-EN-1070 | 100% |  |
| JDH4-02-007-EN-1360 |  | Shop DWG Approval for Road Profiles | 3d | 2025-12-26 A | 2025-12-29 A | JDH4-02-007-EN-1080 | 100% |  |
| JDH4-02-007-EN-1370 |  | Shop DWG Approval for Grading Layout Plan | 3d | 2025-12-26 A | 2025-12-29 A | JDH4-02-007-EN-1090 | 100% |  |
| JDH4-02-007-EN-1380 |  | Shop DWG Approval for Curb Setting Out Points | 3d | 2025-12-26 A | 2025-12-29 A | JDH4-02-007-EN-1100 | 100% |  |
| JDH4-02-007-EN-1400 |  | Shop DWG Approval for Standards Details | 3d | 2025-12-26 A | 2025-12-29 A | JDH4-02-007-EN-1120, JDH4-02-007-EN-1250, JDH4-02-007-EN-1260, JDH4-02-007-EN-1270 | 100% |  |
| JDH4-02-007-EN-1390 |  | Shop DWG Approval for Signing & Marking Layout Plan | 3d | 2026-01-03 A | 2026-01-05 A | JDH4-02-007-EN-1110 | 100% |  |
|  | 6 | **Shop Drawings Approval for Storm Network** |  | 2026-01-08 | 2026-01-12 |  |  |  |
| JDH4-02-007-EN-1530 |  | Shop DWG Approval for Stormwater Plans | 4d | 2026-01-08 A | 2026-01-12 A | JDH4-02-007-EN-1250 | 100% |  |
| JDH4-02-007-EN-1540 |  | Shop DWG Approval for Stormwater Profiles | 4d | 2026-01-08 A | 2026-01-12 A | JDH4-02-007-EN-1260 | 100% |  |
| JDH4-02-007-EN-1550 |  | Shop DWG Approval for Stormwater Standard Details | 4d | 2026-01-08 A | 2026-01-12 A | JDH4-02-007-EN-1270 | 100% |  |
|  | 5 | **Shop Drawings Approval for Sanitary Sewerage** |  | 2026-01-08 | 2026-01-12 |  |  |  |
| JDH4-02-007-EN-1500 |  | Shop DWG Approval for Sanitary Sewerage Plans | 4d | 2026-01-08 A | 2026-01-12 A | JDH4-02-007-EN-1220 | 100% |  |
| JDH4-02-007-EN-1510 |  | Shop DWG Approval for Sanitary Sewerage Profiles | 4d | 2026-01-08 A | 2026-01-12 A | JDH4-02-007-EN-1230 | 100% |  |
| JDH4-02-007-EN-1520 |  | Shop DWG Approval for Sanitary Sewerage Standard Details | 4d | 2026-01-08 A | 2026-01-12 A | JDH4-02-007-EN-1240 | 100% |  |
|  | 4 | **Shop Drawings Approval for TSE Network** |  | 2026-01-08 | 2026-01-12 |  |  |  |
| JDH4-02-007-EN-1470 |  | Shop DWG Approval for TSE Network Plans | 4d | 2026-01-08 A | 2026-01-12 A | JDH4-02-007-EN-1190 | 100% |  |
| JDH4-02-007-EN-1480 |  | Shop DWG Approval for TSE Profiles | 4d | 2026-01-08 A | 2026-01-12 A | JDH4-02-007-EN-1200 | 100% |  |
| JDH4-02-007-EN-1490 |  | Shop DWG Approval for TSE Standard Details | 4d | 2026-01-08 A | 2026-01-12 A | JDH4-02-007-EN-1210, JDH4-02-007-EN-1550 | 100% |  |
|  | 3 | **Shop Drawings Approval for Potable Water Network** |  | 2026-01-08 | 2026-01-12 |  |  |  |
| JDH4-02-007-EN-1440 |  | Shop DWG Approval for Potable Water Plans | 4d | 2026-01-08 A | 2026-01-12 A | JDH4-02-007-EN-1160 | 100% |  |
| JDH4-02-007-EN-1450 |  | Shop DWG Approval for Potable Water Profiles | 4d | 2026-01-08 A | 2026-01-12 A | JDH4-02-007-EN-1170 | 100% |  |
| JDH4-02-007-EN-1460 |  | Shop DWG Approval for Potable Water Standard Details | 4d | 2026-01-08 A | 2026-01-12 A | JDH4-02-007-EN-1180 | 100% |  |
|  | 2 | **Shop Drawings Approval for Electrical Network** |  | 2026-01-08 | 2026-10-14 |  |  |  |
| JDH4-02-007-EN-1420 |  | Shop DWG Approval for Street Lighting by By SEC | 3d | 2026-01-08 A | 2026-01-11 A | JDH4-02-007-EN-1140 | 100% |  |
| JDH4-02-007-EN-1430 |  | Shop DWG Approval for Low Voltage Network By SEC | 3d | 2026-01-08 A | 2026-01-11 A | JDH4-02-007-EN-1150 | 100% |  |
| JDH4-02-007-EN-1410 |  | Shop DWG Approval for Medium Voltage Network By SEC | 5d | 2026-10-10 | 2026-10-14 | JDH4-02-007-EN-1460, JDH4-02-007-EN-1450, JDH4-02-007-EN-1440, JDH4-02-007-EN-1490, JDH4-02-007-EN-1480, JDH4-02-007-EN-1470, JDH4-02-007-EN-1130, JDH4-02-007-MS-1040 |  | 0d |
|  | 8 | **Shop Drawings Approval for Telecommunications** |  | 2026-01-03 | 2026-01-04 |  |  |  |
| JDH4-02-007-EN-1620 |  | Shop DWG Approval for Telecommunications Works | 2d | 2026-01-03 A | 2026-01-04 A | JDH4-02-007-EN-1600 | 100% |  |
|  | 10 | **Shop Drawings Approval for Earthing System** |  | 2026-01-10 | 2026-01-11 |  |  |  |
| JDH4-02-007-EN-1630 |  | Shop DWG Approval for Earthing System By SEC | 2d | 2026-01-10 A | 2026-01-11 A | JDH4-02-007-EN-1610 | 100% |  |
|  | 11 | **Shop Drawings Approval for Road Lighting** |  | 2026-01-10 | 2026-01-14 |  |  |  |
| JDH4-02-007-EN-1640 |  | Shop DWG Approval for Street Lighting General Arrangement By SEC | 5d | 2026-01-10 A | 2026-01-14 A | JDH4-02-007-EN-1000 | 100% |  |
| JDH4-02-007-EN-1650 |  | Shop DWG Approval for Street Lighting Network Layout By SEC | 5d | 2026-01-10 A | 2026-01-14 A | JDH4-02-007-EN-1010 | 100% |  |
| JDH4-02-007-EN-1660 |  | Shop DWG Approval for Street Lighting Details By SEC | 5d | 2026-01-10 A | 2026-01-14 A | JDH4-02-007-EN-1020 | 100% |  |
| JDH4-02-007-EN-1670 |  | Shop DWG Approval for Street Lighting Single Line Diagram By SEC | 5d | 2026-01-10 A | 2026-01-14 A | JDH4-02-007-EN-1030 | 100% |  |

| ID | WBS | Task | Duration | Start | Finish | Predecessors | Complete |
| --- | --- | --- | --- | --- | --- | --- | --- |
|  | 7 | **Shop Drawings Approval for Sewage Lift Station** |  | 2026-01-08 | 2026-01-11 |  |  |
| JDH4-02-007-EN-1680 |  | Shop DWG Approval for the Sewage Lift Station - Civil Works | 3d | 2026-01-08 A | 2026-01-11 A | JDH4-02-007-EN-1280 | 100% |
| JDH4-02-007-EN-1690 |  | Shop DWG Approval for the Sewage Lift Station - Mechanical Works | 3d | 2026-01-08 A | 2026-01-11 A | JDH4-02-007-EN-1290 | 100% |
| JDH4-02-007-EN-1700 |  | Shop DWG Approval for the Sewage Lift Station - Electrical Works | 3d | 2026-01-08 A | 2026-01-11 A | JDH4-02-007-EN-1300 | 100% |
| JDH4-02-007-EN-1710 |  | Shop DWG Approval for the Sewage Lift Station - Finishing Works | 3d | 2026-01-08 A | 2026-01-11 A | JDH4-02-007-EN-1310 | 100% |
|  | 3 | **Method Statements** |  | 2025-11-30 | 2026-01-05 |  |  |
|  | 1 | **Method Statements Submittal** |  | 2025-11-30 | 2026-01-03 |  |  |
| JDH4-02-007-EN-1560 |  | Preparation & Submission of Method Statement for Earthworks | 8d | 2025-11-30 A | 2025-12-08 A | JDH4-02-007-MB-1000 | 100% |
| JDH4-02-007-EN-1570 |  | Preparation & Submission of Method Statement for Concrete Works | 8d | 2025-11-30 A | 2025-12-08 A | JDH4-02-007-EN-1560 SS | 100% |
| JDH4-02-007-EN-1580 |  | Preparation & Submission of Method Statement for Waterproofing Works | 15d | 2025-11-30 A | 2025-12-16 A | JDH4-02-007-EN-1570 SS | 100% |
| JDH4-02-007-EN-1590 |  | Preparation & Submission of Method Statement for Asphalt | 3d | 2025-12-31 A | 2026-01-03 A | JDH4-02-007-EN-1580 SS | 100% |
|  | 2 | **Method Statements Approval** |  | 2025-12-09 | 2026-01-05 |  |  |
| JDH4-02-007-EN-1720 |  | Approval of Method Statement for Earthworks | 7d | 2025-12-09 A | 2025-12-16 A | JDH4-02-007-EN-1560 | 100% |
| JDH4-02-007-EN-1730 |  | Approval of Method Statement for Concrete Works | 8d | 2025-12-09 A | 2025-12-17 A | JDH4-02-007-EN-1570 | 100% |
| JDH4-02-007-EN-1740 |  | Approval of Method Statement for Waterproofing Works | 5d | 2025-12-17 A | 2025-12-22 A | JDH4-02-007-EN-1580 | 100% |
| JDH4-02-007-EN-1750 |  | Approval of Method Statement for Asphalt | 3d | 2026-01-03 A | 2026-01-05 A | JDH4-02-007-EN-1590 | 100% |
|  | 3 | **Method Statements Staging Time** |  | 2025-12-17 | 2026-01-05 |  |  |
| JDH4-02-007-EN-1760 |  | Staging Time of Method Statement for Earthworks | 6d | 2025-12-17 A | 2025-12-23 A | JDH4-02-007-EN-1720 | 100% |
| JDH4-02-007-EN-1770 |  | Staging Time of Method Statement for Concrete Works | 4d | 2025-12-18 A | 2025-12-22 A | JDH4-02-007-EN-1730 | 100% |
| JDH4-02-007-EN-1780 |  | Staging Time of Method Statement for Waterproofing Works | 5d | 2025-12-31 A | 2026-01-05 A | JDH4-02-007-EN-1740 | 100% |
| JDH4-02-007-EN-1790 |  | Staging Time of Method Statement for Asphalt | 2d | 2026-01-04 A | 2026-01-05 A | JDH4-02-007-EN-1750 | 100% |
|  | 4 | **Pre-qualification and Material** |  | 2025-12-04 | 2026-11-12 |  |  |
|  | 2 | **Pre-qualification** |  | 2025-12-04 | 2026-10-26 |  |  |
|  | 1 | **Road Works - Civil** |  | 2025-12-04 | 2026-01-05 |  |  |
|  | 1 | **Steel Reinforcement** |  | 2025-12-04 | 2025-12-16 |  |  |
| JDH4-02-007-SB-1580 |  | Pre-Qualification Submittal for Steel Reinforcement | 5d | 2025-12-04 A | 2025-12-09 A | JDH4-02-007-TP-1000 | 100% |
| JDH4-02-007-SB-1590 |  | Pre-Qualification Approval for Steel Reinforcement | 6d | 2025-12-10 A | 2025-12-16 A | JDH4-02-007-SB-1580 | 100% |
|  | 2 | **Ready Mixed Concrete** |  | 2025-12-10 | 2025-12-22 |  |  |
| JDH4-02-007-SB-1600 |  | Pre-Qualification Submittal for Ready Mixed Concrete | 5d | 2025-12-10 A | 2025-12-15 A | JDH4-02-007-SB-1580 | 100% |
| JDH4-02-007-SB-1610 |  | Pre-Qualification Approval for Ready Mixed Concrete | 6d | 2025-12-16 A | 2025-12-22 A | JDH4-02-007-SB-1600 | 100% |
|  | 3 | **Water Proofing** |  | 2025-12-16 | 2025-12-22 |  |  |
| JDH4-02-007-SB-1620 |  | Pre-Qualification Submittal for Water Proofing | 5d | 2025-12-16 A | 2025-12-21 A | JDH4-02-007-SB-1600 | 100% |
| JDH4-02-007-SB-1630 |  | Pre-Qualification Approval for Water Proofing | 1d | 2025-12-22 A | 2025-12-22 A | JDH4-02-007-SB-1620 | 100% |
|  | 4 | **Aggregate Base Course** |  | 2025-12-16 | 2025-12-22 |  |  |
| JDH4-02-007-SB-1000 |  | Pre-Qualification Submittal for Aggregate Base Cource | 4d | 2025-12-16 A | 2025-12-20 A | JDH4-02-007-SB-1600 | 100% |
| JDH4-02-007-SB-1010 |  | Pre-Qualification Approval for Aggregate Base Cource | 2d | 2025-12-21 A | 2025-12-22 A | JDH4-02-007-SB-1000 | 100% |
|  | 5 | **Bituminous Base & Wearing Course** |  | 2025-12-24 | 2025-12-28 |  |  |
| JDH4-02-007-SB-1020 |  | Pre-Qualification Submittal for Bituminous Base & Wearing Cource | 4d | 2025-12-24 A | 2025-12-28 A | JDH4-02-007-SB-1620 | 100% |
| JDH4-02-007-SB-1030 |  | Pre-Qualification Approval for Bituminous & Wearing Cource | 2d | 2025-12-26 A | 2025-12-28 A | JDH4-02-007-SB-1020 | 100% |
|  | 7 | **Precast Concrete Kerb** |  | 2025-12-18 | 2025-12-22 |  |  |
| JDH4-02-007-SB-1040 |  | Pre-Qualification Submittal for Precast Concrete Kerb | 4d | 2025-12-18 A | 2025-12-22 A | JDH4-02-007-SB-1620 | 100% |
| JDH4-02-007-SB-1050 |  | Pre-Qualification Approval for Precast Concrete Kerb | 4d | 2025-12-18 A | 2025-12-22 A | JDH4-02-007-SB-1040 | 100% |
|  | 8 | **Interlocking Block Pavers** |  | 2025-12-22 | 2025-12-31 |  |  |
| JDH4-02-007-SB-1060 |  | Pre-Qualification Submittal for Interlocking Block Pavers | 9d | 2025-12-22 A | 2025-12-31 A | JDH4-02-007-SB-1620 | 100% |
| JDH4-02-007-SB-1070 |  | Pre-Qualification Approval for Interlocking Block Pavers | 1d | 2025-12-22 A | 2025-12-22 A | JDH4-02-007-SB-1060 | 100% |
|  | 9 | **Pavement Markings** |  | 2025-12-22 | 2026-01-05 |  |  |
| JDH4-02-007-SB-1080 |  | Pre-Qualification Submittal for Pavement Markings | 9d | 2025-12-22 A | 2025-12-31 A | JDH4-02-007-SB-1060 | 100% |
| JDH4-02-007-SB-1090 |  | Pre-Qualification Approval for Pavement Markings | 3d | 2026-01-03 A | 2026-01-05 A | JDH4-02-007-SB-1080, JDH4-02-007-SB-1010 | 100% |
|  | 10 | **Traffic Signs** |  | 2025-12-22 | 2026-01-05 |  |  |
| JDH4-02-007-SB-1100 |  | Pre-Qualification Submittal for Traffic Signs | 9d | 2025-12-22 A | 2025-12-31 A | JDH4-02-007-SB-1080 | 100% |
| JDH4-02-007-SB-1110 |  | Pre-Qualification Approval for Traffic Signs | 3d | 2026-01-03 A | 2026-01-05 A | JDH4-02-007-SB-1100 | 100% |
|  | 7 | **Storm Network** |  | 2025-12-04 | 2025-12-31 |  |  |
|  | 2 | **GRP Pipes** |  | 2025-12-04 | 2025-12-31 |  |  |
| JDH4-02-007-SB-1260 |  | Pre-Qualification Submittal for GRP Pipe | 24d | 2025-12-04 A | 2025-12-31 A | JDH4-02-007-MB-1010 | 100% |
| JDH4-02-007-SB-1270 |  | Pre-Qualification Approval for GRP Pipe | 6d | 2025-12-09 A | 2025-12-15 A | JDH4-02-007-SB-1260 | 100% |
|  | 1 | **Catch Basin** |  | 2025-12-04 | 2025-12-31 |  |  |
| JDH4-02-007-SB-1640 |  | Pre-Qualification Submittal for Catch Basin | 24d | 2025-12-04 A | 2025-12-31 A | JDH4-02-007-MB-1010 | 100% |
| JDH4-02-007-SB-1650 |  | Pre-Qualification Approval for Catch Basin | 6d | 2025-12-09 A | 2025-12-15 A | JDH4-02-007-SB-1640 | 100% |
|  | 6 | **Inlet Manholes** |  | 2025-12-09 | 2025-12-31 |  |  |
| JDH4-02-007-SB-1280 |  | Pre-Qualification Submittal for Inlet Manholes | 20d | 2025-12-09 A | 2025-12-31 A | JDH4-02-007-SB-1260 | 100% |
| JDH4-02-007-SB-1290 |  | Pre-Qualification Approval for Inlet Manholes | 6d | 2025-12-14 A | 2025-12-20 A | JDH4-02-007-SB-1280 | 100% |
|  | 6 | **Sanitary Sewerage** |  | 2025-12-04 | 2025-12-31 |  |  |
|  | 1 | **GRP Pipes** |  | 2025-12-04 | 2025-12-31 |  |  |
| JDH4-02-007-SB-1220 |  | Pre-Qualification Submittal for GRP Pipe | 24d | 2025-12-04 A | 2025-12-31 A | JDH4-02-007-TP-1000 | 100% |
| JDH4-02-007-SB-1230 |  | Pre-Qualification Approval for GRP Pipe | 6d | 2025-12-08 A | 2025-12-14 A | JDH4-02-007-SB-1220 | 100% |
|  | 2 | **Manholes** |  | 2025-12-08 | 2025-12-31 |  |  |
| JDH4-02-007-SB-1240 |  | Pre-Qualification Submittal for Manholes | 21d | 2025-12-08 A | 2025-12-31 A | JDH4-02-007-SB-1220 | 100% |
| JDH4-02-007-SB-1250 |  | Pre-Qualification Approval for Manholes | 6d | 2025-12-11 A | 2025-12-17 A | JDH4-02-007-SB-1240 | 100% |
|  | 5 | **TSE Network** |  | 2025-12-04 | 2025-12-31 |  |  |
|  | 1 | **HDPE Pipe (PN 16)** |  | 2025-12-04 | 2025-12-31 |  |  |

| ID | WBS | Task | Duration | Start | Finish | Predecessors | Complete | Total float |
| --- | --- | --- | --- | --- | --- | --- | --- | --- |
| JDH4-02-007-SB-1200 |  | Pre-Qualification Submittal for HDPE Pipe (PN 16) | 24d | 2025-12-04 A | 2025-12-31 A | JDH4-02-007-TP-1000 | 100% |  |
| JDH4-02-007-SB-1210 |  | Pre-Qualification Approval for HDPE Pipe (PN 16) | 6d | 2025-12-08 A | 2025-12-14 A | JDH4-02-007-SB-1200 | 100% |  |
|  | 3 | **Valves / Chambers** |  | 2025-12-08 | 2025-12-31 |  |  |  |
| JDH4-02-007-SB-1440 |  | Pre-Qualification Submittal for Valves / Chambers | 21d | 2025-12-08 A | 2025-12-31 A | JDH4-02-007-SB-1200 | 100% |  |
| JDH4-02-007-SB-1450 |  | Pre-Qualification Approval for Valves / Chambers | 6d | 2025-12-11 A | 2025-12-17 A | JDH4-02-007-SB-1440 | 100% |  |
|  | 2 | **Risers** |  | 2025-12-11 | 2025-12-31 |  |  |  |
| JDH4-02-007-SB-1460 |  | Pre-Qualification Submittal for Risers | 18d | 2025-12-11 A | 2025-12-31 A | JDH4-02-007-SB-1440 | 100% |  |
| JDH4-02-007-SB-1470 |  | Pre-Qualification Approval for Risers | 6d | 2025-12-16 A | 2025-12-22 A | JDH4-02-007-SB-1460 | 100% |  |
|  | 4 | **Potable Water Network** |  | 2025-12-04 | 2025-12-31 |  |  |  |
|  | 1 | **HDPE Pipe (PN 16)** |  | 2025-12-04 | 2025-12-31 |  |  |  |
| JDH4-02-007-SB-1180 |  | Pre-Qualification Submittal for HDPE Pipe (PN 16) | 24d | 2025-12-04 A | 2025-12-31 A | JDH4-02-007-TP-1000 SS | 100% |  |
| JDH4-02-007-SB-1190 |  | Pre-Qualification Approval for HDPE Pipe (PN 16) | 6d | 2025-12-09 A | 2025-12-15 A | JDH4-02-007-SB-1180 | 100% |  |
|  | 3 | **Valves / Chambers** |  | 2025-12-09 | 2025-12-31 |  |  |  |
| JDH4-02-007-SB-1420 |  | Pre-Qualification Submittal for Valves / Chambers | 20d | 2025-12-09 A | 2025-12-31 A | JDH4-02-007-SB-1180 | 100% |  |
| JDH4-02-007-SB-1430 |  | Pre-Qualification Approval for Valves / Chambers | 6d | 2025-12-14 A | 2025-12-20 A | JDH4-02-007-SB-1420 | 100% |  |
|  | 2 | **Fire Hydrant** |  | 2025-12-11 | 2025-12-31 |  |  |  |
| JDH4-02-007-SB-1660 |  | Pre-Qualification Submittal for Fire Hydrant | 18d | 2025-12-11 A | 2025-12-31 A | JDH4-02-007-SB-1440 | 100% |  |
| JDH4-02-007-SB-1670 |  | Pre-Qualification Approval for Fire Hydrant | 5d | 2025-12-15 A | 2025-12-20 A | JDH4-02-007-SB-1660 | 100% |  |
|  | 3 | **Electrical Network** |  | 2025-12-22 | 2026-10-26 |  |  |  |
|  | 2 | **Pipe for the Duct** |  | 2025-12-22 | 2025-12-31 |  |  |  |
| JDH4-02-007-SB-1120 |  | Pre-Qualification Submittal for Pipe for the Duct | 9d | 2025-12-22 A | 2025-12-31 A | JDH4-02-007-SB-1180 | 100% |  |
| JDH4-02-007-SB-1130 |  | Pre-Qualification Approval for Pipe for the Duct | 1d | 2025-12-29 A | 2025-12-29 A | JDH4-02-007-SB-1120 | 100% |  |
|  | 5 | **Low Voltage Cables** |  | 2025-12-22 | 2026-01-05 |  |  |  |
| JDH4-02-007-SB-1320 |  | Pre-Qualification Submittal for Low Voltage Cables | 9d | 2025-12-22 A | 2025-12-31 A | JDH4-02-007-SB-1120 | 100% |  |
| JDH4-02-007-SB-1330 |  | Pre-Qualification Approval for Low Voltage Cables | 3d | 2026-01-03 A | 2026-01-05 A | JDH4-02-007-SB-1320 | 100% |  |
|  | 4 | **Earthing System** |  | 2025-12-22 | 2026-01-05 |  |  |  |
| JDH4-02-007-SB-1160 |  | Pre-Qualification Submittal for Earthing System | 9d | 2025-12-22 A | 2025-12-31 A | JDH4-02-007-SB-1320 | 100% |  |
| JDH4-02-007-SB-1170 |  | Pre-Qualification Approval for Earthing System | 3d | 2026-01-03 A | 2026-01-05 A | JDH4-02-007-SB-1160 | 100% |  |
|  | 11 | **Medium Voltage Cable** |  | 2026-10-15 | 2026-10-26 |  |  |  |
| JDH4-02-007-SB-1300 |  | Pre-Qualification Submittal for Medium Voltage Cable | 7d | 2026-10-15 | 2026-10-22 | JDH4-02-007-SB-1160, JDH4-02-007-EN-1410 |  | 0d |
| JDH4-02-007-SB-1310 |  | Pre-Qualification Approval for Medium Voltage Cable | 3d | 2026-10-24 | 2026-10-26 | JDH4-02-007-SB-1300 |  | 0d |
|  | 3 | **Low Voltage Distribution Panel** |  | 2025-12-22 | 2026-01-19 |  |  |  |
| JDH4-02-007-SB-1140 |  | Pre-Qualification Submittal for Low Voltage Distribution Panel | 9d | 2025-12-22 A | 2025-12-31 A | JDH4-02-007-SB-1160 | 100% |  |
| JDH4-02-007-SB-1150 |  | Pre-Qualification Approval for Low Voltage Distribution Panel | 15d | 2026-01-03 A | 2026-01-19 A | JDH4-02-007-SB-1140 | 100% |  |
|  | 9 | **Unit Sub Station** |  | 2025-12-22 | 2026-01-05 |  |  |  |
| JDH4-02-007-SB-1380 |  | Pre-Qualification Submittal for Unit Sub Station | 9d | 2025-12-22 A | 2025-12-31 A | JDH4-02-007-SB-1340 SS, JDH4-02-007-SB-1670 | 100% |  |
| JDH4-02-007-SB-1390 |  | Pre-Qualification Approval for Unit Sub Station | 3d | 2026-01-03 A | 2026-01-05 A | JDH4-02-007-SB-1380 | 100% |  |
|  | 10 | **Ring Main Unit (RMU)** |  | 2025-12-22 | 2026-01-05 |  |  |  |
| JDH4-02-007-SB-1400 |  | Pre-Qualification Submittal for Ring main Unit (RMU) | 9d | 2025-12-22 A | 2025-12-31 A | JDH4-02-007-SB-1380 | 100% |  |
| JDH4-02-007-SB-1410 |  | Pre-Qualification Approval for Ring main Unit (RMU) | 3d | 2026-01-03 A | 2026-01-05 A | JDH4-02-007-SB-1400 | 100% |  |
|  | 6 | **Lighting poles** |  | 2025-12-22 | 2026-01-05 |  |  |  |
| JDH4-02-007-SB-1340 |  | Pre-Qualification Submittal for Lighting poles | 9d | 2025-12-22 A | 2025-12-31 A | JDH4-02-007-SB-1320 | 100% |  |
| JDH4-02-007-SB-1350 |  | Pre-Qualification Approval for Lighting poles | 3d | 2026-01-03 A | 2026-01-05 A | JDH4-02-007-SB-1340 | 100% |  |
|  | 1 | **Lighting panels/Feeder Pillers** |  | 2025-12-22 | 2026-01-05 |  |  |  |
| JDH4-02-007-SB-1520 |  | Pre-Qualification Submittal for Lighting panels/Feeder Pillers | 9d | 2025-12-22 A | 2025-12-31 A | JDH4-02-007-SB-1340 | 100% |  |
| JDH4-02-007-SB-1530 |  | Pre-Qualification Approval for Lighting panels/Feeder Pillers | 3d | 2026-01-03 A | 2026-01-05 A | JDH4-02-007-SB-1520 | 100% |  |
|  | 7 | **Street Lighting Luminaire** |  | 2025-12-22 | 2026-01-05 |  |  |  |
| JDH4-02-007-SB-1360 |  | Pre-Qualification Submittal for Street Lighting Luminaire | 9d | 2025-12-22 A | 2025-12-31 A | JDH4-02-007-SB-1340 | 100% |  |
| JDH4-02-007-SB-1370 |  | Pre-Qualification Approval for Street Lighting Luminaire | 3d | 2026-01-03 A | 2026-01-05 A | JDH4-02-007-SB-1360 | 100% |  |
|  | 12 | **Telecommunications** |  | 2025-12-20 | 2025-12-31 |  |  |  |
|  | 2 | **Pipe for the Duct** |  | 2025-12-20 | 2025-12-31 |  |  |  |
| JDH4-02-007-SB-1550 |  | Pre-Qualification Approval for Pipe for the Duct | 3d | 2025-12-20 A | 2025-12-22 A | JDH4-02-007-SB-1540 | 100% |  |
| JDH4-02-007-SB-1540 |  | Pre-Qualification Submittal for Pipe for the Duct | 9d | 2025-12-22 A | 2025-12-31 A | JDH4-02-007-SB-1360 | 100% |  |
|  | 10 | **Sewage Lift Station** |  | 2025-12-22 | 2026-01-05 |  |  |  |
|  | 2 | **Thermal & Moisture Protection** |  | 2025-12-22 | 2026-01-05 |  |  |  |
| JDH4-02-007-SB-1490 |  | Pre-Qualification Submittal for Thermal & Moisture Protection | 9d | 2025-12-22 A | 2025-12-31 A | JDH4-02-007-SB-1320 | 100% |  |
| JDH4-02-007-SB-1510 |  | Pre-Qualification Approval for Thermal & Moisture Protection | 3d | 2026-01-03 A | 2026-01-05 A | JDH4-02-007-SB-1490 | 100% |  |
|  | 1 | **Metals** |  | 2025-12-22 | 2026-01-05 |  |  |  |
| JDH4-02-007-SB-1480 |  | Pre-Qualification Submittal for Metal | 9d | 2025-12-22 A | 2025-12-31 A | JDH4-02-007-SB-1490 | 100% |  |
| JDH4-02-007-SB-1500 |  | Pre-Qualification Approval for Metal | 3d | 2026-01-03 A | 2026-01-05 A | JDH4-02-007-SB-1480 | 100% |  |
|  | 3 | **Pumps** |  | 2025-12-22 | 2026-01-05 |  |  |  |
| JDH4-02-007-SB-1560 |  | Pre-Qualification Submittal for pumps | 9d | 2025-12-22 A | 2025-12-31 A | JDH4-02-007-SB-1490 | 100% |  |
| JDH4-02-007-SB-1570 |  | Pre-Qualification Approval for pumps | 3d | 2026-01-03 A | 2026-01-05 A | JDH4-02-007-SB-1560 | 100% |  |
|  | 4 | **Pipes,Fittings & Valves** |  | 2025-12-22 | 2026-01-05 |  |  |  |
| JDH4-02-007-SB-1680 |  | Pre-Qualification Submittal for Pipes,Fittings & Valves | 9d | 2025-12-22 A | 2025-12-31 A | JDH4-02-007-SB-1490 | 100% |  |
| JDH4-02-007-SB-1700 |  | Pre-Qualification Approval for Pipes,Fittings & Valves | 3d | 2026-01-03 A | 2026-01-05 A | JDH4-02-007-SB-1680 | 100% |  |
|  | 5 | **Odours scrubbing system** |  | 2025-12-22 | 2026-01-05 |  |  |  |
| JDH4-02-007-SB-1690 |  | Pre-Qualification Submittal for Odours Scrubbing System | 9d | 2025-12-22 A | 2025-12-31 A | JDH4-02-007-SB-1490 | 100% |  |
| JDH4-02-007-SB-1710 |  | Pre-Qualification Approval for Odours Scrubbing System | 3d | 2026-01-03 A | 2026-01-05 A | JDH4-02-007-SB-1690 | 100% |  |
|  | 6 | **Crane** |  | 2025-12-22 | 2026-01-05 |  |  |  |

| ID | WBS | Task | Duration | Start | Finish | Predecessors | Complete |
| --- | --- | --- | --- | --- | --- | --- | --- |
| JDH4-02-007-SB-1720 |  | Pre-Qualification Submittal for Crane | 9d | 2025-12-22 A | 2025-12-31 A | JDH4-02-007-SB-1490 | 100% |
| JDH4-02-007-SB-1730 |  | Pre-Qualification Approval for Crane | 3d | 2026-01-03 A | 2026-01-05 A | JDH4-02-007-SB-1720 | 100% |
|  | 7 | **Air Vents** |  | 2025-12-22 | 2026-01-05 |  |  |
| JDH4-02-007-SB-1800 |  | Pre-Qualification Submittal for Air Vents | 9d | 2025-12-22 A | 2025-12-31 A | JDH4-02-007-SB-1490 | 100% |
| JDH4-02-007-SB-1820 |  | Pre-Qualification Approval for Air Vents | 3d | 2026-01-03 A | 2026-01-05 A | JDH4-02-007-SB-1800 | 100% |
|  | 8 | **Screening Container** |  | 2025-12-22 | 2026-01-05 |  |  |
| JDH4-02-007-SB-1740 |  | Pre-Qualification Submittal for Screening Container | 9d | 2025-12-22 A | 2025-12-31 A | JDH4-02-007-SB-1490 | 100% |
| JDH4-02-007-SB-1760 |  | Pre-Qualification Approval for Screening Container | 3d | 2026-01-03 A | 2026-01-05 A | JDH4-02-007-SB-1740 | 100% |
|  | 9 | **Baffle Plates** |  | 2025-12-22 | 2026-01-05 |  |  |
| JDH4-02-007-SB-1810 |  | Pre-Qualification Submittal for Baffle plates | 9d | 2025-12-22 A | 2025-12-31 A | JDH4-02-007-SB-1490 | 100% |
| JDH4-02-007-SB-1830 |  | Pre-Qualification Approval for Baffle plates | 3d | 2026-01-03 A | 2026-01-05 A | JDH4-02-007-SB-1810 | 100% |
|  | 10 | **Anti-Water Hammer Equipment** |  | 2025-12-22 | 2026-01-05 |  |  |
| JDH4-02-007-SB-1840 |  | Pre-Qualification Submittal for Anti-Water Hammer Equipment | 9d | 2025-12-22 A | 2025-12-31 A | JDH4-02-007-SB-1490 | 100% |
| JDH4-02-007-SB-1850 |  | Pre-Qualification Approval for Anti-Water Hammer Equipment | 3d | 2026-01-03 A | 2026-01-05 A | JDH4-02-007-SB-1840 | 100% |
|  | 11 | **Air Conditioning and Ventilation** |  | 2025-12-22 | 2026-01-05 |  |  |
| JDH4-02-007-SB-1750 |  | Pre-Qualification Submittal for Air Conditioning and Ventilation | 9d | 2025-12-22 A | 2025-12-31 A | JDH4-02-007-SB-1490 | 100% |
| JDH4-02-007-SB-1770 |  | Pre-Qualification Approval for Air Conditioning and Ventilation | 3d | 2026-01-03 A | 2026-01-05 A | JDH4-02-007-SB-1750 | 100% |
|  | 12 | **Fuel System** |  | 2025-12-22 | 2026-01-05 |  |  |
| JDH4-02-007-SB-1780 |  | Pre-Qualification Submittal for Fuel System | 9d | 2025-12-22 A | 2025-12-31 A | JDH4-02-007-SB-1490 | 100% |
| JDH4-02-007-SB-1790 |  | Pre-Qualification Approval for Fuel System | 3d | 2026-01-03 A | 2026-01-05 A | JDH4-02-007-SB-1780 | 100% |
|  | 13 | **Fire Fighting System** |  | 2025-12-22 | 2026-01-05 |  |  |
| JDH4-02-007-SB-1920 |  | Pre-Qualification Submittal for Fire Fighting System | 9d | 2025-12-22 A | 2025-12-31 A | JDH4-02-007-SB-1490 | 100% |
| JDH4-02-007-SB-1930 |  | Pre-Qualification Approval for Fire Fighting System | 3d | 2026-01-03 A | 2026-01-05 A | JDH4-02-007-SB-1920 | 100% |
|  | 14 | **Main Distribution Board /MCC panels** |  | 2025-12-22 | 2026-01-05 |  |  |
| JDH4-02-007-SB-1860 |  | Pre-Qualification Submittal for Main Distribution Board/MCC Panels | 9d | 2025-12-22 A | 2025-12-31 A | JDH4-02-007-SB-1490 | 100% |
| JDH4-02-007-SB-1870 |  | Pre-Qualification Approval for Main Distribution Board/MCC Panels | 3d | 2026-01-03 A | 2026-01-05 A | JDH4-02-007-SB-1860 | 100% |
|  | 15 | **Final Panel boards** |  | 2025-12-22 | 2026-01-05 |  |  |
| JDH4-02-007-SB-1880 |  | Pre-Qualification Submittal for Final Panel Boards | 9d | 2025-12-22 A | 2025-12-31 A | JDH4-02-007-SB-1490 | 100% |
| JDH4-02-007-SB-1890 |  | Pre-Qualification Approval for Final Panel Boards | 3d | 2026-01-03 A | 2026-01-05 A | JDH4-02-007-SB-1880 | 100% |
|  | 16 | **Local Control Panel/ Monitoring Control Panel** |  | 2025-12-22 | 2026-01-05 |  |  |
| JDH4-02-007-SB-1900 |  | Pre-Qualification Submittal for Local Control Panel / Monitoring Control Panel | 9d | 2025-12-22 A | 2025-12-31 A | JDH4-02-007-SB-1490 | 100% |
| JDH4-02-007-SB-1910 |  | Pre-Qualification Approval for Local Control Panel / Monitoring Control Panel | 3d | 2026-01-03 A | 2026-01-05 A | JDH4-02-007-SB-1900 | 100% |
|  | 17 | **Engine Generators** |  | 2025-12-22 | 2026-01-05 |  |  |
| JDH4-02-007-SB-2060 |  | Pre-Qualification Submittal for Engine Generators | 9d | 2025-12-22 A | 2025-12-31 A | JDH4-02-007-SB-1490 | 100% |
| JDH4-02-007-SB-2070 |  | Pre-Qualification Approval for Engine Generators | 3d | 2026-01-03 A | 2026-01-05 A | JDH4-02-007-SB-2060 | 100% |
|  | 18 | **Standby Diesel Generator** |  | 2025-12-22 | 2026-01-05 |  |  |
| JDH4-02-007-SB-2040 |  | Pre-Qualification Submittal for Standby Diesel Generator | 9d | 2025-12-22 A | 2025-12-31 A | JDH4-02-007-SB-1490 | 100% |
| JDH4-02-007-SB-2050 |  | Pre-Qualification Approval for Standby Diesel Generator | 3d | 2026-01-03 A | 2026-01-05 A | JDH4-02-007-SB-2040 | 100% |
|  | 19 | **Power Factor Correction Capacitor Bank** |  | 2025-12-22 | 2026-01-05 |  |  |
| JDH4-02-007-SB-2000 |  | Pre-Qualification Submittal for Power Factor correction Capacitor Bank | 9d | 2025-12-22 A | 2025-12-31 A | JDH4-02-007-SB-2040 | 100% |
| JDH4-02-007-SB-2010 |  | Pre-Qualification Approval for Power Factor correction Capacitor Bank | 3d | 2026-01-03 A | 2026-01-05 A | JDH4-02-007-SB-2000 | 100% |
|  | 20 | **Low-Voltage Electrical Power Conductors and Cables** |  | 2025-12-22 | 2026-01-05 |  |  |
| JDH4-02-007-SB-2020 |  | Pre-Qualification Submittal for Low Voltage Electrical Power Conductors & Cables | 9d | 2025-12-22 A | 2025-12-31 A | JDH4-02-007-SB-2040 | 100% |
| JDH4-02-007-SB-2030 |  | Pre-Qualification Approval for Low Voltage Electrical Power Conductors & Cables | 3d | 2026-01-03 A | 2026-01-05 A | JDH4-02-007-SB-2020 | 100% |
|  | 21 | **Low Voltage Feeder Cable** |  | 2025-12-22 | 2026-01-05 |  |  |
| JDH4-02-007-SB-1980 |  | Pre-Qualification Submittal for Low Voltage Feeder Cable | 9d | 2025-12-22 A | 2025-12-31 A | JDH4-02-007-SB-2040 | 100% |
| JDH4-02-007-SB-1990 |  | Pre-Qualification Approval for Low Voltage Feeder Cable | 3d | 2026-01-03 A | 2026-01-05 A | JDH4-02-007-SB-1980 | 100% |
|  | 22 | **Wiring Devices** |  | 2025-12-22 | 2026-01-05 |  |  |
| JDH4-02-007-SB-1940 |  | Pre-Qualification Submittal for Wiring Devices | 9d | 2025-12-22 A | 2025-12-31 A | JDH4-02-007-SB-2040 | 100% |
| JDH4-02-007-SB-1950 |  | Pre-Qualification Approval for Wiring Devices | 3d | 2026-01-03 A | 2026-01-05 A | JDH4-02-007-SB-1940 | 100% |
|  | 23 | **Enclosed Switches and Circuit Breakers** |  | 2025-12-22 | 2026-01-05 |  |  |
| JDH4-02-007-SB-1960 |  | Pre-Qualification Submittal for Enclosed Switches and Circuit Breakers | 9d | 2025-12-22 A | 2025-12-31 A | JDH4-02-007-SB-2040 | 100% |
| JDH4-02-007-SB-1970 |  | Pre-Qualification Approval for Enclosed Switches and Circuit Breakers | 3d | 2026-01-03 A | 2026-01-05 A | JDH4-02-007-SB-1960 | 100% |
|  | 24 | **Raceways for Electrical Systems** |  | 2025-12-22 | 2026-01-05 |  |  |
| JDH4-02-007-SB-2100 |  | Pre-Qualification Submittal for Raceways for Electrical System | 9d | 2025-12-22 A | 2025-12-31 A | JDH4-02-007-SB-1960 SS | 100% |
| JDH4-02-007-SB-2110 |  | Pre-Qualification Approval for Raceways for Electrical System | 3d | 2026-01-03 A | 2026-01-05 A | JDH4-02-007-SB-2100 | 100% |
|  | 25 | **Electrical Manholes** |  | 2025-12-22 | 2026-01-05 |  |  |
| JDH4-02-007-SB-2140 |  | Pre-Qualification Submittal for Electrical Manholes | 9d | 2025-12-22 A | 2025-12-31 A | JDH4-02-007-SB-2040 | 100% |
| JDH4-02-007-SB-2150 |  | Pre-Qualification Approval for Electrical Manholes | 3d | 2026-01-03 A | 2026-01-05 A | JDH4-02-007-SB-2140 | 100% |
|  | 27 | **Security System (CCTV System)** |  | 2025-12-22 | 2026-01-05 |  |  |
| JDH4-02-007-SB-2080 |  | Pre-Qualification Submittal for Security System (CCTV System) | 9d | 2025-12-22 A | 2025-12-31 A | JDH4-02-007-SB-2040 | 100% |
| JDH4-02-007-SB-2090 |  | Pre-Qualification Approval for Security System (CCTV System) | 3d | 2026-01-03 A | 2026-01-05 A | JDH4-02-007-SB-2080 | 100% |
|  | 26 | **ICT (Data& telephone System)** |  | 2025-12-22 | 2026-01-05 |  |  |
| JDH4-02-007-SB-2120 |  | Pre-Qualification Submittal for ICT (Data & Telephone System) | 9d | 2025-12-22 A | 2025-12-31 A | JDH4-02-007-SB-2040 | 100% |
| JDH4-02-007-SB-2130 |  | Pre-Qualification Approval for ICT (Data & Telephone System) | 3d | 2026-01-03 A | 2026-01-05 A | JDH4-02-007-SB-2120 | 100% |
|  | 28 | **Programmable Logic Controllers** |  | 2025-12-22 | 2026-01-05 |  |  |
| JDH4-02-007-SB-2200 |  | Pre-Qualification Submittal for Programmable Logic Controllers | 9d | 2025-12-22 A | 2025-12-31 A | JDH4-02-007-SB-2040 | 100% |
| JDH4-02-007-SB-2210 |  | Pre-Qualification Approval for Programmable Logic Controllers | 3d | 2026-01-03 A | 2026-01-05 A | JDH4-02-007-SB-2200 | 100% |
|  | 29 | **Process Control Wiring** |  | 2025-12-22 | 2026-01-05 |  |  |
| JDH4-02-007-SB-2180 |  | Pre-Qualification Submittal for Process Control Wiring | 9d | 2025-12-22 A | 2025-12-31 A | JDH4-02-007-SB-2200 SS | 100% |

| ID | WBS | Task | Duration | Start | Finish | Predecessors | Complete |
| --- | --- | --- | --- | --- | --- | --- | --- |
| JDH4-02-007-SB-2190 |  | Pre-Qualification Approval for Process Control Wiring | 3d | 2026-01-03 A | 2026-01-05 A | JDH4-02-007-SB-2180 | 100% |
|  | 30 | **Instrumentation for Process Systems** |  | 2025-12-22 | 2026-01-05 |  |  |
| JDH4-02-007-SB-2160 |  | Pre-Qualification Submittal for Instrumentation Control Wiring | 9d | 2025-12-22 A | 2025-12-31 A | JDH4-02-007-SB-2180 SS | 100% |
| JDH4-02-007-SB-2170 |  | Pre-Qualification Approval for Instrumentation Control Wiring | 3d | 2026-01-03 A | 2026-01-05 A | JDH4-02-007-SB-2160 | 100% |
|  | 3 | **Material Submittal & Approval** |  | 2025-12-24 | 2026-11-12 |  |  |
|  | 1 | **Road Works - Civil** |  | 2025-12-24 | 2026-01-11 |  |  |
|  | 1 | **Steel Reinforcement** |  | 2025-12-24 | 2025-12-29 |  |  |
| JDH4-02-007-MA-1580 |  | Material Submittal for Steel Reinforcement | 5d | 2025-12-24 A | 2025-12-29 A | JDH4-02-007-SB-1590 | 100% |
| JDH4-02-007-MA-1590 |  | Material Approval for Steel Reinforcement | 5d | 2025-12-24 A | 2025-12-29 A | JDH4-02-007-MA-1580 | 100% |
|  | 2 | **Ready Mixed Concrete** |  | 2025-12-24 | 2025-12-29 |  |  |
| JDH4-02-007-MA-1600 |  | Material Submittal for Ready Mixed Concrete | 5d | 2025-12-24 A | 2025-12-29 A | JDH4-02-007-SB-1610 | 100% |
| JDH4-02-007-MA-1610 |  | Material Approval for Ready Mixed Concrete | 5d | 2025-12-24 A | 2025-12-29 A | JDH4-02-007-MA-1600 | 100% |
|  | 3 | **Water Proofing** |  | 2025-12-24 | 2025-12-29 |  |  |
| JDH4-02-007-MA-1620 |  | Material Submittal for Water Proofing | 5d | 2025-12-24 A | 2025-12-29 A | JDH4-02-007-SB-1630 | 100% |
| JDH4-02-007-MA-1630 |  | Material Approval for Water Proofing | 5d | 2025-12-24 A | 2025-12-29 A | JDH4-02-007-MA-1620 | 100% |
|  | 4 | **Aggregate Base Course** |  | 2025-12-24 | 2025-12-29 |  |  |
| JDH4-02-007-MA-1000 |  | Material Submittal for Aggregate Base Cource | 5d | 2025-12-24 A | 2025-12-29 A | JDH4-02-007-SB-1010 | 100% |
| JDH4-02-007-MA-1010 |  | Material Approval for Aggregate Base Cource | 5d | 2025-12-24 A | 2025-12-29 A | JDH4-02-007-MA-1000 | 100% |
|  | 5 | **Bituminous Base & Wearing Course** |  | 2025-12-24 | 2025-12-29 |  |  |
| JDH4-02-007-MA-1020 |  | Material Submittal for Bituminous Base & Wearing Cource | 5d | 2025-12-24 A | 2025-12-29 A | JDH4-02-007-SB-1030 | 100% |
| JDH4-02-007-MA-1030 |  | Material Approval for Bituminous & Wearing Cource | 5d | 2025-12-24 A | 2025-12-29 A | JDH4-02-007-MA-1020 | 100% |
|  | 7 | **Precast Concrete Kerb** |  | 2026-01-07 | 2026-01-11 |  |  |
| JDH4-02-007-MA-1040 |  | Material Submittal for Precast Concrete Kerb | 2d | 2026-01-07 A | 2026-01-08 A | JDH4-02-007-SB-1050 | 100% |
| JDH4-02-007-MA-1050 |  | Material Approval for Precast Concrete Kerb | 2d | 2026-01-10 A | 2026-01-11 A | JDH4-02-007-MA-1040 | 100% |
|  | 8 | **Interlocking Block Pavers** |  | 2026-01-07 | 2026-01-11 |  |  |
| JDH4-02-007-MA-1060 |  | Material Submittal for Interlocking Block Pavers | 2d | 2026-01-07 A | 2026-01-08 A | JDH4-02-007-SB-1070 | 100% |
| JDH4-02-007-MA-1070 |  | Material Approval for Interlocking Block Pavers | 2d | 2026-01-10 A | 2026-01-11 A | JDH4-02-007-MA-1060 | 100% |
|  | 9 | **Pavement Markings** |  | 2026-01-07 | 2026-01-11 |  |  |
| JDH4-02-007-MA-1080 |  | Material Submittal for Pavement Markings | 2d | 2026-01-07 A | 2026-01-08 A | JDH4-02-007-SB-1090 | 100% |
| JDH4-02-007-MA-1090 |  | Material Approval for Pavement Markings | 2d | 2026-01-10 A | 2026-01-11 A | JDH4-02-007-MA-1080 | 100% |
|  | 10 | **Traffic Signs** |  | 2026-01-07 | 2026-01-11 |  |  |
| JDH4-02-007-MA-1100 |  | Material Submittal for Traffic Signs | 2d | 2026-01-07 A | 2026-01-08 A | JDH4-02-007-SB-1100 | 100% |
| JDH4-02-007-MA-1110 |  | Material Approval for Traffic Signs | 2d | 2026-01-10 A | 2026-01-11 A | JDH4-02-007-MA-1100, JDH4-02-007-SB-1530 | 100% |
|  | 7 | **Storm Network** |  | 2025-12-24 | 2025-12-29 |  |  |
|  | 2 | **GRP Pipes** |  | 2025-12-24 | 2025-12-29 |  |  |
| JDH4-02-007-MA-1250 |  | Material Submittal for GRP Pipe | 5d | 2025-12-24 A | 2025-12-29 A | JDH4-02-007-SB-1270 | 100% |
| JDH4-02-007-MA-1270 |  | Material Approval for GRP Pipe | 5d | 2025-12-24 A | 2025-12-29 A | JDH4-02-007-MA-1250 | 100% |
|  | 1 | **Catch Basin** |  | 2025-12-24 | 2025-12-29 |  |  |
| JDH4-02-007-MA-1640 |  | Material Submittal for Catch Basin | 5d | 2025-12-24 A | 2025-12-29 A | JDH4-02-007-SB-1650 | 100% |
| JDH4-02-007-MA-1650 |  | Material Approval for Catch Basin | 5d | 2025-12-24 A | 2025-12-29 A | JDH4-02-007-MA-1640 | 100% |
|  | 6 | **Inlet Manholes** |  | 2025-12-24 | 2025-12-29 |  |  |
| JDH4-02-007-MA-1280 |  | Material Submittal for Inlet Manholes | 5d | 2025-12-24 A | 2025-12-29 A | JDH4-02-007-SB-1290 | 100% |
| JDH4-02-007-MA-1290 |  | Material Approval for Inlet Manholes | 5d | 2025-12-24 A | 2025-12-29 A | JDH4-02-007-MA-1280 | 100% |
|  | 6 | **Sanitary Sewerage** |  | 2025-12-24 | 2025-12-29 |  |  |
|  | 1 | **GRP Pipes** |  | 2025-12-24 | 2025-12-29 |  |  |
| JDH4-02-007-MA-1220 |  | Material Submittal for GRP Pipe | 5d | 2025-12-24 A | 2025-12-29 A | JDH4-02-007-SB-1230 | 100% |
| JDH4-02-007-MA-1230 |  | Material Approval for GRP Pipe | 5d | 2025-12-24 A | 2025-12-29 A | JDH4-02-007-MA-1220 | 100% |
|  | 2 | **Manholes** |  | 2025-12-24 | 2025-12-29 |  |  |
| JDH4-02-007-MA-1240 |  | Material Submittal for Manholes | 5d | 2025-12-24 A | 2025-12-29 A | JDH4-02-007-MA-1220, JDH4-02-007-SB-1250 | 100% |
| JDH4-02-007-MA-1260 |  | Material Approval for Manholes | 5d | 2025-12-24 A | 2025-12-29 A | JDH4-02-007-MA-1240 | 100% |
|  | 5 | **TSE Network** |  | 2025-12-24 | 2026-01-10 |  |  |
|  | 1 | **HDPE Pipe (PN 16)** |  | 2025-12-24 | 2026-01-10 |  |  |
| JDH4-02-007-MA-1200 |  | Material Submittal for HDPE Pipe (PN 16) | 5d | 2025-12-24 A | 2025-12-29 A | JDH4-02-007-SB-1210 | 100% |
| JDH4-02-007-MA-1210 |  | Material Approval for HDPE Pipe (PN 16) | 3d | 2026-01-07 A | 2026-01-10 A | JDH4-02-007-MA-1200 | 100% |
|  | 3 | **Valves / Chambers** |  | 2026-01-07 | 2026-01-10 |  |  |
| JDH4-02-007-MA-1440 |  | Material Submittal for Valves / Chambers | 2d | 2026-01-07 A | 2026-01-08 A | JDH4-02-007-SB-1450 | 100% |
| JDH4-02-007-MA-1450 |  | Material Approval for Valves / Chambers | 2d | 2026-01-08 A | 2026-01-10 A | JDH4-02-007-MA-1440 | 100% |
|  | 2 | **Risers** |  | 2026-01-07 | 2026-01-10 |  |  |
| JDH4-02-007-MA-1460 |  | Material Submittal for Risers | 2d | 2026-01-07 A | 2026-01-08 A | JDH4-02-007-SB-1470 | 100% |
| JDH4-02-007-MA-1470 |  | Material Approval for Risers | 2d | 2026-01-08 A | 2026-01-10 A | JDH4-02-007-MA-1460 | 100% |
|  | 4 | **Potable Water Network** |  | 2025-12-24 | 2026-01-10 |  |  |
|  | 1 | **HDPE Pipe (PN 16)** |  | 2025-12-24 | 2026-01-10 |  |  |
| JDH4-02-007-MA-1180 |  | Material Submittal for HDPE Pipe (PN 16) | 5d | 2025-12-24 A | 2025-12-29 A | JDH4-02-007-SB-1190 | 100% |
| JDH4-02-007-MA-1190 |  | Material Approval for HDPE Pipe (PN 16) | 3d | 2026-01-07 A | 2026-01-10 A | JDH4-02-007-MA-1180 | 100% |
|  | 3 | **Valves / Chambers** |  | 2026-01-07 | 2026-01-10 |  |  |
| JDH4-02-007-MA-1420 |  | Material Submittal for Valves / Chambers | 3d | 2026-01-07 A | 2026-01-10 A | JDH4-02-007-SB-1430 | 100% |
| JDH4-02-007-MA-1430 |  | Material Approval for Valves / Chambers | 2d | 2026-01-08 A | 2026-01-10 A | JDH4-02-007-MA-1420 | 100% |
|  | 2 | **Fire Hydrant** |  | 2026-01-08 | 2026-01-10 |  |  |
| JDH4-02-007-MA-1660 |  | Material Submittal for Fire Hydrant | 2d | 2026-01-08 A | 2026-01-10 A | JDH4-02-007-SB-1660 | 100% |
| JDH4-02-007-MA-1670 |  | Material Approval for Fire Hydrant | 1d | 2026-01-10 A | 2026-01-10 A | JDH4-02-007-MA-1660 | 100% |

| ID | WBS | Task | Duration | Start | Finish | Predecessors | Complete | Total float |
| --- | --- | --- | --- | --- | --- | --- | --- | --- |
|  | 3 | **Electrical Network** |  | 2026-01-08 | 2026-11-12 |  |  |  |
|  | 2 | **Pipe for the Duct** |  | 2026-01-08 | 2026-01-10 |  |  |  |
| JDH4-02-007-MA-1120 |  | Material Submittal for Pipe for the Duct | 2d | 2026-01-08 A | 2026-01-10 A | JDH4-02-007-SB-1130 | 100% |  |
| JDH4-02-007-MA-1130 |  | Material Approval for Pipe for the Duct By SEC | 1d | 2026-01-10 A | 2026-01-10 A | JDH4-02-007-MA-1120 | 100% |  |
|  | 5 | **Low Voltage Cables** |  | 2026-01-10 | 2026-01-14 |  |  |  |
| JDH4-02-007-MA-1320 |  | Material Submittal for Low Voltage Cables | 1d | 2026-01-10 A | 2026-01-10 A | JDH4-02-007-SB-1330 | 100% |  |
| JDH4-02-007-MA-1330 |  | Material Approval for Low Voltage Cables By SEC | 5d | 2026-01-10 A | 2026-01-14 A | JDH4-02-007-MA-1320 | 100% |  |
|  | 4 | **Earthing System** |  | 2026-01-10 | 2026-01-19 |  |  |  |
| JDH4-02-007-MA-1160 |  | Material Submittal for Earthing System | 1d | 2026-01-10 A | 2026-01-10 A | JDH4-02-007-SB-1170 | 100% |  |
| JDH4-02-007-MA-1170 |  | Material Approval for Earthing System By SEC | 3d | 2026-01-17 A | 2026-01-19 A | JDH4-02-007-MA-1160 | 100% |  |
|  | 11 | **Medium Voltage Cable** |  | 2026-10-27 | 2026-11-12 |  |  |  |
| JDH4-02-007-MA-1300 |  | Material Submittal for Medium Voltage Cable | 1d | 2026-10-27 | 2026-10-27 | JDH4-02-007-SB-1310 |  | 0d |
| JDH4-02-007-MA-1310 |  | Material Approval for Medium Voltage Cable By SEC | 14d | 2026-10-28 | 2026-11-12 | JDH4-02-007-MA-1300 |  | 0d |
|  | 3 | **Low Voltage Distribution Panel** |  | 2026-01-10 | 2026-01-19 |  |  |  |
| JDH4-02-007-MA-1140 |  | Material Submittal for Low Voltage Distribution Panel | 1d | 2026-01-10 A | 2026-01-10 A | JDH4-02-007-SB-1150 | 100% |  |
| JDH4-02-007-MA-1150 |  | Material Approval for Low Voltage Distribution Panel By SEC | 3d | 2026-01-17 A | 2026-01-19 A | JDH4-02-007-MA-1140 | 100% |  |
|  | 9 | **Unit Sub Station** |  | 2026-01-11 | 2026-02-24 |  |  |  |
| JDH4-02-007-MA-1380 |  | Material Submittal for Unit Sub Station | 1d | 2026-01-11 A | 2026-01-11 A | JDH4-02-007-SB-1390 | 100% |  |
| JDH4-02-007-MA-1390 |  | Material Approval for Unit Sub Station By SEC | 7d | 2026-02-16 | 2026-02-24 | JDH4-02-007-MA-1380 FS+30d |  | 36d |
|  | 10 | **Ring Main Unit (RMU)** |  | 2026-01-11 | 2026-02-26 |  |  |  |
| JDH4-02-007-MA-1400 |  | Material Submittal for Ring main Unit (RMU) | 1d | 2026-01-11 A | 2026-01-11 A | JDH4-02-007-SB-1410 | 100% |  |
| JDH4-02-007-MA-1410 |  | Material Approval for Ring main Unit (RMU) By SEC | 7d | 2026-02-18 | 2026-02-26 | JDH4-02-007-MA-1400 FS+32d |  | 9d |
|  | 6 | **Lighting poles** |  | 2026-01-10 | 2026-01-19 |  |  |  |
| JDH4-02-007-MA-1340 |  | Material Submittal for Lighting poles | 1d | 2026-01-10 A | 2026-01-10 A | JDH4-02-007-SB-1350 | 100% |  |
| JDH4-02-007-MA-1350 |  | Material Approval for Lighting poles By SEC | 3d | 2026-01-17 A | 2026-01-19 A | JDH4-02-007-MA-1340 | 100% |  |
|  | 1 | **Lighting panels/Feeder Pillers** |  | 2026-01-17 | 2026-03-07 |  |  |  |
| JDH4-02-007-MA-1515 |  | Material Submittal for Lighting panels/Feeder Pillers By SEC | 3d | 2026-01-17 A | 2026-01-19 A | JDH4-02-007-SB-1530 | 100% |  |
| JDH4-02-007-MA-1520 |  | Material Approval for Lighting panels/Feeder Pillers | 7d | 2026-02-28 | 2026-03-07 | JDH4-02-007-MA-1515 FS+32d |  | 27d |
|  | 7 | **Street Lighting Luminaire** |  | 2026-01-10 | 2026-01-19 |  |  |  |
| JDH4-02-007-MA-1360 |  | Material Submittal for Street Lighting Luminaire | 1d | 2026-01-10 A | 2026-01-10 A | JDH4-02-007-SB-1370 | 100% |  |
| JDH4-02-007-MA-1370 |  | Material Approval for Street Lighting Luminaire By SEC | 3d | 2026-01-17 A | 2026-01-19 A | JDH4-02-007-MA-1360 | 100% |  |
|  | 12 | **Telecommunications** |  | 2025-12-26 | 2025-12-29 |  |  |  |
|  | 2 | **Pipe for the Duct** |  | 2025-12-26 | 2025-12-29 |  |  |  |
| JDH4-02-007-MA-1540 |  | Material Submittal for Pipe for the Duct | 3d | 2025-12-26 A | 2025-12-29 A | JDH4-02-007-SB-1550 | 100% |  |
| JDH4-02-007-MA-1550 |  | Material Approval for Pipe for the Duct | 3d | 2025-12-26 A | 2025-12-29 A | JDH4-02-007-MA-1540 | 100% |  |
|  | 10 | **Sewage Lift Station** |  | 2026-01-01 | 2026-03-29 |  |  |  |
|  | 2 | **Thermal & Moisture Protection** |  | 2026-02-25 | 2026-03-10 |  |  |  |
| JDH4-02-007-MA-1490 |  | Material Submittal for Thermal & Moisture Protection | 5d | 2026-02-25 | 2026-03-02 | JDH4-02-007-SB-1510 FS+42d |  | 6d |
| JDH4-02-007-MA-1510 |  | Material Approval for Thermal & Moisture Protection | 7d | 2026-03-03 | 2026-03-10 | JDH4-02-007-MA-1490 |  | 6d |
|  | 1 | **Metals** |  | 2026-02-25 | 2026-03-10 |  |  |  |
| JDH4-02-007-MA-1480 |  | Material Submittal for Metal | 5d | 2026-02-25 | 2026-03-02 | JDH4-02-007-SB-1500 FS+42d |  | 6d |
| JDH4-02-007-MA-1500 |  | Material Approval for Metal | 7d | 2026-03-03 | 2026-03-10 | JDH4-02-007-MA-1480 |  | 6d |
|  | 3 | **Pumps** |  | 2026-01-10 | 2026-01-19 |  |  |  |
| JDH4-02-007-MA-1560 |  | Material Submittal for pumps | 1d | 2026-01-10 A | 2026-01-10 A | JDH4-02-007-SB-1570 | 100% |  |
| JDH4-02-007-MA-1570 |  | Material Approval for pumps | 3d | 2026-01-17 A | 2026-01-19 A | JDH4-02-007-MA-1560 | 100% |  |
|  | 4 | **Pipes,Fittings & Valves** |  | 2026-01-10 | 2026-01-14 |  |  |  |
| JDH4-02-007-MA-1680 |  | Material Submittal for Pipes,Fittings & Valves | 1d | 2026-01-10 A | 2026-01-10 A | JDH4-02-007-SB-1700 | 100% |  |
| JDH4-02-007-MA-1700 |  | Material Approval for Pipes,Fittings & Valves | 5d | 2026-01-10 A | 2026-01-14 A | JDH4-02-007-MA-1680 | 100% |  |
|  | 5 | **Odours scrubbing system** |  | 2026-01-22 | 2026-01-27 |  |  |  |
| JDH4-02-007-MA-1690 |  | Material Submittal for Odours Scrubbing System | 1d | 2026-01-22 A | 2026-01-22 A | JDH4-02-007-SB-1710 | 100% |  |
| JDH4-02-007-MA-1710 |  | Material Approval for Odours Scrubbing System | 5d | 2026-01-22 A | 2026-01-27 A | JDH4-02-007-MA-1690 | 100% |  |
|  | 6 | **Crane** |  | 2026-01-17 | 2026-01-20 |  |  |  |
| JDH4-02-007-MA-1720 |  | Material Submittal for Crane | 2d | 2026-01-17 A | 2026-01-18 A | JDH4-02-007-MA-1690, JDH4-02-007-SB-1730 | 100% |  |
| JDH4-02-007-MA-1730 |  | Material Approval for Crane | 4d | 2026-01-17 A | 2026-01-20 A | JDH4-02-007-MA-1720 | 100% |  |
|  | 7 | **Air Vents** |  | 2026-01-21 | 2026-01-24 |  |  |  |
| JDH4-02-007-MA-1800 |  | Material Submittal for Air Vents | 2d | 2026-01-21 A | 2026-01-22 A | JDH4-02-007-SB-1820 | 100% |  |
| JDH4-02-007-MA-1820 |  | Material Approval for Air Vents | 2d | 2026-01-22 A | 2026-01-24 A | JDH4-02-007-MA-1800 | 100% |  |
|  | 8 | **Screening Container** |  | 2026-03-07 | 2026-03-23 |  |  |  |
| JDH4-02-007-MA-1740 |  | Material Submittal for Screening Container | 5d | 2026-03-07 | 2026-03-11 | JDH4-02-007-SB-1760 FS+50d |  | 16d |
| JDH4-02-007-MA-1760 |  | Material Approval for Screening Container | 7d | 2026-03-12 | 2026-03-23 | JDH4-02-007-MA-1740 |  | 16d |
|  | 9 | **Baffle Plates** |  | 2026-01-14 | 2026-01-19 |  |  |  |
| JDH4-02-007-MA-1810 |  | Material Submittal for Baffle plates | 1d | 2026-01-14 A | 2026-01-14 A | JDH4-02-007-SB-1830 | 100% |  |
| JDH4-02-007-MA-1830 |  | Material Approval for Baffle plates | 4d | 2026-01-15 A | 2026-01-19 A | JDH4-02-007-MA-1810 | 100% |  |
|  | 10 | **Anti-Water Hammer Equipment** |  | 2026-03-12 | 2026-03-29 |  |  |  |
| JDH4-02-007-MA-1840 |  | Material Submittal for Anti-Water Hammer Equipment | 5d | 2026-03-12 | 2026-03-17 | JDH4-02-007-SB-1850, JDH4-02-007-MA-1740 |  | 31d |
| JDH4-02-007-MA-1850 |  | Material Approval for Anti-Water Hammer Equipment | 7d | 2026-03-22 | 2026-03-29 | JDH4-02-007-MA-1840 |  | 31d |
|  | 11 | **Air Conditioning and Ventilation** |  | 2026-01-14 | 2026-01-18 |  |  |  |
| JDH4-02-007-MA-1750 |  | Material Submittal for Air Conditioning and Ventilation | 1d | 2026-01-14 A | 2026-01-14 A | JDH4-02-007-SB-1770 | 100% |  |
| JDH4-02-007-MA-1770 |  | Material Approval for Air Conditioning and Ventilation | 3d | 2026-01-15 A | 2026-01-18 A | JDH4-02-007-MA-1750 | 100% |  |
|  | 12 | **Fuel System** |  | 2026-01-17 | 2026-03-07 |  |  |  |

| ID | WBS | Task | Duration | Start | Finish | Predecessors | Complete | Total float |
| --- | --- | --- | --- | --- | --- | --- | --- | --- |
| JDH4-02-007-MA-1780 |  | Material Submittal for Fuel System | 3d | 2026-01-17 A | 2026-01-19 A | JDH4-02-007-SB-1790 | 100% |  |
| JDH4-02-007-MA-1790 |  | Material Approval for Fuel System(Completed) | 3d | 2026-01-29 A | 2026-02-01 A | JDH4-02-007-PR-1319 | 100% |  |
| JDH4-02-007-MA-1790R |  | Material Approval for Fuel System | 7d | 2026-02-28 | 2026-03-07 | JDH4-02-007-MA-1780 FS+32d, JDH4-02-007-MA-1790 |  | 27d |
|  | 13 | **Fire Fighting System** |  | 2026-01-17 | 2026-03-10 |  |  |  |
| JDH4-02-007-MA-1920 |  | Material Submittal for Fire Fighting System | 3d | 2026-01-17 A | 2026-01-19 A | JDH4-02-007-SB-1930 | 100% |  |
| JDH4-02-007-MA-1930 |  | Material Approval for Fire Fighting System | 7d | 2026-03-03 | 2026-03-10 | JDH4-02-007-MA-1920 FS+35d |  | 11d |
|  | 14 | **Main Distribution Board /MCC panels** |  | 2026-01-17 | 2026-03-04 |  |  |  |
| JDH4-02-007-MA-1860 |  | Material Submittal for Main Distribution Board/MCC Panels | 3d | 2026-01-17 A | 2026-01-19 A | JDH4-02-007-SB-1870 | 100% |  |
| JDH4-02-007-MA-1870 |  | Material Approval for Main Distribution Board/MCC Panels | 7d | 2026-02-25 | 2026-03-04 | JDH4-02-007-MA-1860 FS+30d |  | 13d |
|  | 15 | **Final Panel boards** |  | 2026-01-13 | 2026-02-28 |  |  |  |
| JDH4-02-007-MA-1880 |  | Material Submittal for Final Panel Boards | 2d | 2026-01-13 A | 2026-01-14 A | JDH4-02-007-SB-1890 | 100% |  |
| JDH4-02-007-MA-1890 |  | Material Approval for Final Panel Boards | 7d | 2026-02-19 | 2026-02-28 | JDH4-02-007-MA-1880 SS+32d |  | 21d |
|  | 16 | **Local Control Panel/ Monitoring Control Panel** |  | 2026-01-13 | 2026-03-08 |  |  |  |
| JDH4-02-007-MA-1900 |  | Material Submittal for Local Control Panel / Monitoring Control Panel | 2d | 2026-01-13 A | 2026-01-14 A | JDH4-02-007-SB-1910 | 100% |  |
| JDH4-02-007-MA-1910 |  | Material Approval for Local Control Panel / Monitoring Control Panel | 7d | 2026-03-01 | 2026-03-08 | JDH4-02-007-MA-1900, JDH4-02-007-MA-1890 |  | 21d |
|  | 17 | **Engine Generators** |  | 2026-01-12 | 2026-01-19 |  |  |  |
| JDH4-02-007-MA-2060 |  | Material Submittal for Engine Generators | 2d | 2026-01-12 A | 2026-01-13 A | JDH4-02-007-SB-2070 | 100% |  |
| JDH4-02-007-MA-2070 |  | Material Approval for Engine Generators | 3d | 2026-01-17 A | 2026-01-19 A | JDH4-02-007-MA-2060 | 100% |  |
|  | 18 | **Standby Diesel Generator** |  | 2026-01-13 | 2026-01-19 |  |  |  |
| JDH4-02-007-MA-2040 |  | Material Submittal for Standby Diesel Generator | 2d | 2026-01-13 A | 2026-01-14 A | JDH4-02-007-SB-2050 | 100% |  |
| JDH4-02-007-MA-2050 |  | Material Approval for Standby Diesel Generator | 3d | 2026-01-17 A | 2026-01-19 A | JDH4-02-007-MA-2040 | 100% |  |
|  | 19 | **Power Factor Correction Capacitor Bank** |  | 2026-01-17 | 2026-02-28 |  |  |  |
| JDH4-02-007-MA-2000 |  | Material Submittal for Power Factor correction Capacitor Bank | 3d | 2026-01-17 A | 2026-01-19 A | JDH4-02-007-SB-2010 | 100% |  |
| JDH4-02-007-MA-2010 |  | Material Approval for Power Factor correction Capacitor Bank | 7d | 2026-02-19 | 2026-02-28 | JDH4-02-007-MA-2000, JDH4-02-007-MA-1890 SS |  | 22d |
|  | 20 | **Low-Voltage Electrical Power Conductors and Cables** |  | 2026-01-10 | 2026-01-19 |  |  |  |
| JDH4-02-007-MA-2020 |  | Material Submittal for Low Voltage Electrical Power Conductors & Cables | 1d | 2026-01-10 A | 2026-01-10 A | JDH4-02-007-SB-2030 | 100% |  |
| JDH4-02-007-MA-2030 |  | Material Approval for Low Voltage Electrical Power Conductors & Cables | 3d | 2026-01-17 A | 2026-01-19 A | JDH4-02-007-MA-2020 | 100% |  |
|  | 21 | **Low Voltage Feeder Cable** |  | 2026-01-10 | 2026-01-19 |  |  |  |
| JDH4-02-007-MA-1980 |  | Material Submittal for Low Voltage Feeder Cable | 1d | 2026-01-10 A | 2026-01-10 A | JDH4-02-007-SB-1990 | 100% |  |
| JDH4-02-007-MA-1990 |  | Material Approval for Low Voltage Feeder Cable | 3d | 2026-01-17 A | 2026-01-19 A | JDH4-02-007-MA-1980 | 100% |  |
|  | 22 | **Wiring Devices** |  | 2026-01-10 | 2026-03-01 |  |  |  |
| JDH4-02-007-MA-1940 |  | Material Submittal for Wiring Devices | 1d | 2026-01-10 A | 2026-01-10 A | JDH4-02-007-SB-1950 | 100% |  |
| JDH4-02-007-MA-1950 |  | Material Approval for Wiring Devices | 7d | 2026-02-21 | 2026-03-01 | JDH4-02-007-MA-1940 FS+35d |  | 30d |
|  | 23 | **Enclosed Switches and Circuit Breakers** |  | 2026-01-10 | 2026-01-19 |  |  |  |
| JDH4-02-007-MA-1960 |  | Material Submittal for Enclosed Switches and Circuit Breakers | 1d | 2026-01-10 A | 2026-01-10 A | JDH4-02-007-SB-1970 | 100% |  |
| JDH4-02-007-MA-1970 |  | Material Approval for Enclosed Switches and Circuit Breakers | 3d | 2026-01-17 A | 2026-01-19 A | JDH4-02-007-MA-1960 | 100% |  |
|  | 24 | **Raceways for Electrical Systems** |  | 2026-02-16 | 2026-03-02 |  |  |  |
| JDH4-02-007-MA-2100 |  | Material Submittal for Raceways for Electrical System | 5d | 2026-02-16 | 2026-02-21 | JDH4-02-007-SB-2110 FS+35d |  | 16d |
| JDH4-02-007-MA-2110 |  | Material Approval for Raceways for Electrical System | 7d | 2026-02-23 | 2026-03-02 | JDH4-02-007-MA-2100 |  | 26d |
|  | 25 | **Electrical Manholes** |  | 2026-01-01 | 2026-01-07 |  |  |  |
| JDH4-02-007-MA-2140 |  | Material Submittal for Electrical Manholes | 2d | 2026-01-01 A | 2026-01-03 A | JDH4-02-007-SB-2150 | 100% |  |
| JDH4-02-007-MA-2150 |  | Material Approval for Electrical Manholes | 4d | 2026-01-04 A | 2026-01-07 A | JDH4-02-007-MA-2140 | 100% |  |
|  | 27 | **Security System (CCTV System)** |  | 2026-01-13 | 2026-01-19 |  |  |  |
| JDH4-02-007-MA-2080 |  | Material Submittal for Security System (CCTV System) | 2d | 2026-01-13 A | 2026-01-14 A | JDH4-02-007-SB-2090 | 100% |  |
| JDH4-02-007-MA-2090 |  | Material Approval for Security System (CCTV System) | 3d | 2026-01-17 A | 2026-01-19 A | JDH4-02-007-MA-2080 | 100% |  |
|  | 26 | **ICT (Data& telephone System)** |  | 2026-01-13 | 2026-01-19 |  |  |  |
| JDH4-02-007-MA-2120 |  | Material Submittal for ICT (Data & Telephone System) | 2d | 2026-01-13 A | 2026-01-14 A | JDH4-02-007-SB-2130 | 100% |  |
| JDH4-02-007-MA-2130 |  | Material Approval for ICT (Data & Telephone System) | 3d | 2026-01-17 A | 2026-01-19 A | JDH4-02-007-MA-2120 | 100% |  |
|  | 28 | **Programmable Logic Controllers** |  | 2026-02-23 | 2026-03-08 |  |  |  |
| JDH4-02-007-MA-2200 |  | Material Submittal for Programmable Logic Controllers | 5d | 2026-02-23 | 2026-02-28 | JDH4-02-007-SB-2210, JDH4-02-007-MA-2100, JDH4-02-007-MA-2100 FF |  | 16d |
| JDH4-02-007-MA-2210 |  | Material Approval for Programmable Logic Controllers | 7d | 2026-03-01 | 2026-03-08 | JDH4-02-007-MA-2200 |  | 16d |
|  | 29 | **Process Control Wiring** |  | 2026-01-17 | 2026-02-25 |  |  |  |
| JDH4-02-007-MA-2180 |  | Material Submittal for Process Control Wiring | 2d | 2026-01-17 A | 2026-01-18 A | JDH4-02-007-SB-2190 | 100% |  |
| JDH4-02-007-MA-2190 |  | Material Approval for Process Control Wiring | 7d | 2026-02-17 | 2026-02-25 | JDH4-02-007-MA-2180 FS+25d |  | 32d |
|  | 30 | **Instrumentation for Process Systems** |  | 2026-01-17 | 2026-01-26 |  |  |  |
| JDH4-02-007-MA-2160 |  | Material Submittal for Instrumentation Control Wiring | 2d | 2026-01-17 A | 2026-01-18 A | JDH4-02-007-SB-2170 | 100% |  |
| JDH4-02-007-MA-2170 |  | Material Approval for Instrumentation Control Wiring | 5d | 2026-01-21 A | 2026-01-26 A | JDH4-02-007-MA-2160, JDH4-02-007-SB-1990 | 100% |  |
|  | 4 | **Procurement** |  | 2025-12-27 | 2026-12-31 |  |  |  |
|  | 2 | **Short Lead Item** |  | 2025-12-27 | 2026-09-01 |  |  |  |
|  | 1 | **Road Works - Civil** |  | 2025-12-31 | 2026-08-08 |  |  |  |
|  | 1 | **Steel Reinforcement** |  | 2025-12-31 | 2026-03-25 |  |  |  |
| JDH4-02-007-PR-1300 |  | PO for Steel Reinforcement | 3d | 2025-12-31 A | 2026-01-03 A | JDH4-02-007-MA-1590 | 100% |  |
| JDH4-02-007-PR-1310 |  | Material Fabrication for Steel Reinforcement | 1d | 2026-01-03 A | 2026-01-03 A | JDH4-02-007-PR-1300 | 100% |  |
| JDH4-02-007-PR-1319 |  | Material Delivery for Steel Reinforcement - Stage 1(Completed) | 4d | 2026-01-28 A | 2026-02-01 A | JDH4-02-007-PR-1310, JDH4-02-007-MA-2030 | 100% |  |
| JDH4-02-007-PR-1319R |  | Material Delivery for Steel Reinforcement - Stage 1 | 11d | 2026-02-15 | 2026-02-28 | JDH4-02-007-PR-1310, JDH4-02-007-MA-2030, JDH4-02-007-MA-2010 FF, JDH4-02-007-PR-1319 |  | 39d |
| JDH4-02-007-PR-1320 |  | Material Delivery for Steel Reinforcement - Stage 2 | 19d | 2026-03-01 | 2026-03-25 | JDH4-02-007-PR-1319, JDH4-02-007-PR-1319R |  | 39d |
|  | 2 | **Ready Mixed Concrete** |  | 2025-12-31 | 2026-01-05 |  |  |  |
| JDH4-02-007-PR-1330 |  | PO for Ready Mixed Concrete | 3d | 2025-12-31 A | 2026-01-03 A | JDH4-02-007-MA-1610 | 100% |  |
| JDH4-02-007-PR-1340 |  | Material Delivery for Ready Mixed Concrete | 3d | 2026-01-03 A | 2026-01-05 A | JDH4-02-007-PR-1330 | 100% |  |
|  | 3 | **Water Proofing** |  | 2026-02-17 | 2026-04-26 |  |  |  |

| ID | WBS | Task | Duration | Start | Finish | Predecessors | Complete | Total float |
| --- | --- | --- | --- | --- | --- | --- | --- | --- |
| JDH4-02-007-PR-1350 |  | PO for Water Proofing | 5d | 2026-02-17 | 2026-02-23 | JDH4-02-007-MA-1630 FS+42d |  | 12d |
| JDH4-02-007-PR-1360 |  | Material Fabrication for Water Proofing | 25d | 2026-02-24 | 2026-03-28 | JDH4-02-007-PR-1350 |  | 12d |
| JDH4-02-007-PR-1370 |  | Material Delivery for Water Proofing | 25d | 2026-03-29 | 2026-04-26 | JDH4-02-007-PR-1360, JDH4-02-007-MS-1040 |  | 12d |
|  | 4 | **Aggregate Base Course** |  | 2026-02-21 | 2026-07-02 |  |  |  |
| JDH4-02-007-PR-1380 |  | PO for Aggregate Base Course | 5d | 2026-02-21 | 2026-02-26 | JDH4-02-007-MA-1010 FS+45d |  | 2d |
| JDH4-02-007-PR-1389 |  | Material Delivery for Aggregate Base Course - Stage 1 | 20d | 2026-05-14 | 2026-06-09 | JDH4-02-007-PR-1380, JDH4-02-007-CN-5480R |  | 1d |
| JDH4-02-007-PR-1390 |  | Material Delivery for Aggregate Base Course - Stage 2 | 20d | 2026-06-10 | 2026-07-02 | JDH4-02-007-PR-1389, JDH4-02-007-MS-1040 |  | 1d |
|  | 5 | **Bituminous Base & Wearing Course** |  | 2026-02-28 | 2026-07-06 |  |  |  |
| JDH4-02-007-PR-1400 |  | PO for Bituminous Base & Wearing Cource | 5d | 2026-02-28 | 2026-03-04 | JDH4-02-007-MA-1030, JDH4-02-007-PR-1380 |  | 2d |
| JDH4-02-007-PR-1410 |  | Material Delivery to the Site | 30d | 2026-06-02 | 2026-07-06 | JDH4-02-007-PR-1400, JDH4-02-007-MA-1110, JDH4-02-007-CN-5060 |  | 0d |
|  | 7 | **Precast Concrete Kerb** |  | 2026-03-05 | 2026-08-08 |  |  |  |
| JDH4-02-007-PR-1420 |  | PO for Precast Concrete Kerb | 5d | 2026-03-05 | 2026-03-10 | JDH4-02-007-MA-1050, JDH4-02-007-PR-1400 |  | 14d |
| JDH4-02-007-PR-1430 |  | Material Fabrication for Precast Concrete Kerb | 30d | 2026-03-11 | 2026-04-18 | JDH4-02-007-PR-1420 |  | 21d |
| JDH4-02-007-PR-1440 |  | Material Delivery for Precast Concrete Kerb | 28d | 2026-07-07 | 2026-08-08 | JDH4-02-007-PR-1430, JDH4-02-007-PR-1410 |  | 0d |
|  | 8 | **Interlocking Block Pavers** |  | 2026-03-11 | 2026-05-24 |  |  |  |
| JDH4-02-007-PR-1450 |  | PO for Interlocking Block Pavers | 3d | 2026-03-11 | 2026-03-14 | JDH4-02-007-MA-1070, JDH4-02-007-PR-1420 |  | 14d |
| JDH4-02-007-PR-1460 |  | Material Fabrication for Interlocking Block Pavers | 30d | 2026-03-15 | 2026-04-21 | JDH4-02-007-PR-1450 |  | 18d |
| JDH4-02-007-PR-1470 |  | Material Delivery for Interlocking Block Pavers | 28d | 2026-04-22 | 2026-05-24 | JDH4-02-007-PR-1460 |  | 18d |
|  | 9 | **Pavement Markings** |  | 2026-03-15 | 2026-06-01 |  |  |  |
| JDH4-02-007-PR-1480 |  | PO for Pavement Markings | 4d | 2026-03-15 | 2026-03-22 | JDH4-02-007-MA-1090, JDH4-02-007-PR-1450 |  | 14d |
| JDH4-02-007-PR-1490 |  | Material Fabrication for Pavement Markings | 30d | 2026-03-23 | 2026-04-26 | JDH4-02-007-PR-1480 |  | 14d |
| JDH4-02-007-PR-1500 |  | Material Delivery for Pavement Markings | 28d | 2026-04-27 | 2026-06-01 | JDH4-02-007-PR-1490 |  | 14d |
|  | 10 | **Traffic Signs** |  | 2026-03-05 | 2026-05-07 |  |  |  |
| JDH4-02-007-PR-1510 |  | PO for Traffic Signs | 6d | 2026-03-05 | 2026-03-11 | JDH4-02-007-MA-1100, JDH4-02-007-PR-1400 |  | 2d |
| JDH4-02-007-PR-1520 |  | Material Fabrication for Traffic Signs | 30d | 2026-03-12 | 2026-04-19 | JDH4-02-007-PR-1510 |  | 2d |
| JDH4-02-007-PR-1530 |  | Material Delivery for Traffic Signs | 16d | 2026-04-20 | 2026-05-07 | JDH4-02-007-PR-1520 |  | 2d |
|  | 7 | **Stormwater Utilities** |  | 2025-12-27 | 2026-05-16 |  |  |  |
|  | 7 | **Catch Basins** |  | 2025-12-31 | 2026-05-16 |  |  |  |
| JDH4-02-007-PR-1720 |  | PO for Catch Basins | 3d | 2025-12-31 A | 2026-01-03 A | JDH4-02-007-MA-1650 | 100% |  |
| JDH4-02-007-PR-1729 |  | Material Fabrication for Catch Basins - Stage 1 | 45d | 2026-01-03 A | 2026-02-01 A | JDH4-02-007-PR-1720 | 100% |  |
| JDH4-02-007-PR-1740 |  | Material Delivery for Catch Basins(Completed) | 3d | 2026-01-29 A | 2026-02-01 A | JDH4-02-007-PR-1729 | 100% |  |
| JDH4-02-007-PR-1729R |  | Material Fabrication for Catch Basins - Stage 1 | 18d | 2026-02-19 | 2026-03-12 | JDH4-02-007-PR-1720, JDH4-02-007-PR-1729 FS+15d |  | 17d |
| JDH4-02-007-PR-1730 |  | Material Fabrication for Catch Basins - Stage 2 | 30d | 2026-03-14 | 2026-04-20 | JDH4-02-007-PR-1729, JDH4-02-007-PR-1729R |  | 17d |
| JDH4-02-007-PR-1740R |  | Material Delivery for Catch Basins | 25d | 2026-03-29 | 2026-04-26 | JDH4-02-007-PR-1730 FF, JDH4-02-007-PR-1370 FF, JDH4-02-007-PR-1320 FF, JDH4-02-007-PR-1740 |  | 12d |
| JDH4-02-007-PR-1830 |  | Staging Time for Catch Basins | 7d | 2026-05-09 | 2026-05-16 | JDH4-02-007-PR-1740, JDH4-02-007-PR-1740R, JDH4-02-007-PR-1530, JDH4-02-007-PR-1370 |  | 2d |
|  | 2 | **GRP Pipes** |  | 2025-12-27 | 2026-04-26 |  |  |  |
| JDH4-02-007-PR-1660 |  | PO for GRP Pipes | 3d | 2025-12-27 A | 2025-12-29 A | JDH4-02-007-MA-1270 | 100% |  |
| JDH4-02-007-PR-1670 |  | Material Fabrication for GRP Pipes | 63d | 2025-12-27 A | 2026-02-01 A | JDH4-02-007-PR-1660 | 100% |  |
| JDH4-02-007-PR-1680 |  | Material Delivery for GRP Pipes(Completed) | 32d | 2025-12-27 A | 2026-02-01 A | JDH4-02-007-PR-1670 SS, JDH4-02-007-PR-1670 FF | 100% |  |
| JDH4-02-007-PR-1670R |  | Material Fabrication for GRP Pipes | 30d | 2026-02-14 | 2026-03-24 | JDH4-02-007-PR-1660, JDH4-02-007-PR-1670 FS+10d |  | 7d |
| JDH4-02-007-PR-1680R |  | Material Delivery for GRP Pipes | 28d | 2026-03-25 | 2026-04-26 | JDH4-02-007-PR-1670 SS, JDH4-02-007-PR-1670 FF, JDH4-02-007-PR-1680, JDH4-02-007-PR-1670R |  | 22d |
|  | 6 | **Inlet Manholes** |  | 2026-01-01 | 2026-03-28 |  |  |  |
| JDH4-02-007-PR-1690 |  | PO for Inlet Manholes | 2d | 2026-01-01 A | 2026-01-03 A | JDH4-02-007-MA-1290 | 100% |  |
| JDH4-02-007-PR-1700 |  | Material Fabrication for Inlet Manholes | 57d | 2026-01-03 A | 2026-02-01 A | JDH4-02-007-PR-1690 | 100% |  |
| JDH4-02-007-PR-1710 |  | Material Delivery for Inlet Manholes(Completed) | 22d | 2026-01-07 A | 2026-02-01 A | JDH4-02-007-PR-1700 SS, JDH4-02-007-PR-1700 FF | 100% |  |
| JDH4-02-007-PR-1700R |  | Material Fabrication for Inlet Manholes | 30d | 2026-02-14 | 2026-03-24 | JDH4-02-007-PR-1690, JDH4-02-007-PR-1700 FS+10d |  | 4d |
| JDH4-02-007-PR-1710R |  | Material Delivery for Inlet Manholes | 30d | 2026-02-17 | 2026-03-28 | JDH4-02-007-PR-1700 SS, JDH4-02-007-PR-1700 FF, JDH4-02-007-PR-1710 FF, JDH4-02-007-PR-1700R SS+3d |  | 4d |
|  | 6 | **Sanitary Sewerage** |  | 2025-12-27 | 2026-04-30 |  |  |  |
|  | 1 | **GRP Pipes** |  | 2025-12-27 | 2026-04-16 |  |  |  |
| JDH4-02-007-PR-1600 |  | PO for GRP Pipes | 3d | 2025-12-27 A | 2025-12-29 A | JDH4-02-007-MA-1230 | 100% |  |
| JDH4-02-007-PR-1610 |  | Material Fabrication for GRP Pipes | 60d | 2025-12-30 A | 2026-02-01 A | JDH4-02-007-PR-1600 | 100% |  |
| JDH4-02-007-PR-1620 |  | Material Delivery for GRP Pipes(Completed) | 3d | 2026-01-29 A | 2026-02-01 A | JDH4-02-007-PR-1610 SS, JDH4-02-007-PR-1610 FF | 100% |  |
| JDH4-02-007-PR-1610R |  | Material Fabrication for GRP Pipes | 30d | 2026-02-14 | 2026-03-24 | JDH4-02-007-PR-1600, JDH4-02-007-PR-1610 FS+10d |  | 3d |
| JDH4-02-007-PR-1620R |  | Material Delivery for GRP Pipes | 20d | 2026-03-25 | 2026-04-16 | JDH4-02-007-PR-1610, JDH4-02-007-PR-1610 FF, JDH4-02-007-PR-1620, JDH4-02-007-PR-1610R |  | 3d |
|  | 2 | **Manholes** |  | 2026-01-01 | 2026-04-30 |  |  |  |
| JDH4-02-007-PR-1630 |  | PO for Manholes | 3d | 2026-01-01 A | 2026-01-04 A | JDH4-02-007-MA-1260 | 100% |  |
| JDH4-02-007-PR-1638 |  | Material Fabrication for Manholes - Stage 1 | 5d | 2026-01-04 A | 2026-01-08 A | JDH4-02-007-PR-1630 | 100% |  |
| JDH4-02-007-PR-1650 |  | Material Delivery for Manholes(Completed) | 20d | 2026-01-10 A | 2026-02-01 A | JDH4-02-007-PR-1620 | 100% |  |
| JDH4-02-007-PR-1639 |  | Material Fabrication for Manholes - Stage 2 | 20d | 2026-02-19 | 2026-03-15 | JDH4-02-007-PR-1638 FS+35d |  | 12d |
| JDH4-02-007-PR-1640 |  | Material Fabrication for Manholes - Stage 3 | 20d | 2026-03-16 | 2026-04-11 | JDH4-02-007-PR-1639 |  | 12d |
| JDH4-02-007-PR-1650R |  | Material Delivery for Manholes | 17d | 2026-04-12 | 2026-04-30 | JDH4-02-007-PR-1650, JDH4-02-007-PR-1640 |  | 12d |
|  | 5 | **TSE Network** |  | 2026-01-01 | 2026-04-22 |  |  |  |
|  | 1 | **HDPE Pipe (PN 16)** |  | 2026-01-01 | 2026-04-22 |  |  |  |
| JDH4-02-007-PR-1570 |  | PO for HDPE Pipe (PN 16) | 4d | 2026-01-01 A | 2026-01-05 A | JDH4-02-007-MA-1210 | 100% |  |
| JDH4-02-007-PR-1580 |  | Material Fabrication for HDPE Pipe (PN 16) | 53d | 2026-01-01 A | 2026-02-01 A | JDH4-02-007-PR-1570 | 100% |  |
| JDH4-02-007-PR-1590 |  | Material Delivery for HDPE Pipe (PN 16)(Completed) | 26d | 2026-01-03 A | 2026-02-01 A | JDH4-02-007-PR-1580 SS, JDH4-02-007-PR-1580 FF | 100% |  |
| JDH4-02-007-PR-1580R |  | Material Fabrication for HDPE Pipe (PN 16) | 25d | 2026-02-14 | 2026-03-15 | JDH4-02-007-PR-1570, JDH4-02-007-PR-1580 FS+10d |  | 25d |
| JDH4-02-007-PR-1590R |  | Material Delivery for HDPE Pipe (PN 16) | 30d | 2026-03-16 | 2026-04-22 | JDH4-02-007-PR-1580 SS, JDH4-02-007-PR-1580 FF, JDH4-02-007-PR-1590, JDH4-02-007-PR-1580R |  | 25d |
|  | 4 | **Potable Water Network** |  | 2026-01-01 | 2026-04-12 |  |  |  |
|  | 1 | **HDPE Pipe (PN 16)** |  | 2026-01-01 | 2026-04-12 |  |  |  |

| ID | WBS | Task | Duration | Start | Finish | Predecessors | Complete | Total float |
| --- | --- | --- | --- | --- | --- | --- | --- | --- |
| JDH4-02-007-PR-1540 |  | PO for HDPE Pipe (PN 16) | 2d | 2026-01-01 A | 2026-01-03 A | JDH4-02-007-MA-1190 | 100% |  |
| JDH4-02-007-PR-1550 |  | Material Fabrication for HDPE Pipe (PN 16) | 52d | 2026-01-03 A | 2026-02-01 A | JDH4-02-007-PR-1540 | 100% |  |
| JDH4-02-007-PR-1560 |  | Material Delivery for HDPE Pipe (PN 16)(Completed) | 26d | 2026-01-03 A | 2026-02-01 A | JDH4-02-007-PR-1550 SS, JDH4-02-007-PR-1550 FF | 100% |  |
| JDH4-02-007-PR-1550R |  | Material Fabrication for HDPE Pipe (PN 16) | 25d | 2026-02-03 | 2026-03-04 | JDH4-02-007-PR-1540, JDH4-02-007-PR-1550 |  | 7d |
| JDH4-02-007-PR-1560R |  | Material Delivery for HDPE Pipe (PN 16) | 30d | 2026-03-05 | 2026-04-12 | JDH4-02-007-PR-1550 SS, JDH4-02-007-PR-1550 FF, JDH4-02-007-PR-1560, JDH4-02-007-PR-1550R |  | 7d |
|  | 3 | **Electrical Network** |  | 2026-02-15 | 2026-05-24 |  |  |  |
|  | 1 | **Pipe for the Duct** |  | 2026-02-15 | 2026-04-30 |  |  |  |
| JDH4-02-007-PR-1190 |  | PO for Pipe for Duct | 6d | 2026-02-15 | 2026-02-21 | JDH4-02-007-MA-1130 FS+30d |  | 0d |
| JDH4-02-007-PR-1210 |  | Material Fabrication for Pipe for Duct | 30d | 2026-02-23 | 2026-04-01 | JDH4-02-007-PR-1190 |  | 0d |
| JDH4-02-007-PR-1230 |  | Material Delivery for Pipe for Duct | 25d | 2026-04-02 | 2026-04-30 | JDH4-02-007-PR-1210 |  | 0d |
|  | 4 | **Earthing System** |  | 2026-02-25 | 2026-05-24 |  |  |  |
| JDH4-02-007-PR-1180 |  | PO for Earthing System | 7d | 2026-02-25 | 2026-03-04 | JDH4-02-007-MA-1170 FS+30d |  | 26d |
| JDH4-02-007-PR-1200 |  | Material Fabrication for Earthing System | 30d | 2026-03-05 | 2026-04-12 | JDH4-02-007-PR-1180 |  | 26d |
| JDH4-02-007-PR-1220 |  | Material Delivery for Earthing System | 28d | 2026-04-22 | 2026-05-24 | JDH4-02-007-PR-1200, JDH4-02-007-PR-1520, JDH4-02-007-PR-1460, JDH4-02-007-PR-1430, JDH4-02-007-PR-1340, JDH4-02-007-PR-1460 SS |  | 18d |
|  | 10 | **Telecommunications** |  | 2026-01-20 | 2026-05-16 |  |  |  |
|  | 1 | **Pipe for the Duct** |  | 2026-01-20 | 2026-05-16 |  |  |  |
| JDH4-02-007-PR-2260 |  | PO for Pipe for Duct | 2d | 2026-01-20 A | 2026-01-21 A | JDH4-02-007-MA-1550 | 100% |  |
| JDH4-02-007-PR-2270 |  | Material Fabrication for Pipe for Duct | 8d | 2026-01-25 A | 2026-02-01 A | JDH4-02-007-PR-2260 | 100% |  |
| JDH4-02-007-PR-2280 |  | Material Delivery for Pipe for Duct(Completed) | 2d | 2026-01-31 A | 2026-02-01 A | JDH4-02-007-PR-1620 SS, JDH4-02-007-PR-1620 FF | 100% |  |
| JDH4-02-007-PR-2270R |  | Material Fabrication for Pipe for Duct | 9.75d | 2026-04-02 | 2026-04-13 | JDH4-02-007-PR-2260, JDH4-02-007-PR-2270, JDH4-02-007-PR-1210 |  | 25.25d |
| JDH4-02-007-PR-2280R |  | Material Delivery for Pipe for Duct | 28d | 2026-04-13 | 2026-05-16 | JDH4-02-007-PR-2270 SS, JDH4-02-007-PR-2270 FF, JDH4-02-007-PR-1620 SS, JDH4-02-007-PR-1620 FF, JDH4-02-007-PR-1520 FF, JDH4-02-007-PR-2280, JDH4-02-007-PR-2270R |  | 25.25d |
|  | 9 | **Sewage Lift Station** |  | 2026-02-03 | 2026-09-01 |  |  |  |
|  | 7 | **Thermal & Moisture Protection** |  | 2026-03-11 | 2026-08-05 |  |  |  |
| JDH4-02-007-PR-2350 |  | PO for Thermal & Moisture Protection | 4d | 2026-03-11 | 2026-03-15 | JDH4-02-007-MA-1510 |  | 6d |
| JDH4-02-007-PR-2358 |  | Material Fabrication for Thermal & Moisture Protection - Stage 1 | 20d | 2026-03-16 | 2026-04-11 | JDH4-02-007-PR-2350 |  | 6d |
| JDH4-02-007-PR-2359 |  | Material Fabrication for Thermal & Moisture Protection - Stage 2 | 20d | 2026-04-12 | 2026-05-04 | JDH4-02-007-PR-2358, JDH4-02-007-MA-2210 |  | 6d |
| JDH4-02-007-PR-2360 |  | Material Fabrication for Thermal & Moisture Protection - Stage 3 | 29d | 2026-05-05 | 2026-06-10 | JDH4-02-007-PR-2359 |  | 6d |
| JDH4-02-007-PR-2369 |  | Material Delivery for Thermal & Moisture Protection - Stage 1 | 24d | 2026-06-11 | 2026-07-08 | JDH4-02-007-PR-2360, JDH4-02-007-PR-1500, JDH4-02-007-PR-1470 |  | 6d |
| JDH4-02-007-PR-2370 |  | Material Delivery for Thermal & Moisture Protection - Stage 2 | 24d | 2026-07-09 | 2026-08-05 | JDH4-02-007-PR-1220, JDH4-02-007-PR-1230, JDH4-02-007-PR-2369, JDH4-02-007-PR-1650, JDH4-02-007-PR-1650R |  | 6d |
|  | 1 | **Metals** |  | 2026-03-11 | 2026-08-05 |  |  |  |
| JDH4-02-007-PR-1840 |  | PO for Metal | 4d | 2026-03-11 | 2026-03-15 | JDH4-02-007-MA-1500 |  | 6d |
| JDH4-02-007-PR-1848 |  | Material Fabrication for Metal - Stage 1 | 29d | 2026-03-16 | 2026-04-21 | JDH4-02-007-PR-1840 |  | 6d |
| JDH4-02-007-PR-1849 |  | Material Fabrication for Metal - Stage 2 | 20d | 2026-04-22 | 2026-05-14 | JDH4-02-007-PR-1848 |  | 6d |
| JDH4-02-007-PR-1850 |  | Material Fabrication for Metal - Stage 3 | 20d | 2026-05-16 | 2026-06-10 | JDH4-02-007-PR-1849, JDH4-02-007-PR-1560, JDH4-02-007-PR-1590, JDH4-02-007-PR-1680, JDH4-02-007-PR-1560R, JDH4-02-007-PR-1590R, JDH4-02-007-PR-1680R |  | 6d |
| JDH4-02-007-PR-1859 |  | Material Delivery for Metal - Stage 1 | 18d | 2026-06-11 | 2026-07-01 | JDH4-02-007-PR-1850, JDH4-02-007-PR-2280, JDH4-02-007-PR-1220, JDH4-02-007-PR-2280R |  | 6d |
| JDH4-02-007-PR-1860 |  | Material Delivery for Metal - Stage 2 | 30d | 2026-07-02 | 2026-08-05 | JDH4-02-007-PR-1859 |  | 6d |
|  | 5 | **Pipes** |  | 2026-02-03 | 2026-04-20 |  |  |  |
| JDH4-02-007-PR-2290 |  | PO for Pipes | 4d | 2026-02-03 | 2026-02-07 | JDH4-02-007-SB-1700, JDH4-02-007-MA-1700 |  | 3d |
| JDH4-02-007-PR-2300 |  | Material Fabrication for Pipes | 30d | 2026-02-08 | 2026-03-15 | JDH4-02-007-PR-2290 |  | 3d |
| JDH4-02-007-PR-2310 |  | Material Delivery for Pipes | 28d | 2026-03-16 | 2026-04-20 | JDH4-02-007-PR-2300 |  | 3d |
|  | 8 | **Air Conditioning and Ventilation** |  | 2026-02-19 | 2026-05-23 |  |  |  |
| JDH4-02-007-PR-2380 |  | PO for Air Conditioning and Ventilation | 4d | 2026-02-19 | 2026-02-24 | JDH4-02-007-MA-1770, JDH4-02-007-PR-2290 FS+10d |  | 17d |
| JDH4-02-007-PR-2390 |  | Material Fabrication for Air Conditioning and Ventilation | 30d | 2026-02-25 | 2026-04-04 | JDH4-02-007-PR-2380 |  | 17d |
| JDH4-02-007-PR-2400 |  | Material Delivery for Air Conditioning and Ventilation | 28d | 2026-04-21 | 2026-05-23 | JDH4-02-007-PR-2390, JDH4-02-007-PR-2310 |  | 3d |
|  | 2 | **Fuel System** |  | 2026-03-08 | 2026-06-28 |  |  |  |
| JDH4-02-007-PR-1870 |  | PO forFabrication for Fuel System | 4d | 2026-03-08 | 2026-03-11 | JDH4-02-007-MA-1790, JDH4-02-007-MA-1790R, JDH4-02-007-PR-2380 |  | 32d |
| JDH4-02-007-PR-1880 |  | Material Fabrication for Fuel System | 30d | 2026-03-12 | 2026-04-19 | JDH4-02-007-PR-1870 |  | 32d |
| JDH4-02-007-PR-1890 |  | Material Delivery for Fuel System | 28d | 2026-05-24 | 2026-06-28 | JDH4-02-007-PR-1880, JDH4-02-007-PR-2400, JDH4-02-007-PR-2400 FF |  | 3d |
|  | 6 | **Fire Fighting System** |  | 2026-03-11 | 2026-07-30 |  |  |  |
| JDH4-02-007-PR-2320 |  | PO for Fire Fighting System | 4d | 2026-03-11 | 2026-03-15 | JDH4-02-007-MA-1930, JDH4-02-007-PR-2290 |  | 11d |
| JDH4-02-007-PR-2330 |  | Material Fabrication for Fire Fighting System | 30d | 2026-03-16 | 2026-04-22 | JDH4-02-007-PR-2320 |  | 11d |
| JDH4-02-007-PR-2340 |  | Material Delivery for Fire Fighting System | 28d | 2026-06-29 | 2026-07-30 | JDH4-02-007-PR-2330, JDH4-02-007-PR-1490, JDH4-02-007-PR-1890, JDH4-02-007-PR-1890 FF |  | 3d |
|  | 9 | **Security System (CCTV System)** |  | 2026-04-23 | 2026-09-01 |  |  |  |
| JDH4-02-007-PR-2410 |  | PO for Security System (CCTV System) | 4d | 2026-04-23 | 2026-04-27 | JDH4-02-007-MA-2090, JDH4-02-007-PR-2380, JDH4-02-007-PR-1550R, JDH4-02-007-PR-2330 |  | 11d |
| JDH4-02-007-PR-2420 |  | Material Fabrication for Security System (CCTV System) | 30d | 2026-04-28 | 2026-06-04 | JDH4-02-007-PR-2410 |  | 11d |
| JDH4-02-007-PR-2430 |  | Material Delivery for Security System (CCTV System) | 28d | 2026-08-01 | 2026-09-01 | JDH4-02-007-PR-2420, JDH4-02-007-PR-2340 |  | 3d |
|  | 1 | **Long Lead Item** |  | 2026-01-28 | 2026-12-31 |  |  |  |
|  | 3 | **TSE Network** |  | 2026-02-15 | 2026-06-28 |  |  |  |
|  | 1 | **Valves / Chambers** |  | 2026-02-15 | 2026-06-28 |  |  |  |
| JDH4-02-007-PR-1270 |  | PO for Valves / Chambers | 5d | 2026-02-15 | 2026-02-19 | JDH4-02-007-MA-1450 FS+30d |  | 39d |
| JDH4-02-007-PR-1277 |  | Material Fabrication for Valves / Chambers - Stage 1 | 8d | 2026-02-21 | 2026-03-02 | JDH4-02-007-PR-1270 |  | 39d |
| JDH4-02-007-PR-1278 |  | Material Fabrication for Valves / Chambers - Stage 2 | 30d | 2026-03-03 | 2026-04-09 | JDH4-02-007-PR-1277 |  | 39d |
| JDH4-02-007-PR-1279 |  | Material Fabrication for Valves / Chambers - Stage 3 | 20d | 2026-04-11 | 2026-05-03 | JDH4-02-007-PR-1278 |  | 39d |
| JDH4-02-007-PR-1280 |  | Material Fabrication for Valves / Chambers - Stage 4 | 20d | 2026-05-04 | 2026-05-30 | JDH4-02-007-PR-1279 |  | 39d |
| JDH4-02-007-PR-1290 |  | Material Delivery for Valves / Chambers | 18d | 2026-05-31 | 2026-06-20 | JDH4-02-007-PR-1280 |  | 39d |
| JDH4-02-007-PR-1820 |  | Staging Time for Valves / Chambers | 7d | 2026-06-21 | 2026-06-28 | JDH4-02-007-PR-1290 |  | 39d |
|  | 2 | **Risers** |  | 2026-02-17 | 2026-05-16 |  |  |  |
| JDH4-02-007-PR-1900 |  | PO for Risers | 5d | 2026-02-17 | 2026-02-23 | JDH4-02-007-MA-1470 FS+32d |  | 10d |
| JDH4-02-007-PR-1907 |  | Material Fabrication for Risers - Stage 1 | 12d | 2026-02-24 | 2026-03-09 | JDH4-02-007-PR-1900 |  | 10d |
| JDH4-02-007-PR-1908 |  | Material Fabrication for Risers - Stage 2 | 12d | 2026-03-10 | 2026-03-26 | JDH4-02-007-PR-1907 |  | 10d |

| ID | WBS | Task | Duration | Start | Finish | Predecessors | Total float |
| --- | --- | --- | --- | --- | --- | --- | --- |
| JDH4-02-007-PR-1909 |  | Material Fabrication for Risers - Stage 3 | 12d | 2026-03-28 | 2026-04-09 | JDH4-02-007-PR-1908 | 10d |
| JDH4-02-007-PR-1910 |  | Material Fabrication for Risers - Stage 4 | 12d | 2026-04-11 | 2026-04-23 | JDH4-02-007-PR-1909 | 10d |
| JDH4-02-007-PR-1920 |  | Material Delivery for Risers | 12d | 2026-04-25 | 2026-05-07 | JDH4-02-007-PR-1910 | 10d |
| JDH4-02-007-PR-1930 |  | Staging Time for Risers | 7d | 2026-05-09 | 2026-05-16 | JDH4-02-007-PR-1920 | 10d |
|  | 2 | **Potable Water Network** |  | 2026-02-21 | 2026-08-13 |  |  |
|  | 1 | **Valves / Chambers** |  | 2026-02-21 | 2026-04-28 |  |  |
| JDH4-02-007-PR-1240 |  | PO for Valves / Chambers | 5d | 2026-02-21 | 2026-02-26 | JDH4-02-007-MA-1430 FS+35d | 40d |
| JDH4-02-007-PR-1248 |  | Material Fabrication for Valves / Chambers - Stage 1 | 10d | 2026-02-28 | 2026-03-10 | JDH4-02-007-PR-1240 | 40d |
| JDH4-02-007-PR-1249 |  | Material Fabrication for Valves / Chambers - Stage 2 | 10d | 2026-03-11 | 2026-03-25 | JDH4-02-007-PR-1248 | 40d |
| JDH4-02-007-PR-1250 |  | Material Fabrication for Valves / Chambers - Stage 3 | 10d | 2026-03-29 | 2026-04-08 | JDH4-02-007-PR-1249, JDH4-02-007-PR-1710, JDH4-02-007-PR-1710R | 38d |
| JDH4-02-007-PR-1260 |  | Material Delivery for Valves / Chambers | 10d | 2026-04-09 | 2026-04-20 | JDH4-02-007-PR-1250 | 38d |
| JDH4-02-007-PR-1810 |  | Staging Time for Valves / Chambers | 7d | 2026-04-21 | 2026-04-28 | JDH4-02-007-PR-1260 | 38d |
|  | 2 | **Fire Hydrants** |  | 2026-02-21 | 2026-08-13 |  |  |
| JDH4-02-007-PR-2440 |  | PO for Fire Hydrant | 5d | 2026-02-21 | 2026-02-26 | JDH4-02-007-MA-1670 FS+35d | 17d |
| JDH4-02-007-PR-2447 |  | Material Fabrication for Fire Hydrant - Stage 1 | 30d | 2026-02-28 | 2026-04-06 | JDH4-02-007-PR-2440 | 17d |
| JDH4-02-007-PR-2448 |  | Material Fabrication for Fire Hydrant - Stage 2 | 20d | 2026-04-07 | 2026-04-29 | JDH4-02-007-PR-2447 | 17d |
| JDH4-02-007-PR-2449 |  | Material Fabrication for Fire Hydrant - Stage 3 | 20d | 2026-04-30 | 2026-05-23 | JDH4-02-007-PR-2448 | 17d |
| JDH4-02-007-PR-2450 |  | Material Fabrication for Fire Hydrant - Stage 4 | 25d | 2026-05-24 | 2026-06-24 | JDH4-02-007-PR-2449, JDH4-02-007-PR-1810 | 17d |
| JDH4-02-007-PR-2460 |  | Material Delivery for Fire Hydrant | 25d | 2026-06-25 | 2026-07-23 | JDH4-02-007-PR-2450 | 17d |
| JDH4-02-007-PR-2470 |  | Staging Time for Fire Hydrant | 7d | 2026-08-06 | 2026-08-13 | JDH4-02-007-PR-2460, JDH4-02-007-PR-1860, JDH4-02-007-PR-2370, JDH4-02-007-PR-1820 | 6d |
|  | 1 | **Electrical Network** |  | 2026-02-03 | 2026-12-31 |  |  |
|  | 1 | **Medium Voltage Cable** |  | 2026-11-14 | 2026-12-31 |  |  |
| JDH4-02-007-PR-1000 |  | PO for Medium Voltage Cable | 7d | 2026-11-14 | 2026-11-21 | JDH4-02-007-MA-1310 | 0d |
| JDH4-02-007-PR-1059 |  | Material Fabrication for Medium Voltage Cable - Stage 1 | 25d | 2026-11-22 | 2026-12-20 | JDH4-02-007-PR-1000 | 0d |
| JDH4-02-007-PR-1060 |  | Material Fabrication for Medium Voltage Cable - Stage 2 | 25d | 2026-11-22 | 2026-12-20 | JDH4-02-007-PR-1059 SS | 0d |
| JDH4-02-007-PR-1120 |  | Material Delivery for Medium Voltage Cable | 10d | 2026-12-21 | 2026-12-31 | JDH4-02-007-PR-1060 | 0d |
| JDH4-02-007-PR-1750 |  | Staging Time for Medium Voltage Cable | 10d | 2026-12-21 | 2026-12-31 | JDH4-02-007-PR-1120 SS, JDH4-02-007-PR-2430 | 0d |
|  | 4 | **Unit Sub Station** |  | 2026-02-25 | 2026-08-20 |  |  |
| JDH4-02-007-PR-1010 |  | PO for Unit Sub-station | 19d | 2026-02-25 | 2026-03-22 | JDH4-02-007-MA-1390 | 42d |
| JDH4-02-007-PR-1067 |  | Material Fabrication for Unit Sub-station - Stage 1 | 5d | 2026-03-23 | 2026-03-28 | JDH4-02-007-PR-1010 | 42d |
| JDH4-02-007-PR-1068 |  | Material Fabrication for Unit Sub-station - Stage 2 | 30d | 2026-03-29 | 2026-05-02 | JDH4-02-007-PR-1067 | 42d |
| JDH4-02-007-PR-1069 |  | Material Fabrication for Unit Sub-station - Stage 3 | 30d | 2026-05-03 | 2026-06-09 | JDH4-02-007-PR-1068 | 42d |
| JDH4-02-007-PR-1070 |  | Material Fabrication for Unit Sub-station - Stage 4 | 30d | 2026-06-10 | 2026-07-14 | JDH4-02-007-PR-1069 | 42d |
| JDH4-02-007-PR-1130 |  | Material Delivery for Unit Sub-station | 25d | 2026-07-15 | 2026-08-12 | JDH4-02-007-PR-1070 | 42d |
| JDH4-02-007-PR-1760 |  | Staging Time for Unit Sub-station | 7d | 2026-08-13 | 2026-08-20 | JDH4-02-007-PR-1130 | 42d |
|  | 5 | **Low Voltage Cables** |  | 2026-02-03 | 2026-06-10 |  |  |
| JDH4-02-007-PR-1020 |  | PO for Low Voltage Cables | 7d | 2026-02-03 | 2026-02-10 | JDH4-02-007-MA-1330 | 22d |
| JDH4-02-007-PR-1078 |  | Material Fabrication for Low Voltage Cables - Stage 1 | 11d | 2026-02-11 | 2026-02-24 | JDH4-02-007-PR-1020 | 36d |
| JDH4-02-007-PR-1079 |  | Material Fabrication for Low Voltage Cables - Stage 2 | 25d | 2026-02-25 | 2026-03-29 | JDH4-02-007-PR-1078 | 36d |
| JDH4-02-007-PR-1080 |  | Material Fabrication for Low Voltage Cables - Stage 3 | 25d | 2026-03-30 | 2026-04-27 | JDH4-02-007-PR-1079 | 36d |
| JDH4-02-007-PR-1140 |  | Material Delivery for Low Voltage Cables | 28d | 2026-04-28 | 2026-06-02 | JDH4-02-007-PR-1080 | 36d |
| JDH4-02-007-PR-1770 |  | Staging Time for Low Voltage Cables | 7d | 2026-06-03 | 2026-06-10 | JDH4-02-007-PR-1140 | 36d |
|  | 2 | **Ring Main Unit** |  | 2026-02-28 | 2026-07-23 |  |  |
| JDH4-02-007-PR-1940 |  | PO for Ring Main Unit | 5d | 2026-02-28 | 2026-03-04 | JDH4-02-007-MA-1410, JDH4-02-007-PR-1020 | 9d |
| JDH4-02-007-PR-1948 |  | Material Fabrication for Ring Main Unit - Stage 1 | 25d | 2026-03-05 | 2026-04-06 | JDH4-02-007-PR-1940 | 9d |
| JDH4-02-007-PR-1949 |  | Material Fabrication for Ring Main Unit - Stage 2 | 25d | 2026-04-07 | 2026-05-05 | JDH4-02-007-PR-1948 | 9d |
| JDH4-02-007-PR-1950 |  | Material Fabrication for Ring Main Unit - Stage 3 | 25d | 2026-05-06 | 2026-06-07 | JDH4-02-007-PR-1949 | 9d |
| JDH4-02-007-PR-1960 |  | Material Delivery for Ring Main Unit | 28d | 2026-06-08 | 2026-07-09 | JDH4-02-007-PR-1950, JDH4-02-007-PR-2420 | 9d |
| JDH4-02-007-PR-1970 |  | Staging Time for Ring Main Unit | 12d | 2026-07-11 | 2026-07-23 | JDH4-02-007-PR-1960, JDH4-02-007-PR-1770, JDH4-02-007-PR-1770 FF | 32d |
|  | 6 | **Lighting poles** |  | 2026-03-05 | 2026-08-19 |  |  |
| JDH4-02-007-PR-1030 |  | PO for Lighting poles | 4d | 2026-03-05 | 2026-03-09 | JDH4-02-007-MA-1350, JDH4-02-007-PR-1940 | 33d |
| JDH4-02-007-PR-1088 |  | Material Fabrication for Lighting poles - Stage 1 | 11d | 2026-03-10 | 2026-03-25 | JDH4-02-007-PR-1030 | 47d |
| JDH4-02-007-PR-1089 |  | Material Fabrication for Lighting poles - Stage 2 | 25d | 2026-03-26 | 2026-04-23 | JDH4-02-007-PR-1088 | 47d |
| JDH4-02-007-PR-1090 |  | Material Fabrication for Lighting poles - Stage 3 | 25d | 2026-04-25 | 2026-05-23 | JDH4-02-007-PR-1089 | 47d |
| JDH4-02-007-PR-1150 |  | Material Delivery for Lighting poles | 28d | 2026-07-11 | 2026-08-11 | JDH4-02-007-PR-1090, JDH4-02-007-PR-1960 | 9d |
| JDH4-02-007-PR-1780 |  | Staging Time for Lighting poles | 7d | 2026-08-12 | 2026-08-19 | JDH4-02-007-PR-1150, JDH4-02-007-PR-1770 | 9d |
|  | 7 | **Street Lighting Luminaire** |  | 2026-03-10 | 2026-09-02 |  |  |
| JDH4-02-007-PR-1040 |  | PO for Street Lighting Luminaire | 7d | 2026-03-10 | 2026-03-17 | JDH4-02-007-MA-1370, JDH4-02-007-PR-1030 | 33d |
| JDH4-02-007-PR-1098 |  | Material Fabrication for Street Lighting Luminaire - Stage 1 | 25d | 2026-03-22 | 2026-04-19 | JDH4-02-007-PR-1040 | 33d |
| JDH4-02-007-PR-1099 |  | Material Fabrication for Street Lighting Luminaire - Stage 2 | 25d | 2026-04-20 | 2026-05-18 | JDH4-02-007-PR-1098 | 33d |
| JDH4-02-007-PR-1100 |  | Material Fabrication for Street Lighting Luminaire - Stage 3 | 25d | 2026-05-19 | 2026-06-20 | JDH4-02-007-PR-1099 | 33d |
| JDH4-02-007-PR-1160 |  | Material Delivery for Street Lighting Luminaire | 28d | 2026-06-21 | 2026-07-22 | JDH4-02-007-PR-1100 | 33d |
| JDH4-02-007-PR-1790 |  | Staging Time for Street Lighting Luminaire | 12d | 2026-08-20 | 2026-09-02 | JDH4-02-007-PR-1160, JDH4-02-007-PR-1970, JDH4-02-007-PR-1780 | 9d |
|  | 9 | **Lighting panels/Feeder Pillers** |  | 2026-03-08 | 2026-08-27 |  |  |
| JDH4-02-007-PR-1050 |  | PO for Lighting Panels/Feeder Pillers | 4d | 2026-03-08 | 2026-03-11 | JDH4-02-007-MA-1520 | 27d |
| JDH4-02-007-PR-1108 |  | Material Fabrication for Lighting Panels/Feeder Pillers - Stage 1 | 25d | 2026-03-12 | 2026-04-13 | JDH4-02-007-PR-1050 | 43d |
| JDH4-02-007-PR-1109 |  | Material Fabrication for Lighting Panels/Feeder Pillers - Stage 2 | 25d | 2026-04-14 | 2026-05-12 | JDH4-02-007-PR-1108 | 43d |
| JDH4-02-007-PR-1110 |  | Material Fabrication for Lighting Panels/Feeder Pillers - Stage 3 | 25d | 2026-05-13 | 2026-06-14 | JDH4-02-007-PR-1109 | 43d |
| JDH4-02-007-PR-1170 |  | Material Delivery for Lighting Panels/Feeder Pillers | 28d | 2026-06-15 | 2026-07-16 | JDH4-02-007-PR-1110 | 43d |
| JDH4-02-007-PR-1800 |  | Staging Time for Lighting Panels/Feeder Pillers | 7d | 2026-08-20 | 2026-08-27 | JDH4-02-007-PR-1170, JDH4-02-007-PR-1780, JDH4-02-007-PR-1160 | 14d |

| ID | WBS | Task | Duration | Start | Finish | Predecessors | Complete | Total float |
| --- | --- | --- | --- | --- | --- | --- | --- | --- |
|  | 11 | **Low Voltage Distribution Panels** |  | 2026-03-12 | 2026-09-05 |  |  |  |
| JDH4-02-007-PR-2480 |  | PO for Low Voltage Distribution Panels | 7d | 2026-03-12 | 2026-03-23 | JDH4-02-007-MA-1150, JDH4-02-007-PR-1050 |  | 27d |
| JDH4-02-007-PR-2488 |  | Material Fabrication for Low Voltage Distribution Panels - Stage 1 | 21d | 2026-03-24 | 2026-04-16 | JDH4-02-007-PR-2480 |  | 27d |
| JDH4-02-007-PR-2489 |  | Material Fabrication for Low Voltage Distribution Panels - Stage 2 | 20d | 2026-04-18 | 2026-05-10 | JDH4-02-007-PR-2488 |  | 27d |
| JDH4-02-007-PR-2490 |  | Material Fabrication for Low Voltage Distribution Panels - Stage 3 | 20d | 2026-05-11 | 2026-06-06 | JDH4-02-007-PR-2489 |  | 27d |
| JDH4-02-007-PR-2500 |  | Material Delivery for Low Voltage Distribution Panels | 28d | 2026-06-07 | 2026-07-08 | JDH4-02-007-PR-2490 |  | 27d |
| JDH4-02-007-PR-2510 |  | Staging Time for Low Voltage Distribution Panels | 7d | 2026-08-29 | 2026-09-05 | JDH4-02-007-PR-2500, JDH4-02-007-PR-1800 |  | 29d |
|  | 6 | **Sewage Lift Station** |  | 2026-01-28 | 2026-12-24 |  |  |  |
|  | 5 | **Odours scrubbing system** |  | 2026-03-11 | 2026-08-26 |  |  |  |
| JDH4-02-007-PR-1990 |  | PO for Odours scrubbing system | 4d | 2026-03-11 | 2026-03-15 | JDH4-02-007-MA-1710 FS+35d |  | 7d |
| JDH4-02-007-PR-2037 |  | Material Fabrication for Odours scrubbing system - Stage 1 | 25d | 2026-03-16 | 2026-04-16 | JDH4-02-007-PR-1990 |  | 30d |
| JDH4-02-007-PR-2038 |  | Material Fabrication for Odours scrubbing system - Stage 2 | 25d | 2026-04-18 | 2026-05-16 | JDH4-02-007-PR-2037 |  | 30d |
| JDH4-02-007-PR-2039 |  | Material Fabrication for Odours scrubbing system - Stage 3 | 25d | 2026-05-17 | 2026-06-17 | JDH4-02-007-PR-2038 |  | 30d |
| JDH4-02-007-PR-2040 |  | Material Fabrication for Odours scrubbing system - Stage 4 | 25d | 2026-06-18 | 2026-07-16 | JDH4-02-007-PR-2039, JDH4-02-007-PR-1770 |  | 30d |
| JDH4-02-007-PR-2090 |  | Material Delivery for Odours scrubbing system | 28d | 2026-07-18 | 2026-08-18 | JDH4-02-007-PR-2040 |  | 30d |
| JDH4-02-007-PR-2140 |  | Staging Time for Odours scrubbing system | 7d | 2026-08-19 | 2026-08-26 | JDH4-02-007-PR-2090, JDH4-02-007-PR-2470 |  | 30d |
|  | 2 | **Crane** |  | 2026-03-16 | 2026-09-30 |  |  |  |
| JDH4-02-007-PR-2180 |  | PO for Crane | 7d | 2026-03-16 | 2026-03-26 | JDH4-02-007-MA-1730, JDH4-02-007-PR-1990 |  | 9d |
| JDH4-02-007-PR-2187 |  | Material Fabrication for Crane - Stage 1 | 19d | 2026-03-28 | 2026-04-18 | JDH4-02-007-PR-2180 |  | 14d |
| JDH4-02-007-PR-2188 |  | Material Fabrication for Crane - Stage 2 | 20d | 2026-04-19 | 2026-05-11 | JDH4-02-007-PR-2187 |  | 14d |
| JDH4-02-007-PR-2189 |  | Material Fabrication for Crane - Stage 3 | 30d | 2026-05-12 | 2026-06-18 | JDH4-02-007-PR-2188 |  | 14d |
| JDH4-02-007-PR-2190 |  | Material Fabrication for Crane - Stage 4 | 30d | 2026-06-20 | 2026-07-23 | JDH4-02-007-PR-2189 |  | 14d |
| JDH4-02-007-PR-2200 |  | Material Delivery for Crane | 28d | 2026-08-20 | 2026-09-21 | JDH4-02-007-PR-2190, JDH4-02-007-PR-1780 |  | 35d |
| JDH4-02-007-PR-2210 |  | Staging Time for Crane | 7d | 2026-09-22 | 2026-09-30 | JDH4-02-007-PR-2200, JDH4-02-007-PR-2140 SS |  | 35d |
|  | 6 | **Air Vents** |  | 2026-03-28 | 2026-12-16 |  |  |  |
| JDH4-02-007-PR-2000 |  | PO for Air Vents | 7d | 2026-03-28 | 2026-04-04 | JDH4-02-007-MA-1820, JDH4-02-007-PR-2180 |  | 9d |
| JDH4-02-007-PR-2045 |  | Material Fabrication for Air Vents - Stage 1 | 14d | 2026-04-05 | 2026-04-20 | JDH4-02-007-PR-2000 |  | 31d |
| JDH4-02-007-PR-2046 |  | Material Fabrication for Air Vents - Stage 2 | 20d | 2026-04-21 | 2026-05-13 | JDH4-02-007-PR-2045 |  | 31d |
| JDH4-02-007-PR-2047 |  | Material Fabrication for Air Vents - Stage 3 | 30d | 2026-05-14 | 2026-06-21 | JDH4-02-007-PR-2046 |  | 31d |
| JDH4-02-007-PR-2048 |  | Material Fabrication for Air Vents - Stage 4 | 30d | 2026-07-23 | 2026-08-26 | JDH4-02-007-PR-2047, JDH4-02-007-MS-1060 |  | 4d |
| JDH4-02-007-PR-2049 |  | Material Fabrication for Air Vents - Stage 5 | 30d | 2026-08-27 | 2026-10-01 | JDH4-02-007-PR-2048 |  | 4d |
| JDH4-02-007-PR-2050 |  | Material Fabrication for Air Vents - Stage 6 | 30d | 2026-10-03 | 2026-11-05 | JDH4-02-007-PR-2049 |  | 4d |
| JDH4-02-007-PR-2100 |  | Material Delivery for Air Vents | 28d | 2026-11-07 | 2026-12-08 | JDH4-02-007-PR-2050, JDH4-02-007-PR-2210 |  | 4d |
| JDH4-02-007-PR-2150 |  | Staging Time for Air Vents | 7d | 2026-12-09 | 2026-12-16 | JDH4-02-007-PR-2100, JDH4-02-007-PR-2210 |  | 4d |
|  | 3 | **Screening Container** |  | 2026-03-24 | 2026-11-15 |  |  |  |
| JDH4-02-007-PR-2220 |  | PO for Screening Container | 7d | 2026-03-24 | 2026-03-31 | JDH4-02-007-MA-1760 |  | 38d |
| JDH4-02-007-PR-2225 |  | Material Fabrication for Screening Container - Stage 1 | 14d | 2026-04-01 | 2026-04-16 | JDH4-02-007-PR-2220 |  | 38d |
| JDH4-02-007-PR-2226 |  | Material Fabrication for Screening Container - Stage 2 | 20d | 2026-04-18 | 2026-05-10 | JDH4-02-007-PR-2225 |  | 38d |
| JDH4-02-007-PR-2227 |  | Material Fabrication for Screening Container - Stage 3 | 30d | 2026-05-11 | 2026-06-17 | JDH4-02-007-PR-2226 |  | 38d |
| JDH4-02-007-PR-2228 |  | Material Fabrication for Screening Container - Stage 4 | 30d | 2026-06-18 | 2026-07-22 | JDH4-02-007-PR-2227 |  | 38d |
| JDH4-02-007-PR-2229 |  | Material Fabrication for Screening Container - Stage 5 | 30d | 2026-07-23 | 2026-08-26 | JDH4-02-007-PR-2228 |  | 38d |
| JDH4-02-007-PR-2230 |  | Material Fabrication for Screening Container - Stage 6 | 30d | 2026-08-27 | 2026-10-01 | JDH4-02-007-PR-2229 |  | 38d |
| JDH4-02-007-PR-2240 |  | Material Delivery for Screening Container | 28d | 2026-10-03 | 2026-11-03 | JDH4-02-007-PR-2230 |  | 38d |
| JDH4-02-007-PR-2250 |  | Staging Time for Screening Container | 10d | 2026-11-04 | 2026-11-15 | JDH4-02-007-PR-2240 |  | 38d |
|  | 7 | **Baffle Plates** |  | 2026-04-05 | 2026-09-29 |  |  |  |
| JDH4-02-007-PR-2010 |  | PO for Baffle Plates | 7d | 2026-04-05 | 2026-04-12 | JDH4-02-007-MA-1830, JDH4-02-007-PR-2000 |  | 9d |
| JDH4-02-007-PR-2057 |  | Material Fabrication for Baffle Plates - Stage 1 | 30d | 2026-04-13 | 2026-05-17 | JDH4-02-007-PR-2010 |  | 9d |
| JDH4-02-007-PR-2058 |  | Material Fabrication for Baffle Plates - Stage 2 | 30d | 2026-05-18 | 2026-06-24 | JDH4-02-007-PR-2057, JDH4-02-007-PR-1930 |  | 9d |
| JDH4-02-007-PR-2059 |  | Material Fabrication for Baffle Plates - Stage 3 | 30d | 2026-06-25 | 2026-07-29 | JDH4-02-007-PR-2058 |  | 9d |
| JDH4-02-007-PR-2060 |  | Material Fabrication for Baffle Plates - Stage 4 | 30d | 2026-07-30 | 2026-09-02 | JDH4-02-007-PR-2059, JDH4-02-007-PR-2190, JDH4-02-007-PR-2500 |  | 9d |
| JDH4-02-007-PR-2110 |  | Material Delivery for Baffle Plates | 15d | 2026-09-03 | 2026-09-20 | JDH4-02-007-PR-2060, JDH4-02-007-PR-1800, JDH4-02-007-PR-1790 |  | 9d |
| JDH4-02-007-PR-2160 |  | Staging Time for Baffle Plates | 7d | 2026-09-21 | 2026-09-29 | JDH4-02-007-PR-2110, JDH4-02-007-PR-2140, JDH4-02-007-PR-1760 SS |  | 9d |
|  | 8 | **Anti-Water Hammer Equipment** |  | 2026-03-30 | 2026-11-29 |  |  |  |
| JDH4-02-007-PR-2020 |  | PO for Anti-Water Hammer Equipment | 8d | 2026-03-30 | 2026-04-07 | JDH4-02-007-MA-1850 |  | 31d |
| JDH4-02-007-PR-2065 |  | Material Fabrication for Anti-Water Hammer Equipment - Stage 1 | 14d | 2026-04-08 | 2026-04-23 | JDH4-02-007-PR-2020 |  | 31d |
| JDH4-02-007-PR-2066 |  | Material Fabrication for Anti-Water Hammer Equipment - Stage 2 | 20d | 2026-04-25 | 2026-05-17 | JDH4-02-007-PR-2065 |  | 31d |
| JDH4-02-007-PR-2067 |  | Material Fabrication for Anti-Water Hammer Equipment - Stage 3 | 30d | 2026-05-18 | 2026-06-24 | JDH4-02-007-PR-2066 |  | 31d |
| JDH4-02-007-PR-2068 |  | Material Fabrication for Anti-Water Hammer Equipment - Stage 4 | 30d | 2026-06-25 | 2026-07-29 | JDH4-02-007-PR-2067 |  | 31d |
| JDH4-02-007-PR-2069 |  | Material Fabrication for Anti-Water Hammer Equipment - Stage 5 | 30d | 2026-07-30 | 2026-09-02 | JDH4-02-007-PR-2068 |  | 31d |
| JDH4-02-007-PR-2070 |  | Material Fabrication for Anti-Water Hammer Equipment - Stage 6 | 30d | 2026-09-30 | 2026-11-03 | JDH4-02-007-PR-2069, JDH4-02-007-PR-2160 |  | 32d |
| JDH4-02-007-PR-2120 |  | Material Delivery for Anti-Water Hammer Equipment | 15d | 2026-11-04 | 2026-11-21 | JDH4-02-007-PR-2070, JDH4-02-007-PR-2210 |  | 32d |
| JDH4-02-007-PR-2170 |  | Staging Time for Anti-Water Hammer Equipment | 7d | 2026-11-22 | 2026-11-29 | JDH4-02-007-PR-2120 |  | 32d |
|  | 4 | **Pumps** |  | 2026-01-28 | 2026-09-14 |  |  |  |
| JDH4-02-007-PR-1980 |  | PO for Pumps | 2d | 2026-01-28 A | 2026-01-29 A | JDH4-02-007-MA-1570 | 100% |  |
| JDH4-02-007-PR-2026 |  | Material Fabrication for Pumps - Stage 1 | 30d | 2026-02-03 | 2026-03-10 | JDH4-02-007-PR-1980 |  | 28d |
| JDH4-02-007-PR-2027 |  | Material Fabrication for Pumps - Stage 2 | 30d | 2026-03-11 | 2026-04-18 | JDH4-02-007-PR-2026 |  | 28d |
| JDH4-02-007-PR-2028 |  | Material Fabrication for Pumps - Stage 3 | 30d | 2026-04-19 | 2026-05-23 | JDH4-02-007-PR-2027 |  | 28d |
| JDH4-02-007-PR-2029 |  | Material Fabrication for Pumps - Stage 4 | 30d | 2026-05-24 | 2026-06-30 | JDH4-02-007-PR-2028 |  | 28d |
| JDH4-02-007-PR-2030 |  | Material Fabrication for Pumps - Stage 5 | 30d | 2026-07-01 | 2026-08-04 | JDH4-02-007-PR-2029 |  | 28d |
| JDH4-02-007-PR-2080 |  | Material Delivery for Pumps | 28d | 2026-08-05 | 2026-09-06 | JDH4-02-007-PR-2030 |  | 28d |

| ID | WBS | Task | Duration | Start | Finish | Predecessors | Total float |
| --- | --- | --- | --- | --- | --- | --- | --- |
| JDH4-02-007-PR-2130 |  | Staging Time for Pumps | 7d | 2026-09-07 | 2026-09-14 | JDH4-02-007-PR-2080, JDH4-02-007-PR-2069, JDH4-02-007-PR-2510 | 28d |
|  | 9 | **Main Distribution Board /MCC panels** |  | 2026-03-05 | 2026-08-20 |  |  |
| JDH4-02-007-PR-2530 |  | PO for Main Distribution Board / MCC panels | 4d | 2026-03-05 | 2026-03-09 | JDH4-02-007-SB-1870, JDH4-02-007-MA-1870 | 13d |
| JDH4-02-007-PR-2567 |  | Material Fabrication for Main Distribution Board / MCC panels - Stage 1 | 25d | 2026-03-10 | 2026-04-11 | JDH4-02-007-PR-2530 | 19d |
| JDH4-02-007-PR-2568 |  | Material Fabrication for Main Distribution Board / MCC panels - Stage 2 | 25d | 2026-04-12 | 2026-05-10 | JDH4-02-007-PR-2567 | 19d |
| JDH4-02-007-PR-2569 |  | Material Fabrication for Main Distribution Board / MCC panels - Stage 3 | 25d | 2026-05-11 | 2026-06-11 | JDH4-02-007-PR-2568 | 19d |
| JDH4-02-007-PR-2570 |  | Material Fabrication for Main Distribution Board / MCC panels - Stage 4 | 25d | 2026-06-13 | 2026-07-11 | JDH4-02-007-PR-2569 | 19d |
| JDH4-02-007-PR-2610 |  | Material Delivery for Main Distribution Board / MCC panels | 28d | 2026-07-12 | 2026-08-12 | JDH4-02-007-PR-2570 | 19d |
| JDH4-02-007-PR-2650 |  | Staging Time for Main Distribution Board / MCC panels | 7d | 2026-08-13 | 2026-08-20 | JDH4-02-007-PR-2610 | 19d |
|  | 10 | **Final Panel boards** |  | 2026-03-01 | 2026-08-18 |  |  |
| JDH4-02-007-PR-2680 |  | PO for Final Panel Boards | 7d | 2026-03-01 | 2026-03-08 | JDH4-02-007-MA-1890 | 21d |
| JDH4-02-007-PR-2687 |  | Material Fabrication for Final Panel Boards - Stage 1 | 9d | 2026-03-09 | 2026-03-22 | JDH4-02-007-PR-2680 | 21d |
| JDH4-02-007-PR-2688 |  | Material Fabrication for Final Panel Boards - Stage 2 | 30d | 2026-03-23 | 2026-04-26 | JDH4-02-007-PR-2687 | 21d |
| JDH4-02-007-PR-2689 |  | Material Fabrication for Final Panel Boards - Stage 3 | 30d | 2026-04-27 | 2026-06-03 | JDH4-02-007-PR-2688 | 21d |
| JDH4-02-007-PR-2690 |  | Material Fabrication for Final Panel Boards - Stage 4 | 30d | 2026-06-04 | 2026-07-08 | JDH4-02-007-PR-2689 | 21d |
| JDH4-02-007-PR-2700 |  | Material Delivery for Final Panel Boards | 28d | 2026-07-09 | 2026-08-10 | JDH4-02-007-PR-2690 | 21d |
| JDH4-02-007-PR-2710 |  | Staging Time for Final Panel Boards | 7d | 2026-08-11 | 2026-08-18 | JDH4-02-007-PR-2700 | 21d |
|  | 11 | **Local Control Panel/ Monitoring Control Panel** |  | 2026-03-09 | 2026-11-10 |  |  |
| JDH4-02-007-PR-2540 |  | PO for Local Control Panel/ Monitoring Control Panel | 7d | 2026-03-09 | 2026-03-16 | JDH4-02-007-MA-1910 | 21d |
| JDH4-02-007-PR-2576 |  | Material Fabrication for Local Control Panel/ Monitoring Control Panel - Stage 1 | 30d | 2026-03-17 | 2026-04-23 | JDH4-02-007-PR-2540 | 21d |
| JDH4-02-007-PR-2577 |  | Material Fabrication for Local Control Panel/ Monitoring Control Panel - Stage 2 | 30d | 2026-04-25 | 2026-06-01 | JDH4-02-007-PR-2576 | 21d |
| JDH4-02-007-PR-2578 |  | Material Fabrication for Local Control Panel/ Monitoring Control Panel - Stage 3 | 30d | 2026-06-02 | 2026-07-06 | JDH4-02-007-PR-2577 | 21d |
| JDH4-02-007-PR-2579 |  | Material Fabrication for Local Control Panel/ Monitoring Control Panel - Stage 4 | 30d | 2026-07-07 | 2026-08-10 | JDH4-02-007-PR-2578 | 21d |
| JDH4-02-007-PR-2580 |  | Material Fabrication for Local Control Panel/ Monitoring Control Panel - Stage 5 | 30d | 2026-08-11 | 2026-09-14 | JDH4-02-007-PR-2579 | 21d |
| JDH4-02-007-PR-2620 |  | Material Delivery for Local Control Panel/ Monitoring Control Panel | 28d | 2026-10-01 | 2026-11-02 | JDH4-02-007-PR-2580, JDH4-02-007-PR-2650, JDH4-02-007-PR-2210 | 36d |
| JDH4-02-007-PR-2660 |  | Staging Time for Local Control Panel/ Monitoring Control Panel | 7d | 2026-11-03 | 2026-11-10 | JDH4-02-007-PR-2620 | 36d |
|  | 12 | **Engine Generators** |  | 2026-03-28 | 2026-11-18 |  |  |
| JDH4-02-007-PR-2720 |  | PO for Engine Generators | 7d | 2026-03-28 | 2026-04-04 | JDH4-02-007-MA-2070, JDH4-02-007-PR-2180 | 21d |
| JDH4-02-007-PR-2726 |  | Material Fabrication for Engine Generators - Stage 1 | 30d | 2026-04-05 | 2026-05-09 | JDH4-02-007-PR-2720 | 21d |
| JDH4-02-007-PR-2727 |  | Material Fabrication for Engine Generators - Stage 2 | 30d | 2026-05-10 | 2026-06-16 | JDH4-02-007-PR-2726 | 21d |
| JDH4-02-007-PR-2728 |  | Material Fabrication for Engine Generators - Stage 3 | 30d | 2026-06-17 | 2026-07-21 | JDH4-02-007-PR-2727 | 21d |
| JDH4-02-007-PR-2729 |  | Material Fabrication for Engine Generators - Stage 4 | 30d | 2026-07-22 | 2026-08-25 | JDH4-02-007-PR-2728 | 21d |
| JDH4-02-007-PR-2730 |  | Material Fabrication for Engine Generators - Stage 5 | 30d | 2026-08-26 | 2026-09-30 | JDH4-02-007-PR-2729 | 21d |
| JDH4-02-007-PR-2740 |  | Material Delivery for Engine Generators | 28d | 2026-10-01 | 2026-11-02 | JDH4-02-007-PR-2730 | 21d |
| JDH4-02-007-PR-2750 |  | Staging Time for Engine Generators | 7d | 2026-11-11 | 2026-11-18 | JDH4-02-007-PR-2740, JDH4-02-007-PR-2660, JDH4-02-007-PR-2660 FF | 36d |
|  | 13 | **Standby Diesel Generator** |  | 2026-03-16 | 2026-10-07 |  |  |
| JDH4-02-007-PR-2550 |  | PO for Standby Diesel Generator | 7d | 2026-03-16 | 2026-03-26 | JDH4-02-007-MA-2050, JDH4-02-007-PR-1990 | 31d |
| JDH4-02-007-PR-2587 |  | Material Fabrication for Standby Diesel Generator - Stage 1 | 30d | 2026-03-28 | 2026-04-30 | JDH4-02-007-PR-2550 | 31d |
| JDH4-02-007-PR-2588 |  | Material Fabrication for Standby Diesel Generator - Stage 2 | 30d | 2026-05-02 | 2026-06-08 | JDH4-02-007-PR-2587 | 31d |
| JDH4-02-007-PR-2589 |  | Material Fabrication for Standby Diesel Generator - Stage 3 | 30d | 2026-06-09 | 2026-07-13 | JDH4-02-007-PR-2588 | 31d |
| JDH4-02-007-PR-2590 |  | Material Fabrication for Standby Diesel Generator - Stage 4 | 30d | 2026-07-14 | 2026-08-17 | JDH4-02-007-PR-2589 | 31d |
| JDH4-02-007-PR-2630 |  | Material Delivery for Standby Diesel Generator | 14d | 2026-08-18 | 2026-09-02 | JDH4-02-007-PR-2590, JDH4-02-007-PR-1970 | 31d |
| JDH4-02-007-PR-2670 |  | Staging Time for Standby Diesel Generator | 7d | 2026-09-30 | 2026-10-07 | JDH4-02-007-PR-2630, JDH4-02-007-PR-2710, JDH4-02-007-PR-2950, JDH4-02-007-PR-2160, JDH4-02-007-PR-2580 | 9d |
|  | 14 | **Power Factor Correction Capacitor Bank** |  | 2026-03-01 | 2026-12-24 |  |  |
| JDH4-02-007-PR-2760 |  | PO for Power Factor Correction Capacitor Bank | 16d | 2026-03-01 | 2026-03-22 | JDH4-02-007-MA-2010 | 22d |
| JDH4-02-007-PR-2795 |  | Material Fabrication for Power Factor Correction Capacitor Bank - Stage 1 | 14d | 2026-03-23 | 2026-04-07 | JDH4-02-007-PR-2760 | 22d |
| JDH4-02-007-PR-2796 |  | Material Fabrication for Power Factor Correction Capacitor Bank - Stage 2 | 20d | 2026-04-08 | 2026-04-30 | JDH4-02-007-PR-2795 | 22d |
| JDH4-02-007-PR-2797 |  | Material Fabrication for Power Factor Correction Capacitor Bank - Stage 3 | 30d | 2026-05-02 | 2026-06-08 | JDH4-02-007-PR-2796 | 22d |
| JDH4-02-007-PR-2798 |  | Material Fabrication for Power Factor Correction Capacitor Bank - Stage 4 | 30d | 2026-06-09 | 2026-07-13 | JDH4-02-007-PR-2797 | 22d |
| JDH4-02-007-PR-2799 |  | Material Fabrication for Power Factor Correction Capacitor Bank - Stage 5 | 30d | 2026-07-14 | 2026-08-17 | JDH4-02-007-PR-2798 | 22d |
| JDH4-02-007-PR-2800 |  | Material Fabrication for Power Factor Correction Capacitor Bank - Stage 6 | 30d | 2026-08-18 | 2026-09-21 | JDH4-02-007-PR-2799 | 22d |
| JDH4-02-007-PR-2840 |  | Material Delivery for Power Factor Correction Capacitor Bank | 28d | 2026-10-08 | 2026-11-09 | JDH4-02-007-PR-2800, JDH4-02-007-PR-2130, JDH4-02-007-PR-2670 | 9d |
| JDH4-02-007-PR-2880 |  | Staging Time for Power Factor Correction Capacitor Bank | 7d | 2026-12-17 | 2026-12-24 | JDH4-02-007-PR-2840, JDH4-02-007-PR-2170, JDH4-02-007-PR-2250, JDH4-02-007-PR-2150, JDH4-02-007-PR-2750 | 17d |
|  | 15 | **Low-Voltage Electrical Power Conductors and Cables** |  | 2026-03-16 | 2026-08-31 |  |  |
| JDH4-02-007-PR-2770 |  | PO for Low-Voltage Electrical Power Conductors and Cables | 4d | 2026-03-16 | 2026-03-23 | JDH4-02-007-MA-2030, JDH4-02-007-PR-1990 | 7d |
| JDH4-02-007-PR-2807 |  | Material Fabrication for Low-Voltage Electrical Power Conductors and Cables - Stage 1 | 25d | 2026-03-24 | 2026-04-21 | JDH4-02-007-PR-2770 | 15d |
| JDH4-02-007-PR-2808 |  | Material Fabrication for Low-Voltage Electrical Power Conductors and Cables - Stage 2 | 25d | 2026-04-22 | 2026-05-20 | JDH4-02-007-PR-2807 | 15d |
| JDH4-02-007-PR-2809 |  | Material Fabrication for Low-Voltage Electrical Power Conductors and Cables - Stage 3 | 25d | 2026-05-21 | 2026-06-22 | JDH4-02-007-PR-2808 | 15d |
| JDH4-02-007-PR-2810 |  | Material Fabrication for Low-Voltage Electrical Power Conductors and Cables - Stage 4 | 25d | 2026-06-23 | 2026-07-21 | JDH4-02-007-PR-2809 | 15d |
| JDH4-02-007-PR-2850 |  | Material Delivery for Low-Voltage Electrical Power Conductors and Cables | 28d | 2026-07-22 | 2026-08-23 | JDH4-02-007-PR-2810 | 15d |
| JDH4-02-007-PR-2890 |  | Staging Time for Low-Voltage Electrical Power Conductors and Cables | 7d | 2026-08-24 | 2026-08-31 | JDH4-02-007-PR-2850 | 15d |
|  | 16 | **Low Voltage Feeder Cable** |  | 2026-03-24 | 2026-09-07 |  |  |
| JDH4-02-007-PR-2920 |  | PO for Low Voltage Feeder Cable | 7d | 2026-03-24 | 2026-03-31 | JDH4-02-007-MA-1990, JDH4-02-007-PR-2770 | 7d |
| JDH4-02-007-PR-2927 |  | Material Fabrication for Low Voltage Feeder Cable - Stage 1 | 9d | 2026-04-01 | 2026-04-11 | JDH4-02-007-PR-2920 | 25d |
| JDH4-02-007-PR-2928 |  | Material Fabrication for Low Voltage Feeder Cable - Stage 2 | 30d | 2026-04-12 | 2026-05-16 | JDH4-02-007-PR-2927 | 25d |
| JDH4-02-007-PR-2929 |  | Material Fabrication for Low Voltage Feeder Cable - Stage 3 | 30d | 2026-05-17 | 2026-06-23 | JDH4-02-007-PR-2928 | 25d |
| JDH4-02-007-PR-2930 |  | Material Fabrication for Low Voltage Feeder Cable - Stage 4 | 30d | 2026-06-24 | 2026-07-28 | JDH4-02-007-PR-2929 | 25d |
| JDH4-02-007-PR-2940 |  | Material Delivery for Low Voltage Feeder Cable | 28d | 2026-07-29 | 2026-08-30 | JDH4-02-007-PR-2930 | 25d |
| JDH4-02-007-PR-2950 |  | Staging Time for Low Voltage Feeder Cable | 7d | 2026-08-31 | 2026-09-07 | JDH4-02-007-PR-2940 | 25d |
|  | 17 | **Wiring Devices** |  | 2026-03-02 | 2026-11-26 |  |  |

| ID | WBS | Task | Duration | Start | Finish | Predecessors | Total float |
| --- | --- | --- | --- | --- | --- | --- | --- |
| JDH4-02-007-PR-2780 |  | PO for Wiring Devices | 7d | 2026-03-02 | 2026-03-09 | JDH4-02-007-MA-1950 | 30d |
| JDH4-02-007-PR-2815 |  | Material Fabrication for Wiring Devices - Stage 1 | 14d | 2026-03-10 | 2026-03-29 | JDH4-02-007-PR-2780 | 30d |
| JDH4-02-007-PR-2816 |  | Material Fabrication for Wiring Devices - Stage 2 | 20d | 2026-03-30 | 2026-04-21 | JDH4-02-007-PR-2815 | 30d |
| JDH4-02-007-PR-2817 |  | Material Fabrication for Wiring Devices - Stage 3 | 30d | 2026-04-22 | 2026-05-30 | JDH4-02-007-PR-2816 | 30d |
| JDH4-02-007-PR-2818 |  | Material Fabrication for Wiring Devices - Stage 4 | 30d | 2026-05-31 | 2026-07-04 | JDH4-02-007-PR-2817 | 30d |
| JDH4-02-007-PR-2819 |  | Material Fabrication for Wiring Devices - Stage 5 | 30d | 2026-07-05 | 2026-08-08 | JDH4-02-007-PR-2818 | 30d |
| JDH4-02-007-PR-2820 |  | Material Fabrication for Wiring Devices - Stage 6 | 30d | 2026-08-09 | 2026-09-12 | JDH4-02-007-PR-2819 | 30d |
| JDH4-02-007-PR-2860 |  | Material Delivery for Wiring Devices | 15d | 2026-10-08 | 2026-10-25 | JDH4-02-007-PR-2820, JDH4-02-007-PR-2950, JDH4-02-007-PR-2670, JDH4-02-007-PR-2630, JDH4-02-007-PR-2670 FF | 22d |
| JDH4-02-007-PR-2900 |  | Staging Time for Wiring Devices | 7d | 2026-11-19 | 2026-11-26 | JDH4-02-007-PR-2860, JDH4-02-007-PR-2750 | 39d |
|  | 18 | **Enclosed Switches and Circuit Breakers** |  | 2026-04-01 | 2026-11-19 |  |  |
| JDH4-02-007-PR-2960 |  | PO for Enclosed Switches and Circuit Breakers | 7d | 2026-04-01 | 2026-04-08 | JDH4-02-007-MA-1970, JDH4-02-007-PR-2920 | 13d |
| JDH4-02-007-PR-2965 |  | Material Fabrication for Enclosed Switches and Circuit Breakers - Stage 1 | 14d | 2026-04-09 | 2026-04-25 | JDH4-02-007-PR-2960 | 13d |
| JDH4-02-007-PR-2966 |  | Material Fabrication for Enclosed Switches and Circuit Breakers - Stage 2 | 20d | 2026-04-26 | 2026-05-18 | JDH4-02-007-PR-2965 | 13d |
| JDH4-02-007-PR-2967 |  | Material Fabrication for Enclosed Switches and Circuit Breakers - Stage 3 | 30d | 2026-05-19 | 2026-06-25 | JDH4-02-007-PR-2966 | 13d |
| JDH4-02-007-PR-2968 |  | Material Fabrication for Enclosed Switches and Circuit Breakers - Stage 4 | 30d | 2026-06-27 | 2026-07-30 | JDH4-02-007-PR-2967 | 13d |
| JDH4-02-007-PR-2969 |  | Material Fabrication for Enclosed Switches and Circuit Breakers - Stage 5 | 30d | 2026-08-01 | 2026-09-03 | JDH4-02-007-PR-2968 | 13d |
| JDH4-02-007-PR-2970 |  | Material Fabrication for Enclosed Switches and Circuit Breakers - Stage 6 | 30d | 2026-09-05 | 2026-10-10 | JDH4-02-007-PR-2969 | 13d |
| JDH4-02-007-PR-2980 |  | Material Delivery for Enclosed Switches and Circuit Breakers | 28d | 2026-10-11 | 2026-11-11 | JDH4-02-007-PR-2970, JDH4-02-007-PR-2950 | 13d |
| JDH4-02-007-PR-2990 |  | Staging Time for Enclosed Switches and Circuit Breakers | 7d | 2026-11-12 | 2026-11-19 | JDH4-02-007-PR-2980, JDH4-02-007-PR-2740 | 13d |
|  | 19 | **Raceways for Electrical Systems** |  | 2026-03-03 | 2026-09-15 |  |  |
| JDH4-02-007-PR-2790 |  | PO for Raceways for Electrical Systems | 7d | 2026-03-03 | 2026-03-10 | JDH4-02-007-MA-2110 | 26d |
| JDH4-02-007-PR-2827 |  | Material Fabrication for Raceways for Electrical Systems - Stage 1 | 30d | 2026-03-11 | 2026-04-18 | JDH4-02-007-PR-2790 | 26d |
| JDH4-02-007-PR-2828 |  | Material Fabrication for Raceways for Electrical Systems - Stage 2 | 30d | 2026-04-19 | 2026-05-23 | JDH4-02-007-PR-2827 | 26d |
| JDH4-02-007-PR-2829 |  | Material Fabrication for Raceways for Electrical Systems - Stage 3 | 30d | 2026-05-24 | 2026-06-30 | JDH4-02-007-PR-2828 | 26d |
| JDH4-02-007-PR-2830 |  | Material Fabrication for Raceways for Electrical Systems - Stage 4 | 30d | 2026-07-01 | 2026-08-04 | JDH4-02-007-PR-2829 | 26d |
| JDH4-02-007-PR-2870 |  | Material Delivery for Raceways for Electrical Systems | 28d | 2026-08-05 | 2026-09-06 | JDH4-02-007-PR-2830 | 26d |
| JDH4-02-007-PR-2910 |  | Staging Time for Raceways for Electrical Systems | 7d | 2026-09-08 | 2026-09-15 | JDH4-02-007-PR-2870, JDH4-02-007-PR-2950, JDH4-02-007-PR-2890 | 25d |
|  | 1 | **Electrical Manholes** |  | 2026-02-25 | 2026-12-24 |  |  |
| JDH4-02-007-PR-2520 |  | PO for Electrical Manholes | 16d | 2026-02-25 | 2026-03-15 | JDH4-02-007-MA-2150 FS+40d | 19d |
| JDH4-02-007-PR-2555 |  | Material Fabrication for Electrical Manholes - Stage 1 | 14d | 2026-03-16 | 2026-04-04 | JDH4-02-007-PR-2520 | 19d |
| JDH4-02-007-PR-2556 |  | Material Fabrication for Electrical Manholes - Stage 2 | 20d | 2026-04-05 | 2026-04-27 | JDH4-02-007-PR-2555 | 19d |
| JDH4-02-007-PR-2557 |  | Material Fabrication for Electrical Manholes - Stage 3 | 30d | 2026-04-28 | 2026-06-04 | JDH4-02-007-PR-2556 | 19d |
| JDH4-02-007-PR-2558 |  | Material Fabrication for Electrical Manholes - Stage 4 | 30d | 2026-06-06 | 2026-07-09 | JDH4-02-007-PR-2557 | 19d |
| JDH4-02-007-PR-2559 |  | Material Fabrication for Electrical Manholes - Stage 5 | 30d | 2026-07-11 | 2026-08-13 | JDH4-02-007-PR-2558 | 19d |
| JDH4-02-007-PR-2560 |  | Material Fabrication for Electrical Manholes - Stage 6 | 30d | 2026-09-01 | 2026-10-06 | JDH4-02-007-PR-2559, JDH4-02-007-PR-2890 | 15d |
| JDH4-02-007-PR-2600 |  | Material Delivery for Electrical Manholes | 15d | 2026-10-07 | 2026-10-24 | JDH4-02-007-PR-2560, JDH4-02-007-PR-2910, JDH4-02-007-PR-2950 | 15d |
| JDH4-02-007-PR-2640 |  | Staging Time for Electrical Manholes | 7d | 2026-12-17 | 2026-12-24 | JDH4-02-007-PR-2600, JDH4-02-007-PR-2990, JDH4-02-007-PR-2130, JDH4-02-007-PR-2170, JDH4-02-007-PR-2250, JDH4-02-007-PR-2150, JDH4-02-007-PR-2900 SS+5d, JDH4-02-007-PR-2990 FF | 20d |
|  | 20 | **ICT (Data& telephone System)** |  | 2026-04-01 | 2026-11-19 |  |  |
| JDH4-02-007-PR-3040 |  | PO for ICT (Data& telephone System) | 7d | 2026-04-01 | 2026-04-08 | JDH4-02-007-MA-2130, JDH4-02-007-PR-2920 | 7d |
| JDH4-02-007-PR-3055 |  | Material Fabrication for ICT (Data& telephone System) - Stage 1 | 14d | 2026-04-09 | 2026-04-25 | JDH4-02-007-PR-3040 | 7d |
| JDH4-02-007-PR-3056 |  | Material Fabrication for ICT (Data& telephone System) - Stage 2 | 20d | 2026-04-26 | 2026-05-18 | JDH4-02-007-PR-3055 | 7d |
| JDH4-02-007-PR-3057 |  | Material Fabrication for ICT (Data& telephone System) - Stage 3 | 30d | 2026-05-19 | 2026-06-25 | JDH4-02-007-PR-3056 | 7d |
| JDH4-02-007-PR-3058 |  | Material Fabrication for ICT (Data& telephone System) - Stage 4 | 30d | 2026-06-27 | 2026-07-30 | JDH4-02-007-PR-3057 | 7d |
| JDH4-02-007-PR-3059 |  | Material Fabrication for ICT (Data& telephone System) - Stage 5 | 30d | 2026-08-01 | 2026-09-03 | JDH4-02-007-PR-3058 | 7d |
| JDH4-02-007-PR-3060 |  | Material Fabrication for ICT (Data& telephone System) - Stage 6 | 30d | 2026-09-05 | 2026-10-10 | JDH4-02-007-PR-3059, JDH4-02-007-PR-2710, JDH4-02-007-PR-2650 | 7d |
| JDH4-02-007-PR-3080 |  | Material Delivery for ICT (Data& telephone System) | 28d | 2026-10-11 | 2026-11-11 | JDH4-02-007-PR-3060, JDH4-02-007-PR-2820 | 7d |
| JDH4-02-007-PR-3100 |  | Staging Time for ICT (Data& telephone System) | 7d | 2026-11-12 | 2026-11-19 | JDH4-02-007-PR-3080, JDH4-02-007-PR-2860, JDH4-02-007-PR-2840 | 7d |
|  | 21 | **Programmable Logic Controllers** |  | 2026-03-09 | 2026-11-01 |  |  |
| JDH4-02-007-PR-3120 |  | PO for Programmable Logic Controllers | 7d | 2026-03-09 | 2026-03-16 | JDH4-02-007-MA-2210 | 16d |
| JDH4-02-007-PR-3125 |  | Material Fabrication for Programmable Logic Controllers - Stage 1 | 14d | 2026-03-17 | 2026-04-05 | JDH4-02-007-PR-3120 | 16d |
| JDH4-02-007-PR-3126 |  | Material Fabrication for Programmable Logic Controllers - Stage 2 | 20d | 2026-04-06 | 2026-04-28 | JDH4-02-007-PR-3125 | 16d |
| JDH4-02-007-PR-3127 |  | Material Fabrication for Programmable Logic Controllers - Stage 3 | 30d | 2026-04-29 | 2026-06-06 | JDH4-02-007-PR-3126 | 16d |
| JDH4-02-007-PR-3128 |  | Material Fabrication for Programmable Logic Controllers - Stage 4 | 30d | 2026-06-07 | 2026-07-11 | JDH4-02-007-PR-3127 | 16d |
| JDH4-02-007-PR-3129 |  | Material Fabrication for Programmable Logic Controllers - Stage 5 | 30d | 2026-07-12 | 2026-08-15 | JDH4-02-007-PR-3128 | 16d |
| JDH4-02-007-PR-3130 |  | Material Fabrication for Programmable Logic Controllers - Stage 6 | 30d | 2026-08-16 | 2026-09-19 | JDH4-02-007-PR-3129 | 16d |
| JDH4-02-007-PR-3140 |  | Material Delivery for Programmable Logic Controllers | 28d | 2026-09-20 | 2026-10-22 | JDH4-02-007-PR-3130 | 16d |
| JDH4-02-007-PR-3150 |  | Staging Time for Programmable Logic Controllers | 7d | 2026-10-25 | 2026-11-01 | JDH4-02-007-PR-3140, JDH4-02-007-PR-2600, JDH4-02-007-MS-1120 | 15d |
|  | 22 | **Process Control Wiring** |  | 2026-02-26 | 2026-09-24 |  |  |
| JDH4-02-007-PR-3050 |  | PO for Process Control Wiring | 12d | 2026-02-26 | 2026-03-11 | JDH4-02-007-MA-2190 | 32d |
| JDH4-02-007-PR-3067 |  | Material Fabrication for Process Control Wiring - Stage 1 | 30d | 2026-03-12 | 2026-04-19 | JDH4-02-007-PR-3050 | 32d |
| JDH4-02-007-PR-3068 |  | Material Fabrication for Process Control Wiring - Stage 2 | 30d | 2026-04-20 | 2026-05-24 | JDH4-02-007-PR-3067 | 32d |
| JDH4-02-007-PR-3069 |  | Material Fabrication for Process Control Wiring - Stage 3 | 30d | 2026-05-25 | 2026-07-01 | JDH4-02-007-PR-3068 | 32d |
| JDH4-02-007-PR-3070 |  | Material Fabrication for Process Control Wiring - Stage 4 | 30d | 2026-07-02 | 2026-08-05 | JDH4-02-007-PR-3069 | 32d |
| JDH4-02-007-PR-3090 |  | Material Delivery for Process Control Wiring | 28d | 2026-08-06 | 2026-09-07 | JDH4-02-007-PR-3070 | 32d |
| JDH4-02-007-PR-3110 |  | Staging Time for Process Control Wiring | 7d | 2026-09-16 | 2026-09-24 | JDH4-02-007-PR-3090, JDH4-02-007-PR-2910 | 25d |
|  | 23 | **Instrumentation for Process Systems** |  | 2026-03-10 | 2026-11-11 |  |  |
| JDH4-02-007-PR-3000 |  | PO for Instrumentation for Process Systems | 16d | 2026-03-10 | 2026-03-31 | JDH4-02-007-PR-2530 | 13d |
| JDH4-02-007-PR-3005 |  | Material Fabrication for Instrumentation for Process Systems - Stage 1 | 14d | 2026-04-01 | 2026-04-16 | JDH4-02-007-PR-3000 | 13d |
| JDH4-02-007-PR-3006 |  | Material Fabrication for Instrumentation for Process Systems - Stage 2 | 20d | 2026-04-18 | 2026-05-10 | JDH4-02-007-PR-3005 | 13d |
| JDH4-02-007-PR-3007 |  | Material Fabrication for Instrumentation for Process Systems - Stage 3 | 30d | 2026-05-11 | 2026-06-17 | JDH4-02-007-PR-3006 | 13d |

| ID | WBS | Task | Duration | Start | Finish | Predecessors | Complete | Total float |
| --- | --- | --- | --- | --- | --- | --- | --- | --- |
| JDH4-02-007-PR-3008 |  | Material Fabrication for Instrumentation for Process Systems - Stage 4 | 30d | 2026-06-18 | 2026-07-22 | JDH4-02-007-PR-3007 |  | 13d |
| JDH4-02-007-PR-3009 |  | Material Fabrication for Instrumentation for Process Systems - Stage 5 | 30d | 2026-07-23 | 2026-08-26 | JDH4-02-007-PR-3008 |  | 13d |
| JDH4-02-007-PR-3010 |  | Material Fabrication for Instrumentation for Process Systems - Stage 6 | 30d | 2026-08-27 | 2026-10-01 | JDH4-02-007-PR-3009 |  | 13d |
| JDH4-02-007-PR-3020 |  | Material Delivery for Instrumentation for Process Systems | 28d | 2026-10-03 | 2026-11-03 | JDH4-02-007-PR-3010 |  | 13d |
| JDH4-02-007-PR-3030 |  | Staging Time for Instrumentation for Process Systems | 7d | 2026-11-04 | 2026-11-11 | JDH4-02-007-PR-3020, JDH4-02-007-PR-3150 |  | 13d |
|  | 5 | **Construction** |  | 2025-12-04 | 2027-05-06 |  |  |  |
|  | 1 | **Demolition Works** |  | 2025-12-18 | 2026-06-07 |  |  |  |
|  | 2 | **Demolition in Road network** |  | 2026-02-03 | 2026-03-29 |  |  |  |
| JDH4-02-007-CN-1000 |  | Concrete demolition works at the existing Underpass [Demolition Works ] | 5d | 2026-02-03 | 2026-02-08 | JDH4-02-007-PS-1070, JDH4-02-007-PS-1090, JDH4-02-007-PA-1000, JDH4-02-007-MB-1090, JDH4-02-007-MB-1100, JDH4-02-007-MB-1080, JDH4-02-007-MB-1070 |  | 10d |
| JDH4-02-007-CN-1080 |  | Removal of the existing asphalt layers (up to base course layer) [Demolition Works ] | 16d | 2026-02-09 | 2026-02-28 | JDH4-02-007-CN-1000, JDH4-02-007-MS-1020, JDH4-02-007-MS-1030 |  | 10d |
| JDH4-02-007-CN-1110 |  | Milling of the existing asphalt layer [Demolition Works ] | 15d | 2026-03-01 | 2026-03-17 | JDH4-02-007-CN-1080, JDH4-02-007-PS-1060 |  | 10d |
| JDH4-02-007-CN-1170 |  | Re-use and compaction of the existing aggregate base course layer | 7d | 2026-03-22 | 2026-03-29 | JDH4-02-007-CN-1110 |  | 10d |
|  | 4 | **Demolition in TSE network** |  | 2025-12-18 | 2026-02-14 |  |  |  |
| JDH4-02-007-CN-1480 |  | Pipe with diameter 63 mm pipe [Demolition Works ] | 10d | 2025-12-18 A | 2025-12-29 A | JDH4-02-007-PA-1000 | 100% |  |
| JDH4-02-007-CN-1560 |  | Pipe with diameter 200 mm pipe [Demolition Works ] | 10d | 2025-12-18 A | 2025-12-29 A | JDH4-02-007-CN-1480 | 100% |  |
| JDH4-02-007-CN-1610 |  | Wash out valve with chamber; on 200 mm dia pipeline Depth 1.5 - 4.0m [Demolition Works ] | 10d | 2025-12-18 A | 2025-12-29 A | JDH4-02-007-CN-1560 | 100% |  |
| JDH4-02-007-CN-1620 |  | Gate valves on 200 mm pipeline [Demolition Works ] | 10d | 2025-12-18 A | 2025-12-29 A | JDH4-02-007-CN-1610, JDH4-02-007-EN-1710, JDH4-02-007-EN-1700, JDH4-02-007-EN-1690, JDH4-02-007-EN-1680, JDH4-02-007-EN-1640, JDH4-02-007-EN-1460, JDH4-02-007-EN-1450, JDH4-02-007-EN-1440, JDH4-02-007-EN-1490, JDH4-02-007-EN-1480, JDH4-02-007-EN-1470 | 100% |  |
| JDH4-02-007-CN-1590 |  | Pipe with diameter 250 mm pipe [Demolition Works ] | 10d | 2026-02-03 | 2026-02-14 | JDH4-02-007-CN-1560 |  | 4d |
|  | 6 | **Demolition in Storm water network** |  | 2025-12-25 | 2026-03-15 |  |  |  |
| JDH4-02-007-CN-1670 |  | Manhole [Demolition Works ] | 4d | 2025-12-25 A | 2025-12-29 A | JDH4-02-007-CN-1480, JDH4-02-007-PA-1000 | 100% |  |
| JDH4-02-007-CN-1690 |  | Pipe with diameter 600 mm pipe [Demolition Works ] | 4d | 2025-12-25 A | 2025-12-29 A | JDH4-02-007-CN-1610 | 100% |  |
| JDH4-02-007-CN-1700 |  | Pipe with diameter 800 mm pipe [Demolition Works ] | 4d | 2025-12-25 A | 2025-12-29 A | JDH4-02-007-CN-1690 | 100% |  |
| JDH4-02-007-CN-1680 |  | Baffle box with dimentions 3.04x7.80m [Demolition Works ] | 4d | 2026-03-11 | 2026-03-15 | JDH4-02-007-CN-1670, JDH4-02-007-CN-1590 FS+20d |  | 4d |
|  | 5 | **Demolition in Sewerage network** |  | 2025-12-25 | 2025-12-29 |  |  |  |
| JDH4-02-007-CN-1630 |  | Pipe with diameter 200 mm pipe with depth 2.50 - 3.50m [Demolition Works ] | 4d | 2025-12-25 A | 2025-12-29 A | JDH4-02-007-CN-1670, JDH4-02-007-PA-1000 | 100% |  |
| JDH4-02-007-CN-1640 |  | Pipe with diameter 250 mm pipe with depth 3.50 - 4.50m [Demolition Works ] | 4d | 2025-12-25 A | 2025-12-29 A | JDH4-02-007-CN-1630, JDH4-02-007-MA-2170 | 100% |  |
| JDH4-02-007-CN-1650 |  | Manhole with depth 1.50m - 2.50m [Demolition Works ] | 4d | 2025-12-25 A | 2025-12-29 A | JDH4-02-007-CN-1640 | 100% |  |
| JDH4-02-007-CN-1660 |  | Manhole with depth 4.50m - 5.50m [Demolition Works ] | 4d | 2025-12-25 A | 2025-12-29 A | JDH4-02-007-CN-1650 | 100% |  |
|  | 3 | **Demolition in Potable water network** |  | 2025-12-25 | 2025-12-29 |  |  |  |
| JDH4-02-007-CN-1340 |  | Single house connection dia 63 mm [Demolition Works ] | 4d | 2025-12-25 A | 2025-12-29 A | JDH4-02-007-CN-1630, JDH4-02-007-PA-1000 | 100% |  |
| JDH4-02-007-CN-1400 |  | Pipe with diameter 200 mm [Demolition Works ] | 4d | 2025-12-25 A | 2025-12-29 A | JDH4-02-007-CN-1340 | 100% |  |
| JDH4-02-007-CN-1430 |  | Wash out valve with chamber; on 200 mm dia pipeline [Demolition Works ] | 4d | 2025-12-25 A | 2025-12-29 A | JDH4-02-007-CN-1400 | 100% |  |
|  | 1 | **Demolition in Electrical works** |  | 2025-12-25 | 2026-06-07 |  |  |  |
| JDH4-02-007-CN-1250 |  | Demolishing of existing Lighting Pole [Demolition Works ](Completed) | 33d | 2025-12-25 A | 2026-02-01 A | JDH4-02-007-CN-1340 | 100% |  |
| JDH4-02-007-CN-3020 |  | Relocating of existing Lighting Pole [Road 02 ](Completed) | 15d | 2026-01-15 A | 2026-02-01 A | JDH4-02-007-CN-1250 SS, JDH4-02-007-CN-1250 FF | 100% |  |
| JDH4-02-007-CN-1250R |  | Demolishing of existing Lighting Pole [Demolition Works ] | 14d | 2026-03-16 | 2026-04-04 | JDH4-02-007-CN-1340, JDH4-02-007-CN-1250, JDH4-02-007-CN-1680 |  | 5d |
| JDH4-02-007-CN-3020R |  | Relocating of existing Lighting Pole [Road 02 ] | 16d | 2026-03-16 | 2026-04-06 | JDH4-02-007-CN-1250 SS, JDH4-02-007-CN-1250 FF, JDH4-02-007-CN-3020, JDH4-02-007-CN-1680 |  | 4d |
| JDH4-02-007-CN-3030 |  | Relocating of existing Lighting Pole [Road 08 ] | 16d | 2026-04-07 | 2026-04-25 | JDH4-02-007-CN-3020, JDH4-02-007-CN-1700, JDH4-02-007-CN-1620, JDH4-02-007-CN-3020R |  | 4d |
| JDH4-02-007-CN-3040 |  | Relocating of existing Lighting Pole [Road 04-R ] | 16d | 2026-04-26 | 2026-05-13 | JDH4-02-007-CN-3030, JDH4-02-007-CN-1620, JDH4-02-007-CN-1700, JDH4-02-007-CN-1660 |  | 4d |
| JDH4-02-007-CN-3050 |  | Relocating of existing Lighting Pole [Road 10 ] | 18d | 2026-05-14 | 2026-06-07 | JDH4-02-007-CN-3040, JDH4-02-007-CN-1170 |  | 4d |
|  | 2 | **Plots** |  | 2025-12-11 | 2026-03-23 |  |  |  |
|  | 1 | **Excavation** |  | 2026-03-11 | 2026-03-23 |  |  |  |
| JDH4-02-007-CN-1760 |  | Plots excavation [Plots ] | 8d | 2026-03-11 | 2026-03-23 | JDH4-02-007-MB-1020, JDH4-02-007-PA-1000, JDH4-02-007-MB-1040, JDH4-02-007-EN-1720, JDH4-02-007-EN-1760, JDH4-02-007-CN-1680 SS |  | 33d |
|  | 2 | **Backfilling** |  | 2025-12-11 | 2026-03-23 |  |  |  |
| JDH4-02-007-CN-1820 |  | Plots backfilling Stage 1 [Plots ] | 36d | 2025-12-11 A | 2026-01-21 A | JDH4-02-007-MB-1020, JDH4-02-007-TP-1000, JDH4-02-007-PA-1000, JDH4-02-007-MB-1040, JDH4-02-007-EN-1760, JDH4-02-007-EN-1550, JDH4-02-007-EN-1540, JDH4-02-007-EN-1530 | 100% |  |
| JDH4-02-007-CN-1830 |  | Plots backfilling Stage 2 [Plots ](Completed) | 9d | 2026-01-22 A | 2026-02-01 A | JDH4-02-007-EN-1520, JDH4-02-007-EN-1500, JDH4-02-007-EN-1510 | 100% |  |
| JDH4-02-007-CN-1840 |  | Plots backfilling Stage 3 [Plots ](Completed) | 3d | 2026-01-29 A | 2026-02-01 A | JDH4-02-007-CN-1830 SS, JDH4-02-007-CN-1830 FF | 100% |  |
| JDH4-02-007-CN-1830R |  | Plots backfilling Stage 2 [Plots ] | 15d | 2026-02-03 | 2026-02-19 | JDH4-02-007-EN-1520, JDH4-02-007-EN-1500, JDH4-02-007-EN-1510, JDH4-02-007-CN-1820 |  | 0d |
| JDH4-02-007-CN-1840R |  | Plots backfilling Stage 3 [Plots ] | 10d | 2026-02-21 | 2026-03-04 | JDH4-02-007-CN-1830 SS, JDH4-02-007-CN-1840, JDH4-02-007-CN-1830R |  | 15d |
| JDH4-02-007-CN-1850 |  | Plots backfilling Stage 4 [Plots ] | 13d | 2026-03-05 | 2026-03-23 | JDH4-02-007-CN-1840R |  | 15d |
|  | 3 | **Roads** |  | 2025-12-04 | 2027-04-24 |  |  |  |
|  | 6 | **Road 04-R** |  | 2026-01-03 | 2027-04-24 |  |  |  |
|  | 7 | **Box Culvert** |  | 2026-01-17 | 2026-05-09 |  |  |  |
| JDH4-02-007-CN-5580 |  | Excavation For Box Culvert [Road 04-R ] | 9d | 2026-01-17 A | 2026-01-26 A | JDH4-02-007-PA-1000, JDH4-02-007-CN-1480, JDH4-02-007-EN-1780 | 100% |  |
| JDH4-02-007-CN-5590 |  | Backfilling For Box Culvert [Road 04-R ] | 3d | 2026-01-29 A | 2026-02-01 A | JDH4-02-007-CN-5580 | 100% |  |
| JDH4-02-007-CN-5600 |  | Plain Concrete for box culvert [Road 04-R ] | 1d | 2026-02-01 A | 2026-02-01 A | JDH4-02-007-CN-5590, JDH4-02-007-EN-1580, JDH4-02-007-EN-1570, JDH4-02-007-EN-1740, JDH4-02-007-EN-1780 | 100% |  |
| JDH4-02-007-CN-5610 |  | Steel Reinforcement for box culverts [Road 04-R ](Completed) | 1d | 2026-02-01 A | 2026-02-01 A | JDH4-02-007-CN-5600 | 100% |  |
| JDH4-02-007-CN-5610R |  | Steel Reinforcement for box culverts [Road 04-R ] | 12d | 2026-04-05 | 2026-04-18 | JDH4-02-007-CN-5600, JDH4-02-007-CN-5610, JDH4-02-007-CN-1840R, JDH4-02-007-CN-1850, JDH4-02-007-CN-1680, JDH4-02-007-CN-1250R, JDH4-02-007-CN-1170 |  | 5d |
| JDH4-02-007-CN-5620 |  | Reinforced Concrete for box culvert [Road 04-R ] | 18d | 2026-04-19 | 2026-05-09 | JDH4-02-007-CN-5610, JDH4-02-007-CN-5610R |  | 5d |
|  | 6 | **Road Works + Roundabout** |  | 2026-01-03 | 2027-03-17 |  |  |  |
|  | 1 | **Eartworks & Site grading** |  | 2026-01-03 | 2026-06-22 |  |  |  |
| JDH4-02-007-CN-1810 |  | Road backfilling [Road 04-R ](Completed) | 26d | 2026-01-03 A | 2026-02-01 A | JDH4-02-007-CN-5610 | 100% |  |
| JDH4-02-007-CN-1750 |  | Road excavation [Road 04-R ](Completed) | 8d | 2026-01-24 A | 2026-02-01 A | JDH4-02-007-CN-5580, JDH4-02-007-PA-1000, JDH4-02-007-EN-1320, JDH4-02-007-EN-1330, JDH4-02-007-EN-1340, JDH4-02-007-EN-1350, JDH4-02-007-EN-1360, JDH4-02-007-EN-1370, JDH4-02-007-EN-1380, JDH4-02-007-EN-1390, JDH4-02-007-EN-1400, JDH4-02-007-CN-1560, JDH4-02-007-EN-1790, JDH4-02-007-EN-1770 | 100% |  |
| JDH4-02-007-CN-1750R |  | Road excavation [Road 04-R ] | 16d | 2026-05-10 | 2026-05-31 | JDH4-02-007-CN-5580, JDH4-02-007-PA-1000, JDH4-02-007-EN-1320, JDH4-02-007-EN-1330, JDH4-02-007-EN-1340, JDH4-02-007-EN-1350, JDH4-02-007-EN-1360, JDH4-02-007-EN-1370, JDH4-02-007-EN-1380, JDH4-02-007-EN-1390, JDH4-02-007-EN-1400, JDH4-02-007-CN-1560, JDH4-02-007-EN-1790, JDH4-02-007-EN-1770, JDH4-02-007-CN-1760, JDH4-02-007-CN-1750, JDH4-02-007-CN-1810, JDH4-02-007-CN-1850, JDH4-02-007-CN-5620 |  | 5d |
| JDH4-02-007-CN-1810R |  | Road backfilling [Road 04-R ] | 16d | 2026-05-16 | 2026-06-06 | JDH4-02-007-CN-1810, JDH4-02-007-CN-1750R SS+5d |  | 5d |
| JDH4-02-007-CN-1930 |  | Subgrade [Road 04-R ] | 13d | 2026-06-08 | 2026-06-22 | JDH4-02-007-CN-1810, JDH4-02-007-CN-5620, JDH4-02-007-CN-3050, JDH4-02-007-CN-1810R |  | 4d |
|  | 2 | **Asphalt Works** |  | 2026-07-04 | 2026-08-24 |  |  |  |
| JDH4-02-007-CN-1990 |  | Aggregate base course [Road 04-R ] | 16d | 2026-07-04 | 2026-07-21 | JDH4-02-007-CN-1930, JDH4-02-007-PR-1390, JDH4-02-007-MS-1040 |  | 1d |
| JDH4-02-007-CN-2040 |  | Prime Coat (MC1) [Road 04-R ] | 14d | 2026-07-22 | 2026-08-06 | JDH4-02-007-CN-1990 |  | 1d |
| JDH4-02-007-CN-2090 |  | Bituminous base course [Road 04-R ] | 14d | 2026-08-09 | 2026-08-24 | JDH4-02-007-CN-2040, JDH4-02-007-EN-1750, JDH4-02-007-EN-1790, JDH4-02-007-PR-1440 |  | 0d |

| ID | WBS | Task | Duration | Start | Finish | Predecessors | Complete | Total float |
| --- | --- | --- | --- | --- | --- | --- | --- | --- |
|  | 8 | **Finishing Works** |  | 2027-01-17 | 2027-03-17 |  |  |  |
|  | 1 | **Asphalt Wearing Course** |  | 2027-01-17 | 2027-02-17 |  |  |  |
| JDH4-02-007-CN-2140 |  | Tack Coat (RC2) [Road 04-R ] | 12d | 2027-01-17 | 2027-01-30 | JDH4-02-007-CN-2090, JDH4-02-007-CN-3300, JDH4-02-007-MS-1070 |  | 10d |
| JDH4-02-007-CN-2190 |  | Bituminous concrete wearing course [Road 04-R ] | 16d | 2027-01-31 | 2027-02-17 | JDH4-02-007-CN-2140, JDH4-02-007-PR-1410, JDH4-02-007-MS-1060 |  | 10d |
|  | 3 | **Precast Concrete Curb** |  | 2027-02-18 | 2027-02-24 |  |  |  |
| JDH4-02-007-CN-2240 |  | Installation of Precast Concrete curb [Road 04-R ] | 5d | 2027-02-18 | 2027-02-24 | JDH4-02-007-CN-2190 |  | 10d |
|  | 4 | **Precast Interlocking block pavers** |  | 2027-02-25 | 2027-03-17 |  |  |  |
| JDH4-02-007-CN-2290 |  | Installation of Interlocking block pavers for sidewalk/footpath [Road 04-R ] | 15d | 2027-02-25 | 2027-03-17 | JDH4-02-007-CN-2190, JDH4-02-007-CN-2240 |  | 10d |
|  | 5 | **Pavement Markings** |  | 2027-02-18 | 2027-03-01 |  |  |  |
| JDH4-02-007-CN-2340 |  | Pavement markings [Road 04-R ] | 9d | 2027-02-18 | 2027-03-01 | JDH4-02-007-CN-2190 |  | 21d |
|  | 6 | **Traffic Signage** |  | 2027-02-18 | 2027-03-08 |  |  |  |
| JDH4-02-007-CN-2390 |  | Installation of Traffic Signs [Road 04-R ] | 15d | 2027-02-18 | 2027-03-08 | JDH4-02-007-CN-2190, JDH4-02-007-SB-1110 |  | 19d |
|  | 7 | **Guardrail** |  | 2027-01-31 | 2027-02-24 |  |  |  |
| JDH4-02-007-CN-2400 |  | Installation of Guard rails [Road 04-R ] | 21d | 2027-01-31 | 2027-02-24 | JDH4-02-007-PR-1320, JDH4-02-007-PR-1340, JDH4-02-007-PR-1370, JDH4-02-007-CN-2190 SS |  | 44d |
|  | 1 | **Storm Water Drainage** |  | 2026-01-07 | 2026-12-14 |  |  |  |
|  | 1 | **Pipe Works** |  | 2026-01-07 | 2026-11-17 |  |  |  |
| JDH4-02-007-CN-5370 |  | Excavation and Compaction (FDT) [Road 04-R ](Completed) | 22d | 2026-01-07 A | 2026-02-01 A | JDH4-02-007-EN-1530, JDH4-02-007-EN-1540, JDH4-02-007-EN-1550, JDH4-02-007-CN-1560, JDH4-02-007-EN-1710, JDH4-02-007-EN-1700, JDH4-02-007-EN-1690, JDH4-02-007-EN-1680, JDH4-02-007-EN-1420, JDH4-02-007-EN-1430, JDH4-02-007-EN-1620, JDH4-02-007-EN-1630 | 100% |  |
| JDH4-02-007-CN-5420 |  | Sand Bedding [Road 04-R ](Completed) | 21d | 2026-01-08 A | 2026-02-01 A | JDH4-02-007-CN-5370 | 100% |  |
| JDH4-02-007-CN-5470 |  | Installation of GRP Pipe [Road 04-R ](Completed) | 20d | 2026-01-10 A | 2026-02-01 A | JDH4-02-007-CN-5420 | 100% |  |
| JDH4-02-007-CN-5370R |  | Excavation and Compaction (FDT) [Road 04-R ] | 18d | 2026-08-25 | 2026-09-14 | JDH4-02-007-CN-5370, JDH4-02-007-CN-1810R, JDH4-02-007-CN-2090 |  | 2d |
| JDH4-02-007-CN-5420R |  | Sand Bedding [Road 04-R ] | 9d | 2026-09-15 | 2026-09-26 | JDH4-02-007-CN-5420, JDH4-02-007-CN-5370R |  | 2d |
| JDH4-02-007-CN-5470R |  | Installation of GRP Pipe [Road 04-R ] | 17d | 2026-09-27 | 2026-10-15 | JDH4-02-007-CN-5470, JDH4-02-007-CN-5370R, JDH4-02-007-CN-5420R, JDH4-02-007-MS-1070 |  | 26d |
| JDH4-02-007-CN-5520 |  | Sand Cover & Warning Tape [Road 04-R ] | 7d | 2026-10-17 | 2026-10-24 | JDH4-02-007-CN-5470R |  | 26d |
| JDH4-02-007-CN-5570 |  | Backfilling & Compaction [Road 04-R ] | 21d | 2026-10-25 | 2026-11-17 | JDH4-02-007-CN-5520 |  | 26d |
|  | 5 | **Pipe Encasement** |  | 2026-11-18 | 2026-11-23 |  |  |  |
| JDH4-02-007-CN-5840 |  | Pipe Encasement Works [Road 04-R ] | 5d | 2026-11-18 | 2026-11-23 | JDH4-02-007-CN-5570 |  | 26d |
|  | 2 | **Manholes** |  | 2026-11-24 | 2026-11-30 |  |  |  |
| JDH4-02-007-CN-5670 |  | Installation of Precast Manhole Ring [Road 04-R ] | 6d | 2026-11-24 | 2026-11-30 | JDH4-02-007-CN-5840, JDH4-02-007-PR-1710, JDH4-02-007-PR-1710R, JDH4-02-007-MS-1120 |  | 26d |
|  | 7 | **Precast Acces Openinig** |  | 2026-12-01 | 2026-12-05 |  |  |  |
| JDH4-02-007-CN-5720 |  | Installation of Precast Access Opening [Road 04-R ] | 4d | 2026-12-01 | 2026-12-05 | JDH4-02-007-CN-5670 |  | 26d |
|  | 3 | **Catch Basins** |  | 2026-12-06 | 2026-12-10 |  |  |  |
| JDH4-02-007-CN-5760 |  | Construction of Catch basins [Road 04-R ] | 5d | 2026-12-06 | 2026-12-10 | JDH4-02-007-CN-5720, JDH4-02-007-PR-1830 |  | 26d |
|  | 4 | **Concrete Outfalls** |  | 2026-12-06 | 2026-12-14 |  |  |  |
| JDH4-02-007-CN-5790 |  | Construction of Concrete outfall structure [Road 04-R ] | 8d | 2026-12-06 | 2026-12-14 | JDH4-02-007-CN-5760 SS |  | 26d |
|  | 2 | **Sewerage Network** |  | 2026-01-29 | 2026-07-11 |  |  |  |
|  | 1 | **Pipe Works** |  | 2026-01-29 | 2026-07-11 |  |  |  |
| JDH4-02-007-CN-4820 |  | Excavation & Compaction (FDT) [Road 04-R ](Completed) | 3d | 2026-01-29 A | 2026-02-01 A | JDH4-02-007-CN-5370 | 100% |  |
| JDH4-02-007-CN-4820R |  | Excavation & Compaction (FDT) [Road 04-R ] | 7d | 2026-06-08 | 2026-06-15 | JDH4-02-007-EN-1500, JDH4-02-007-EN-1510, JDH4-02-007-EN-1520, JDH4-02-007-CN-1640, JDH4-02-007-CN-1630, JDH4-02-007-CN-4820, JDH4-02-007-CN-1640 FF, JDH4-02-007-CN-1810R, JDH4-02-007-CN-1930 SS |  | 4d |
| JDH4-02-007-CN-4890 |  | Sand Bedding [Road 04-R ] | 7d | 2026-06-16 | 2026-06-23 | JDH4-02-007-CN-4820, JDH4-02-007-CN-4820R |  | 4d |
| JDH4-02-007-CN-4960 |  | Installation of GRP Pipe [Road 04-R ] | 9d | 2026-06-24 | 2026-07-04 | JDH4-02-007-CN-4890, JDH4-02-007-PR-1620, JDH4-02-007-CN-1660, JDH4-02-007-PR-1620R |  | 4d |
| JDH4-02-007-CN-5030 |  | Gravity Test [Road 04-R ] | 3d | 2026-07-05 | 2026-07-07 | JDH4-02-007-CN-4960 |  | 4d |
| JDH4-02-007-CN-5100 |  | Sand Cover & Warning Tape [Road 04-R ] | 4d | 2026-07-05 | 2026-07-08 | JDH4-02-007-CN-5030 SS |  | 4d |
| JDH4-02-007-CN-5170 |  | Backfilling & Compaction [Road 04-R ] | 6d | 2026-07-05 | 2026-07-11 | JDH4-02-007-CN-5100 SS |  | 4d |
|  | 5 | **Pipe Encasement** |  | 2026-06-24 | 2026-07-01 |  |  |  |
| JDH4-02-007-CN-5310 |  | Pipe Encasement Works [Road 04-R ] | 7d | 2026-06-24 | 2026-07-01 | JDH4-02-007-CN-4960 SS |  | 22d |
|  | 2 | **Manholes** |  | 2026-06-24 | 2026-07-01 |  |  |  |
| JDH4-02-007-CN-5240 |  | Installation of Manholes [Road 04-R ] | 7d | 2026-06-24 | 2026-07-01 | JDH4-02-007-CN-5310 SS, JDH4-02-007-PR-1650, JDH4-02-007-PR-1650R |  | 22d |
|  | 3 | **TSE Network** |  | 2026-08-25 | 2026-11-17 |  |  |  |
|  | 1 | **Pipe Works** |  | 2026-08-25 | 2026-10-26 |  |  |  |
| JDH4-02-007-CN-4040 |  | Excavation and Compaction (FDT) [Road 04-R ] | 12d | 2026-08-25 | 2026-09-07 | JDH4-02-007-CN-4820, JDH4-02-007-EN-1470, JDH4-02-007-EN-1480, JDH4-02-007-EN-1490, JDH4-02-007-CN-1620, JDH4-02-007-CN-1700, JDH4-02-007-CN-4820R SS, JDH4-02-007-CN-1930, JDH4-02-007-CN-2090, JDH4-02-007-CN-5170 |  | 0d |
| JDH4-02-007-CN-4110 |  | Sand Bedding [Road 04-R ] | 9d | 2026-09-08 | 2026-09-17 | JDH4-02-007-CN-4040, JDH4-02-007-CN-5240 |  | 0d |
| JDH4-02-007-CN-4180 |  | Installation of HDPE Pipe [Road 04-R ] | 12d | 2026-09-19 | 2026-10-03 | JDH4-02-007-CN-4110, JDH4-02-007-PR-1590, JDH4-02-007-PR-1590R |  | 0d |
| JDH4-02-007-CN-4250 |  | Initial Pressure Test [Road 04-R ] | 3d | 2026-10-04 | 2026-10-06 | JDH4-02-007-CN-4180 |  | 0d |
| JDH4-02-007-CN-4320 |  | Sand Cover & Warning [Road 04-R ] | 7d | 2026-10-07 | 2026-10-14 | JDH4-02-007-CN-4250 |  | 0d |
| JDH4-02-007-CN-4390 |  | Backfilling & Compaction [Road 04-R ] | 8d | 2026-10-15 | 2026-10-24 | JDH4-02-007-CN-4320 |  | 0d |
| JDH4-02-007-CN-4700 |  | Point of Connection [Road 04-R ] | 2d | 2026-10-25 | 2026-10-26 | JDH4-02-007-CN-4180, JDH4-02-007-CN-4390 |  | 0d |
|  | 2 | **Pipe Encasement** |  | 2026-10-27 | 2026-11-09 |  |  |  |
| JDH4-02-007-CN-4460 |  | Encasement for Pipes [Road 04-R ] | 12d | 2026-10-27 | 2026-11-09 | JDH4-02-007-CN-4180, JDH4-02-007-CN-5240, JDH4-02-007-CN-4390, JDH4-02-007-CN-4700 |  | 0d |
|  | 3 | **Valves** |  | 2026-11-10 | 2026-11-17 |  |  |  |
| JDH4-02-007-CN-4530 |  | Installation of Gate Valves [Road 04-R ] | 7d | 2026-11-10 | 2026-11-17 | JDH4-02-007-CN-4460, JDH4-02-007-PR-1820 |  | 0d |
|  | 4 | **Potable Network** |  | 2026-09-27 | 2026-11-23 |  |  |  |
|  | 1 | **Pipe Works** |  | 2026-09-27 | 2026-11-19 |  |  |  |
| JDH4-02-007-CN-3360 |  | Excavation and Compaction (FDT) [Road 04-R ] | 12d | 2026-09-27 | 2026-10-10 | JDH4-02-007-EN-1440, JDH4-02-007-EN-1450, JDH4-02-007-EN-1460, JDH4-02-007-CN-4820, JDH4-02-007-CN-1400, JDH4-02-007-CN-1340, JDH4-02-007-CN-1430, JDH4-02-007-CN-4820R, JDH4-02-007-CN-5420R |  | 2d |
| JDH4-02-007-CN-3430 |  | Sand Bedding [Road 04-R ] | 8d | 2026-10-11 | 2026-10-19 | JDH4-02-007-CN-3360, JDH4-02-007-CN-3360 FF |  | 2d |
| JDH4-02-007-CN-3500 |  | Installation of HDPE Pipe [Road 04-R ] | 11d | 2026-10-20 | 2026-11-01 | JDH4-02-007-CN-3430, JDH4-02-007-PR-1560, JDH4-02-007-CN-1430, JDH4-02-007-PR-1560R |  | 2d |
| JDH4-02-007-CN-3570 |  | Initial Pressure Test [Road 04-R ] | 3d | 2026-11-02 | 2026-11-04 | JDH4-02-007-CN-3500 |  | 13d |
| JDH4-02-007-CN-3640 |  | Sand Cover & Warning Tape [Road 04-R ] | 6d | 2026-11-05 | 2026-11-11 | JDH4-02-007-CN-3570 |  | 13d |
| JDH4-02-007-CN-3710 |  | Backfilling [Road 04-R ] | 7d | 2026-11-12 | 2026-11-19 | JDH4-02-007-CN-3640, JDH4-02-007-PR-3030 |  | 13d |
|  | 2 | **Pipe Encasement** |  | 2026-11-02 | 2026-11-07 |  |  |  |
| JDH4-02-007-CN-3780 |  | Encasement for Pipes [Road 04-R ] | 5d | 2026-11-02 | 2026-11-07 | JDH4-02-007-CN-3500 |  | 2d |

| ID | WBS | Task | Duration | Start | Finish | Predecessors | Complete | Total float |
| --- | --- | --- | --- | --- | --- | --- | --- | --- |
|  | 3 | **Valves** |  | 2026-11-08 | 2026-11-15 |  |  |  |
| JDH4-02-007-CN-3850 |  | Installation of Gate Valves [Road 04-R ] | 7d | 2026-11-08 | 2026-11-15 | JDH4-02-007-CN-3500, JDH4-02-007-CN-3780 |  | 2d |
|  | 4 | **Fire Hydrant** |  | 2026-11-18 | 2026-11-23 |  |  |  |
| JDH4-02-007-CN-3940 |  | Installation of 3-outlet fire hydrant [Road 04-R ] | 5d | 2026-11-18 | 2026-11-23 | JDH4-02-007-CN-3500, JDH4-02-007-CN-3850, JDH4-02-007-PR-2460, JDH4-02-007-CN-4530 |  | 0d |
|  | 5 | **Electrical Works** |  | 2026-11-24 | 2027-04-24 |  |  |  |
|  | 3 | **Street Lighting** |  | 2026-11-24 | 2027-03-01 |  |  |  |
| JDH4-02-007-CN-2820 |  | Excavation for Low Voltage Cable [Road 04-R ] | 15d | 2026-11-24 | 2026-12-10 | JDH4-02-007-EN-1420, JDH4-02-007-EN-1430, JDH4-02-007-EN-1640, JDH4-02-007-EN-1650, JDH4-02-007-EN-1660, JDH4-02-007-EN-1670, JDH4-02-007-CN-1250, JDH4-02-007-CN-4820, JDH4-02-007-CN-1250R, JDH4-02-007-CN-4820R, JDH4-02-007-CN-3940 |  | 0d |
| JDH4-02-007-CN-2830 |  | Installation of Road Crossing Ducts [Road 04-R ] | 13d | 2026-12-12 | 2026-12-26 | JDH4-02-007-EN-1420, JDH4-02-007-EN-1430, JDH4-02-007-EN-1640, JDH4-02-007-EN-1650, JDH4-02-007-CN-2820 |  | 0d |
| JDH4-02-007-CN-2880 |  | Installation of Low Voltage Cables [Road 04-R ] | 16d | 2026-12-27 | 2027-01-13 | JDH4-02-007-CN-2820, JDH4-02-007-CN-2830, JDH4-02-007-PR-1770, JDH4-02-007-CN-2830 FF, JDH4-02-007-PR-3030 |  | 0d |
| JDH4-02-007-CN-2920 |  | Installation of Lighting Poles [Road 04-R ] | 12d | 2027-01-14 | 2027-01-27 | JDH4-02-007-CN-2090, JDH4-02-007-CN-2880, JDH4-02-007-CN-5790 |  | 0d |
| JDH4-02-007-CN-2960 |  | Installation of Lighting Luminaires [Road 04-R ] | 12d | 2027-01-28 | 2027-02-10 | JDH4-02-007-CN-2920 |  | 0d |
| JDH4-02-007-CN-2990 |  | Installation of Earthing System [Road 04-R ] | 15d | 2027-02-11 | 2027-03-01 | JDH4-02-007-CN-2960, JDH4-02-007-EN-1630, JDH4-02-007-PR-1220 |  | 0d |
|  | 2 | **Telecommunication** |  | 2027-03-02 | 2027-04-24 |  |  |  |
| JDH4-02-007-CN-3110 |  | Installation Road Crossing R/F 6 way 50mm HDPE Pipe [Road 04-R ] | 14d | 2027-03-02 | 2027-03-21 | JDH4-02-007-EN-1620, JDH4-02-007-PR-2280, JDH4-02-007-PR-1710, JDH4-02-007-PR-2280R, JDH4-02-007-PR-1710R, JDH4-02-007-CN-2960, JDH4-02-007-CN-2820 SS, JDH4-02-007-CN-2990 |  | 0d |
| JDH4-02-007-CN-3180 |  | Installation Road Crossing Un R/F 6 way 50mm HDPE Pipe [Road 04-R ] | 14d | 2027-03-22 | 2027-04-06 | JDH4-02-007-CN-3110 |  | 0d |
| JDH4-02-007-CN-3290 |  | Installation of Manholes [Road 04-R ] | 15d | 2027-04-07 | 2027-04-24 | JDH4-02-007-CN-3180, JDH4-02-007-CN-2990, JDH4-02-007-CN-3940 |  | 0d |
|  | 2 | **Road 08** |  | 2025-12-10 | 2027-03-31 |  |  |  |
|  | 6 | **Road Works + Roundabout** |  | 2025-12-10 | 2027-03-31 |  |  |  |
|  | 1 | **Eartworks & Site grading** |  | 2025-12-10 | 2026-08-17 |  |  |  |
| JDH4-02-007-CN-1710 |  | Road excavation [Road 08 ](Completed) | 46d | 2025-12-10 A | 2026-02-01 A | JDH4-02-007-CN-5610 | 100% |  |
| JDH4-02-007-CN-1770 |  | Road backfilling [Road 08 ](Completed) | 44d | 2025-12-13 A | 2026-02-01 A | JDH4-02-007-CN-1710, JDH4-02-007-CN-1710 FF | 100% |  |
| JDH4-02-007-CN-1710R |  | Road excavation [Road 08 ] | 14d | 2026-02-04 | 2026-02-19 | JDH4-02-007-CN-1830R SS, JDH4-02-007-CN-1830R FF |  | 0d |
| JDH4-02-007-CN-1770R |  | Road backfilling [Road 08 ] | 14d | 2026-02-21 | 2026-03-09 | JDH4-02-007-CN-1710R |  | 17d |
| JDH4-02-007-CN-1890 |  | Subgrade [Road 08 ] | 10d | 2026-08-06 | 2026-08-17 | JDH4-02-007-CN-5530, JDH4-02-007-CN-5130, JDH4-02-007-CN-2595, JDH4-02-007-CN-2710, JDH4-02-007-CN-1770R, JDH4-02-007-CN-3050, JDH4-02-007-CN-5240 |  | 16d |
|  | 2 | **Asphalt Works** |  | 2026-08-18 | 2026-09-20 |  |  |  |
| JDH4-02-007-CN-1950 |  | Aggregate base course [Road 08 ] | 10d | 2026-08-18 | 2026-08-29 | JDH4-02-007-CN-1890, JDH4-02-007-PR-1390 |  | 16d |
| JDH4-02-007-CN-2000 |  | Prime Coat (MC1) [Road 08 ] | 7d | 2026-08-30 | 2026-09-06 | JDH4-02-007-CN-1950 |  | 16d |
| JDH4-02-007-CN-2050 |  | Bituminous base course [Road 08 ] | 12d | 2026-09-07 | 2026-09-20 | JDH4-02-007-CN-2000, JDH4-02-007-MS-1060 |  | 16d |
|  | 7 | **Finishing Works** |  | 2027-01-31 | 2027-03-31 |  |  |  |
|  | 1 | **Asphalt Wearing Course** |  | 2027-01-31 | 2027-03-09 |  |  |  |
| JDH4-02-007-CN-2100 |  | Tack Coat (RC2) [Road 08 ] | 16d | 2027-01-31 | 2027-02-17 | JDH4-02-007-PR-1530, JDH4-02-007-CN-2050, JDH4-02-007-CN-2140 |  | 12d |
| JDH4-02-007-CN-2150 |  | Bituminous concrete wearing course [Road 08 ] | 16d | 2027-02-18 | 2027-03-09 | JDH4-02-007-CN-2100, JDH4-02-007-PR-1410, JDH4-02-007-CN-2100 FF |  | 12d |
|  | 3 | **Precast Concrete Curb** |  | 2027-03-14 | 2027-03-24 |  |  |  |
| JDH4-02-007-CN-2200 |  | Installation of Precast Concrete curb [Road 08 ] | 10d | 2027-03-14 | 2027-03-24 | JDH4-02-007-PR-1440, JDH4-02-007-CN-2150 |  | 12d |
|  | 4 | **Precast Interlocking block pavers** |  | 2027-03-14 | 2027-03-24 |  |  |  |
| JDH4-02-007-CN-2250 |  | Installation of Interlocking block pavers for sidewalk/footpath [Road 08 ] | 10d | 2027-03-14 | 2027-03-24 | JDH4-02-007-PR-1470, JDH4-02-007-CN-2200 SS |  | 12d |
|  | 5 | **Pavement Markings** |  | 2027-03-18 | 2027-03-31 |  |  |  |
| JDH4-02-007-CN-2300 |  | Pavement markings [Road 08 ] | 12d | 2027-03-18 | 2027-03-31 | JDH4-02-007-PR-1500, JDH4-02-007-CN-2340, JDH4-02-007-CN-2250 SS+2d, JDH4-02-007-CN-2290 |  | 10d |
|  | 6 | **Traffic Signage** |  | 2027-03-09 | 2027-03-29 |  |  |  |
| JDH4-02-007-CN-2350 |  | Installation of Traffic Signs [Road 08 ] | 15d | 2027-03-09 | 2027-03-29 | JDH4-02-007-PR-1530, JDH4-02-007-CN-2390 |  | 19d |
|  | 1 | **Storm Water Drainage** |  | 2026-01-15 | 2026-06-10 |  |  |  |
|  | 1 | **Pipe Works** |  | 2026-01-15 | 2026-06-10 |  |  |  |
| JDH4-02-007-CN-5330 |  | Excavation and Compaction (FDT) [Road 08 ](Completed) | 15d | 2026-01-15 A | 2026-02-01 A | JDH4-02-007-CN-5370, JDH4-02-007-CN-1770 | 100% |  |
| JDH4-02-007-CN-5380 |  | Sand Bedding [Road 08 ](Completed) | 11d | 2026-01-20 A | 2026-02-01 A | JDH4-02-007-CN-5330 | 100% |  |
| JDH4-02-007-CN-5430 |  | Installation of GRP Pipe [Road 08 ](Completed) | 11d | 2026-01-20 A | 2026-02-01 A | JDH4-02-007-CN-5380, JDH4-02-007-PR-1680, JDH4-02-007-PR-1560, JDH4-02-007-PR-1590 | 100% |  |
| JDH4-02-007-CN-5480 |  | Sand Cover & Warning Tape [Road 08 ](Completed) | 9d | 2026-01-22 A | 2026-02-01 A | JDH4-02-007-CN-5430 | 100% |  |
| JDH4-02-007-CN-5530 |  | Backfilling & Compaction [Road 08 ](Completed) | 8d | 2026-01-24 A | 2026-02-01 A | JDH4-02-007-CN-5480 SS, JDH4-02-007-CN-5480 FF | 100% |  |
| JDH4-02-007-CN-5330R |  | Excavation and Compaction (FDT) [Road 08 ] | 20d | 2026-02-21 | 2026-03-16 | JDH4-02-007-CN-5330, JDH4-02-007-CN-1710R |  | 0d |
| JDH4-02-007-CN-5380R |  | Sand Bedding [Road 08 ] | 11d | 2026-03-17 | 2026-04-01 | JDH4-02-007-CN-5330 SS, JDH4-02-007-CN-5330 FF, JDH4-02-007-CN-5380, JDH4-02-007-CN-5330R |  | 0d |
| JDH4-02-007-CN-5430R |  | Installation of GRP Pipe [Road 08 ] | 26d | 2026-04-02 | 2026-05-02 | JDH4-02-007-CN-5380R, JDH4-02-007-PR-1670R, JDH4-02-007-PR-1710R, JDH4-02-007-CN-1770R |  | 0d |
| JDH4-02-007-CN-5480R |  | Sand Cover & Warning Tape [Road 08 ] | 10d | 2026-05-03 | 2026-05-13 | JDH4-02-007-CN-5430, JDH4-02-007-CN-5480, JDH4-02-007-CN-5430R |  | 1d |
| JDH4-02-007-CN-5530R |  | Backfilling & Compaction [Road 08 ] | 21d | 2026-05-14 | 2026-06-10 | JDH4-02-007-CN-5480 SS, JDH4-02-007-CN-5480 FF, JDH4-02-007-CN-5530, JDH4-02-007-CN-5480R |  | 13d |
|  | 5 | **Pipe Encasement** |  | 2026-05-03 | 2026-05-07 |  |  |  |
| JDH4-02-007-CN-5800 |  | Pipe Encasement Works [Road 08 ] | 5d | 2026-05-03 | 2026-05-07 | JDH4-02-007-CN-5430, JDH4-02-007-CN-5430R |  | 0d |
|  | 2 | **Manholes** |  | 2026-05-09 | 2026-05-14 |  |  |  |
| JDH4-02-007-CN-5630 |  | Installation of Precast Manhole Ring [Road 08 ] | 6d | 2026-05-09 | 2026-05-14 | JDH4-02-007-CN-5800, JDH4-02-007-PR-1710, JDH4-02-007-PR-1710R |  | 0d |
|  | 6 | **Precast Acces Openinig** |  | 2026-05-16 | 2026-05-18 |  |  |  |
| JDH4-02-007-CN-5680 |  | Installation of Precast Access Opening [Road 08 ] | 3d | 2026-05-16 | 2026-05-18 | JDH4-02-007-CN-5630, JDH4-02-007-PR-1700R, JDH4-02-007-PR-1650R |  | 0d |
|  | 3 | **Catch Basins** |  | 2026-05-19 | 2026-06-01 |  |  |  |
| JDH4-02-007-CN-5730 |  | Construction of Catch basins [Road 08 ] | 9d | 2026-05-19 | 2026-06-01 | JDH4-02-007-CN-5680, JDH4-02-007-PR-1830 |  | 0d |
|  | 2 | **Sewerage Network** |  | 2026-03-17 | 2026-07-16 |  |  |  |
|  | 1 | **Pipe Works** |  | 2026-03-17 | 2026-06-25 |  |  |  |
| JDH4-02-007-CN-4780 |  | Excavation & Compaction (FDT) [Road 08 ] | 18d | 2026-03-17 | 2026-04-09 | JDH4-02-007-CN-5330, JDH4-02-007-CN-5330R |  | 0d |
| JDH4-02-007-CN-4850 |  | Sand Bedding [Road 08 ] | 9d | 2026-04-11 | 2026-04-20 | JDH4-02-007-CN-4780, JDH4-02-007-CN-1850 |  | 0d |
| JDH4-02-007-CN-4920 |  | Installation of GRP Pipe [Road 08 ] | 9d | 2026-04-21 | 2026-04-30 | JDH4-02-007-CN-4850, JDH4-02-007-PR-1620, JDH4-02-007-CN-1660, JDH4-02-007-PR-1560, JDH4-02-007-PR-1620R, JDH4-02-007-PR-1560R |  | 0d |
| JDH4-02-007-CN-4990 |  | Gravity Test [Road 08 ] | 17d | 2026-05-02 | 2026-05-20 | JDH4-02-007-CN-4920, JDH4-02-007-PR-1230 |  | 0d |
| JDH4-02-007-CN-5060 |  | Sand Cover & Warning Tape [Road 08 ] | 7d | 2026-05-21 | 2026-06-01 | JDH4-02-007-CN-4990 |  | 0d |
| JDH4-02-007-CN-5130 |  | Backfilling & Compaction [Road 08 ] | 21d | 2026-06-02 | 2026-06-25 | JDH4-02-007-CN-5060, JDH4-02-007-CN-5730 |  | 0d |
|  | 5 | **Pipe Encasement** |  | 2026-06-27 | 2026-07-08 |  |  |  |
| JDH4-02-007-CN-5270 |  | Pipe Encasement Works [Road 08 ] | 11d | 2026-06-27 | 2026-07-08 | JDH4-02-007-CN-4920, JDH4-02-007-CN-5130, JDH4-02-007-CN-5530R |  | 0d |

| ID | WBS | Task | Duration | Start | Finish | Predecessors | Complete | Total float |
| --- | --- | --- | --- | --- | --- | --- | --- | --- |
|  | 2 | **Manholes** |  | 2026-07-09 | 2026-07-16 |  |  |  |
| JDH4-02-007-CN-5200 |  | Installation of Manholes [Road 08 ] | 7d | 2026-07-09 | 2026-07-16 | JDH4-02-007-CN-5270, JDH4-02-007-PR-1650, JDH4-02-007-PR-1650R |  | 0d |
|  | 3 | **TSE Network** |  | 2026-04-11 | 2026-07-09 |  |  |  |
|  | 1 | **Pipe Works** |  | 2026-04-11 | 2026-07-09 |  |  |  |
| JDH4-02-007-CN-4000 |  | Excavation and Compaction (FDT) [Road 08 ] | 18d | 2026-04-11 | 2026-04-30 | JDH4-02-007-CN-4780 |  | 0d |
| JDH4-02-007-CN-4070 |  | Sand Bedding [Road 08 ] | 11d | 2026-05-02 | 2026-05-13 | JDH4-02-007-CN-4000 |  | 22d |
| JDH4-02-007-CN-4140 |  | Installation of HDPE Pipe [Road 08 ] | 20d | 2026-05-14 | 2026-06-09 | JDH4-02-007-CN-4070, JDH4-02-007-PR-1590, JDH4-02-007-PR-1590R |  | 22d |
| JDH4-02-007-CN-4210 |  | Initial Pressure Test [Road 08 ] | 8d | 2026-06-10 | 2026-06-18 | JDH4-02-007-CN-4140 |  | 22d |
| JDH4-02-007-CN-4660 |  | Point of Connection [Road 08 ] | 5d | 2026-06-10 | 2026-06-15 | JDH4-02-007-CN-4140 |  | 27d |
| JDH4-02-007-CN-4280 |  | Sand Cover & Warning [Road 08 ] | 8d | 2026-06-20 | 2026-06-28 | JDH4-02-007-CN-4210, JDH4-02-007-CN-5530, JDH4-02-007-CN-5530R |  | 22d |
| JDH4-02-007-CN-4350 |  | Backfilling & Compaction [Road 08 ] | 10d | 2026-06-29 | 2026-07-09 | JDH4-02-007-CN-4280 |  | 22d |
|  | 2 | **Pipe Encasement** |  | 2026-06-10 | 2026-06-17 |  |  |  |
| JDH4-02-007-CN-4420 |  | Encasement for Pipes [Road 08 ] | 7d | 2026-06-10 | 2026-06-17 | JDH4-02-007-CN-4140 |  | 43d |
|  | 3 | **Valves** |  | 2026-06-18 | 2026-06-25 |  |  |  |
| JDH4-02-007-CN-4490 |  | Installation of Gate Valves [Road 08 ] | 7d | 2026-06-18 | 2026-06-25 | JDH4-02-007-CN-4420 |  | 43d |
|  | 4 | **Risers** |  | 2026-06-27 | 2026-07-04 |  |  |  |
| JDH4-02-007-CN-4730 |  | Installation of Irrigation Riser with [Road 08 ] | 7d | 2026-06-27 | 2026-07-04 | JDH4-02-007-CN-4490, JDH4-02-007-CN-5730, JDH4-02-007-PR-1930 |  | 43d |
|  | 4 | **Potable Network** |  | 2026-05-02 | 2026-07-25 |  |  |  |
|  | 1 | **Pipe Works** |  | 2026-05-02 | 2026-07-08 |  |  |  |
| JDH4-02-007-CN-3320 |  | Excavation and Compaction (FDT) [Road 08 ] | 11d | 2026-05-02 | 2026-05-13 | JDH4-02-007-CN-4780, JDH4-02-007-MS-1050, JDH4-02-007-CN-4000 |  | 0d |
| JDH4-02-007-CN-3390 |  | Sand Bedding [Road 08 ] | 8d | 2026-05-14 | 2026-05-23 | JDH4-02-007-CN-3320 |  | 0d |
| JDH4-02-007-CN-3460 |  | Installation of HDPE Pipe [Road 08 ] | 15d | 2026-05-24 | 2026-06-13 | JDH4-02-007-CN-3390, JDH4-02-007-PR-1560, JDH4-02-007-PR-1560R |  | 0d |
| JDH4-02-007-CN-3530 |  | Initial Pressure Test [Road 08 ] | 6d | 2026-06-14 | 2026-06-20 | JDH4-02-007-CN-3460 |  | 23d |
| JDH4-02-007-CN-3600 |  | Sand Cover & Warning Tape [Road 08 ] | 6d | 2026-06-21 | 2026-06-27 | JDH4-02-007-CN-3530, JDH4-02-007-CN-4660 |  | 23d |
| JDH4-02-007-CN-3670 |  | Backfilling [Road 08 ] | 10d | 2026-06-28 | 2026-07-08 | JDH4-02-007-CN-3600, JDH4-02-007-CN-4660 |  | 23d |
|  | 2 | **Pipe Encasement** |  | 2026-06-14 | 2026-06-18 |  |  |  |
| JDH4-02-007-CN-3740 |  | Encasement for Pipes [Road 08 ] | 5d | 2026-06-14 | 2026-06-18 | JDH4-02-007-CN-3460 |  | 0d |
|  | 3 | **Valves** |  | 2026-06-20 | 2026-06-25 |  |  |  |
| JDH4-02-007-CN-3810 |  | Installation of Gate Valves [Road 08 ] | 6d | 2026-06-20 | 2026-06-25 | JDH4-02-007-CN-3740 |  | 0d |
|  | 4 | **Fire Hydrant** |  | 2026-07-18 | 2026-07-25 |  |  |  |
| JDH4-02-007-CN-3900 |  | Installation of 3-outlet fire hydrant [Road 08 ] | 7d | 2026-07-18 | 2026-07-25 | JDH4-02-007-CN-3810, JDH4-02-007-CN-5200, JDH4-02-007-CN-3810 FF, JDH4-02-007-CN-3810 SS |  | 0d |
|  | 5 | **Electrical Works** |  | 2026-06-27 | 2026-11-07 |  |  |  |
|  | 1 | **LV Cables** |  | 2026-06-27 | 2026-08-17 |  |  |  |
|  | 2 | **Low Voltage Cable** |  | 2026-06-27 | 2026-08-17 |  |  |  |
| JDH4-02-007-CN-2595 |  | Excavation for Low Voltage Cable [Road 08 ] | 18d | 2026-06-27 | 2026-07-16 | JDH4-02-007-CN-3320, JDH4-02-007-CN-3810 |  | 0d |
| JDH4-02-007-CN-2600 |  | Installation of Low Voltage Cables [Road 08 ] | 6d | 2026-07-18 | 2026-07-23 | JDH4-02-007-CN-2595, JDH4-02-007-CN-3670, JDH4-02-007-CN-4350 |  | 16d |
| JDH4-02-007-CN-2710 |  | Installation of Low Voltage Distribution Panel (Main: 100A, MCCB, 5-50A, MCCB) [Road 08 ] | 11d | 2026-07-25 | 2026-08-05 | JDH4-02-007-CN-2600 |  | 16d |
| JDH4-02-007-CN-2730 |  | Installation of Unit Substation , 13.8/0.4 kV, 500kVA with RMU [Road 08 ] | 5d | 2026-08-06 | 2026-08-11 | JDH4-02-007-CN-2595, JDH4-02-007-CN-2710 |  | 19d |
| JDH4-02-007-CN-2740 |  | Installation of Ring Main Unit (RMU) 3-way, 13.8kV [Road 08 ] | 5d | 2026-08-12 | 2026-08-17 | JDH4-02-007-CN-2730 |  | 19d |
|  | 3 | **Street Lighting** |  | 2026-07-18 | 2026-11-07 |  |  |  |
| JDH4-02-007-CN-2750 |  | Excavation for Low Voltage Cable [Road 08 ] | 13d | 2026-07-18 | 2026-08-01 | JDH4-02-007-CN-2595, JDH4-02-007-CN-3900 SS |  | 0d |
| JDH4-02-007-CN-2760 |  | Installation of Road Crossing Ducts [Road 08 ] | 12d | 2026-08-02 | 2026-08-15 | JDH4-02-007-CN-2750 |  | 42d |
| JDH4-02-007-CN-2840 |  | Installation of Low Voltage Cables [Road 08 ] | 21d | 2026-08-16 | 2026-09-08 | JDH4-02-007-CN-2760 |  | 42d |
| JDH4-02-007-CN-2890 |  | Installation of Lighting Poles [Road 08 ] | 16d | 2026-09-21 | 2026-10-10 | JDH4-02-007-PR-1780 SS, JDH4-02-007-CN-2050, JDH4-02-007-CN-2840 |  | 32d |
| JDH4-02-007-CN-2930 |  | Installation of Lighting Luminaires [Road 08 ] | 12d | 2026-10-11 | 2026-10-24 | JDH4-02-007-CN-2890, JDH4-02-007-PR-1790 SS, JDH4-02-007-CN-2740, JDH4-02-007-CN-3900 |  | 32d |
| JDH4-02-007-CN-2970 |  | Installation of Earthing System [Road 08 ] | 12d | 2026-10-25 | 2026-11-07 | JDH4-02-007-CN-2930 |  | 32d |
|  | 2 | **Telecommunication** |  | 2026-08-02 | 2026-09-22 |  |  |  |
| JDH4-02-007-CN-3070 |  | Installation Road Crossing R/F 6 way 50mm HDPE Pipe [Road 08 ] | 10d | 2026-08-02 | 2026-08-12 | JDH4-02-007-CN-2750 |  | 0d |
| JDH4-02-007-CN-3140 |  | Installation Road Crossing Un R/F 6 way 50mm HDPE Pipe [Road 08 ] | 10d | 2026-08-13 | 2026-08-24 | JDH4-02-007-CN-3070 |  | 0d |
| JDH4-02-007-CN-3200 |  | Installation of 2 x 32 mm diameter HDPE ducts [Road 08 ] | 10d | 2026-08-25 | 2026-09-05 | JDH4-02-007-CN-3140 |  | 0d |
| JDH4-02-007-CN-3250 |  | Installation of Manholes [Road 08 ] | 15d | 2026-09-06 | 2026-09-22 | JDH4-02-007-CN-3200 |  | 14d |
|  | 4 | **Road 07-N** |  | 2025-12-04 | 2026-12-15 |  |  |  |
|  | 6 | **Road Works** |  | 2025-12-04 | 2026-12-15 |  |  |  |
|  | 1 | **Eartworks & Site grading** |  | 2025-12-04 | 2026-08-06 |  |  |  |
| JDH4-02-007-CN-1730 |  | Road excavation [Road 07-N ](Completed) | 51d | 2025-12-04 A | 2026-02-01 A | JDH4-02-007-CN-5530 | 100% |  |
| JDH4-02-007-CN-1790 |  | Road backfilling [Road 07-N ](Completed) | 45d | 2025-12-11 A | 2026-02-01 A | JDH4-02-007-CN-1730 SS | 100% |  |
| JDH4-02-007-CN-1730R |  | Road excavation [Road 07-N ] | 24d | 2026-02-21 | 2026-03-24 | JDH4-02-007-CN-1790, JDH4-02-007-CN-1710R |  | 0d |
| JDH4-02-007-CN-1790R |  | Road backfilling [Road 07-N ] | 22d | 2026-02-24 | 2026-03-24 | JDH4-02-007-CN-1730R SS+2d |  | 0d |
| JDH4-02-007-CN-1910 |  | Subgrade [Road 07-N ] | 14d | 2026-07-22 | 2026-08-06 | JDH4-02-007-CN-5550, JDH4-02-007-CN-4370 SS, JDH4-02-007-CN-3690 SS, JDH4-02-007-CN-2640 |  | 14d |
|  | 2 | **Asphalt Works** |  | 2026-08-08 | 2026-09-22 |  |  |  |
| JDH4-02-007-CN-1970 |  | Aggregate base course [Road 07-N ] | 15d | 2026-08-08 | 2026-08-24 | JDH4-02-007-CN-1910, JDH4-02-007-CN-4730 |  | 14d |
| JDH4-02-007-CN-2020 |  | Prime Coat (MC1) [Road 07-N ] | 10d | 2026-08-25 | 2026-09-05 | JDH4-02-007-CN-1970, JDH4-02-007-CN-1970 FF, JDH4-02-007-CN-4630, JDH4-02-007-CN-4630 FF, JDH4-02-007-CN-4350, JDH4-02-007-CN-4350 FF |  | 14d |
| JDH4-02-007-CN-2070 |  | Bituminous base course [Road 07-N ] | 15d | 2026-09-06 | 2026-09-22 | JDH4-02-007-CN-2020 |  | 14d |
|  | 7 | **Finishing Works** |  | 2026-09-24 | 2026-12-15 |  |  |  |
|  | 1 | **Asphalt Wearing Course** |  | 2026-09-24 | 2026-10-21 |  |  |  |
| JDH4-02-007-CN-2120 |  | Tack Coat (RC2) [Road 07-N ] | 15d | 2026-09-24 | 2026-10-11 | JDH4-02-007-CN-2070, JDH4-02-007-CN-2050, JDH4-02-007-CN-3250 |  | 14d |
| JDH4-02-007-CN-2170 |  | Bituminous concrete wearing course [Road 07-N ] | 9d | 2026-10-12 | 2026-10-21 | JDH4-02-007-CN-2120 |  | 14d |
|  | 3 | **Precast Concrete Curb** |  | 2026-10-22 | 2026-11-04 |  |  |  |
| JDH4-02-007-CN-2220 |  | Installation of Precast Concrete curb [Road 07-N ] | 12d | 2026-10-22 | 2026-11-04 | JDH4-02-007-CN-2170 |  | 14d |
|  | 4 | **Precast Interlocking block pavers** |  | 2026-11-05 | 2026-11-18 |  |  |  |

| ID | WBS | Task | Duration | Start | Finish | Predecessors | Total float |
| --- | --- | --- | --- | --- | --- | --- | --- |
| JDH4-02-007-CN-2270 |  | Installation of Interlocking block pavers for sidewalk/footpath [Road 07-N ] | 12d | 2026-11-05 | 2026-11-18 | JDH4-02-007-CN-2220 | 14d |
|  | 5 | **Pavement Markings** |  | 2026-11-24 | 2026-12-01 |  |  |
| JDH4-02-007-CN-2320 |  | Pavement markings [Road 07-N ] | 7d | 2026-11-24 | 2026-12-01 | JDH4-02-007-CN-2270, JDH4-02-007-CN-3710, JDH4-02-007-MS-1090, JDH4-02-007-PR-2990 | 10d |
|  | 6 | **Traffic Signage** |  | 2026-12-02 | 2026-12-15 |  |  |
| JDH4-02-007-CN-2370 |  | Installation of Traffic Signs [Road 07-N ] | 12d | 2026-12-02 | 2026-12-15 | JDH4-02-007-CN-2320, JDH4-02-007-CN-3710 | 10d |
|  | 1 | **Storm Water Drainage** |  | 2026-03-25 | 2026-07-08 |  |  |
|  | 1 | **Pipe Works** |  | 2026-03-25 | 2026-06-27 |  |  |
| JDH4-02-007-CN-5350 |  | Excavation and Compaction (FDT) [Road 07-N ] | 24d | 2026-03-25 | 2026-04-21 | JDH4-02-007-CN-1790R | 0d |
| JDH4-02-007-CN-5400 |  | Sand Bedding [Road 07-N ] | 15d | 2026-04-22 | 2026-05-09 | JDH4-02-007-CN-5350 | 8d |
| JDH4-02-007-CN-5450 |  | Installation of GRP Pipe [Road 07-N ] | 16d | 2026-05-10 | 2026-05-31 | JDH4-02-007-CN-5400 | 8d |
| JDH4-02-007-CN-5500 |  | Sand Cover & Warning Tape [Road 07-N ] | 12d | 2026-06-01 | 2026-06-14 | JDH4-02-007-CN-5450 | 8d |
| JDH4-02-007-CN-5550 |  | Backfilling & Compaction [Road 07-N ] | 11d | 2026-06-15 | 2026-06-27 | JDH4-02-007-CN-5500, JDH4-02-007-CN-1790, JDH4-02-007-CN-1790R | 8d |
|  | 5 | **Pipe Encasement** |  | 2026-06-01 | 2026-06-11 |  |  |
| JDH4-02-007-CN-5820 |  | Pipe Encasement Works [Road 07-N ] | 10d | 2026-06-01 | 2026-06-11 | JDH4-02-007-CN-5450 | 35d |
|  | 2 | **Manholes** |  | 2026-06-01 | 2026-06-08 |  |  |
| JDH4-02-007-CN-5650 |  | Installation of Precast Manhole Ring [Road 07-N ] | 7d | 2026-06-01 | 2026-06-08 | JDH4-02-007-CN-5450 | 35d |
|  | 6 | **Precast Acces Openinig** |  | 2026-06-09 | 2026-06-11 |  |  |
| JDH4-02-007-CN-5700 |  | Installation of Precast Access Opening [Road 07-N ] | 3d | 2026-06-09 | 2026-06-11 | JDH4-02-007-CN-5650 | 35d |
|  | 3 | **Catch Basins** |  | 2026-06-13 | 2026-06-23 |  |  |
| JDH4-02-007-CN-5740 |  | Construction of Catch basins [Road 07-N ] | 10d | 2026-06-13 | 2026-06-23 | JDH4-02-007-CN-5700, JDH4-02-007-CN-5820 | 35d |
|  | 4 | **Concrete Outfalls** |  | 2026-06-28 | 2026-07-08 |  |  |
| JDH4-02-007-CN-5770 |  | Construction of Concrete outfall structure [Road 07-N ] | 10d | 2026-06-28 | 2026-07-08 | JDH4-02-007-CN-5740, JDH4-02-007-CN-5820, JDH4-02-007-CN-5550, JDH4-02-007-CN-5550 FF | 32d |
|  | 2 | **Sewerage Network** |  | 2026-04-22 | 2026-07-06 |  |  |
|  | 1 | **Pipe Works** |  | 2026-04-22 | 2026-07-06 |  |  |
| JDH4-02-007-CN-4800 |  | Excavation & Compaction (FDT) [Road 07-N ] | 21d | 2026-04-22 | 2026-05-16 | JDH4-02-007-CN-5350 | 0d |
| JDH4-02-007-CN-4870 |  | Sand Bedding [Road 07-N ] | 9d | 2026-05-17 | 2026-05-30 | JDH4-02-007-CN-4800 | 8d |
| JDH4-02-007-CN-4940 |  | Installation of GRP Pipe [Road 07-N ] | 12d | 2026-05-31 | 2026-06-13 | JDH4-02-007-CN-4870 | 8d |
| JDH4-02-007-CN-5010 |  | Gravity Test [Road 07-N ] | 5d | 2026-06-14 | 2026-06-18 | JDH4-02-007-CN-4940 | 8d |
| JDH4-02-007-CN-5080 |  | Sand Cover & Warning Tape [Road 07-N ] | 7d | 2026-06-20 | 2026-06-27 | JDH4-02-007-CN-5010 | 8d |
| JDH4-02-007-CN-5150 |  | Backfilling & Compaction [Road 07-N ] | 8d | 2026-06-28 | 2026-07-06 | JDH4-02-007-CN-5080, JDH4-02-007-CN-5550 | 8d |
|  | 5 | **Pipe Encasement** |  | 2026-06-14 | 2026-06-18 |  |  |
| JDH4-02-007-CN-5290 |  | Pipe Encasement Works [Road 07-N ] | 5d | 2026-06-14 | 2026-06-18 | JDH4-02-007-CN-4940 | 22d |
|  | 2 | **Manholes** |  | 2026-06-20 | 2026-06-27 |  |  |
| JDH4-02-007-CN-5220 |  | Installation of Manholes [Road 07-N ] | 7d | 2026-06-20 | 2026-06-27 | JDH4-02-007-CN-5290 | 22d |
|  | 3 | **TSE Network** |  | 2026-05-17 | 2026-11-25 |  |  |
|  | 1 | **Pipe Works** |  | 2026-05-17 | 2026-08-25 |  |  |
| JDH4-02-007-CN-4020 |  | Excavation and Compaction (FDT) [Road 07-N ] | 15d | 2026-05-17 | 2026-06-06 | JDH4-02-007-CN-4800 | 0d |
| JDH4-02-007-CN-4090 |  | Sand Bedding [Road 07-N ] | 12d | 2026-06-07 | 2026-06-20 | JDH4-02-007-CN-4020 | 14d |
| JDH4-02-007-CN-4160 |  | Installation of HDPE Pipe [Road 07-N ] | 15d | 2026-06-21 | 2026-07-07 | JDH4-02-007-CN-4090, JDH4-02-007-CN-5010 | 14d |
| JDH4-02-007-CN-4230 |  | Initial Pressure Test [Road 07-N ] | 5d | 2026-07-08 | 2026-07-13 | JDH4-02-007-CN-4160 | 14d |
| JDH4-02-007-CN-4300 |  | Sand Cover & Warning [Road 07-N ] | 7d | 2026-07-14 | 2026-07-21 | JDH4-02-007-CN-4230 | 14d |
| JDH4-02-007-CN-4370 |  | Backfilling & Compaction [Road 07-N ] | 12d | 2026-07-22 | 2026-08-04 | JDH4-02-007-CN-4300, JDH4-02-007-CN-5220, JDH4-02-007-CN-5150 | 14d |
| JDH4-02-007-CN-4680 |  | Point of Connection [Road 07-N ] | 2d | 2026-08-24 | 2026-08-25 | JDH4-02-007-CN-4160, JDH4-02-007-CN-4650, JDH4-02-007-CN-5770, JDH4-02-007-CN-5770 FF, JDH4-02-007-CN-3900 | 29d |
|  | 2 | **Pipe Encasement** |  | 2026-07-08 | 2026-07-12 |  |  |
| JDH4-02-007-CN-4440 |  | Encasement for Pipes [Road 07-N ] | 4d | 2026-07-08 | 2026-07-12 | JDH4-02-007-CN-4160 | 22d |
|  | 3 | **Valves** |  | 2026-11-18 | 2026-11-25 |  |  |
| JDH4-02-007-CN-4510 |  | Installation of Gate Valves [Road 07-N ] | 7d | 2026-11-18 | 2026-11-25 | JDH4-02-007-CN-4160, JDH4-02-007-CN-4440, JDH4-02-007-CN-4720, JDH4-02-007-CN-4730, JDH4-02-007-PR-1930, JDH4-02-007-CN-4530, JDH4-02-007-CN-4680 | 13d |
|  | 4 | **Risers** |  | 2026-11-18 | 2026-11-23 |  |  |
| JDH4-02-007-CN-4750 |  | Installation of Irrigation Riser with [Road 07-N ] | 5d | 2026-11-18 | 2026-11-23 | JDH4-02-007-CN-4510 SS, JDH4-02-007-CN-4440 | 13d |
|  | 4 | **Potable Network** |  | 2026-06-07 | 2026-08-04 |  |  |
|  | 1 | **Pipe Works** |  | 2026-06-07 | 2026-08-04 |  |  |
| JDH4-02-007-CN-3340 |  | Excavation and Compaction (FDT) [Road 07-N ] | 9d | 2026-06-07 | 2026-06-16 | JDH4-02-007-CN-4020 | 5d |
| JDH4-02-007-CN-3410 |  | Sand Bedding [Road 07-N ] | 7d | 2026-06-17 | 2026-06-24 | JDH4-02-007-CN-3340 | 5d |
| JDH4-02-007-CN-3480 |  | Installation of HDPE Pipe [Road 07-N ] | 12d | 2026-06-25 | 2026-07-08 | JDH4-02-007-CN-3410 | 5d |
| JDH4-02-007-CN-3550 |  | Initial Pressure Test [Road 07-N ] | 5d | 2026-07-09 | 2026-07-14 | JDH4-02-007-CN-3480 | 14d |
| JDH4-02-007-CN-3620 |  | Sand Cover & Warning Tape [Road 07-N ] | 6d | 2026-07-15 | 2026-07-21 | JDH4-02-007-CN-3550 | 14d |
| JDH4-02-007-CN-3690 |  | Backfilling [Road 07-N ] | 12d | 2026-07-22 | 2026-08-04 | JDH4-02-007-CN-3620, JDH4-02-007-CN-4440 | 14d |
|  | 2 | **Pipe Encasement** |  | 2026-07-09 | 2026-07-14 |  |  |
| JDH4-02-007-CN-3760 |  | Encasement for Pipes [Road 07-N ] | 5d | 2026-07-09 | 2026-07-14 | JDH4-02-007-CN-3480 | 7d |
|  | 3 | **Valves** |  | 2026-07-09 | 2026-07-16 |  |  |
| JDH4-02-007-CN-3830 |  | Installation of Gate Valves [Road 07-N ] | 7d | 2026-07-09 | 2026-07-16 | JDH4-02-007-CN-3480 | 5d |
|  | 4 | **Fire Hydrant** |  | 2026-07-18 | 2026-07-25 |  |  |
| JDH4-02-007-CN-3920 |  | Installation of 3-outlet fire hydrant [Road 07-N ] | 7d | 2026-07-18 | 2026-07-25 | JDH4-02-007-CN-3830, JDH4-02-007-CN-3760, JDH4-02-007-CN-5220 | 5d |
|  | 5 | **Electrical Works** |  | 2026-06-07 | 2026-11-09 |  |  |
|  | 1 | **LV Cables** |  | 2026-06-07 | 2026-06-27 |  |  |
|  | 2 | **Low Voltage Cable** |  | 2026-06-07 | 2026-06-27 |  |  |
| JDH4-02-007-CN-2630 |  | Excavation for Low Voltage Cable [Road 07-N ] | 10d | 2026-06-07 | 2026-06-17 | JDH4-02-007-CN-4020 | 0d |
| JDH4-02-007-CN-2640 |  | Installation of Low Voltage Cables [Road 07-N ] | 8d | 2026-06-18 | 2026-06-27 | JDH4-02-007-CN-2630 | 23d |
|  | 3 | **Street Lighting** |  | 2026-06-18 | 2026-11-09 |  |  |
| JDH4-02-007-CN-2780 |  | Excavation for Low Voltage Cable [Road 07-N ] | 13d | 2026-06-18 | 2026-07-02 | JDH4-02-007-CN-2630 | 0d |

| ID | WBS | Task | Duration | Start | Finish | Predecessors | Complete | Total float |
| --- | --- | --- | --- | --- | --- | --- | --- | --- |
| JDH4-02-007-CN-2790 |  | Installation of Road Crossing Ducts [Road 07-N ] | 12d | 2026-07-04 | 2026-07-16 | JDH4-02-007-CN-2780 |  | 6d |
| JDH4-02-007-CN-2860 |  | Installation of Low Voltage Cables [Road 07-N ] | 18d | 2026-07-18 | 2026-08-06 | JDH4-02-007-CN-2790, JDH4-02-007-CN-2640 |  | 6d |
| JDH4-02-007-CN-2900 |  | Installation of Lighting Poles [Road 07-N ] | 16d | 2026-09-24 | 2026-10-12 | JDH4-02-007-CN-2070, JDH4-02-007-CN-2840, JDH4-02-007-CN-2860, JDH4-02-007-CN-3920, JDH4-02-007-CN-4680, JDH4-02-007-CN-2860 FF, JDH4-02-007-CN-3920 FF |  | 30d |
| JDH4-02-007-CN-2940 |  | Installation of Lighting Luminaires [Road 07-N ] | 8d | 2026-10-13 | 2026-10-21 | JDH4-02-007-CN-2900 |  | 30d |
| JDH4-02-007-CN-3000 |  | Installation of Street Lighting Feeder pillars [Road 07-N ] | 8d | 2026-10-22 | 2026-10-31 | JDH4-02-007-CN-2940 |  | 30d |
| JDH4-02-007-CN-3010 |  | Installation of Earthing System [Road 07-N ] | 8d | 2026-11-01 | 2026-11-09 | JDH4-02-007-CN-3000 |  | 30d |
|  | 2 | **Telecommunication** |  | 2026-07-04 | 2026-08-27 |  |  |  |
| JDH4-02-007-CN-3090 |  | Installation Road Crossing R/F 6 way 50mm HDPE Pipe [Road 07-N ] | 12d | 2026-07-04 | 2026-07-16 | JDH4-02-007-CN-2780 |  | 0d |
| JDH4-02-007-CN-3160 |  | Installation Road Crossing Un R/F 6 way 50mm HDPE Pipe [Road 07-N ] | 12d | 2026-07-18 | 2026-07-30 | JDH4-02-007-CN-3090 |  | 0d |
| JDH4-02-007-CN-3210 |  | Installation of 2 x 32 mm diameter HDPE ducts [Road 07-N ] | 12d | 2026-08-01 | 2026-08-13 | JDH4-02-007-CN-3160, JDH4-02-007-CN-2640, JDH4-02-007-CN-3920 |  | 0d |
| JDH4-02-007-CN-3270 |  | Installation of Manholes [Road 07-N ] | 12d | 2026-08-15 | 2026-08-27 | JDH4-02-007-CN-3210, JDH4-02-007-CN-2860 |  | 0d |
|  | 3 | **Road 01** |  | 2026-01-07 | 2026-11-23 |  |  |  |
|  | 6 | **Road Works (Roundabout)** |  | 2026-02-03 | 2026-11-23 |  |  |  |
|  | 1 | **Eartworks & Site grading** |  | 2026-02-03 | 2026-07-27 |  |  |  |
| JDH4-02-007-CN-1720 |  | Road excavation [Road 01 ] | 10d | 2026-02-03 | 2026-02-14 | JDH4-02-007-CN-1730 |  | 3d |
| JDH4-02-007-CN-1780 |  | Road backfilling [Road 01 ] | 7d | 2026-02-15 | 2026-02-23 | JDH4-02-007-CN-1720 |  | 3d |
| JDH4-02-007-CN-1900 |  | Subgrade [Road 01 ] | 7d | 2026-07-20 | 2026-07-27 | JDH4-02-007-CN-5540, JDH4-02-007-CN-5140, JDH4-02-007-CN-4360, JDH4-02-007-CN-2850, JDH4-02-007-CN-2620 |  | 28d |
|  | 2 | **Asphalt Works** |  | 2026-07-28 | 2026-09-22 |  |  |  |
| JDH4-02-007-CN-1960 |  | Aggregate base course [Road 01 ] | 10d | 2026-07-28 | 2026-08-08 | JDH4-02-007-CN-1900 |  | 28d |
| JDH4-02-007-CN-2010 |  | Prime Coat (MC1) [Road 01 ] | 21d | 2026-08-09 | 2026-09-01 | JDH4-02-007-CN-1960 |  | 28d |
| JDH4-02-007-CN-2060 |  | Bituminous base course [Road 01 ] | 18d | 2026-09-02 | 2026-09-22 | JDH4-02-007-CN-2010 |  | 28d |
|  | 7 | **Finishing Works** |  | 2026-09-24 | 2026-11-23 |  |  |  |
|  | 1 | **Asphalt Wearing Course** |  | 2026-09-24 | 2026-10-22 |  |  |  |
| JDH4-02-007-CN-2110 |  | Tack Coat (RC2) [Road 01 ] | 10d | 2026-09-24 | 2026-10-05 | JDH4-02-007-CN-2060 |  | 40d |
| JDH4-02-007-CN-2160 |  | Bituminous concrete wearing course [Road 01 ] | 15d | 2026-10-06 | 2026-10-22 | JDH4-02-007-CN-2110 |  | 40d |
|  | 3 | **Precast Concrete Curb** |  | 2026-10-24 | 2026-11-01 |  |  |  |
| JDH4-02-007-CN-2210 |  | Installation of Precast Concrete curb [Road 01 ] | 8d | 2026-10-24 | 2026-11-01 | JDH4-02-007-CN-2160 |  | 40d |
|  | 4 | **Precast Interlocking block pavers** |  | 2026-11-02 | 2026-11-05 |  |  |  |
| JDH4-02-007-CN-2260 |  | Installation of Interlocking block pavers for sidewalk/footpath [Road 01 ] | 4d | 2026-11-02 | 2026-11-05 | JDH4-02-007-CN-2210 |  | 40d |
|  | 5 | **Pavement Markings** |  | 2026-11-05 | 2026-11-09 |  |  |  |
| JDH4-02-007-CN-2310 |  | Pavement markings [Road 01 ] | 4d | 2026-11-05 | 2026-11-09 | JDH4-02-007-CN-2220 |  | 25d |
|  | 6 | **Traffic Signage** |  | 2026-11-10 | 2026-11-23 |  |  |  |
| JDH4-02-007-CN-2360 |  | Installation of Traffic Signs [Road 01 ] | 12d | 2026-11-10 | 2026-11-23 | JDH4-02-007-CN-2310 |  | 25d |
|  | 1 | **Storm Water Drainage** |  | 2026-02-24 | 2026-04-22 |  |  |  |
|  | 1 | **Pipe Works** |  | 2026-02-24 | 2026-04-07 |  |  |  |
| JDH4-02-007-CN-5340 |  | Excavation and Compaction (FDT) [Road 01 ] | 12d | 2026-02-24 | 2026-03-09 | JDH4-02-007-CN-1780 |  | 3d |
| JDH4-02-007-CN-5390 |  | Sand Bedding [Road 01 ] | 6d | 2026-03-10 | 2026-03-16 | JDH4-02-007-CN-5340 |  | 19d |
| JDH4-02-007-CN-5440 |  | Installation of GRP Pipe [Road 01 ] | 5d | 2026-03-17 | 2026-03-25 | JDH4-02-007-CN-5390 |  | 19d |
| JDH4-02-007-CN-5490 |  | Sand Cover & Warning Tape [Road 01 ] | 6d | 2026-03-26 | 2026-04-01 | JDH4-02-007-CN-5440 |  | 24d |
| JDH4-02-007-CN-5540 |  | Backfilling & Compaction [Road 01 ] | 5d | 2026-04-02 | 2026-04-07 | JDH4-02-007-CN-5490, JDH4-02-007-CN-1780 |  | 24d |
|  | 5 | **Pipe Encasement** |  | 2026-03-26 | 2026-03-30 |  |  |  |
| JDH4-02-007-CN-5810 |  | Pipe Encasement Works [Road 01 ] | 4d | 2026-03-26 | 2026-03-30 | JDH4-02-007-CN-5440 |  | 19d |
|  | 2 | **Manholes** |  | 2026-03-31 | 2026-04-06 |  |  |  |
| JDH4-02-007-CN-5640 |  | Installation of Precast Manhole Ring [Road 01 ] | 6d | 2026-03-31 | 2026-04-06 | JDH4-02-007-CN-5810 |  | 19d |
|  | 6 | **Precast Acces Openinig** |  | 2026-04-07 | 2026-04-13 |  |  |  |
| JDH4-02-007-CN-5690 |  | Installation of Precast Access Opening [Road 01 ] | 6d | 2026-04-07 | 2026-04-13 | JDH4-02-007-CN-5640 |  | 19d |
|  | 4 | **Concrete Outfalls** |  | 2026-04-14 | 2026-04-22 |  |  |  |
| JDH4-02-007-CN-5780 |  | Construction of Concrete outfall structure [Road 01 ] | 8d | 2026-04-14 | 2026-04-22 | JDH4-02-007-CN-5690, JDH4-02-007-CN-5540 |  | 19d |
|  | 2 | **Sewerage Network** |  | 2026-03-10 | 2026-05-04 |  |  |  |
|  | 1 | **Pipe Works** |  | 2026-03-10 | 2026-05-04 |  |  |  |
| JDH4-02-007-CN-4790 |  | Excavation & Compaction (FDT) [Road 01 ] | 10d | 2026-03-10 | 2026-03-24 | JDH4-02-007-CN-5340 |  | 3d |
| JDH4-02-007-CN-4860 |  | Sand Bedding [Road 01 ] | 10d | 2026-03-25 | 2026-04-05 | JDH4-02-007-CN-4790 |  | 3d |
| JDH4-02-007-CN-4930 |  | Installation of GRP Pipe [Road 01 ] | 12d | 2026-04-06 | 2026-04-19 | JDH4-02-007-CN-4860 |  | 3d |
| JDH4-02-007-CN-5000 |  | Gravity Test [Road 01 ] | 3d | 2026-04-20 | 2026-04-22 | JDH4-02-007-CN-4930, JDH4-02-007-CN-5540 |  | 40d |
| JDH4-02-007-CN-5070 |  | Sand Cover & Warning Tape [Road 01 ] | 4d | 2026-04-23 | 2026-04-27 | JDH4-02-007-CN-5000 |  | 40d |
| JDH4-02-007-CN-5140 |  | Backfilling & Compaction [Road 01 ] | 6d | 2026-04-28 | 2026-05-04 | JDH4-02-007-CN-5070, JDH4-02-007-CN-5540 |  | 40d |
|  | 5 | **Pipe Encasement** |  | 2026-04-20 | 2026-04-23 |  |  |  |
| JDH4-02-007-CN-5280 |  | Pipe Encasement Works [Road 01 ] | 4d | 2026-04-20 | 2026-04-23 | JDH4-02-007-CN-4930 |  | 3d |
|  | 2 | **Manholes** |  | 2026-04-25 | 2026-04-30 |  |  |  |
| JDH4-02-007-CN-5210 |  | Installation of Manholes [Road 01 ] | 6d | 2026-04-25 | 2026-04-30 | JDH4-02-007-CN-5280 |  | 3d |
|  | 3 | **TSE Network** |  | 2026-01-07 | 2026-06-04 |  |  |  |
|  | 1 | **Pipe Works** |  | 2026-01-07 | 2026-06-04 |  |  |  |
| JDH4-02-007-CN-4010 |  | Excavation and Compaction (FDT) [Road 01 ](Completed) | 22d | 2026-01-07 A | 2026-02-01 A | JDH4-02-007-CN-1710 | 100% |  |
| JDH4-02-007-CN-4150 |  | Installation of HDPE Pipe [Road 01 ](Completed) | 21d | 2026-01-08 A | 2026-02-01 A | JDH4-02-007-CN-4080 SS, JDH4-02-007-CN-4080 FF | 100% |  |
| JDH4-02-007-CN-4080 |  | Sand Bedding [Road 01 ](Completed) | 20d | 2026-01-10 A | 2026-02-01 A | JDH4-02-007-CN-4010 | 100% |  |
| JDH4-02-007-CN-4290 |  | Sand Cover & Warning [Road 01 ](Completed) | 14d | 2026-01-17 A | 2026-02-01 A | JDH4-02-007-CN-4080 | 100% |  |
| JDH4-02-007-CN-4010R |  | Excavation and Compaction (FDT) [Road 01 ] | 12d | 2026-03-10 | 2026-03-26 | JDH4-02-007-CN-4290 FS+30d |  | 0d |
| JDH4-02-007-CN-4080R |  | Sand Bedding [Road 01 ] | 11d | 2026-03-28 | 2026-04-08 | JDH4-02-007-CN-4010R |  | 0d |
| JDH4-02-007-CN-4150R |  | Installation of HDPE Pipe [Road 01 ] | 12d | 2026-04-09 | 2026-04-22 | JDH4-02-007-CN-4080R |  | 0d |
| JDH4-02-007-CN-4220 |  | Initial Pressure Test [Road 01 ] | 10d | 2026-04-23 | 2026-05-04 | JDH4-02-007-CN-4150R |  | 0d |

| ID | WBS | Task | Duration | Start | Finish | Predecessors | Complete | Total float |
| --- | --- | --- | --- | --- | --- | --- | --- | --- |
| JDH4-02-007-CN-4290R |  | Sand Cover & Warning [Road 01 ] | 8d | 2026-05-05 | 2026-05-13 | JDH4-02-007-CN-4220, JDH4-02-007-CN-5210 |  | 0d |
| JDH4-02-007-CN-4360 |  | Backfilling & Compaction [Road 01 ] | 12d | 2026-05-14 | 2026-05-31 | JDH4-02-007-CN-4290R |  | 0d |
| JDH4-02-007-CN-4670 |  | Point of Connection [Road 01 ] | 4d | 2026-06-01 | 2026-06-04 | JDH4-02-007-CN-4360 |  | 0d |
|  | 2 | **Pipe Encasement** |  | 2026-04-23 | 2026-04-26 |  |  |  |
| JDH4-02-007-CN-4430 |  | Encasement for Pipes [Road 01 ] | 3d | 2026-04-23 | 2026-04-26 | JDH4-02-007-CN-4150, JDH4-02-007-CN-4150R |  | 38d |
|  | 3 | **Valves** |  | 2026-04-27 | 2026-05-10 |  |  |  |
| JDH4-02-007-CN-4500 |  | Installation of Gate Valves [Road 01 ] | 3d | 2026-04-27 | 2026-04-29 | JDH4-02-007-CN-4430 |  | 38d |
| JDH4-02-007-CN-4550 |  | Installation of Butterfly Valves [Road 01 ] | 3d | 2026-04-30 | 2026-05-03 | JDH4-02-007-CN-4500 |  | 38d |
| JDH4-02-007-CN-4560 |  | Installation of Washout Valves [Road 01 ] | 3d | 2026-05-04 | 2026-05-06 | JDH4-02-007-CN-4550 |  | 38d |
| JDH4-02-007-CN-4580 |  | Installation of Air Valves [Road 01 ] | 3d | 2026-05-07 | 2026-05-10 | JDH4-02-007-CN-4560, JDH4-02-007-CN-5140 |  | 38d |
|  | 4 | **Risers** |  | 2026-05-11 | 2026-05-13 |  |  |  |
| JDH4-02-007-CN-4740 |  | Installation of Irrigation Riser with [Road 01 ] | 3d | 2026-05-11 | 2026-05-13 | JDH4-02-007-CN-4580, JDH4-02-007-PR-1920, JDH4-02-007-CN-4580 FF |  | 38d |
|  | 4 | **Potable Network** |  | 2026-06-06 | 2026-08-27 |  |  |  |
|  | 1 | **Pipe Works** |  | 2026-06-06 | 2026-08-20 |  |  |  |
| JDH4-02-007-CN-3330 |  | Excavation and Compaction (FDT) [Road 01 ] | 12d | 2026-06-06 | 2026-06-18 | JDH4-02-007-CN-4010, JDH4-02-007-CN-4010R, JDH4-02-007-CN-4150R, JDH4-02-007-CN-4670 |  | 0d |
| JDH4-02-007-CN-3400 |  | Sand Bedding [Road 01 ] | 10d | 2026-06-20 | 2026-06-30 | JDH4-02-007-CN-3330 |  | 0d |
| JDH4-02-007-CN-3470 |  | Installation of HDPE Pipe [Road 01 ] | 12d | 2026-07-01 | 2026-07-14 | JDH4-02-007-CN-3400, JDH4-02-007-CN-4740, JDH4-02-007-CN-5780 |  | 0d |
| JDH4-02-007-CN-3540 |  | Initial Pressure Test [Road 01 ] | 9d | 2026-07-15 | 2026-07-25 | JDH4-02-007-CN-3470 |  | 0d |
| JDH4-02-007-CN-3610 |  | Sand Cover & Warning Tape [Road 01 ] | 13d | 2026-07-26 | 2026-08-09 | JDH4-02-007-CN-3540 |  | 0d |
| JDH4-02-007-CN-3680 |  | Backfilling [Road 01 ] | 10d | 2026-08-10 | 2026-08-20 | JDH4-02-007-CN-3610, JDH4-02-007-CN-4360, JDH4-02-007-CN-4740, JDH4-02-007-CN-5210 |  | 0d |
|  | 2 | **Pipe Encasement** |  | 2026-07-15 | 2026-07-16 |  |  |  |
| JDH4-02-007-CN-3750 |  | Encasement for Pipes [Road 01 ] | 2d | 2026-07-15 | 2026-07-16 | JDH4-02-007-CN-3470 |  | 20d |
|  | 3 | **Valves** |  | 2026-07-18 | 2026-08-04 |  |  |  |
| JDH4-02-007-CN-3820 |  | Installation of Gate Valves [Road 01 ] | 3d | 2026-07-18 | 2026-07-20 | JDH4-02-007-CN-3750, JDH4-02-007-PR-1810, JDH4-02-007-CN-5210 |  | 20d |
| JDH4-02-007-CN-3870 |  | Installation of Butterfly valves [Road 01 ] | 2d | 2026-07-21 | 2026-07-22 | JDH4-02-007-CN-3820 |  | 20d |
| JDH4-02-007-CN-3880 |  | Installation of Washout valves [Road 01 ] | 5d | 2026-07-23 | 2026-07-28 | JDH4-02-007-CN-3870, JDH4-02-007-CN-5770 |  | 20d |
| JDH4-02-007-CN-3890 |  | Installation of Air valves [Road 01 ] | 6d | 2026-07-29 | 2026-08-04 | JDH4-02-007-CN-3880 |  | 20d |
|  | 4 | **Fire Hydrant** |  | 2026-08-22 | 2026-08-27 |  |  |  |
| JDH4-02-007-CN-3910 |  | Installation of 3-outlet fire hydrant [Road 01 ] | 6d | 2026-08-22 | 2026-08-27 | JDH4-02-007-CN-3870, JDH4-02-007-PR-2470, JDH4-02-007-CN-3680 |  | 0d |
|  | 5 | **Valve Chambers** |  | 2026-06-20 | 2026-08-10 |  |  |  |
| JDH4-02-007-CN-3950 |  | Construction of Valve Chambers [Road 01 ] | 4d | 2026-06-20 | 2026-06-23 | JDH4-02-007-CN-3330, JDH4-02-007-CN-5780 |  | 26d |
| JDH4-02-007-CN-3960 |  | Construction of Wash out Chambers [Road 01 ] | 9d | 2026-06-24 | 2026-07-04 | JDH4-02-007-CN-3950 |  | 26d |
| JDH4-02-007-CN-3970 |  | Construction of Air Valve Chambers [Road 01 ] | 8d | 2026-07-05 | 2026-07-13 | JDH4-02-007-CN-3960 |  | 26d |
| JDH4-02-007-CN-4600 |  | Construction of Valve Chambers [Road 01 ] | 8d | 2026-07-14 | 2026-07-22 | JDH4-02-007-CN-3970 |  | 26d |
| JDH4-02-007-CN-4610 |  | Construction of Wash Out Valve Chambers [Road 01 ] | 8d | 2026-07-23 | 2026-08-01 | JDH4-02-007-CN-4600 |  | 26d |
| JDH4-02-007-CN-4630 |  | Construction of Air Valve Chambers [Road 01 ] | 8d | 2026-08-02 | 2026-08-10 | JDH4-02-007-CN-4610 |  | 26d |
|  | 6 | **Road Crossings** |  | 2026-07-15 | 2026-07-20 |  |  |  |
| JDH4-02-007-CN-3980 |  | Installation of HDPE road croosing [Road 01 ] | 5d | 2026-07-15 | 2026-07-20 | JDH4-02-007-CN-3470 |  | 24d |
|  | 5 | **Electrical Works** |  | 2026-06-01 | 2026-08-24 |  |  |  |
|  | 1 | **LV Cables** |  | 2026-06-01 | 2026-06-27 |  |  |  |
|  | 2 | **Low Voltage Cable** |  | 2026-06-01 | 2026-06-27 |  |  |  |
| JDH4-02-007-CN-2610 |  | Excavation for Low Voltage Cable [Road 01 ] | 15d | 2026-06-01 | 2026-06-17 | JDH4-02-007-CN-4360 |  | 5d |
| JDH4-02-007-CN-2620 |  | Installation of Low Voltage Cables [Road 01 ] | 8d | 2026-06-18 | 2026-06-27 | JDH4-02-007-CN-2610 |  | 27d |
|  | 3 | **Street Lighting** |  | 2026-06-18 | 2026-07-19 |  |  |  |
| JDH4-02-007-CN-2770 |  | Excavation for Low Voltage Cable [Road 01 ] | 13d | 2026-06-18 | 2026-07-02 | JDH4-02-007-CN-2610 |  | 5d |
| JDH4-02-007-CN-2850 |  | Installation of Low Voltage Cables [Road 01 ] | 14d | 2026-07-04 | 2026-07-19 | JDH4-02-007-CN-2770 |  | 5d |
|  | 2 | **Telecommunication** |  | 2026-07-04 | 2026-08-24 |  |  |  |
| JDH4-02-007-CN-3080 |  | Installation Road Crossing R/F 6 way 50mm HDPE Pipe [Road 01 ] | 15d | 2026-07-04 | 2026-07-20 | JDH4-02-007-CN-2770 |  | 24d |
| JDH4-02-007-CN-3150 |  | Installation Road Crossing Un R/F 6 way 50mm HDPE Pipe [Road 01 ] | 15d | 2026-07-21 | 2026-08-06 | JDH4-02-007-CN-3080, JDH4-02-007-CN-3980 |  | 24d |
| JDH4-02-007-CN-3260 |  | Installation of Manholes [Road 01 ] | 15d | 2026-08-08 | 2026-08-24 | JDH4-02-007-CN-3150 |  | 24d |
|  | 7 | **Open Drain Channel** |  | 2026-01-28 | 2026-05-19 |  |  |  |
| JDH4-02-007-CN-5850 |  | Channel excavation [Road 01 ](Completed) | 4d | 2026-01-28 A | 2026-02-01 A | JDH4-02-007-CN-4290 | 100% |  |
| JDH4-02-007-CN-5860 |  | Backfill of the existing channel [Road 01 ](Completed) | 4d | 2026-01-28 A | 2026-02-01 A | JDH4-02-007-CN-5850 FF | 100% |  |
| JDH4-02-007-CN-5850R |  | Channel excavation [Road 01 ] | 21d | 2026-02-03 | 2026-02-28 | JDH4-02-007-CN-5860 |  | 17d |
| JDH4-02-007-CN-5860R |  | Backfill of the existing channel [Road 01 ] | 21d | 2026-03-01 | 2026-03-28 | JDH4-02-007-CN-5850R |  | 17d |
| JDH4-02-007-CN-5870 |  | Compaction [Road 01 ] | 24d | 2026-03-29 | 2026-04-25 | JDH4-02-007-CN-5860R |  | 17d |
| JDH4-02-007-CN-5880 |  | Finished grouted riprap for side ditches [Road 01 ] | 21d | 2026-04-26 | 2026-05-19 | JDH4-02-007-CN-5870, JDH4-02-007-CN-5780 |  | 17d |
|  | 1 | **Road 02** |  | 2026-01-07 | 2026-12-19 |  |  |  |
|  | 7 | **Under Pass** |  | 2026-07-09 | 2026-09-17 |  |  |  |
| JDH4-02-007-CN-1940 |  | Compacted structural backfill for closing the underpass [Road 02 ] | 14d | 2026-07-09 | 2026-07-25 | JDH4-02-007-CN-1000, JDH4-02-007-CN-3830 SS |  | 50d |
| JDH4-02-007-CN-2410 |  | RC wall and the foundation at face of underpass [Road 02 ] | 21d | 2026-08-25 | 2026-09-17 | JDH4-02-007-CN-1940, JDH4-02-007-CN-3260, JDH4-02-007-CN-4630 |  | 24d |
|  | 2 | **Sewerage Network** |  | 2026-03-29 | 2026-07-22 |  |  |  |
|  | 1 | **Pipe Works** |  | 2026-03-29 | 2026-05-04 |  |  |  |
| JDH4-02-007-CN-4770 |  | Excavation & Compaction (FDT) [Road 02 ] | 12d | 2026-03-29 | 2026-04-11 | JDH4-02-007-CN-5870 SS |  | 30d |
| JDH4-02-007-CN-4840 |  | Sand Bedding [Road 02 ] | 10d | 2026-04-12 | 2026-04-22 | JDH4-02-007-CN-4770, JDH4-02-007-CN-4770 FF |  | 30d |
| JDH4-02-007-CN-4910 |  | Installation of GRP Pipe [Road 02 ] | 10d | 2026-04-12 | 2026-04-22 | JDH4-02-007-CN-4840 SS, JDH4-02-007-CN-4840 FF |  | 30d |
| JDH4-02-007-CN-4980 |  | Gravity Test [Road 02 ] | 3d | 2026-04-23 | 2026-04-26 | JDH4-02-007-CN-4910, JDH4-02-007-CN-4910 FF |  | 30d |
| JDH4-02-007-CN-5050 |  | Sand Cover & Warning Tape [Road 02 ] | 5d | 2026-04-27 | 2026-05-02 | JDH4-02-007-CN-4980, JDH4-02-007-CN-4980 FF |  | 30d |
| JDH4-02-007-CN-5120 |  | Backfilling & Compaction [Road 02 ] | 7d | 2026-04-27 | 2026-05-04 | JDH4-02-007-CN-5050 SS, JDH4-02-007-CN-5050 FF |  | 30d |
|  | 5 | **Pipe Encasement** |  | 2026-04-23 | 2026-04-30 |  |  |  |

| ID | WBS | Task | Duration | Start | Finish | Predecessors | Complete | Total float |
| --- | --- | --- | --- | --- | --- | --- | --- | --- |
| JDH4-02-007-CN-5260 |  | Pipe Encasement Works [Road 02 ] | 7d | 2026-04-23 | 2026-04-30 | JDH4-02-007-CN-4910 |  | 33d |
|  | 2 | **Manholes** |  | 2026-07-18 | 2026-07-22 |  |  |  |
| JDH4-02-007-CN-5190 |  | Installation of Manholes [Road 02 ] | 5d | 2026-07-18 | 2026-07-22 | JDH4-02-007-CN-5260, JDH4-02-007-CN-2850 SS+12d |  | 5d |
|  | 3 | **TSE Network** |  | 2026-01-07 | 2026-10-01 |  |  |  |
|  | 1 | **Pipe Works** |  | 2026-01-07 | 2026-08-23 |  |  |  |
| JDH4-02-007-CN-3990 |  | Excavation and Compaction (FDT) [Road 02 ](Completed) | 22d | 2026-01-07 A | 2026-02-01 A | JDH4-02-007-CN-5860 | 100% |  |
| JDH4-02-007-CN-4060 |  | Sand Bedding [Road 02 ](Completed) | 20d | 2026-01-10 A | 2026-02-01 A | JDH4-02-007-CN-3990 SS, JDH4-02-007-CN-3990 FF | 100% |  |
| JDH4-02-007-CN-4130 |  | Installation of HDPE Pipe [Road 02 ](Completed) | 17d | 2026-01-13 A | 2026-02-01 A | JDH4-02-007-CN-4060 SS, JDH4-02-007-CN-4060 FF | 100% |  |
| JDH4-02-007-CN-4270 |  | Sand Cover & Warning [Road 02 ](Completed) | 9d | 2026-01-22 A | 2026-02-01 A | JDH4-02-007-CN-4130 | 100% |  |
| JDH4-02-007-CN-3990R |  | Excavation and Compaction (FDT) [Road 02 ] | 18d | 2026-05-20 | 2026-06-13 | JDH4-02-007-CN-4270, JDH4-02-007-CN-5880, JDH4-02-007-CN-5260, JDH4-02-007-CN-5120 |  | 17d |
| JDH4-02-007-CN-4060R |  | Sand Bedding [Road 02 ] | 6d | 2026-06-14 | 2026-06-20 | JDH4-02-007-CN-3990R |  | 17d |
| JDH4-02-007-CN-4130R |  | Installation of HDPE Pipe [Road 02 ] | 11d | 2026-06-21 | 2026-07-02 | JDH4-02-007-CN-4060R |  | 17d |
| JDH4-02-007-CN-4200 |  | Initial Pressure Test [Road 02 ] | 5d | 2026-07-04 | 2026-07-08 | JDH4-02-007-CN-4130R |  | 17d |
| JDH4-02-007-CN-4270R |  | Sand Cover & Warning [Road 02 ] | 5d | 2026-07-23 | 2026-07-28 | JDH4-02-007-CN-4200, JDH4-02-007-CN-5190 |  | 5d |
| JDH4-02-007-CN-4340 |  | Backfilling & Compaction [Road 02 ] | 17d | 2026-07-29 | 2026-08-17 | JDH4-02-007-CN-4270R |  | 29d |
| JDH4-02-007-CN-4650 |  | Point of Connection [Road 02 ] | 5d | 2026-08-18 | 2026-08-23 | JDH4-02-007-CN-4130R, JDH4-02-007-CN-4340 |  | 29d |
|  | 2 | **Pipe Encasement** |  | 2026-08-26 | 2026-09-06 |  |  |  |
| JDH4-02-007-CN-4410 |  | Encasement for Pipes [Road 02 ] | 10d | 2026-08-26 | 2026-09-06 | JDH4-02-007-CN-4130, JDH4-02-007-CN-4130R, JDH4-02-007-CN-4650, JDH4-02-007-CN-4680 |  | 29d |
|  | 3 | **Valves** |  | 2026-09-07 | 2026-09-24 |  |  |  |
| JDH4-02-007-CN-4480 |  | Installation of Gate Valves [Road 02 ] | 5d | 2026-09-07 | 2026-09-12 | JDH4-02-007-CN-4130, JDH4-02-007-CN-4130R, JDH4-02-007-CN-4410 |  | 29d |
| JDH4-02-007-CN-4570 |  | Installation of Air Valves [Road 02 ] | 5d | 2026-09-19 | 2026-09-24 | JDH4-02-007-CN-4480, JDH4-02-007-CN-2410 |  | 24d |
|  | 4 | **Risers** |  | 2026-09-26 | 2026-10-01 |  |  |  |
| JDH4-02-007-CN-4720 |  | Installation of Irrigation Riser with [Road 02 ] | 6d | 2026-09-26 | 2026-10-01 | JDH4-02-007-CN-4570, JDH4-02-007-CN-4740, JDH4-02-007-CN-4410, JDH4-02-007-CN-4630, JDH4-02-007-CN-3670, JDH4-02-007-CN-4570 FF |  | 24d |
|  | 4 | **Potable Network** |  | 2026-06-28 | 2026-10-06 |  |  |  |
|  | 1 | **Pipe Works** |  | 2026-06-28 | 2026-09-07 |  |  |  |
| JDH4-02-007-CN-3310 |  | Excavation and Compaction (FDT) [Road 02 ] | 14d | 2026-06-28 | 2026-07-13 | JDH4-02-007-CN-2620 |  | 27d |
| JDH4-02-007-CN-3380 |  | Sand Bedding [Road 02 ] | 4d | 2026-07-14 | 2026-07-18 | JDH4-02-007-CN-3310 |  | 27d |
| JDH4-02-007-CN-3450 |  | Installation of HDPE Pipe [Road 02 ] | 10d | 2026-07-19 | 2026-07-29 | JDH4-02-007-CN-3380 |  | 27d |
| JDH4-02-007-CN-3520 |  | Initial Pressure Test [Road 02 ] | 8d | 2026-07-30 | 2026-08-08 | JDH4-02-007-CN-3450 |  | 27d |
| JDH4-02-007-CN-3590 |  | Sand Cover & Warning Tape [Road 02 ] | 10d | 2026-08-18 | 2026-08-29 | JDH4-02-007-CN-3520, JDH4-02-007-CN-2740 |  | 19d |
| JDH4-02-007-CN-3660 |  | Backfilling [Road 02 ] | 8d | 2026-08-30 | 2026-09-07 | JDH4-02-007-CN-3590, JDH4-02-007-CN-3670, JDH4-02-007-CN-5130 |  | 19d |
|  | 2 | **Pipe Encasement** |  | 2026-09-08 | 2026-09-13 |  |  |  |
| JDH4-02-007-CN-3730 |  | Encasement for Pipes [Road 02 ] | 5d | 2026-09-08 | 2026-09-13 | JDH4-02-007-CN-3450, JDH4-02-007-CN-3660 |  | 44d |
|  | 3 | **Valves** |  | 2026-09-08 | 2026-09-15 |  |  |  |
| JDH4-02-007-CN-3800 |  | Installation of Gate Valves [Road 02 ] | 7d | 2026-09-08 | 2026-09-15 | JDH4-02-007-CN-3730 SS, JDH4-02-007-CN-3890 |  | 44d |
|  | 5 | **Valve Chambers** |  | 2026-10-03 | 2026-10-06 |  |  |  |
| JDH4-02-007-CN-4620 |  | Construction of Air Valve Chambers [Road 02 ] | 4d | 2026-10-03 | 2026-10-06 | JDH4-02-007-CN-3800 SS, JDH4-02-007-CN-3980, JDH4-02-007-CN-5780, JDH4-02-007-CN-5190, JDH4-02-007-CN-4720, JDH4-02-007-CN-3910 |  | 24d |
|  | 5 | **Electrical Works** |  | 2026-10-07 | 2026-12-19 |  |  |  |
|  | 2 | **Telecommunication** |  | 2026-10-07 | 2026-12-19 |  |  |  |
| JDH4-02-007-CN-3060 |  | Installation Road Crossing R/F 6 way 50mm HDPE Pipe [Road 02 ] | 21d | 2026-10-07 | 2026-10-31 | JDH4-02-007-CN-3310, JDH4-02-007-CN-4620 |  | 24d |
| JDH4-02-007-CN-3130 |  | Installation Road Crossing Un R/F 6 way 50mm HDPE Pipe [Road 02 ] | 21d | 2026-11-01 | 2026-11-24 | JDH4-02-007-CN-3060 |  | 24d |
| JDH4-02-007-CN-3240 |  | Installation of Manholes [Road 02 ] | 21d | 2026-11-25 | 2026-12-19 | JDH4-02-007-CN-3130, JDH4-02-007-CN-3260, JDH4-02-007-CN-2850, JDH4-02-007-CN-2360, JDH4-02-007-CN-2260 |  | 24d |
|  | 7 | **Road 10** |  | 2026-05-17 | 2027-01-16 |  |  |  |
|  | 2 | **Sewerage Network** |  | 2026-05-17 | 2026-07-06 |  |  |  |
|  | 1 | **Pipe Works** |  | 2026-05-17 | 2026-07-06 |  |  |  |
| JDH4-02-007-CN-4830 |  | Excavation & Compaction (FDT) [Road 10 ] | 12d | 2026-05-17 | 2026-06-02 | JDH4-02-007-CN-4800 |  | 8d |
| JDH4-02-007-CN-4900 |  | Sand Bedding [Road 10 ] | 8d | 2026-06-03 | 2026-06-11 | JDH4-02-007-CN-4830 |  | 8d |
| JDH4-02-007-CN-4970 |  | Installation of GRP Pipe [Road 10 ] | 8d | 2026-06-13 | 2026-06-21 | JDH4-02-007-CN-4900 |  | 8d |
| JDH4-02-007-CN-5040 |  | Gravity Test [Road 10 ] | 4d | 2026-06-22 | 2026-06-25 | JDH4-02-007-CN-4970 |  | 8d |
| JDH4-02-007-CN-5110 |  | Sand Cover & Warning Tape [Road 10 ] | 4d | 2026-06-27 | 2026-06-30 | JDH4-02-007-CN-5040 |  | 8d |
| JDH4-02-007-CN-5180 |  | Backfilling & Compaction [Road 10 ] | 5d | 2026-07-01 | 2026-07-06 | JDH4-02-007-CN-5110 |  | 8d |
|  | 5 | **Pipe Encasement** |  | 2026-06-22 | 2026-06-27 |  |  |  |
| JDH4-02-007-CN-5320 |  | Pipe Encasement Works [Road 10 ] | 5d | 2026-06-22 | 2026-06-27 | JDH4-02-007-CN-4970 |  | 46d |
|  | 2 | **Manholes** |  | 2026-06-28 | 2026-07-05 |  |  |  |
| JDH4-02-007-CN-5250 |  | Installation of Manholes [Road 10 ] | 7d | 2026-06-28 | 2026-07-05 | JDH4-02-007-CN-5320 |  | 46d |
|  | 3 | **TSE Network** |  | 2026-07-29 | 2026-11-07 |  |  |  |
|  | 1 | **Pipe Works** |  | 2026-07-29 | 2026-11-07 |  |  |  |
| JDH4-02-007-CN-4050 |  | Excavation and Compaction (FDT) [Road 10 ] | 21d | 2026-07-29 | 2026-08-22 | JDH4-02-007-CN-5180, JDH4-02-007-CN-4270R, JDH4-02-007-CN-5120 |  | 5d |
| JDH4-02-007-CN-4120 |  | Sand Bedding [Road 10 ] | 21d | 2026-08-29 | 2026-09-21 | JDH4-02-007-CN-4050, JDH4-02-007-CN-5250, JDH4-02-007-CN-5250 FF, JDH4-02-007-CN-3910, JDH4-02-007-CN-3890, JDH4-02-007-CN-3270 |  | 0d |
| JDH4-02-007-CN-4190 |  | Installation of HDPE Pipe [Road 10 ] | 20d | 2026-09-22 | 2026-10-15 | JDH4-02-007-CN-4120, JDH4-02-007-CN-3680 |  | 10d |
| JDH4-02-007-CN-4260 |  | Initial Pressure Test [Road 10 ] | 6d | 2026-10-17 | 2026-10-22 | JDH4-02-007-CN-4190 |  | 10d |
| JDH4-02-007-CN-4710 |  | Point of Connection [Road 10 ] | 3d | 2026-10-17 | 2026-10-19 | JDH4-02-007-CN-4190 |  | 23d |
| JDH4-02-007-CN-4330 |  | Sand Cover & Warning [Road 10 ] | 8d | 2026-10-24 | 2026-11-01 | JDH4-02-007-CN-4260 |  | 10d |
| JDH4-02-007-CN-4400 |  | Backfilling & Compaction [Road 10 ] | 11d | 2026-10-26 | 2026-11-07 | JDH4-02-007-CN-4330 SS+2d |  | 10d |
|  | 2 | **Pipe Encasement** |  | 2026-10-17 | 2026-10-24 |  |  |  |
| JDH4-02-007-CN-4470 |  | Encasement for Pipes [Road 10 ] | 7d | 2026-10-17 | 2026-10-24 | JDH4-02-007-CN-4190, JDH4-02-007-CN-3920, JDH4-02-007-CN-5220, JDH4-02-007-CN-5850 |  | 15d |
|  | 3 | **Valves** |  | 2026-10-17 | 2026-10-28 |  |  |  |
| JDH4-02-007-CN-4540 |  | Installation of Gate Valves [Road 10 ] | 5d | 2026-10-17 | 2026-10-21 | JDH4-02-007-CN-4190 |  | 15d |
| JDH4-02-007-CN-4590 |  | Installation of Air Valves [Road 10 ] | 6d | 2026-10-22 | 2026-10-28 | JDH4-02-007-CN-4540 |  | 15d |
|  | 4 | **Potable Network** |  | 2026-08-23 | 2026-11-08 |  |  |  |

| ID | WBS | Task | Duration | Start | Finish | Predecessors | Total float |
| --- | --- | --- | --- | --- | --- | --- | --- |
|  | 1 | **Pipe Works** |  | 2026-08-23 | 2026-11-08 |  |  |
| JDH4-02-007-CN-3370 |  | Excavation and Compaction (FDT) [Road 10 ] | 17d | 2026-08-23 | 2026-09-10 | JDH4-02-007-CN-4050, JDH4-02-007-CN-3480 | 16d |
| JDH4-02-007-CN-3440 |  | Sand Bedding [Road 10 ] | 15d | 2026-09-12 | 2026-09-29 | JDH4-02-007-CN-3370, JDH4-02-007-CN-3660 | 16d |
| JDH4-02-007-CN-3510 |  | Installation of HDPE Pipe [Road 10 ] | 14d | 2026-09-30 | 2026-10-15 | JDH4-02-007-CN-3440 | 16d |
| JDH4-02-007-CN-3580 |  | Initial Pressure Test [Road 10 ] | 5d | 2026-10-17 | 2026-10-21 | JDH4-02-007-CN-3510 | 21d |
| JDH4-02-007-CN-3650 |  | Sand Cover & Warning Tape [Road 10 ] | 9d | 2026-10-29 | 2026-11-08 | JDH4-02-007-CN-3580, JDH4-02-007-CN-4590 | 15d |
| JDH4-02-007-CN-3720 |  | Backfilling [Road 10 ] | 9d | 2026-10-29 | 2026-11-08 | JDH4-02-007-CN-3650 SS, JDH4-02-007-CN-4710 | 15d |
|  | 2 | **Pipe Encasement** |  | 2026-10-25 | 2026-10-29 |  |  |
| JDH4-02-007-CN-3790 |  | Encasement for Pipes [Road 10 ] | 5d | 2026-10-25 | 2026-10-29 | JDH4-02-007-CN-3510, JDH4-02-007-CN-4470 | 15d |
|  | 3 | **Valves** |  | 2026-10-29 | 2026-11-04 |  |  |
| JDH4-02-007-CN-3860 |  | Installation of Gate Valves [Road 10 ] | 6d | 2026-10-29 | 2026-11-04 | JDH4-02-007-CN-3510, JDH4-02-007-CN-4590 | 16d |
|  | 5 | **Valve Chambers** |  | 2026-10-31 | 2026-11-08 |  |  |
| JDH4-02-007-CN-4640 |  | Construction of Air Valve Chambers [Road 10 ] | 8d | 2026-10-31 | 2026-11-08 | JDH4-02-007-CN-3860 SS, JDH4-02-007-CN-3790, JDH4-02-007-CN-4590, JDH4-02-007-CN-5250 | 15d |
|  | 5 | **Electrical Works** |  | 2026-10-17 | 2027-01-16 |  |  |
|  | 1 | **MV & LV Cables** |  | 2026-10-17 | 2026-11-22 |  |  |
|  | 2 | **Low Voltage Cable** |  | 2026-10-17 | 2026-11-22 |  |  |
| JDH4-02-007-CN-2670 |  | Excavation for Low Voltage Cable [Road 10 ] | 11d | 2026-10-17 | 2026-10-28 | JDH4-02-007-CN-3510 | 16d |
| JDH4-02-007-CN-2680 |  | Installation of Low Voltage Cables [Road 10 ] | 11d | 2026-11-10 | 2026-11-22 | JDH4-02-007-CN-2670, JDH4-02-007-CN-4640, JDH4-02-007-CN-3010, JDH4-02-007-CN-2970 | 30d |
|  | 2 | **Telecommunication** |  | 2026-10-29 | 2027-01-16 |  |  |
| JDH4-02-007-CN-3120 |  | Installation Road Crossing R/F 6 way 50mm HDPE Pipe [Road 10 ] | 19d | 2026-10-29 | 2026-11-19 | JDH4-02-007-CN-2670 | 16d |
| JDH4-02-007-CN-3190 |  | Installation Road Crossing Un R/F 6 way 50mm HDPE Pipe [Road 10 ] | 16d | 2026-11-24 | 2026-12-12 | JDH4-02-007-CN-3120, JDH4-02-007-CN-3720, JDH4-02-007-CN-4400, JDH4-02-007-CN-3710, JDH4-02-007-CN-4750, JDH4-02-007-MS-1080 | 13d |
| JDH4-02-007-CN-3230 |  | Installation of 2 x 32 mm diameter HDPE ducts [Road 10 ] | 17d | 2026-12-16 | 2027-01-04 | JDH4-02-007-CN-3190, JDH4-02-007-CN-2680, JDH4-02-007-CN-2370 | 10d |
| JDH4-02-007-CN-3300 |  | Installation of Manholes [Road 10 ] | 10d | 2027-01-05 | 2027-01-16 | JDH4-02-007-CN-3230, JDH4-02-007-CN-2680, JDH4-02-007-CN-2680 FF, JDH4-02-007-CN-3240 | 10d |
|  | 8 | **Out of Zone** |  | 2026-10-17 | 2026-12-03 |  |  |
|  | 5 | **Electrical Works** |  | 2026-10-17 | 2026-12-03 |  |  |
|  | 1 | **LV Cables** |  | 2026-10-17 | 2026-12-03 |  |  |
|  | 2 | **Low Voltage Cable** |  | 2026-10-17 | 2026-12-03 |  |  |
| JDH4-02-007-CN-2690 |  | Excavation for Low Voltage Cable [Out of Zone ] | 21d | 2026-10-17 | 2026-11-09 | JDH4-02-007-CN-2670 SS, JDH4-02-007-CN-2410 | 37d |
| JDH4-02-007-CN-2700 |  | Installation of Low Voltage Cables [Out of Zone ] | 21d | 2026-11-10 | 2026-12-03 | JDH4-02-007-CN-2690 | 37d |
|  | 6 | **Sewage Lift Station** |  | 2026-09-06 | 2027-05-02 |  |  |
|  | 1 | **Site Works** |  | 2026-09-06 | 2026-10-24 |  |  |
| JDH4-02-007-CN-5910 |  | Excavation [Sewage Lift Station ] | 20d | 2026-09-06 | 2026-09-29 | JDH4-02-007-EN-1680, JDH4-02-007-EN-1690, JDH4-02-007-EN-1710, JDH4-02-007-EN-1730, JDH4-02-007-EN-1770, JDH4-02-007-EN-1700, JDH4-02-007-CN-3200, JDH4-02-007-CN-4120 SS+7d, JDH4-02-007-PR-2430, JDH4-02-007-PR-2559 | 0d |
| JDH4-02-007-CN-5920 |  | Backfilling [Sewage Lift Station ] | 11d | 2026-09-30 | 2026-10-12 | JDH4-02-007-CN-5910 | 0d |
| JDH4-02-007-CN-5930 |  | Install gravel beddings [Sewage Lift Station ] | 10d | 2026-10-13 | 2026-10-24 | JDH4-02-007-EN-1680, JDH4-02-007-EN-1690, JDH4-02-007-EN-1710, JDH4-02-007-EN-1730, JDH4-02-007-CN-5920, JDH4-02-007-EN-1770, JDH4-02-007-EN-1700, JDH4-02-007-PR-1500, JDH4-02-007-PR-1470 | 0d |
|  | 2 | **Concrete Works** |  | 2026-10-25 | 2026-11-24 |  |  |
| JDH4-02-007-CN-1010 |  | Lean concrete under the foundations [Sewage Lift Station ] | 8d | 2026-10-25 | 2026-11-02 | JDH4-02-007-PR-3110, JDH4-02-007-CN-5930 | 0d |
| JDH4-02-007-CN-1020 |  | Footings For Sewage Lift Station [Sewage Lift Station ] | 8d | 2026-11-03 | 2026-11-11 | JDH4-02-007-CN-1010, JDH4-02-007-CN-5930 | 0d |
| JDH4-02-007-CN-1030 |  | Cast concrete for trench Including Mastic sealant [Sewage Lift Station ] | 11d | 2026-11-12 | 2026-11-24 | JDH4-02-007-CN-1020 | 11d |
|  | 4 | **Thermal & Moisture Protection** |  | 2026-11-25 | 2026-12-06 |  |  |
| JDH4-02-007-CN-1050 |  | Install 250 micron polyethylene sheet under slab on grade and footings [Sewage Lift Station ] | 5d | 2026-11-25 | 2026-11-30 | JDH4-02-007-CN-1030, JDH4-02-007-PR-2370 | 11d |
| JDH4-02-007-CN-1060 |  | Applying 2 Coats of Bituminous Paint [Sewage Lift Station ] | 5d | 2026-12-01 | 2026-12-06 | JDH4-02-007-CN-1050 | 11d |
|  | 3 | **Metals** |  | 2026-11-12 | 2026-11-18 |  |  |
| JDH4-02-007-CN-1040 |  | Install Stainless steel [Sewage Lift Station ] | 6d | 2026-11-12 | 2026-11-18 | JDH4-02-007-CN-1020, JDH4-02-007-PR-1860 | 17d |
|  | 5 | **Mechanical Works** |  | 2026-11-12 | 2027-01-21 |  |  |
|  | 1 | **Pipes & Fittings** |  | 2026-11-12 | 2027-01-21 |  |  |
| JDH4-02-007-CN-1090 |  | Installation of Pipes & Fittings [Sewage Lift Station ] | 14d | 2026-11-12 | 2026-11-28 | JDH4-02-007-PR-2310, JDH4-02-007-CN-1020, JDH4-02-007-PR-2559 | 0d |
| JDH4-02-007-CN-1100 |  | Installation of Gate Valves [Sewage Lift Station ] | 9d | 2026-11-29 | 2026-12-08 | JDH4-02-007-CN-1090, JDH4-02-007-CN-1040 | 9d |
| JDH4-02-007-CN-1120 |  | Installation of Dismantling Joints [Sewage Lift Station ] | 8d | 2026-12-09 | 2026-12-17 | JDH4-02-007-CN-1100, JDH4-02-007-CN-1060 | 9d |
| JDH4-02-007-CN-1130 |  | Installation of Non Return Valve DN250 [Sewage Lift Station ] | 9d | 2026-12-19 | 2026-12-28 | JDH4-02-007-CN-1120 | 9d |
| JDH4-02-007-CN-1140 |  | Installation of Air Valve DN60 [Sewage Lift Station ] | 8d | 2026-12-29 | 2027-01-06 | JDH4-02-007-CN-1130 | 9d |
| JDH4-02-007-CN-1150 |  | Installation of Bauer Coupling DN150 [Sewage Lift Station ] | 6d | 2027-01-07 | 2027-01-13 | JDH4-02-007-CN-1140, JDH4-02-007-PR-2640 | 9d |
| JDH4-02-007-CN-1160 |  | Installation of Odors scrubbing system [Sewage Lift Station ] | 7d | 2027-01-14 | 2027-01-21 | JDH4-02-007-CN-1150, JDH4-02-007-CN-1060 | 9d |
|  | 2 | **Control Equipment** |  | 2026-11-29 | 2027-01-11 |  |  |
| JDH4-02-007-CN-1180 |  | Installation of Manually operated davit crane (portable) [Sewage Lift Station ] | 8d | 2026-11-29 | 2026-12-07 | JDH4-02-007-CN-1090, JDH4-02-007-PR-2430, JDH4-02-007-PR-3100 | 0d |
| JDH4-02-007-CN-1190 |  | Installation of Air Vents [Sewage Lift Station ] | 7d | 2026-12-17 | 2026-12-24 | JDH4-02-007-CN-1180, JDH4-02-007-PR-2150 | 4d |
| JDH4-02-007-CN-1200 |  | Installation of Screening Container [Sewage Lift Station ] | 8d | 2026-12-26 | 2027-01-03 | JDH4-02-007-CN-1190, JDH4-02-007-PR-2250 | 4d |
| JDH4-02-007-CN-1210 |  | Installation of Baffle Plates [Sewage Lift Station ] | 7d | 2027-01-04 | 2027-01-11 | JDH4-02-007-CN-1200, JDH4-02-007-CN-5880 | 4d |
|  | 3 | **Interface Works** |  | 2026-12-08 | 2026-12-10 |  |  |
| JDH4-02-007-CN-1220 |  | Interfacing Works [Sewage Lift Station ] | 3d | 2026-12-08 | 2026-12-10 | JDH4-02-007-CN-1180 | 0d |
|  | 4 | **Anti Water Hammer Equipment** |  | 2026-12-12 | 2026-12-15 |  |  |
| JDH4-02-007-CN-1230 |  | Installation of Anti-Water Hammer Equipment [Sewage Lift Station ] | 4d | 2026-12-12 | 2026-12-15 | JDH4-02-007-CN-1220 | 14d |
|  | 5 | **Air Conditioning & Ventilation** |  | 2027-01-12 | 2027-01-18 |  |  |
| JDH4-02-007-CN-1240 |  | Installation of Air Conditioning [Sewage Lift Station ] | 6d | 2027-01-12 | 2027-01-18 | JDH4-02-007-CN-1230, JDH4-02-007-PR-2400, JDH4-02-007-CN-1210 | 4d |
|  | 6 | **Fuel System** |  | 2026-12-16 | 2027-01-04 |  |  |
| JDH4-02-007-CN-1260 |  | Installation of Bulk Fuel storage tank, 2500 Liter (7 Days of storage) [Sewage Lift Station ] | 5d | 2026-12-16 | 2026-12-21 | JDH4-02-007-CN-1230, JDH4-02-007-PR-1890, JDH4-02-007-PR-1890 FF | 14d |
| JDH4-02-007-CN-1270 |  | Installation of Fuel pump set , 1 duty and 1 standby, Capacity 100 L/h, Head 1 Bar [Sewage Lift Station ] | 6d | 2026-12-22 | 2026-12-28 | JDH4-02-007-CN-1260 | 14d |
| JDH4-02-007-CN-1280 |  | Pipes and Fitting Works [Sewage Lift Station ] | 6d | 2026-12-29 | 2027-01-04 | JDH4-02-007-CN-1270 | 19d |
|  | 7 | **Fire Fighting** |  | 2026-12-29 | 2027-01-21 |  |  |
| JDH4-02-007-CN-1290 |  | Installation of Fire fighting for electrical room which has a volume of about 62 m3 [Sewage Lift Station ] | 5d | 2026-12-29 | 2027-01-03 | JDH4-02-007-CN-1270, JDH4-02-007-PR-2340, JDH4-02-007-PR-2340 FF | 14d |
| JDH4-02-007-CN-1300 |  | Installation of Foam type - wheeled type 20 Gallon capacity-ref. FE-01 [Sewage Lift Station ] | 3d | 2027-01-19 | 2027-01-21 | JDH4-02-007-CN-1290, JDH4-02-007-CN-1210, JDH4-02-007-CN-1240 | 4d |

| ID | WBS | Task | Duration | Start | Finish | Predecessors | Total float |
| --- | --- | --- | --- | --- | --- | --- | --- |
|  | 8 | **Pumps** |  | 2027-01-04 | 2027-01-10 |  |  |
| JDH4-02-007-CN-1070 |  | Installation of Submersible pump [Sewage Lift Station ] | 6d | 2027-01-04 | 2027-01-10 | JDH4-02-007-CN-1290 | 14d |
|  | 6 | **Electrical Works** |  | 2026-12-12 | 2027-05-02 |  |  |
|  | 1 | **Main Distribution Board** |  | 2026-12-12 | 2026-12-27 |  |  |
| JDH4-02-007-CN-1310 |  | Installation of Main Distribution Board/MCC Panel [Sewage Lift Station ] | 7d | 2026-12-12 | 2026-12-19 | JDH4-02-007-CN-1220, JDH4-02-007-PR-2650 | 0d |
| JDH4-02-007-CN-1320 |  | Installation of Panel Board [Sewage Lift Station ] | 7d | 2026-12-20 | 2026-12-27 | JDH4-02-007-CN-1310, JDH4-02-007-PR-2710, JDH4-02-007-PR-2510 | 15d |
|  | 2 | **Local Control Panel** |  | 2026-12-20 | 2027-01-27 |  |  |
| JDH4-02-007-CN-1330 |  | Installation of MCP-LP-01 [Sewage Lift Station ] | 10d | 2026-12-20 | 2026-12-30 | JDH4-02-007-CN-1310 | 0d |
| JDH4-02-007-CN-1350 |  | Installation of MCP-LP-02 [Sewage Lift Station ] | 5d | 2026-12-31 | 2027-01-05 | JDH4-02-007-CN-1330 | 13d |
| JDH4-02-007-CN-1360 |  | Installation of OD-CP [Sewage Lift Station ] | 5d | 2027-01-06 | 2027-01-11 | JDH4-02-007-CN-1350 | 13d |
| JDH4-02-007-CN-1370 |  | Installation of FP-CP [Sewage Lift Station ] | 5d | 2027-01-23 | 2027-01-27 | JDH4-02-007-CN-1360, JDH4-02-007-CN-1300, JDH4-02-007-CN-1070, JDH4-02-007-CN-1280 | 4d |
|  | 3 | **Diesel Generator** |  | 2026-12-31 | 2027-01-11 |  |  |
| JDH4-02-007-CN-1380 |  | Installation of Standby Diesel Generator [Sewage Lift Station ] | 10d | 2026-12-31 | 2027-01-11 | JDH4-02-007-CN-1330, JDH4-02-007-PR-2750 | 0d |
|  | 4 | **Power Factor Correction Capacitor Bank** |  | 2027-01-12 | 2027-01-19 |  |  |
| JDH4-02-007-CN-1390 |  | Installation of Power Factor Correction Capacitor Bank [Sewage Lift Station ] | 7d | 2027-01-12 | 2027-01-19 | JDH4-02-007-CN-1380, JDH4-02-007-CN-1320, JDH4-02-007-PR-2880 | 2d |
|  | 5 | **Low-Voltage Electrical Power Conductors and Cables** |  | 2027-01-20 | 2027-01-30 |  |  |
| JDH4-02-007-CN-1410 |  | Installation of Low Voltage Cables [Sewage Lift Station ] | 9d | 2027-01-20 | 2027-01-30 | JDH4-02-007-CN-1390, JDH4-02-007-PR-2890, JDH4-02-007-PR-2950 | 2d |
|  | 6 | **Wiring Devices** |  | 2027-01-31 | 2027-02-04 |  |  |
| JDH4-02-007-CN-1420 |  | Installation of Wiring Devices [Sewage Lift Station ] | 5d | 2027-01-31 | 2027-02-04 | JDH4-02-007-CN-1410, JDH4-02-007-CN-1370, JDH4-02-007-CN-1160 | 2d |
|  | 7 | **Enclosed Switches and Circuit Breakers** |  | 2027-01-12 | 2027-01-17 |  |  |
| JDH4-02-007-CN-1440 |  | Installation of Enclosed Switches and Circuit Breakers [Sewage Lift Station ] | 5d | 2027-01-12 | 2027-01-17 | JDH4-02-007-CN-1380, JDH4-02-007-PR-2990 | 0d |
|  | 8 | **Lighting** |  | 2027-01-18 | 2027-01-24 |  |  |
| JDH4-02-007-CN-1450 |  | Installation of Lightings [Sewage Lift Station ] | 6d | 2027-01-18 | 2027-01-24 | JDH4-02-007-CN-1440 | 0d |
|  | 9 | **Grounding and Bonding for Electrical Systems** |  | 2027-01-25 | 2027-01-31 |  |  |
| JDH4-02-007-CN-1460 |  | Installation of Grounding Links [Sewage Lift Station ] | 6d | 2027-01-25 | 2027-01-31 | JDH4-02-007-CN-1450, JDH4-02-007-PR-2910 | 0d |
|  | 10 | **Electrical Manholes** |  | 2027-02-01 | 2027-02-07 |  |  |
| JDH4-02-007-CN-1470 |  | Installation of Electrical Manholes [Sewage Lift Station ] | 6d | 2027-02-01 | 2027-02-07 | JDH4-02-007-CN-1460, JDH4-02-007-PR-2640 | 0d |
|  | 11 | **ICT (Data& telephone System)** |  | 2027-02-08 | 2027-03-14 |  |  |
| JDH4-02-007-CN-1490 |  | Installation of IDF Cabinet 9U (for data &Telephone) [Sewage Lift Station ] | 10d | 2027-02-08 | 2027-02-18 | JDH4-02-007-CN-1470, JDH4-02-007-PR-3100, JDH4-02-007-CN-1420 | 0d |
| JDH4-02-007-CN-1500 |  | Installationof Single data/Telephone outlet [Sewage Lift Station ] | 5d | 2027-02-20 | 2027-02-25 | JDH4-02-007-CN-1490 | 0d |
| JDH4-02-007-CN-1510 |  | Installation of Data Switch (24 Port) [Sewage Lift Station ] | 5d | 2027-02-27 | 2027-03-03 | JDH4-02-007-CN-1500 | 42d |
| JDH4-02-007-CN-1520 |  | Installation of Fiber optic cable (12 Core single mode). [Sewage Lift Station ] | 6d | 2027-03-04 | 2027-03-14 | JDH4-02-007-CN-1510 | 42d |
|  | 12 | **Security System (CCTV System)** |  | 2027-02-27 | 2027-03-16 |  |  |
| JDH4-02-007-CN-1530 |  | Installation of 5.0 Megapixel, Fixed bullet IP CCTV camera [Sewage Lift Station ] | 13d | 2027-02-27 | 2027-03-16 | JDH4-02-007-CN-1500, JDH4-02-007-PR-2430 | 0d |
|  | 13 | **Duct Bank and Handhole For Telecom Network** |  | 2027-03-17 | 2027-04-05 |  |  |
| JDH4-02-007-CN-1540 |  | Installation of 2 x 50mm HDPE ducts Bank [Sewage Lift Station ] | 12d | 2027-03-17 | 2027-03-30 | JDH4-02-007-CN-1530 | 0d |
| JDH4-02-007-CN-1550 |  | Installation of Handholes (800x800x800 mm) [Sewage Lift Station ] | 5d | 2027-03-31 | 2027-04-05 | JDH4-02-007-CN-1540 | 23d |
|  | 14 | **Programmable Logic Controllers** |  | 2027-03-31 | 2027-04-15 |  |  |
| JDH4-02-007-CN-1570 |  | Installation of Programmable Logic Controller [Sewage Lift Station ] | 14d | 2027-03-31 | 2027-04-15 | JDH4-02-007-CN-1540, JDH4-02-007-PR-3150 | 0d |
|  | 15 | **Process Control Wiring** |  | 2027-04-17 | 2027-04-20 |  |  |
| JDH4-02-007-CN-1580 |  | Installation of Process Control Wiring [Sewage Lift Station ] | 4d | 2027-04-17 | 2027-04-20 | JDH4-02-007-CN-1570, JDH4-02-007-PR-3110, JDH4-02-007-PR-2660 | 0d |
|  | 16 | **Instrumentation for Process Systems** |  | 2027-04-21 | 2027-05-02 |  |  |
| JDH4-02-007-CN-1600 |  | Installation of Process System [Sewage Lift Station ] | 10d | 2027-04-21 | 2027-05-02 | JDH4-02-007-CN-1580, JDH4-02-007-PR-3030 | 0d |
|  | 7 | **Fence Work** |  | 2027-02-27 | 2027-04-12 |  |  |
| JDH4-02-007-CN-5890 |  | Installation of Chain Link Fence [Sewage Lift Station ] | 20d | 2027-02-27 | 2027-03-24 | JDH4-02-007-CN-1500 | 17d |
| JDH4-02-007-CN-5900 |  | Installation of Pedestrian Gate [Sewage Lift Station ] | 16d | 2027-03-25 | 2027-04-12 | JDH4-02-007-CN-5890 | 17d |
|  | 4 | **MV Cable Works** |  | 2027-01-02 | 2027-05-06 |  |  |
|  | 1 | **Medium Voltage Cable Road 8** |  | 2027-01-02 | 2027-03-06 |  |  |
| JDH4-02-007-CN-2420 |  | Excavation for Trench [Road 08 ] | 13d | 2027-01-02 | 2027-01-16 | JDH4-02-007-PR-1750, JDH4-02-007-MS-1130, JDH4-02-007-MS-1120 | 0d |
| JDH4-02-007-CN-2480 |  | Installation of Duct banks [Road 08 ] | 21d | 2027-01-17 | 2027-02-09 | JDH4-02-007-CN-2420 | 0d |
| JDH4-02-007-CN-2540 |  | Installation of Medium Voltage Cables [Road 08 ] | 20d | 2027-02-10 | 2027-03-06 | JDH4-02-007-CN-2480 | 0d |
|  | 3 | **Medium Voltage Cable Road 7** |  | 2027-01-07 | 2027-03-29 |  |  |
| JDH4-02-007-CN-2440 |  | Excavation for Trench [Road 07-N ] | 11d | 2027-01-07 | 2027-01-19 | JDH4-02-007-CN-2420 SS+5d | 11d |
| JDH4-02-007-CN-2500 |  | Installation of Duct banks [Road 07-N ] | 21d | 2027-01-20 | 2027-02-13 | JDH4-02-007-CN-2440 | 11d |
| JDH4-02-007-CN-2560 |  | Installation of Medium Voltage Cables [Road 07-N ] | 17d | 2027-03-07 | 2027-03-29 | JDH4-02-007-CN-2500, JDH4-02-007-CN-2540 | 0d |
|  | 2 | **Medium Voltage Cable Road 1** |  | 2027-01-20 | 2027-03-30 |  |  |
| JDH4-02-007-CN-2430 |  | Excavation for Trench [Road 01 ] | 21d | 2027-01-20 | 2027-02-13 | JDH4-02-007-CN-2440, JDH4-02-007-CN-2500 SS, JDH4-02-007-MS-1100 | 11d |
| JDH4-02-007-CN-2490 |  | Installation of Duct banks [Road 01 ] | 21d | 2027-02-14 | 2027-03-14 | JDH4-02-007-CN-2430 | 11d |
| JDH4-02-007-CN-2550 |  | Installation of Medium Voltage Cables [Road 01 ] | 14d | 2027-03-15 | 2027-03-30 | JDH4-02-007-CN-2490 | 11d |
|  | 4 | **Medium Voltage Cable Road 10** |  | 2027-01-26 | 2027-04-25 |  |  |
| JDH4-02-007-CN-2460 |  | Excavation for Trench [Road 10 ] | 16d | 2027-01-26 | 2027-02-13 | JDH4-02-007-CN-2430 SS+5d | 17d |
| JDH4-02-007-CN-2520 |  | Installation of Duct banks [Road 10 ] | 21d | 2027-02-14 | 2027-03-14 | JDH4-02-007-CN-2460, JDH4-02-007-CN-2500 | 25d |
| JDH4-02-007-CN-2580 |  | Installation of Medium Voltage Cables [Road 10 ] | 21d | 2027-04-01 | 2027-04-25 | JDH4-02-007-CN-2520, JDH4-02-007-CN-2560, JDH4-02-007-CN-2550, JDH4-02-007-CN-2300 | 10d |
|  | 5 | **Medium Voltage Cable Out of Zone** |  | 2027-03-07 | 2027-05-06 |  |  |
| JDH4-02-007-CN-2470 |  | Excavation for Trench [Out of Zone ] | 21d | 2027-03-07 | 2027-04-03 | JDH4-02-007-CN-2560 SS, JDH4-02-007-CN-2460 | 0d |
| JDH4-02-007-CN-2530 |  | Installation of Duct banks [Out of Zone ] | 16d | 2027-04-04 | 2027-04-21 | JDH4-02-007-CN-2470 | 0d |
| JDH4-02-007-CN-2590 |  | Installation of Medium Voltage Cables [Out of Zone ] | 13d | 2027-04-22 | 2027-05-06 | JDH4-02-007-CN-2530 | 0d |
|  | 8 | **Plot Backfilling 2** |  | 2027-01-02 | 2027-02-06 |  |  |
| JDH4-02-007-CN-1860 |  | Plots backfilling Stage 5 [Plots ] | 11d | 2027-01-02 | 2027-01-13 | JDH4-02-007-CN-2420 SS | 0d |
| JDH4-02-007-CN-1870 |  | Plots backfilling Stage 6 [Plots ] | 10d | 2027-01-14 | 2027-01-25 | JDH4-02-007-CN-1860 | 0d |

| ID | WBS | Task | Duration | Start | Finish | Predecessors | Total float |
| --- | --- | --- | --- | --- | --- | --- | --- |
| JDH4-02-007-CN-1880 |  | Plots backfilling Stage 7 [Plots ] | 10d | 2027-01-26 | 2027-02-06 | JDH4-02-007-CN-1870 | 0d |
|  | 5 | **Additional Works** |  | 2027-01-26 | 2027-04-24 |  |  |
| JDH4-02-007-CN-1740 |  | Earth Work | 21d | 2027-01-26 | 2027-02-18 | JDH4-02-007-CN-1730, JDH4-02-007-CN-1880 SS | 0d |
| JDH4-02-007-CN-5940 |  | Utilities Work | 25d | 2027-02-20 | 2027-03-24 | JDH4-02-007-CN-1740 | 0d |
| JDH4-02-007-CN-5950 |  | Electrical Works | 25d | 2027-03-25 | 2027-04-22 | JDH4-02-007-CN-5940 | 0d |
| JDH4-02-007-CN-5960 |  | Road Work | 25d | 2027-03-27 | 2027-04-24 | JDH4-02-007-CN-5950 SS+1d | 0d |
|  | 8 | **Testing & Commissioning** |  | 2026-07-12 | 2027-05-05 |  |  |
| JDH4-02-007-TC-1020 |  | Test for Sanitary Sewerage | 3d | 2026-07-12 | 2026-07-14 | JDH4-02-007-CN-5180, JDH4-02-007-CN-5150, JDH4-02-007-CN-5120, JDH4-02-007-CN-5140, JDH4-02-007-CN-5130, JDH4-02-007-CN-5170 | 4d |
| JDH4-02-007-TC-1010 |  | Test for TSE Network | 3d | 2026-11-08 | 2026-11-10 | JDH4-02-007-CN-4390, JDH4-02-007-CN-4350, JDH4-02-007-CN-4360, JDH4-02-007-CN-4340, JDH4-02-007-CN-4370, JDH4-02-007-CN-4400 | 10d |
| JDH4-02-007-TC-1000 |  | Test for Potable Water Network | 3d | 2026-11-09 | 2026-11-11 | JDH4-02-007-CN-3670, JDH4-02-007-CN-3680, JDH4-02-007-CN-3660, JDH4-02-007-CN-3690, JDH4-02-007-CN-3720, JDH4-02-007-CN-4640, JDH4-02-007-CN-3720 FF, JDH4-02-007-CN-1010 | 15d |
| JDH4-02-007-TC-1030 |  | Test for Stormwater Utilities | 3d | 2026-11-26 | 2026-11-29 | JDH4-02-007-CN-5530, JDH4-02-007-CN-5540, JDH4-02-007-CN-5550, JDH4-02-007-CN-5530R, JDH4-02-007-CN-4510, JDH4-02-007-CN-1030, JDH4-02-007-CN-3130 | 38d |
| JDH4-02-007-TC-1040 |  | Test for Electrical Network | 3d | 2026-12-20 | 2026-12-22 | JDH4-02-007-CN-2700, JDH4-02-007-CN-3240, JDH4-02-007-CN-3260, JDH4-02-007-CN-3270, JDH4-02-007-CN-3010, JDH4-02-007-CN-3250, JDH4-02-007-CN-2680, JDH4-02-007-CN-2680 FF, JDH4-02-007-TC-1030 | 24d |
| JDH4-02-007-TC-1060 |  | Test for Road Works | 3d | 2027-03-30 | 2027-04-01 | JDH4-02-007-CN-2370, JDH4-02-007-CN-2360, JDH4-02-007-CN-2350, JDH4-02-007-CN-2400, JDH4-02-007-CN-2390, JDH4-02-007-CN-1740 | 19d |
| JDH4-02-007-TC-1050 |  | Test for Sewage Lift Station | 3d | 2027-05-03 | 2027-05-05 | JDH4-02-007-CN-5900, JDH4-02-007-CN-1160, JDH4-02-007-CN-1210, JDH4-02-007-CN-1240, JDH4-02-007-CN-1280, JDH4-02-007-CN-1300, JDH4-02-007-CN-1070, JDH4-02-007-CN-1320, JDH4-02-007-CN-1370, JDH4-02-007-CN-1420, JDH4-02-007-CN-1520, JDH4-02-007-CN-1550, JDH4-02-007-CN-1600 | 0d |
|  | 7 | **Project Hand Over & Close-out** |  | 2026-07-15 | 2027-05-23 |  |  |
|  | 1 | **As-Built DWGs** |  | 2026-07-15 | 2027-05-23 |  |  |
|  | 1 | **As-Built DWGs Submittal** |  | 2026-07-15 | 2027-05-11 |  |  |
| JDH4-02-007-AB-1020 |  | As-Built DWGs Submittal for Sanitary Sewerage | 3d | 2026-07-15 | 2026-07-18 | JDH4-02-007-TC-1020 | 4d |
| JDH4-02-007-AB-1010 |  | As-Built DWGs Submittal for TSE Network | 5d | 2026-11-11 | 2026-11-16 | JDH4-02-007-TC-1010 | 10d |
| JDH4-02-007-AB-1000 |  | As-Built DWGs Submittal for Potable Water Network | 5d | 2026-11-12 | 2026-11-17 | JDH4-02-007-TC-1000 | 15d |
| JDH4-02-007-AB-1030 |  | As-Built DWGs Submittal for Stormwater Utilities | 5d | 2026-12-01 | 2026-12-06 | JDH4-02-007-TC-1030, JDH4-02-007-CN-5670 | 37d |
| JDH4-02-007-AB-1040 |  | As-Built DWGs Submittal for Electrical Network | 5d | 2026-12-23 | 2026-12-28 | JDH4-02-007-TC-1040, JDH4-02-007-TC-1040 FF, JDH4-02-007-AB-1030 | 24d |
| JDH4-02-007-AB-1060 |  | As-Built DWGs Submittal for Road Works | 5d | 2027-04-25 | 2027-04-29 | JDH4-02-007-TC-1060, JDH4-02-007-CN-3290, JDH4-02-007-CN-5960 | 0d |
| JDH4-02-007-AB-1050 |  | As-Built DWGs Submittal for Sewage Lift Station | 5d | 2027-05-06 | 2027-05-11 | JDH4-02-007-TC-1050 | 0d |
|  | 2 | **As-Built DWGs Approval** |  | 2026-07-19 | 2027-05-23 |  |  |
| JDH4-02-007-AB-1090 |  | As- Built DWGs Approval for Sanitary Sewerage | 4d | 2026-07-19 | 2026-07-22 | JDH4-02-007-AB-1020 | 4d |
| JDH4-02-007-AB-1080 |  | As- Built DWGs Approval for TSE Network | 6d | 2026-11-17 | 2026-11-23 | JDH4-02-007-AB-1010 | 10d |
| JDH4-02-007-AB-1070 |  | As- Built DWGs Approval for Potable Water Network | 3d | 2026-11-18 | 2026-11-21 | JDH4-02-007-AB-1000 | 15d |
| JDH4-02-007-AB-1100 |  | As- Built DWGs Approval for Stormwater Utilities | 6d | 2026-12-07 | 2026-12-13 | JDH4-02-007-AB-1030 | 37d |
| JDH4-02-007-AB-1110 |  | As- Built DWGs Approval for Electrical Network | 6d | 2026-12-29 | 2027-01-04 | JDH4-02-007-AB-1040, JDH4-02-007-AB-1100 | 24d |
| JDH4-02-007-AB-1130 |  | As- Built DWGs Approval for Road Works | 6d | 2027-05-01 | 2027-05-06 | JDH4-02-007-AB-1060 | 0d |
| JDH4-02-007-AB-1120 |  | As- Built DWGs Approval for Sewage Lift Station | 6d | 2027-05-12 | 2027-05-23 | JDH4-02-007-AB-1050, JDH4-02-007-AB-1050 FF | 0d |
|  | 2 | **Demobilization** |  | 2027-05-08 | 2027-05-23 |  |  |
| JDH4-02-007-DM-1000 |  | Demobilization of Manpower | 5d | 2027-05-08 | 2027-05-12 | JDH4-02-007-AB-1110, JDH4-02-007-AB-1070, JDH4-02-007-AB-1080, JDH4-02-007-AB-1090, JDH4-02-007-AB-1100, JDH4-02-007-CN-5880, JDH4-02-007-CN-2590, JDH4-02-007-CN-2580 | 0d |
| JDH4-02-007-DM-1010 |  | Removal of Equipment from Site | 5d | 2027-05-08 | 2027-05-12 | JDH4-02-007-AB-1110, JDH4-02-007-AB-1070, JDH4-02-007-AB-1080, JDH4-02-007-AB-1090, JDH4-02-007-AB-1100, JDH4-02-007-AB-1130, JDH4-02-007-CN-2590 | 0d |
| JDH4-02-007-DM-1020 |  | Site Clean Up | 5d | 2027-05-08 | 2027-05-12 | JDH4-02-007-AB-1110, JDH4-02-007-AB-1070, JDH4-02-007-AB-1080, JDH4-02-007-AB-1090, JDH4-02-007-AB-1100, JDH4-02-007-AB-1130, JDH4-02-007-CN-2590 | 0d |
| JDH4-02-007-DM-1030 |  | Removal of Site Offices and Structures | 5d | 2027-05-08 | 2027-05-12 | JDH4-02-007-AB-1110, JDH4-02-007-AB-1070, JDH4-02-007-AB-1080, JDH4-02-007-AB-1090, JDH4-02-007-AB-1100, JDH4-02-007-AB-1130, JDH4-02-007-CN-2530, JDH4-02-007-CN-2590 | 0d |
| JDH4-02-007-DM-1040 |  | Restoration of Ground Surfaces | 5d | 2027-05-13 | 2027-05-23 | JDH4-02-007-DM-1030, JDH4-02-007-DM-1020, JDH4-02-007-DM-1010, JDH4-02-007-DM-1000, JDH4-02-007-CN-2590, JDH4-02-007-CN-2530, JDH4-02-007-CN-2470, JDH4-02-007-CN-2580, JDH4-02-007-CN-2520, JDH4-02-007-CN-2460, JDH4-02-007-CN-2550, JDH4-02-007-CN-2490, JDH4-02-007-CN-2430, JDH4-02-007-CN-2560, JDH4-02-007-CN-2500, JDH4-02-007-CN-2440, JDH4-02-007-CN-2540, JDH4-02-007-CN-2480, JDH4-02-007-CN-2420, JDH4-02-007-CN-5900, JDH4-02-007-CN-5890, JDH4-02-007-CN-1580, JDH4-02-007-CN-1570, JDH4-02-007-CN-1550, JDH4-02-007-CN-1540, JDH4-02-007-CN-1530, JDH4-02-007-CN-1520, JDH4-02-007-CN-1510, JDH4-02-007-CN-1510 FF, JDH4-02-007-CN-1500, JDH4-02-007-CN-1490 | 0d |

## Version 2 (data date 2026-10-06, saved 2026-10-05, file 02. JHD4-02-007-ENJ-WPR-046-06-10-2026 Update Ver 22.12.xer)

Note of the change: Weekly folders named by the Thursday the week ends on: a report dated after one Thursday up to the next goes in the next Thursday's folder (26-Oct → W05 - 29-Oct-2026); all weeks moved accordingly, W00 removed

Last finish 2027-05-23 → 2027-01-16 (-127d). Complete tasks 402 → 1164.

Changed:

| ID | Task | Start | Finish | Complete | Total float |
| --- | --- | --- | --- | --- | --- |
| 1 | **Key Milestones** |  | 2027-05-23 → 2027-01-16 (-127d) |  |  |
| 1 | **General Milestone** |  | 2027-05-23 → 2027-01-16 (-127d) |  |  |
| JDH4-02-007-MS-1010 | Project Completion Date | 2027-05-23 → 2027-01-16 (-127d) | 2027-05-23 → 2027-01-16 (-127d) |  | 0d → 101d |
| 2 | **Contractual Milestone** |  | 2027-05-23 → 2026-12-31 (-143d) |  |  |
| 1 | **Engineering & Mobilization** |  | 2026-03-23 → 2026-07-14 (+113d) |  |  |
| JDH4-02-007-MS-1040 | Submission and Approval of Drawings and Materials | 2026-03-23 → 2026-07-14 A (+113d) | 2026-03-23 → 2026-07-14 A (+113d) | 0% → 100% | 16d → none |
| 2 | **Construction** | 2026-03-23 → 2026-08-26 (+156d) | 2027-05-23 → 2026-12-31 (-143d) |  |  |
| JDH4-02-007-MS-1060 | Completion of Sewerage networks | 2026-07-22 → 2026-08-26 A (+35d) | 2026-07-22 → 2026-08-26 A (+35d) | 0% → 100% | 4d → none |
| JDH4-02-007-MS-1090 | Completion of TSE Network | 2026-11-23 → 2026-08-30 A (-85d) | 2026-11-23 → 2026-08-30 A (-85d) | 0% → 100% | 10d → none |
| JDH4-02-007-MS-1080 | Completion of Potable Water Network | 2026-11-23 → 2026-09-05 A (-79d) | 2026-11-23 → 2026-09-05 A (-79d) | 0% → 100% | 13d → none |
| JDH4-02-007-MS-1050 | Completion of Earthworks & Site Grading For Plots | 2026-03-23 → 2026-10-06 (+197d) | 2026-03-23 → 2026-10-06 (+197d) |  | 33d → 101d |
| JDH4-02-007-MS-1070 | Completion of Road Works | 2026-09-22 → 2026-10-06 (+14d) | 2026-09-22 → 2026-10-06 (+14d) |  | 28d → 157d |
| JDH4-02-007-MS-1100 | Completion of Electrical Networks | 2027-01-04 → 2026-12-05 (-30d) | 2027-01-04 → 2026-12-05 (-30d) |  | 24d → 117d |
| JDH4-02-007-MS-1110 | Completion of Entire Project | 2027-05-23 → 2026-12-31 (-143d) | 2027-05-23 → 2026-12-31 (-143d) |  | 0d → 114d |
| 3 | **Monitoring & Controlling Milestone** | 2026-10-14 → 2026-06-01 (-135d) | 2026-11-12 → 2026-06-03 (-162d) |  |  |
| JDH4-02-007-MS-1120 | Approval of Electrical Network Shop DWGs By SEC | 2026-10-14 → 2026-06-01 A (-135d) | 2026-10-14 → 2026-06-01 A (-135d) | 0% → 100% | 23d → none |
| JDH4-02-007-MS-1130 | Approval of Electrical Network Materials By SEC | 2026-11-12 → 2026-06-03 A (-162d) | 2026-11-12 → 2026-06-03 A (-162d) | 0% → 100% | 42d → none |
| 2 | **Mobilization** |  | 2026-09-29 → 2026-06-01 (-120d) |  |  |
| 1 | **Permit's and Authority Approvals** |  | 2026-09-29 → 2026-06-01 (-120d) |  |  |
| JDH4-02-007-PA-1010 | Saudi Electricity Company Permit | 2026-09-06 → 2026-02-03 A (-215d) | 2026-09-29 → 2026-06-01 A (-120d) | 0% → 100% | 0d → none |
| 3 | **Engineering** |  | 2026-11-12 → 2026-07-14 (-121d) |  |  |
| 2 | **Shop Drawings** |  | 2026-10-14 → 2026-06-01 (-135d) |  |  |
| 1 | **Shop Drawings Submittal** |  | 2026-10-08 → 2026-02-03 (-247d) |  |  |
| 2 | **Shop Drawings Submittal for Electrical Network** |  | 2026-10-08 → 2026-02-03 (-247d) |  |  |
| JDH4-02-007-EN-1130 | Shop DWG Submittal for Medium Voltage Network | 2026-09-30 → 2026-02-01 A (-241d) | 2026-10-08 → 2026-02-03 A (-247d) | 0% → 100% | 0d → none |
| 2 | **Shop Drawings Approval** |  | 2026-10-14 → 2026-06-01 (-135d) |  |  |
| 2 | **Shop Drawings Approval for Electrical Network** |  | 2026-10-14 → 2026-06-01 (-135d) |  |  |
| JDH4-02-007-EN-1410 | Shop DWG Approval for Medium Voltage Network By SEC | 2026-10-10 → 2026-02-04 A (-248d) | 2026-10-14 → 2026-06-01 A (-135d) | 0% → 100% | 0d → none |
| 4 | **Pre-qualification and Material** |  | 2026-11-12 → 2026-07-14 (-121d) |  |  |
| 2 | **Pre-qualification** |  | 2026-10-26 → 2026-06-09 (-139d) |  |  |
| 3 | **Electrical Network** |  | 2026-10-26 → 2026-06-09 (-139d) |  |  |
| 11 | **Medium Voltage Cable** | 2026-10-15 → 2026-06-06 (-131d) | 2026-10-26 → 2026-06-09 (-139d) |  |  |
| JDH4-02-007-SB-1300 | Pre-Qualification Submittal for Medium Voltage Cable | 2026-10-15 → 2026-06-06 A (-131d) | 2026-10-22 → 2026-06-06 A (-138d) | 0% → 100% | 0d → none |
| JDH4-02-007-SB-1310 | Pre-Qualification Approval for Medium Voltage Cable | 2026-10-24 → 2026-06-07 A (-139d) | 2026-10-26 → 2026-06-09 A (-139d) | 0% → 100% | 0d → none |
| 3 | **Material Submittal & Approval** |  | 2026-11-12 → 2026-07-14 (-121d) |  |  |
| 3 | **Electrical Network** |  | 2026-11-12 → 2026-06-11 (-154d) |  |  |
| 11 | **Medium Voltage Cable** | 2026-10-27 → 2026-03-23 (-218d) | 2026-11-12 → 2026-06-03 (-162d) |  |  |
| JDH4-02-007-MA-1300 | Material Submittal for Medium Voltage Cable | 2026-10-27 → 2026-03-23 A (-218d) | 2026-10-27 → 2026-03-31 A (-210d) | 0% → 100% | 0d → none |
| JDH4-02-007-MA-1310 | Material Approval for Medium Voltage Cable By SEC | 2026-10-28 → 2026-04-01 A (-210d) | 2026-11-12 → 2026-06-03 A (-162d) | 0% → 100% | 0d → none |
| 9 | **Unit Sub Station** |  | 2026-02-24 → 2026-06-06 (+102d) |  |  |
| JDH4-02-007-MA-1380 | Material Submittal for Unit Sub Station |  | 2026-01-11 A → 2026-04-23 A (+102d) |  |  |
| JDH4-02-007-MA-1390 | Material Approval for Unit Sub Station By SEC | 2026-02-16 → 2026-04-25 A (+68d) | 2026-02-24 → 2026-06-06 A (+102d) | 0% → 100% | 36d → none |
| 10 | **Ring Main Unit (RMU)** |  | 2026-02-26 → 2026-06-03 (+97d) |  |  |
| JDH4-02-007-MA-1400 | Material Submittal for Ring main Unit (RMU) |  | 2026-01-11 A → 2026-04-23 A (+102d) |  |  |
| JDH4-02-007-MA-1410 | Material Approval for Ring main Unit (RMU) By SEC | 2026-02-18 → 2026-04-25 A (+66d) | 2026-02-26 → 2026-06-03 A (+97d) | 0% → 100% | 9d → none |
| 1 | **Lighting panels/Feeder Pillers** |  | 2026-03-07 → 2026-06-11 (+96d) |  |  |
| JDH4-02-007-MA-1520 | Material Approval for Lighting panels/Feeder Pillers | 2026-02-28 → 2026-01-20 A (-39d) | 2026-03-07 → 2026-06-11 A (+96d) | 0% → 100% | 27d → none |
| 10 | **Sewage Lift Station** |  | 2026-03-29 → 2026-07-14 (+107d) |  |  |
| 2 | **Thermal & Moisture Protection** | 2026-02-25 → 2026-01-01 (-55d) | 2026-03-10 → 2026-01-04 (-65d) |  |  |
| JDH4-02-007-MA-1490 | Material Submittal for Thermal & Moisture Protection | 2026-02-25 → 2026-01-01 A (-55d) | 2026-03-02 → 2026-01-01 A (-60d) | 0% → 100% | 6d → none |
| JDH4-02-007-MA-1510 | Material Approval for Thermal & Moisture Protection | 2026-03-03 → 2026-01-03 A (-59d) | 2026-03-10 → 2026-01-04 A (-65d) | 0% → 100% | 6d → none |
| 1 | **Metals** | 2026-02-25 → 2026-02-19 (-6d) | 2026-03-10 → 2026-02-25 (-13d) |  |  |
| JDH4-02-007-MA-1480 | Material Submittal for Metal | 2026-02-25 → 2026-02-19 A (-6d) | 2026-03-02 → 2026-02-19 A (-11d) | 0% → 100% | 6d → none |
| JDH4-02-007-MA-1500 | Material Approval for Metal | 2026-03-03 → 2026-02-21 A (-10d) | 2026-03-10 → 2026-02-25 A (-13d) | 0% → 100% | 6d → none |
| 8 | **Screening Container** | 2026-03-07 → 2026-02-08 (-27d) | 2026-03-23 → 2026-03-01 (-22d) |  |  |
| JDH4-02-007-MA-1740 | Material Submittal for Screening Container | 2026-03-07 → 2026-02-08 A (-27d) | 2026-03-11 → 2026-02-08 A (-31d) | 0% → 100% | 16d → none |
| JDH4-02-007-MA-1760 | Material Approval for Screening Container | 2026-03-12 → 2026-02-10 A (-30d) | 2026-03-23 → 2026-03-01 A (-22d) | 0% → 100% | 16d → none |
| 10 | **Anti-Water Hammer Equipment** | 2026-03-12 → 2026-02-08 (-32d) | 2026-03-29 → 2026-02-09 (-48d) |  |  |
| JDH4-02-007-MA-1840 | Material Submittal for Anti-Water Hammer Equipment | 2026-03-12 → 2026-02-08 A (-32d) | 2026-03-17 → 2026-02-08 A (-37d) | 0% → 100% | 31d → none |
| JDH4-02-007-MA-1850 | Material Approval for Anti-Water Hammer Equipment | 2026-03-22 → 2026-02-09 A (-41d) | 2026-03-29 → 2026-02-09 A (-48d) | 0% → 100% | 31d → none |
| 12 | **Fuel System** |  | 2026-03-07 → 2026-02-10 (-25d) |  |  |
| JDH4-02-007-MA-1790R | Material Approval for Fuel System | 2026-02-28 → 2026-02-09 A (-19d) | 2026-03-07 → 2026-02-10 A (-25d) | 0% → 100% | 27d → none |
| 13 | **Fire Fighting System** | 2026-01-17 → 2026-01-16 (-1d) | 2026-03-10 → 2026-02-19 (-19d) |  |  |
| JDH4-02-007-MA-1920 | Material Submittal for Fire Fighting System | 2026-01-17 A → 2026-01-16 A (-1d) | 2026-01-19 A → 2026-02-17 A (+29d) |  |  |
| JDH4-02-007-MA-1930 | Material Approval for Fire Fighting System | 2026-03-03 → 2026-02-17 A (-14d) | 2026-03-10 → 2026-02-19 A (-19d) | 0% → 100% | 11d → none |
| 14 | **Main Distribution Board /MCC panels** |  | 2026-03-04 → 2026-06-07 (+95d) |  |  |
| JDH4-02-007-MA-1870 | Material Approval for Main Distribution Board/MCC Panels | 2026-02-25 → 2026-01-20 A (-36d) | 2026-03-04 → 2026-06-07 A (+95d) | 0% → 100% | 13d → none |
| 15 | **Final Panel boards** |  | 2026-02-28 → 2026-06-07 (+99d) |  |  |
| JDH4-02-007-MA-1890 | Material Approval for Final Panel Boards | 2026-02-19 → 2026-01-15 A (-35d) | 2026-02-28 → 2026-06-07 A (+99d) | 0% → 100% | 21d → none |
| 16 | **Local Control Panel/ Monitoring Control Panel** |  | 2026-03-08 → 2026-02-02 (-34d) |  |  |

| ID | Task | Start | Finish | Complete | Total float |
| --- | --- | --- | --- | --- | --- |
| JDH4-02-007-MA-1910 | Material Approval for Local Control Panel / Monitoring Control Panel | 2026-03-01 → 2026-01-14 A (-46d) | 2026-03-08 → 2026-02-02 A (-34d) | 0% → 100% | 21d → none |
| 19 | **Power Factor Correction Capacitor Bank** |  | 2026-02-28 → 2026-07-14 (+136d) |  |  |
| JDH4-02-007-MA-2010 | Material Approval for Power Factor correction Capacitor Bank | 2026-02-19 → 2026-07-12 A (+143d) | 2026-02-28 → 2026-07-14 A (+136d) | 0% → 100% | 22d → none |
| 22 | **Wiring Devices** |  | 2026-03-01 → 2026-01-28 (-32d) |  |  |
| JDH4-02-007-MA-1950 | Material Approval for Wiring Devices | 2026-02-21 → 2026-01-11 A (-41d) | 2026-03-01 → 2026-01-28 A (-32d) | 0% → 100% | 30d → none |
| 24 | **Raceways for Electrical Systems** | 2026-02-16 → 2026-01-13 (-34d) | 2026-03-02 → 2026-01-20 (-41d) |  |  |
| JDH4-02-007-MA-2100 | Material Submittal for Raceways for Electrical System | 2026-02-16 → 2026-01-13 A (-34d) | 2026-02-21 → 2026-01-14 A (-38d) | 0% → 100% | 16d → none |
| JDH4-02-007-MA-2110 | Material Approval for Raceways for Electrical System | 2026-02-23 → 2026-01-15 A (-39d) | 2026-03-02 → 2026-01-20 A (-41d) | 0% → 100% | 26d → none |
| 28 | **Programmable Logic Controllers** | 2026-02-23 → 2026-02-01 (-22d) | 2026-03-08 → 2026-02-02 (-34d) |  |  |
| JDH4-02-007-MA-2200 | Material Submittal for Programmable Logic Controllers | 2026-02-23 → 2026-02-01 A (-22d) | 2026-02-28 → 2026-02-01 A (-27d) | 0% → 100% | 16d → none |
| JDH4-02-007-MA-2210 | Material Approval for Programmable Logic Controllers | 2026-03-01 → 2026-02-02 A (-27d) | 2026-03-08 → 2026-02-02 A (-34d) | 0% → 100% | 16d → none |
| 29 | **Process Control Wiring** |  | 2026-02-25 → 2026-02-08 (-17d) |  |  |
| JDH4-02-007-MA-2190 | Material Approval for Process Control Wiring | 2026-02-17 → 2026-02-02 A (-15d) | 2026-02-25 → 2026-02-08 A (-17d) | 0% → 100% | 32d → none |
| 4 | **Procurement** |  | 2026-12-31 → 2026-10-06 (-86d) |  |  |
| 2 | **Short Lead Item** |  | 2026-09-01 → 2026-09-29 (+28d) |  |  |
| 1 | **Road Works - Civil** |  | 2026-08-08 → 2026-09-29 (+52d) |  |  |
| 1 | **Steel Reinforcement** |  | 2026-03-25 → 2026-02-02 (-51d) |  |  |
| JDH4-02-007-PR-1319R | Material Delivery for Steel Reinforcement - Stage 1 | 2026-02-15 → 2026-01-28 A (-18d) | 2026-02-28 → 2026-01-29 A (-30d) | 0% → 100% | 39d → none |
| JDH4-02-007-PR-1320 | Material Delivery for Steel Reinforcement - Stage 2 | 2026-03-01 → 2026-01-31 A (-29d) | 2026-03-25 → 2026-02-02 A (-51d) | 0% → 100% | 39d → none |
| 3 | **Water Proofing** | 2026-02-17 → 2026-01-01 (-47d) | 2026-04-26 → 2026-02-19 (-66d) |  |  |
| JDH4-02-007-PR-1350 | PO for Water Proofing | 2026-02-17 → 2026-01-01 A (-47d) | 2026-02-23 → 2026-01-05 A (-49d) | 0% → 100% | 12d → none |
| JDH4-02-007-PR-1360 | Material Fabrication for Water Proofing | 2026-02-24 → 2026-01-06 A (-49d) | 2026-03-28 → 2026-01-15 A (-72d) | 0% → 100% | 12d → none |
| JDH4-02-007-PR-1370 | Material Delivery for Water Proofing | 2026-03-29 → 2026-01-17 A (-71d) | 2026-04-26 → 2026-02-19 A (-66d) | 0% → 100% | 12d → none |
| 4 | **Aggregate Base Course** | 2026-02-21 → 2026-04-08 (+46d) | 2026-07-02 → 2026-08-03 (+32d) |  |  |
| JDH4-02-007-PR-1380 | PO for Aggregate Base Course | 2026-02-21 → 2026-04-08 A (+46d) | 2026-02-26 → 2026-04-11 A (+44d) | 0% → 100% | 2d → none |
| JDH4-02-007-PR-1389 | Material Delivery for Aggregate Base Course - Stage 1 | 2026-05-14 → 2026-05-06 A (-8d) | 2026-06-09 → 2026-07-04 A (+25d) | 0% → 100% | 1d → none |
| JDH4-02-007-PR-1390 | Material Delivery for Aggregate Base Course - Stage 2 | 2026-06-10 → 2026-07-23 A (+43d) | 2026-07-02 → 2026-08-03 A (+32d) | 0% → 100% | 1d → none |
| 5 | **Bituminous Base & Wearing Course** | 2026-02-28 → 2026-03-04 (+4d) | 2026-07-06 → 2026-09-29 (+85d) |  |  |
| JDH4-02-007-PR-1400 | PO for Bituminous Base & Wearing Cource | 2026-02-28 → 2026-03-04 A (+4d) | 2026-03-04 → 2026-04-08 A (+35d) | 0% → 100% | 2d → none |
| JDH4-02-007-PR-1410 | Material Delivery to the Site | 2026-06-02 → 2026-04-16 A (-47d) | 2026-07-06 → 2026-09-29 A (+85d) | 0% → 100% | 0d → none |
| 7 | **Precast Concrete Kerb** | 2026-03-05 → 2026-03-11 (+6d) | 2026-08-08 → 2026-07-30 (-9d) |  |  |
| JDH4-02-007-PR-1420 | PO for Precast Concrete Kerb | 2026-03-05 → 2026-03-11 A (+6d) | 2026-03-10 → 2026-03-11 A (+1d) | 0% → 100% | 14d → none |
| JDH4-02-007-PR-1430 | Material Fabrication for Precast Concrete Kerb | 2026-03-11 → 2026-03-12 A (+1d) | 2026-04-18 → 2026-04-23 A (+5d) | 0% → 100% | 21d → none |
| JDH4-02-007-PR-1440 | Material Delivery for Precast Concrete Kerb | 2026-07-07 → 2026-04-25 A (-73d) | 2026-08-08 → 2026-07-30 A (-9d) | 0% → 100% | 0d → none |
| 8 | **Interlocking Block Pavers** | 2026-03-11 → 2026-06-01 (+82d) | 2026-05-24 → 2026-07-30 (+67d) |  |  |
| JDH4-02-007-PR-1450 | PO for Interlocking Block Pavers | 2026-03-11 → 2026-06-01 A (+82d) | 2026-03-14 → 2026-06-03 A (+81d) | 0% → 100% | 14d → none |
| JDH4-02-007-PR-1460 | Material Fabrication for Interlocking Block Pavers | 2026-03-15 → 2026-06-04 A (+81d) | 2026-04-21 → 2026-06-21 A (+61d) | 0% → 100% | 18d → none |
| JDH4-02-007-PR-1470 | Material Delivery for Interlocking Block Pavers | 2026-04-22 → 2026-06-13 A (+52d) | 2026-05-24 → 2026-07-30 A (+67d) | 0% → 100% | 18d → none |
| 9 | **Pavement Markings** | 2026-03-15 → 2026-05-07 (+53d) | 2026-06-01 → 2026-06-21 (+20d) |  |  |
| JDH4-02-007-PR-1480 | PO for Pavement Markings | 2026-03-15 → 2026-05-07 A (+53d) | 2026-03-22 → 2026-06-15 A (+85d) | 0% → 100% | 14d → none |
| JDH4-02-007-PR-1500 | Material Delivery for Pavement Markings | 2026-04-27 → 2026-05-24 A (+27d) | 2026-06-01 → 2026-06-13 A (+12d) | 0% → 100% | 14d → none |
| JDH4-02-007-PR-1490 | Material Fabrication for Pavement Markings | 2026-03-23 → 2026-06-16 A (+85d) | 2026-04-26 → 2026-06-21 A (+56d) | 0% → 100% | 14d → none |
| 10 | **Traffic Signs** | 2026-03-05 → 2026-05-11 (+67d) | 2026-05-07 → 2026-05-31 (+24d) |  |  |
| JDH4-02-007-PR-1510 | PO for Traffic Signs | 2026-03-05 → 2026-05-11 A (+67d) | 2026-03-11 → 2026-05-11 A (+61d) | 0% → 100% | 2d → none |
| JDH4-02-007-PR-1520 | Material Fabrication for Traffic Signs | 2026-03-12 → 2026-05-12 A (+61d) | 2026-04-19 → 2026-05-20 A (+31d) | 0% → 100% | 2d → none |
| JDH4-02-007-PR-1530 | Material Delivery for Traffic Signs | 2026-04-20 → 2026-05-21 A (+31d) | 2026-05-07 → 2026-05-31 A (+24d) | 0% → 100% | 2d → none |
| 7 | **Stormwater Utilities** |  | 2026-05-16 → 2026-05-17 (+1d) |  |  |
| 7 | **Catch Basins** |  | 2026-05-16 → 2026-03-17 (-60d) |  |  |
| JDH4-02-007-PR-1740R | Material Delivery for Catch Basins | 2026-03-29 → 2026-01-29 A (-59d) | 2026-04-26 → 2026-02-10 A (-75d) | 0% → 100% | 12d → none |
| JDH4-02-007-PR-1729R | Material Fabrication for Catch Basins - Stage 1 | 2026-02-19 → 2026-02-02 A (-17d) | 2026-03-12 → 2026-02-04 A (-36d) | 0% → 100% | 17d → none |
| JDH4-02-007-PR-1730 | Material Fabrication for Catch Basins - Stage 2 | 2026-03-14 → 2026-02-04 A (-38d) | 2026-04-20 → 2026-03-17 A (-34d) | 0% → 100% | 17d → none |
| JDH4-02-007-PR-1830 | Staging Time for Catch Basins | 2026-05-09 → 2026-02-28 A (-70d) | 2026-05-16 → 2026-03-07 A (-70d) | 0% → 100% | 2d → none |
| 2 | **GRP Pipes** |  | 2026-04-26 → 2026-03-17 (-40d) |  |  |
| JDH4-02-007-PR-1670R | Material Fabrication for GRP Pipes | 2026-02-14 → 2026-02-02 A (-12d) | 2026-03-24 → 2026-03-09 A (-15d) | 0% → 100% | 7d → none |
| JDH4-02-007-PR-1680R | Material Delivery for GRP Pipes | 2026-03-25 → 2026-02-02 A (-51d) | 2026-04-26 → 2026-03-17 A (-40d) | 0% → 100% | 22d → none |
| 6 | **Inlet Manholes** |  | 2026-03-28 → 2026-05-17 (+50d) |  |  |
| JDH4-02-007-PR-1700R | Material Fabrication for Inlet Manholes | 2026-02-14 → 2026-02-02 A (-12d) | 2026-03-24 → 2026-05-07 A (+44d) | 0% → 100% | 4d → none |
| JDH4-02-007-PR-1710R | Material Delivery for Inlet Manholes | 2026-02-17 → 2026-02-02 A (-15d) | 2026-03-28 → 2026-05-17 A (+50d) | 0% → 100% | 4d → none |
| 6 | **Sanitary Sewerage** |  | 2026-04-30 → 2026-05-06 (+6d) |  |  |
| 1 | **GRP Pipes** |  | 2026-04-16 → 2026-03-25 (-22d) |  |  |
| JDH4-02-007-PR-1610R | Material Fabrication for GRP Pipes | 2026-02-14 → 2026-02-02 A (-12d) | 2026-03-24 → 2026-03-09 A (-15d) | 0% → 100% | 3d → none |
| JDH4-02-007-PR-1620R | Material Delivery for GRP Pipes | 2026-03-25 → 2026-02-02 A (-51d) | 2026-04-16 → 2026-03-25 A (-22d) | 0% → 100% | 3d → none |
| 2 | **Manholes** |  | 2026-04-30 → 2026-05-06 (+6d) |  |  |
| JDH4-02-007-PR-1650R | Material Delivery for Manholes | 2026-04-12 → 2026-02-03 A (-68d) | 2026-04-30 → 2026-05-06 A (+6d) | 0% → 100% | 12d → none |
| JDH4-02-007-PR-1639 | Material Fabrication for Manholes - Stage 2 | 2026-02-19 → 2026-02-09 A (-10d) | 2026-03-15 → 2026-03-11 A (-4d) | 0% → 100% | 12d → none |
| JDH4-02-007-PR-1640 | Material Fabrication for Manholes - Stage 3 | 2026-03-16 → 2026-03-12 A (-4d) | 2026-04-11 → 2026-04-27 A (+16d) | 0% → 100% | 12d → none |
| 5 | **TSE Network** |  | 2026-04-22 → 2026-02-09 (-72d) |  |  |
| 1 | **HDPE Pipe (PN 16)** |  | 2026-04-22 → 2026-02-09 (-72d) |  |  |
| JDH4-02-007-PR-1580R | Material Fabrication for HDPE Pipe (PN 16) | 2026-02-14 → 2026-02-02 A (-12d) | 2026-03-15 → 2026-02-03 A (-40d) | 0% → 100% | 25d → none |
| JDH4-02-007-PR-1590R | Material Delivery for HDPE Pipe (PN 16) | 2026-03-16 → 2026-02-02 A (-42d) | 2026-04-22 → 2026-02-09 A (-72d) | 0% → 100% | 25d → none |

| ID | Task | Start | Finish | Complete | Total float |
| --- | --- | --- | --- | --- | --- |
| 4 | **Potable Water Network** |  | 2026-04-12 → 2026-02-09 (-62d) |  |  |
| 1 | **HDPE Pipe (PN 16)** |  | 2026-04-12 → 2026-02-09 (-62d) |  |  |
| JDH4-02-007-PR-1550R | Material Fabrication for HDPE Pipe (PN 16) | 2026-02-03 → 2026-02-02 A (-1d) | 2026-03-04 → 2026-02-03 A (-29d) | 0% → 100% | 7d → none |
| JDH4-02-007-PR-1560R | Material Delivery for HDPE Pipe (PN 16) | 2026-03-05 → 2026-02-02 A (-31d) | 2026-04-12 → 2026-02-09 A (-62d) | 0% → 100% | 7d → none |
| 3 | **Electrical Network** | 2026-02-15 → 2026-02-01 (-14d) | 2026-05-24 → 2026-04-23 (-31d) |  |  |
| 1 | **Pipe for the Duct** | 2026-02-15 → 2026-02-01 (-14d) | 2026-04-30 → 2026-04-22 (-8d) |  |  |
| JDH4-02-007-PR-1190 | PO for Pipe for Duct | 2026-02-15 → 2026-02-01 A (-14d) | 2026-02-21 → 2026-02-04 A (-17d) | 0% → 100% | 0d → none |
| JDH4-02-007-PR-1210 | Material Fabrication for Pipe for Duct | 2026-02-23 → 2026-02-05 A (-18d) | 2026-04-01 → 2026-04-09 A (+8d) | 0% → 100% | 0d → none |
| JDH4-02-007-PR-1230 | Material Delivery for Pipe for Duct | 2026-04-02 → 2026-02-11 A (-50d) | 2026-04-30 → 2026-04-22 A (-8d) | 0% → 100% | 0d → none |
| 4 | **Earthing System** | 2026-02-25 → 2026-03-18 (+21d) | 2026-05-24 → 2026-04-23 (-31d) |  |  |
| JDH4-02-007-PR-1180 | PO for Earthing System | 2026-02-25 → 2026-03-18 A (+21d) | 2026-03-04 → 2026-03-22 A (+18d) | 0% → 100% | 26d → none |
| JDH4-02-007-PR-1200 | Material Fabrication for Earthing System | 2026-03-05 → 2026-03-23 A (+18d) | 2026-04-12 → 2026-03-26 A (-17d) | 0% → 100% | 26d → none |
| JDH4-02-007-PR-1220 | Material Delivery for Earthing System | 2026-04-22 → 2026-03-29 A (-24d) | 2026-05-24 → 2026-04-23 A (-31d) | 0% → 100% | 18d → none |
| 10 | **Telecommunications** |  | 2026-05-16 → 2026-02-08 (-97d) |  |  |
| 1 | **Pipe for the Duct** |  | 2026-05-16 → 2026-02-08 (-97d) |  |  |
| JDH4-02-007-PR-2270R | Material Fabrication for Pipe for Duct | 2026-04-02 → 2026-02-02 A (-59d) | 2026-04-13 → 2026-02-04 A (-68d) | 0% → 100% | 25.25d → none |
| JDH4-02-007-PR-2280R | Material Delivery for Pipe for Duct | 2026-04-13 → 2026-02-02 A (-70d) | 2026-05-16 → 2026-02-08 A (-97d) | 0% → 100% | 25.25d → none |
| 9 | **Sewage Lift Station** | 2026-02-03 → 2026-02-02 (-1d) | 2026-09-01 → 2026-08-12 (-20d) |  |  |
| 7 | **Thermal & Moisture Protection** | 2026-03-11 → 2026-03-04 (-7d) | 2026-08-05 → 2026-04-18 (-109d) |  |  |
| JDH4-02-007-PR-2350 | PO for Thermal & Moisture Protection | 2026-03-11 → 2026-03-04 A (-7d) | 2026-03-15 → 2026-03-12 A (-3d) | 0% → 100% | 6d → none |
| JDH4-02-007-PR-2358 | Material Fabrication for Thermal & Moisture Protection - Stage 1 | 2026-03-16 → 2026-03-14 A (-2d) | 2026-04-11 → 2026-03-16 A (-26d) | 0% → 100% | 6d → none |
| JDH4-02-007-PR-2359 | Material Fabrication for Thermal & Moisture Protection - Stage 2 | 2026-04-12 → 2026-03-17 A (-26d) | 2026-05-04 → 2026-03-19 A (-46d) | 0% → 100% | 6d → none |
| JDH4-02-007-PR-2360 | Material Fabrication for Thermal & Moisture Protection - Stage 3 | 2026-05-05 → 2026-03-21 A (-45d) | 2026-06-10 → 2026-03-25 A (-77d) | 0% → 100% | 6d → none |
| JDH4-02-007-PR-2369 | Material Delivery for Thermal & Moisture Protection - Stage 1 | 2026-06-11 → 2026-03-30 A (-73d) | 2026-07-08 → 2026-04-05 A (-94d) | 0% → 100% | 6d → none |
| JDH4-02-007-PR-2370 | Material Delivery for Thermal & Moisture Protection - Stage 2 | 2026-07-09 → 2026-04-06 A (-94d) | 2026-08-05 → 2026-04-18 A (-109d) | 0% → 100% | 6d → none |
| 1 | **Metals** | 2026-03-11 → 2026-03-03 (-8d) | 2026-08-05 → 2026-06-24 (-42d) |  |  |
| JDH4-02-007-PR-1840 | PO for Metal | 2026-03-11 → 2026-03-03 A (-8d) | 2026-03-15 → 2026-03-11 A (-4d) | 0% → 100% | 6d → none |
| JDH4-02-007-PR-1848 | Material Fabrication for Metal - Stage 1 | 2026-03-16 → 2026-03-12 A (-4d) | 2026-04-21 → 2026-04-09 A (-12d) | 0% → 100% | 6d → none |
| JDH4-02-007-PR-1849 | Material Fabrication for Metal - Stage 2 | 2026-04-22 → 2026-04-11 A (-11d) | 2026-05-14 → 2026-04-23 A (-21d) | 0% → 100% | 6d → none |
| JDH4-02-007-PR-1850 | Material Fabrication for Metal - Stage 3 | 2026-05-16 → 2026-04-25 A (-21d) | 2026-06-10 → 2026-05-07 A (-34d) | 0% → 100% | 6d → none |
| JDH4-02-007-PR-1859 | Material Delivery for Metal - Stage 1 | 2026-06-11 A | 2026-07-01 → 2026-06-24 A (-7d) | 0% → 100% | 6d → none |
| JDH4-02-007-PR-1860 | Material Delivery for Metal - Stage 2 | 2026-07-02 → 2026-06-11 A (-21d) | 2026-08-05 → 2026-06-24 A (-42d) | 0% → 100% | 6d → none |
| 5 | **Pipes** | 2026-02-03 → 2026-02-02 (-1d) | 2026-04-20 → 2026-04-18 (-2d) |  |  |
| JDH4-02-007-PR-2290 | PO for Pipes | 2026-02-03 → 2026-02-02 A (-1d) | 2026-02-07 → 2026-02-04 A (-3d) | 0% → 100% | 3d → none |
| JDH4-02-007-PR-2300 | Material Fabrication for Pipes | 2026-02-08 → 2026-02-11 A (+3d) | 2026-03-15 → 2026-04-15 A (+31d) | 0% → 100% | 3d → none |
| JDH4-02-007-PR-2310 | Material Delivery for Pipes | 2026-03-16 → 2026-04-12 A (+27d) | 2026-04-20 → 2026-04-18 A (-2d) | 0% → 100% | 3d → none |
| 8 | **Air Conditioning and Ventilation** | 2026-02-19 → 2026-03-04 (+13d) | 2026-05-23 → 2026-04-19 (-34d) |  |  |
| JDH4-02-007-PR-2380 | PO for Air Conditioning and Ventilation | 2026-02-19 → 2026-03-04 A (+13d) | 2026-02-24 → 2026-03-11 A (+15d) | 0% → 100% | 17d → none |
| JDH4-02-007-PR-2390 | Material Fabrication for Air Conditioning and Ventilation | 2026-02-25 → 2026-03-12 A (+15d) | 2026-04-04 → 2026-04-15 A (+11d) | 0% → 100% | 17d → none |
| JDH4-02-007-PR-2400 | Material Delivery for Air Conditioning and Ventilation | 2026-04-21 → 2026-04-14 A (-7d) | 2026-05-23 → 2026-04-19 A (-34d) | 0% → 100% | 3d → none |
| 2 | **Fuel System** | 2026-03-08 → 2026-07-15 (+129d) | 2026-06-28 → 2026-08-12 (+45d) |  |  |
| JDH4-02-007-PR-1870 | PO forFabrication for Fuel System | 2026-03-08 → 2026-07-15 A (+129d) | 2026-03-11 → 2026-07-16 A (+127d) | 0% → 100% | 32d → none |
| JDH4-02-007-PR-1880 | Material Fabrication for Fuel System | 2026-03-12 → 2026-07-18 A (+128d) | 2026-04-19 → 2026-08-05 A (+108d) | 0% → 100% | 32d → none |
| JDH4-02-007-PR-1890 | Material Delivery for Fuel System | 2026-05-24 → 2026-08-10 A (+78d) | 2026-06-28 → 2026-08-12 A (+45d) | 0% → 100% | 3d → none |
| 6 | **Fire Fighting System** | 2026-03-11 → 2026-07-15 (+126d) | 2026-07-30 → 2026-08-12 (+13d) |  |  |
| JDH4-02-007-PR-2320 | PO for Fire Fighting System | 2026-03-11 → 2026-07-15 A (+126d) | 2026-03-15 → 2026-07-16 A (+123d) | 0% → 100% | 11d → none |
| JDH4-02-007-PR-2330 | Material Fabrication for Fire Fighting System | 2026-03-16 → 2026-07-18 A (+124d) | 2026-04-22 → 2026-08-06 A (+106d) | 0% → 100% | 11d → none |
| JDH4-02-007-PR-2340 | Material Delivery for Fire Fighting System | 2026-06-29 → 2026-08-10 A (+42d) | 2026-07-30 → 2026-08-12 A (+13d) | 0% → 100% | 3d → none |
| 9 | **Security System (CCTV System)** | 2026-04-23 → 2026-02-28 (-54d) | 2026-09-01 → 2026-04-11 (-143d) |  |  |
| JDH4-02-007-PR-2410 | PO for Security System (CCTV System) | 2026-04-23 → 2026-02-28 A (-54d) | 2026-04-27 → 2026-03-02 A (-56d) | 0% → 100% | 11d → none |
| JDH4-02-007-PR-2420 | Material Fabrication for Security System (CCTV System) | 2026-04-28 → 2026-03-03 A (-56d) | 2026-06-04 → 2026-03-25 A (-71d) | 0% → 100% | 11d → none |
| JDH4-02-007-PR-2430 | Material Delivery for Security System (CCTV System) | 2026-08-01 → 2026-04-02 A (-121d) | 2026-09-01 → 2026-04-11 A (-143d) | 0% → 100% | 3d → none |
| 1 | **Long Lead Item** | 2026-01-28 → 2026-01-25 (-3d) | 2026-12-31 → 2026-10-06 (-86d) |  |  |
| 3 | **TSE Network** | 2026-02-15 → 2026-02-23 (+8d) | 2026-06-28 → 2026-05-04 (-55d) |  |  |
| 1 | **Valves / Chambers** | 2026-02-15 → 2026-02-23 (+8d) | 2026-06-28 → 2026-03-31 (-89d) |  |  |
| JDH4-02-007-PR-1270 | PO for Valves / Chambers | 2026-02-15 → 2026-02-23 A (+8d) | 2026-02-19 → 2026-02-25 A (+6d) | 0% → 100% | 39d → none |
| JDH4-02-007-PR-1277 | Material Fabrication for Valves / Chambers - Stage 1 | 2026-02-21 → 2026-02-25 A (+4d) | 2026-03-02 → 2026-02-28 A (-2d) | 0% → 100% | 39d → none |
| JDH4-02-007-PR-1278 | Material Fabrication for Valves / Chambers - Stage 2 | 2026-03-03 → 2026-02-26 A (-5d) | 2026-04-09 → 2026-03-01 A (-39d) | 0% → 100% | 39d → none |
| JDH4-02-007-PR-1279 | Material Fabrication for Valves / Chambers - Stage 3 | 2026-04-11 → 2026-02-28 A (-42d) | 2026-05-03 → 2026-03-04 A (-60d) | 0% → 100% | 39d → none |
| JDH4-02-007-PR-1280 | Material Fabrication for Valves / Chambers - Stage 4 | 2026-05-04 → 2026-03-04 A (-61d) | 2026-05-30 → 2026-03-07 A (-84d) | 0% → 100% | 39d → none |
| JDH4-02-007-PR-1290 | Material Delivery for Valves / Chambers | 2026-05-31 → 2026-03-15 A (-77d) | 2026-06-20 → 2026-03-26 A (-86d) | 0% → 100% | 39d → none |
| JDH4-02-007-PR-1820 | Staging Time for Valves / Chambers | 2026-06-21 → 2026-03-28 A (-85d) | 2026-06-28 → 2026-03-31 A (-89d) | 0% → 100% | 39d → none |
| 2 | **Risers** | 2026-02-17 → 2026-03-01 (+12d) | 2026-05-16 → 2026-05-04 (-12d) |  |  |
| JDH4-02-007-PR-1900 | PO for Risers | 2026-02-17 → 2026-03-01 A (+12d) | 2026-02-23 → 2026-03-04 A (+9d) | 0% → 100% | 10d → none |
| JDH4-02-007-PR-1907 | Material Fabrication for Risers - Stage 1 | 2026-02-24 → 2026-03-05 A (+9d) | 2026-03-09 → 2026-03-14 A (+5d) | 0% → 100% | 10d → none |
| JDH4-02-007-PR-1908 | Material Fabrication for Risers - Stage 2 | 2026-03-10 → 2026-03-15 A (+5d) | 2026-03-26 → 2026-03-22 A (-4d) | 0% → 100% | 10d → none |
| JDH4-02-007-PR-1909 | Material Fabrication for Risers - Stage 3 | 2026-03-28 → 2026-03-23 A (-5d) | 2026-04-09 → 2026-03-25 A (-15d) | 0% → 100% | 10d → none |
| JDH4-02-007-PR-1910 | Material Fabrication for Risers - Stage 4 | 2026-04-11 → 2026-03-29 A (-13d) | 2026-04-23 → 2026-03-31 A (-23d) | 0% → 100% | 10d → none |
| JDH4-02-007-PR-1920 | Material Delivery for Risers | 2026-04-25 → 2026-04-01 A (-24d) | 2026-05-07 → 2026-04-30 A (-7d) | 0% → 100% | 10d → none |
| JDH4-02-007-PR-1930 | Staging Time for Risers | 2026-05-09 → 2026-05-02 A (-7d) | 2026-05-16 → 2026-05-04 A (-12d) | 0% → 100% | 10d → none |

| ID | Task | Start | Finish | Complete | Total float |
| --- | --- | --- | --- | --- | --- |
| 2 | **Potable Water Network** | 2026-02-21 → 2026-02-02 (-19d) | 2026-08-13 → 2026-04-04 (-131d) |  |  |
| 1 | **Valves / Chambers** | 2026-02-21 → 2026-02-08 (-13d) | 2026-04-28 → 2026-03-31 (-28d) |  |  |
| JDH4-02-007-PR-1240 | PO for Valves / Chambers | 2026-02-21 → 2026-02-08 A (-13d) | 2026-02-26 → 2026-02-10 A (-16d) | 0% → 100% | 40d → none |
| JDH4-02-007-PR-1248 | Material Fabrication for Valves / Chambers - Stage 1 | 2026-02-28 → 2026-02-11 A (-17d) | 2026-03-10 → 2026-02-12 A (-26d) | 0% → 100% | 40d → none |
| JDH4-02-007-PR-1249 | Material Fabrication for Valves / Chambers - Stage 2 | 2026-03-11 → 2026-02-11 A (-28d) | 2026-03-25 → 2026-02-14 A (-39d) | 0% → 100% | 40d → none |
| JDH4-02-007-PR-1250 | Material Fabrication for Valves / Chambers - Stage 3 | 2026-03-29 → 2026-02-12 A (-45d) | 2026-04-08 → 2026-02-17 A (-50d) | 0% → 100% | 38d → none |
| JDH4-02-007-PR-1260 | Material Delivery for Valves / Chambers | 2026-04-09 → 2026-02-23 A (-45d) | 2026-04-20 → 2026-03-21 A (-30d) | 0% → 100% | 38d → none |
| JDH4-02-007-PR-1810 | Staging Time for Valves / Chambers | 2026-04-21 → 2026-03-25 A (-27d) | 2026-04-28 → 2026-03-31 A (-28d) | 0% → 100% | 38d → none |
| 2 | **Fire Hydrants** | 2026-02-21 → 2026-02-02 (-19d) | 2026-08-13 → 2026-04-04 (-131d) |  |  |
| JDH4-02-007-PR-2440 | PO for Fire Hydrant | 2026-02-21 → 2026-02-02 A (-19d) | 2026-02-26 → 2026-02-10 A (-16d) | 0% → 100% | 17d → none |
| JDH4-02-007-PR-2447 | Material Fabrication for Fire Hydrant - Stage 1 | 2026-02-28 → 2026-02-11 A (-17d) | 2026-04-06 → 2026-02-14 A (-51d) | 0% → 100% | 17d → none |
| JDH4-02-007-PR-2448 | Material Fabrication for Fire Hydrant - Stage 2 | 2026-04-07 → 2026-02-15 A (-51d) | 2026-04-29 → 2026-02-17 A (-71d) | 0% → 100% | 17d → none |
| JDH4-02-007-PR-2449 | Material Fabrication for Fire Hydrant - Stage 3 | 2026-04-30 → 2026-02-18 A (-71d) | 2026-05-23 → 2026-02-21 A (-91d) | 0% → 100% | 17d → none |
| JDH4-02-007-PR-2450 | Material Fabrication for Fire Hydrant - Stage 4 | 2026-05-24 → 2026-02-22 A (-91d) | 2026-06-24 → 2026-02-25 A (-119d) | 0% → 100% | 17d → none |
| JDH4-02-007-PR-2460 | Material Delivery for Fire Hydrant | 2026-06-25 → 2026-02-25 A (-120d) | 2026-07-23 → 2026-03-30 A (-115d) | 0% → 100% | 17d → none |
| JDH4-02-007-PR-2470 | Staging Time for Fire Hydrant | 2026-08-06 → 2026-03-31 A (-128d) | 2026-08-13 → 2026-04-04 A (-131d) | 0% → 100% | 6d → none |
| 1 | **Electrical Network** | 2026-02-03 → 2026-02-17 (+14d) | 2026-12-31 → 2026-08-06 (-147d) |  |  |
| 1 | **Medium Voltage Cable** | 2026-11-14 → 2026-04-20 (-208d) | 2026-12-31 → 2026-06-15 (-199d) |  |  |
| JDH4-02-007-PR-1000 | PO for Medium Voltage Cable | 2026-11-14 → 2026-04-20 A (-208d) | 2026-11-21 → 2026-04-21 A (-214d) | 0% → 100% | 0d → none |
| JDH4-02-007-PR-1060 | Material Fabrication for Medium Voltage Cable - Stage 2 | 2026-11-22 → 2026-04-22 A (-214d) | 2026-12-20 → 2026-04-26 A (-238d) | 0% → 100% | 0d → none |
| JDH4-02-007-PR-1059 | Material Fabrication for Medium Voltage Cable - Stage 1 | 2026-11-22 → 2026-04-26 A (-210d) | 2026-12-20 → 2026-04-30 A (-234d) | 0% → 100% | 0d → none |
| JDH4-02-007-PR-1120 | Material Delivery for Medium Voltage Cable | 2026-12-21 → 2026-04-28 A (-237d) | 2026-12-31 → 2026-06-13 A (-201d) | 0% → 100% | 0d → none |
| JDH4-02-007-PR-1750 | Staging Time for Medium Voltage Cable | 2026-12-21 → 2026-06-14 A (-190d) | 2026-12-31 → 2026-06-15 A (-199d) | 0% → 100% | 0d → none |
| 4 | **Unit Sub Station** | 2026-02-25 → 2026-06-07 (+102d) | 2026-08-20 → 2026-07-29 (-22d) |  |  |
| JDH4-02-007-PR-1010 | PO for Unit Sub-station | 2026-02-25 → 2026-06-07 A (+102d) | 2026-03-22 → 2026-06-08 A (+78d) | 0% → 100% | 42d → none |
| JDH4-02-007-PR-1067 | Material Fabrication for Unit Sub-station - Stage 1 | 2026-03-23 → 2026-06-09 A (+78d) | 2026-03-28 → 2026-06-13 A (+77d) | 0% → 100% | 42d → none |
| JDH4-02-007-PR-1068 | Material Fabrication for Unit Sub-station - Stage 2 | 2026-03-29 → 2026-06-14 A (+77d) | 2026-05-02 → 2026-06-15 A (+44d) | 0% → 100% | 42d → none |
| JDH4-02-007-PR-1069 | Material Fabrication for Unit Sub-station - Stage 3 | 2026-05-03 → 2026-06-16 A (+44d) | 2026-06-09 → 2026-06-20 A (+11d) | 0% → 100% | 42d → none |
| JDH4-02-007-PR-1070 | Material Fabrication for Unit Sub-station - Stage 4 | 2026-06-10 → 2026-06-21 A (+11d) | 2026-07-14 → 2026-06-23 A (-21d) | 0% → 100% | 42d → none |
| JDH4-02-007-PR-1130 | Material Delivery for Unit Sub-station | 2026-07-15 → 2026-07-25 A (+10d) | 2026-08-12 → 2026-07-27 A (-16d) | 0% → 100% | 42d → none |
| JDH4-02-007-PR-1760 | Staging Time for Unit Sub-station | 2026-08-13 → 2026-07-28 A (-16d) | 2026-08-20 → 2026-07-29 A (-22d) | 0% → 100% | 42d → none |
| 5 | **Low Voltage Cables** | 2026-02-03 → 2026-02-22 (+19d) | 2026-06-10 → 2026-05-09 (-32d) |  |  |
| JDH4-02-007-PR-1020 | PO for Low Voltage Cables | 2026-02-03 → 2026-02-22 A (+19d) | 2026-02-10 → 2026-02-25 A (+15d) | 0% → 100% | 22d → none |
| JDH4-02-007-PR-1078 | Material Fabrication for Low Voltage Cables - Stage 1 | 2026-02-11 → 2026-02-26 A (+15d) | 2026-02-24 → 2026-04-11 A (+46d) | 0% → 100% | 36d → none |
| JDH4-02-007-PR-1079 | Material Fabrication for Low Voltage Cables - Stage 2 | 2026-02-25 → 2026-04-12 A (+46d) | 2026-03-29 → 2026-04-20 A (+22d) | 0% → 100% | 36d → none |
| JDH4-02-007-PR-1080 | Material Fabrication for Low Voltage Cables - Stage 3 | 2026-03-30 → 2026-04-21 A (+22d) | 2026-04-27 → 2026-04-23 A (-4d) | 0% → 100% | 36d → none |
| JDH4-02-007-PR-1140 | Material Delivery for Low Voltage Cables | 2026-04-28 → 2026-04-22 A (-6d) | 2026-06-02 → 2026-05-07 A (-26d) | 0% → 100% | 36d → none |
| JDH4-02-007-PR-1770 | Staging Time for Low Voltage Cables | 2026-06-03 → 2026-05-09 A (-25d) | 2026-06-10 → 2026-05-09 A (-32d) | 0% → 100% | 36d → none |
| 2 | **Ring Main Unit** | 2026-02-28 → 2026-04-23 (+54d) | 2026-07-23 → 2026-06-27 (-26d) |  |  |
| JDH4-02-007-PR-1940 | PO for Ring Main Unit | 2026-02-28 → 2026-04-23 A (+54d) | 2026-03-04 → 2026-04-23 A (+50d) | 0% → 100% | 9d → none |
| JDH4-02-007-PR-1948 | Material Fabrication for Ring Main Unit - Stage 1 | 2026-03-05 → 2026-04-24 A (+50d) | 2026-04-06 → 2026-05-02 A (+26d) | 0% → 100% | 9d → none |
| JDH4-02-007-PR-1949 | Material Fabrication for Ring Main Unit - Stage 2 | 2026-04-07 → 2026-05-03 A (+26d) | 2026-05-05 → 2026-05-16 A (+11d) | 0% → 100% | 9d → none |
| JDH4-02-007-PR-1950 | Material Fabrication for Ring Main Unit - Stage 3 | 2026-05-06 → 2026-05-16 A (+10d) | 2026-06-07 → 2026-05-31 A (-7d) | 0% → 100% | 9d → none |
| JDH4-02-007-PR-1960 | Material Delivery for Ring Main Unit | 2026-06-08 → 2026-06-01 A (-7d) | 2026-07-09 → 2026-06-23 A (-16d) | 0% → 100% | 9d → none |
| JDH4-02-007-PR-1970 | Staging Time for Ring Main Unit | 2026-07-11 → 2026-06-24 A (-17d) | 2026-07-23 → 2026-06-27 A (-26d) | 0% → 100% | 32d → none |
| 6 | **Lighting poles** | 2026-03-05 → 2026-02-17 (-16d) | 2026-08-19 → 2026-04-30 (-111d) |  |  |
| JDH4-02-007-PR-1030 | PO for Lighting poles | 2026-03-05 → 2026-02-17 A (-16d) | 2026-03-09 → 2026-02-19 A (-18d) | 0% → 100% | 33d → none |
| JDH4-02-007-PR-1088 | Material Fabrication for Lighting poles - Stage 1 | 2026-03-10 → 2026-02-21 A (-17d) | 2026-03-25 → 2026-03-11 A (-14d) | 0% → 100% | 47d → none |
| JDH4-02-007-PR-1090 | Material Fabrication for Lighting poles - Stage 3 | 2026-04-25 → 2026-03-21 A (-35d) | 2026-05-23 → 2026-04-21 A (-32d) | 0% → 100% | 47d → none |
| JDH4-02-007-PR-1089 | Material Fabrication for Lighting poles - Stage 2 | 2026-03-26 → 2026-03-21 A (-5d) | 2026-04-23 → 2026-04-16 A (-7d) | 0% → 100% | 47d → none |
| JDH4-02-007-PR-1150 | Material Delivery for Lighting poles | 2026-07-11 → 2026-03-25 A (-108d) | 2026-08-11 → 2026-04-29 A (-104d) | 0% → 100% | 9d → none |
| JDH4-02-007-PR-1780 | Staging Time for Lighting poles | 2026-08-12 → 2026-03-28 A (-137d) | 2026-08-19 → 2026-04-30 A (-111d) | 0% → 100% | 9d → none |
| 7 | **Street Lighting Luminaire** | 2026-03-10 → 2026-02-17 (-21d) | 2026-09-02 → 2026-05-25 (-100d) |  |  |
| JDH4-02-007-PR-1040 | PO for Street Lighting Luminaire | 2026-03-10 → 2026-02-17 A (-21d) | 2026-03-17 → 2026-02-19 A (-26d) | 0% → 100% | 33d → none |
| JDH4-02-007-PR-1098 | Material Fabrication for Street Lighting Luminaire - Stage 1 | 2026-03-22 → 2026-02-21 A (-29d) | 2026-04-19 → 2026-03-14 A (-36d) | 0% → 100% | 33d → none |
| JDH4-02-007-PR-1099 | Material Fabrication for Street Lighting Luminaire - Stage 2 | 2026-04-20 → 2026-03-18 A (-33d) | 2026-05-18 → 2026-04-09 A (-39d) | 0% → 100% | 33d → none |
| JDH4-02-007-PR-1100 | Material Fabrication for Street Lighting Luminaire - Stage 3 | 2026-05-19 → 2026-03-19 A (-61d) | 2026-06-20 → 2026-05-21 A (-30d) | 0% → 100% | 33d → none |
| JDH4-02-007-PR-1160 | Material Delivery for Street Lighting Luminaire | 2026-06-21 → 2026-03-25 A (-88d) | 2026-07-22 → 2026-05-25 A (-58d) | 0% → 100% | 33d → none |
| JDH4-02-007-PR-1790 | Staging Time for Street Lighting Luminaire | 2026-08-20 → 2026-03-26 A (-147d) | 2026-09-02 → 2026-05-25 A (-100d) | 0% → 100% | 9d → none |
| 9 | **Lighting panels/Feeder Pillers** | 2026-03-08 → 2026-04-30 (+53d) | 2026-08-27 → 2026-06-09 (-79d) |  |  |
| JDH4-02-007-PR-1050 | PO for Lighting Panels/Feeder Pillers | 2026-03-08 → 2026-04-30 A (+53d) | 2026-03-11 → 2026-05-14 A (+64d) | 0% → 100% | 27d → none |
| JDH4-02-007-PR-1108 | Material Fabrication for Lighting Panels/Feeder Pillers - Stage 1 | 2026-03-12 → 2026-05-16 A (+65d) | 2026-04-13 → 2026-06-07 A (+55d) | 0% → 100% | 43d → none |
| JDH4-02-007-PR-1109 | Material Fabrication for Lighting Panels/Feeder Pillers - Stage 2 | 2026-04-14 → 2026-06-08 A (+55d) | 2026-05-12 → 2026-06-09 A (+28d) | 0% → 100% | 43d → none |
| JDH4-02-007-PR-1110 | Material Fabrication for Lighting Panels/Feeder Pillers - Stage 3 | 2026-05-13 → 2026-06-08 A (+26d) | 2026-06-14 → 2026-06-09 A (-5d) | 0% → 100% | 43d → none |
| JDH4-02-007-PR-1170 | Material Delivery for Lighting Panels/Feeder Pillers | 2026-06-15 → 2026-06-08 A (-7d) | 2026-07-16 → 2026-06-09 A (-37d) | 0% → 100% | 43d → none |
| JDH4-02-007-PR-1800 | Staging Time for Lighting Panels/Feeder Pillers | 2026-08-20 → 2026-06-09 A (-72d) | 2026-08-27 → 2026-06-09 A (-79d) | 0% → 100% | 14d → none |
| 11 | **Low Voltage Distribution Panels** | 2026-03-12 → 2026-04-30 (+49d) | 2026-09-05 → 2026-08-06 (-30d) |  |  |
| JDH4-02-007-PR-2480 | PO for Low Voltage Distribution Panels | 2026-03-12 → 2026-04-30 A (+49d) | 2026-03-23 → 2026-05-14 A (+52d) | 0% → 100% | 27d → none |
| JDH4-02-007-PR-2488 | Material Fabrication for Low Voltage Distribution Panels - Stage 1 | 2026-03-24 → 2026-05-16 A (+53d) | 2026-04-16 → 2026-05-23 A (+37d) | 0% → 100% | 27d → none |
| JDH4-02-007-PR-2489 | Material Fabrication for Low Voltage Distribution Panels - Stage 2 | 2026-04-18 → 2026-05-24 A (+36d) | 2026-05-10 → 2026-06-01 A (+22d) | 0% → 100% | 27d → none |

| ID | Task | Start | Finish | Complete | Total float |
| --- | --- | --- | --- | --- | --- |
| JDH4-02-007-PR-2490 | Material Fabrication for Low Voltage Distribution Panels - Stage 3 | 2026-05-11 → 2026-06-02 A (+22d) | 2026-06-06 → 2026-07-30 A (+54d) | 0% → 100% | 27d → none |
| JDH4-02-007-PR-2500 | Material Delivery for Low Voltage Distribution Panels | 2026-06-07 → 2026-08-01 A (+55d) | 2026-07-08 → 2026-08-05 A (+28d) | 0% → 100% | 27d → none |
| JDH4-02-007-PR-2510 | Staging Time for Low Voltage Distribution Panels | 2026-08-29 → 2026-08-06 A (-23d) | 2026-09-05 → 2026-08-06 A (-30d) | 0% → 100% | 29d → none |
| 6 | **Sewage Lift Station** | 2026-01-28 → 2026-01-25 (-3d) | 2026-12-24 → 2026-10-06 (-79d) |  |  |
| 5 | **Odours scrubbing system** | 2026-03-11 → 2026-02-08 (-31d) | 2026-08-26 → 2026-08-10 (-16d) |  |  |
| JDH4-02-007-PR-1990 | PO for Odours scrubbing system | 2026-03-11 → 2026-02-08 A (-31d) | 2026-03-15 → 2026-02-10 A (-33d) | 0% → 100% | 7d → none |
| JDH4-02-007-PR-2037 | Material Fabrication for Odours scrubbing system - Stage 1 | 2026-03-16 → 2026-02-11 A (-33d) | 2026-04-16 → 2026-02-14 A (-61d) | 0% → 100% | 30d → none |
| JDH4-02-007-PR-2038 | Material Fabrication for Odours scrubbing system - Stage 2 | 2026-04-18 → 2026-02-15 A (-62d) | 2026-05-16 → 2026-02-18 A (-87d) | 0% → 100% | 30d → none |
| JDH4-02-007-PR-2039 | Material Fabrication for Odours scrubbing system - Stage 3 | 2026-05-17 → 2026-04-25 A (-22d) | 2026-06-17 → 2026-06-10 A (-7d) | 0% → 100% | 30d → none |
| JDH4-02-007-PR-2040 | Material Fabrication for Odours scrubbing system - Stage 4 | 2026-06-18 → 2026-06-11 A (-7d) | 2026-07-16 → 2026-06-21 A (-25d) | 0% → 100% | 30d → none |
| JDH4-02-007-PR-2090 | Material Delivery for Odours scrubbing system | 2026-07-18 → 2026-06-22 A (-26d) | 2026-08-18 → 2026-06-25 A (-54d) | 0% → 100% | 30d → none |
| JDH4-02-007-PR-2140 | Staging Time for Odours scrubbing system | 2026-08-19 → 2026-08-10 A (-9d) | 2026-08-26 → 2026-08-10 A (-16d) | 0% → 100% | 30d → none |
| 2 | **Crane** | 2026-03-16 → 2026-02-16 (-28d) | 2026-09-30 → 2026-08-13 (-48d) |  |  |
| JDH4-02-007-PR-2180 | PO for Crane | 2026-03-16 → 2026-02-16 A (-28d) | 2026-03-26 → 2026-02-16 A (-38d) | 0% → 100% | 9d → none |
| JDH4-02-007-PR-2187 | Material Fabrication for Crane - Stage 1 | 2026-03-28 → 2026-02-17 A (-39d) | 2026-04-18 → 2026-03-25 A (-24d) | 0% → 100% | 14d → none |
| JDH4-02-007-PR-2188 | Material Fabrication for Crane - Stage 2 | 2026-04-19 → 2026-03-25 A (-25d) | 2026-05-11 → 2026-05-20 A (+9d) | 0% → 100% | 14d → none |
| JDH4-02-007-PR-2189 | Material Fabrication for Crane - Stage 3 | 2026-05-12 → 2026-05-21 A (+9d) | 2026-06-18 → 2026-08-03 A (+46d) | 0% → 100% | 14d → none |
| JDH4-02-007-PR-2190 | Material Fabrication for Crane - Stage 4 | 2026-06-20 → 2026-08-01 A (+42d) | 2026-07-23 → 2026-08-06 A (+14d) | 0% → 100% | 14d → none |
| JDH4-02-007-PR-2200 | Material Delivery for Crane | 2026-08-20 → 2026-08-08 A (-12d) | 2026-09-21 → 2026-08-12 A (-40d) | 0% → 100% | 35d → none |
| JDH4-02-007-PR-2210 | Staging Time for Crane | 2026-09-22 → 2026-08-13 A (-40d) | 2026-09-30 → 2026-08-13 A (-48d) | 0% → 100% | 35d → none |
| 6 | **Air Vents** | 2026-03-28 → 2026-02-25 (-31d) | 2026-12-16 → 2026-05-23 (-207d) |  |  |
| JDH4-02-007-PR-2000 | PO for Air Vents | 2026-03-28 → 2026-02-25 A (-31d) | 2026-04-04 → 2026-02-25 A (-38d) | 0% → 100% | 9d → none |
| JDH4-02-007-PR-2045 | Material Fabrication for Air Vents - Stage 1 | 2026-04-05 → 2026-02-26 A (-38d) | 2026-04-20 → 2026-03-25 A (-26d) | 0% → 100% | 31d → none |
| JDH4-02-007-PR-2046 | Material Fabrication for Air Vents - Stage 2 | 2026-04-21 → 2026-03-25 A (-27d) | 2026-05-13 → 2026-03-31 A (-43d) | 0% → 100% | 31d → none |
| JDH4-02-007-PR-2047 | Material Fabrication for Air Vents - Stage 3 | 2026-05-14 → 2026-04-01 A (-43d) | 2026-06-21 → 2026-04-09 A (-73d) | 0% → 100% | 31d → none |
| JDH4-02-007-PR-2048 | Material Fabrication for Air Vents - Stage 4 | 2026-07-23 → 2026-04-08 A (-106d) | 2026-08-26 → 2026-04-16 A (-132d) | 0% → 100% | 4d → none |
| JDH4-02-007-PR-2049 | Material Fabrication for Air Vents - Stage 5 | 2026-08-27 → 2026-04-18 A (-131d) | 2026-10-01 → 2026-04-23 A (-161d) | 0% → 100% | 4d → none |
| JDH4-02-007-PR-2050 | Material Fabrication for Air Vents - Stage 6 | 2026-10-03 → 2026-04-25 A (-161d) | 2026-11-05 → 2026-05-13 A (-176d) | 0% → 100% | 4d → none |
| JDH4-02-007-PR-2100 | Material Delivery for Air Vents | 2026-11-07 → 2026-05-14 A (-177d) | 2026-12-08 → 2026-05-18 A (-204d) | 0% → 100% | 4d → none |
| JDH4-02-007-PR-2150 | Staging Time for Air Vents | 2026-12-09 → 2026-05-19 A (-204d) | 2026-12-16 → 2026-05-23 A (-207d) | 0% → 100% | 4d → none |
| 3 | **Screening Container** | 2026-03-24 → 2026-03-02 (-22d) | 2026-11-15 → 2026-05-02 (-197d) |  |  |
| JDH4-02-007-PR-2220 | PO for Screening Container | 2026-03-24 → 2026-03-02 A (-22d) | 2026-03-31 → 2026-03-09 A (-22d) | 0% → 100% | 38d → none |
| JDH4-02-007-PR-2225 | Material Fabrication for Screening Container - Stage 1 | 2026-04-01 → 2026-03-10 A (-22d) | 2026-04-16 → 2026-03-25 A (-22d) | 0% → 100% | 38d → none |
| JDH4-02-007-PR-2226 | Material Fabrication for Screening Container - Stage 2 | 2026-04-18 → 2026-03-25 A (-24d) | 2026-05-10 → 2026-04-14 A (-26d) | 0% → 100% | 38d → none |
| JDH4-02-007-PR-2227 | Material Fabrication for Screening Container - Stage 3 | 2026-05-11 → 2026-04-08 A (-33d) | 2026-06-17 → 2026-04-15 A (-63d) | 0% → 100% | 38d → none |
| JDH4-02-007-PR-2230 | Material Fabrication for Screening Container - Stage 6 | 2026-08-27 → 2026-04-15 A (-134d) | 2026-10-01 → 2026-04-19 A (-165d) | 0% → 100% | 38d → none |
| JDH4-02-007-PR-2228 | Material Fabrication for Screening Container - Stage 4 | 2026-06-18 → 2026-04-16 A (-63d) | 2026-07-22 → 2026-04-18 A (-95d) | 0% → 100% | 38d → none |
| JDH4-02-007-PR-2229 | Material Fabrication for Screening Container - Stage 5 | 2026-07-23 → 2026-04-16 A (-98d) | 2026-08-26 → 2026-04-18 A (-130d) | 0% → 100% | 38d → none |
| JDH4-02-007-PR-2240 | Material Delivery for Screening Container | 2026-10-03 → 2026-04-19 A (-167d) | 2026-11-03 → 2026-04-23 A (-194d) | 0% → 100% | 38d → none |
| JDH4-02-007-PR-2250 | Staging Time for Screening Container | 2026-11-04 → 2026-04-25 A (-193d) | 2026-11-15 → 2026-05-02 A (-197d) | 0% → 100% | 38d → none |
| 7 | **Baffle Plates** | 2026-04-05 → 2026-02-02 (-62d) | 2026-09-29 → 2026-02-24 (-217d) |  |  |
| JDH4-02-007-PR-2010 | PO for Baffle Plates | 2026-04-05 → 2026-02-02 A (-62d) | 2026-04-12 → 2026-02-02 A (-69d) | 0% → 100% | 9d → none |
| JDH4-02-007-PR-2057 | Material Fabrication for Baffle Plates - Stage 1 | 2026-04-13 → 2026-02-03 A (-69d) | 2026-05-17 → 2026-02-05 A (-101d) | 0% → 100% | 9d → none |
| JDH4-02-007-PR-2058 | Material Fabrication for Baffle Plates - Stage 2 | 2026-05-18 → 2026-02-07 A (-100d) | 2026-06-24 → 2026-02-08 A (-136d) | 0% → 100% | 9d → none |
| JDH4-02-007-PR-2059 | Material Fabrication for Baffle Plates - Stage 3 | 2026-06-25 → 2026-02-08 A (-137d) | 2026-07-29 → 2026-02-09 A (-170d) | 0% → 100% | 9d → none |
| JDH4-02-007-PR-2060 | Material Fabrication for Baffle Plates - Stage 4 | 2026-07-30 → 2026-02-10 A (-170d) | 2026-09-02 → 2026-02-10 A (-204d) | 0% → 100% | 9d → none |
| JDH4-02-007-PR-2110 | Material Delivery for Baffle Plates | 2026-09-03 → 2026-02-11 A (-204d) | 2026-09-20 → 2026-02-11 A (-221d) | 0% → 100% | 9d → none |
| JDH4-02-007-PR-2160 | Staging Time for Baffle Plates | 2026-09-21 → 2026-02-16 A (-217d) | 2026-09-29 → 2026-02-24 A (-217d) | 0% → 100% | 9d → none |
| 8 | **Anti-Water Hammer Equipment** | 2026-03-30 → 2026-02-02 (-56d) | 2026-11-29 → 2026-02-09 (-293d) |  |  |
| JDH4-02-007-PR-2020 | PO for Anti-Water Hammer Equipment | 2026-03-30 → 2026-02-02 A (-56d) | 2026-04-07 → 2026-02-02 A (-64d) | 0% → 100% | 31d → none |
| JDH4-02-007-PR-2065 | Material Fabrication for Anti-Water Hammer Equipment - Stage 1 | 2026-04-08 → 2026-02-03 A (-64d) | 2026-04-23 → 2026-02-03 A (-79d) | 0% → 100% | 31d → none |
| JDH4-02-007-PR-2066 | Material Fabrication for Anti-Water Hammer Equipment - Stage 2 | 2026-04-25 → 2026-02-03 A (-81d) | 2026-05-17 → 2026-02-03 A (-103d) | 0% → 100% | 31d → none |
| JDH4-02-007-PR-2067 | Material Fabrication for Anti-Water Hammer Equipment - Stage 3 | 2026-05-18 → 2026-02-03 A (-104d) | 2026-06-24 → 2026-02-04 A (-140d) | 0% → 100% | 31d → none |
| JDH4-02-007-PR-2120 | Material Delivery for Anti-Water Hammer Equipment | 2026-11-04 → 2026-02-03 A (-274d) | 2026-11-21 → 2026-02-08 A (-286d) | 0% → 100% | 32d → none |
| JDH4-02-007-PR-2068 | Material Fabrication for Anti-Water Hammer Equipment - Stage 4 | 2026-06-25 → 2026-02-04 A (-141d) | 2026-07-29 → 2026-02-04 A (-175d) | 0% → 100% | 31d → none |
| JDH4-02-007-PR-2069 | Material Fabrication for Anti-Water Hammer Equipment - Stage 5 | 2026-07-30 → 2026-02-04 A (-176d) | 2026-09-02 → 2026-02-05 A (-209d) | 0% → 100% | 31d → none |
| JDH4-02-007-PR-2070 | Material Fabrication for Anti-Water Hammer Equipment - Stage 6 | 2026-09-30 → 2026-02-04 A (-238d) | 2026-11-03 → 2026-02-05 A (-271d) | 0% → 100% | 32d → none |
| JDH4-02-007-PR-2170 | Staging Time for Anti-Water Hammer Equipment | 2026-11-22 → 2026-02-08 A (-287d) | 2026-11-29 → 2026-02-09 A (-293d) | 0% → 100% | 32d → none |
| 4 | **Pumps** |  | 2026-09-14 → 2026-10-05 (+21d) |  |  |
| JDH4-02-007-PR-2026 | Material Fabrication for Pumps - Stage 1 | 2026-02-03 → 2026-02-01 A (-2d) | 2026-03-10 → 2026-02-14 A (-24d) | 0% → 100% | 28d → none |
| JDH4-02-007-PR-2027 | Material Fabrication for Pumps - Stage 2 | 2026-03-11 → 2026-02-16 A (-23d) | 2026-04-18 → 2026-02-28 A (-49d) | 0% → 100% | 28d → none |
| JDH4-02-007-PR-2028 | Material Fabrication for Pumps - Stage 3 | 2026-04-19 → 2026-03-01 A (-49d) | 2026-05-23 → 2026-05-20 A (-3d) | 0% → 100% | 28d → none |
| JDH4-02-007-PR-2029 | Material Fabrication for Pumps - Stage 4 | 2026-05-24 → 2026-05-21 A (-3d) | 2026-06-30 → 2026-09-28 A (+90d) | 0% → 100% | 28d → none |
| JDH4-02-007-PR-2030 | Material Fabrication for Pumps - Stage 5 | 2026-07-01 → 2026-08-03 A (+33d) | 2026-08-04 → 2026-09-27 A (+54d) | 0% → 100% | 28d → none |
| JDH4-02-007-PR-2080 | Material Delivery for Pumps | 2026-08-05 → 2026-09-27 A (+53d) | 2026-09-06 → 2026-09-30 A (+24d) | 0% → 100% | 28d → none |
| JDH4-02-007-PR-2130 | Staging Time for Pumps | 2026-09-07 → 2026-10-01 A (+24d) | 2026-09-14 → 2026-10-05 A (+21d) | 0% → 100% | 28d → none |
| 9 | **Main Distribution Board /MCC panels** | 2026-03-05 → 2026-06-07 (+94d) | 2026-08-20 → 2026-08-27 (+7d) |  |  |
| JDH4-02-007-PR-2530 | PO for Main Distribution Board / MCC panels | 2026-03-05 → 2026-06-07 A (+94d) | 2026-03-09 → 2026-06-08 A (+91d) | 0% → 100% | 13d → none |
| JDH4-02-007-PR-2567 | Material Fabrication for Main Distribution Board / MCC panels - Stage 1 | 2026-03-10 → 2026-06-09 A (+91d) | 2026-04-11 → 2026-06-11 A (+61d) | 0% → 100% | 19d → none |
| JDH4-02-007-PR-2568 | Material Fabrication for Main Distribution Board / MCC panels - Stage 2 | 2026-04-12 → 2026-06-13 A (+62d) | 2026-05-10 → 2026-06-15 A (+36d) | 0% → 100% | 19d → none |

| ID | Task | Start | Finish | Complete | Total float |
| --- | --- | --- | --- | --- | --- |
| JDH4-02-007-PR-2569 | Material Fabrication for Main Distribution Board / MCC panels - Stage 3 | 2026-05-11 → 2026-08-01 A (+82d) | 2026-06-11 → 2026-08-11 A (+61d) | 0% → 100% | 19d → none |
| JDH4-02-007-PR-2570 | Material Fabrication for Main Distribution Board / MCC panels - Stage 4 | 2026-06-13 → 2026-08-01 A (+49d) | 2026-07-11 → 2026-08-06 A (+26d) | 0% → 100% | 19d → none |
| JDH4-02-007-PR-2610 | Material Delivery for Main Distribution Board / MCC panels | 2026-07-12 → 2026-08-12 A (+31d) | 2026-08-12 → 2026-08-19 A (+7d) | 0% → 100% | 19d → none |
| JDH4-02-007-PR-2650 | Staging Time for Main Distribution Board / MCC panels | 2026-08-13 → 2026-08-20 A (+7d) | 2026-08-20 → 2026-08-27 A (+7d) | 0% → 100% | 19d → none |
| 10 | **Final Panel boards** | 2026-03-01 → 2026-06-08 (+99d) | 2026-08-18 → 2026-09-03 (+16d) |  |  |
| JDH4-02-007-PR-2680 | PO for Final Panel Boards | 2026-03-01 → 2026-06-08 A (+99d) | 2026-03-08 → 2026-06-08 A (+92d) | 0% → 100% | 21d → none |
| JDH4-02-007-PR-2687 | Material Fabrication for Final Panel Boards - Stage 1 | 2026-03-09 → 2026-06-09 A (+92d) | 2026-03-22 → 2026-06-11 A (+81d) | 0% → 100% | 21d → none |
| JDH4-02-007-PR-2688 | Material Fabrication for Final Panel Boards - Stage 2 | 2026-03-23 → 2026-06-13 A (+82d) | 2026-04-26 → 2026-06-15 A (+50d) | 0% → 100% | 21d → none |
| JDH4-02-007-PR-2689 | Material Fabrication for Final Panel Boards - Stage 3 | 2026-04-27 → 2026-08-01 A (+96d) | 2026-06-03 → 2026-08-25 A (+83d) | 0% → 100% | 21d → none |
| JDH4-02-007-PR-2690 | Material Fabrication for Final Panel Boards - Stage 4 | 2026-06-04 → 2026-08-01 A (+58d) | 2026-07-08 → 2026-08-20 A (+43d) | 0% → 100% | 21d → none |
| JDH4-02-007-PR-2700 | Material Delivery for Final Panel Boards | 2026-07-09 → 2026-08-26 A (+48d) | 2026-08-10 → 2026-08-27 A (+17d) | 0% → 100% | 21d → none |
| JDH4-02-007-PR-2710 | Staging Time for Final Panel Boards | 2026-08-11 → 2026-08-29 A (+18d) | 2026-08-18 → 2026-09-03 A (+16d) | 0% → 100% | 21d → none |
| 11 | **Local Control Panel/ Monitoring Control Panel** | 2026-03-09 → 2026-01-26 (-42d) | 2026-11-10 → 2026-09-03 (-68d) |  |  |
| JDH4-02-007-PR-2540 | PO for Local Control Panel/ Monitoring Control Panel | 2026-03-09 → 2026-01-26 A (-42d) | 2026-03-16 → 2026-01-29 A (-46d) | 0% → 100% | 21d → none |
| JDH4-02-007-PR-2576 | Material Fabrication for Local Control Panel/ Monitoring Control Panel - Stage 1 | 2026-03-17 → 2026-01-31 A (-45d) | 2026-04-23 → 2026-02-05 A (-77d) | 0% → 100% | 21d → none |
| JDH4-02-007-PR-2577 | Material Fabrication for Local Control Panel/ Monitoring Control Panel - Stage 2 | 2026-04-25 → 2026-02-07 A (-77d) | 2026-06-01 → 2026-03-21 A (-72d) | 0% → 100% | 21d → none |
| JDH4-02-007-PR-2578 | Material Fabrication for Local Control Panel/ Monitoring Control Panel - Stage 3 | 2026-06-02 → 2026-03-21 A (-73d) | 2026-07-06 → 2026-08-01 A (+26d) | 0% → 100% | 21d → none |
| JDH4-02-007-PR-2579 | Material Fabrication for Local Control Panel/ Monitoring Control Panel - Stage 4 | 2026-07-07 → 2026-07-15 A (+8d) | 2026-08-10 → 2026-08-19 A (+9d) | 0% → 100% | 21d → none |
| JDH4-02-007-PR-2580 | Material Fabrication for Local Control Panel/ Monitoring Control Panel - Stage 5 | 2026-08-11 → 2026-07-15 A (-27d) | 2026-09-14 → 2026-08-05 A (-40d) | 0% → 100% | 21d → none |
| JDH4-02-007-PR-2620 | Material Delivery for Local Control Panel/ Monitoring Control Panel | 2026-10-01 → 2026-08-20 A (-42d) | 2026-11-02 → 2026-08-27 A (-67d) | 0% → 100% | 36d → none |
| JDH4-02-007-PR-2660 | Staging Time for Local Control Panel/ Monitoring Control Panel | 2026-11-03 → 2026-08-29 A (-66d) | 2026-11-10 → 2026-09-03 A (-68d) | 0% → 100% | 36d → none |
| 12 | **Engine Generators** | 2026-03-28 → 2026-05-11 (+44d) | 2026-11-18 → 2026-06-28 (-143d) |  |  |
| JDH4-02-007-PR-2720 | PO for Engine Generators | 2026-03-28 → 2026-05-11 A (+44d) | 2026-04-04 → 2026-05-11 A (+37d) | 0% → 100% | 21d → none |
| JDH4-02-007-PR-2726 | Material Fabrication for Engine Generators - Stage 1 | 2026-04-05 → 2026-05-11 A (+36d) | 2026-05-09 → 2026-05-11 A (+2d) | 0% → 100% | 21d → none |
| JDH4-02-007-PR-2727 | Material Fabrication for Engine Generators - Stage 2 | 2026-05-10 → 2026-05-14 A (+4d) | 2026-06-16 → 2026-05-16 A (-31d) | 0% → 100% | 21d → none |
| JDH4-02-007-PR-2728 | Material Fabrication for Engine Generators - Stage 3 | 2026-06-17 → 2026-05-17 A (-31d) | 2026-07-21 → 2026-05-27 A (-55d) | 0% → 100% | 21d → none |
| JDH4-02-007-PR-2729 | Material Fabrication for Engine Generators - Stage 4 | 2026-07-22 → 2026-05-28 A (-55d) | 2026-08-25 → 2026-06-06 A (-80d) | 0% → 100% | 21d → none |
| JDH4-02-007-PR-2730 | Material Fabrication for Engine Generators - Stage 5 | 2026-08-26 → 2026-06-08 A (-79d) | 2026-09-30 → 2026-06-20 A (-102d) | 0% → 100% | 21d → none |
| JDH4-02-007-PR-2740 | Material Delivery for Engine Generators | 2026-10-01 → 2026-06-21 A (-102d) | 2026-11-02 → 2026-06-27 A (-128d) | 0% → 100% | 21d → none |
| JDH4-02-007-PR-2750 | Staging Time for Engine Generators | 2026-11-11 → 2026-06-28 A (-136d) | 2026-11-18 → 2026-06-28 A (-143d) | 0% → 100% | 36d → none |
| 13 | **Standby Diesel Generator** | 2026-03-16 → 2026-05-11 (+56d) | 2026-10-07 → 2026-06-29 (-100d) |  |  |
| JDH4-02-007-PR-2550 | PO for Standby Diesel Generator | 2026-03-16 → 2026-05-11 A (+56d) | 2026-03-26 → 2026-05-11 A (+46d) | 0% → 100% | 31d → none |
| JDH4-02-007-PR-2587 | Material Fabrication for Standby Diesel Generator - Stage 1 | 2026-03-28 → 2026-05-12 A (+45d) | 2026-04-30 → 2026-05-16 A (+16d) | 0% → 100% | 31d → none |
| JDH4-02-007-PR-2588 | Material Fabrication for Standby Diesel Generator - Stage 2 | 2026-05-02 → 2026-05-17 A (+15d) | 2026-06-08 → 2026-05-31 A (-8d) | 0% → 100% | 31d → none |
| JDH4-02-007-PR-2589 | Material Fabrication for Standby Diesel Generator - Stage 3 | 2026-06-09 → 2026-06-01 A (-8d) | 2026-07-13 → 2026-06-13 A (-30d) | 0% → 100% | 31d → none |
| JDH4-02-007-PR-2590 | Material Fabrication for Standby Diesel Generator - Stage 4 | 2026-07-14 → 2026-06-14 A (-30d) | 2026-08-17 → 2026-06-23 A (-55d) | 0% → 100% | 31d → none |
| JDH4-02-007-PR-2630 | Material Delivery for Standby Diesel Generator | 2026-08-18 → 2026-06-24 A (-55d) | 2026-09-02 → 2026-06-27 A (-67d) | 0% → 100% | 31d → none |
| JDH4-02-007-PR-2670 | Staging Time for Standby Diesel Generator | 2026-09-30 → 2026-06-28 A (-94d) | 2026-10-07 → 2026-06-29 A (-100d) | 0% → 100% | 9d → none |
| 14 | **Power Factor Correction Capacitor Bank** | 2026-03-01 → 2026-01-26 (-34d) | 2026-12-24 → 2026-08-30 (-116d) |  |  |
| JDH4-02-007-PR-2760 | PO for Power Factor Correction Capacitor Bank | 2026-03-01 → 2026-01-26 A (-34d) | 2026-03-22 → 2026-01-29 A (-52d) | 0% → 100% | 22d → none |
| JDH4-02-007-PR-2795 | Material Fabrication for Power Factor Correction Capacitor Bank - Stage 1 | 2026-03-23 → 2026-01-31 A (-51d) | 2026-04-07 → 2026-02-28 A (-38d) | 0% → 100% | 22d → none |
| JDH4-02-007-PR-2796 | Material Fabrication for Power Factor Correction Capacitor Bank - Stage 2 | 2026-04-08 → 2026-03-01 A (-38d) | 2026-04-30 → 2026-03-28 A (-33d) | 0% → 100% | 22d → none |
| JDH4-02-007-PR-2797 | Material Fabrication for Power Factor Correction Capacitor Bank - Stage 3 | 2026-05-02 → 2026-03-30 A (-33d) | 2026-06-08 → 2026-04-25 A (-44d) | 0% → 100% | 22d → none |
| JDH4-02-007-PR-2798 | Material Fabrication for Power Factor Correction Capacitor Bank - Stage 4 | 2026-06-09 → 2026-04-26 A (-44d) | 2026-07-13 → 2026-08-06 A (+24d) | 0% → 100% | 22d → none |
| JDH4-02-007-PR-2799 | Material Fabrication for Power Factor Correction Capacitor Bank - Stage 5 | 2026-07-14 → 2026-07-11 A (-3d) | 2026-08-17 → 2026-08-15 A (-2d) | 0% → 100% | 22d → none |
| JDH4-02-007-PR-2800 | Material Fabrication for Power Factor Correction Capacitor Bank - Stage 6 | 2026-08-18 → 2026-07-11 A (-38d) | 2026-09-21 → 2026-08-08 A (-44d) | 0% → 100% | 22d → none |
| JDH4-02-007-PR-2840 | Material Delivery for Power Factor Correction Capacitor Bank | 2026-10-08 → 2026-08-16 A (-53d) | 2026-11-09 → 2026-08-26 A (-75d) | 0% → 100% | 9d → none |
| JDH4-02-007-PR-2880 | Staging Time for Power Factor Correction Capacitor Bank | 2026-12-17 → 2026-08-27 A (-112d) | 2026-12-24 → 2026-08-30 A (-116d) | 0% → 100% | 17d → none |
| 15 | **Low-Voltage Electrical Power Conductors and Cables** | 2026-03-16 → 2026-02-25 (-19d) | 2026-08-31 → 2026-07-25 (-37d) |  |  |
| JDH4-02-007-PR-2770 | PO for Low-Voltage Electrical Power Conductors and Cables | 2026-03-16 → 2026-02-25 A (-19d) | 2026-03-23 → 2026-02-25 A (-26d) | 0% → 100% | 7d → none |
| JDH4-02-007-PR-2807 | Material Fabrication for Low-Voltage Electrical Power Conductors and Cables - Stage 1 | 2026-03-24 → 2026-02-26 A (-26d) | 2026-04-21 → 2026-03-05 A (-47d) | 0% → 100% | 15d → none |
| JDH4-02-007-PR-2808 | Material Fabrication for Low-Voltage Electrical Power Conductors and Cables - Stage 2 | 2026-04-22 → 2026-03-07 A (-46d) | 2026-05-20 → 2026-03-11 A (-70d) | 0% → 100% | 15d → none |
| JDH4-02-007-PR-2809 | Material Fabrication for Low-Voltage Electrical Power Conductors and Cables - Stage 3 | 2026-05-21 → 2026-03-12 A (-70d) | 2026-06-22 → 2026-03-19 A (-95d) | 0% → 100% | 15d → none |
| JDH4-02-007-PR-2810 | Material Fabrication for Low-Voltage Electrical Power Conductors and Cables - Stage 4 | 2026-06-23 → 2026-03-22 A (-93d) | 2026-07-21 → 2026-07-16 A (-5d) | 0% → 100% | 15d → none |
| JDH4-02-007-PR-2850 | Material Delivery for Low-Voltage Electrical Power Conductors and Cables | 2026-07-22 → 2026-04-15 A (-98d) | 2026-08-23 → 2026-07-23 A (-31d) | 0% → 100% | 15d → none |
| JDH4-02-007-PR-2890 | Staging Time for Low-Voltage Electrical Power Conductors and Cables | 2026-08-24 → 2026-04-16 A (-130d) | 2026-08-31 → 2026-07-25 A (-37d) | 0% → 100% | 15d → none |
| 16 | **Low Voltage Feeder Cable** | 2026-03-24 → 2026-02-25 (-27d) | 2026-09-07 → 2026-05-10 (-120d) |  |  |
| JDH4-02-007-PR-2920 | PO for Low Voltage Feeder Cable | 2026-03-24 → 2026-02-25 A (-27d) | 2026-03-31 → 2026-02-25 A (-34d) | 0% → 100% | 7d → none |
| JDH4-02-007-PR-2927 | Material Fabrication for Low Voltage Feeder Cable - Stage 1 | 2026-04-01 → 2026-02-26 A (-34d) | 2026-04-11 → 2026-03-05 A (-37d) | 0% → 100% | 25d → none |
| JDH4-02-007-PR-2928 | Material Fabrication for Low Voltage Feeder Cable - Stage 2 | 2026-04-12 → 2026-03-07 A (-36d) | 2026-05-16 → 2026-03-12 A (-65d) | 0% → 100% | 25d → none |
| JDH4-02-007-PR-2929 | Material Fabrication for Low Voltage Feeder Cable - Stage 3 | 2026-05-17 → 2026-03-14 A (-64d) | 2026-06-23 → 2026-03-28 A (-87d) | 0% → 100% | 25d → none |
| JDH4-02-007-PR-2930 | Material Fabrication for Low Voltage Feeder Cable - Stage 4 | 2026-06-24 → 2026-03-30 A (-86d) | 2026-07-28 → 2026-05-05 A (-84d) | 0% → 100% | 25d → none |
| JDH4-02-007-PR-2940 | Material Delivery for Low Voltage Feeder Cable | 2026-07-29 → 2026-05-07 A (-83d) | 2026-08-30 → 2026-05-07 A (-115d) | 0% → 100% | 25d → none |
| JDH4-02-007-PR-2950 | Staging Time for Low Voltage Feeder Cable | 2026-08-31 → 2026-05-09 A (-114d) | 2026-09-07 → 2026-05-10 A (-120d) | 0% → 100% | 25d → none |
| 17 | **Wiring Devices** | 2026-03-02 → 2026-02-23 (-7d) | 2026-11-26 → 2026-05-06 (-204d) |  |  |
| JDH4-02-007-PR-2780 | PO for Wiring Devices | 2026-03-02 → 2026-02-23 A (-7d) | 2026-03-09 → 2026-03-26 A (+17d) | 0% → 100% | 30d → none |
| JDH4-02-007-PR-2815 | Material Fabrication for Wiring Devices - Stage 1 | 2026-03-10 → 2026-02-26 A (-12d) | 2026-03-29 → 2026-02-28 A (-29d) | 0% → 100% | 30d → none |
| JDH4-02-007-PR-2816 | Material Fabrication for Wiring Devices - Stage 2 | 2026-03-30 → 2026-02-28 A (-30d) | 2026-04-21 → 2026-03-03 A (-49d) | 0% → 100% | 30d → none |
| JDH4-02-007-PR-2817 | Material Fabrication for Wiring Devices - Stage 3 | 2026-04-22 → 2026-03-04 A (-49d) | 2026-05-30 → 2026-03-07 A (-84d) | 0% → 100% | 30d → none |
| JDH4-02-007-PR-2818 | Material Fabrication for Wiring Devices - Stage 4 | 2026-05-31 → 2026-03-08 A (-84d) | 2026-07-04 → 2026-03-14 A (-112d) | 0% → 100% | 30d → none |

| ID | Task | Start | Finish | Complete | Total float |
| --- | --- | --- | --- | --- | --- |
| JDH4-02-007-PR-2819 | Material Fabrication for Wiring Devices - Stage 5 | 2026-07-05 → 2026-03-15 A (-112d) | 2026-08-08 → 2026-03-23 A (-138d) | 0% → 100% | 30d → none |
| JDH4-02-007-PR-2820 | Material Fabrication for Wiring Devices - Stage 6 | 2026-08-09 → 2026-03-26 A (-136d) | 2026-09-12 → 2026-03-30 A (-166d) | 0% → 100% | 30d → none |
| JDH4-02-007-PR-2860 | Material Delivery for Wiring Devices | 2026-10-08 → 2026-04-02 A (-189d) | 2026-10-25 → 2026-04-06 A (-202d) | 0% → 100% | 22d → none |
| JDH4-02-007-PR-2900 | Staging Time for Wiring Devices | 2026-11-19 → 2026-05-06 A (-197d) | 2026-11-26 → 2026-05-06 A (-204d) | 0% → 100% | 39d → none |
| 18 | **Enclosed Switches and Circuit Breakers** | 2026-04-01 → 2026-03-17 (-15d) | 2026-11-19 → 2026-08-26 (-85d) |  |  |
| JDH4-02-007-PR-2960 | PO for Enclosed Switches and Circuit Breakers | 2026-04-01 → 2026-03-17 A (-15d) | 2026-04-08 → 2026-03-17 A (-22d) | 0% → 100% | 13d → none |
| JDH4-02-007-PR-2965 | Material Fabrication for Enclosed Switches and Circuit Breakers - Stage 1 | 2026-04-09 → 2026-03-18 A (-22d) | 2026-04-25 → 2026-03-29 A (-27d) | 0% → 100% | 13d → none |
| JDH4-02-007-PR-2966 | Material Fabrication for Enclosed Switches and Circuit Breakers - Stage 2 | 2026-04-26 → 2026-03-30 A (-27d) | 2026-05-18 → 2026-04-06 A (-42d) | 0% → 100% | 13d → none |
| JDH4-02-007-PR-2967 | Material Fabrication for Enclosed Switches and Circuit Breakers - Stage 3 | 2026-05-19 → 2026-04-07 A (-42d) | 2026-06-25 → 2026-06-13 A (-12d) | 0% → 100% | 13d → none |
| JDH4-02-007-PR-2968 | Material Fabrication for Enclosed Switches and Circuit Breakers - Stage 4 | 2026-06-27 → 2026-08-01 A (+35d) | 2026-07-30 → 2026-08-16 A (+17d) | 0% → 100% | 13d → none |
| JDH4-02-007-PR-2969 | Material Fabrication for Enclosed Switches and Circuit Breakers - Stage 5 | 2026-08-01 A | 2026-09-03 → 2026-08-13 A (-21d) | 0% → 100% | 13d → none |
| JDH4-02-007-PR-2970 | Material Fabrication for Enclosed Switches and Circuit Breakers - Stage 6 | 2026-09-05 → 2026-08-01 A (-35d) | 2026-10-10 → 2026-08-05 A (-66d) | 0% → 100% | 13d → none |
| JDH4-02-007-PR-2980 | Material Delivery for Enclosed Switches and Circuit Breakers | 2026-10-11 → 2026-08-17 A (-55d) | 2026-11-11 → 2026-08-23 A (-80d) | 0% → 100% | 13d → none |
| JDH4-02-007-PR-2990 | Staging Time for Enclosed Switches and Circuit Breakers | 2026-11-12 → 2026-08-23 A (-81d) | 2026-11-19 → 2026-08-26 A (-85d) | 0% → 100% | 13d → none |
| 19 | **Raceways for Electrical Systems** | 2026-03-03 → 2026-02-21 (-10d) | 2026-09-15 → 2026-04-09 (-159d) |  |  |
| JDH4-02-007-PR-2790 | PO for Raceways for Electrical Systems | 2026-03-03 → 2026-02-21 A (-10d) | 2026-03-10 → 2026-02-21 A (-17d) | 0% → 100% | 26d → none |
| JDH4-02-007-PR-2827 | Material Fabrication for Raceways for Electrical Systems - Stage 1 | 2026-03-11 → 2026-02-22 A (-17d) | 2026-04-18 → 2026-02-23 A (-54d) | 0% → 100% | 26d → none |
| JDH4-02-007-PR-2828 | Material Fabrication for Raceways for Electrical Systems - Stage 2 | 2026-04-19 → 2026-02-24 A (-54d) | 2026-05-23 → 2026-02-28 A (-84d) | 0% → 100% | 26d → none |
| JDH4-02-007-PR-2829 | Material Fabrication for Raceways for Electrical Systems - Stage 3 | 2026-05-24 → 2026-03-01 A (-84d) | 2026-06-30 → 2026-03-10 A (-112d) | 0% → 100% | 26d → none |
| JDH4-02-007-PR-2830 | Material Fabrication for Raceways for Electrical Systems - Stage 4 | 2026-07-01 → 2026-03-11 A (-112d) | 2026-08-04 → 2026-03-14 A (-143d) | 0% → 100% | 26d → none |
| JDH4-02-007-PR-2870 | Material Delivery for Raceways for Electrical Systems | 2026-08-05 → 2026-03-14 A (-144d) | 2026-09-06 → 2026-03-19 A (-171d) | 0% → 100% | 26d → none |
| JDH4-02-007-PR-2910 | Staging Time for Raceways for Electrical Systems | 2026-09-08 → 2026-04-01 A (-160d) | 2026-09-15 → 2026-04-09 A (-159d) | 0% → 100% | 25d → none |
| 1 | **Electrical Manholes** | 2026-02-25 → 2026-02-10 (-15d) | 2026-12-24 → 2026-04-26 (-242d) |  |  |
| JDH4-02-007-PR-2520 | PO for Electrical Manholes | 2026-02-25 → 2026-02-10 A (-15d) | 2026-03-15 → 2026-02-12 A (-31d) | 0% → 100% | 19d → none |
| JDH4-02-007-PR-2555 | Material Fabrication for Electrical Manholes - Stage 1 | 2026-03-16 → 2026-02-14 A (-30d) | 2026-04-04 → 2026-04-08 A (+4d) | 0% → 100% | 19d → none |
| JDH4-02-007-PR-2556 | Material Fabrication for Electrical Manholes - Stage 2 | 2026-04-05 → 2026-04-08 A (+3d) | 2026-04-27 → 2026-04-11 A (-16d) | 0% → 100% | 19d → none |
| JDH4-02-007-PR-2557 | Material Fabrication for Electrical Manholes - Stage 3 | 2026-04-28 → 2026-04-08 A (-20d) | 2026-06-04 → 2026-04-19 A (-46d) | 0% → 100% | 19d → none |
| JDH4-02-007-PR-2558 | Material Fabrication for Electrical Manholes - Stage 4 | 2026-06-06 → 2026-04-12 A (-55d) | 2026-07-09 → 2026-04-19 A (-81d) | 0% → 100% | 19d → none |
| JDH4-02-007-PR-2559 | Material Fabrication for Electrical Manholes - Stage 5 | 2026-07-11 → 2026-04-13 A (-89d) | 2026-08-13 → 2026-04-16 A (-119d) | 0% → 100% | 19d → none |
| JDH4-02-007-PR-2560 | Material Fabrication for Electrical Manholes - Stage 6 | 2026-09-01 → 2026-04-16 A (-138d) | 2026-10-06 → 2026-04-20 A (-169d) | 0% → 100% | 15d → none |
| JDH4-02-007-PR-2600 | Material Delivery for Electrical Manholes | 2026-10-07 → 2026-04-18 A (-172d) | 2026-10-24 → 2026-04-22 A (-185d) | 0% → 100% | 15d → none |
| JDH4-02-007-PR-2640 | Staging Time for Electrical Manholes | 2026-12-17 → 2026-04-24 A (-237d) | 2026-12-24 → 2026-04-26 A (-242d) | 0% → 100% | 20d → none |
| 20 | **ICT (Data& telephone System)** | 2026-04-01 → 2026-03-21 (-11d) | 2026-11-19 → 2026-04-14 (-219d) |  |  |
| JDH4-02-007-PR-3040 | PO for ICT (Data& telephone System) | 2026-04-01 → 2026-03-21 A (-11d) | 2026-04-08 → 2026-03-23 A (-16d) | 0% → 100% | 7d → none |
| JDH4-02-007-PR-3055 | Material Fabrication for ICT (Data& telephone System) - Stage 1 | 2026-04-09 → 2026-03-23 A (-17d) | 2026-04-25 → 2026-03-25 A (-31d) | 0% → 100% | 7d → none |
| JDH4-02-007-PR-3056 | Material Fabrication for ICT (Data& telephone System) - Stage 2 | 2026-04-26 → 2026-03-25 A (-32d) | 2026-05-18 → 2026-03-28 A (-51d) | 0% → 100% | 7d → none |
| JDH4-02-007-PR-3057 | Material Fabrication for ICT (Data& telephone System) - Stage 3 | 2026-05-19 → 2026-03-29 A (-51d) | 2026-06-25 → 2026-03-30 A (-87d) | 0% → 100% | 7d → none |
| JDH4-02-007-PR-3058 | Material Fabrication for ICT (Data& telephone System) - Stage 4 | 2026-06-27 → 2026-03-31 A (-88d) | 2026-07-30 → 2026-04-01 A (-120d) | 0% → 100% | 7d → none |
| JDH4-02-007-PR-3059 | Material Fabrication for ICT (Data& telephone System) - Stage 5 | 2026-08-01 → 2026-04-02 A (-121d) | 2026-09-03 → 2026-04-06 A (-150d) | 0% → 100% | 7d → none |
| JDH4-02-007-PR-3060 | Material Fabrication for ICT (Data& telephone System) - Stage 6 | 2026-09-05 → 2026-04-07 A (-151d) | 2026-10-10 → 2026-04-09 A (-184d) | 0% → 100% | 7d → none |
| JDH4-02-007-PR-3080 | Material Delivery for ICT (Data& telephone System) | 2026-10-11 → 2026-04-12 A (-182d) | 2026-11-11 → 2026-04-12 A (-213d) | 0% → 100% | 7d → none |
| JDH4-02-007-PR-3100 | Staging Time for ICT (Data& telephone System) | 2026-11-12 → 2026-04-12 A (-214d) | 2026-11-19 → 2026-04-14 A (-219d) | 0% → 100% | 7d → none |
| 21 | **Programmable Logic Controllers** | 2026-03-09 → 2026-01-25 (-43d) | 2026-11-01 → 2026-10-06 (-26d) |  |  |
| JDH4-02-007-PR-3120 | PO for Programmable Logic Controllers | 2026-03-09 → 2026-01-25 A (-43d) | 2026-03-16 → 2026-01-29 A (-46d) | 0% → 100% | 16d → none |
| JDH4-02-007-PR-3125 | Material Fabrication for Programmable Logic Controllers - Stage 1 | 2026-03-17 → 2026-02-01 A (-44d) | 2026-04-05 → 2026-02-12 A (-52d) | 0% → 100% | 16d → none |
| JDH4-02-007-PR-3126 | Material Fabrication for Programmable Logic Controllers - Stage 2 | 2026-04-06 → 2026-02-14 A (-51d) | 2026-04-28 → 2026-02-21 A (-66d) | 0% → 100% | 16d → none |
| JDH4-02-007-PR-3127 | Material Fabrication for Programmable Logic Controllers - Stage 3 | 2026-04-29 → 2026-02-22 A (-66d) | 2026-06-06 → 2026-06-04 A (-2d) | 0% → 100% | 16d → none |
| JDH4-02-007-PR-3128 | Material Fabrication for Programmable Logic Controllers - Stage 4 | 2026-06-07 → 2026-06-06 A (-1d) | 2026-07-11 → 2026-09-29 A (+80d) | 0% → 100% | 16d → none |
| JDH4-02-007-PR-3129 | Material Fabrication for Programmable Logic Controllers - Stage 5 | 2026-07-12 → 2026-06-06 A (-36d) | 2026-08-15 → 2026-08-20 A (+5d) | 0% → 100% | 16d → none |
| JDH4-02-007-PR-3130 | Material Fabrication for Programmable Logic Controllers - Stage 6 | 2026-08-16 → 2026-06-06 A (-71d) | 2026-09-19 → 2026-09-27 A (+8d) | 0% → 100% | 16d → none |
| JDH4-02-007-PR-3140 | Material Delivery for Programmable Logic Controllers | 2026-09-20 → 2026-09-30 A (+10d) | 2026-10-22 → 2026-10-04 A (-18d) | 0% → 100% | 16d → none |
| JDH4-02-007-PR-3150 | Staging Time for Programmable Logic Controllers | 2026-10-25 → 2026-10-05 A (-20d) | 2026-11-01 → 2026-10-06 A (-26d) | 0% → 100% | 15d → none |
| 22 | **Process Control Wiring** | 2026-02-26 → 2026-01-25 (-32d) | 2026-09-24 → 2026-10-04 (+10d) |  |  |
| JDH4-02-007-PR-3050 | PO for Process Control Wiring | 2026-02-26 → 2026-01-25 A (-32d) | 2026-03-11 → 2026-01-29 A (-41d) | 0% → 100% | 32d → none |
| JDH4-02-007-PR-3067 | Material Fabrication for Process Control Wiring - Stage 1 | 2026-03-12 → 2026-01-30 A (-41d) | 2026-04-19 → 2026-02-07 A (-71d) | 0% → 100% | 32d → none |
| JDH4-02-007-PR-3068 | Material Fabrication for Process Control Wiring - Stage 2 | 2026-04-20 → 2026-02-09 A (-70d) | 2026-05-24 → 2026-02-19 A (-94d) | 0% → 100% | 32d → none |
| JDH4-02-007-PR-3069 | Material Fabrication for Process Control Wiring - Stage 3 | 2026-05-25 → 2026-02-21 A (-93d) | 2026-07-01 → 2026-09-27 A (+88d) | 0% → 100% | 32d → none |
| JDH4-02-007-PR-3070 | Material Fabrication for Process Control Wiring - Stage 4 | 2026-07-02 → 2026-08-01 A (+30d) | 2026-08-05 → 2026-09-28 A (+54d) | 0% → 100% | 32d → none |
| JDH4-02-007-PR-3090 | Material Delivery for Process Control Wiring | 2026-08-06 → 2026-09-29 A (+54d) | 2026-09-07 → 2026-09-29 A (+22d) | 0% → 100% | 32d → none |
| JDH4-02-007-PR-3110 | Staging Time for Process Control Wiring | 2026-09-16 → 2026-09-30 A (+14d) | 2026-09-24 → 2026-10-04 A (+10d) | 0% → 100% | 25d → none |
| 23 | **Instrumentation for Process Systems** | 2026-03-10 → 2026-01-25 (-44d) | 2026-11-11 → 2026-08-30 (-73d) |  |  |
| JDH4-02-007-PR-3000 | PO for Instrumentation for Process Systems | 2026-03-10 → 2026-01-25 A (-44d) | 2026-03-31 → 2026-01-29 A (-61d) | 0% → 100% | 13d → none |
| JDH4-02-007-PR-3005 | Material Fabrication for Instrumentation for Process Systems - Stage 1 | 2026-04-01 → 2026-02-01 A (-59d) | 2026-04-16 → 2026-02-12 A (-63d) | 0% → 100% | 13d → none |
| JDH4-02-007-PR-3006 | Material Fabrication for Instrumentation for Process Systems - Stage 2 | 2026-04-18 → 2026-02-14 A (-63d) | 2026-05-10 → 2026-02-21 A (-78d) | 0% → 100% | 13d → none |
| JDH4-02-007-PR-3007 | Material Fabrication for Instrumentation for Process Systems - Stage 3 | 2026-05-11 → 2026-02-22 A (-78d) | 2026-06-17 → 2026-07-16 A (+29d) | 0% → 100% | 13d → none |
| JDH4-02-007-PR-3008 | Material Fabrication for Instrumentation for Process Systems - Stage 4 | 2026-06-18 → 2026-08-01 A (+44d) | 2026-07-22 → 2026-08-19 A (+28d) | 0% → 100% | 13d → none |
| JDH4-02-007-PR-3009 | Material Fabrication for Instrumentation for Process Systems - Stage 5 | 2026-07-23 → 2026-08-01 A (+9d) | 2026-08-26 → 2026-08-12 A (-14d) | 0% → 100% | 13d → none |
| JDH4-02-007-PR-3010 | Material Fabrication for Instrumentation for Process Systems - Stage 6 | 2026-08-27 → 2026-08-01 A (-26d) | 2026-10-01 → 2026-08-05 A (-57d) | 0% → 100% | 13d → none |
| JDH4-02-007-PR-3020 | Material Delivery for Instrumentation for Process Systems | 2026-10-03 → 2026-08-22 A (-42d) | 2026-11-03 → 2026-08-26 A (-69d) | 0% → 100% | 13d → none |
| JDH4-02-007-PR-3030 | Staging Time for Instrumentation for Process Systems | 2026-11-04 → 2026-08-26 A (-70d) | 2026-11-11 → 2026-08-30 A (-73d) | 0% → 100% | 13d → none |

| ID | Task | Start | Finish | Duration | Complete | Total float | Predecessors | Other |
| --- | --- | --- | --- | --- | --- | --- | --- | --- |
| 5 | **Construction** |  | 2027-05-06 → 2026-12-30 (-127d) |  |  |  |  |  |
| 1 | **Demolition Works** |  | 2026-06-07 → 2026-10-04 (+119d) |  |  |  |  |  |
| 2 | **Demolition in Road network** | 2026-02-03 → 2026-01-31 (-3d) | 2026-03-29 → 2026-08-29 (+153d) |  |  |  |  |  |
| JDH4-02-007-CN-1000 | Concrete demolition works at the existing Underpass [Demolition Works ] | 2026-02-03 → 2026-01-31 A (-3d) | 2026-02-08 → 2026-02-19 A (+11d) |  | 0% → 100% | 10d → none |  |  |
| JDH4-02-007-CN-1110 | Milling of the existing asphalt layer [Demolition Works ] | 2026-03-01 → 2026-04-15 A (+45d) | 2026-03-17 → 2026-06-24 A (+99d) |  | 0% → 100% | 10d → none |  |  |
| JDH4-02-007-CN-1080 | Removal of the existing asphalt layers (up to base course layer) [Demolition Works ] | 2026-02-09 → 2026-04-16 A (+66d) | 2026-02-28 → 2026-06-25 A (+117d) |  | 0% → 100% | 10d → none |  |  |
| JDH4-02-007-CN-1170 | Re-use and compaction of the existing aggregate base course layer | 2026-03-22 → 2026-08-20 A (+151d) | 2026-03-29 → 2026-08-29 A (+153d) |  | 0% → 100% | 10d → none |  |  |
| 4 | **Demolition in TSE network** |  | 2026-02-14 → 2026-03-17 (+31d) |  |  |  |  |  |
| JDH4-02-007-CN-1590 | Pipe with diameter 250 mm pipe [Demolition Works ] | 2026-02-03 → 2026-03-10 A (+35d) | 2026-02-14 → 2026-03-17 A (+31d) |  | 0% → 100% | 4d → none |  |  |
| 6 | **Demolition in Storm water network** |  | 2026-03-15 → 2026-08-26 (+164d) |  |  |  |  |  |
| JDH4-02-007-CN-1680 | Baffle box with dimentions 3.04x7.80m [Demolition Works ] | 2026-03-11 → 2026-08-05 A (+147d) | 2026-03-15 → 2026-08-26 A (+164d) |  | 0% → 100% | 4d → none |  |  |
| 1 | **Demolition in Electrical works** |  | 2026-06-07 → 2026-10-04 (+119d) |  |  |  |  |  |
| JDH4-02-007-CN-3020R | Relocating of existing Lighting Pole [Road 02 ] | 2026-03-16 → 2026-02-02 A (-42d) | 2026-04-06 → 2026-10-03 A (+180d) |  | 0% → 100% | 4d → none |  | resources Relocating of existing Lighting Pole [11.7]; Excavator [60 h]; Truck [172.5 h]; Labor [112.5 h]; Driver [112.5 h]; Eq. Operator [112.5 h]; Electrician [112.5 h] → Excavator [60 h]; Truck [172.5 h]; Labor [112.5 h]; Driver [112.5 h]; Eq. Operator [112.5 h]; Electrician [112.5 h]; Relocating of existing Lighting Pole [11.7] |
| JDH4-02-007-CN-1250R | Demolishing of existing Lighting Pole [Demolition Works ] | 2026-03-16 → 2026-02-04 A (-40d) | 2026-04-04 → 2026-02-10 A (-53d) |  | 0% → 100% | 5d → none |  | resources Demolishing of existing Lighting Pole [0.98]; Excavator [105 h]; Loader [52.5 h]; Truck [630 h]; Labor [525 h]; Driver [315 h]; Eq. Operator [105 h] → Excavator [105 h]; Loader [52.5 h]; Truck [630 h]; Labor [525 h]; Driver [315 h]; Eq. Operator [105 h]; Demolishing of existing Lighting Pole [0.98] |
| JDH4-02-007-CN-3040 | Relocating of existing Lighting Pole [Road 04-R ] | 2026-04-26 → 2026-02-15 A (-70d) | 2026-05-13 → 2026-08-19 A (+98d) |  | 0% → 100% | 4d → none |  |  |
| JDH4-02-007-CN-3030 | Relocating of existing Lighting Pole [Road 08 ] | 2026-04-07 → 2026-02-16 A (-50d) | 2026-04-25 → 2026-08-27 A (+124d) |  | 0% → 100% | 4d → none |  |  |
| JDH4-02-007-CN-3050 | Relocating of existing Lighting Pole [Road 10 ] | 2026-05-14 → 2026-02-18 A (-85d) | 2026-06-07 → 2026-10-04 A (+119d) |  | 0% → 100% | 4d → none |  |  |
| 2 | **Plots** |  | 2026-03-23 → 2026-07-06 (+105d) |  |  |  |  |  |
| 1 | **Excavation** | 2026-03-11 → 2026-02-03 (-36d) | 2026-03-23 → 2026-07-02 (+101d) |  |  |  |  |  |
| JDH4-02-007-CN-1760 | Plots excavation [Plots ] | 2026-03-11 → 2026-02-03 A (-36d) | 2026-03-23 → 2026-07-02 A (+101d) |  | 0% → 100% | 33d → none | JDH4-02-007-MB-1020, JDH4-02-007-PA-1000, JDH4-02-007-MB-1040, JDH4-02-007-EN-1720, JDH4-02-007-EN-1760, JDH4-02-007-CN-1680 SS → JDH4-02-007-MB-1020, JDH4-02-007-PA-1000, JDH4-02-007-MB-1040, JDH4-02-007-EN-1720, JDH4-02-007-EN-1760 |  |
| 2 | **Backfilling** |  | 2026-03-23 → 2026-07-06 (+105d) |  |  |  |  |  |
| JDH4-02-007-CN-1830R | Plots backfilling Stage 2 [Plots ] | 2026-02-03 → 2026-02-02 A (-1d) | 2026-02-19 → 2026-04-12 A (+52d) |  | 0% → 100% | 0d → none |  | resources Plots backfilling [12921.3]; Loader [150 h]; Bulldozer [225 h]; Water Tanker [300 h]; Grider [300 h]; Truck [600 h]; Road Roller [300 h]; Driver [900 h]; Eq. Operator [75 h] → Loader [150 h]; Bulldozer [225 h]; Water Tanker [300 h]; Grider [300 h]; Truck [600 h]; Road Roller [300 h]; Driver [900 h]; Eq. Operator [75 h]; Plots backfilling [12921.3] |
| JDH4-02-007-CN-1840R | Plots backfilling Stage 3 [Plots ] | 2026-02-21 → 2026-02-02 A (-19d) | 2026-03-04 → 2026-05-02 A (+59d) |  | 0% → 100% | 15d → none |  | resources Plots backfilling [34456.8]; Loader [150 h]; Bulldozer [225 h]; Water Tanker [300 h]; Grider [300 h]; Truck [1200 h]; Road Roller [300 h]; Driver [900 h]; Eq. Operator [75 h] → Loader [150 h]; Bulldozer [225 h]; Water Tanker [300 h]; Grider [300 h]; Truck [1200 h]; Road Roller [300 h]; Driver [900 h]; Eq. Operator [75 h]; Plots backfilling [34456.8] |
| JDH4-02-007-CN-1850 | Plots backfilling Stage 4 [Plots ] | 2026-03-05 → 2026-05-03 A (+59d) | 2026-03-23 → 2026-07-06 A (+105d) |  | 0% → 100% | 15d → none |  |  |
| 3 | **Roads** |  | 2027-04-24 → 2026-11-18 (-157d) |  |  |  |  |  |
| 6 | **Road 04-R** |  | 2027-04-24 → 2026-09-26 (-210d) |  |  |  |  |  |
| 7 | **Box Culvert** |  | 2026-05-09 → 2026-04-20 (-19d) |  |  |  |  |  |
| JDH4-02-007-CN-5610R | Steel Reinforcement for box culverts [Road 04-R ] | 2026-04-05 → 2026-02-02 A (-62d) | 2026-04-18 → 2026-04-19 A (+1d) |  | 0% → 100% | 5d → none |  | resources Steel Reinforcement for box culverts [36]; Labor [262.5 h]; Steel Fixer [52.5 h] → Labor [262.5 h]; Steel Fixer [52.5 h]; Steel Reinforcement for box culverts [36] |
| JDH4-02-007-CN-5620 | Reinforced Concrete for box culvert [Road 04-R ] | 2026-04-19 → 2026-02-17 A (-61d) | 2026-05-09 → 2026-04-20 A (-19d) |  | 0% → 100% | 5d → none |  |  |
| 6 | **Road Works + Roundabout** |  | 2027-03-17 → 2026-09-26 (-172d) |  |  |  |  |  |
| 1 | **Eartworks & Site grading** |  | 2026-06-22 → 2026-06-08 (-14d) |  |  |  |  |  |
| JDH4-02-007-CN-1810R | Road backfilling [Road 04-R ] | 2026-05-16 → 2026-02-02 A (-103d) | 2026-06-06 → 2026-05-14 A (-23d) |  | 0% → 100% | 5d → none |  | resources Road backfilling [35150.4]; Loader [315 h]; Bulldozer [472.5 h]; Water Tanker [630 h]; Grider [630 h]; Truck [2520 h]; Road Roller [630 h]; Driver [1890 h]; Eq. Operator [157.5 h] → Loader [315 h]; Bulldozer [472.5 h]; Water Tanker [630 h]; Grider [630 h]; Truck [2520 h]; Road Roller [630 h]; Driver [1890 h]; Eq. Operator [157.5 h]; Road backfilling [35150.4] |
| JDH4-02-007-CN-1750R | Road excavation [Road 04-R ] | 2026-05-10 → 2026-02-03 A (-96d) | 2026-05-31 → 2026-05-14 A (-17d) |  | 0% → 100% | 5d → none |  | resources Road excavation [797.4]; Excavator [157.5 h]; Loader [82.5 h]; Water Tanker [157.5 h]; Grider [157.5 h]; Truck [315 h]; Road Roller [157.5 h]; Labor [630 h]; Driver [315 h]; Eq. Operator [157.5 h] → Excavator [157.5 h]; Loader [82.5 h]; Water Tanker [157.5 h]; Grider [157.5 h]; Truck [315 h]; Road Roller [157.5 h]; Labor [630 h]; Driver [315 h]; Eq. Operator [157.5 h]; Road excavation [797.4] |
| JDH4-02-007-CN-1930 | Subgrade [Road 04-R ] | 2026-06-08 → 2026-04-30 A (-39d) | 2026-06-22 → 2026-06-08 A (-14d) |  | 0% → 100% | 4d → none |  |  |
| 2 | **Asphalt Works** | 2026-07-04 → 2026-06-11 (-23d) | 2026-08-24 → 2026-06-18 (-67d) |  |  |  |  |  |
| JDH4-02-007-CN-1990 | Aggregate base course [Road 04-R ] | 2026-07-04 → 2026-06-11 A (-23d) | 2026-07-21 → 2026-06-14 A (-37d) |  | 0% → 100% | 1d → none |  |  |
| JDH4-02-007-CN-2040 | Prime Coat (MC1) [Road 04-R ] | 2026-07-22 → 2026-06-14 A (-38d) | 2026-08-06 → 2026-06-17 A (-50d) |  | 0% → 100% | 1d → none |  |  |
| JDH4-02-007-CN-2090 | Bituminous base course [Road 04-R ] | 2026-08-09 → 2026-06-17 A (-53d) | 2026-08-24 → 2026-06-18 A (-67d) | 14d → 11d | 0% → 100% | 0d → none |  |  |
| 8 | **Finishing Works** | 2027-01-17 → 2026-06-17 (-214d) | 2027-03-17 → 2026-09-26 (-172d) |  |  |  |  |  |
| 1 | **Asphalt Wearing Course** | 2027-01-17 → 2026-09-12 (-127d) | 2027-02-17 → 2026-09-15 (-155d) |  |  |  |  |  |
| JDH4-02-007-CN-2140 | Tack Coat (RC2) [Road 04-R ] | 2027-01-17 → 2026-09-12 A (-127d) | 2027-01-30 → 2026-09-15 A (-137d) |  | 0% → 100% | 10d → none | JDH4-02-007-CN-2090, JDH4-02-007-CN-3300, JDH4-02-007-MS-1070 → JDH4-02-007-CN-2090, JDH4-02-007-CN-3300 SS, JDH4-02-007-MS-1070 |  |
| JDH4-02-007-CN-2190 | Bituminous concrete wearing course [Road 04-R ] | 2027-01-31 → 2026-09-12 A (-141d) | 2027-02-17 → 2026-09-14 A (-156d) |  | 0% → 100% | 10d → none |  |  |
| 3 | **Precast Concrete Curb** | 2027-02-18 → 2026-07-30 (-203d) | 2027-02-24 → 2026-08-01 (-207d) |  |  |  |  |  |
| JDH4-02-007-CN-2240 | Installation of Precast Concrete curb [Road 04-R ] | 2027-02-18 → 2026-07-30 A (-203d) | 2027-02-24 → 2026-08-01 A (-207d) |  | 0% → 100% | 10d → none |  |  |
| 4 | **Precast Interlocking block pavers** | 2027-02-25 → 2026-08-02 (-207d) | 2027-03-17 → 2026-08-04 (-225d) |  |  |  |  |  |
| JDH4-02-007-CN-2290 | Installation of Interlocking block pavers for sidewalk/footpath [Road 04-R ] | 2027-02-25 → 2026-08-02 A (-207d) | 2027-03-17 → 2026-08-04 A (-225d) |  | 0% → 100% | 10d → none |  |  |
| 5 | **Pavement Markings** | 2027-02-18 → 2026-09-24 (-147d) | 2027-03-01 → 2026-09-26 (-156d) |  |  |  |  |  |
| JDH4-02-007-CN-2340 | Pavement markings [Road 04-R ] | 2027-02-18 → 2026-09-24 A (-147d) | 2027-03-01 → 2026-09-26 A (-156d) |  | 0% → 100% | 21d → none |  |  |
| 6 | **Traffic Signage** | 2027-02-18 → 2026-07-30 (-203d) | 2027-03-08 → 2026-09-11 (-178d) |  |  |  |  |  |
| JDH4-02-007-CN-2390 | Installation of Traffic Signs [Road 04-R ] | 2027-02-18 → 2026-07-30 A (-203d) | 2027-03-08 → 2026-09-11 A (-178d) |  | 0% → 100% | 19d → none |  |  |
| 7 | **Guardrail** | 2027-01-31 → 2026-06-17 (-228d) | 2027-02-24 → 2026-06-25 (-244d) |  |  |  |  |  |
| JDH4-02-007-CN-2400 | Installation of Guard rails [Road 04-R ] | 2027-01-31 → 2026-06-17 A (-228d) | 2027-02-24 → 2026-06-25 A (-244d) |  | 0% → 100% | 44d → none |  |  |
| 1 | **Storm Water Drainage** |  | 2026-12-14 → 2026-07-22 (-145d) |  |  |  |  |  |
| 1 | **Pipe Works** |  | 2026-11-17 → 2026-04-20 (-211d) |  |  |  |  |  |
| JDH4-02-007-CN-5520 | Sand Cover & Warning Tape [Road 04-R ] | 2026-10-17 → 2026-01-29 A (-261d) | 2026-10-24 → 2026-04-19 A (-188d) |  | 0% → 100% | 26d → none |  |  |
| JDH4-02-007-CN-5570 | Backfilling & Compaction [Road 04-R ] | 2026-10-25 → 2026-02-01 A (-266d) | 2026-11-17 → 2026-04-20 A (-211d) |  | 0% → 100% | 26d → none |  |  |
| JDH4-02-007-CN-5370R | Excavation and Compaction (FDT) [Road 04-R ] | 2026-08-25 → 2026-02-03 A (-203d) | 2026-09-14 → 2026-04-09 A (-158d) |  | 0% → 100% | 2d → none |  | resources Depth: 0.0m - 1.5m [284.7]; Excavator [202.5 h]; Water Tanker [202.5 h]; Truck [810 h]; Labor [810 h]; Driver [607.5 h]; Eq. Operator [135 h] → Excavator [202.5 h]; Water Tanker [202.5 h]; Truck [810 h]; Labor [810 h]; Driver [607.5 h]; Eq. Operator [135 h]; Depth: 0.0m - 1.5m [284.7] |
| JDH4-02-007-CN-5420R | Sand Bedding [Road 04-R ] | 2026-09-15 → 2026-02-03 A (-224d) | 2026-09-26 → 2026-04-11 A (-168d) |  | 0% → 100% | 2d → none |  | resources Depth > 2 m [284.7]; Loader [37.5 h]; Truck [135 h]; Labor [67.5 h]; Driver [67.5 h]; Eq. Operator [67.5 h] → Loader [37.5 h]; Truck [135 h]; Labor [67.5 h]; Driver [67.5 h]; Eq. Operator [67.5 h]; Depth > 2 m [284.7] |
| JDH4-02-007-CN-5470R | Installation of GRP Pipe [Road 04-R ] | 2026-09-27 → 2026-02-03 A (-236d) | 2026-10-15 → 2026-04-18 A (-180d) |  | 0% → 100% | 26d → none |  | resources Depth: 1.50m - 2.0m [284.7]; Excavator [67.5 h]; Crane [127.5 h]; Labor [382.5 h]; Eq. Operator [127.5 h]; Plumber [127.5 h]; Pipe-Laying Worker [127.5 h] → Excavator [67.5 h]; Crane [127.5 h]; Labor [382.5 h]; Eq. Operator [127.5 h]; Plumber [127.5 h]; Pipe-Laying Worker [127.5 h]; Depth: 1.50m - 2.0m [284.7] |
| 5 | **Pipe Encasement** | 2026-11-18 → 2026-01-29 (-293d) | 2026-11-23 → 2026-04-19 (-218d) |  |  |  |  |  |
| JDH4-02-007-CN-5840 | Pipe Encasement Works [Road 04-R ] | 2026-11-18 → 2026-01-29 A (-293d) | 2026-11-23 → 2026-04-19 A (-218d) |  | 0% → 100% | 26d → none |  |  |
| 2 | **Manholes** | 2026-11-24 → 2026-02-01 (-296d) | 2026-11-30 → 2026-04-04 (-240d) |  |  |  |  |  |
| JDH4-02-007-CN-5670 | Installation of Precast Manhole Ring [Road 04-R ] | 2026-11-24 → 2026-02-01 A (-296d) | 2026-11-30 → 2026-04-04 A (-240d) |  | 0% → 100% | 26d → none |  |  |
| 7 | **Precast Acces Openinig** | 2026-12-01 → 2026-07-07 (-147d) | 2026-12-05 → 2026-07-22 (-136d) |  |  |  |  |  |
| JDH4-02-007-CN-5720 | Installation of Precast Access Opening [Road 04-R ] | 2026-12-01 → 2026-07-07 A (-147d) | 2026-12-05 → 2026-07-22 A (-136d) |  | 0% → 100% | 26d → none |  |  |
| 3 | **Catch Basins** | 2026-12-06 → 2026-04-28 (-222d) | 2026-12-10 → 2026-05-09 (-215d) |  |  |  |  |  |
| JDH4-02-007-CN-5760 | Construction of Catch basins [Road 04-R ] | 2026-12-06 → 2026-04-28 A (-222d) | 2026-12-10 → 2026-05-09 A (-215d) |  | 0% → 100% | 26d → none |  |  |
| 4 | **Concrete Outfalls** | 2026-12-06 → 2026-06-17 (-172d) | 2026-12-14 → 2026-06-29 (-168d) |  |  |  |  |  |
| JDH4-02-007-CN-5790 | Construction of Concrete outfall structure [Road 04-R ] | 2026-12-06 → 2026-06-17 A (-172d) | 2026-12-14 → 2026-06-29 A (-168d) |  | 0% → 100% | 26d → none |  |  |
| 2 | **Sewerage Network** |  | 2026-07-11 → 2026-04-20 (-82d) |  |  |  |  |  |

| ID | Task | Start | Finish | Complete | Total float | Predecessors | Other |
| --- | --- | --- | --- | --- | --- | --- | --- |
| 1 | **Pipe Works** |  | 2026-07-11 → 2026-04-20 (-82d) |  |  |  |  |
| JDH4-02-007-CN-4820R | Excavation & Compaction (FDT) [Road 04-R ] | 2026-06-08 → 2026-03-26 A (-74d) | 2026-06-15 → 2026-04-12 A (-64d) | 0% → 100% | 4d → none |  | resources Depth : 0.0m - 1.5m [196.65]; Excavator [135 h]; Water Tanker [135 h]; Truck [540 h]; Labor [540 h]; Driver [135 h]; Eq. Operator [135 h] → Excavator [135 h]; Water Tanker [135 h]; Truck [540 h]; Labor [540 h]; Driver [135 h]; Eq. Operator [135 h]; Depth : 0.0m - 1.5m [196.65] |
| JDH4-02-007-CN-4890 | Sand Bedding [Road 04-R ] | 2026-06-16 → 2026-03-31 A (-77d) | 2026-06-23 → 2026-04-13 A (-71d) | 0% → 100% | 4d → none |  |  |
| JDH4-02-007-CN-4960 | Installation of GRP Pipe [Road 04-R ] | 2026-06-24 → 2026-03-31 A (-85d) | 2026-07-04 → 2026-04-18 A (-77d) | 0% → 100% | 4d → none |  |  |
| JDH4-02-007-CN-5030 | Gravity Test [Road 04-R ] | 2026-07-05 → 2026-04-02 A (-94d) | 2026-07-07 → 2026-04-19 A (-79d) | 0% → 100% | 4d → none |  |  |
| JDH4-02-007-CN-5100 | Sand Cover & Warning Tape [Road 04-R ] | 2026-07-05 → 2026-04-04 A (-92d) | 2026-07-08 → 2026-04-20 A (-79d) | 0% → 100% | 4d → none |  |  |
| JDH4-02-007-CN-5170 | Backfilling & Compaction [Road 04-R ] | 2026-07-05 → 2026-04-06 A (-90d) | 2026-07-11 → 2026-04-20 A (-82d) | 0% → 100% | 4d → none |  |  |
| 5 | **Pipe Encasement** | 2026-06-24 → 2026-04-04 (-81d) | 2026-07-01 → 2026-04-20 (-72d) |  |  |  |  |
| JDH4-02-007-CN-5310 | Pipe Encasement Works [Road 04-R ] | 2026-06-24 → 2026-04-04 A (-81d) | 2026-07-01 → 2026-04-20 A (-72d) | 0% → 100% | 22d → none |  |  |
| 2 | **Manholes** | 2026-06-24 → 2026-03-28 (-88d) | 2026-07-01 → 2026-04-05 (-87d) |  |  |  |  |
| JDH4-02-007-CN-5240 | Installation of Manholes [Road 04-R ] | 2026-06-24 → 2026-03-28 A (-88d) | 2026-07-01 → 2026-04-05 A (-87d) | 0% → 100% | 22d → none |  |  |
| 3 | **TSE Network** | 2026-08-25 → 2026-03-25 (-153d) | 2026-11-17 → 2026-05-23 (-178d) |  |  |  |  |
| 1 | **Pipe Works** | 2026-08-25 → 2026-03-25 (-153d) | 2026-10-26 → 2026-04-20 (-189d) |  |  |  |  |
| JDH4-02-007-CN-4040 | Excavation and Compaction (FDT) [Road 04-R ] | 2026-08-25 → 2026-03-25 A (-153d) | 2026-09-07 → 2026-04-15 A (-145d) | 0% → 100% | 0d → none |  |  |
| JDH4-02-007-CN-4110 | Sand Bedding [Road 04-R ] | 2026-09-08 → 2026-03-28 A (-164d) | 2026-09-17 → 2026-04-16 A (-154d) | 0% → 100% | 0d → none |  |  |
| JDH4-02-007-CN-4180 | Installation of HDPE Pipe [Road 04-R ] | 2026-09-19 → 2026-03-30 A (-173d) | 2026-10-03 → 2026-04-18 A (-168d) | 0% → 100% | 0d → none |  |  |
| JDH4-02-007-CN-4250 | Initial Pressure Test [Road 04-R ] | 2026-10-04 → 2026-04-01 A (-186d) | 2026-10-06 → 2026-04-18 A (-171d) | 0% → 100% | 0d → none |  |  |
| JDH4-02-007-CN-4320 | Sand Cover & Warning [Road 04-R ] | 2026-10-07 → 2026-04-02 A (-188d) | 2026-10-14 → 2026-04-19 A (-178d) | 0% → 100% | 0d → none |  |  |
| JDH4-02-007-CN-4390 | Backfilling & Compaction [Road 04-R ] | 2026-10-15 → 2026-04-04 A (-194d) | 2026-10-24 → 2026-04-20 A (-187d) | 0% → 100% | 0d → none |  |  |
| JDH4-02-007-CN-4700 | Point of Connection [Road 04-R ] | 2026-10-25 → 2026-04-06 A (-202d) | 2026-10-26 → 2026-04-20 A (-189d) | 0% → 100% | 0d → none |  |  |
| 2 | **Pipe Encasement** | 2026-10-27 → 2026-04-02 (-208d) | 2026-11-09 → 2026-04-19 (-204d) |  |  |  |  |
| JDH4-02-007-CN-4460 | Encasement for Pipes [Road 04-R ] | 2026-10-27 → 2026-04-02 A (-208d) | 2026-11-09 → 2026-04-19 A (-204d) | 0% → 100% | 0d → none |  |  |
| 3 | **Valves** | 2026-11-10 → 2026-04-16 (-208d) | 2026-11-17 → 2026-05-23 (-178d) |  |  |  |  |
| JDH4-02-007-CN-4530 | Installation of Gate Valves [Road 04-R ] | 2026-11-10 → 2026-04-16 A (-208d) | 2026-11-17 → 2026-05-23 A (-178d) | 0% → 100% | 0d → none |  |  |
| 4 | **Potable Network** | 2026-09-27 → 2026-03-23 (-188d) | 2026-11-23 → 2026-05-25 (-182d) |  |  |  |  |
| 1 | **Pipe Works** | 2026-09-27 → 2026-03-23 (-188d) | 2026-11-19 → 2026-05-25 (-178d) |  |  |  |  |
| JDH4-02-007-CN-3360 | Excavation and Compaction (FDT) [Road 04-R ] | 2026-09-27 → 2026-03-23 A (-188d) | 2026-10-10 → 2026-04-15 A (-178d) | 0% → 100% | 2d → none |  |  |
| JDH4-02-007-CN-3430 | Sand Bedding [Road 04-R ] | 2026-10-11 → 2026-03-26 A (-199d) | 2026-10-19 → 2026-04-16 A (-186d) | 0% → 100% | 2d → none |  |  |
| JDH4-02-007-CN-3500 | Installation of HDPE Pipe [Road 04-R ] | 2026-10-20 → 2026-03-31 A (-203d) | 2026-11-01 → 2026-05-21 A (-164d) | 0% → 100% | 2d → none |  |  |
| JDH4-02-007-CN-3570 | Initial Pressure Test [Road 04-R ] | 2026-11-02 → 2026-04-02 A (-214d) | 2026-11-04 → 2026-05-23 A (-165d) | 0% → 100% | 13d → none |  |  |
| JDH4-02-007-CN-3640 | Sand Cover & Warning Tape [Road 04-R ] | 2026-11-05 → 2026-04-04 A (-215d) | 2026-11-11 → 2026-05-24 A (-171d) | 0% → 100% | 13d → none |  |  |
| JDH4-02-007-CN-3710 | Backfilling [Road 04-R ] | 2026-11-12 → 2026-04-06 A (-220d) | 2026-11-19 → 2026-05-25 A (-178d) | 0% → 100% | 13d → none |  |  |
| 2 | **Pipe Encasement** | 2026-11-02 → 2026-04-04 (-212d) | 2026-11-07 → 2026-05-24 (-167d) |  |  |  |  |
| JDH4-02-007-CN-3780 | Encasement for Pipes [Road 04-R ] | 2026-11-02 → 2026-04-04 A (-212d) | 2026-11-07 → 2026-05-24 A (-167d) | 0% → 100% | 2d → none |  |  |
| 3 | **Valves** | 2026-11-08 → 2026-04-15 (-207d) | 2026-11-15 → 2026-04-19 (-210d) |  |  |  |  |
| JDH4-02-007-CN-3850 | Installation of Gate Valves [Road 04-R ] | 2026-11-08 → 2026-04-15 A (-207d) | 2026-11-15 → 2026-04-19 A (-210d) | 0% → 100% | 2d → none |  |  |
| 4 | **Fire Hydrant** | 2026-11-18 → 2026-04-29 (-203d) | 2026-11-23 → 2026-05-10 (-197d) |  |  |  |  |
| JDH4-02-007-CN-3940 | Installation of 3-outlet fire hydrant [Road 04-R ] | 2026-11-18 → 2026-04-29 A (-203d) | 2026-11-23 → 2026-05-10 A (-197d) | 0% → 100% | 0d → none |  |  |
| 5 | **Electrical Works** | 2026-11-24 → 2026-06-07 (-170d) | 2027-04-24 → 2026-09-24 (-212d) |  |  |  |  |
| 3 | **Street Lighting** | 2026-11-24 → 2026-06-07 (-170d) | 2027-03-01 → 2026-09-24 (-158d) |  |  |  |  |
| JDH4-02-007-CN-2830 | Installation of Road Crossing Ducts [Road 04-R ] | 2026-12-12 → 2026-06-07 A (-188d) | 2026-12-26 → 2026-06-11 A (-198d) | 0% → 100% | 0d → none |  |  |
| JDH4-02-007-CN-2820 | Excavation for Low Voltage Cable [Road 04-R ] | 2026-11-24 → 2026-06-10 A (-167d) | 2026-12-10 → 2026-08-10 A (-122d) | 0% → 100% | 0d → none |  |  |
| JDH4-02-007-CN-2880 | Installation of Low Voltage Cables [Road 04-R ] | 2026-12-27 → 2026-06-13 A (-197d) | 2027-01-13 → 2026-08-12 A (-154d) | 0% → 100% | 0d → none |  |  |
| JDH4-02-007-CN-2920 | Installation of Lighting Poles [Road 04-R ] | 2027-01-14 → 2026-07-21 A (-177d) | 2027-01-27 → 2026-08-15 A (-165d) | 0% → 100% | 0d → none |  |  |
| JDH4-02-007-CN-2960 | Installation of Lighting Luminaires [Road 04-R ] | 2027-01-28 → 2026-07-25 A (-187d) | 2027-02-10 → 2026-08-16 A (-178d) | 0% → 100% | 0d → none |  |  |
| JDH4-02-007-CN-2990 | Installation of Earthing System [Road 04-R ] | 2027-02-11 → 2026-08-15 A (-180d) | 2027-03-01 → 2026-09-24 A (-158d) | 0% → 100% | 0d → none |  |  |
| 2 | **Telecommunication** | 2027-03-02 → 2026-06-16 (-259d) | 2027-04-24 → 2026-08-17 (-250d) |  |  |  |  |
| JDH4-02-007-CN-3110 | Installation Road Crossing R/F 6 way 50mm HDPE Pipe [Road 04-R ] | 2027-03-02 → 2026-06-16 A (-259d) | 2027-03-21 → 2026-08-05 A (-228d) | 0% → 100% | 0d → none |  |  |
| JDH4-02-007-CN-3180 | Installation Road Crossing Un R/F 6 way 50mm HDPE Pipe [Road 04-R ] | 2027-03-22 → 2026-06-16 A (-279d) | 2027-04-06 → 2026-06-22 A (-288d) | 0% → 100% | 0d → none |  |  |
| JDH4-02-007-CN-3290 | Installation of Manholes [Road 04-R ] | 2027-04-07 → 2026-07-22 A (-259d) | 2027-04-24 → 2026-08-17 A (-250d) | 0% → 100% | 0d → none | JDH4-02-007-CN-3180, JDH4-02-007-CN-2990, JDH4-02-007-CN-3940 → JDH4-02-007-CN-3180 SS, JDH4-02-007-CN-2990, JDH4-02-007-CN-3940 SS |  |
| 2 | **Road 08** |  | 2027-03-31 → 2026-10-03 (-179d) |  |  |  |  |
| 6 | **Road Works + Roundabout** |  | 2027-03-31 → 2026-09-24 (-188d) |  |  |  |  |
| 1 | **Eartworks & Site grading** |  | 2026-08-17 → 2026-05-03 (-106d) |  |  |  |  |
| JDH4-02-007-CN-1770R | Road backfilling [Road 08 ] | 2026-02-21 → 2026-02-03 A (-18d) | 2026-03-09 → 2026-04-12 A (+34d) | 0% → 100% | 17d → none |  | resources Road backfilling [23409.9]; Loader [315 h]; Bulldozer [630 h]; Water Tanker [157.5 h]; Grider [630 h]; Truck [1890 h]; Road Roller [630 h]; Driver [1890 h]; Eq. Operator [157.5 h] → Loader [315 h]; Bulldozer [630 h]; Water Tanker [157.5 h]; Grider [630 h]; Truck [1890 h]; Road Roller [630 h]; Driver [1890 h]; Eq. Operator [157.5 h]; Road backfilling [23409.9] |
| JDH4-02-007-CN-1710R | Road excavation [Road 08 ] | 2026-02-04 → 2026-03-04 A (+28d) | 2026-02-19 → 2026-04-09 A (+49d) | 0% → 100% | 0d → none |  | resources Road excavation [353.7]; Excavator [157.5 h]; Loader [82.5 h]; Water Tanker [157.5 h]; Grider [157.5 h]; Truck [315 h]; Road Roller [157.5 h]; Labor [630 h]; Driver [315 h]; Eq. Operator [157.5 h] → Excavator [157.5 h]; Loader [82.5 h]; Water Tanker [157.5 h]; Grider [157.5 h]; Truck [315 h]; Road Roller [157.5 h]; Labor [630 h]; Driver [315 h]; Eq. Operator [157.5 h]; Road excavation [353.7] |
| JDH4-02-007-CN-1890 | Subgrade [Road 08 ] | 2026-08-06 → 2026-04-16 A (-112d) | 2026-08-17 → 2026-05-03 A (-106d) | 0% → 100% | 16d → none |  |  |
| 2 | **Asphalt Works** | 2026-08-18 → 2026-04-29 (-111d) | 2026-09-20 → 2026-05-16 (-127d) |  |  |  |  |
| JDH4-02-007-CN-1950 | Aggregate base course [Road 08 ] | 2026-08-18 → 2026-04-29 A (-111d) | 2026-08-29 → 2026-05-12 A (-109d) | 0% → 100% | 16d → none |  |  |
| JDH4-02-007-CN-2000 | Prime Coat (MC1) [Road 08 ] | 2026-08-30 → 2026-04-30 A (-122d) | 2026-09-06 → 2026-05-13 A (-116d) | 0% → 100% | 16d → none |  |  |
| JDH4-02-007-CN-2050 | Bituminous base course [Road 08 ] | 2026-09-07 → 2026-05-02 A (-128d) | 2026-09-20 → 2026-05-16 A (-127d) | 0% → 100% | 16d → none |  |  |
| 7 | **Finishing Works** | 2027-01-31 → 2026-05-12 (-264d) | 2027-03-31 → 2026-09-24 (-188d) |  |  |  |  |
| 1 | **Asphalt Wearing Course** | 2027-01-31 → 2026-09-09 (-144d) | 2027-03-09 → 2026-09-12 (-178d) |  |  |  |  |
| JDH4-02-007-CN-2100 | Tack Coat (RC2) [Road 08 ] | 2027-01-31 → 2026-09-09 A (-144d) | 2027-02-17 → 2026-09-12 A (-158d) | 0% → 100% | 12d → none |  |  |
| JDH4-02-007-CN-2150 | Bituminous concrete wearing course [Road 08 ] | 2027-02-18 → 2026-09-10 A (-161d) | 2027-03-09 → 2026-09-12 A (-178d) | 0% → 100% | 12d → none |  |  |
| 3 | **Precast Concrete Curb** | 2027-03-14 → 2026-05-12 (-306d) | 2027-03-24 → 2026-07-01 (-266d) |  |  |  |  |
| JDH4-02-007-CN-2200 | Installation of Precast Concrete curb [Road 08 ] | 2027-03-14 → 2026-05-12 A (-306d) | 2027-03-24 → 2026-07-01 A (-266d) | 0% → 100% | 12d → none |  |  |
| 4 | **Precast Interlocking block pavers** | 2027-03-14 → 2026-06-10 (-277d) | 2027-03-24 → 2026-07-04 (-263d) |  |  |  |  |
| JDH4-02-007-CN-2250 | Installation of Interlocking block pavers for sidewalk/footpath [Road 08 ] | 2027-03-14 → 2026-06-10 A (-277d) | 2027-03-24 → 2026-07-04 A (-263d) | 0% → 100% | 12d → none |  |  |
| 5 | **Pavement Markings** | 2027-03-18 → 2026-09-23 (-176d) | 2027-03-31 → 2026-09-24 (-188d) |  |  |  |  |
| JDH4-02-007-CN-2300 | Pavement markings [Road 08 ] | 2027-03-18 → 2026-09-23 A (-176d) | 2027-03-31 → 2026-09-24 A (-188d) | 0% → 100% | 10d → none |  |  |

| ID | Task | Start | Finish | Complete | Total float | Other |
| --- | --- | --- | --- | --- | --- | --- |
| 6 | **Traffic Signage** | 2027-03-09 → 2026-07-15 (-237d) | 2027-03-29 → 2026-09-05 (-205d) |  |  |  |
| JDH4-02-007-CN-2350 | Installation of Traffic Signs [Road 08 ] | 2027-03-09 → 2026-07-15 A (-237d) | 2027-03-29 → 2026-09-05 A (-205d) | 0% → 100% | 19d → none |  |
| 1 | **Storm Water Drainage** |  | 2026-06-10 → 2026-08-26 (+77d) |  |  |  |
| 1 | **Pipe Works** |  | 2026-06-10 → 2026-03-09 (-93d) |  |  |  |
| JDH4-02-007-CN-5330R | Excavation and Compaction (FDT) [Road 08 ] | 2026-02-21 → 2026-02-03 A (-18d) | 2026-03-16 → 2026-03-03 A (-13d) | 0% → 100% | 0d → none | resources Depth: 0.0m - 1.5m [546.55]; Excavator [300 h]; Water Tanker [300 h]; Truck [1200 h]; Labor [1200 h]; Driver [900 h]; Eq. Operator [150 h] → Excavator [300 h]; Water Tanker [300 h]; Truck [1200 h]; Labor [1200 h]; Driver [900 h]; Eq. Operator [150 h]; Depth: 0.0m - 1.5m [546.55] |
| JDH4-02-007-CN-5380R | Sand Bedding [Road 08 ] | 2026-03-17 → 2026-02-03 A (-42d) | 2026-04-01 → 2026-03-03 A (-29d) | 0% → 100% | 0d → none | resources Depth: 1.51m - 2.0m [546.55]; Loader [52.5 h]; Truck [150 h]; Labor [97.5 h]; Driver [97.5 h]; Eq. Operator [97.5 h] → Loader [52.5 h]; Truck [150 h]; Labor [97.5 h]; Driver [97.5 h]; Eq. Operator [97.5 h]; Depth: 1.51m - 2.0m [546.55] |
| JDH4-02-007-CN-5430R | Installation of GRP Pipe [Road 08 ] | 2026-04-02 → 2026-02-04 A (-57d) | 2026-05-02 → 2026-03-04 A (-59d) | 0% → 100% | 0d → none | resources Depth: 0.0m - 1.5m [546.55]; Excavator [82.5 h]; Crane [157.5 h]; Labor [472.5 h]; Eq. Operator [157.5 h]; Plumber [157.5 h]; Pipe-Laying Worker [157.5 h] → Excavator [82.5 h]; Crane [157.5 h]; Labor [472.5 h]; Eq. Operator [157.5 h]; Plumber [157.5 h]; Pipe-Laying Worker [157.5 h]; Depth: 0.0m - 1.5m [546.55] |
| JDH4-02-007-CN-5530R | Backfilling & Compaction [Road 08 ] | 2026-05-14 → 2026-02-04 A (-99d) | 2026-06-10 → 2026-03-09 A (-93d) | 0% → 100% | 13d → none | resources Depth: 1.50m - 2.0m [546.55]; Bulldozer [120 h]; Truck [157.5 h]; Compactor [45 h]; Labor [787.5 h]; Driver [157.5 h]; Eq. Operator [157.5 h] → Bulldozer [120 h]; Truck [157.5 h]; Compactor [45 h]; Labor [787.5 h]; Driver [157.5 h]; Eq. Operator [157.5 h]; Depth: 1.50m - 2.0m [546.55] |
| JDH4-02-007-CN-5480R | Sand Cover & Warning Tape [Road 08 ] | 2026-05-03 → 2026-02-05 A (-87d) | 2026-05-13 → 2026-03-07 A (-67d) | 0% → 100% | 1d → none | resources Depth: 2.01m - 2.5m [546.55]; Labor [75 h]; Skilled Labor [75 h] → Labor [75 h]; Skilled Labor [75 h]; Depth: 2.01m - 2.5m [546.55] |
| 5 | **Pipe Encasement** | 2026-05-03 → 2026-02-05 (-87d) | 2026-05-07 → 2026-03-07 (-61d) |  |  |  |
| JDH4-02-007-CN-5800 | Pipe Encasement Works [Road 08 ] | 2026-05-03 → 2026-02-05 A (-87d) | 2026-05-07 → 2026-03-07 A (-61d) | 0% → 100% | 0d → none |  |
| 2 | **Manholes** | 2026-05-09 → 2026-02-03 (-95d) | 2026-05-14 → 2026-02-15 (-88d) |  |  |  |
| JDH4-02-007-CN-5630 | Installation of Precast Manhole Ring [Road 08 ] | 2026-05-09 → 2026-02-03 A (-95d) | 2026-05-14 → 2026-02-15 A (-88d) | 0% → 100% | 0d → none |  |
| 6 | **Precast Acces Openinig** | 2026-05-16 → 2026-08-05 (+81d) | 2026-05-18 → 2026-08-26 (+100d) |  |  |  |
| JDH4-02-007-CN-5680 | Installation of Precast Access Opening [Road 08 ] | 2026-05-16 → 2026-08-05 A (+81d) | 2026-05-18 → 2026-08-26 A (+100d) | 0% → 100% | 0d → none |  |
| 3 | **Catch Basins** | 2026-05-19 → 2026-03-26 (-54d) | 2026-06-01 → 2026-04-18 (-44d) |  |  |  |
| JDH4-02-007-CN-5730 | Construction of Catch basins [Road 08 ] | 2026-05-19 → 2026-03-26 A (-54d) | 2026-06-01 → 2026-04-18 A (-44d) | 0% → 100% | 0d → none |  |
| 2 | **Sewerage Network** | 2026-03-17 → 2026-02-03 (-42d) | 2026-07-16 → 2026-03-03 (-135d) |  |  |  |
| 1 | **Pipe Works** | 2026-03-17 → 2026-02-03 (-42d) | 2026-06-25 → 2026-03-03 (-114d) |  |  |  |
| JDH4-02-007-CN-4780 | Excavation & Compaction (FDT) [Road 08 ] | 2026-03-17 → 2026-02-03 A (-42d) | 2026-04-09 → 2026-02-25 A (-43d) | 0% → 100% | 0d → none |  |
| JDH4-02-007-CN-4850 | Sand Bedding [Road 08 ] | 2026-04-11 → 2026-02-05 A (-65d) | 2026-04-20 → 2026-02-26 A (-53d) | 0% → 100% | 0d → none |  |
| JDH4-02-007-CN-4920 | Installation of GRP Pipe [Road 08 ] | 2026-04-21 → 2026-02-09 A (-71d) | 2026-04-30 → 2026-02-28 A (-61d) | 0% → 100% | 0d → none |  |
| JDH4-02-007-CN-4990 | Gravity Test [Road 08 ] | 2026-05-02 → 2026-02-11 A (-80d) | 2026-05-20 → 2026-02-28 A (-81d) | 0% → 100% | 0d → none |  |
| JDH4-02-007-CN-5060 | Sand Cover & Warning Tape [Road 08 ] | 2026-05-21 → 2026-02-12 A (-98d) | 2026-06-01 → 2026-03-01 A (-92d) | 0% → 100% | 0d → none |  |
| JDH4-02-007-CN-5130 | Backfilling & Compaction [Road 08 ] | 2026-06-02 → 2026-02-14 A (-108d) | 2026-06-25 → 2026-03-03 A (-114d) | 0% → 100% | 0d → none |  |
| 5 | **Pipe Encasement** | 2026-06-27 → 2026-02-12 (-135d) | 2026-07-08 → 2026-03-01 (-129d) |  |  |  |
| JDH4-02-007-CN-5270 | Pipe Encasement Works [Road 08 ] | 2026-06-27 → 2026-02-12 A (-135d) | 2026-07-08 → 2026-03-01 A (-129d) | 0% → 100% | 0d → none |  |
| 2 | **Manholes** | 2026-07-09 → 2026-02-08 (-151d) | 2026-07-16 → 2026-03-03 (-135d) |  |  |  |
| JDH4-02-007-CN-5200 | Installation of Manholes [Road 08 ] | 2026-07-09 → 2026-02-08 A (-151d) | 2026-07-16 → 2026-03-03 A (-135d) | 0% → 100% | 0d → none |  |
| 3 | **TSE Network** | 2026-04-11 → 2026-02-03 (-67d) | 2026-07-09 → 2026-05-09 (-61d) |  |  |  |
| 1 | **Pipe Works** | 2026-04-11 → 2026-02-03 (-67d) | 2026-07-09 → 2026-05-02 (-68d) |  |  |  |
| JDH4-02-007-CN-4000 | Excavation and Compaction (FDT) [Road 08 ] | 2026-04-11 → 2026-02-03 A (-67d) | 2026-04-30 → 2026-04-14 A (-16d) | 0% → 100% | 0d → none |  |
| JDH4-02-007-CN-4070 | Sand Bedding [Road 08 ] | 2026-05-02 → 2026-02-07 A (-84d) | 2026-05-13 → 2026-04-15 A (-28d) | 0% → 100% | 22d → none |  |
| JDH4-02-007-CN-4140 | Installation of HDPE Pipe [Road 08 ] | 2026-05-14 → 2026-02-08 A (-95d) | 2026-06-09 → 2026-04-29 A (-41d) | 0% → 100% | 22d → none |  |
| JDH4-02-007-CN-4210 | Initial Pressure Test [Road 08 ] | 2026-06-10 → 2026-02-12 A (-118d) | 2026-06-18 → 2026-04-30 A (-49d) | 0% → 100% | 22d → none |  |
| JDH4-02-007-CN-4280 | Sand Cover & Warning [Road 08 ] | 2026-06-20 → 2026-02-14 A (-126d) | 2026-06-28 → 2026-05-02 A (-57d) | 0% → 100% | 22d → none |  |
| JDH4-02-007-CN-4350 | Backfilling & Compaction [Road 08 ] | 2026-06-29 → 2026-02-15 A (-134d) | 2026-07-09 → 2026-05-02 A (-68d) | 0% → 100% | 22d → none |  |
| JDH4-02-007-CN-4660 | Point of Connection [Road 08 ] | 2026-06-10 → 2026-04-18 A (-53d) | 2026-06-15 → 2026-05-02 A (-44d) | 0% → 100% | 27d → none |  |
| 2 | **Pipe Encasement** | 2026-06-10 → 2026-02-14 (-116d) | 2026-06-17 → 2026-05-02 (-46d) |  |  |  |
| JDH4-02-007-CN-4420 | Encasement for Pipes [Road 08 ] | 2026-06-10 → 2026-02-14 A (-116d) | 2026-06-17 → 2026-05-02 A (-46d) | 0% → 100% | 43d → none |  |
| 3 | **Valves** | 2026-06-18 → 2026-03-15 (-95d) | 2026-06-25 → 2026-05-09 (-47d) |  |  |  |
| JDH4-02-007-CN-4490 | Installation of Gate Valves [Road 08 ] | 2026-06-18 → 2026-03-15 A (-95d) | 2026-06-25 → 2026-05-09 A (-47d) | 0% → 100% | 43d → none |  |
| 4 | **Risers** | 2026-06-27 → 2026-04-15 (-73d) | 2026-07-04 → 2026-05-07 (-58d) |  |  |  |
| JDH4-02-007-CN-4730 | Installation of Irrigation Riser with [Road 08 ] | 2026-06-27 → 2026-04-15 A (-73d) | 2026-07-04 → 2026-05-07 A (-58d) | 0% → 100% | 43d → none |  |
| 4 | **Potable Network** | 2026-05-02 → 2026-03-09 (-54d) | 2026-07-25 → 2026-05-09 (-77d) |  |  |  |
| 1 | **Pipe Works** | 2026-05-02 → 2026-03-09 (-54d) | 2026-07-08 → 2026-04-30 (-69d) |  |  |  |
| JDH4-02-007-CN-3320 | Excavation and Compaction (FDT) [Road 08 ] | 2026-05-02 → 2026-03-09 A (-54d) | 2026-05-13 → 2026-04-09 A (-34d) | 0% → 100% | 0d → none |  |
| JDH4-02-007-CN-3390 | Sand Bedding [Road 08 ] | 2026-05-14 → 2026-03-11 A (-64d) | 2026-05-23 → 2026-04-13 A (-40d) | 0% → 100% | 0d → none |  |
| JDH4-02-007-CN-3460 | Installation of HDPE Pipe [Road 08 ] | 2026-05-24 → 2026-03-14 A (-71d) | 2026-06-13 → 2026-04-29 A (-45d) | 0% → 100% | 0d → none |  |
| JDH4-02-007-CN-3530 | Initial Pressure Test [Road 08 ] | 2026-06-14 → 2026-03-17 A (-89d) | 2026-06-20 → 2026-04-30 A (-51d) | 0% → 100% | 23d → none |  |
| JDH4-02-007-CN-3600 | Sand Cover & Warning Tape [Road 08 ] | 2026-06-21 → 2026-03-24 A (-89d) | 2026-06-27 → 2026-04-01 A (-87d) | 0% → 100% | 23d → none |  |
| JDH4-02-007-CN-3670 | Backfilling [Road 08 ] | 2026-06-28 → 2026-03-28 A (-92d) | 2026-07-08 → 2026-04-02 A (-97d) | 0% → 100% | 23d → none |  |
| 2 | **Pipe Encasement** | 2026-06-14 → 2026-03-14 (-92d) | 2026-06-18 → 2026-04-29 (-50d) |  |  |  |
| JDH4-02-007-CN-3740 | Encasement for Pipes [Road 08 ] | 2026-06-14 → 2026-03-14 A (-92d) | 2026-06-18 → 2026-04-29 A (-50d) | 0% → 100% | 0d → none |  |
| 3 | **Valves** | 2026-06-20 → 2026-03-10 (-102d) | 2026-06-25 → 2026-05-07 (-49d) |  |  |  |
| JDH4-02-007-CN-3810 | Installation of Gate Valves [Road 08 ] | 2026-06-20 → 2026-03-10 A (-102d) | 2026-06-25 → 2026-05-07 A (-49d) | 0% → 100% | 0d → none |  |
| 4 | **Fire Hydrant** | 2026-07-18 → 2026-04-15 (-94d) | 2026-07-25 → 2026-05-09 (-77d) |  |  |  |
| JDH4-02-007-CN-3900 | Installation of 3-outlet fire hydrant [Road 08 ] | 2026-07-18 → 2026-04-15 A (-94d) | 2026-07-25 → 2026-05-09 A (-77d) | 0% → 100% | 0d → none |  |
| 5 | **Electrical Works** | 2026-06-27 → 2026-04-02 (-86d) | 2026-11-07 → 2026-10-03 (-35d) |  |  |  |
| 1 | **LV Cables** | 2026-06-27 → 2026-06-25 (-2d) | 2026-08-17 → 2026-08-20 (+3d) |  |  |  |
| 2 | **Low Voltage Cable** | 2026-06-27 → 2026-06-25 (-2d) | 2026-08-17 → 2026-08-20 (+3d) |  |  |  |
| JDH4-02-007-CN-2740 | Installation of Ring Main Unit (RMU) 3-way, 13.8kV [Road 08 ] | 2026-08-12 → 2026-06-25 A (-48d) | 2026-08-17 → 2026-08-20 A (+3d) | 0% → 100% | 19d → none |  |
| JDH4-02-007-CN-2595 | Excavation for Low Voltage Cable [Road 08 ] | 2026-06-27 → 2026-07-21 A (+24d) | 2026-07-16 → 2026-08-18 A (+33d) | 0% → 100% | 0d → none |  |
| JDH4-02-007-CN-2600 | Installation of Low Voltage Cables [Road 08 ] | 2026-07-18 → 2026-07-23 A (+5d) | 2026-07-23 → 2026-08-19 A (+27d) | 0% → 100% | 16d → none |  |
| JDH4-02-007-CN-2730 | Installation of Unit Substation , 13.8/0.4 kV, 500kVA with RMU [Road 08 ] | 2026-08-06 → 2026-07-25 A (-12d) | 2026-08-11 → 2026-08-20 A (+9d) | 0% → 100% | 19d → none |  |
| JDH4-02-007-CN-2710 | Installation of Low Voltage Distribution Panel (Main: 100A, MCCB, 5-50A, MCCB) [Road 08 ] | 2026-07-25 → 2026-08-15 A (+21d) | 2026-08-05 → 2026-08-16 A (+11d) | 0% → 100% | 16d → none |  |
| 3 | **Street Lighting** | 2026-07-18 → 2026-04-02 (-107d) | 2026-11-07 → 2026-10-03 (-35d) |  |  |  |
| JDH4-02-007-CN-2760 | Installation of Road Crossing Ducts [Road 08 ] | 2026-08-02 → 2026-04-02 A (-122d) | 2026-08-15 → 2026-04-23 A (-114d) | 0% → 100% | 42d → none |  |
| JDH4-02-007-CN-2890 | Installation of Lighting Poles [Road 08 ] | 2026-09-21 → 2026-05-13 A (-131d) | 2026-10-10 → 2026-08-13 A (-58d) | 0% → 100% | 32d → none |  |
| JDH4-02-007-CN-2750 | Excavation for Low Voltage Cable [Road 08 ] | 2026-07-18 → 2026-05-16 A (-63d) | 2026-08-01 → 2026-08-17 A (+16d) | 0% → 100% | 0d → none |  |

| ID | Task | Start | Finish | Complete | Total float | Other |
| --- | --- | --- | --- | --- | --- | --- |
| JDH4-02-007-CN-2930 | Installation of Lighting Luminaires [Road 08 ] | 2026-10-11 → 2026-05-16 A (-148d) | 2026-10-24 → 2026-08-13 A (-72d) | 0% → 100% | 32d → none |  |
| JDH4-02-007-CN-2840 | Installation of Low Voltage Cables [Road 08 ] | 2026-08-16 → 2026-06-15 A (-62d) | 2026-09-08 → 2026-08-20 A (-19d) | 0% → 100% | 42d → none |  |
| JDH4-02-007-CN-2970 | Installation of Earthing System [Road 08 ] | 2026-10-25 → 2026-08-15 A (-71d) | 2026-11-07 → 2026-10-03 A (-35d) | 0% → 100% | 32d → none |  |
| 2 | **Telecommunication** | 2026-08-02 → 2026-04-02 (-122d) | 2026-09-22 → 2026-06-18 (-96d) |  |  |  |
| JDH4-02-007-CN-3070 | Installation Road Crossing R/F 6 way 50mm HDPE Pipe [Road 08 ] | 2026-08-02 → 2026-04-02 A (-122d) | 2026-08-12 → 2026-04-23 A (-111d) | 0% → 100% | 0d → none |  |
| JDH4-02-007-CN-3140 | Installation Road Crossing Un R/F 6 way 50mm HDPE Pipe [Road 08 ] | 2026-08-13 → 2026-04-05 A (-130d) | 2026-08-24 → 2026-04-22 A (-124d) | 0% → 100% | 0d → none |  |
| JDH4-02-007-CN-3250 | Installation of Manholes [Road 08 ] | 2026-09-06 → 2026-04-16 A (-143d) | 2026-09-22 → 2026-05-18 A (-127d) | 0% → 100% | 14d → none |  |
| JDH4-02-007-CN-3200 | Installation of 2 x 32 mm diameter HDPE ducts [Road 08 ] | 2026-08-25 → 2026-06-13 A (-73d) | 2026-09-05 → 2026-06-18 A (-79d) | 0% → 100% | 0d → none |  |
| 4 | **Road 07-N** |  | 2026-12-15 → 2026-10-06 (-70d) |  |  |  |
| 6 | **Road Works** |  | 2026-12-15 → 2026-10-06 (-70d) |  |  |  |
| 1 | **Eartworks & Site grading** |  | 2026-08-06 → 2026-05-09 (-89d) |  |  |  |
| JDH4-02-007-CN-1790R | Road backfilling [Road 07-N ] | 2026-02-24 → 2026-02-02 A (-22d) | 2026-03-24 → 2026-03-09 A (-15d) | 0% → 100% | 0d → none | resources Road backfilling [33015.4]; Loader [315 h]; Bulldozer [472.5 h]; Water Tanker [157.5 h]; Grider [630 h]; Truck [1260 h]; Road Roller [630 h]; Driver [1890 h]; Eq. Operator [157.5 h] → Loader [315 h]; Bulldozer [472.5 h]; Water Tanker [157.5 h]; Grider [630 h]; Truck [1260 h]; Road Roller [630 h]; Driver [1890 h]; Eq. Operator [157.5 h]; Road backfilling [33015.4] |
| JDH4-02-007-CN-1730R | Road excavation [Road 07-N ] | 2026-02-21 → 2026-02-17 A (-4d) | 2026-03-24 → 2026-03-04 A (-20d) | 0% → 100% | 0d → none | resources Road excavation [631.95]; Excavator [82.5 h]; Loader [82.5 h]; Water Tanker [37.5 h]; Grider [157.5 h]; Truck [240 h]; Road Roller [157.5 h]; Labor [630 h]; Driver [315 h]; Eq. Operator [157.5 h] → Excavator [82.5 h]; Loader [82.5 h]; Water Tanker [37.5 h]; Grider [157.5 h]; Truck [240 h]; Road Roller [157.5 h]; Labor [630 h]; Driver [315 h]; Eq. Operator [157.5 h]; Road excavation [631.95] |
| JDH4-02-007-CN-1910 | Subgrade [Road 07-N ] | 2026-07-22 → 2026-04-29 A (-84d) | 2026-08-06 → 2026-05-09 A (-89d) | 0% → 100% | 14d → none |  |
| 2 | **Asphalt Works** | 2026-08-08 → 2026-05-07 (-93d) | 2026-09-22 → 2026-05-31 (-114d) |  |  |  |
| JDH4-02-007-CN-1970 | Aggregate base course [Road 07-N ] | 2026-08-08 → 2026-05-07 A (-93d) | 2026-08-24 → 2026-05-13 A (-103d) | 0% → 100% | 14d → none |  |
| JDH4-02-007-CN-2020 | Prime Coat (MC1) [Road 07-N ] | 2026-08-25 → 2026-05-11 A (-106d) | 2026-09-05 → 2026-05-21 A (-107d) | 0% → 100% | 14d → none |  |
| JDH4-02-007-CN-2070 | Bituminous base course [Road 07-N ] | 2026-09-06 → 2026-05-17 A (-112d) | 2026-09-22 → 2026-05-31 A (-114d) | 0% → 100% | 14d → none |  |
| 7 | **Finishing Works** | 2026-09-24 → 2026-05-24 (-123d) | 2026-12-15 → 2026-10-06 (-70d) |  |  |  |
| 1 | **Asphalt Wearing Course** | 2026-09-24 → 2026-09-09 (-15d) | 2026-10-21 → 2026-09-10 (-41d) |  |  |  |
| JDH4-02-007-CN-2120 | Tack Coat (RC2) [Road 07-N ] | 2026-09-24 → 2026-09-09 A (-15d) | 2026-10-11 → 2026-09-10 A (-31d) | 0% → 100% | 14d → none |  |
| JDH4-02-007-CN-2170 | Bituminous concrete wearing course [Road 07-N ] | 2026-10-12 → 2026-09-09 A (-33d) | 2026-10-21 → 2026-09-10 A (-41d) | 0% → 100% | 14d → none |  |
| 3 | **Precast Concrete Curb** | 2026-10-22 → 2026-05-24 (-151d) | 2026-11-04 → 2026-07-02 (-125d) |  |  |  |
| JDH4-02-007-CN-2220 | Installation of Precast Concrete curb [Road 07-N ] | 2026-10-22 → 2026-05-24 A (-151d) | 2026-11-04 → 2026-07-02 A (-125d) | 0% → 100% | 14d → none |  |
| 4 | **Precast Interlocking block pavers** | 2026-11-05 → 2026-06-18 (-140d) | 2026-11-18 → 2026-07-30 (-111d) |  |  |  |
| JDH4-02-007-CN-2270 | Installation of Interlocking block pavers for sidewalk/footpath [Road 07-N ] | 2026-11-05 → 2026-06-18 A (-140d) | 2026-11-18 → 2026-07-30 A (-111d) | 0% → 100% | 14d → none |  |
| 5 | **Pavement Markings** | 2026-11-24 → 2026-09-24 (-61d) | 2026-12-01 → 2026-09-27 (-65d) |  |  |  |
| JDH4-02-007-CN-2320 | Pavement markings [Road 07-N ] | 2026-11-24 → 2026-09-24 A (-61d) | 2026-12-01 → 2026-09-27 A (-65d) | 0% → 100% | 10d → none |  |
| 6 | **Traffic Signage** | 2026-12-02 → 2026-07-15 (-140d) | 2026-12-15 → 2026-10-06 (-70d) |  |  |  |
| JDH4-02-007-CN-2370 | Installation of Traffic Signs [Road 07-N ] | 2026-12-02 → 2026-07-15 A (-140d) | 2026-12-15 → 2026-10-06 A (-70d) | 0% → 100% | 10d → none |  |
| 1 | **Storm Water Drainage** | 2026-03-25 → 2026-03-02 (-23d) | 2026-07-08 → 2026-07-23 (+15d) |  |  |  |
| 1 | **Pipe Works** | 2026-03-25 → 2026-03-02 (-23d) | 2026-06-27 → 2026-03-28 (-91d) |  |  |  |
| JDH4-02-007-CN-5350 | Excavation and Compaction (FDT) [Road 07-N ] | 2026-03-25 → 2026-03-02 A (-23d) | 2026-04-21 → 2026-03-16 A (-36d) | 0% → 100% | 0d → none |  |
| JDH4-02-007-CN-5400 | Sand Bedding [Road 07-N ] | 2026-04-22 → 2026-03-07 A (-46d) | 2026-05-09 → 2026-03-16 A (-54d) | 0% → 100% | 8d → none |  |
| JDH4-02-007-CN-5450 | Installation of GRP Pipe [Road 07-N ] | 2026-05-10 → 2026-03-08 A (-63d) | 2026-05-31 → 2026-03-17 A (-75d) | 0% → 100% | 8d → none |  |
| JDH4-02-007-CN-5500 | Sand Cover & Warning Tape [Road 07-N ] | 2026-06-01 → 2026-03-09 A (-84d) | 2026-06-14 → 2026-03-25 A (-81d) | 0% → 100% | 8d → none |  |
| JDH4-02-007-CN-5550 | Backfilling & Compaction [Road 07-N ] | 2026-06-15 → 2026-03-09 A (-98d) | 2026-06-27 → 2026-03-28 A (-91d) | 0% → 100% | 8d → none |  |
| 5 | **Pipe Encasement** | 2026-06-01 → 2026-03-09 (-84d) | 2026-06-11 → 2026-03-25 (-78d) |  |  |  |
| JDH4-02-007-CN-5820 | Pipe Encasement Works [Road 07-N ] | 2026-06-01 → 2026-03-09 A (-84d) | 2026-06-11 → 2026-03-25 A (-78d) | 0% → 100% | 35d → none |  |
| 2 | **Manholes** | 2026-06-01 → 2026-03-05 (-88d) | 2026-06-08 → 2026-03-28 (-72d) |  |  |  |
| JDH4-02-007-CN-5650 | Installation of Precast Manhole Ring [Road 07-N ] | 2026-06-01 → 2026-03-05 A (-88d) | 2026-06-08 → 2026-03-28 A (-72d) | 0% → 100% | 35d → none |  |
| 6 | **Precast Acces Openinig** | 2026-06-09 → 2026-07-01 (+22d) | 2026-06-11 → 2026-07-23 (+42d) |  |  |  |
| JDH4-02-007-CN-5700 | Installation of Precast Access Opening [Road 07-N ] | 2026-06-09 → 2026-07-01 A (+22d) | 2026-06-11 → 2026-07-23 A (+42d) | 0% → 100% | 35d → none |  |
| 3 | **Catch Basins** | 2026-06-13 → 2026-04-12 (-62d) | 2026-06-23 → 2026-05-02 (-52d) |  |  |  |
| JDH4-02-007-CN-5740 | Construction of Catch basins [Road 07-N ] | 2026-06-13 → 2026-04-12 A (-62d) | 2026-06-23 → 2026-05-02 A (-52d) | 0% → 100% | 35d → none |  |
| 4 | **Concrete Outfalls** | 2026-06-28 → 2026-05-21 (-38d) |  |  |  |  |
| JDH4-02-007-CN-5770 | Construction of Concrete outfall structure [Road 07-N ] | 2026-06-28 → 2026-05-21 A (-38d) | 2026-07-08 A | 0% → 100% | 32d → none |  |
| 2 | **Sewerage Network** | 2026-04-22 → 2026-03-02 (-51d) | 2026-07-06 → 2026-03-28 (-100d) |  |  |  |
| 1 | **Pipe Works** | 2026-04-22 → 2026-03-02 (-51d) | 2026-07-06 → 2026-03-26 (-102d) |  |  |  |
| JDH4-02-007-CN-4800 | Excavation & Compaction (FDT) [Road 07-N ] | 2026-04-22 → 2026-03-02 A (-51d) | 2026-05-16 → 2026-03-15 A (-62d) | 0% → 100% | 0d → none |  |
| JDH4-02-007-CN-4870 | Sand Bedding [Road 07-N ] | 2026-05-17 → 2026-03-04 A (-74d) | 2026-05-30 → 2026-03-16 A (-75d) | 0% → 100% | 8d → none |  |
| JDH4-02-007-CN-4940 | Installation of GRP Pipe [Road 07-N ] | 2026-05-31 → 2026-03-07 A (-85d) | 2026-06-13 → 2026-03-17 A (-88d) | 0% → 100% | 8d → none |  |
| JDH4-02-007-CN-5010 | Gravity Test [Road 07-N ] | 2026-06-14 → 2026-03-09 A (-97d) | 2026-06-18 → 2026-03-24 A (-86d) | 0% → 100% | 8d → none |  |
| JDH4-02-007-CN-5080 | Sand Cover & Warning Tape [Road 07-N ] | 2026-06-20 → 2026-03-09 A (-103d) | 2026-06-27 → 2026-03-25 A (-94d) | 0% → 100% | 8d → none |  |
| JDH4-02-007-CN-5150 | Backfilling & Compaction [Road 07-N ] | 2026-06-28 → 2026-03-09 A (-111d) | 2026-07-06 → 2026-03-26 A (-102d) | 0% → 100% | 8d → none |  |
| 5 | **Pipe Encasement** | 2026-06-14 → 2026-03-09 (-97d) | 2026-06-18 → 2026-03-25 (-85d) |  |  |  |
| JDH4-02-007-CN-5290 | Pipe Encasement Works [Road 07-N ] | 2026-06-14 → 2026-03-09 A (-97d) | 2026-06-18 → 2026-03-25 A (-85d) | 0% → 100% | 22d → none |  |
| 2 | **Manholes** | 2026-06-20 → 2026-03-04 (-108d) | 2026-06-27 → 2026-03-28 (-91d) |  |  |  |
| JDH4-02-007-CN-5220 | Installation of Manholes [Road 07-N ] | 2026-06-20 → 2026-03-04 A (-108d) | 2026-06-27 → 2026-03-28 A (-91d) | 0% → 100% | 22d → none |  |
| 3 | **TSE Network** | 2026-05-17 → 2026-03-03 (-75d) | 2026-11-25 → 2026-05-09 (-200d) |  |  |  |
| 1 | **Pipe Works** | 2026-05-17 → 2026-03-03 (-75d) | 2026-08-25 → 2026-03-31 (-147d) |  |  |  |
| JDH4-02-007-CN-4020 | Excavation and Compaction (FDT) [Road 07-N ] | 2026-05-17 → 2026-03-03 A (-75d) | 2026-06-06 → 2026-03-07 A (-91d) | 0% → 100% | 0d → none |  |
| JDH4-02-007-CN-4090 | Sand Bedding [Road 07-N ] | 2026-06-07 → 2026-03-08 A (-91d) | 2026-06-20 → 2026-03-10 A (-102d) | 0% → 100% | 14d → none |  |
| JDH4-02-007-CN-4160 | Installation of HDPE Pipe [Road 07-N ] | 2026-06-21 → 2026-03-11 A (-102d) | 2026-07-07 → 2026-03-28 A (-101d) | 0% → 100% | 14d → none |  |
| JDH4-02-007-CN-4230 | Initial Pressure Test [Road 07-N ] | 2026-07-08 → 2026-03-24 A (-106d) | 2026-07-13 → 2026-03-30 A (-105d) | 0% → 100% | 14d → none |  |
| JDH4-02-007-CN-4370 | Backfilling & Compaction [Road 07-N ] | 2026-07-22 → 2026-03-26 A (-118d) | 2026-08-04 → 2026-03-31 A (-126d) | 0% → 100% | 14d → none |  |
| JDH4-02-007-CN-4300 | Sand Cover & Warning [Road 07-N ] | 2026-07-14 → 2026-03-28 A (-108d) | 2026-07-21 → 2026-03-30 A (-113d) | 0% → 100% | 14d → none |  |
| JDH4-02-007-CN-4680 | Point of Connection [Road 07-N ] | 2026-08-24 → 2026-03-30 A (-147d) | 2026-08-25 → 2026-03-31 A (-147d) | 0% → 100% | 29d → none |  |
| 2 | **Pipe Encasement** | 2026-07-08 → 2026-03-28 (-102d) | 2026-07-12 → 2026-03-30 (-104d) |  |  |  |
| JDH4-02-007-CN-4440 | Encasement for Pipes [Road 07-N ] | 2026-07-08 → 2026-03-28 A (-102d) | 2026-07-12 → 2026-03-30 A (-104d) | 0% → 100% | 22d → none |  |

| ID | Task | Start | Finish | Complete | Total float |
| --- | --- | --- | --- | --- | --- |
| 3 | **Valves** | 2026-11-18 → 2026-04-15 (-217d) | 2026-11-25 → 2026-05-09 (-200d) |  |  |
| JDH4-02-007-CN-4510 | Installation of Gate Valves [Road 07-N ] | 2026-11-18 → 2026-04-15 A (-217d) | 2026-11-25 → 2026-05-09 A (-200d) | 0% → 100% | 13d → none |
| 4 | **Risers** | 2026-11-18 → 2026-03-24 (-239d) | 2026-11-23 → 2026-03-30 (-238d) |  |  |
| JDH4-02-007-CN-4750 | Installation of Irrigation Riser with [Road 07-N ] | 2026-11-18 → 2026-03-24 A (-239d) | 2026-11-23 → 2026-03-30 A (-238d) | 0% → 100% | 13d → none |
| 4 | **Potable Network** | 2026-06-07 → 2026-03-02 (-97d) | 2026-08-04 → 2026-04-20 (-106d) |  |  |
| 1 | **Pipe Works** | 2026-06-07 → 2026-03-02 (-97d) | 2026-08-04 → 2026-03-31 (-126d) |  |  |
| JDH4-02-007-CN-3340 | Excavation and Compaction (FDT) [Road 07-N ] | 2026-06-07 → 2026-03-02 A (-97d) | 2026-06-16 → 2026-03-08 A (-100d) | 0% → 100% | 5d → none |
| JDH4-02-007-CN-3410 | Sand Bedding [Road 07-N ] | 2026-06-17 → 2026-03-04 A (-105d) | 2026-06-24 → 2026-03-11 A (-105d) | 0% → 100% | 5d → none |
| JDH4-02-007-CN-3480 | Installation of HDPE Pipe [Road 07-N ] | 2026-06-25 → 2026-03-11 A (-106d) | 2026-07-08 → 2026-03-26 A (-104d) | 0% → 100% | 5d → none |
| JDH4-02-007-CN-3550 | Initial Pressure Test [Road 07-N ] | 2026-07-09 → 2026-03-25 A (-106d) | 2026-07-14 → 2026-03-26 A (-110d) | 0% → 100% | 14d → none |
| JDH4-02-007-CN-3620 | Sand Cover & Warning Tape [Road 07-N ] | 2026-07-15 → 2026-03-25 A (-112d) | 2026-07-21 → 2026-03-28 A (-115d) | 0% → 100% | 14d → none |
| JDH4-02-007-CN-3690 | Backfilling [Road 07-N ] | 2026-07-22 → 2026-03-25 A (-119d) | 2026-08-04 → 2026-03-31 A (-126d) | 0% → 100% | 14d → none |
| 2 | **Pipe Encasement** | 2026-07-09 → 2026-03-25 (-106d) | 2026-07-14 → 2026-03-28 (-108d) |  |  |
| JDH4-02-007-CN-3760 | Encasement for Pipes [Road 07-N ] | 2026-07-09 → 2026-03-25 A (-106d) | 2026-07-14 → 2026-03-28 A (-108d) | 0% → 100% | 7d → none |
| 3 | **Valves** | 2026-07-09 → 2026-03-10 (-121d) | 2026-07-16 → 2026-03-26 (-112d) |  |  |
| JDH4-02-007-CN-3830 | Installation of Gate Valves [Road 07-N ] | 2026-07-09 → 2026-03-10 A (-121d) | 2026-07-16 → 2026-03-26 A (-112d) | 0% → 100% | 5d → none |
| 4 | **Fire Hydrant** | 2026-07-18 → 2026-04-15 (-94d) | 2026-07-25 → 2026-04-20 (-96d) |  |  |
| JDH4-02-007-CN-3920 | Installation of 3-outlet fire hydrant [Road 07-N ] | 2026-07-18 → 2026-04-15 A (-94d) | 2026-07-25 → 2026-04-20 A (-96d) | 0% → 100% | 5d → none |
| 5 | **Electrical Works** | 2026-06-07 → 2026-04-12 (-56d) | 2026-11-09 → 2026-10-03 (-37d) |  |  |
| 1 | **LV Cables** | 2026-06-07 → 2026-07-15 (+38d) | 2026-06-27 → 2026-08-06 (+40d) |  |  |
| 2 | **Low Voltage Cable** | 2026-06-07 → 2026-07-15 (+38d) | 2026-06-27 → 2026-08-06 (+40d) |  |  |
| JDH4-02-007-CN-2630 | Excavation for Low Voltage Cable [Road 07-N ] | 2026-06-07 → 2026-07-15 A (+38d) | 2026-06-17 → 2026-08-05 A (+49d) | 0% → 100% | 0d → none |
| JDH4-02-007-CN-2640 | Installation of Low Voltage Cables [Road 07-N ] | 2026-06-18 → 2026-07-18 A (+30d) | 2026-06-27 → 2026-08-06 A (+40d) | 0% → 100% | 23d → none |
| 3 | **Street Lighting** | 2026-06-18 → 2026-04-16 (-63d) | 2026-11-09 → 2026-10-03 (-37d) |  |  |
| JDH4-02-007-CN-2790 | Installation of Road Crossing Ducts [Road 07-N ] | 2026-07-04 → 2026-04-16 A (-79d) | 2026-07-16 → 2026-04-23 A (-84d) | 0% → 100% | 6d → none |
| JDH4-02-007-CN-2940 | Installation of Lighting Luminaires [Road 07-N ] | 2026-10-13 → 2026-06-09 A (-126d) | 2026-10-21 → 2026-07-23 A (-90d) | 0% → 100% | 30d → none |
| JDH4-02-007-CN-2900 | Installation of Lighting Poles [Road 07-N ] | 2026-09-24 → 2026-06-10 A (-106d) | 2026-10-12 → 2026-07-23 A (-81d) | 0% → 100% | 30d → none |
| JDH4-02-007-CN-2780 | Excavation for Low Voltage Cable [Road 07-N ] | 2026-06-18 A | 2026-07-02 → 2026-08-08 A (+37d) | 0% → 100% | 0d → none |
| JDH4-02-007-CN-2860 | Installation of Low Voltage Cables [Road 07-N ] | 2026-07-18 → 2026-06-20 A (-28d) | 2026-08-06 → 2026-08-10 A (+4d) | 0% → 100% | 6d → none |
| JDH4-02-007-CN-3000 | Installation of Street Lighting Feeder pillars [Road 07-N ] | 2026-10-22 → 2026-06-30 A (-114d) | 2026-10-31 → 2026-10-03 A (-28d) | 0% → 100% | 30d → none |
| JDH4-02-007-CN-3010 | Installation of Earthing System [Road 07-N ] | 2026-11-01 → 2026-09-17 A (-45d) | 2026-11-09 → 2026-10-03 A (-37d) | 0% → 100% | 30d → none |
| 2 | **Telecommunication** | 2026-07-04 → 2026-04-12 (-83d) | 2026-08-27 → 2026-08-10 (-17d) |  |  |
| JDH4-02-007-CN-3090 | Installation Road Crossing R/F 6 way 50mm HDPE Pipe [Road 07-N ] | 2026-07-04 → 2026-04-12 A (-83d) | 2026-07-16 A | 0% → 100% | 0d → none |
| JDH4-02-007-CN-3160 | Installation Road Crossing Un R/F 6 way 50mm HDPE Pipe [Road 07-N ] | 2026-07-18 → 2026-04-16 A (-93d) | 2026-07-30 → 2026-05-06 A (-85d) | 0% → 100% | 0d → none |
| JDH4-02-007-CN-3270 | Installation of Manholes [Road 07-N ] | 2026-08-15 → 2026-05-28 A (-79d) | 2026-08-27 → 2026-06-03 A (-85d) | 0% → 100% | 0d → none |
| JDH4-02-007-CN-3210 | Installation of 2 x 32 mm diameter HDPE ducts [Road 07-N ] | 2026-08-01 → 2026-08-08 A (+7d) | 2026-08-13 → 2026-08-10 A (-3d) | 0% → 100% | 0d → none |
| 3 | **Road 01** |  | 2026-11-23 → 2026-11-18 (-5d) |  |  |
| 6 | **Road Works (Roundabout)** | 2026-02-03 → 2026-07-15 (+162d) | 2026-11-23 → 2026-11-18 (-5d) |  |  |
| 1 | **Eartworks & Site grading** | 2026-02-03 → 2026-07-15 (+162d) | 2026-07-27 → 2026-07-28 (+1d) |  |  |
| JDH4-02-007-CN-1720 | Road excavation [Road 01 ] | 2026-02-03 → 2026-07-15 A (+162d) | 2026-02-14 → 2026-07-19 A (+155d) | 0% → 100% | 3d → none |
| JDH4-02-007-CN-1780 | Road backfilling [Road 01 ] | 2026-02-15 → 2026-07-20 A (+155d) | 2026-02-23 → 2026-07-23 A (+150d) | 0% → 100% | 3d → none |
| JDH4-02-007-CN-1900 | Subgrade [Road 01 ] | 2026-07-20 → 2026-07-25 A (+5d) | 2026-07-27 → 2026-07-28 A (+1d) | 0% → 100% | 28d → none |
| 2 | **Asphalt Works** | 2026-07-28 → 2026-07-29 (+1d) | 2026-09-22 → 2026-08-30 (-23d) |  |  |
| JDH4-02-007-CN-1960 | Aggregate base course [Road 01 ] | 2026-07-28 → 2026-07-29 A (+1d) | 2026-08-08 → 2026-08-21 A (+13d) | 0% → 100% | 28d → none |
| JDH4-02-007-CN-2010 | Prime Coat (MC1) [Road 01 ] | 2026-08-09 → 2026-08-02 A (-7d) | 2026-09-01 → 2026-08-29 A (-3d) | 0% → 100% | 28d → none |
| JDH4-02-007-CN-2060 | Bituminous base course [Road 01 ] | 2026-09-02 → 2026-08-04 A (-29d) | 2026-09-22 → 2026-08-30 A (-23d) | 0% → 100% | 28d → none |
| 7 | **Finishing Works** | 2026-09-24 → 2026-10-07 (+13d) | 2026-11-23 → 2026-11-18 (-5d) |  |  |
| 1 | **Asphalt Wearing Course** | 2026-09-24 → 2026-10-07 (+13d) | 2026-10-22 → 2026-11-04 (+13d) |  |  |
| JDH4-02-007-CN-2110 | Tack Coat (RC2) [Road 01 ] | 2026-09-24 → 2026-10-07 (+13d) | 2026-10-05 → 2026-10-18 (+13d) |  | 40d → 117d |
| JDH4-02-007-CN-2160 | Bituminous concrete wearing course [Road 01 ] | 2026-10-06 → 2026-10-19 (+13d) | 2026-10-22 → 2026-11-04 (+13d) |  | 40d → 117d |
| 3 | **Precast Concrete Curb** | 2026-10-24 → 2026-11-05 (+12d) | 2026-11-01 → 2026-11-14 (+13d) |  |  |
| JDH4-02-007-CN-2210 | Installation of Precast Concrete curb [Road 01 ] | 2026-10-24 → 2026-11-05 (+12d) | 2026-11-01 → 2026-11-14 (+13d) |  | 40d → 117d |
| 4 | **Precast Interlocking block pavers** | 2026-11-02 → 2026-11-15 (+13d) | 2026-11-05 → 2026-11-18 (+13d) |  |  |
| JDH4-02-007-CN-2260 | Installation of Interlocking block pavers for sidewalk/footpath [Road 01 ] | 2026-11-02 → 2026-11-15 (+13d) | 2026-11-05 → 2026-11-18 (+13d) |  | 40d → 117d |
| 5 | **Pavement Markings** | 2026-11-05 → 2026-10-07 (-29d) | 2026-11-09 → 2026-10-11 (-29d) |  |  |
| JDH4-02-007-CN-2310 | Pavement markings [Road 01 ] | 2026-11-05 → 2026-10-07 (-29d) | 2026-11-09 → 2026-10-11 (-29d) |  | 25d → 138d |
| 6 | **Traffic Signage** | 2026-11-10 → 2026-10-12 (-29d) | 2026-11-23 → 2026-10-25 (-29d) |  |  |
| JDH4-02-007-CN-2360 | Installation of Traffic Signs [Road 01 ] | 2026-11-10 → 2026-10-12 (-29d) | 2026-11-23 → 2026-10-25 (-29d) |  | 25d → 138d |
| 1 | **Storm Water Drainage** | 2026-02-24 → 2026-05-13 (+78d) | 2026-04-22 → 2026-08-26 (+126d) |  |  |
| 1 | **Pipe Works** | 2026-02-24 → 2026-05-13 (+78d) | 2026-04-07 → 2026-06-18 (+72d) |  |  |
| JDH4-02-007-CN-5340 | Excavation and Compaction (FDT) [Road 01 ] | 2026-02-24 → 2026-05-13 A (+78d) | 2026-03-09 → 2026-06-01 A (+84d) | 0% → 100% | 3d → none |
| JDH4-02-007-CN-5390 | Sand Bedding [Road 01 ] | 2026-03-10 → 2026-05-16 A (+67d) | 2026-03-16 → 2026-06-02 A (+78d) | 0% → 100% | 19d → none |
| JDH4-02-007-CN-5440 | Installation of GRP Pipe [Road 01 ] | 2026-03-17 → 2026-05-21 A (+65d) | 2026-03-25 → 2026-06-04 A (+71d) | 0% → 100% | 19d → none |
| JDH4-02-007-CN-5490 | Sand Cover & Warning Tape [Road 01 ] | 2026-03-26 → 2026-05-23 A (+58d) | 2026-04-01 → 2026-06-17 A (+77d) | 0% → 100% | 24d → none |
| JDH4-02-007-CN-5540 | Backfilling & Compaction [Road 01 ] | 2026-04-02 → 2026-05-24 A (+52d) | 2026-04-07 → 2026-06-18 A (+72d) | 0% → 100% | 24d → none |
| 5 | **Pipe Encasement** | 2026-03-26 → 2026-05-23 (+58d) | 2026-03-30 → 2026-06-17 (+79d) |  |  |
| JDH4-02-007-CN-5810 | Pipe Encasement Works [Road 01 ] | 2026-03-26 → 2026-05-23 A (+58d) | 2026-03-30 → 2026-06-17 A (+79d) | 0% → 100% | 19d → none |
| 2 | **Manholes** | 2026-03-31 → 2026-05-16 (+46d) | 2026-04-06 → 2026-06-13 (+68d) |  |  |
| JDH4-02-007-CN-5640 | Installation of Precast Manhole Ring [Road 01 ] | 2026-03-31 → 2026-05-16 A (+46d) | 2026-04-06 → 2026-06-13 A (+68d) | 0% → 100% | 19d → none |
| 6 | **Precast Acces Openinig** | 2026-04-07 → 2026-08-05 (+120d) | 2026-04-13 → 2026-08-26 (+135d) |  |  |

| ID | Task | Start | Finish | Complete | Total float | Predecessors | Other |
| --- | --- | --- | --- | --- | --- | --- | --- |
| JDH4-02-007-CN-5690 | Installation of Precast Access Opening [Road 01 ] | 2026-04-07 → 2026-08-05 A (+120d) | 2026-04-13 → 2026-08-26 A (+135d) | 0% → 100% | 19d → none |  |  |
| 4 | **Concrete Outfalls** | 2026-04-14 → 2026-08-06 (+114d) | 2026-04-22 → 2026-08-09 (+109d) |  |  |  |  |
| JDH4-02-007-CN-5780 | Construction of Concrete outfall structure [Road 01 ] | 2026-04-14 → 2026-08-06 A (+114d) | 2026-04-22 → 2026-08-09 A (+109d) | 0% → 100% | 19d → none |  |  |
| 2 | **Sewerage Network** | 2026-03-10 → 2026-05-10 (+61d) | 2026-05-04 → 2026-06-29 (+56d) |  |  |  |  |
| 1 | **Pipe Works** | 2026-03-10 → 2026-05-20 (+71d) | 2026-05-04 → 2026-06-18 (+45d) |  |  |  |  |
| JDH4-02-007-CN-4790 | Excavation & Compaction (FDT) [Road 01 ] | 2026-03-10 → 2026-05-20 A (+71d) | 2026-03-24 → 2026-05-24 A (+61d) | 0% → 100% | 3d → none |  |  |
| JDH4-02-007-CN-4860 | Sand Bedding [Road 01 ] | 2026-03-25 → 2026-05-25 A (+61d) | 2026-04-05 → 2026-05-28 A (+53d) | 0% → 100% | 3d → none |  |  |
| JDH4-02-007-CN-4930 | Installation of GRP Pipe [Road 01 ] | 2026-04-06 → 2026-05-30 A (+54d) | 2026-04-19 → 2026-06-04 A (+46d) | 0% → 100% | 3d → none |  |  |
| JDH4-02-007-CN-5000 | Gravity Test [Road 01 ] | 2026-04-20 → 2026-06-06 A (+47d) | 2026-04-22 → 2026-06-08 A (+47d) | 0% → 100% | 40d → none |  |  |
| JDH4-02-007-CN-5070 | Sand Cover & Warning Tape [Road 01 ] | 2026-04-23 → 2026-06-09 A (+47d) | 2026-04-27 → 2026-06-13 A (+47d) | 0% → 100% | 40d → none |  |  |
| JDH4-02-007-CN-5140 | Backfilling & Compaction [Road 01 ] | 2026-04-28 → 2026-06-13 A (+46d) | 2026-05-04 → 2026-06-18 A (+45d) | 0% → 100% | 40d → none |  |  |
| 5 | **Pipe Encasement** | 2026-04-20 → 2026-05-28 (+38d) | 2026-04-23 → 2026-06-24 (+62d) |  |  |  |  |
| JDH4-02-007-CN-5280 | Pipe Encasement Works [Road 01 ] | 2026-04-20 → 2026-05-28 A (+38d) | 2026-04-23 → 2026-06-24 A (+62d) | 0% → 100% | 3d → none |  |  |
| 2 | **Manholes** | 2026-04-25 → 2026-05-10 (+15d) | 2026-04-30 → 2026-06-29 (+60d) |  |  |  |  |
| JDH4-02-007-CN-5210 | Installation of Manholes [Road 01 ] | 2026-04-25 → 2026-05-10 A (+15d) | 2026-04-30 → 2026-06-29 A (+60d) | 0% → 100% | 3d → none |  |  |
| 3 | **TSE Network** |  | 2026-06-04 → 2026-07-02 (+28d) |  |  |  |  |
| 1 | **Pipe Works** |  | 2026-06-04 → 2026-06-30 (+26d) |  |  |  |  |
| JDH4-02-007-CN-4010R | Excavation and Compaction (FDT) [Road 01 ] | 2026-03-10 → 2026-02-07 A (-31d) | 2026-03-26 → 2026-03-23 A (-3d) | 0% → 100% | 0d → none |  | resources Depth: 0.0m - 1.5m [384.75]; Excavator [60 h]; Water Tanker [45 h]; Truck [337.5 h]; Labor [675 h]; Driver [510 h]; Eq. Operator [112.5 h] → Excavator [60 h]; Water Tanker [45 h]; Truck [337.5 h]; Labor [675 h]; Driver [510 h]; Eq. Operator [112.5 h]; Depth: 0.0m - 1.5m [384.75] |
| JDH4-02-007-CN-4080R | Sand Bedding [Road 01 ] | 2026-03-28 → 2026-02-10 A (-46d) | 2026-04-08 → 2026-03-26 A (-13d) | 0% → 100% | 0d → none |  | resources Depth: 1.51m - 2.5m [384.75]; Loader [45 h]; Truck [82.5 h]; Labor [82.5 h]; Driver [82.5 h]; Eq. Operator [82.5 h] → Loader [45 h]; Truck [82.5 h]; Labor [82.5 h]; Driver [82.5 h]; Eq. Operator [82.5 h]; Depth: 1.51m - 2.5m [384.75] |
| JDH4-02-007-CN-4150R | Installation of HDPE Pipe [Road 01 ] | 2026-04-09 → 2026-02-12 A (-56d) | 2026-04-22 → 2026-06-25 A (+64d) | 0% → 100% | 0d → none |  | resources Depth > 2.5 m [384.75]; Excavator [45 h]; Crane [90 h]; Labor [270 h]; Eq. Operator [90 h]; Plumber [90 h]; Pipe-Laying Worker [90 h] → Excavator [45 h]; Crane [90 h]; Labor [270 h]; Eq. Operator [90 h]; Plumber [90 h]; Pipe-Laying Worker [90 h]; Depth > 2.5 m [384.75] |
| JDH4-02-007-CN-4220 | Initial Pressure Test [Road 01 ] | 2026-04-23 → 2026-02-15 A (-67d) | 2026-05-04 → 2026-06-27 A (+54d) | 0% → 100% | 0d → none |  |  |
| JDH4-02-007-CN-4290R | Sand Cover & Warning [Road 01 ] | 2026-05-05 → 2026-02-16 A (-78d) | 2026-05-13 → 2026-06-29 A (+47d) | 0% → 100% | 0d → none |  | resources Depth > 1.5 m [395.01]; Labor [60 h]; Skilled Labor [60 h] → Labor [60 h]; Skilled Labor [60 h]; Depth > 1.5 m [395.01] |
| JDH4-02-007-CN-4360 | Backfilling & Compaction [Road 01 ] | 2026-05-14 → 2026-02-16 A (-87d) | 2026-05-31 → 2026-06-28 A (+28d) | 0% → 100% | 0d → none |  |  |
| JDH4-02-007-CN-4670 | Point of Connection [Road 01 ] | 2026-06-01 → 2026-04-18 A (-44d) | 2026-06-04 → 2026-06-30 A (+26d) | 0% → 100% | 0d → none |  |  |
| 2 | **Pipe Encasement** | 2026-04-23 → 2026-02-16 (-66d) | 2026-04-26 → 2026-06-29 (+64d) |  |  |  |  |
| JDH4-02-007-CN-4430 | Encasement for Pipes [Road 01 ] | 2026-04-23 → 2026-02-16 A (-66d) | 2026-04-26 → 2026-06-29 A (+64d) | 0% → 100% | 38d → none |  |  |
| 3 | **Valves** | 2026-04-27 → 2026-03-04 (-54d) | 2026-05-10 → 2026-07-02 (+53d) |  |  |  |  |
| JDH4-02-007-CN-4500 | Installation of Gate Valves [Road 01 ] | 2026-04-27 → 2026-03-04 A (-54d) | 2026-04-29 → 2026-05-06 A (+7d) | 0% → 100% | 38d → none |  |  |
| JDH4-02-007-CN-4550 | Installation of Butterfly Valves [Road 01 ] | 2026-04-30 → 2026-04-16 A (-14d) | 2026-05-03 → 2026-07-02 A (+60d) | 0% → 100% | 38d → none |  |  |
| JDH4-02-007-CN-4560 | Installation of Washout Valves [Road 01 ] | 2026-05-04 → 2026-04-16 A (-18d) | 2026-05-06 → 2026-05-07 A (+1d) | 0% → 100% | 38d → none |  |  |
| JDH4-02-007-CN-4580 | Installation of Air Valves [Road 01 ] | 2026-05-07 → 2026-04-19 A (-18d) | 2026-05-10 → 2026-05-07 A (-3d) | 0% → 100% | 38d → none |  |  |
| 4 | **Risers** | 2026-05-11 → 2026-04-15 (-26d) | 2026-05-13 → 2026-04-20 (-23d) |  |  |  |  |
| JDH4-02-007-CN-4740 | Installation of Irrigation Riser with [Road 01 ] | 2026-05-11 → 2026-04-15 A (-26d) | 2026-05-13 → 2026-04-20 A (-23d) | 0% → 100% | 38d → none |  |  |
| 4 | **Potable Network** | 2026-06-06 → 2026-02-03 (-123d) | 2026-08-27 → 2026-06-30 (-58d) |  |  |  |  |
| 1 | **Pipe Works** | 2026-06-06 → 2026-02-03 (-123d) | 2026-08-20 → 2026-06-22 (-59d) |  |  |  |  |
| JDH4-02-007-CN-3330 | Excavation and Compaction (FDT) [Road 01 ] | 2026-06-06 → 2026-02-03 A (-123d) | 2026-06-18 → 2026-04-16 A (-63d) | 0% → 100% | 0d → none |  |  |
| JDH4-02-007-CN-3470 | Installation of HDPE Pipe [Road 01 ] | 2026-07-01 → 2026-02-08 A (-143d) | 2026-07-14 → 2026-06-20 A (-24d) | 0% → 100% | 0d → none |  |  |
| JDH4-02-007-CN-3540 | Initial Pressure Test [Road 01 ] | 2026-07-15 → 2026-02-10 A (-155d) | 2026-07-25 → 2026-06-21 A (-34d) | 0% → 100% | 0d → none |  |  |
| JDH4-02-007-CN-3610 | Sand Cover & Warning Tape [Road 01 ] | 2026-07-26 → 2026-02-11 A (-165d) | 2026-08-09 → 2026-06-22 A (-48d) | 0% → 100% | 0d → none |  |  |
| JDH4-02-007-CN-3680 | Backfilling [Road 01 ] | 2026-08-10 → 2026-02-12 A (-179d) | 2026-08-20 → 2026-06-22 A (-59d) | 0% → 100% | 0d → none |  |  |
| JDH4-02-007-CN-3400 | Sand Bedding [Road 01 ] | 2026-06-20 → 2026-02-16 A (-124d) | 2026-06-30 → 2026-06-18 A (-12d) | 0% → 100% | 0d → none |  |  |
| 2 | **Pipe Encasement** | 2026-07-15 → 2026-02-11 (-154d) | 2026-07-16 → 2026-06-22 (-24d) |  |  |  |  |
| JDH4-02-007-CN-3750 | Encasement for Pipes [Road 01 ] | 2026-07-15 → 2026-02-11 A (-154d) | 2026-07-16 → 2026-06-22 A (-24d) | 0% → 100% | 20d → none |  |  |
| 3 | **Valves** | 2026-07-18 → 2026-03-25 (-115d) | 2026-08-04 → 2026-04-20 (-106d) |  |  |  |  |
| JDH4-02-007-CN-3820 | Installation of Gate Valves [Road 01 ] | 2026-07-18 → 2026-03-25 A (-115d) | 2026-07-20 → 2026-04-08 A (-103d) | 0% → 100% | 20d → none |  |  |
| JDH4-02-007-CN-3870 | Installation of Butterfly valves [Road 01 ] | 2026-07-21 → 2026-04-09 A (-103d) | 2026-07-22 → 2026-04-13 A (-100d) | 0% → 100% | 20d → none |  |  |
| JDH4-02-007-CN-3880 | Installation of Washout valves [Road 01 ] | 2026-07-23 → 2026-04-11 A (-103d) | 2026-07-28 → 2026-04-16 A (-103d) | 0% → 100% | 20d → none |  |  |
| JDH4-02-007-CN-3890 | Installation of Air valves [Road 01 ] | 2026-07-29 → 2026-04-16 A (-104d) | 2026-08-04 → 2026-04-20 A (-106d) | 0% → 100% | 20d → none |  |  |
| 4 | **Fire Hydrant** | 2026-08-22 → 2026-04-30 (-114d) | 2026-08-27 → 2026-06-30 (-58d) |  |  |  |  |
| JDH4-02-007-CN-3910 | Installation of 3-outlet fire hydrant [Road 01 ] | 2026-08-22 → 2026-04-30 A (-114d) | 2026-08-27 → 2026-06-30 A (-58d) | 0% → 100% | 0d → none |  |  |
| 5 | **Valve Chambers** | 2026-06-20 → 2026-02-18 (-122d) | 2026-08-10 → 2026-04-20 (-112d) |  |  |  |  |
| JDH4-02-007-CN-3950 | Construction of Valve Chambers [Road 01 ] | 2026-06-20 → 2026-02-18 A (-122d) | 2026-06-23 → 2026-04-15 A (-69d) | 0% → 100% | 26d → none |  |  |
| JDH4-02-007-CN-3960 | Construction of Wash out Chambers [Road 01 ] | 2026-06-24 → 2026-02-28 A (-116d) | 2026-07-04 → 2026-04-16 A (-79d) | 0% → 100% | 26d → none |  |  |
| JDH4-02-007-CN-3970 | Construction of Air Valve Chambers [Road 01 ] | 2026-07-05 → 2026-03-01 A (-126d) | 2026-07-13 → 2026-04-18 A (-86d) | 0% → 100% | 26d → none |  |  |
| JDH4-02-007-CN-4600 | Construction of Valve Chambers [Road 01 ] | 2026-07-14 → 2026-03-04 A (-132d) | 2026-07-22 → 2026-04-19 A (-94d) | 0% → 100% | 26d → none |  |  |
| JDH4-02-007-CN-4630 | Construction of Air Valve Chambers [Road 01 ] | 2026-08-02 → 2026-04-14 A (-110d) | 2026-08-10 → 2026-04-20 A (-112d) | 0% → 100% | 26d → none |  |  |
| JDH4-02-007-CN-4610 | Construction of Wash Out Valve Chambers [Road 01 ] | 2026-07-23 → 2026-04-15 A (-99d) | 2026-08-01 → 2026-04-19 A (-104d) | 0% → 100% | 26d → none |  |  |
| 6 | **Road Crossings** | 2026-07-15 → 2026-06-18 (-27d) | 2026-07-20 → 2026-06-25 (-25d) |  |  |  |  |
| JDH4-02-007-CN-3980 | Installation of HDPE road croosing [Road 01 ] | 2026-07-15 → 2026-06-18 A (-27d) | 2026-07-20 → 2026-06-25 A (-25d) | 0% → 100% | 24d → none |  |  |
| 5 | **Electrical Works** | 2026-06-01 → 2026-05-09 (-23d) | 2026-08-24 → 2026-10-03 (+40d) |  |  |  |  |
| 1 | **LV Cables** | 2026-06-01 → 2026-07-04 (+33d) | 2026-06-27 → 2026-10-03 (+98d) |  |  |  |  |
| 2 | **Low Voltage Cable** | 2026-06-01 → 2026-07-04 (+33d) | 2026-06-27 → 2026-10-03 (+98d) |  |  |  |  |
| JDH4-02-007-CN-2610 | Excavation for Low Voltage Cable [Road 01 ] | 2026-06-01 → 2026-07-04 A (+33d) | 2026-06-17 → 2026-09-24 A (+99d) | 0% → 100% | 5d → none |  |  |
| JDH4-02-007-CN-2620 | Installation of Low Voltage Cables [Road 01 ] | 2026-06-18 → 2026-07-12 A (+24d) | 2026-06-27 → 2026-10-03 A (+98d) | 0% → 100% | 27d → none |  |  |
| 3 | **Street Lighting** | 2026-06-18 → 2026-07-20 (+32d) | 2026-07-19 → 2026-08-13 (+25d) |  |  |  |  |
| JDH4-02-007-CN-2770 | Excavation for Low Voltage Cable [Road 01 ] | 2026-06-18 → 2026-07-20 A (+32d) | 2026-07-02 → 2026-08-13 A (+42d) | 0% → 100% | 5d → none |  |  |
| JDH4-02-007-CN-2850 | Installation of Low Voltage Cables [Road 01 ] | 2026-07-04 → 2026-07-26 A (+22d) | 2026-07-19 → 2026-08-13 A (+25d) | 0% → 100% | 5d → none | JDH4-02-007-CN-2770 → JDH4-02-007-CN-2770 SS+11d |  |
| 2 | **Telecommunication** | 2026-07-04 → 2026-05-09 (-56d) | 2026-08-24 → 2026-08-19 (-5d) |  |  |  |  |
| JDH4-02-007-CN-3150 | Installation Road Crossing Un R/F 6 way 50mm HDPE Pipe [Road 01 ] | 2026-07-21 → 2026-05-09 A (-73d) | 2026-08-06 → 2026-06-29 A (-38d) | 0% → 100% | 24d → none |  |  |
| JDH4-02-007-CN-3260 | Installation of Manholes [Road 01 ] | 2026-08-08 → 2026-05-09 A (-91d) | 2026-08-24 → 2026-08-19 A (-5d) | 0% → 100% | 24d → none |  |  |

| ID | Task | Start | Finish | Complete | Total float | Other |
| --- | --- | --- | --- | --- | --- | --- |
| JDH4-02-007-CN-3080 | Installation Road Crossing R/F 6 way 50mm HDPE Pipe [Road 01 ] | 2026-07-04 → 2026-05-16 A (-49d) | 2026-07-20 → 2026-08-16 A (+27d) | 0% → 100% | 24d → none |  |
| 7 | **Open Drain Channel** |  | 2026-05-19 → 2026-03-09 (-71d) |  |  |  |
| JDH4-02-007-CN-5870 | Compaction [Road 01 ] | 2026-03-29 → 2026-02-02 A (-55d) | 2026-04-25 → 2026-03-01 A (-55d) | 0% → 100% | 17d → none |  |
| JDH4-02-007-CN-5850R | Channel excavation [Road 01 ] | 2026-02-03 A | 2026-02-28 → 2026-02-08 A (-20d) | 0% → 100% | 17d → none | resources Channel excavation [5829]; Excavator [157.5 h]; Truck [157.5 h]; Compactor [45 h]; Driver [157.5 h]; Eq. Operator [157.5 h] → Excavator [157.5 h]; Truck [157.5 h]; Compactor [45 h]; Driver [157.5 h]; Eq. Operator [157.5 h]; Channel excavation [5829] |
| JDH4-02-007-CN-5860R | Backfill of the existing channel [Road 01 ] | 2026-03-01 → 2026-02-04 A (-25d) | 2026-03-28 → 2026-02-26 A (-30d) | 0% → 100% | 17d → none | resources Backfill of the existing channel [1072]; Loader [157.5 h]; Bulldozer [240 h]; Water Tanker [315 h]; Grider [315 h]; Truck [630 h]; Road Roller [315 h]; Driver [945 h]; Eq. Operator [157.5 h] → Loader [157.5 h]; Bulldozer [240 h]; Water Tanker [315 h]; Grider [315 h]; Truck [630 h]; Road Roller [315 h]; Driver [945 h]; Eq. Operator [157.5 h]; Backfill of the existing channel [1072] |
| JDH4-02-007-CN-5880 | Finished grouted riprap for side ditches [Road 01 ] | 2026-04-26 → 2026-03-04 A (-53d) | 2026-05-19 → 2026-03-09 A (-71d) | 0% → 100% | 17d → none |  |
| 1 | **Road 02** |  | 2026-12-19 → 2026-06-27 (-175d) |  |  |  |
| 7 | **Under Pass** | 2026-07-09 → 2026-02-02 (-157d) | 2026-09-17 → 2026-06-18 (-91d) |  |  |  |
| JDH4-02-007-CN-1940 | Compacted structural backfill for closing the underpass [Road 02 ] | 2026-07-09 → 2026-02-02 A (-157d) | 2026-07-25 → 2026-03-25 A (-122d) | 0% → 100% | 50d → none |  |
| JDH4-02-007-CN-2410 | RC wall and the foundation at face of underpass [Road 02 ] | 2026-08-25 → 2026-04-08 A (-139d) | 2026-09-17 → 2026-06-18 A (-91d) | 0% → 100% | 24d → none |  |
| 2 | **Sewerage Network** | 2026-03-29 → 2026-06-11 (+74d) | 2026-07-22 → 2026-06-22 (-30d) |  |  |  |
| 1 | **Pipe Works** | 2026-03-29 → 2026-06-11 (+74d) | 2026-05-04 → 2026-06-22 (+49d) |  |  |  |
| JDH4-02-007-CN-4770 | Excavation & Compaction (FDT) [Road 02 ] | 2026-03-29 → 2026-06-11 A (+74d) | 2026-04-11 → 2026-06-15 A (+65d) | 0% → 100% | 30d → none |  |
| JDH4-02-007-CN-5050 | Sand Cover & Warning Tape [Road 02 ] | 2026-04-27 → 2026-06-11 A (+45d) | 2026-05-02 → 2026-06-21 A (+50d) | 0% → 100% | 30d → none |  |
| JDH4-02-007-CN-4840 | Sand Bedding [Road 02 ] | 2026-04-12 → 2026-06-13 A (+62d) | 2026-04-22 → 2026-06-17 A (+56d) | 0% → 100% | 30d → none |  |
| JDH4-02-007-CN-4910 | Installation of GRP Pipe [Road 02 ] | 2026-04-12 → 2026-06-16 A (+65d) | 2026-04-22 → 2026-06-20 A (+59d) | 0% → 100% | 30d → none |  |
| JDH4-02-007-CN-4980 | Gravity Test [Road 02 ] | 2026-04-23 → 2026-06-21 A (+59d) | 2026-04-26 → 2026-06-22 A (+57d) | 0% → 100% | 30d → none |  |
| JDH4-02-007-CN-5120 | Backfilling & Compaction [Road 02 ] | 2026-04-27 → 2026-06-22 A (+56d) | 2026-05-04 → 2026-06-22 A (+49d) | 0% → 100% | 30d → none |  |
| 5 | **Pipe Encasement** | 2026-04-23 → 2026-06-11 (+49d) | 2026-04-30 → 2026-06-21 (+52d) |  |  |  |
| JDH4-02-007-CN-5260 | Pipe Encasement Works [Road 02 ] | 2026-04-23 → 2026-06-11 A (+49d) | 2026-04-30 → 2026-06-21 A (+52d) | 0% → 100% | 33d → none |  |
| 2 | **Manholes** | 2026-07-18 → 2026-06-11 (-37d) | 2026-07-22 → 2026-06-21 (-31d) |  |  |  |
| JDH4-02-007-CN-5190 | Installation of Manholes [Road 02 ] | 2026-07-18 → 2026-06-11 A (-37d) | 2026-07-22 → 2026-06-21 A (-31d) | 0% → 100% | 5d → none |  |
| 3 | **TSE Network** |  | 2026-10-01 → 2026-06-21 (-102d) |  |  |  |
| 1 | **Pipe Works** |  | 2026-08-23 → 2026-06-21 (-63d) |  |  |  |
| JDH4-02-007-CN-3990R | Excavation and Compaction (FDT) [Road 02 ] | 2026-05-20 → 2026-02-28 A (-81d) | 2026-06-13 → 2026-06-01 A (-12d) | 0% → 100% | 17d → none | resources Depth: 0.0m - 1.5m [131.85]; Excavator [67.5 h]; Water Tanker [37.5 h]; Truck [270 h]; Labor [540 h]; Driver [135 h]; Eq. Operator [135 h] → Excavator [67.5 h]; Water Tanker [37.5 h]; Truck [270 h]; Labor [540 h]; Driver [135 h]; Eq. Operator [135 h]; Depth: 0.0m - 1.5m [131.85] |
| JDH4-02-007-CN-4060R | Sand Bedding [Road 02 ] | 2026-06-14 → 2026-03-04 A (-102d) | 2026-06-20 → 2026-06-02 A (-18d) | 0% → 100% | 17d → none | resources Depth: 1.51m - 2.5m [131.85]; Loader [22.5 h]; Truck [45 h]; Labor [45 h]; Driver [45 h]; Eq. Operator [45 h] → Loader [22.5 h]; Truck [45 h]; Labor [45 h]; Driver [45 h]; Eq. Operator [45 h]; Depth: 1.51m - 2.5m [131.85] |
| JDH4-02-007-CN-4130R | Installation of HDPE Pipe [Road 02 ] | 2026-06-21 → 2026-03-09 A (-104d) | 2026-07-02 → 2026-06-04 A (-28d) | 0% → 100% | 17d → none | resources Depth > 2.5 m [161.15]; Excavator [82.5 h]; Crane [82.5 h]; Labor [247.5 h]; Eq. Operator [82.5 h]; Plumber [82.5 h]; Pipe-Laying Worker [82.5 h] → Excavator [82.5 h]; Crane [82.5 h]; Labor [247.5 h]; Eq. Operator [82.5 h]; Plumber [82.5 h]; Pipe-Laying Worker [82.5 h]; Depth > 2.5 m [161.15] |
| JDH4-02-007-CN-4200 | Initial Pressure Test [Road 02 ] | 2026-07-04 → 2026-03-14 A (-112d) | 2026-07-08 → 2026-06-06 A (-32d) | 0% → 100% | 17d → none |  |
| JDH4-02-007-CN-4270R | Sand Cover & Warning [Road 02 ] | 2026-07-23 → 2026-03-23 A (-122d) | 2026-07-28 → 2026-06-17 A (-41d) | 0% → 100% | 5d → none | resources Depth > 1.5 m [161.15]; Labor [37.5 h]; Skilled Labor [37.5 h] → Labor [37.5 h]; Skilled Labor [37.5 h]; Depth > 1.5 m [161.15] |
| JDH4-02-007-CN-4340 | Backfilling & Compaction [Road 02 ] | 2026-07-29 → 2026-03-29 A (-122d) | 2026-08-17 → 2026-06-21 A (-57d) | 0% → 100% | 29d → none |  |
| JDH4-02-007-CN-4650 | Point of Connection [Road 02 ] | 2026-08-18 → 2026-04-08 A (-132d) | 2026-08-23 → 2026-06-21 A (-63d) | 0% → 100% | 29d → none |  |
| 2 | **Pipe Encasement** | 2026-08-26 → 2026-03-23 (-156d) | 2026-09-06 → 2026-06-17 (-81d) |  |  |  |
| JDH4-02-007-CN-4410 | Encasement for Pipes [Road 02 ] | 2026-08-26 → 2026-03-23 A (-156d) | 2026-09-06 → 2026-06-17 A (-81d) | 0% → 100% | 29d → none |  |
| 3 | **Valves** | 2026-09-07 → 2026-03-11 (-180d) | 2026-09-24 → 2026-04-20 (-157d) |  |  |  |
| JDH4-02-007-CN-4480 | Installation of Gate Valves [Road 02 ] | 2026-09-07 → 2026-03-11 A (-180d) | 2026-09-12 → 2026-04-15 A (-150d) | 0% → 100% | 29d → none |  |
| JDH4-02-007-CN-4570 | Installation of Air Valves [Road 02 ] | 2026-09-19 → 2026-04-15 A (-157d) | 2026-09-24 → 2026-04-20 A (-157d) | 0% → 100% | 24d → none |  |
| 4 | **Risers** | 2026-09-26 → 2026-02-25 (-213d) | 2026-10-01 → 2026-04-19 (-165d) |  |  |  |
| JDH4-02-007-CN-4720 | Installation of Irrigation Riser with [Road 02 ] | 2026-09-26 → 2026-02-25 A (-213d) | 2026-10-01 → 2026-04-19 A (-165d) | 0% → 100% | 24d → none |  |
| 4 | **Potable Network** | 2026-06-28 → 2026-02-03 (-145d) | 2026-10-06 → 2026-06-27 (-101d) |  |  |  |
| 1 | **Pipe Works** | 2026-06-28 → 2026-02-03 (-145d) | 2026-09-07 → 2026-06-27 (-72d) |  |  |  |
| JDH4-02-007-CN-3310 | Excavation and Compaction (FDT) [Road 02 ] | 2026-06-28 → 2026-02-03 A (-145d) | 2026-07-13 → 2026-06-10 A (-33d) | 0% → 100% | 27d → none |  |
| JDH4-02-007-CN-3380 | Sand Bedding [Road 02 ] | 2026-07-14 → 2026-02-05 A (-159d) | 2026-07-18 → 2026-06-14 A (-34d) | 0% → 100% | 27d → none |  |
| JDH4-02-007-CN-3450 | Installation of HDPE Pipe [Road 02 ] | 2026-07-19 → 2026-02-09 A (-160d) | 2026-07-29 → 2026-06-17 A (-42d) | 0% → 100% | 27d → none |  |
| JDH4-02-007-CN-3520 | Initial Pressure Test [Road 02 ] | 2026-07-30 → 2026-02-12 A (-168d) | 2026-08-08 → 2026-06-20 A (-49d) | 0% → 100% | 27d → none |  |
| JDH4-02-007-CN-3590 | Sand Cover & Warning Tape [Road 02 ] | 2026-08-18 → 2026-02-14 A (-185d) | 2026-08-29 → 2026-06-21 A (-69d) | 0% → 100% | 19d → none |  |
| JDH4-02-007-CN-3660 | Backfilling [Road 02 ] | 2026-08-30 → 2026-02-15 A (-196d) | 2026-09-07 → 2026-06-27 A (-72d) | 0% → 100% | 19d → none |  |
| 2 | **Pipe Encasement** | 2026-09-08 → 2026-02-14 (-206d) | 2026-09-13 → 2026-06-21 (-84d) |  |  |  |
| JDH4-02-007-CN-3730 | Encasement for Pipes [Road 02 ] | 2026-09-08 → 2026-02-14 A (-206d) | 2026-09-13 → 2026-06-21 A (-84d) | 0% → 100% | 44d → none |  |
| 3 | **Valves** | 2026-09-08 → 2026-02-18 (-202d) | 2026-09-15 → 2026-03-25 (-174d) |  |  |  |
| JDH4-02-007-CN-3800 | Installation of Gate Valves [Road 02 ] | 2026-09-08 → 2026-02-18 A (-202d) | 2026-09-15 → 2026-03-25 A (-174d) | 0% → 100% | 44d → none |  |
| 5 | **Valve Chambers** | 2026-10-03 → 2026-04-15 (-171d) | 2026-10-06 → 2026-05-02 (-157d) |  |  |  |
| JDH4-02-007-CN-4620 | Construction of Air Valve Chambers [Road 02 ] | 2026-10-03 → 2026-04-15 A (-171d) | 2026-10-06 → 2026-05-02 A (-157d) | 0% → 100% | 24d → none |  |
| 5 | **Electrical Works** | 2026-10-07 → 2026-03-04 (-217d) | 2026-12-19 → 2026-05-21 (-212d) |  |  |  |
| 2 | **Telecommunication** | 2026-10-07 → 2026-03-04 (-217d) | 2026-12-19 → 2026-05-21 (-212d) |  |  |  |
| JDH4-02-007-CN-3130 | Installation Road Crossing Un R/F 6 way 50mm HDPE Pipe [Road 02 ] | 2026-11-01 → 2026-03-04 A (-242d) | 2026-11-24 → 2026-03-11 A (-258d) | 0% → 100% | 24d → none |  |
| JDH4-02-007-CN-3240 | Installation of Manholes [Road 02 ] | 2026-11-25 → 2026-03-25 A (-245d) | 2026-12-19 → 2026-05-16 A (-217d) | 0% → 100% | 24d → none |  |
| JDH4-02-007-CN-3060 | Installation Road Crossing R/F 6 way 50mm HDPE Pipe [Road 02 ] | 2026-10-07 → 2026-05-13 A (-147d) | 2026-10-31 → 2026-05-21 A (-163d) | 0% → 100% | 24d → none |  |
| 7 | **Road 10** | 2026-05-17 → 2026-05-05 (-12d) | 2027-01-16 → 2026-11-01 (-76d) |  |  |  |
| 2 | **Sewerage Network** | 2026-05-17 → 2026-07-01 (+45d) | 2026-07-06 → 2026-08-20 (+45d) |  |  |  |
| 1 | **Pipe Works** | 2026-05-17 → 2026-07-01 (+45d) | 2026-07-06 → 2026-08-11 (+36d) |  |  |  |
| JDH4-02-007-CN-4830 | Excavation & Compaction (FDT) [Road 10 ] | 2026-05-17 → 2026-07-01 A (+45d) | 2026-06-02 → 2026-07-06 A (+34d) | 0% → 100% | 8d → none |  |
| JDH4-02-007-CN-4900 | Sand Bedding [Road 10 ] | 2026-06-03 → 2026-07-07 A (+34d) | 2026-06-11 → 2026-07-15 A (+34d) | 0% → 100% | 8d → none |  |
| JDH4-02-007-CN-4970 | Installation of GRP Pipe [Road 10 ] | 2026-06-13 → 2026-07-16 A (+33d) | 2026-06-21 → 2026-07-22 A (+31d) | 0% → 100% | 8d → none |  |
| JDH4-02-007-CN-5040 | Gravity Test [Road 10 ] | 2026-06-22 → 2026-07-23 A (+31d) | 2026-06-25 → 2026-07-28 A (+33d) | 0% → 100% | 8d → none |  |
| JDH4-02-007-CN-5110 | Sand Cover & Warning Tape [Road 10 ] | 2026-06-27 → 2026-07-29 A (+32d) | 2026-06-30 → 2026-08-05 A (+36d) | 0% → 100% | 8d → none |  |
| JDH4-02-007-CN-5180 | Backfilling & Compaction [Road 10 ] | 2026-07-01 → 2026-08-06 A (+36d) | 2026-07-06 → 2026-08-11 A (+36d) | 0% → 100% | 8d → none |  |
| 5 | **Pipe Encasement** | 2026-06-22 → 2026-08-11 (+50d) | 2026-06-27 → 2026-08-18 (+52d) |  |  |  |
| JDH4-02-007-CN-5320 | Pipe Encasement Works [Road 10 ] | 2026-06-22 → 2026-08-11 A (+50d) | 2026-06-27 → 2026-08-18 A (+52d) | 0% → 100% | 46d → none |  |
| 2 | **Manholes** | 2026-06-28 → 2026-08-06 (+39d) | 2026-07-05 → 2026-08-20 (+46d) |  |  |  |
| JDH4-02-007-CN-5250 | Installation of Manholes [Road 10 ] | 2026-06-28 → 2026-08-06 A (+39d) | 2026-07-05 → 2026-08-20 A (+46d) | 0% → 100% | 46d → none |  |

| ID | Task | Start | Finish | Duration | Complete | Total float | Predecessors |
| --- | --- | --- | --- | --- | --- | --- | --- |
| 3 | **TSE Network** | 2026-07-29 → 2026-05-05 (-85d) | 2026-11-07 → 2026-06-17 (-143d) |  |  |  |  |
| 1 | **Pipe Works** | 2026-07-29 → 2026-05-05 (-85d) | 2026-11-07 → 2026-06-04 (-156d) |  |  |  |  |
| JDH4-02-007-CN-4050 | Excavation and Compaction (FDT) [Road 10 ] | 2026-07-29 → 2026-05-05 A (-85d) | 2026-08-22 → 2026-05-10 A (-104d) |  | 0% → 100% | 5d → none | JDH4-02-007-CN-5180, JDH4-02-007-CN-4270R, JDH4-02-007-CN-5120 → JDH4-02-007-CN-5180, JDH4-02-007-CN-4270R SS, JDH4-02-007-CN-5120 |
| JDH4-02-007-CN-4120 | Sand Bedding [Road 10 ] | 2026-08-29 → 2026-05-11 A (-110d) | 2026-09-21 → 2026-05-13 A (-131d) |  | 0% → 100% | 0d → none | JDH4-02-007-CN-4050, JDH4-02-007-CN-5250, JDH4-02-007-CN-5250 FF, JDH4-02-007-CN-3910, JDH4-02-007-CN-3890, JDH4-02-007-CN-3270 → JDH4-02-007-CN-4050 SS+4d, JDH4-02-007-CN-5250, JDH4-02-007-CN-5250 FF, JDH4-02-007-CN-3910 SS, JDH4-02-007-CN-3890, JDH4-02-007-CN-3270 |
| JDH4-02-007-CN-4190 | Installation of HDPE Pipe [Road 10 ] | 2026-09-22 → 2026-05-14 A (-131d) | 2026-10-15 → 2026-05-17 A (-151d) | 20d → 18d | 0% → 100% | 10d → none |  |
| JDH4-02-007-CN-4260 | Initial Pressure Test [Road 10 ] | 2026-10-17 → 2026-05-18 A (-152d) | 2026-10-22 → 2026-05-19 A (-156d) |  | 0% → 100% | 10d → none |  |
| JDH4-02-007-CN-4710 | Point of Connection [Road 10 ] | 2026-10-17 → 2026-05-20 A (-150d) | 2026-10-19 → 2026-05-20 A (-152d) |  | 0% → 100% | 23d → none |  |
| JDH4-02-007-CN-4330 | Sand Cover & Warning [Road 10 ] | 2026-10-24 → 2026-05-21 A (-156d) | 2026-11-01 → 2026-05-27 A (-158d) |  | 0% → 100% | 10d → none |  |
| JDH4-02-007-CN-4400 | Backfilling & Compaction [Road 10 ] | 2026-10-26 → 2026-05-30 A (-149d) | 2026-11-07 → 2026-06-04 A (-156d) |  | 0% → 100% | 10d → none |  |
| 2 | **Pipe Encasement** | 2026-10-17 → 2026-06-02 (-137d) | 2026-10-24 → 2026-06-17 (-129d) |  |  |  |  |
| JDH4-02-007-CN-4470 | Encasement for Pipes [Road 10 ] | 2026-10-17 → 2026-06-02 A (-137d) | 2026-10-24 → 2026-06-17 A (-129d) |  | 0% → 100% | 15d → none |  |
| 3 | **Valves** | 2026-10-17 → 2026-05-20 (-150d) | 2026-10-28 → 2026-06-04 (-146d) |  |  |  |  |
| JDH4-02-007-CN-4540 | Installation of Gate Valves [Road 10 ] | 2026-10-17 → 2026-05-20 A (-150d) | 2026-10-21 → 2026-06-04 A (-139d) |  | 0% → 100% | 15d → none |  |
| JDH4-02-007-CN-4590 | Installation of Air Valves [Road 10 ] | 2026-10-22 → 2026-05-21 A (-154d) | 2026-10-28 → 2026-06-04 A (-146d) |  | 0% → 100% | 15d → none |  |
| 4 | **Potable Network** | 2026-08-23 → 2026-06-10 (-74d) | 2026-11-08 → 2026-07-02 (-129d) |  |  |  |  |
| 1 | **Pipe Works** | 2026-08-23 → 2026-06-10 (-74d) | 2026-11-08 → 2026-06-26 (-135d) |  |  |  |  |
| JDH4-02-007-CN-3370 | Excavation and Compaction (FDT) [Road 10 ] | 2026-08-23 → 2026-06-10 A (-74d) | 2026-09-10 → 2026-06-13 A (-89d) |  | 0% → 100% | 16d → none |  |
| JDH4-02-007-CN-3440 | Sand Bedding [Road 10 ] | 2026-09-12 → 2026-06-14 A (-90d) | 2026-09-29 → 2026-06-15 A (-106d) |  | 0% → 100% | 16d → none |  |
| JDH4-02-007-CN-3510 | Installation of HDPE Pipe [Road 10 ] | 2026-09-30 → 2026-06-17 A (-105d) | 2026-10-15 → 2026-06-19 A (-118d) |  | 0% → 100% | 16d → none |  |
| JDH4-02-007-CN-3580 | Initial Pressure Test [Road 10 ] | 2026-10-17 → 2026-06-19 A (-120d) | 2026-10-21 → 2026-06-21 A (-122d) |  | 0% → 100% | 21d → none |  |
| JDH4-02-007-CN-3650 | Sand Cover & Warning Tape [Road 10 ] | 2026-10-29 → 2026-06-21 A (-130d) | 2026-11-08 → 2026-06-24 A (-137d) |  | 0% → 100% | 15d → none |  |
| JDH4-02-007-CN-3720 | Backfilling [Road 10 ] | 2026-10-29 → 2026-06-22 A (-129d) | 2026-11-08 → 2026-06-26 A (-135d) |  | 0% → 100% | 15d → none |  |
| 2 | **Pipe Encasement** | 2026-10-25 → 2026-06-21 (-126d) | 2026-10-29 → 2026-06-24 (-127d) |  |  |  |  |
| JDH4-02-007-CN-3790 | Encasement for Pipes [Road 10 ] | 2026-10-25 → 2026-06-21 A (-126d) | 2026-10-29 → 2026-06-24 A (-127d) |  | 0% → 100% | 15d → none |  |
| 3 | **Valves** | 2026-10-29 → 2026-06-27 (-124d) | 2026-11-04 → 2026-06-30 (-127d) |  |  |  |  |
| JDH4-02-007-CN-3860 | Installation of Gate Valves [Road 10 ] | 2026-10-29 → 2026-06-27 A (-124d) | 2026-11-04 → 2026-06-30 A (-127d) |  | 0% → 100% | 16d → none |  |
| 5 | **Valve Chambers** | 2026-10-31 → 2026-06-24 (-129d) | 2026-11-08 → 2026-07-02 (-129d) |  |  |  |  |
| JDH4-02-007-CN-4640 | Construction of Air Valve Chambers [Road 10 ] | 2026-10-31 → 2026-06-24 A (-129d) | 2026-11-08 → 2026-07-02 A (-129d) |  | 0% → 100% | 15d → none |  |
| 5 | **Electrical Works** | 2026-10-17 → 2026-07-04 (-105d) | 2027-01-16 → 2026-11-01 (-76d) |  |  |  |  |
| 1 | **MV & LV Cables** | 2026-10-17 → 2026-10-07 (-10d) | 2026-11-22 → 2026-11-01 (-21d) |  |  |  |  |
| 2 | **Low Voltage Cable** | 2026-10-17 → 2026-10-07 (-10d) | 2026-11-22 → 2026-11-01 (-21d) |  |  |  |  |
| JDH4-02-007-CN-2670 | Excavation for Low Voltage Cable [Road 10 ] | 2026-10-17 → 2026-10-07 (-10d) | 2026-10-28 → 2026-10-19 (-9d) |  |  | 16d → 132d |  |
| JDH4-02-007-CN-2680 | Installation of Low Voltage Cables [Road 10 ] | 2026-11-10 → 2026-10-20 (-21d) | 2026-11-22 → 2026-11-01 (-21d) |  |  | 30d → 132d |  |
| 2 | **Telecommunication** | 2026-10-29 → 2026-07-04 (-117d) | 2027-01-16 → 2026-08-21 (-148d) |  |  |  |  |
| JDH4-02-007-CN-3120 | Installation Road Crossing R/F 6 way 50mm HDPE Pipe [Road 10 ] | 2026-10-29 → 2026-07-04 A (-117d) | 2026-11-19 → 2026-08-03 A (-108d) |  | 0% → 100% | 16d → none |  |
| JDH4-02-007-CN-3190 | Installation Road Crossing Un R/F 6 way 50mm HDPE Pipe [Road 10 ] | 2026-11-24 → 2026-07-12 A (-135d) | 2026-12-12 → 2026-08-04 A (-130d) |  | 0% → 100% | 13d → none |  |
| JDH4-02-007-CN-3230 | Installation of 2 x 32 mm diameter HDPE ducts [Road 10 ] | 2026-12-16 → 2026-07-25 A (-144d) | 2027-01-04 → 2026-08-21 A (-136d) |  | 0% → 100% | 10d → none |  |
| JDH4-02-007-CN-3300 | Installation of Manholes [Road 10 ] | 2027-01-05 → 2026-07-25 A (-164d) | 2027-01-16 → 2026-08-11 A (-158d) |  | 0% → 100% | 10d → none |  |
| 8 | **Out of Zone** | 2026-10-17 → 2026-07-18 (-91d) | 2026-12-03 → 2026-10-03 (-61d) |  |  |  |  |
| 5 | **Electrical Works** | 2026-10-17 → 2026-07-18 (-91d) | 2026-12-03 → 2026-10-03 (-61d) |  |  |  |  |
| 1 | **LV Cables** | 2026-10-17 → 2026-07-18 (-91d) | 2026-12-03 → 2026-10-03 (-61d) |  |  |  |  |
| 2 | **Low Voltage Cable** | 2026-10-17 → 2026-07-18 (-91d) | 2026-12-03 → 2026-10-03 (-61d) |  |  |  |  |
| JDH4-02-007-CN-2690 | Excavation for Low Voltage Cable [Out of Zone ] | 2026-10-17 → 2026-07-18 A (-91d) | 2026-11-09 → 2026-09-30 A (-40d) |  | 0% → 100% | 37d → none |  |
| JDH4-02-007-CN-2700 | Installation of Low Voltage Cables [Out of Zone ] | 2026-11-10 → 2026-07-26 A (-107d) | 2026-12-03 → 2026-10-03 A (-61d) |  | 0% → 100% | 37d → none |  |
| 6 | **Sewage Lift Station** | 2026-09-06 → 2026-04-22 (-137d) | 2027-05-02 → 2026-12-30 (-123d) |  |  |  |  |
| 1 | **Site Works** | 2026-09-06 → 2026-05-14 (-115d) | 2026-10-24 → 2026-07-30 (-86d) |  |  |  |  |
| JDH4-02-007-CN-5910 | Excavation [Sewage Lift Station ] | 2026-09-06 → 2026-05-14 A (-115d) | 2026-09-29 → 2026-05-16 A (-136d) |  | 0% → 100% | 0d → none | JDH4-02-007-EN-1680, JDH4-02-007-EN-1690, JDH4-02-007-EN-1710, JDH4-02-007-EN-1730, JDH4-02-007-EN-1770, JDH4-02-007-EN-1700, JDH4-02-007-CN-3200, JDH4-02-007-CN-4120 SS+7d, JDH4-02-007-PR-2430, JDH4-02-007-PR-2559 → JDH4-02-007-EN-1680, JDH4-02-007-EN-1690, JDH4-02-007-EN-1710, JDH4-02-007-EN-1730, JDH4-02-007-EN-1770, JDH4-02-007-EN-1700, JDH4-02-007-CN-3200, JDH4-02-007-CN-4120 SS+2d, JDH4-02-007-PR-2430, JDH4-02-007-PR-2559 |
| JDH4-02-007-CN-5930 | Install gravel beddings [Sewage Lift Station ] | 2026-10-13 → 2026-06-06 A (-129d) | 2026-10-24 → 2026-06-08 A (-138d) |  | 0% → 100% | 0d → none |  |
| JDH4-02-007-CN-5920 | Backfilling [Sewage Lift Station ] | 2026-09-30 → 2026-06-08 A (-114d) | 2026-10-12 → 2026-07-30 A (-74d) |  | 0% → 100% | 0d → none | JDH4-02-007-CN-5910 → JDH4-02-007-CN-5910 SS+4d |
| 2 | **Concrete Works** | 2026-10-25 → 2026-05-07 (-171d) | 2026-11-24 → 2026-05-24 (-184d) |  |  |  |  |
| JDH4-02-007-CN-1010 | Lean concrete under the foundations [Sewage Lift Station ] | 2026-10-25 → 2026-05-07 A (-171d) | 2026-11-02 → 2026-05-07 A (-179d) |  | 0% → 100% | 0d → none |  |
| JDH4-02-007-CN-1020 | Footings For Sewage Lift Station [Sewage Lift Station ] | 2026-11-03 → 2026-05-09 A (-178d) | 2026-11-11 → 2026-05-09 A (-186d) |  | 0% → 100% | 0d → none |  |
| JDH4-02-007-CN-1030 | Cast concrete for trench Including Mastic sealant [Sewage Lift Station ] | 2026-11-12 → 2026-05-10 A (-186d) | 2026-11-24 → 2026-05-24 A (-184d) |  | 0% → 100% | 11d → none |  |
| 4 | **Thermal & Moisture Protection** | 2026-11-25 → 2026-05-31 (-178d) | 2026-12-06 → 2026-06-07 (-182d) |  |  |  |  |
| JDH4-02-007-CN-1050 | Install 250 micron polyethylene sheet under slab on grade and footings [Sewage Lift Station ] | 2026-11-25 → 2026-05-31 A (-178d) | 2026-11-30 → 2026-06-01 A (-182d) |  | 0% → 100% | 11d → none |  |
| JDH4-02-007-CN-1060 | Applying 2 Coats of Bituminous Paint [Sewage Lift Station ] | 2026-12-01 → 2026-06-01 A (-183d) | 2026-12-06 → 2026-06-07 A (-182d) |  | 0% → 100% | 11d → none |  |
| 3 | **Metals** | 2026-11-12 → 2026-09-26 (-47d) | 2026-11-18 → 2026-10-01 (-48d) |  |  |  |  |
| JDH4-02-007-CN-1040 | Install Stainless steel [Sewage Lift Station ] | 2026-11-12 → 2026-09-26 A (-47d) | 2026-11-18 → 2026-10-01 A (-48d) |  | 0% → 100% | 17d → none |  |
| 5 | **Mechanical Works** | 2026-11-12 → 2026-04-22 (-204d) | 2027-01-21 → 2026-10-21 (-92d) |  |  |  |  |
| 1 | **Pipes & Fittings** | 2026-11-12 → 2026-04-23 (-203d) | 2027-01-21 → 2026-09-30 (-113d) |  |  |  |  |
| JDH4-02-007-CN-1090 | Installation of Pipes & Fittings [Sewage Lift Station ] | 2026-11-12 → 2026-04-23 A (-203d) | 2026-11-28 → 2026-08-10 A (-110d) |  | 0% → 100% | 0d → none |  |
| JDH4-02-007-CN-1100 | Installation of Gate Valves [Sewage Lift Station ] | 2026-11-29 → 2026-04-23 A (-220d) | 2026-12-08 → 2026-08-18 A (-112d) |  | 0% → 100% | 9d → none |  |
| JDH4-02-007-CN-1120 | Installation of Dismantling Joints [Sewage Lift Station ] | 2026-12-09 → 2026-04-25 A (-228d) | 2026-12-17 → 2026-09-24 A (-84d) |  | 0% → 100% | 9d → none |  |
| JDH4-02-007-CN-1130 | Installation of Non Return Valve DN250 [Sewage Lift Station ] | 2026-12-19 → 2026-04-25 A (-238d) | 2026-12-28 → 2026-04-26 A (-246d) |  | 0% → 100% | 9d → none |  |
| JDH4-02-007-CN-1140 | Installation of Air Valve DN60 [Sewage Lift Station ] | 2026-12-29 → 2026-04-25 A (-248d) | 2027-01-06 → 2026-04-26 A (-255d) |  | 0% → 100% | 9d → none |  |
| JDH4-02-007-CN-1160 | Installation of Odors scrubbing system [Sewage Lift Station ] | 2027-01-14 → 2026-07-05 A (-193d) | 2027-01-21 → 2026-08-23 A (-151d) |  | 0% → 100% | 9d → none |  |
| JDH4-02-007-CN-1150 | Installation of Bauer Coupling DN150 [Sewage Lift Station ] | 2027-01-07 → 2026-09-15 A (-114d) | 2027-01-13 → 2026-09-30 A (-105d) |  | 0% → 100% | 9d → none |  |
| 2 | **Control Equipment** | 2026-11-29 → 2026-04-22 (-221d) | 2027-01-11 → 2026-09-30 (-103d) |  |  |  |  |
| JDH4-02-007-CN-1200 | Installation of Screening Container [Sewage Lift Station ] | 2026-12-26 → 2026-04-22 A (-248d) | 2027-01-03 → 2026-04-25 A (-253d) |  | 0% → 100% | 4d → none |  |
| JDH4-02-007-CN-1190 | Installation of Air Vents [Sewage Lift Station ] | 2026-12-17 → 2026-09-02 A (-106d) | 2026-12-24 → 2026-09-07 A (-108d) |  | 0% → 100% | 4d → none |  |

| ID | Task | Start | Finish | Duration | Complete | Total float | Predecessors |
| --- | --- | --- | --- | --- | --- | --- | --- |
| JDH4-02-007-CN-1180 | Installation of Manually operated davit crane (portable) [Sewage Lift Station ] | 2026-11-29 → 2026-09-03 A (-87d) | 2026-12-07 → 2026-09-07 A (-91d) |  | 0% → 100% | 0d → none |  |
| JDH4-02-007-CN-1210 | Installation of Baffle Plates [Sewage Lift Station ] | 2027-01-04 → 2026-09-23 A (-103d) | 2027-01-11 → 2026-09-30 A (-103d) |  | 0% → 100% | 4d → none |  |
| 3 | **Interface Works** | 2026-12-08 → 2026-10-07 (-62d) | 2026-12-10 → 2026-10-10 (-61d) |  |  |  |  |
| JDH4-02-007-CN-1220 | Interfacing Works [Sewage Lift Station ] | 2026-12-08 → 2026-10-07 (-62d) | 2026-12-10 → 2026-10-10 (-61d) |  |  | 0d → 101d |  |
| 4 | **Anti Water Hammer Equipment** | 2026-12-12 → 2026-10-01 (-72d) | 2026-12-15 → 2026-10-14 (-62d) |  |  |  |  |
| JDH4-02-007-CN-1230 | Installation of Anti-Water Hammer Equipment [Sewage Lift Station ] | 2026-12-12 → 2026-10-01 A (-72d) | 2026-12-15 → 2026-10-14 (-62d) |  | 0% → 20% | 14d → 119d |  |
| 5 | **Air Conditioning & Ventilation** | 2027-01-12 → 2026-09-28 (-106d) | 2027-01-18 → 2026-10-01 (-109d) |  |  |  |  |
| JDH4-02-007-CN-1240 | Installation of Air Conditioning [Sewage Lift Station ] | 2027-01-12 → 2026-09-28 A (-106d) | 2027-01-18 → 2026-10-01 A (-109d) |  | 0% → 100% | 4d → none |  |
| 6 | **Fuel System** | 2026-12-16 → 2026-08-15 (-123d) | 2027-01-04 → 2026-08-25 (-132d) |  |  |  |  |
| JDH4-02-007-CN-1260 | Installation of Bulk Fuel storage tank, 2500 Liter (7 Days of storage) [Sewage Lift Station ] | 2026-12-16 → 2026-08-15 A (-123d) | 2026-12-21 → 2026-08-25 A (-118d) |  | 0% → 100% | 14d → none |  |
| JDH4-02-007-CN-1270 | Installation of Fuel pump set , 1 duty and 1 standby, Capacity 100 L/h, Head 1 Bar [Sewage Lift Station ] | 2026-12-22 → 2026-08-15 A (-129d) | 2026-12-28 → 2026-08-25 A (-125d) |  | 0% → 100% | 14d → none |  |
| JDH4-02-007-CN-1280 | Pipes and Fitting Works [Sewage Lift Station ] | 2026-12-29 → 2026-08-15 A (-136d) | 2027-01-04 → 2026-08-25 A (-132d) |  | 0% → 100% | 19d → none |  |
| 7 | **Fire Fighting** | 2026-12-29 → 2026-09-23 (-97d) | 2027-01-21 → 2026-09-26 (-117d) |  |  |  |  |
| JDH4-02-007-CN-1290 | Installation of Fire fighting for electrical room which has a volume of about 62 m3 [Sewage Lift Station ] | 2026-12-29 → 2026-09-23 A (-97d) | 2027-01-03 → 2026-09-26 A (-99d) |  | 0% → 100% | 14d → none |  |
| JDH4-02-007-CN-1300 | Installation of Foam type - wheeled type 20 Gallon capacity-ref. FE-01 [Sewage Lift Station ] | 2027-01-19 → 2026-09-24 A (-117d) | 2027-01-21 → 2026-09-26 A (-117d) |  | 0% → 100% | 4d → none |  |
| 8 | **Pumps** | 2027-01-04 → 2026-09-23 (-103d) | 2027-01-10 → 2026-10-21 (-81d) |  |  |  |  |
| JDH4-02-007-CN-1070 | Installation of Submersible pump [Sewage Lift Station ] | 2027-01-04 → 2026-09-23 A (-103d) | 2027-01-10 → 2026-10-21 (-81d) |  | 0% → 15% | 14d → 119d |  |
| 6 | **Electrical Works** | 2026-12-12 → 2026-09-01 (-102d) | 2027-05-02 → 2026-12-30 (-123d) |  |  |  |  |
| 1 | **Main Distribution Board** | 2026-12-12 → 2026-10-11 (-62d) | 2026-12-27 → 2026-10-26 (-62d) |  |  |  |  |
| JDH4-02-007-CN-1310 | Installation of Main Distribution Board/MCC Panel [Sewage Lift Station ] | 2026-12-12 → 2026-10-11 (-62d) | 2026-12-19 → 2026-10-18 (-62d) |  |  | 0d → 101d |  |
| JDH4-02-007-CN-1320 | Installation of Panel Board [Sewage Lift Station ] | 2026-12-20 → 2026-10-19 (-62d) | 2026-12-27 → 2026-10-26 (-62d) |  |  | 15d → 104d |  |
| 2 | **Local Control Panel** | 2026-12-20 → 2026-10-19 (-62d) | 2027-01-27 → 2026-11-16 (-72d) |  |  |  |  |
| JDH4-02-007-CN-1330 | Installation of MCP-LP-01 [Sewage Lift Station ] | 2026-12-20 → 2026-10-19 (-62d) | 2026-12-30 → 2026-10-29 (-62d) |  |  | 0d → 101d |  |
| JDH4-02-007-CN-1350 | Installation of MCP-LP-02 [Sewage Lift Station ] | 2026-12-31 → 2026-10-31 (-61d) | 2027-01-05 → 2026-11-04 (-62d) |  |  | 13d → 102d |  |
| JDH4-02-007-CN-1360 | Installation of OD-CP [Sewage Lift Station ] | 2027-01-06 → 2026-11-05 (-62d) | 2027-01-11 → 2026-11-10 (-62d) |  |  | 13d → 102d |  |
| JDH4-02-007-CN-1370 | Installation of FP-CP [Sewage Lift Station ] | 2027-01-23 → 2026-11-11 (-73d) | 2027-01-27 → 2026-11-16 (-72d) |  |  | 4d → 102d |  |
| 3 | **Diesel Generator** | 2026-12-31 → 2026-09-15 (-107d) | 2027-01-11 → 2026-09-17 (-116d) |  |  |  |  |
| JDH4-02-007-CN-1380 | Installation of Standby Diesel Generator [Sewage Lift Station ] | 2026-12-31 → 2026-09-15 A (-107d) | 2027-01-11 → 2026-09-17 A (-116d) |  | 0% → 100% | 0d → none |  |
| 4 | **Power Factor Correction Capacitor Bank** | 2027-01-12 → 2026-10-31 (-73d) | 2027-01-19 → 2026-11-07 (-73d) |  |  |  |  |
| JDH4-02-007-CN-1390 | Installation of Power Factor Correction Capacitor Bank [Sewage Lift Station ] | 2027-01-12 → 2026-10-31 (-73d) | 2027-01-19 → 2026-11-07 (-73d) |  |  | 2d → 101d |  |
| 5 | **Low-Voltage Electrical Power Conductors and Cables** | 2027-01-20 → 2026-11-08 (-73d) | 2027-01-30 → 2026-11-17 (-74d) |  |  |  |  |
| JDH4-02-007-CN-1410 | Installation of Low Voltage Cables [Sewage Lift Station ] | 2027-01-20 → 2026-11-08 (-73d) | 2027-01-30 → 2026-11-17 (-74d) |  |  | 2d → 101d |  |
| 6 | **Wiring Devices** | 2027-01-31 → 2026-09-02 (-151d) | 2027-02-04 → 2026-09-07 (-150d) |  |  |  |  |
| JDH4-02-007-CN-1420 | Installation of Wiring Devices [Sewage Lift Station ] | 2027-01-31 → 2026-09-02 A (-151d) | 2027-02-04 → 2026-09-07 A (-150d) |  | 0% → 100% | 2d → none |  |
| 7 | **Enclosed Switches and Circuit Breakers** | 2027-01-12 → 2026-10-31 (-73d) | 2027-01-17 → 2026-11-04 (-74d) |  |  |  |  |
| JDH4-02-007-CN-1440 | Installation of Enclosed Switches and Circuit Breakers [Sewage Lift Station ] | 2027-01-12 → 2026-10-31 (-73d) | 2027-01-17 → 2026-11-04 (-74d) |  |  | 0d → 106d |  |
| 8 | **Lighting** | 2027-01-18 → 2026-09-08 (-132d) | 2027-01-24 → 2026-09-29 (-117d) |  |  |  |  |
| JDH4-02-007-CN-1450 | Installation of Lightings [Sewage Lift Station ] | 2027-01-18 → 2026-09-08 A (-132d) | 2027-01-24 → 2026-09-29 A (-117d) |  | 0% → 100% | 0d → none |  |
| 9 | **Grounding and Bonding for Electrical Systems** | 2027-01-25 → 2026-11-05 (-81d) | 2027-01-31 → 2026-11-11 (-81d) |  |  |  |  |
| JDH4-02-007-CN-1460 | Installation of Grounding Links [Sewage Lift Station ] | 2027-01-25 → 2026-11-05 (-81d) | 2027-01-31 → 2026-11-11 (-81d) |  |  | 0d → 106d |  |
| 10 | **Electrical Manholes** | 2027-02-01 → 2026-09-02 (-152d) | 2027-02-07 → 2026-09-08 (-152d) |  |  |  |  |
| JDH4-02-007-CN-1470 | Installation of Electrical Manholes [Sewage Lift Station ] | 2027-02-01 → 2026-09-02 A (-152d) | 2027-02-07 → 2026-09-08 A (-152d) |  | 0% → 100% | 0d → none |  |
| 11 | **ICT (Data& telephone System)** | 2027-02-08 → 2026-11-18 (-82d) | 2027-03-14 → 2026-12-17 (-87d) |  |  |  |  |
| JDH4-02-007-CN-1490 | Installation of IDF Cabinet 9U (for data &Telephone) [Sewage Lift Station ] | 2027-02-08 → 2026-11-18 (-82d) | 2027-02-18 → 2026-11-29 (-81d) |  |  | 0d → 101d |  |
| JDH4-02-007-CN-1500 | Installationof Single data/Telephone outlet [Sewage Lift Station ] | 2027-02-20 → 2026-11-30 (-82d) | 2027-02-25 → 2026-12-05 (-82d) |  |  | 0d → 101d |  |
| JDH4-02-007-CN-1510 | Installation of Data Switch (24 Port) [Sewage Lift Station ] | 2027-02-27 → 2026-12-06 (-83d) | 2027-03-03 → 2026-12-10 (-83d) |  |  | 42d → 112d |  |
| JDH4-02-007-CN-1520 | Installation of Fiber optic cable (12 Core single mode). [Sewage Lift Station ] | 2027-03-04 → 2026-12-12 (-82d) | 2027-03-14 → 2026-12-17 (-87d) |  |  | 42d → 112d |  |
| 12 | **Security System (CCTV System)** | 2027-02-27 → 2026-09-20 (-160d) | 2027-03-16 → 2026-09-27 (-170d) |  |  |  |  |
| JDH4-02-007-CN-1530 | Installation of 5.0 Megapixel, Fixed bullet IP CCTV camera [Sewage Lift Station ] | 2027-02-27 → 2026-09-20 A (-160d) | 2027-03-16 → 2026-09-27 A (-170d) |  | 0% → 100% | 0d → none |  |
| 13 | **Duct Bank and Handhole For Telecom Network** | 2027-03-17 → 2026-09-01 (-197d) | 2027-04-05 → 2026-10-03 (-184d) |  |  |  |  |
| JDH4-02-007-CN-1540 | Installation of 2 x 50mm HDPE ducts Bank [Sewage Lift Station ] | 2027-03-17 → 2026-09-01 A (-197d) | 2027-03-30 → 2026-10-03 A (-178d) |  | 0% → 100% | 0d → none |  |
| JDH4-02-007-CN-1550 | Installation of Handholes (800x800x800 mm) [Sewage Lift Station ] | 2027-03-31 → 2026-09-01 A (-211d) | 2027-04-05 → 2026-10-03 A (-184d) |  | 0% → 100% | 23d → none |  |
| 14 | **Programmable Logic Controllers** | 2027-03-31 → 2026-12-06 (-115d) | 2027-04-15 → 2026-12-21 (-115d) |  |  |  |  |
| JDH4-02-007-CN-1570 | Installation of Programmable Logic Controller [Sewage Lift Station ] | 2027-03-31 → 2026-12-06 (-115d) | 2027-04-15 → 2026-12-21 (-115d) |  |  | 0d → 101d |  |
| 15 | **Process Control Wiring** | 2027-04-17 → 2026-12-22 (-116d) | 2027-04-20 → 2026-12-26 (-115d) |  |  |  |  |
| JDH4-02-007-CN-1580 | Installation of Process Control Wiring [Sewage Lift Station ] | 2027-04-17 → 2026-12-22 (-116d) | 2027-04-20 → 2026-12-26 (-115d) |  |  | 0d → 101d |  |
| 16 | **Instrumentation for Process Systems** | 2027-04-21 → 2026-09-17 (-216d) | 2027-05-02 → 2026-12-30 (-123d) |  |  |  |  |
| JDH4-02-007-CN-1600 | Installation of Process System [Sewage Lift Station ] | 2027-04-21 → 2026-09-17 A (-216d) | 2027-05-02 → 2026-12-30 (-123d) | 10d → 8d | 0% → 28% | 0d → 101d | JDH4-02-007-CN-1580, JDH4-02-007-PR-3030 → JDH4-02-007-CN-1580 SS, JDH4-02-007-PR-3030 |
| 7 | **Fence Work** | 2027-02-27 → 2026-09-23 (-157d) | 2027-04-12 → 2026-09-27 (-197d) |  |  |  |  |
| JDH4-02-007-CN-5890 | Installation of Chain Link Fence [Sewage Lift Station ] | 2027-02-27 → 2026-09-23 A (-157d) | 2027-03-24 → 2026-09-26 A (-179d) |  | 0% → 100% | 17d → none |  |
| JDH4-02-007-CN-5900 | Installation of Pedestrian Gate [Sewage Lift Station ] | 2027-03-25 → 2026-09-26 A (-180d) | 2027-04-12 → 2026-09-27 A (-197d) |  | 0% → 100% | 17d → none |  |
| 4 | **MV Cable Works** | 2027-01-02 → 2026-05-13 (-234d) | 2027-05-06 → 2026-12-16 (-141d) |  |  |  |  |
| 1 | **Medium Voltage Cable Road 8** | 2027-01-02 → 2026-05-13 (-234d) | 2027-03-06 → 2026-08-09 (-209d) |  |  |  |  |
| JDH4-02-007-CN-2480 | Installation of Duct banks [Road 08 ] | 2027-01-17 → 2026-05-13 A (-249d) | 2027-02-09 → 2026-06-21 A (-233d) |  | 0% → 100% | 0d → none |  |
| JDH4-02-007-CN-2420 | Excavation for Trench [Road 08 ] | 2027-01-02 → 2026-06-06 A (-210d) | 2027-01-16 → 2026-06-30 A (-200d) |  | 0% → 100% | 0d → none |  |
| JDH4-02-007-CN-2540 | Installation of Medium Voltage Cables [Road 08 ] | 2027-02-10 → 2026-07-05 A (-220d) | 2027-03-06 → 2026-08-09 A (-209d) |  | 0% → 100% | 0d → none |  |
| 3 | **Medium Voltage Cable Road 7** | 2027-01-07 → 2026-05-13 (-239d) | 2027-03-29 → 2026-08-02 (-239d) |  |  |  |  |
| JDH4-02-007-CN-2500 | Installation of Duct banks [Road 07-N ] | 2027-01-20 → 2026-05-13 A (-252d) | 2027-02-13 → 2026-05-26 A (-263d) |  | 0% → 100% | 11d → none |  |
| JDH4-02-007-CN-2440 | Excavation for Trench [Road 07-N ] | 2027-01-07 → 2026-06-18 A (-203d) | 2027-01-19 → 2026-07-27 A (-176d) |  | 0% → 100% | 11d → none |  |
| JDH4-02-007-CN-2560 | Installation of Medium Voltage Cables [Road 07-N ] | 2027-03-07 → 2026-07-28 A (-222d) | 2027-03-29 → 2026-08-02 A (-239d) |  | 0% → 100% | 0d → none |  |

| ID | Task | Start | Finish | Duration | Complete | Total float | Predecessors |
| --- | --- | --- | --- | --- | --- | --- | --- |
| 2 | **Medium Voltage Cable Road 1** | 2027-01-20 → 2026-07-25 (-179d) | 2027-03-30 → 2026-08-18 (-224d) |  |  |  |  |
| JDH4-02-007-CN-2430 | Excavation for Trench [Road 01 ] | 2027-01-20 → 2026-07-25 A (-179d) | 2027-02-13 → 2026-08-18 A (-179d) |  | 0% → 100% | 11d → none |  |
| JDH4-02-007-CN-2490 | Installation of Duct banks [Road 01 ] | 2027-02-14 → 2026-07-25 A (-204d) | 2027-03-14 → 2026-08-18 A (-208d) |  | 0% → 100% | 11d → none |  |
| JDH4-02-007-CN-2550 | Installation of Medium Voltage Cables [Road 01 ] | 2027-03-15 → 2026-07-28 A (-230d) | 2027-03-30 → 2026-08-18 A (-224d) |  | 0% → 100% | 11d → none |  |
| 4 | **Medium Voltage Cable Road 10** | 2027-01-26 → 2026-08-10 (-169d) | 2027-04-25 → 2026-08-23 (-245d) |  |  |  |  |
| JDH4-02-007-CN-2460 | Excavation for Trench [Road 10 ] | 2027-01-26 → 2026-08-10 A (-169d) | 2027-02-13 → 2026-08-23 A (-174d) |  | 0% → 100% | 17d → none |  |
| JDH4-02-007-CN-2520 | Installation of Duct banks [Road 10 ] | 2027-02-14 → 2026-08-10 A (-188d) | 2027-03-14 → 2026-08-23 A (-203d) |  | 0% → 100% | 25d → none |  |
| JDH4-02-007-CN-2580 | Installation of Medium Voltage Cables [Road 10 ] | 2027-04-01 → 2026-08-10 A (-234d) | 2027-04-25 → 2026-08-23 A (-245d) | 21d → 14d | 0% → 100% | 10d → none | JDH4-02-007-CN-2520, JDH4-02-007-CN-2560, JDH4-02-007-CN-2550, JDH4-02-007-CN-2300 → JDH4-02-007-CN-2520, JDH4-02-007-CN-2560, JDH4-02-007-CN-2550, JDH4-02-007-CN-2300 SS |
| 5 | **Medium Voltage Cable Out of Zone** | 2027-03-07 → 2026-06-20 (-260d) | 2027-05-06 → 2026-12-16 (-141d) |  |  |  |  |
| JDH4-02-007-CN-2470 | Excavation for Trench [Out of Zone ] | 2027-03-07 → 2026-06-20 A (-260d) | 2027-04-03 → 2026-12-10 (-114d) |  | 0% → 90% | 0d → 117d |  |
| JDH4-02-007-CN-2530 | Installation of Duct banks [Out of Zone ] | 2027-04-04 → 2026-07-25 A (-253d) | 2027-04-21 → 2026-12-14 (-128d) |  | 0% → 90% | 0d → 117d |  |
| JDH4-02-007-CN-2590 | Installation of Medium Voltage Cables [Out of Zone ] | 2027-04-22 → 2026-08-03 A (-262d) | 2027-05-06 → 2026-12-16 (-141d) |  | 0% → 90% | 0d → 117d |  |
| 8 | **Plot Backfilling 2** | 2027-01-02 → 2026-06-28 (-188d) | 2027-02-06 → 2026-10-19 (-110d) |  |  |  |  |
| JDH4-02-007-CN-1860 | Plots backfilling Stage 5 [Plots ] | 2027-01-02 → 2026-06-28 A (-188d) | 2027-01-13 → 2026-09-26 A (-109d) |  | 0% → 100% | 0d → none |  |
| JDH4-02-007-CN-1870 | Plots backfilling Stage 6 [Plots ] | 2027-01-14 → 2026-07-25 A (-173d) | 2027-01-25 → 2026-10-13 (-104d) |  | 0% → 70% | 0d → 162.5d |  |
| JDH4-02-007-CN-1880 | Plots backfilling Stage 7 [Plots ] | 2027-01-26 → 2026-07-30 A (-180d) | 2027-02-06 → 2026-10-19 (-110d) |  | 0% → 60% | 0d → 162.5d |  |
| 5 | **Additional Works** | 2027-01-26 → 2026-04-15 (-286d) | 2027-04-24 → 2026-10-25 (-181d) |  |  |  |  |
| JDH4-02-007-CN-1740 | Earth Work | 2027-01-26 → 2026-04-15 A (-286d) | 2027-02-18 → 2026-10-03 A (-138d) |  | 0% → 100% | 0d → none |  |
| JDH4-02-007-CN-5940 | Utilities Work | 2027-02-20 → 2026-05-16 A (-280d) | 2027-03-24 → 2026-09-17 A (-188d) |  | 0% → 100% | 0d → none |  |
| JDH4-02-007-CN-5960 | Road Work | 2027-03-27 → 2026-05-16 A (-315d) | 2027-04-24 → 2026-10-19 (-187d) |  | 0% → 85% | 0d → 162.5d |  |
| JDH4-02-007-CN-5950 | Electrical Works | 2027-03-25 → 2026-06-28 A (-270d) | 2027-04-22 → 2026-10-25 (-179d) |  | 0% → 80% | 0d → 162.5d |  |
| 8 | **Testing & Commissioning** | 2026-07-12 → 2026-06-01 (-41d) | 2027-05-05 → 2027-01-03 (-122d) |  |  |  |  |
| JDH4-02-007-TC-1020 | Test for Sanitary Sewerage | 2026-07-12 → 2026-06-01 A (-41d) | 2026-07-14 → 2026-07-08 A (-6d) |  | 0% → 100% | 4d → none |  |
| JDH4-02-007-TC-1000 | Test for Potable Water Network | 2026-11-09 → 2026-06-02 A (-160d) | 2026-11-11 → 2026-08-18 A (-85d) |  | 0% → 100% | 15d → none |  |
| JDH4-02-007-TC-1060 | Test for Road Works | 2027-03-30 → 2026-06-09 A (-294d) | 2027-04-01 → 2026-11-22 (-130d) |  | 0% → 40% | 19d → 133d |  |
| JDH4-02-007-TC-1030 | Test for Stormwater Utilities | 2026-11-26 → 2026-06-09 A (-170d) | 2026-11-29 → 2026-07-25 A (-127d) |  | 0% → 100% | 38d → none |  |
| JDH4-02-007-TC-1010 | Test for TSE Network | 2026-11-08 → 2026-06-10 A (-151d) | 2026-11-10 → 2026-08-12 A (-90d) |  | 0% → 100% | 10d → none |  |
| JDH4-02-007-TC-1050 | Test for Sewage Lift Station | 2027-05-03 → 2026-06-17 A (-320d) | 2027-05-05 → 2027-01-03 (-122d) |  | 0% → 15% | 0d → 101d |  |
| JDH4-02-007-TC-1040 | Test for Electrical Network | 2026-12-20 → 2026-09-08 A (-103d) | 2026-12-22 → 2026-11-22 (-30d) |  | 0% → 20% | 24d → 117d |  |
| 7 | **Project Hand Over & Close-out** | 2026-07-15 → 2026-07-14 (-1d) | 2027-05-23 → 2027-01-16 (-127d) |  |  |  |  |
| 1 | **As-Built DWGs** | 2026-07-15 → 2026-07-14 (-1d) | 2027-05-23 → 2027-01-16 (-127d) |  |  |  |  |
| 1 | **As-Built DWGs Submittal** | 2026-07-15 → 2026-07-14 (-1d) | 2027-05-11 → 2027-01-09 (-122d) |  |  |  |  |
| JDH4-02-007-AB-1020 | As-Built DWGs Submittal for Sanitary Sewerage | 2026-07-15 → 2026-07-14 A (-1d) | 2026-07-18 → 2026-08-12 A (+25d) |  | 0% → 100% | 4d → none |  |
| JDH4-02-007-AB-1030 | As-Built DWGs Submittal for Stormwater Utilities | 2026-12-01 → 2026-08-06 A (-117d) | 2026-12-06 → 2026-08-20 A (-108d) |  | 0% → 100% | 37d → none |  |
| JDH4-02-007-AB-1010 | As-Built DWGs Submittal for TSE Network | 2026-11-11 → 2026-08-12 A (-91d) | 2026-11-16 → 2026-08-17 A (-91d) |  | 0% → 100% | 10d → none |  |
| JDH4-02-007-AB-1000 | As-Built DWGs Submittal for Potable Water Network | 2026-11-12 → 2026-08-13 A (-91d) | 2026-11-17 → 2026-08-19 A (-90d) |  | 0% → 100% | 15d → none |  |
| JDH4-02-007-AB-1040 | As-Built DWGs Submittal for Electrical Network | 2026-12-23 → 2026-11-23 (-30d) | 2026-12-28 → 2026-11-28 (-30d) |  |  | 24d → 117d |  |
| JDH4-02-007-AB-1060 | As-Built DWGs Submittal for Road Works | 2027-04-25 → 2026-11-23 (-153d) | 2027-04-29 → 2026-11-28 (-152d) |  |  | 0d → 133d |  |
| JDH4-02-007-AB-1050 | As-Built DWGs Submittal for Sewage Lift Station | 2027-05-06 → 2027-01-04 (-122d) | 2027-05-11 → 2027-01-09 (-122d) |  |  | 0d → 101d |  |
| 2 | **As-Built DWGs Approval** | 2026-07-19 → 2026-08-13 (+25d) | 2027-05-23 → 2027-01-16 (-127d) |  |  |  |  |
| JDH4-02-007-AB-1090 | As- Built DWGs Approval for Sanitary Sewerage | 2026-07-19 → 2026-08-13 A (+25d) | 2026-07-22 → 2026-08-26 A (+35d) |  | 0% → 100% | 4d → none |  |
| JDH4-02-007-AB-1080 | As- Built DWGs Approval for TSE Network | 2026-11-17 → 2026-08-18 A (-91d) | 2026-11-23 → 2026-08-29 A (-86d) |  | 0% → 100% | 10d → none |  |
| JDH4-02-007-AB-1070 | As- Built DWGs Approval for Potable Water Network | 2026-11-18 → 2026-08-20 A (-90d) | 2026-11-21 → 2026-09-05 A (-77d) |  | 0% → 100% | 15d → none |  |
| JDH4-02-007-AB-1100 | As- Built DWGs Approval for Stormwater Utilities | 2026-12-07 → 2026-08-20 A (-109d) | 2026-12-13 → 2026-09-06 A (-98d) |  | 0% → 100% | 37d → none |  |
| JDH4-02-007-AB-1110 | As- Built DWGs Approval for Electrical Network | 2026-12-29 → 2026-11-29 (-30d) | 2027-01-04 → 2026-12-05 (-30d) |  |  | 24d → 117d |  |
| JDH4-02-007-AB-1130 | As- Built DWGs Approval for Road Works | 2027-05-01 → 2026-11-29 (-153d) | 2027-05-06 → 2026-12-05 (-152d) |  |  | 0d → 133d |  |
| JDH4-02-007-AB-1120 | As- Built DWGs Approval for Sewage Lift Station | 2027-05-12 → 2027-01-10 (-122d) | 2027-05-23 → 2027-01-16 (-127d) |  |  | 0d → 101d |  |
| 2 | **Demobilization** | 2027-05-08 → 2026-12-17 (-142d) | 2027-05-23 → 2026-12-31 (-143d) |  |  |  |  |
| JDH4-02-007-DM-1000 | Demobilization of Manpower | 2027-05-08 → 2026-12-17 (-142d) | 2027-05-12 → 2026-12-22 (-141d) |  |  | 0d → 117d |  |
| JDH4-02-007-DM-1010 | Removal of Equipment from Site | 2027-05-08 → 2026-12-17 (-142d) | 2027-05-12 → 2026-12-22 (-141d) |  |  | 0d → 117d | JDH4-02-007-AB-1110, JDH4-02-007-AB-1070, JDH4-02-007-AB-1080, JDH4-02-007-AB-1090, JDH4-02-007-AB-1100, JDH4-02-007-AB-1130, JDH4-02-007-CN-2590 → JDH4-02-007-AB-1110, JDH4-02-007-AB-1070, JDH4-02-007-AB-1080, JDH4-02-007-AB-1090, JDH4-02-007-AB-1100, JDH4-02-007-AB-1130 SS, JDH4-02-007-CN-2590 |
| JDH4-02-007-DM-1020 | Site Clean Up | 2027-05-08 → 2026-12-17 (-142d) | 2027-05-12 → 2026-12-22 (-141d) |  |  | 0d → 117d | JDH4-02-007-AB-1110, JDH4-02-007-AB-1070, JDH4-02-007-AB-1080, JDH4-02-007-AB-1090, JDH4-02-007-AB-1100, JDH4-02-007-AB-1130, JDH4-02-007-CN-2590 → JDH4-02-007-AB-1110, JDH4-02-007-AB-1070, JDH4-02-007-AB-1080, JDH4-02-007-AB-1090, JDH4-02-007-AB-1100, JDH4-02-007-AB-1130 SS, JDH4-02-007-CN-2590 |
| JDH4-02-007-DM-1030 | Removal of Site Offices and Structures | 2027-05-08 → 2026-12-17 (-142d) | 2027-05-12 → 2026-12-22 (-141d) |  |  | 0d → 117d | JDH4-02-007-AB-1110, JDH4-02-007-AB-1070, JDH4-02-007-AB-1080, JDH4-02-007-AB-1090, JDH4-02-007-AB-1100, JDH4-02-007-AB-1130, JDH4-02-007-CN-2530, JDH4-02-007-CN-2590 → JDH4-02-007-AB-1110, JDH4-02-007-AB-1070, JDH4-02-007-AB-1080, JDH4-02-007-AB-1090, JDH4-02-007-AB-1100, JDH4-02-007-AB-1130 SS, JDH4-02-007-CN-2530, JDH4-02-007-CN-2590 |
| JDH4-02-007-DM-1040 | Restoration of Ground Surfaces | 2027-05-13 → 2026-12-27 (-137d) | 2027-05-23 → 2026-12-31 (-143d) |  |  | 0d → 114d |  |

## Version 3 (data date 2026-10-13, saved 2026-10-12, file 02. JHD4-02-007-ENJ-WPR-047-13-10-2026 Update Ver 22.12.xer)

Note of the change: Weekly folders named by the Thursday the week ends on: a report dated after one Thursday up to the next goes in the next Thursday's folder (26-Oct → W05 - 29-Oct-2026); all weeks moved accordingly, W00 removed

Last finish 2027-01-16 → 2027-01-19 (+3d). Complete tasks 1164 → 1173.

Changed:

| ID | Task | Start | Finish | Complete | Total float |
| --- | --- | --- | --- | --- | --- |
| 1 | **Key Milestones** |  | 2027-01-16 → 2027-01-19 (+3d) |  |  |
| 1 | **General Milestone** |  | 2027-01-16 → 2027-01-19 (+3d) |  |  |
| JDH4-02-007-MS-1010 | Project Completion Date | 2027-01-16 → 2027-01-19 (+3d) | 2027-01-16 → 2027-01-19 (+3d) |  | 101d → 98d |
| 2 | **Contractual Milestone** |  | 2026-12-31 → 2027-01-04 (+4d) |  |  |
| 2 | **Construction** |  | 2026-12-31 → 2027-01-04 (+4d) |  |  |
| JDH4-02-007-MS-1050 | Completion of Earthworks & Site Grading For Plots | 2026-10-06 → 2026-10-13 (+7d) | 2026-10-06 → 2026-10-13 (+7d) |  | 101d → 98d |
| JDH4-02-007-MS-1070 | Completion of Road Works | 2026-10-06 → 2026-10-13 (+7d) | 2026-10-06 → 2026-10-13 (+7d) |  | 157d → 161d |
| JDH4-02-007-MS-1100 | Completion of Electrical Networks | 2026-12-05 → 2026-11-17 (-18d) | 2026-12-05 → 2026-11-17 (-18d) |  | 117d → 142d |
| JDH4-02-007-MS-1110 | Completion of Entire Project | 2026-12-31 → 2027-01-04 (+4d) | 2026-12-31 → 2027-01-04 (+4d) |  | 114d → 111d |
| 5 | **Construction** |  | 2026-12-30 → 2027-01-03 (+4d) |  |  |
| 3 | **Roads** |  | 2026-11-18 → 2026-11-01 (-17d) |  |  |
| 3 | **Road 01** |  | 2026-11-18 → 2026-11-01 (-17d) |  |  |
| 6 | **Road Works (Roundabout)** |  | 2026-11-18 → 2026-11-01 (-17d) |  |  |
| 7 | **Finishing Works** | 2026-10-07 → 2026-09-23 (-14d) | 2026-11-18 → 2026-11-01 (-17d) |  |  |
| 1 | **Asphalt Wearing Course** |  | 2026-11-04 → 2026-10-12 (-23d) |  |  |
| JDH4-02-007-CN-2110 | Tack Coat (RC2) [Road 01 ] | 2026-10-07 A | 2026-10-18 → 2026-10-08 A (-10d) | 0% → 100% | 117d → none |
| JDH4-02-007-CN-2160 | Bituminous concrete wearing course [Road 01 ] | 2026-10-19 → 2026-10-08 A (-11d) | 2026-11-04 → 2026-10-12 A (-23d) | 0% → 100% | 117d → none |
| 3 | **Precast Concrete Curb** | 2026-11-05 → 2026-09-23 (-43d) | 2026-11-14 → 2026-10-06 (-39d) |  |  |
| JDH4-02-007-CN-2210 | Installation of Precast Concrete curb [Road 01 ] | 2026-11-05 → 2026-09-23 A (-43d) | 2026-11-14 → 2026-10-06 A (-39d) | 0% → 100% | 117d → none |
| 4 | **Precast Interlocking block pavers** | 2026-11-15 → 2026-09-23 (-53d) | 2026-11-18 → 2026-10-18 (-31d) |  |  |
| JDH4-02-007-CN-2260 | Installation of Interlocking block pavers for sidewalk/footpath [Road 01 ] | 2026-11-15 → 2026-09-23 A (-53d) | 2026-11-18 → 2026-10-18 (-31d) | 0% → 80% | 117d → 154d |
| 5 | **Pavement Markings** | 2026-10-07 → 2026-10-14 (+7d) | 2026-10-11 → 2026-10-18 (+7d) |  |  |
| JDH4-02-007-CN-2310 | Pavement markings [Road 01 ] | 2026-10-07 → 2026-10-14 (+7d) | 2026-10-11 → 2026-10-18 (+7d) |  | 138d → 142d |
| 6 | **Traffic Signage** | 2026-10-12 → 2026-10-19 (+7d) | 2026-10-25 → 2026-11-01 (+7d) |  |  |
| JDH4-02-007-CN-2360 | Installation of Traffic Signs [Road 01 ] | 2026-10-12 → 2026-10-19 (+7d) | 2026-10-25 → 2026-11-01 (+7d) |  | 138d → 142d |
| 7 | **Road 10** |  | 2026-11-01 → 2026-10-03 (-29d) |  |  |
| 5 | **Electrical Works** |  | 2026-11-01 → 2026-10-03 (-29d) |  |  |
| 1 | **MV & LV Cables** | 2026-10-07 → 2026-09-16 (-21d) | 2026-11-01 → 2026-10-03 (-29d) |  |  |
| 2 | **Low Voltage Cable** | 2026-10-07 → 2026-09-16 (-21d) | 2026-11-01 → 2026-10-03 (-29d) |  |  |
| JDH4-02-007-CN-2670 | Excavation for Low Voltage Cable [Road 10 ] | 2026-10-07 → 2026-09-16 A (-21d) | 2026-10-19 → 2026-09-24 A (-25d) | 0% → 100% | 132d → none |
| JDH4-02-007-CN-2680 | Installation of Low Voltage Cables [Road 10 ] | 2026-10-20 → 2026-09-23 A (-27d) | 2026-11-01 → 2026-10-03 A (-29d) | 0% → 100% | 132d → none |
| 6 | **Sewage Lift Station** |  | 2026-12-30 → 2027-01-03 (+4d) |  |  |
| 5 | **Mechanical Works** |  | 2026-10-21 → 2026-10-25 (+4d) |  |  |
| 3 | **Interface Works** | 2026-10-07 → 2026-09-02 (-35d) | 2026-10-10 → 2026-09-23 (-17d) |  |  |
| JDH4-02-007-CN-1220 | Interfacing Works [Sewage Lift Station ] | 2026-10-07 → 2026-09-02 A (-35d) | 2026-10-10 → 2026-09-23 A (-17d) | 0% → 100% | 101d → none |
| 4 | **Anti Water Hammer Equipment** |  | 2026-10-14 → 2026-10-18 (+4d) |  |  |
| JDH4-02-007-CN-1230 | Installation of Anti-Water Hammer Equipment [Sewage Lift Station ] |  | 2026-10-14 → 2026-10-18 (+4d) | 20% → 60% | 119d → 116d |
| 8 | **Pumps** |  | 2026-10-21 → 2026-10-25 (+4d) |  |  |
| JDH4-02-007-CN-1070 | Installation of Submersible pump [Sewage Lift Station ] |  | 2026-10-21 → 2026-10-25 (+4d) |  | 119d → 116d |
| 6 | **Electrical Works** |  | 2026-12-30 → 2027-01-03 (+4d) |  |  |
| 1 | **Main Distribution Board** | 2026-10-11 → 2026-10-03 (-8d) | 2026-10-26 → 2026-10-29 (+3d) |  |  |
| JDH4-02-007-CN-1310 | Installation of Main Distribution Board/MCC Panel [Sewage Lift Station ] | 2026-10-11 → 2026-10-03 A (-8d) | 2026-10-18 → 2026-10-21 (+3d) | 0% → 50% | 101d → 98d |
| JDH4-02-007-CN-1320 | Installation of Panel Board [Sewage Lift Station ] | 2026-10-19 → 2026-10-03 A (-16d) | 2026-10-26 → 2026-10-29 (+3d) | 0% → 50% | 104d → 101d |
| 2 | **Local Control Panel** | 2026-10-19 → 2026-10-04 (-15d) | 2026-11-16 → 2026-11-14 (-2d) |  |  |
| JDH4-02-007-CN-1330 | Installation of MCP-LP-01 [Sewage Lift Station ] | 2026-10-19 → 2026-10-04 A (-15d) | 2026-10-29 → 2026-11-02 (+4d) | 0% → 50% | 101d → 98d |
| JDH4-02-007-CN-1350 | Installation of MCP-LP-02 [Sewage Lift Station ] | 2026-10-31 → 2026-10-04 A (-27d) | 2026-11-04 → 2026-11-08 (+4d) | 0% → 50% | 102d → 104d |
| JDH4-02-007-CN-1360 | Installation of OD-CP [Sewage Lift Station ] | 2026-11-05 → 2026-10-04 A (-32d) | 2026-11-10 → 2026-11-09 (-1d) | 0% → 50% | 102d → 104d |
| JDH4-02-007-CN-1370 | Installation of FP-CP [Sewage Lift Station ] | 2026-11-11 → 2026-10-04 A (-38d) | 2026-11-16 → 2026-11-14 (-2d) | 0% → 50% | 102d → 104d |
| 4 | **Power Factor Correction Capacitor Bank** | 2026-10-31 → 2026-10-05 (-26d) | 2026-11-07 → 2026-11-10 (+3d) |  |  |
| JDH4-02-007-CN-1390 | Installation of Power Factor Correction Capacitor Bank [Sewage Lift Station ] | 2026-10-31 → 2026-10-05 A (-26d) | 2026-11-07 → 2026-11-10 (+3d) | 0% → 50% | 101d → 98d |
| 5 | **Low-Voltage Electrical Power Conductors and Cables** | 2026-11-08 → 2026-09-29 (-40d) | 2026-11-17 → 2026-11-21 (+4d) |  |  |
| JDH4-02-007-CN-1410 | Installation of Low Voltage Cables [Sewage Lift Station ] | 2026-11-08 → 2026-09-29 A (-40d) | 2026-11-17 → 2026-11-21 (+4d) | 0% → 30% | 101d → 98d |
| 7 | **Enclosed Switches and Circuit Breakers** | 2026-10-31 → 2026-11-03 (+3d) | 2026-11-04 → 2026-11-08 (+4d) |  |  |
| JDH4-02-007-CN-1440 | Installation of Enclosed Switches and Circuit Breakers [Sewage Lift Station ] | 2026-10-31 → 2026-11-03 (+3d) | 2026-11-04 → 2026-11-08 (+4d) |  | 106d → 103d |
| 9 | **Grounding and Bonding for Electrical Systems** | 2026-11-05 → 2026-11-09 (+4d) | 2026-11-11 → 2026-11-15 (+4d) |  |  |
| JDH4-02-007-CN-1460 | Installation of Grounding Links [Sewage Lift Station ] | 2026-11-05 → 2026-11-09 (+4d) | 2026-11-11 → 2026-11-15 (+4d) |  | 106d → 103d |
| 11 | **ICT (Data& telephone System)** | 2026-11-18 → 2026-10-05 (-44d) | 2026-12-17 → 2026-12-21 (+4d) |  |  |
| JDH4-02-007-CN-1490 | Installation of IDF Cabinet 9U (for data &Telephone) [Sewage Lift Station ] | 2026-11-18 → 2026-10-05 A (-44d) | 2026-11-29 → 2026-12-02 (+3d) | 0% → 50% | 101d → 98d |
| JDH4-02-007-CN-1500 | Installationof Single data/Telephone outlet [Sewage Lift Station ] | 2026-11-30 → 2026-12-03 (+3d) | 2026-12-05 → 2026-12-08 (+3d) |  | 101d → 98d |
| JDH4-02-007-CN-1510 | Installation of Data Switch (24 Port) [Sewage Lift Station ] | 2026-12-06 → 2026-12-09 (+3d) | 2026-12-10 → 2026-12-14 (+4d) |  | 112d → 109d |
| JDH4-02-007-CN-1520 | Installation of Fiber optic cable (12 Core single mode). [Sewage Lift Station ] | 2026-12-12 → 2026-12-15 (+3d) | 2026-12-17 → 2026-12-21 (+4d) |  | 112d → 109d |
| 14 | **Programmable Logic Controllers** | 2026-12-06 → 2026-10-04 (-63d) | 2026-12-21 → 2026-12-24 (+3d) |  |  |
| JDH4-02-007-CN-1570 | Installation of Programmable Logic Controller [Sewage Lift Station ] | 2026-12-06 → 2026-10-04 A (-63d) | 2026-12-21 → 2026-12-24 (+3d) | 0% → 30% | 101d → 98d |
| 15 | **Process Control Wiring** | 2026-12-22 → 2026-12-26 (+4d) | 2026-12-26 → 2026-12-29 (+3d) |  |  |
| JDH4-02-007-CN-1580 | Installation of Process Control Wiring [Sewage Lift Station ] | 2026-12-22 → 2026-12-26 (+4d) | 2026-12-26 → 2026-12-29 (+3d) |  | 101d → 98d |
| 16 | **Instrumentation for Process Systems** |  | 2026-12-30 → 2027-01-03 (+4d) |  |  |
| JDH4-02-007-CN-1600 | Installation of Process System [Sewage Lift Station ] |  | 2026-12-30 → 2027-01-03 (+4d) | 28% → 30% | 101d → 98d |
| 4 | **MV Cable Works** |  | 2026-12-16 → 2026-10-13 (-64d) |  |  |
| 5 | **Medium Voltage Cable Out of Zone** |  | 2026-12-16 → 2026-10-13 (-64d) |  |  |
| JDH4-02-007-CN-2470 | Excavation for Trench [Out of Zone ] |  | 2026-12-10 → 2026-10-03 A (-68d) | 90% → 100% | 117d → none |

| ID | Task | Start | Finish | Complete | Total float |
| --- | --- | --- | --- | --- | --- |
| JDH4-02-007-CN-2530 | Installation of Duct banks [Out of Zone ] |  | 2026-12-14 → 2026-10-07 A (-68d) | 90% → 100% | 117d → none |
| JDH4-02-007-CN-2590 | Installation of Medium Voltage Cables [Out of Zone ] |  | 2026-12-16 → 2026-10-13 A (-64d) | 90% → 100% | 117d → none |
| 8 | **Plot Backfilling 2** |  | 2026-10-19 → 2026-10-26 (+7d) |  |  |
| JDH4-02-007-CN-1870 | Plots backfilling Stage 6 [Plots ] |  | 2026-10-13 → 2026-10-20 (+7d) | 70% → 85% | 162.5d → 156.5d |
| JDH4-02-007-CN-1880 | Plots backfilling Stage 7 [Plots ] |  | 2026-10-19 → 2026-10-26 (+7d) |  | 162.5d → 156.5d |
| 5 | **Additional Works** |  | 2026-10-25 → 2026-11-01 (+7d) |  |  |
| JDH4-02-007-CN-5960 | Road Work |  | 2026-10-19 → 2026-10-26 (+7d) |  | 162.5d → 156.5d |
| JDH4-02-007-CN-5950 | Electrical Works |  | 2026-10-25 → 2026-11-01 (+7d) | 80% → 85% | 162.5d → 156.5d |
| 8 | **Testing & Commissioning** |  | 2027-01-03 → 2027-01-06 (+3d) |  |  |
| JDH4-02-007-TC-1060 | Test for Road Works |  | 2026-11-22 → 2026-11-04 (-18d) | 40% → 55% | 133d → 148d |
| JDH4-02-007-TC-1050 | Test for Sewage Lift Station |  | 2027-01-03 → 2027-01-06 (+3d) | 15% → 20% | 101d → 98d |
| JDH4-02-007-TC-1040 | Test for Electrical Network |  | 2026-11-22 → 2026-11-04 (-18d) |  | 117d → 142d |
| 7 | **Project Hand Over & Close-out** |  | 2027-01-16 → 2027-01-19 (+3d) |  |  |
| 1 | **As-Built DWGs** |  | 2027-01-16 → 2027-01-19 (+3d) |  |  |
| 1 | **As-Built DWGs Submittal** |  | 2027-01-09 → 2027-01-12 (+3d) |  |  |
| JDH4-02-007-AB-1040 | As-Built DWGs Submittal for Electrical Network | 2026-11-23 → 2026-11-05 (-18d) | 2026-11-28 → 2026-11-10 (-18d) |  | 117d → 142d |
| JDH4-02-007-AB-1060 | As-Built DWGs Submittal for Road Works | 2026-11-23 → 2026-11-05 (-18d) | 2026-11-28 → 2026-11-10 (-18d) |  | 133d → 148d |
| JDH4-02-007-AB-1050 | As-Built DWGs Submittal for Sewage Lift Station | 2027-01-04 → 2027-01-07 (+3d) | 2027-01-09 → 2027-01-12 (+3d) |  | 101d → 98d |
| 2 | **As-Built DWGs Approval** |  | 2027-01-16 → 2027-01-19 (+3d) |  |  |
| JDH4-02-007-AB-1110 | As- Built DWGs Approval for Electrical Network | 2026-11-29 → 2026-11-11 (-18d) | 2026-12-05 → 2026-11-17 (-18d) |  | 117d → 142d |
| JDH4-02-007-AB-1130 | As- Built DWGs Approval for Road Works | 2026-11-29 → 2026-11-11 (-18d) | 2026-12-05 → 2026-11-17 (-18d) |  | 133d → 148d |
| JDH4-02-007-AB-1120 | As- Built DWGs Approval for Sewage Lift Station | 2027-01-10 → 2027-01-13 (+3d) | 2027-01-16 → 2027-01-19 (+3d) |  | 101d → 98d |
| 2 | **Demobilization** | 2026-12-17 → 2026-11-18 (-29d) | 2026-12-31 → 2027-01-04 (+4d) |  |  |
| JDH4-02-007-DM-1000 | Demobilization of Manpower | 2026-12-17 → 2026-11-18 (-29d) | 2026-12-22 → 2026-11-23 (-29d) |  | 117d → 142d |
| JDH4-02-007-DM-1010 | Removal of Equipment from Site | 2026-12-17 → 2026-11-18 (-29d) | 2026-12-22 → 2026-11-23 (-29d) |  | 117d → 142d |
| JDH4-02-007-DM-1020 | Site Clean Up | 2026-12-17 → 2026-11-18 (-29d) | 2026-12-22 → 2026-11-23 (-29d) |  | 117d → 142d |
| JDH4-02-007-DM-1030 | Removal of Site Offices and Structures | 2026-12-17 → 2026-11-18 (-29d) | 2026-12-22 → 2026-11-23 (-29d) |  | 117d → 142d |
| JDH4-02-007-DM-1040 | Restoration of Ground Surfaces | 2026-12-27 → 2026-12-30 (+3d) | 2026-12-31 → 2027-01-04 (+4d) |  | 114d → 111d |

## Version 4 (data date 2026-10-20, saved 2026-10-20, file 02. JHD4-02-007-ENJ-WPR-048-20-10-2026 Update Ver 22.12.xer)

Note of the change: Name weekly folders by the Thursday each week starts on (W01 - 01-Oct-2026 … W10 - 03-Dec-2026); tidy step keeps uploads in place

Last finish 2027-01-19 → 2027-01-14 (-5d). Complete tasks 1173 → 1176.

Changed:

| ID | Task | Start | Finish | Complete | Total float |
| --- | --- | --- | --- | --- | --- |
| 1 | **Key Milestones** |  | 2027-01-19 → 2027-01-14 (-5d) |  |  |
| 1 | **General Milestone** |  | 2027-01-19 → 2027-01-14 (-5d) |  |  |
| JDH4-02-007-MS-1010 | Project Completion Date | 2027-01-19 → 2027-01-14 (-5d) | 2027-01-19 → 2027-01-14 (-5d) |  | 98d → 102d |
| 2 | **Contractual Milestone** |  | 2027-01-04 → 2026-12-30 (-5d) |  |  |
| 2 | **Construction** |  | 2027-01-04 → 2026-12-30 (-5d) |  |  |
| JDH4-02-007-MS-1050 | Completion of Earthworks & Site Grading For Plots | 2026-10-13 → 2026-10-20 (+7d) | 2026-10-13 → 2026-10-20 (+7d) |  | 98d → 102d |
| JDH4-02-007-MS-1070 | Completion of Road Works | 2026-10-13 → 2026-10-20 (+7d) | 2026-10-13 → 2026-10-20 (+7d) |  | 161d → 155d |
| JDH4-02-007-MS-1100 | Completion of Electrical Networks | 2026-11-17 → 2026-11-19 (+2d) | 2026-11-17 → 2026-11-19 (+2d) |  | 142d → 140d |
| JDH4-02-007-MS-1110 | Completion of Entire Project | 2027-01-04 → 2026-12-30 (-5d) | 2027-01-04 → 2026-12-30 (-5d) |  | 111d → 115d |
| 5 | **Construction** |  | 2027-01-03 → 2026-12-29 (-5d) |  |  |
| 3 | **Roads** |  | 2026-11-01 → 2026-11-03 (+2d) |  |  |
| 3 | **Road 01** |  | 2026-11-01 → 2026-11-03 (+2d) |  |  |
| 6 | **Road Works (Roundabout)** |  | 2026-11-01 → 2026-11-03 (+2d) |  |  |
| 7 | **Finishing Works** |  | 2026-11-01 → 2026-11-03 (+2d) |  |  |
| 4 | **Precast Interlocking block pavers** |  | 2026-10-18 → 2026-09-24 (-24d) |  |  |
| JDH4-02-007-CN-2260 | Installation of Interlocking block pavers for sidewalk/footpath [Road 01 ] |  | 2026-10-18 → 2026-09-24 A (-24d) | 80% → 100% | 154d → none |
| 5 | **Pavement Markings** | 2026-10-14 → 2026-10-17 (+3d) | 2026-10-18 → 2026-10-19 (+1d) |  |  |
| JDH4-02-007-CN-2310 | Pavement markings [Road 01 ] | 2026-10-14 → 2026-10-17 A (+3d) | 2026-10-18 → 2026-10-19 A (+1d) | 0% → 100% | 142d → none |
| 6 | **Traffic Signage** |  | 2026-11-01 → 2026-11-03 (+2d) |  |  |
| JDH4-02-007-CN-2360 | Installation of Traffic Signs [Road 01 ] | 2026-10-19 A | 2026-11-01 → 2026-11-03 (+2d) | 0% → 30% | 142d → 140d |
| 6 | **Sewage Lift Station** |  | 2027-01-03 → 2026-12-29 (-5d) |  |  |
| 5 | **Mechanical Works** |  | 2026-10-25 → 2026-11-01 (+7d) |  |  |
| 4 | **Anti Water Hammer Equipment** |  | 2026-10-18 → 2026-10-25 (+7d) |  |  |
| JDH4-02-007-CN-1230 | Installation of Anti-Water Hammer Equipment [Sewage Lift Station ] |  | 2026-10-18 → 2026-10-25 (+7d) | 60% → 80% | 116d → 120d |
| 8 | **Pumps** |  | 2026-10-25 → 2026-11-01 (+7d) |  |  |
| JDH4-02-007-CN-1070 | Installation of Submersible pump [Sewage Lift Station ] |  | 2026-10-25 → 2026-11-01 (+7d) | 15% → 25% | 116d → 120d |
| 6 | **Electrical Works** |  | 2027-01-03 → 2026-12-29 (-5d) |  |  |
| 1 | **Main Distribution Board** |  | 2026-10-29 → 2026-11-05 (+7d) |  |  |
| JDH4-02-007-CN-1310 | Installation of Main Distribution Board/MCC Panel [Sewage Lift Station ] |  | 2026-10-21 → 2026-10-28 (+7d) |  | 98d → 102d |
| JDH4-02-007-CN-1320 | Installation of Panel Board [Sewage Lift Station ] |  | 2026-10-29 → 2026-11-05 (+7d) |  | 101d → 105d |
| 2 | **Local Control Panel** |  | 2026-11-14 → 2026-11-21 (+7d) |  |  |
| JDH4-02-007-CN-1330 | Installation of MCP-LP-01 [Sewage Lift Station ] |  | 2026-11-02 → 2026-11-09 (+7d) |  | 98d → 102d |
| JDH4-02-007-CN-1350 | Installation of MCP-LP-02 [Sewage Lift Station ] |  | 2026-11-08 → 2026-11-15 (+7d) |  | 104d → 108d |
| JDH4-02-007-CN-1360 | Installation of OD-CP [Sewage Lift Station ] |  | 2026-11-09 → 2026-11-16 (+7d) |  | 104d → 108d |
| JDH4-02-007-CN-1370 | Installation of FP-CP [Sewage Lift Station ] |  | 2026-11-14 → 2026-11-21 (+7d) |  | 104d → 108d |
| 4 | **Power Factor Correction Capacitor Bank** |  | 2026-11-10 → 2026-11-17 (+7d) |  |  |
| JDH4-02-007-CN-1390 | Installation of Power Factor Correction Capacitor Bank [Sewage Lift Station ] |  | 2026-11-10 → 2026-11-17 (+7d) |  | 98d → 102d |
| 5 | **Low-Voltage Electrical Power Conductors and Cables** |  | 2026-11-21 → 2026-11-28 (+7d) |  |  |
| JDH4-02-007-CN-1410 | Installation of Low Voltage Cables [Sewage Lift Station ] |  | 2026-11-21 → 2026-11-28 (+7d) | 30% → 50% | 98d → 102d |
| 7 | **Enclosed Switches and Circuit Breakers** | 2026-11-03 → 2026-10-14 (-20d) | 2026-11-08 → 2026-11-15 (+7d) |  |  |
| JDH4-02-007-CN-1440 | Installation of Enclosed Switches and Circuit Breakers [Sewage Lift Station ] | 2026-11-03 → 2026-10-14 A (-20d) | 2026-11-08 → 2026-11-15 (+7d) | 0% → 57% | 103d → 107d |
| 9 | **Grounding and Bonding for Electrical Systems** | 2026-11-09 → 2026-11-16 (+7d) | 2026-11-15 → 2026-11-22 (+7d) |  |  |
| JDH4-02-007-CN-1460 | Installation of Grounding Links [Sewage Lift Station ] | 2026-11-09 → 2026-11-16 (+7d) | 2026-11-15 → 2026-11-22 (+7d) |  | 103d → 107d |
| 11 | **ICT (Data& telephone System)** |  | 2026-12-21 → 2026-12-16 (-5d) |  |  |
| JDH4-02-007-CN-1490 | Installation of IDF Cabinet 9U (for data &Telephone) [Sewage Lift Station ] |  | 2026-12-02 → 2026-10-18 A (-45d) | 50% → 100% | 98d → none |
| JDH4-02-007-CN-1500 | Installationof Single data/Telephone outlet [Sewage Lift Station ] | 2026-12-03 → 2026-11-29 (-4d) | 2026-12-08 → 2026-12-03 (-5d) |  | 98d → 102d |
| JDH4-02-007-CN-1510 | Installation of Data Switch (24 Port) [Sewage Lift Station ] | 2026-12-09 → 2026-12-05 (-4d) | 2026-12-14 → 2026-12-09 (-5d) |  | 109d → 113d |
| JDH4-02-007-CN-1520 | Installation of Fiber optic cable (12 Core single mode). [Sewage Lift Station ] | 2026-12-15 → 2026-12-10 (-5d) | 2026-12-21 → 2026-12-16 (-5d) |  | 109d → 113d |
| 14 | **Programmable Logic Controllers** |  | 2026-12-24 → 2026-12-20 (-4d) |  |  |
| JDH4-02-007-CN-1570 | Installation of Programmable Logic Controller [Sewage Lift Station ] |  | 2026-12-24 → 2026-12-20 (-4d) | 30% → 50% | 98d → 102d |
| 15 | **Process Control Wiring** | 2026-12-26 → 2026-10-18 (-69d) | 2026-12-29 → 2026-12-24 (-5d) |  |  |
| JDH4-02-007-CN-1580 | Installation of Process Control Wiring [Sewage Lift Station ] | 2026-12-26 → 2026-10-18 A (-69d) | 2026-12-29 → 2026-12-24 (-5d) | 0% → 40% | 98d → 102d |
| 16 | **Instrumentation for Process Systems** |  | 2027-01-03 → 2026-12-29 (-5d) |  |  |
| JDH4-02-007-CN-1600 | Installation of Process System [Sewage Lift Station ] |  | 2027-01-03 → 2026-12-29 (-5d) | 30% → 50% | 98d → 102d |
| 8 | **Plot Backfilling 2** |  | 2026-10-26 → 2026-11-02 (+7d) |  |  |
| JDH4-02-007-CN-1870 | Plots backfilling Stage 6 [Plots ] |  | 2026-10-20 → 2026-10-27 (+7d) | 85% → 90% | 156.5d → 150.5d |
| JDH4-02-007-CN-1880 | Plots backfilling Stage 7 [Plots ] |  | 2026-10-26 → 2026-11-02 (+7d) | 60% → 75% | 156.5d → 150.5d |
| 5 | **Additional Works** |  | 2026-11-01 → 2026-11-08 (+7d) |  |  |
| JDH4-02-007-CN-5960 | Road Work |  | 2026-10-26 → 2026-11-02 (+7d) | 85% → 90% | 156.5d → 150.5d |
| JDH4-02-007-CN-5950 | Electrical Works |  | 2026-11-01 → 2026-11-08 (+7d) | 85% → 95% | 156.5d → 150.5d |
| 8 | **Testing & Commissioning** |  | 2027-01-06 → 2027-01-02 (-4d) |  |  |
| JDH4-02-007-TC-1060 | Test for Road Works |  | 2026-11-04 → 2026-11-07 (+3d) | 55% → 80% | 148d → 146d |
| JDH4-02-007-TC-1050 | Test for Sewage Lift Station |  | 2027-01-06 → 2027-01-02 (-4d) |  | 98d → 102d |
| JDH4-02-007-TC-1040 | Test for Electrical Network |  | 2026-11-04 → 2026-11-07 (+3d) | 20% → 30% | 142d → 140d |
| 7 | **Project Hand Over & Close-out** |  | 2027-01-19 → 2027-01-14 (-5d) |  |  |
| 1 | **As-Built DWGs** |  | 2027-01-19 → 2027-01-14 (-5d) |  |  |
| 1 | **As-Built DWGs Submittal** |  | 2027-01-12 → 2027-01-07 (-5d) |  |  |
| JDH4-02-007-AB-1040 | As-Built DWGs Submittal for Electrical Network | 2026-11-05 → 2026-10-14 A (-22d) | 2026-11-10 → 2026-11-12 (+2d) | 0% → 35% | 142d → 140d |
| JDH4-02-007-AB-1060 | As-Built DWGs Submittal for Road Works | 2026-11-05 → 2026-10-14 A (-22d) | 2026-11-10 → 2026-11-12 (+2d) | 0% → 35% | 148d → 146d |
| JDH4-02-007-AB-1050 | As-Built DWGs Submittal for Sewage Lift Station | 2027-01-07 → 2027-01-03 (-4d) | 2027-01-12 → 2027-01-07 (-5d) |  | 98d → 102d |

| ID | Task | Start | Finish | Total float |
| --- | --- | --- | --- | --- |
| 2 | **As-Built DWGs Approval** |  | 2027-01-19 → 2027-01-14 (-5d) |  |
| JDH4-02-007-AB-1110 | As- Built DWGs Approval for Electrical Network | 2026-11-11 → 2026-11-14 (+3d) | 2026-11-17 → 2026-11-19 (+2d) | 142d → 140d |
| JDH4-02-007-AB-1130 | As- Built DWGs Approval for Road Works | 2026-11-11 → 2026-11-14 (+3d) | 2026-11-17 → 2026-11-19 (+2d) | 148d → 146d |
| JDH4-02-007-AB-1120 | As- Built DWGs Approval for Sewage Lift Station | 2027-01-13 → 2027-01-09 (-4d) | 2027-01-19 → 2027-01-14 (-5d) | 98d → 102d |
| 2 | **Demobilization** | 2026-11-18 → 2026-11-21 (+3d) | 2027-01-04 → 2026-12-30 (-5d) |  |
| JDH4-02-007-DM-1000 | Demobilization of Manpower | 2026-11-18 → 2026-11-21 (+3d) | 2026-11-23 → 2026-11-25 (+2d) | 142d → 140d |
| JDH4-02-007-DM-1010 | Removal of Equipment from Site | 2026-11-18 → 2026-11-21 (+3d) | 2026-11-23 → 2026-11-25 (+2d) | 142d → 140d |
| JDH4-02-007-DM-1020 | Site Clean Up | 2026-11-18 → 2026-11-21 (+3d) | 2026-11-23 → 2026-11-25 (+2d) | 142d → 140d |
| JDH4-02-007-DM-1030 | Removal of Site Offices and Structures | 2026-11-18 → 2026-11-21 (+3d) | 2026-11-23 → 2026-11-25 (+2d) | 142d → 140d |
| JDH4-02-007-DM-1040 | Restoration of Ground Surfaces | 2026-12-30 → 2026-12-26 (-4d) | 2027-01-04 → 2026-12-30 (-5d) | 111d → 115d |

## Version 5 (data date 2026-10-27, saved 2026-10-27, file 02. JHD4-02-007-ENJ-WPR-049-27-10-2026 Update Ver 22.12.xer)

Note of the change: Weekly folders named by the Thursday the week ends on: a report dated after one Thursday up to the next goes in the next Thursday's folder (26-Oct → W05 - 29-Oct-2026); all weeks moved accordingly, W00 removed

Last finish 2027-01-14 → 2026-12-27 (-18d). Complete tasks 1176 → 1182.

Changed:

| ID | Task | Start | Finish | Complete | Total float | Predecessors |
| --- | --- | --- | --- | --- | --- | --- |
| 1 | **Key Milestones** |  | 2027-01-14 → 2026-12-27 (-18d) |  |  |  |
| 1 | **General Milestone** |  | 2027-01-14 → 2026-12-27 (-18d) |  |  |  |
| JDH4-02-007-MS-1010 | Project Completion Date | 2027-01-14 → 2026-12-27 (-18d) | 2027-01-14 → 2026-12-27 (-18d) |  | 102d → 118d |  |
| 2 | **Contractual Milestone** |  | 2026-12-30 → 2026-12-27 (-3d) |  |  |  |
| 2 | **Construction** |  | 2026-12-30 → 2026-12-27 (-3d) |  |  |  |
| JDH4-02-007-MS-1050 | Completion of Earthworks & Site Grading For Plots | 2026-10-20 → 2026-10-27 (+7d) | 2026-10-20 → 2026-10-27 (+7d) |  | 102d → 118d |  |
| JDH4-02-007-MS-1070 | Completion of Road Works | 2026-10-20 → 2026-10-27 (+7d) | 2026-10-20 → 2026-10-27 (+7d) |  | 155d → 154d |  |
| JDH4-02-007-MS-1100 | Completion of Electrical Networks | 2026-11-19 → 2026-11-03 (-16d) | 2026-11-19 → 2026-11-03 (-16d) |  | 140d → 154d |  |
| JDH4-02-007-MS-1110 | Completion of Entire Project | 2026-12-30 → 2026-12-27 (-3d) | 2026-12-30 → 2026-12-27 (-3d) |  | 115d → 118d |  |
| 5 | **Construction** |  | 2026-12-29 → 2026-12-21 (-8d) |  |  |  |
| 3 | **Roads** |  | 2026-11-03 → 2026-10-27 (-7d) |  |  |  |
| 3 | **Road 01** |  | 2026-11-03 → 2026-10-27 (-7d) |  |  |  |
| 6 | **Road Works (Roundabout)** |  | 2026-11-03 → 2026-10-27 (-7d) |  |  |  |
| 7 | **Finishing Works** |  | 2026-11-03 → 2026-10-27 (-7d) |  |  |  |
| 6 | **Traffic Signage** |  | 2026-11-03 → 2026-10-27 (-7d) |  |  |  |
| JDH4-02-007-CN-2360 | Installation of Traffic Signs [Road 01 ] |  | 2026-11-03 → 2026-10-27 A (-7d) | 30% → 100% | 140d → none |  |
| 6 | **Sewage Lift Station** |  | 2026-12-29 → 2026-12-21 (-8d) |  |  |  |
| 4 | **Anti Water Hammer Equipment** |  | 2026-10-25 → 2026-11-01 (+7d) |  |  |  |
| JDH4-02-007-CN-1230 | Installation of Anti-Water Hammer Equipment [Sewage Lift Station ] |  | 2026-10-25 → 2026-11-01 (+7d) |  | 120d → 137d |  |
| 8 | **Pumps** |  | 2026-11-01 → 2026-10-27 (-5d) |  |  |  |
| JDH4-02-007-CN-1070 | Installation of Submersible pump [Sewage Lift Station ] |  | 2026-11-01 → 2026-10-27 A (-5d) | 25% → 100% | 120d → none |  |
| 6 | **Electrical Works** |  | 2026-12-29 → 2026-12-21 (-8d) |  |  |  |
| 1 | **Main Distribution Board** |  | 2026-11-05 → 2026-11-12 (+7d) |  |  |  |
| JDH4-02-007-CN-1310 | Installation of Main Distribution Board/MCC Panel [Sewage Lift Station ] |  | 2026-10-28 → 2026-11-04 (+7d) | 50% → 70% | 102d → 118d | JDH4-02-007-CN-1220, JDH4-02-007-PR-2650 → JDH4-02-007-CN-1220 SS, JDH4-02-007-PR-2650 |
| JDH4-02-007-CN-1320 | Installation of Panel Board [Sewage Lift Station ] |  | 2026-11-05 → 2026-11-12 (+7d) | 50% → 70% | 105d → 123d |  |
| 2 | **Local Control Panel** |  | 2026-11-21 → 2026-11-28 (+7d) |  |  |  |
| JDH4-02-007-CN-1330 | Installation of MCP-LP-01 [Sewage Lift Station ] |  | 2026-11-09 → 2026-11-16 (+7d) | 50% → 70% | 102d → 118d |  |
| JDH4-02-007-CN-1350 | Installation of MCP-LP-02 [Sewage Lift Station ] |  | 2026-11-15 → 2026-11-22 (+7d) | 50% → 70% | 108d → 119d |  |
| JDH4-02-007-CN-1360 | Installation of OD-CP [Sewage Lift Station ] |  | 2026-11-16 → 2026-11-23 (+7d) | 50% → 70% | 108d → 119d |  |
| JDH4-02-007-CN-1370 | Installation of FP-CP [Sewage Lift Station ] |  | 2026-11-21 → 2026-11-28 (+7d) | 50% → 70% | 108d → 119d |  |
| 4 | **Power Factor Correction Capacitor Bank** |  | 2026-11-17 → 2026-11-24 (+7d) |  |  |  |
| JDH4-02-007-CN-1390 | Installation of Power Factor Correction Capacitor Bank [Sewage Lift Station ] |  | 2026-11-17 → 2026-11-24 (+7d) | 50% → 70% | 102d → 120d |  |
| 5 | **Low-Voltage Electrical Power Conductors and Cables** |  | 2026-11-28 → 2026-11-26 (-2d) |  |  |  |
| JDH4-02-007-CN-1410 | Installation of Low Voltage Cables [Sewage Lift Station ] |  | 2026-11-28 → 2026-11-26 (-2d) | 50% → 70% | 102d → 120d | JDH4-02-007-CN-1390, JDH4-02-007-PR-2890, JDH4-02-007-PR-2950 → JDH4-02-007-CN-1390 SS, JDH4-02-007-PR-2890, JDH4-02-007-PR-2950 |
| 7 | **Enclosed Switches and Circuit Breakers** |  | 2026-11-15 → 2026-11-22 (+7d) |  |  |  |
| JDH4-02-007-CN-1440 | Installation of Enclosed Switches and Circuit Breakers [Sewage Lift Station ] |  | 2026-11-15 → 2026-11-22 (+7d) | 57% → 70% | 107d → 118d |  |
| 9 | **Grounding and Bonding for Electrical Systems** | 2026-11-16 → 2026-10-24 (-23d) | 2026-11-22 → 2026-11-29 (+7d) |  |  |  |
| JDH4-02-007-CN-1460 | Installation of Grounding Links [Sewage Lift Station ] | 2026-11-16 → 2026-10-24 A (-23d) | 2026-11-22 → 2026-11-29 (+7d) | 0% → 20% | 107d → 118d |  |
| 11 | **ICT (Data& telephone System)** |  | 2026-12-16 → 2026-12-06 (-10d) |  |  |  |
| JDH4-02-007-CN-1500 | Installationof Single data/Telephone outlet [Sewage Lift Station ] | 2026-11-29 → 2026-10-24 A (-36d) | 2026-12-03 → 2026-12-05 (+2d) | 0% → 20% | 102d → 118d |  |
| JDH4-02-007-CN-1520 | Installation of Fiber optic cable (12 Core single mode). [Sewage Lift Station ] | 2026-12-10 → 2026-10-24 A (-47d) | 2026-12-16 → 2026-12-06 (-10d) | 0% → 20% | 113d → 131d | JDH4-02-007-CN-1510 → JDH4-02-007-CN-1510 SS |
| JDH4-02-007-CN-1510 | Installation of Data Switch (24 Port) [Sewage Lift Station ] | 2026-12-05 → 2026-10-25 A (-41d) | 2026-12-09 → 2026-12-05 (-4d) | 0% → 20% | 113d → 131d | JDH4-02-007-CN-1500 → JDH4-02-007-CN-1500 SS |
| 14 | **Programmable Logic Controllers** |  | 2026-12-20 → 2026-12-21 (+1d) |  |  |  |
| JDH4-02-007-CN-1570 | Installation of Programmable Logic Controller [Sewage Lift Station ] |  | 2026-12-20 → 2026-12-21 (+1d) | 50% → 70% | 102d → 118d | JDH4-02-007-CN-1540, JDH4-02-007-PR-3150 → JDH4-02-007-CN-1540, JDH4-02-007-PR-3150 SS |
| 15 | **Process Control Wiring** |  | 2026-12-24 → 2026-12-09 (-15d) |  |  |  |
| JDH4-02-007-CN-1580 | Installation of Process Control Wiring [Sewage Lift Station ] |  | 2026-12-24 → 2026-12-09 (-15d) | 40% → 70% | 102d → 118d | JDH4-02-007-CN-1570, JDH4-02-007-PR-3110, JDH4-02-007-PR-2660 → JDH4-02-007-CN-1570 SS, JDH4-02-007-PR-3110, JDH4-02-007-PR-2660 |
| 16 | **Instrumentation for Process Systems** |  | 2026-12-29 → 2026-12-14 (-15d) |  |  |  |
| JDH4-02-007-CN-1600 | Installation of Process System [Sewage Lift Station ] |  | 2026-12-29 → 2026-12-14 (-15d) | 50% → 70% | 102d → 118d |  |
| 8 | **Plot Backfilling 2** |  | 2026-11-02 → 2026-11-03 (+1d) |  |  |  |
| JDH4-02-007-CN-1870 | Plots backfilling Stage 6 [Plots ] |  | 2026-10-27 → 2026-10-24 A (-3d) | 90% → 100% | 150.5d → none |  |
| JDH4-02-007-CN-1880 | Plots backfilling Stage 7 [Plots ] |  | 2026-11-02 → 2026-11-03 (+1d) | 75% → 85% | 150.5d → 150d |  |
| 8 | **Testing & Commissioning** |  | 2027-01-02 → 2026-12-17 (-16d) |  |  |  |
| JDH4-02-007-TC-1060 | Test for Road Works |  | 2026-11-07 → 2026-10-27 A (-11d) | 80% → 100% | 146d → none |  |
| JDH4-02-007-TC-1050 | Test for Sewage Lift Station |  | 2027-01-02 → 2026-12-17 (-16d) | 20% → 50% | 102d → 118d | JDH4-02-007-CN-5900, JDH4-02-007-CN-1160, JDH4-02-007-CN-1210, JDH4-02-007-CN-1240, JDH4-02-007-CN-1280, JDH4-02-007-CN-1300, JDH4-02-007-CN-1070, JDH4-02-007-CN-1320, JDH4-02-007-CN-1370, JDH4-02-007-CN-1420, JDH4-02-007-CN-1520, JDH4-02-007-CN-1550, JDH4-02-007-CN-1600 → JDH4-02-007-CN-5900, JDH4-02-007-CN-1160, JDH4-02-007-CN-1210, JDH4-02-007-CN-1240, JDH4-02-007-CN-1280, JDH4-02-007-CN-1300, JDH4-02-007-CN-1070, JDH4-02-007-CN-1320, JDH4-02-007-CN-1370, JDH4-02-007-CN-1420 SS, JDH4-02-007-CN-1520 SS, JDH4-02-007-CN-1550, JDH4-02-007-CN-1600 |
| JDH4-02-007-TC-1040 | Test for Electrical Network |  | 2026-11-07 → 2026-10-21 A (-17d) | 30% → 100% | 140d → none |  |
| 7 | **Project Hand Over & Close-out** |  | 2027-01-14 → 2026-12-27 (-18d) |  |  |  |
| 1 | **As-Built DWGs** |  | 2027-01-14 → 2026-12-27 (-18d) |  |  |  |
| 1 | **As-Built DWGs Submittal** |  | 2027-01-07 → 2026-12-20 (-18d) |  |  |  |
| JDH4-02-007-AB-1040 | As-Built DWGs Submittal for Electrical Network |  | 2026-11-12 → 2026-10-27 A (-16d) | 35% → 100% | 140d → none |  |
| JDH4-02-007-AB-1060 | As-Built DWGs Submittal for Road Works |  | 2026-11-12 → 2026-11-08 (-4d) | 35% → 90% | 146d → 150d |  |
| JDH4-02-007-AB-1050 | As-Built DWGs Submittal for Sewage Lift Station | 2027-01-03 → 2026-10-25 A (-70d) | 2027-01-07 → 2026-12-20 (-18d) | 0% → 20% | 102d → 118d | JDH4-02-007-TC-1050 → JDH4-02-007-TC-1050 SS |
| 2 | **As-Built DWGs Approval** |  | 2027-01-14 → 2026-12-27 (-18d) |  |  |  |
| JDH4-02-007-AB-1130 | As- Built DWGs Approval for Road Works | 2026-11-14 → 2026-10-17 A (-28d) | 2026-11-19 → 2026-11-15 (-4d) | 0% → 70% | 146d → 150d |  |
| JDH4-02-007-AB-1110 | As- Built DWGs Approval for Electrical Network | 2026-11-14 → 2026-10-28 (-17d) | 2026-11-19 → 2026-11-03 (-16d) |  | 140d → 154d |  |
| JDH4-02-007-AB-1120 | As- Built DWGs Approval for Sewage Lift Station | 2027-01-09 → 2026-12-21 (-19d) | 2027-01-14 → 2026-12-27 (-18d) |  | 102d → 118d |  |
| 2 | **Demobilization** | 2026-11-21 → 2026-10-08 (-44d) | 2026-12-30 → 2026-12-27 (-3d) |  |  |  |
| JDH4-02-007-DM-1000 | Demobilization of Manpower | 2026-11-21 → 2026-10-08 A (-44d) | 2026-11-25 → 2026-11-09 (-16d) | 0% → 30% | 140d → 154d |  |
| JDH4-02-007-DM-1010 | Removal of Equipment from Site | 2026-11-21 → 2026-10-15 A (-37d) | 2026-11-25 → 2026-11-14 (-11d) | 0% → 30% | 140d → 150d |  |
| JDH4-02-007-DM-1020 | Site Clean Up | 2026-11-21 → 2026-10-15 A (-37d) | 2026-11-25 → 2026-11-14 (-11d) | 0% → 20% | 140d → 150d |  |
| JDH4-02-007-DM-1030 | Removal of Site Offices and Structures | 2026-11-21 → 2026-10-22 A (-30d) | 2026-11-25 → 2026-11-14 (-11d) | 0% → 5% | 140d → 150d |  |

| ID | Task | Start | Finish | Total float |
| --- | --- | --- | --- | --- |
| JDH4-02-007-DM-1040 | Restoration of Ground Surfaces | 2026-12-26 → 2026-12-22 (-4d) | 2026-12-30 → 2026-12-27 (-3d) | 115d → 118d |
