# Development of the Technology City in Dammam-BL00

How a schedule from Primavera P6 changed from version to version. A marks actual dates.

## Version 1 (data date 2025-12-23, saved 2026-02-16, file MOD3-3147-BL0-R.1.xer)

| ID | WBS | Task | Duration | Start | Finish | Predecessors | Total float |
| --- | --- | --- | --- | --- | --- | --- | --- |
|  | MS | **Key Milestones** |  | 2025-12-23 | 2027-02-22 |  |  |
|  | CM | **Contractual Milestones** |  | 2025-12-23 | 2027-02-22 |  |  |
| MS-CS-PS |  | Project Commencement Date ( Site Handover ) | 0d | 2025-12-23 | 2025-12-23 |  | 0d |
| MS-CF-EBL |  | Completion of Execution Plan and Baseline Schedule | 0d | 2026-01-22 | 2026-01-22 | PRE-CON-MDC-20 FF, PRE-CON-MDC-10 FF | 25d |
| MS-CF-ENG |  | Completion of Submitting and Approval of Shopdrwing and Material | 0d | 2026-01-22 | 2026-01-22 | PRE-CON-MDC-30 FF, PRE-CON-MDC-40 FF, PRE-CON-MDC-50 FF, PRE-CON-MDC-60 FF, PRE-CON-MDC-70 FF, PRE-CON-MDC-80 FF, ENG-SH-RD-A-110 FF, ENG-SH-HS-A-110 FF, ENG-SH-TSB-A-100 FF, ENG-SH-MRK-A-110 FF, ENG-SH-SW-ML-A-110 FF, ENG-SH-SD-ML-A-110 FF, ENG-SH-SD-CB-A-110 FF, ENG-SH-PW-ML-A-110 FF, ENG-SH-PW-FH-A-110 FF, ENG-SH-IR-ML-A-110 FF, ENG-SH-TSE-ML-A-120 FF, ENG-SH-MV-A-110 FF, ENG-SH-LV-A-120 FF, ENG-SH-SL-A-110 FF, ENG-SH-MSN-A-120 FF, ENG-SH-TE-A-110 FF, ENG-SH-CTV-A-110 FF, ENG-SH-SPS-A-160 FF, ENG-SH-LS-A-170 FF, ENG-SH-DPO-A-120 FF, ENG-SH-ST-A-180 FF, ENG-SH-GR-A-190 FF, ENG-SH-GR-A-200 FF, ENG-MT-RD-A-100 FF, ENG-MT-RD-A-110 FF, ENG-MT-RD-A-120 FF, ENG-MT-RD-A-130 FF, ENG-MT-RD-A-140 FF, ENG-MT-RD-A-150 FF, ENG-MT-TS-A-100 FF, ENG-MT-TS-A-110 FF, ENG-MT-IR-ML-A-140 FF, ENG-MT-IR-ML-A-150 FF, ENG-MT-SW-ML-A-100 FF, ENG-MT-SW-ML-A-110 FF, ENG-MT-SW-TF-A-100 FF, ENG-MT-SD-ML-A-100 FF, ENG-MT-SD-ML-A-110 FF, ENG-MT-SD-CB-A-100 FF, ENG-MT-SD-CB-A-110 FF, ENG-MT-SD-TF-A-100 FF, ENG-MT-SD-TF-A-110 FF, ENG-MT-PW-ML-A-100 FF, ENG-MT-PW-ML-A-110 FF, ENG-MT-PW-FH-A-100 FF, ENG-MT-PW-TF-A-100 FF, ENG-MT-IR-ML-A-100 FF, ENG-MT-IR-ML-A-110 FF, ENG-MT-IR-ML-A-120 FF, ENG-MT-IR-ML-A-130 FF, ENG-MT-MV-ML-A-100 FF, ENG-MT-MV-TF-A-100 FF, ENG-MT-SL-ML-A-100 FF, ENG-MT-SL-A-100 FF, ENG-MT-SL-A-110 FF, ENG-MT-SL-A-120 FF, ENG-MT-SL-DB-A-100 FF, ENG-MT-SL-TF-A-100 FF, ENG-MT-SL-ES-A-100 FF, ENG-MT-TE-A-100 FF, ENG-MT-TE-A-110 FF, ENG-MT-CTV-A-100 FF, ENG-MT-PS-CV-A-150 FF, ENG-MT-SLS-CV-A-110 FF, ENG-MT-DPO-CV-A-110 FF, ENG-MT-TSE-CV-A-140 FF, ENG-MT-GR-CV-A-130 FF, ENG-MT-FE-CV-A-120 FF, ENG-MT-PL-CV-A-160 FF, ENG-MT-CTV-A-110 FF, ENG-MT-SPS-MC-A-110 FF, ENG-MT-TSE-MC-A-120 FF | 25d |
| MS-CF-MOB |  | Completion of Mobilization and Site Preperation Works | 0d | 2026-02-21 | 2026-02-21 | MOB-30 FF, MOB-20 FF, MOB-80 FF, MOB-40 FF, MOB-50 FF, MOB-60 FF, MOB-10 FF, MOB-70 FF, PRE-CON-MDC-10 FF, PRE-CON-MDC-20 FF, PRE-CON-MDC-30 FF, PRE-CON-MDC-40 FF, PRE-CON-MDC-50 FF, PRE-CON-MDC-60 FF, PRE-CON-MDC-70 FF, PRE-CON-MDC-80 FF | 18d |
| MS-CF-SD |  | Completion of Construction Works for Storm Drainage Network | 0d | 2026-10-24 | 2026-10-24 | CO-SD-MH-TF-210 FF | 25d |
| MS-CF-SW |  | Completion of Construction Works for Sewage Network | 0d | 2026-10-24 | 2026-10-24 | CO-SW-TF-110 FF, CO-SW-TF-210 FF | 40d |
| MS-CF-MV |  | Completion of Construction Works for Medium Voltage Network | 0d | 2026-12-15 | 2026-12-15 | CO-MV-TF-220 FF | 10d |
| MS-CF-RD |  | Completion of Construction Works for Road Works | 0d | 2026-12-23 | 2026-12-23 | CO-RD-F-TS-120 FF, CO-RD-F-TS-110 FF, CO-RD-F-TS-100 FF | 49.75d |
| MS-CF-SL |  | Completion of Construction Works for Street Lighting Network | 0d | 2026-12-23 | 2026-12-23 | CO-SL-TF-230 FF, CO-SL-TF-220 FF | 19d |
| MS-CF-TE |  | Completion of Construction Works for Telecom Network | 0d | 2026-12-23 | 2026-12-23 | CO-TE-CTV-TF-140 FF | 19d |
| MS-CF-IR |  | Completion of Construction Works for Irrigation Network | 0d | 2026-12-27 | 2026-12-27 | CO-IR-TF-160 FF | 33d |
| MS-CF-PW |  | Completion of Construction Works for Potable Water Network | 0d | 2026-12-27 | 2026-12-27 | CO-PW-TF-120 FF, CO-UB-IRT-250 FF, CO-PW-TF-100 FF | 33d |
| MS-CF-TSE |  | Completion of Construction Works for Treated Sewage Effluent Network | 0d | 2026-12-27 | 2026-12-27 | CO-TSE-TF-170 FF | 33d |
| MS-CF-PF |  | Project Completion Date | 0d | 2027-02-22 | 2027-02-22 | A1100 FF, CO-SD-PO-110-P2 FF, MS-CF-PW FF, MS-CF-IR FF, MS-CF-SW FF, MS-CF-SD FF, MS-CF-TSE FF, MS-CF-MV FF, MS-CF-SL FF, MS-CF-TE FF, MS-CF-RD FF, MS-CF-EBL FF, MS-CF-ENG FF, CO-SU-FE-EP2-EL-870 FF, CO-SU-FE-EP2-AR-450 FF, T/C-CTV FF, HO-130 FF, HO-200 FF, HO-100 FF, HO-180 FF, HO-190 FF, HO-150 FF, HO-160 FF, HO-170 FF, HO-210 FF, HO-140 FF, HO-120 FF, HO-220 FF, HO-230 FF, HO-110 FF, HO-250 FF, HO-260 FF, HO-270 FF, HO-240 FF, HO-280 FF, CO-LS-PL-180 FF | 0d |
|  | MOB | **Preliminaries and Mobilization Works** |  | 2025-12-23 | 2026-02-21 |  |  |
|  | MOB | **Mobilization Works** |  | 2025-12-23 | 2026-02-21 |  |  |
| MOB-20 |  | Project Site Layout Plan Approval | 6d | 2025-12-23 | 2025-12-29 | MS-CS-PS SS, MOB-30 SS | 1d |
| MOB-30 |  | Supply & Install of Project Supervision Offices | 0d | 2025-12-23 | 2025-12-23 | MS-CS-PS SS | 0d |
| MOB-80 |  | Construction Site Access Roads | 51d | 2025-12-23 | 2026-02-21 | MOB-20 SS, MS-CS-PS SS | 1d |
| MOB-90 |  | Site Surveying Work | 5d | 2025-12-23 | 2025-12-28 | MS-CS-PS SS | 25d |
| MOB-40 |  | Construction Project Store | 20d | 2025-12-31 | 2026-01-22 | MOB-30 SS+7d, MS-CS-PS SS | 0d |
| MOB-10 |  | Clear and Grub for Offices and Access Roads | 26d | 2026-01-12 | 2026-02-10 | MOB-60 SS, MS-CS-PS SS | 9d |
| MOB-50 |  | Mobilization of Major Manpower | 20d | 2026-01-12 | 2026-02-03 | MOB-40 SS+10d, MS-CS-PS SS | 0d |
| MOB-60 |  | Mobilization of Major Equipments | 20d | 2026-01-12 | 2026-02-03 | MOB-50 SS, MS-CS-PS SS | 0d |
| MOB-70 |  | Installation Project Sign Board | 10d | 2026-01-24 | 2026-02-03 | MOB-10 SS+10d, MS-CS-PS SS | 15d |
|  | 1 | **Project Main Documents From The Contractor** |  | 2025-12-23 | 2026-01-22 |  |  |
| PRE-CON-MDC-10 |  | Submission Project Execution Plan | 27d | 2025-12-23 | 2026-01-22 | MS-CS-PS SS | 25d |
| PRE-CON-MDC-20 |  | Submission Project Baseline Schedule | 27d | 2025-12-23 | 2026-01-22 | MS-CS-PS SS | 25d |
| PRE-CON-MDC-30 |  | Submission Project Health & Safety Plan | 27d | 2025-12-23 | 2026-01-22 | MS-CS-PS SS | 25d |
| PRE-CON-MDC-40 |  | Submission Project Quality Control Plan | 27d | 2025-12-23 | 2026-01-22 | MS-CS-PS SS | 25d |
| PRE-CON-MDC-50 |  | Submission Project Surveying Report | 27d | 2025-12-23 | 2026-01-22 | MS-CS-PS SS, MOB-90 SS | 25d |
| PRE-CON-MDC-60 |  | Submission Project Geotechnical Soil Report | 27d | 2025-12-23 | 2026-01-22 | MS-CS-PS SS | 25d |
| PRE-CON-MDC-70 |  | Submission Project Environmental Plan | 27d | 2025-12-23 | 2026-01-22 | MS-CS-PS SS | 25d |
| PRE-CON-MDC-80 |  | Submission Project Organization Chart and Communications Plan | 27d | 2025-12-23 | 2026-01-22 | MS-CS-PS SS | 25d |
|  | ENG | **Engineering Works** |  | 2025-12-23 | 2026-01-22 |  |  |
|  | SD | **Shop Drawings** |  | 2025-12-31 | 2026-01-22 |  |  |
|  | INF | **Infrastructure Networks** |  | 2025-12-31 | 2026-01-22 |  |  |
|  | RD | **Road Works** |  | 2025-12-31 | 2026-01-22 |  |  |
|  | 1 | **Road Pavement Works** |  | 2025-12-31 | 2026-01-19 |  |  |
|  | 1 | **Submittal** |  | 2025-12-31 | 2026-01-07 |  |  |
| ENG-SH-RD-S-100 |  | Submission Shop Drawings for Plan and Profile of Road Works | 7d | 2025-12-31 | 2026-01-07 | MS-CS-PS SS+7d | 0d |
| ENG-SH-RD-S-110 |  | Submission Shop Drawings for Roads Typical Sections and Pavement Details | 7d | 2025-12-31 | 2026-01-07 | MS-CS-PS SS+7d | 0d |
|  | 2 | **Approval** |  | 2026-01-08 | 2026-01-19 |  |  |
| ENG-SH-RD-A-100 |  | Approval Shop Drawings for Plan and Profile of Road Works | 10d | 2026-01-08 | 2026-01-19 | ENG-SH-RD-S-100 | 25d |
| ENG-SH-RD-A-110 |  | Approval Shop Drawings for Roads Typical Sections and Pavement Details | 10d | 2026-01-08 | 2026-01-19 | ENG-SH-RD-S-110 | 28d |
|  | 10 | **Pavement Works** |  | 2025-12-31 | 2026-01-18 |  |  |
|  | 1 | **Submittal** |  | 2025-12-31 | 2026-01-06 |  |  |
| ENG-SH-HS-S-100 |  | Submission Shop Drawings for Hardscaping (Curbstone& Interlock) Works | 6d | 2025-12-31 | 2026-01-06 | MS-CS-PS SS, ENG-SH-RD-S-100 SS | 25d |
|  | 2 | **Approval** |  | 2026-01-07 | 2026-01-18 |  |  |
| ENG-SH-HS-A-110 |  | Approval Shop Drawings for Hardscaping (Curbstone& Interlock) Works | 10d | 2026-01-07 | 2026-01-18 | ENG-SH-HS-S-100 | 25d |
|  | 11 | **Traffic Sign Boards and Road Marking** |  | 2026-01-07 | 2026-01-22 |  |  |
|  | 1 | **Submittal** |  | 2026-01-07 | 2026-01-21 |  |  |
| ENG-SH-TSB-S-100 |  | Submission Shop Drawings for Traffic Signs Boards | 6d | 2026-01-07 | 2026-01-13 | MS-CS-PS SS, ENG-SH-HS-A-110 SS | 25d |
| ENG-SH-MRK-S-110 |  | Submission Shop Drawings for Pavement Markings | 6d | 2026-01-15 | 2026-01-21 | MS-CS-PS SS, ENG-SH-HS-A-110 SS+7d | 25d |
|  | 2 | **Approval** |  | 2026-01-07 | 2026-01-22 |  |  |
| ENG-SH-TSB-A-100 |  | Approval Shop Drawings for Traffic Signs Boards | 7d | 2026-01-07 | 2026-01-14 | ENG-SH-TSB-S-100 SS | 25d |
| ENG-SH-MRK-A-110 |  | Approval Shop Drawings for Pavement Markings | 7d | 2026-01-15 | 2026-01-22 | ENG-SH-MRK-S-110 SS | 25d |
|  | SW | **Sewage Network** |  | 2026-01-08 | 2026-01-21 |  |  |
|  | 1 | **Main Line Sections** |  | 2026-01-08 | 2026-01-21 |  |  |
|  | 1 | **Submittal** |  | 2026-01-08 | 2026-01-13 |  |  |
| ENG-SH-SW-ML-S-100 |  | Submission Shop Drawings for Main Line and Manholes of Sewage Network | 5d | 2026-01-08 | 2026-01-13 | MS-CS-PS SS, ENG-SH-RD-S-100, ENG-SH-RD-S-110 | 0d |
|  | 2 | **Approval** |  | 2026-01-14 | 2026-01-21 |  |  |
| ENG-SH-SW-ML-A-110 |  | Approval Shop Drawings for Main Line and Manholes of Sewage Network | 7d | 2026-01-14 | 2026-01-21 | ENG-SH-SW-ML-S-100 | 25d |
|  | ST | **Storm Drainage Network** |  | 2026-01-08 | 2026-01-22 |  |  |
|  | 1 | **Main Line Sections** |  | 2026-01-08 | 2026-01-22 |  |  |
|  | 1 | **Submittal** |  | 2026-01-08 | 2026-01-14 |  |  |
| ENG-SH-SD-ML-S-100 |  | Submission Shop Drawings for Main Line and Manholes of Storm Drainage Network | 6d | 2026-01-08 | 2026-01-14 | MS-CS-PS SS, ENG-SH-SW-ML-S-100 SS | 0d |
|  | 2 | **Approval** |  | 2026-01-15 | 2026-01-22 |  |  |

| ID | WBS | Task | Duration | Start | Finish | Predecessors | Total float |
| --- | --- | --- | --- | --- | --- | --- | --- |
| ENG-SH-SD-ML-A-110 |  | Approval Shop Drawings for Main Line and Manholes of Storm Drainage Network | 7d | 2026-01-15 | 2026-01-22 | ENG-SH-SD-ML-S-100 | 25d |
|  | 2 | **Catch Basin Sections** |  | 2026-01-08 | 2026-01-22 |  |  |
|  | 1 | **Submittal** |  | 2026-01-08 | 2026-01-14 |  |  |
| ENG-SH-SD-CB-S-100 |  | Submission Shop Drawings for Secondary Line and Catch Basin of Storm Drainage Network | 6d | 2026-01-08 | 2026-01-14 | MS-CS-PS SS, ENG-SH-SD-ML-S-100 SS | 25d |
|  | 2 | **Approval** |  | 2026-01-15 | 2026-01-22 |  |  |
| ENG-SH-SD-CB-A-110 |  | Approval Shop Drawings for Secondary Line and Catch Basin of Storm Drainage Network | 7d | 2026-01-15 | 2026-01-22 | ENG-SH-SD-CB-S-100 | 25d |
|  | PW | **Potable Water Network** |  | 2026-01-08 | 2026-01-21 |  |  |
|  | 1 | **Main Line Sections** |  | 2026-01-08 | 2026-01-21 |  |  |
|  | 1 | **Submittal** |  | 2026-01-08 | 2026-01-13 |  |  |
| ENG-SH-PW-ML-S-100 |  | Submission Shop Drawings for Main Line and Valve Chambers of Potable Water Network | 5d | 2026-01-08 | 2026-01-13 | MS-CS-PS SS, ENG-SH-SD-ML-S-100 SS | 22d |
|  | 2 | **Approval** |  | 2026-01-14 | 2026-01-21 |  |  |
| ENG-SH-PW-ML-A-110 |  | Approval Shop Drawings for Main Line and Valve Chambers of Potable Water Network | 7d | 2026-01-14 | 2026-01-21 | ENG-SH-PW-ML-S-100 | 25d |
|  | 2 | **Fire Hydrant** |  | 2026-01-08 | 2026-01-21 |  |  |
|  | 1 | **Submittal** |  | 2026-01-08 | 2026-01-13 |  |  |
| ENG-SH-PW-FH-S-100 |  | Submission Shop Drawings for Fire Hydrant Network | 5d | 2026-01-08 | 2026-01-13 | MS-CS-PS SS, ENG-SH-PW-ML-S-100 SS | 26d |
|  | 2 | **Approval** |  | 2026-01-14 | 2026-01-21 |  |  |
| ENG-SH-PW-FH-A-110 |  | Approval Shop Drawings for Fire Hydrant Network | 7d | 2026-01-14 | 2026-01-21 | ENG-SH-PW-FH-S-100 | 26d |
|  | IR | **Irrigation Network** |  | 2026-01-08 | 2026-01-22 |  |  |
|  | 1 | **Main Line Sections** |  | 2026-01-08 | 2026-01-22 |  |  |
|  | 1 | **Submittal** |  | 2026-01-08 | 2026-01-14 |  |  |
| ENG-SH-IR-ML-S-100 |  | Submission Shop Drawings for Main Line and Valves & Bulbblers and Sprinklers of Irrigation Network | 6d | 2026-01-08 | 2026-01-14 | MS-CS-PS SS, ENG-SH-PW-ML-S-100 SS | 25d |
|  | 2 | **Approval** |  | 2026-01-15 | 2026-01-22 |  |  |
| ENG-SH-IR-ML-A-110 |  | Approval Shop Drawings for Main Line and Valves & Bulbblers and Sprinklers of Irrigation Network | 7d | 2026-01-15 | 2026-01-22 | ENG-SH-IR-ML-S-100 | 25d |
|  | TSE | **Treated Sewage Effluent Network** |  | 2026-01-08 | 2026-01-22 |  |  |
|  | 1 | **Main Line Sections** |  | 2026-01-08 | 2026-01-22 |  |  |
|  | 1 | **Submittal** |  | 2026-01-08 | 2026-01-14 |  |  |
| ENG-SH-TSE-ML-S-110 |  | Submission Shop Drawings for Main Line Treated Sewage Effluent Network | 6d | 2026-01-08 | 2026-01-14 | MS-CS-PS SS, ENG-SH-IR-ML-S-100 SS | 25d |
|  | 2 | **Approval** |  | 2026-01-15 | 2026-01-22 |  |  |
| ENG-SH-TSE-ML-A-120 |  | Approval Shop Drawings for Main Line Treated Sewage Effluent Network | 7d | 2026-01-15 | 2026-01-22 | ENG-SH-TSE-ML-S-110 | 25d |
|  | MV | **Medium Voltage Network** |  | 2026-01-08 | 2026-01-22 |  |  |
|  | 1 | **Submittal** |  | 2026-01-08 | 2026-01-14 |  |  |
| ENG-SH-MV-S-100 |  | Submission Shop Drawings for Medium Voltage Network | 6d | 2026-01-08 | 2026-01-14 | MS-CS-PS SS, ENG-SH-IR-ML-S-100 SS | 25d |
|  | 2 | **Approval** |  | 2026-01-15 | 2026-01-22 |  |  |
| ENG-SH-MV-A-110 |  | Approval Shop Drawings for Medium Voltage Network | 7d | 2026-01-15 | 2026-01-22 | ENG-SH-MV-S-100 | 25d |
|  | LV | **Low Voltage Network** |  | 2026-01-08 | 2026-01-22 |  |  |
|  | 1 | **Submittal** |  | 2026-01-08 | 2026-01-14 |  |  |
| ENG-SH-LV-S-110 |  | Submission Shop Drawings for Low Voltage Network | 6d | 2026-01-08 | 2026-01-14 | MS-CS-PS SS, ENG-SH-IR-ML-S-100 SS | 25d |
|  | 2 | **Approval** |  | 2026-01-15 | 2026-01-22 |  |  |
| ENG-SH-LV-A-120 |  | Approval Shop Drawings for Low Voltage Network | 7d | 2026-01-15 | 2026-01-22 | ENG-SH-LV-S-110 | 25d |
|  | SL | **Street Lighting Network** |  | 2026-01-13 | 2026-01-22 |  |  |
|  | 1 | **Submittal** |  | 2026-01-13 | 2026-01-19 |  |  |
| ENG-SH-SL-S-100 |  | Submission Shop Drawings for Street Lighting Network | 6d | 2026-01-13 | 2026-01-19 | MS-CS-PS SS, ENG-SH-MV-S-100 SS+4d | 25d |
|  | 2 | **Approval** |  | 2026-01-15 | 2026-01-22 |  |  |
| ENG-SH-SL-A-110 |  | Approval Shop Drawings for Street Lighting Network | 7d | 2026-01-15 | 2026-01-22 | ENG-SH-SL-S-100 SS+2d | 25d |
|  | TL | **Telecom Network** |  | 2026-01-14 | 2026-01-22 |  |  |
|  | 1 | **Submittal** |  | 2026-01-15 | 2026-01-21 |  |  |
| ENG-SH-CTV-S-100 |  | Submission Shop Drawings for CCTV Complete System | 6d | 2026-01-15 | 2026-01-21 | MS-CS-PS SS, ENG-SH-TE-S-100 SS | 25d |
| ENG-SH-MSN-S-110 |  | Submission Shop Drawings for MSN System | 6d | 2026-01-15 | 2026-01-21 | MS-CS-PS SS, ENG-SH-CTV-S-100 SS | 26d |
| ENG-SH-TE-S-100 |  | Submission Shop Drawings for Telecom Network | 6d | 2026-01-15 | 2026-01-21 | MS-CS-PS SS, ENG-SH-LV-S-110 | 25d |
|  | 2 | **Approval** |  | 2026-01-14 | 2026-01-22 |  |  |
| ENG-SH-MSN-A-120 |  | Approval Shop Drawings for MSN System | 7d | 2026-01-14 | 2026-01-21 | ENG-SH-MSN-S-110 FF | 26d |
| ENG-SH-CTV-A-110 |  | Approval Shop Drawings for CCTV Complete System | 7d | 2026-01-15 | 2026-01-22 | ENG-SH-CTV-S-100 SS | 25d |
| ENG-SH-TE-A-110 |  | Approval Shop Drawings for Telecom Network | 7d | 2026-01-15 | 2026-01-22 | ENG-SH-TE-S-100 SS | 25d |
|  | 1 | **Superstructure Works** |  | 2026-01-08 | 2026-01-22 |  |  |
|  | PS | **Pump Stations** |  | 2026-01-14 | 2026-01-22 |  |  |
|  | 1 | **Submittal** |  | 2026-01-14 | 2026-01-20 |  |  |
| ENG-SH-SPS-S-150 |  | Submission Shop Drawings Package for Sewage Pump Stations | 6d | 2026-01-14 | 2026-01-20 | MS-CS-PS SS, ENG-SH-PW-ML-A-110 SS | 25d |
|  | 2 | **Approval** |  | 2026-01-17 | 2026-01-22 |  |  |
| ENG-SH-SPS-A-160 |  | Approval Shop Drawings Package for Sewage Pump Stations | 6d | 2026-01-17 | 2026-01-22 | ENG-SH-SPS-S-150 SS+2d | 25d |
|  | LS | **Lift Station** |  | 2026-01-14 | 2026-01-22 |  |  |
|  | 1 | **Submittal** |  | 2026-01-14 | 2026-01-20 |  |  |
| ENG-SH-LS-S-160 |  | Submission Shop Drawings Package for Lift Stations | 6d | 2026-01-14 | 2026-01-20 | MS-CS-PS SS, ENG-SH-SW-ML-A-110 SS | 25d |
|  | 2 | **Approval** |  | 2026-01-17 | 2026-01-22 |  |  |
| ENG-SH-LS-A-170 |  | Approval Shop Drawings Package for Lift Stations | 6d | 2026-01-17 | 2026-01-22 | ENG-SH-LS-S-160 SS+2d | 25d |
|  | PO | **Storm Drainage Ponds** |  | 2026-01-15 | 2026-01-22 |  |  |
|  | 1 | **Submittal** |  | 2026-01-15 | 2026-01-21 |  |  |
| ENG-SH-DPO-S-110 |  | Submission Shop Drawings Package for Storm Drainage Ponds | 6d | 2026-01-15 | 2026-01-21 | MS-CS-PS SS, ENG-SH-SD-ML-A-110 SS, ENG-SH-SD-CB-A-110 SS | 25d |
|  | 2 | **Approval** |  | 2026-01-17 | 2026-01-22 |  |  |
| ENG-SH-DPO-A-120 |  | Approval Shop Drawings Package for Storm Drainage Ponds | 6d | 2026-01-17 | 2026-01-22 | ENG-SH-DPO-S-110 SS+1d | 25d |
|  | ST | **Storage Tank (TSE)** |  | 2026-01-15 | 2026-01-22 |  |  |

| ID | WBS | Task | Duration | Start | Finish | Predecessors | Total float |
| --- | --- | --- | --- | --- | --- | --- | --- |
|  | 1 | **Submittal** |  | 2026-01-15 | 2026-01-21 |  |  |
| ENG-SH-ST-S-170 |  | Submission Shop Drawings Package for Storage Tank TSE | 6d | 2026-01-15 | 2026-01-21 | MS-CS-PS SS, ENG-SH-TSE-ML-A-120 SS | 25d |
|  | 2 | **Approval** |  | 2026-01-17 | 2026-01-22 |  |  |
| ENG-SH-ST-A-180 |  | Approval Shop Drawings Package for Storage Tank TSE | 6d | 2026-01-17 | 2026-01-22 | ENG-SH-ST-S-170 SS+1d | 25d |
|  | GR | **Gaurd Room** |  | 2026-01-17 | 2026-01-22 |  |  |
| ENG-SH-GR-A-190 |  | Approval Shop Drawings Package for Gaurd Room | 6d | 2026-01-17 | 2026-01-22 | ENG-SH-GR-S-180 SS | 25d |
|  | 1 | **Submittal** |  | 2026-01-17 | 2026-01-22 |  |  |
| ENG-SH-GR-S-180 |  | Submission Shop Drawings Package for Gaurd Room | 6d | 2026-01-17 | 2026-01-22 | MS-CS-PS SS, ENG-SH-RD-A-100 SS+7d | 25d |
|  | 2 | **Approval** |  |  |  |  |  |
|  | FE | **Fence** |  | 2026-01-08 | 2026-01-22 |  |  |
|  | 1 | **Submittal** |  | 2026-01-08 | 2026-01-14 |  |  |
| ENG-SH-GR-S-190 |  | Submission Shop Drawings Package for Fence | 6d | 2026-01-08 | 2026-01-14 | MS-CS-PS SS, ENG-SH-RD-A-100 SS | 25d |
|  | 2 | **Approval** |  | 2026-01-15 | 2026-01-22 |  |  |
| ENG-SH-GR-A-200 |  | Approval Shop Drawings Package for Fence | 7d | 2026-01-15 | 2026-01-22 | ENG-SH-GR-S-190 | 25d |
|  | SD11 | **Material Submittals and Approvals** |  | 2025-12-23 | 2026-01-22 |  |  |
|  | 2 | **Short Lead Time Items** |  | 2025-12-23 | 2026-01-22 |  |  |
|  | INF | **Infrastructure Networks** |  | 2026-01-07 | 2026-01-22 |  |  |
|  | 10 | **Road Works** |  | 2026-01-07 | 2026-01-22 |  |  |
|  | MS | **Submission of Material** |  | 2026-01-07 | 2026-01-14 |  |  |
|  | 1 | **Roads Works** |  | 2026-01-08 | 2026-01-14 |  |  |
| ENG-MT-RD-S-100 |  | Material Submittal for Subgrade of Road Works | 6d | 2026-01-08 | 2026-01-14 | ENG-SH-RD-S-100 | 25d |
| ENG-MT-RD-S-110 |  | Material Submittal for Aggregate Base Course of Road Works | 6d | 2026-01-08 | 2026-01-14 | ENG-SH-RD-S-100 | 25d |
| ENG-MT-RD-S-120 |  | Material Submittal for Prime Coat of Road Works | 6d | 2026-01-08 | 2026-01-14 | ENG-SH-RD-S-100 | 25d |
| ENG-MT-RD-S-130 |  | Material Submittal for Bituminous Base & Wearing Courses of Road Works | 6d | 2026-01-08 | 2026-01-14 | ENG-SH-RD-S-100 | 25d |
|  | 10 | **Pavement Works** |  | 2026-01-08 | 2026-01-14 |  |  |
| ENG-MT-RD-S-140 |  | Material Submittal for Interlock Tiles of Landscaping | 6d | 2026-01-08 | 2026-01-14 | ENG-MT-RD-S-130 SS | 25d |
| ENG-MT-RD-S-150 |  | Material Submittal for Curbstones of Landscaping | 6d | 2026-01-08 | 2026-01-14 | ENG-MT-RD-S-130 SS | 25d |
|  | 11 | **Traffic Signs Boards and Roads Marking** |  | 2026-01-07 | 2026-01-13 |  |  |
| ENG-MT-TS-S-100 |  | Material Submittal for Traffic Signs Boards of Road Works | 6d | 2026-01-07 | 2026-01-13 | ENG-SH-TSB-A-100 SS | 26d |
| ENG-MT-TS-S-110 |  | Material Submittal for Road Markings of Road Works | 6d | 2026-01-07 | 2026-01-13 | ENG-SH-TSB-S-100 SS | 26d |
|  | NA | **Approval of Material** |  | 2026-01-15 | 2026-01-22 |  |  |
|  | 1 | **Road Works** |  | 2026-01-15 | 2026-01-22 |  |  |
| ENG-MT-RD-A-100 |  | Material Approval for Subgrade of Road Works | 7d | 2026-01-15 | 2026-01-22 | ENG-MT-RD-S-100 | 25d |
| ENG-MT-RD-A-110 |  | Material Approval for Aggregate Base Course of Road Works | 7d | 2026-01-15 | 2026-01-22 | ENG-MT-RD-S-110 | 25d |
| ENG-MT-RD-A-120 |  | Material Approval for Prime Coat of Road Works | 7d | 2026-01-15 | 2026-01-22 | ENG-MT-RD-S-120 | 25d |
| ENG-MT-RD-A-130 |  | Material Approval for Bituminous Base & Wearing Courses of Road Works | 7d | 2026-01-15 | 2026-01-22 | ENG-MT-RD-S-130 | 25d |
|  | 2 | **Pavement Works** |  | 2026-01-15 | 2026-01-22 |  |  |
| ENG-MT-RD-A-140 |  | Material Approval of Interlock Tiles for Landscaping | 7d | 2026-01-15 | 2026-01-22 | ENG-MT-RD-S-140 | 25d |
| ENG-MT-RD-A-150 |  | Material Approval of Curbstones for Landscaping | 7d | 2026-01-15 | 2026-01-22 | ENG-MT-RD-S-150 | 25d |
|  | 3 | **Traffic Signs Boards and Roads Marking** |  | 2026-01-15 | 2026-01-22 |  |  |
| ENG-MT-TS-A-100 |  | Material Approval for Traffic Signs Boards of Road Works | 7d | 2026-01-15 | 2026-01-22 | ENG-MT-TS-S-100, ENG-SH-TSB-A-100 | 25d |
| ENG-MT-TS-A-110 |  | Material Approval for Road Markings of Road Works | 7d | 2026-01-15 | 2026-01-22 | ENG-MT-TS-S-110, ENG-SH-MRK-A-110 SS | 25d |
|  | 6 | **Softscape and Planting Works** |  | 2026-01-07 | 2026-01-22 |  |  |
|  | 1 | **Submission of Material** |  | 2026-01-07 | 2026-01-14 |  |  |
| ENG-MT-IR-ML-S-140 |  | Material Submittal for Softscape and Planting Works | 7d | 2026-01-07 | 2026-01-14 | ENG-SH-HS-A-110 SS | 25d |
| ENG-MT-IR-ML-S-150 |  | Material Submittal for Site Furnishings (Seating Bench,Stone Boulders and Gravel) | 7d | 2026-01-07 | 2026-01-14 | ENG-SH-HS-A-110 SS | 25d |
|  | 2 | **Approval of Material** |  | 2026-01-15 | 2026-01-22 |  |  |
| ENG-MT-IR-ML-A-140 |  | Material Approval for Softscape and Planting Works | 7d | 2026-01-15 | 2026-01-22 | ENG-MT-IR-ML-S-140, ENG-SH-HS-A-110 SS | 25d |
| ENG-MT-IR-ML-A-150 |  | Material Approval for Site Furnishings (Seating Bench,Stone Boulders and Gravel) | 7d | 2026-01-15 | 2026-01-22 | ENG-MT-IR-ML-S-150, ENG-SH-HS-A-110 SS | 25d |
|  | 2 | **Sewage Network** |  | 2026-01-08 | 2026-01-22 |  |  |
|  | MS | **Submission of Material** |  | 2026-01-08 | 2026-01-14 |  |  |
|  | 1 | **Main Line Sections** |  | 2026-01-08 | 2026-01-14 |  |  |
| ENG-MT-SW-ML-S-100 |  | Material Submittal for Manholes of Sewage Network | 6d | 2026-01-08 | 2026-01-14 | ENG-MT-RD-S-150 SS | 25d |
| ENG-MT-SW-ML-S-110 |  | Material Submittal for Main Line Pipes of Sewage Network | 6d | 2026-01-08 | 2026-01-14 | ENG-MT-RD-S-150 SS | 25d |
|  | 3 | **Testing and Finishes** |  | 2026-01-08 | 2026-01-14 |  |  |
| ENG-MT-SW-TF-S-100 |  | Material Submittal for Manhole Covers of Sewage Network | 6d | 2026-01-08 | 2026-01-14 | ENG-MT-RD-S-150 SS | 25d |
|  | MA | **Approval of Material** |  | 2026-01-15 | 2026-01-22 |  |  |
|  | 1 | **Main Line Sections** |  | 2026-01-15 | 2026-01-22 |  |  |
| ENG-MT-SW-ML-A-100 |  | Material Approval for Manholes of Sewage Network | 7d | 2026-01-15 | 2026-01-22 | ENG-MT-SW-ML-S-100 | 25d |
| ENG-MT-SW-ML-A-110 |  | Material Approval for Main Line Pipes of Sewage Network | 7d | 2026-01-15 | 2026-01-22 | ENG-MT-SW-ML-S-110 | 25d |
|  | 3 | **Testing and Finishes** |  | 2026-01-15 | 2026-01-22 |  |  |
| ENG-MT-SW-TF-A-100 |  | Material Approval for Manhole Covers of Sewage Network | 7d | 2026-01-15 | 2026-01-22 | ENG-MT-SW-TF-S-100 | 25d |
|  | 9 | **Storm Drainage Network** |  | 2026-01-08 | 2026-01-22 |  |  |
|  | MS | **Submission of Material** |  | 2026-01-08 | 2026-01-14 |  |  |
|  | 1 | **Main Line Sections** |  | 2026-01-08 | 2026-01-14 |  |  |
| ENG-MT-SD-ML-S-100 |  | Material Submittal for Manholes of Storm Drainage Network | 6d | 2026-01-08 | 2026-01-14 | ENG-SH-SD-ML-S-100 SS | 25d |
| ENG-MT-SD-ML-S-110 |  | Material Submittal for Main Line Pipes of Storm Drainage Network | 6d | 2026-01-08 | 2026-01-14 | ENG-SH-SD-ML-S-100 SS | 0d |
|  | 2 | **Catch Basin Sections** |  | 2026-01-08 | 2026-01-14 |  |  |
| ENG-MT-SD-CB-S-100 |  | Material Submittal for Catch Basins of Storm Drainage Network | 6d | 2026-01-08 | 2026-01-14 | ENG-SH-SD-ML-S-100 SS | 25d |
| ENG-MT-SD-CB-S-110 |  | Material Submittal for Catch Basin Pipes of Storm Drainage Network | 6d | 2026-01-08 | 2026-01-14 | ENG-SH-SD-ML-S-100 SS | 25d |

| ID | WBS | Task | Duration | Start | Finish | Predecessors | Total float |
| --- | --- | --- | --- | --- | --- | --- | --- |
|  | 3 | **Testing and Finishes** |  | 2026-01-08 | 2026-01-14 |  |  |
| ENG-MT-SD-TF-S-100 |  | Material Submittal for Manhole Covers of Storm Drainage Network | 6d | 2026-01-08 | 2026-01-14 | ENG-SH-SD-ML-S-100 SS | 25d |
| ENG-MT-SD-TF-S-110 |  | Material Submittal for Catch Basin Covers of Storm Drainage Network | 6d | 2026-01-08 | 2026-01-14 | ENG-SH-SD-ML-S-100 SS | 25d |
|  | MA | **Approval of Material** |  | 2026-01-15 | 2026-01-22 |  |  |
|  | 1 | **Main Line Sections** |  | 2026-01-15 | 2026-01-22 |  |  |
| ENG-MT-SD-ML-A-100 |  | Material Approval for Manholes of Storm Drainage Network | 7d | 2026-01-15 | 2026-01-22 | ENG-MT-SD-ML-S-100 | 25d |
| ENG-MT-SD-ML-A-110 |  | Material Approval for Main Line Pipes of Storm Drainage Network | 7d | 2026-01-15 | 2026-01-22 | ENG-MT-SD-ML-S-110 | 0d |
|  | 2 | **Catch Basin Sections** |  | 2026-01-15 | 2026-01-22 |  |  |
| ENG-MT-SD-CB-A-100 |  | Material Approval for Catch Basins of Storm Drainage Network | 7d | 2026-01-15 | 2026-01-22 | ENG-MT-SD-CB-S-100 | 25d |
| ENG-MT-SD-CB-A-110 |  | Material Approval for Catch Basin Pipes of Storm Drainage Network | 7d | 2026-01-15 | 2026-01-22 | ENG-MT-SD-CB-S-110 | 25d |
|  | 3 | **Testing and Finishes** |  | 2026-01-15 | 2026-01-22 |  |  |
| ENG-MT-SD-TF-A-100 |  | Material Approval for Manhole Covers of Storm Drainage Network | 7d | 2026-01-15 | 2026-01-22 | ENG-MT-SD-TF-S-100 | 25d |
| ENG-MT-SD-TF-A-110 |  | Material Approval for Catch Basin Covers of Storm Drainage Network | 7d | 2026-01-15 | 2026-01-22 | ENG-MT-SD-TF-S-110 | 25d |
|  | 3 | **Potable Water Network** |  | 2026-01-08 | 2026-01-22 |  |  |
|  | MS | **Submission of Material** |  | 2026-01-08 | 2026-01-14 |  |  |
|  | 1 | **Main Line Sections** |  | 2026-01-08 | 2026-01-14 |  |  |
| ENG-MT-PW-ML-S-100 |  | Material Submittal for Main Line Pipes of Potable Water Network | 6d | 2026-01-08 | 2026-01-14 | ENG-SH-PW-ML-S-100 SS | 25d |
| ENG-MT-PW-ML-S-110 |  | Material Submittal for Main Line Valves of Potable Water Network | 6d | 2026-01-08 | 2026-01-14 | ENG-SH-PW-ML-S-100 SS | 25d |
|  | 3 | **Fire Hydrant** |  | 2026-01-08 | 2026-01-14 |  |  |
| ENG-MT-PW-FH-S-100 |  | Material Submittal for Fire Hydrant of Potable Water Network | 6d | 2026-01-08 | 2026-01-14 | ENG-SH-PW-ML-S-100 SS | 25d |
|  | 4 | **Testing and Finishes** |  | 2026-01-08 | 2026-01-14 |  |  |
| ENG-MT-PW-TF-S-100 |  | Material Submittal for Surface Box of Potable Water Network | 6d | 2026-01-08 | 2026-01-14 | ENG-SH-PW-ML-S-100 SS | 22d |
|  | MA | **Approval of Material** |  | 2026-01-15 | 2026-01-22 |  |  |
|  | 1 | **Main Line Sections** |  | 2026-01-15 | 2026-01-22 |  |  |
| ENG-MT-PW-ML-A-100 |  | Material Approval for Main Line Pipes of Potable Water Network | 7d | 2026-01-15 | 2026-01-22 | ENG-MT-PW-ML-S-100 | 25d |
| ENG-MT-PW-ML-A-110 |  | Material Approval for Valves of Potable Water Network | 7d | 2026-01-15 | 2026-01-22 | ENG-MT-PW-ML-S-110 | 25d |
|  | 3 | **Fire Hydrant** |  | 2026-01-15 | 2026-01-22 |  |  |
| ENG-MT-PW-FH-A-100 |  | Material Approval for Fire Hydrants of Potable Water Network | 7d | 2026-01-15 | 2026-01-22 | ENG-MT-PW-FH-S-100 | 25d |
|  | 4 | **Testing and Finishes** |  | 2026-01-15 | 2026-01-22 |  |  |
| ENG-MT-PW-TF-A-100 |  | Material Approval for Surface Box of Potable Water Network | 7d | 2026-01-15 | 2026-01-22 | ENG-MT-PW-TF-S-100 | 22d |
|  | 4 | **Irrigation Network** |  | 2026-01-07 | 2026-01-22 |  |  |
|  | MS | **Submission of Material** |  | 2026-01-07 | 2026-01-14 |  |  |
|  | 1 | **Main Line Pipes** |  | 2026-01-07 | 2026-01-14 |  |  |
| ENG-MT-IR-ML-S-100 |  | Material Submittal for Main Line Pipes of Irrigation Network | 7d | 2026-01-07 | 2026-01-14 | ENG-SH-HS-S-100 | 25d |
| ENG-MT-IR-ML-S-110 |  | Material Submittal for Main Line Valves of Irrigation Network | 7d | 2026-01-07 | 2026-01-14 | ENG-SH-HS-S-100 | 25d |
|  | MA | **Approval of Material** |  | 2026-01-15 | 2026-01-22 |  |  |
|  | 1 | **Main Line Pipes** |  | 2026-01-15 | 2026-01-22 |  |  |
| ENG-MT-IR-ML-A-100 |  | Material Approval for Main Line Pipes of Irrigation Network | 7d | 2026-01-15 | 2026-01-22 | ENG-MT-IR-ML-S-100 | 25d |
| ENG-MT-IR-ML-A-110 |  | Material Approval for Valves of Irrigation Network | 7d | 2026-01-15 | 2026-01-22 | ENG-MT-IR-ML-S-110 | 25d |
|  | 1 | **Treated Sewage Effluent (Tse)** |  | 2026-01-07 | 2026-01-22 |  |  |
|  | MS | **Submission of Material** |  | 2026-01-07 | 2026-01-14 |  |  |
|  | 1 | **Main Line Pipes** |  | 2026-01-07 | 2026-01-14 |  |  |
| ENG-MT-IR-ML-S-120 |  | Material Submittal for Main Line Pipes of Irrigation Network | 7d | 2026-01-07 | 2026-01-14 | ENG-SH-HS-S-100 | 25d |
| ENG-MT-IR-ML-S-130 |  | Material Submittal for Main Line Valves of Irrigation Network | 7d | 2026-01-07 | 2026-01-14 | ENG-SH-HS-S-100 | 25d |
|  | MA | **Approval of Material** |  | 2026-01-15 | 2026-01-22 |  |  |
|  | 1 | **Main Line Pipes** |  | 2026-01-15 | 2026-01-22 |  |  |
| ENG-MT-IR-ML-A-120 |  | Material Approval for Main Line Pipes of Irrigation Network | 7d | 2026-01-15 | 2026-01-22 | ENG-MT-IR-ML-S-120 | 25d |
| ENG-MT-IR-ML-A-130 |  | Material Approval for Valves of Irrigation Network | 7d | 2026-01-15 | 2026-01-22 | ENG-MT-IR-ML-S-130 | 25d |
|  | 5 | **Medium Voltage Network** |  | 2026-01-08 | 2026-01-22 |  |  |
|  | MS | **Submission of Material** |  | 2026-01-08 | 2026-01-14 |  |  |
|  | 1 | **Cabling Works** |  | 2026-01-08 | 2026-01-14 |  |  |
| ENG-MT-MV-ML-S-100 |  | Material Submittal for Medium Voltage Cables of Medium Voltage Network | 6d | 2026-01-08 | 2026-01-14 | ENG-SH-MV-S-100 SS | 25d |
|  | 3 | **Termination and Testing Works** |  | 2026-01-08 | 2026-01-14 |  |  |
| ENG-MT-MV-TF-S-100 |  | Material Submittal for Termination Kits of Medium Voltage Network | 6d | 2026-01-08 | 2026-01-14 | ENG-SH-MV-S-100 SS | 25d |
|  | MA | **Approval of Material** |  | 2026-01-15 | 2026-01-22 |  |  |
|  | 1 | **Cabling Works** |  | 2026-01-15 | 2026-01-22 |  |  |
| ENG-MT-MV-ML-A-100 |  | Material Approval for Medium Voltage Cables of Medium Voltage Network | 7d | 2026-01-15 | 2026-01-22 | ENG-MT-MV-ML-S-100, ENG-SH-MV-S-100 | 25d |
|  | 3 | **Termination and Testing Works** |  | 2026-01-15 | 2026-01-22 |  |  |
| ENG-MT-MV-TF-A-100 |  | Material Approval for Termination and Joints Kits of Medium Voltage Network | 7d | 2026-01-15 | 2026-01-22 | ENG-MT-MV-TF-S-100, ENG-SH-MV-S-100 | 25d |
|  | 7 | **Street Lighting Network** |  | 2026-01-08 | 2026-01-22 |  |  |
|  | MS | **Submission of Material** |  | 2026-01-08 | 2026-01-21 |  |  |
|  | 1 | **Cabling Works** |  | 2026-01-08 | 2026-01-14 |  |  |
| ENG-MT-SL-ML-S-100 |  | Material Submittal for Lighting Cables of Street Lighting Network | 6d | 2026-01-08 | 2026-01-14 | ENG-MT-MV-ML-S-100 SS | 25d |
|  | 2 | **Lighting Poles Works** |  | 2026-01-08 | 2026-01-14 |  |  |
| ENG-MT-SL-S-100 |  | Material Submittal for Lighting Poles Concrete Foundations of Street Lighting Network | 6d | 2026-01-08 | 2026-01-14 | ENG-MT-MV-ML-S-100 SS | 25d |
| ENG-MT-SL-S-110 |  | Material Submittal for Lighting Poles of Street Lighting Network | 6d | 2026-01-08 | 2026-01-14 | ENG-MT-MV-ML-S-100 SS | 25d |
| ENG-MT-SL-S-120 |  | Material Submittal for Lighting Fixtures of Street Lighting Network | 6d | 2026-01-08 | 2026-01-14 | ENG-MT-MV-ML-S-100 SS | 25d |
|  | 3 | **Distribution Panel Board** |  | 2026-01-08 | 2026-01-14 |  |  |
| ENG-MT-SL-DB-S-100 |  | Material Submittal for Lighting Distrubution Panel Boards of Street Lighting Network | 6d | 2026-01-08 | 2026-01-14 | ENG-MT-MV-ML-S-100 SS | 25d |
|  | 5 | **Termination and Testing Works** |  | 2026-01-08 | 2026-01-14 |  |  |

| ID | WBS | Task | Duration | Start | Finish | Predecessors | Total float |
| --- | --- | --- | --- | --- | --- | --- | --- |
| ENG-MT-SL-TF-S-100 |  | Material Submittal for Fuse Boxes of Street Lighting Network | 6d | 2026-01-08 | 2026-01-14 | ENG-MT-MV-ML-S-100 SS | 25d |
| ENG-MT-SL-TF-S-110 |  | Material Submittal for Cable Lugs of Street Lighting Network | 6d | 2026-01-08 | 2026-01-14 | ENG-MT-MV-ML-S-100 SS | 25d |
|  | 4 | **Earthing System Works** |  | 2026-01-15 | 2026-01-21 |  |  |
| ENG-MT-SL-ES-S-100 |  | Material Submittal for Lighting Earthing of Street Lighting Network | 6d | 2026-01-15 | 2026-01-21 | ENG-MT-MV-ML-S-100 SS, ENG-MT-SL-TF-S-110, ENG-MT-SL-TF-A-110 SS | 25d |
|  | MA | **Approval of Material** |  | 2026-01-15 | 2026-01-22 |  |  |
|  | 1 | **Cabling Works** |  | 2026-01-15 | 2026-01-22 |  |  |
| ENG-MT-SL-ML-A-100 |  | Material Approval for Lighting Cables of Street Lighting Network | 7d | 2026-01-15 | 2026-01-22 | ENG-MT-SL-ML-S-100 | 25d |
|  | 2 | **Lighting Poles Works** |  | 2026-01-15 | 2026-01-22 |  |  |
| ENG-MT-SL-A-100 |  | Material Approval for Lighting Poles Concrete Foundations of Street Lighting Network | 7d | 2026-01-15 | 2026-01-22 | ENG-MT-SL-S-100 | 25d |
| ENG-MT-SL-A-110 |  | Material Approval for Lighting Poles of Street Lighting Network | 7d | 2026-01-15 | 2026-01-22 | ENG-MT-SL-S-110 | 25d |
| ENG-MT-SL-A-120 |  | Material Approval for Lighting Fixtures of Street Lighting Network | 7d | 2026-01-15 | 2026-01-22 | ENG-MT-SL-S-120 | 25d |
|  | 3 | **Distribution Panel Board** |  | 2026-01-15 | 2026-01-22 |  |  |
| ENG-MT-SL-DB-A-100 |  | Material Approval for Distrubution Panel Boards of Street Lighting Network | 7d | 2026-01-15 | 2026-01-22 | ENG-MT-SL-DB-S-100 | 25d |
|  | 4 | **Earthing System Works** |  | 2026-01-15 | 2026-01-22 |  |  |
| ENG-MT-SL-ES-A-100 |  | Material Approval for Lighting Earthing of Street Lighting Network | 7d | 2026-01-15 | 2026-01-22 | ENG-MT-SL-ES-S-100 SS | 25d |
|  | 5 | **Termination and Testing Works** |  | 2026-01-15 | 2026-01-22 |  |  |
| ENG-MT-SL-TF-A-100 |  | Material Approval for Fuse Boxes of Street Lighting Network | 7d | 2026-01-15 | 2026-01-22 | ENG-MT-SL-TF-S-100 | 25d |
| ENG-MT-SL-TF-A-110 |  | Material Approval for Cable Lugs of Street Lighting Network | 7d | 2026-01-15 | 2026-01-22 | ENG-MT-SL-TF-S-110 | 25d |
|  | 8 | **Telecom Network** |  | 2026-01-15 | 2026-01-22 |  |  |
|  | MS | **Submission of Material** |  | 2026-01-15 | 2026-01-21 |  |  |
|  | 1 | **Ducts Works** |  | 2026-01-15 | 2026-01-21 |  |  |
| ENG-MT-TE-S-100 |  | Material Submittal for Ducts of Telecom Network | 6d | 2026-01-15 | 2026-01-21 | ENG-SH-CTV-S-100 SS | 25d |
|  | 3 | **Manholes Works** |  | 2026-01-15 | 2026-01-21 |  |  |
| ENG-MT-TE-S-110 |  | Material Submittal for Manholes of Telecom Network | 6d | 2026-01-15 | 2026-01-21 | ENG-SH-CTV-S-100 SS | 25d |
|  | 2 | **CCTV System Wroks** |  | 2026-01-15 | 2026-01-21 |  |  |
| ENG-MT-CTV-S-100 |  | Material Submittal for Civil and Finishes Works of CCTV Complete System | 6d | 2026-01-15 | 2026-01-21 | ENG-SH-CTV-S-100 SS | 25d |
|  | MA | **Approval of Material** |  | 2026-01-15 | 2026-01-22 |  |  |
|  | 1 | **Ducts Works** |  | 2026-01-15 | 2026-01-22 |  |  |
| ENG-MT-TE-A-100 |  | Material Approval for Ducts of Telecom Network | 7d | 2026-01-15 | 2026-01-22 | ENG-MT-TE-S-100 SS, ENG-SH-CTV-S-100 SS | 25d |
|  | 3 | **Manholes Works** |  | 2026-01-15 | 2026-01-22 |  |  |
| ENG-MT-TE-A-110 |  | Material Approval for Manholes of Telecom Network | 7d | 2026-01-15 | 2026-01-22 | ENG-MT-TE-S-110 SS, ENG-SH-CTV-S-100 SS | 25d |
|  | 2 | **CCTV System Wroks** |  | 2026-01-15 | 2026-01-22 |  |  |
| ENG-MT-CTV-A-100 |  | Material Approval for Civil and Finishes Works of CCTV Complete System | 7d | 2026-01-15 | 2026-01-22 | ENG-MT-CTV-S-100 SS, ENG-SH-CTV-S-100 SS | 25d |
|  | 1 | **Superstructure Works** |  | 2025-12-23 | 2026-01-22 |  |  |
|  | SL1111 | **Pump Stations** |  | 2025-12-23 | 2026-01-11 |  |  |
|  | 1 | **Submission of Material** |  | 2025-12-23 | 2025-12-30 |  |  |
| ENG-MT-PS-CV-S-140 |  | Material Submittal for Civil Works for Sewage Pump Stations | 7d | 2025-12-23 | 2025-12-30 | MS-CS-PS SS | 5.25d |
|  | 2 | **Approval of Material** |  | 2025-12-31 | 2026-01-11 |  |  |
| ENG-MT-PS-CV-A-150 |  | Material Approval for Civil Works for Sewage Pump Stations | 10d | 2025-12-31 | 2026-01-11 | ENG-MT-PS-CV-S-140 | 5.25d |
|  | SL | **Lift Station** |  | 2025-12-23 | 2026-01-11 |  |  |
|  | 1 | **Submission of Material** |  | 2025-12-23 | 2025-12-30 |  |  |
| ENG-MT-SLS-CV-S-100 |  | Material Submittal for Civil Works for Lift Stations | 7d | 2025-12-23 | 2025-12-30 | MS-CS-PS SS | 3.25d |
|  | 2 | **Approval of Material** |  | 2025-12-31 | 2026-01-11 |  |  |
| ENG-MT-SLS-CV-A-110 |  | Material Approval for Civil Works for Sewage Lift Stations | 10d | 2025-12-31 | 2026-01-11 | ENG-MT-SLS-CV-S-100 | 3.25d |
|  | TE | **Storm Drainage Ponds** |  | 2025-12-31 | 2026-01-19 |  |  |
|  | 1 | **Submission of Material** |  | 2025-12-31 | 2026-01-07 |  |  |
| ENG-MT-DPO-CV-S-100 |  | Material Submittal for Civil Works for Storm Drainage Ponds | 7d | 2025-12-31 | 2026-01-07 | ENG-MT-PS-CV-A-150 SS | 28d |
|  | 2 | **Approval of Material** |  | 2026-01-08 | 2026-01-19 |  |  |
| ENG-MT-DPO-CV-A-110 |  | Material Approval for Civil Works for Storm Drainage Ponds | 10d | 2026-01-08 | 2026-01-19 | ENG-MT-DPO-CV-S-100 | 28d |
|  | SL111 | **Storage Tank (TSE)** |  | 2025-12-31 | 2026-01-19 |  |  |
|  | 1 | **Submission of Material** |  | 2025-12-31 | 2026-01-07 |  |  |
| ENG-MT-TSE-CV-S-130 |  | Material Submittal for Civil Works for Storage Tank (TSE) | 7d | 2025-12-31 | 2026-01-07 | ENG-MT-SLS-CV-S-100 | 9.75d |
|  | 2 | **Approval of Material** |  | 2026-01-08 | 2026-01-19 |  |  |
| ENG-MT-TSE-CV-A-140 |  | Material Approval for Civil Works for Storage Tank (TSE) | 10d | 2026-01-08 | 2026-01-19 | ENG-MT-TSE-CV-S-130 | 9.75d |
|  | SL11 | **Gaurd Room** |  | 2025-12-23 | 2026-01-19 |  |  |
|  | 1 | **Submission of Material** |  | 2025-12-23 | 2026-01-03 |  |  |
| ENG-MT-GR-CV-S-120 |  | Material Submittal for Civil Works for Gaurd Room | 10d | 2025-12-23 | 2026-01-03 | MS-CS-PS SS | 10.75d |
|  | 2 | **Approval of Material** |  | 2026-01-04 | 2026-01-19 |  |  |
| ENG-MT-GR-CV-A-130 |  | Material Approval for Civil Works for Gaurd Room | 14d | 2026-01-04 | 2026-01-19 | ENG-MT-GR-CV-S-120 | 10.75d |
|  | SL1 | **Fence** |  | 2025-12-23 | 2026-01-19 |  |  |
|  | 1 | **Submission of Material** |  | 2025-12-23 | 2026-01-03 |  |  |
| ENG-MT-FE-CV-S-110 |  | Material Submittal for Civil Works for Fence | 10d | 2025-12-23 | 2026-01-03 | MS-CS-PS SS | 28d |
|  | 2 | **Approval of Material** |  | 2026-01-04 | 2026-01-19 |  |  |
| ENG-MT-FE-CV-A-120 |  | Material Approval for Civil Works for Fence | 14d | 2026-01-04 | 2026-01-19 | ENG-MT-FE-CV-S-110 | 28d |
|  | SL12 | **Softscape and Planting Works** |  | 2026-01-15 | 2026-01-22 |  |  |
|  | 1 | **Submission of Material** |  | 2026-01-15 | 2026-01-22 |  |  |
| ENG-MT-PL-CV-S-150 |  | Material Submittal for Softscape and Planting Works | 7d | 2026-01-15 | 2026-01-22 | ENG-SH-MRK-A-110 SS | 25d |
|  | 2 | **Approval of Material** |  | 2026-01-15 | 2026-01-22 |  |  |
| ENG-MT-PL-CV-A-160 |  | Material Approval for Softscape and Planting Works | 7d | 2026-01-15 | 2026-01-22 | ENG-MT-PL-CV-S-150 SS | 25d |
|  | 1 | **Long Lead Time Items** |  | 2026-01-08 | 2026-01-22 |  |  |

| ID | WBS | Task | Duration | Start | Finish | Predecessors | Total float |
| --- | --- | --- | --- | --- | --- | --- | --- |
|  | 1 | **Infrastructure Networks** |  | 2026-01-08 | 2026-01-22 |  |  |
|  | 2 | **CCTV System Wroks of Telecom Network** |  | 2026-01-08 | 2026-01-22 |  |  |
|  | 1 | **Submission of Material** |  | 2026-01-08 | 2026-01-14 |  |  |
| ENG-MT-CTV-S-110 |  | Material Submittal for Low Current Works of CCTV Complete System with All Accessories | 6d | 2026-01-08 | 2026-01-14 | ENG-SH-RD-S-100 | 25d |
|  | 2 | **Approval of Material** |  | 2026-01-15 | 2026-01-22 |  |  |
| ENG-MT-CTV-A-110 |  | Material Approval for Low Current Works of CCTV Complete System with All Accessories | 7d | 2026-01-15 | 2026-01-22 | ENG-MT-CTV-S-110 | 25d |
|  | 2 | **Superstructure Works** |  | 2026-01-14 | 2026-01-22 |  |  |
|  | SL | **Pump Stations** |  | 2026-01-14 | 2026-01-22 |  |  |
|  | 1 | **Submission of Material** |  | 2026-01-14 | 2026-01-21 |  |  |
| ENG-MT-SPS-MC-S-100 |  | Material Submittal for Electromechanical Works for Pump Stations | 7d | 2026-01-14 | 2026-01-21 | ENG-SH-SPS-S-150 SS | 25d |
|  | 2 | **Approval of Material** |  | 2026-01-14 | 2026-01-22 |  |  |
| ENG-MT-SPS-MC-A-110 |  | Material Approval for Electromechanical Works for Pump Stations | 8d | 2026-01-14 | 2026-01-22 | ENG-MT-SPS-MC-S-100 SS | 25d |
|  | SL1 | **Storage Tank (TSE)** |  | 2026-01-14 | 2026-01-22 |  |  |
|  | 1 | **Submission of Material** |  | 2026-01-14 | 2026-01-21 |  |  |
| ENG-MT-TSE-MC-S-110 |  | Material Submittal for Electromechanical Works for Storage Tank (TSE) | 7d | 2026-01-14 | 2026-01-21 | ENG-MT-SPS-MC-S-100 SS | 25d |
|  | 2 | **Approval of Material** |  | 2026-01-14 | 2026-01-22 |  |  |
| ENG-MT-TSE-MC-A-120 |  | Material Approval for Electromechanical Works for Storage Tank (TSE) | 8d | 2026-01-14 | 2026-01-22 | ENG-MT-TSE-MC-S-110 SS | 25d |
|  | PROC | **Procurement Cycle** |  | 2026-01-12 | 2026-12-10 |  |  |
|  | NLL | **Short Lead Time Items** |  | 2026-01-12 | 2026-12-10 |  |  |
|  | INF | **Infrastructure Networks** |  | 2026-01-24 | 2026-12-10 |  |  |
|  | RD | **Road Works** |  | 2026-01-24 | 2026-12-10 |  |  |
|  | PO | **Issuance of Purchase Orders** |  | 2026-01-24 | 2026-02-05 |  |  |
|  | 1 | **Road Works** |  | 2026-01-24 | 2026-02-05 |  |  |
| PRO-RD-PO-100 |  | Issuance of Purchase Order for Subgrade of Road Works | 12d | 2026-01-24 | 2026-02-05 | ENG-MT-RD-A-100 | 44d |
| PRO-RD-PO-110 |  | Issuance of Purchase Order for Aggregate Base Course of Road Works | 12d | 2026-01-24 | 2026-02-05 | ENG-MT-RD-A-110 | 38d |
| PRO-RD-PO-120 |  | Issuance of Purchase Order for Prime Coat of Road Works | 12d | 2026-01-24 | 2026-02-05 | ENG-MT-RD-A-120 | 36d |
| PRO-RD-PO-130 |  | Issuance of Purchase Order for Bituminous Base & Wearing Courses of Road Works | 12d | 2026-01-24 | 2026-02-05 | ENG-MT-RD-A-130 | 38d |
|  | 2 | **Pavement Works** |  | 2026-01-24 | 2026-02-05 |  |  |
| PRO-RD-PO-140 |  | Issuance of Purchase Order for Interlock Tiles of Landscaping | 12d | 2026-01-24 | 2026-02-05 | ENG-MT-RD-A-140 | 41d |
| PRO-RD-PO-150 |  | Issuance of Purchase Order for Curbstones of Landscaping | 12d | 2026-01-24 | 2026-02-05 | ENG-MT-RD-A-150 | 36d |
|  | 3 | **Traffic Signs Boards and Roads Marking** |  | 2026-01-24 | 2026-02-05 |  |  |
| PRO-RD-PO-160 |  | Issuance of Purchase Order for Traffic Signs Boards of Road Works | 12d | 2026-01-24 | 2026-02-05 | ENG-MT-TS-A-100 | 43d |
| PRO-RD-PO-170 |  | Issuance of Purchase Order for Road Markings of Road Works | 12d | 2026-01-24 | 2026-02-05 | ENG-MT-TS-A-110 | 44d |
|  | MF | **Manufacturing of Material** |  | 2026-02-07 | 2026-10-27 |  |  |
|  | 1 | **Road Works** |  | 2026-02-07 | 2026-10-27 |  |  |
| PRO-RD-MF-100 |  | Manufacturing of Subgrade for Road Works | 180d | 2026-02-07 | 2026-09-21 | PRO-RD-PO-100 | 44d |
| PRO-RD-MF-110 |  | Manufacturing of Aggregate Base Course for Road Works | 200d | 2026-02-07 | 2026-10-15 | PRO-RD-PO-110 | 38d |
| PRO-RD-MF-120 |  | Manufacturing of Prime Coat for Road Works | 210d | 2026-02-07 | 2026-10-27 | PRO-RD-PO-120 | 36d |
| PRO-RD-MF-130 |  | Manufacturing of Bituminous Base & Wearing Courses for Road Works | 210d | 2026-02-07 | 2026-10-27 | PRO-RD-PO-130 | 38d |
|  | 2 | **Pavement Works** |  | 2026-02-07 | 2026-10-15 |  |  |
| PRO-RD-MF-140 |  | Manufacturing of Interlock Tiles for Landscaping | 200d | 2026-02-07 | 2026-10-15 | PRO-RD-PO-140 | 41d |
| PRO-RD-MF-150 |  | Manufacturing of Curbstones for Landscaping | 200d | 2026-02-07 | 2026-10-15 | PRO-RD-PO-150 | 36d |
|  | 3 | **Traffic Signs Boards and Roads Marking** |  | 2026-02-07 | 2026-10-15 |  |  |
| PRO-RD-MF-160 |  | Manufacturing of Traffic Signs Boards for Road Works | 185d | 2026-02-07 | 2026-09-28 | PRO-RD-PO-160 | 43d |
| PRO-RD-MF-170 |  | Manufacturing of Road Markings for Road Works | 200d | 2026-02-07 | 2026-10-15 | PRO-RD-PO-170 | 44d |
|  | 1DL | **1st Material Delivery & Site Inspection** |  | 2026-09-21 | 2026-11-10 |  |  |
|  | 1 | **Road Works** |  | 2026-09-21 | 2026-11-10 |  |  |
| PRO-RD-1DL-100 |  | 1ST Material Delivery for Subgrade of Road Works | 12d | 2026-09-21 | 2026-10-06 | PRO-RD-MF-100 | 44d |
| PRO-RD-1DL-110 |  | 1ST Material Delivery for Aggregate Base Course of Road Works | 12d | 2026-10-15 | 2026-10-29 | PRO-RD-MF-110 | 38d |
| PRO-RD-1DL-120 |  | 1ST Material Delivery for Prime Coat of Road Works | 12d | 2026-10-27 | 2026-11-10 | PRO-RD-MF-120 | 36d |
| PRO-RD-1DL-130 |  | 1ST Material Delivery for Bituminous Base & Wearing Courses of Road Works | 12d | 2026-10-27 | 2026-11-10 | PRO-RD-MF-130 | 38d |
|  | 2 | **Pavement Works** |  | 2026-10-15 | 2026-10-29 |  |  |
| PRO-RD-1DL-140 |  | 1ST Material Delivery for Interlock Tiles of Landscaping | 12d | 2026-10-15 | 2026-10-29 | PRO-RD-MF-140 | 41d |
| PRO-RD-1DL-150 |  | 1ST Material Delivery for Curbstones of Landscaping | 12d | 2026-10-15 | 2026-10-29 | PRO-RD-MF-150 | 36d |
|  | 3 | **Traffic Signs Boards and Roads Marking** |  | 2026-09-28 | 2026-11-02 |  |  |
| PRO-RD-1DL-160 |  | 1ST Material Delivery for Traffic Signs Boards of Road Works | 15d | 2026-09-28 | 2026-10-15 | PRO-RD-MF-160 | 43d |
| PRO-RD-1DL-170 |  | 1ST Material Delivery for Road Markings of Road Works | 15d | 2026-10-15 | 2026-11-02 | PRO-RD-MF-170, PRO-RD-1DL-160 | 44d |
|  | DL | **Material Delivery & Site Inspection** |  | 2026-10-06 | 2026-12-10 |  |  |
|  | 1 | **Pre-Bituminous Construction** |  | 2026-10-06 | 2026-11-18 |  |  |
| PRO-R25-RD-DL-100 |  | Material Delivery & Site Inspection for Subgrade of Road Works | 20d | 2026-10-06 | 2026-10-29 | PRO-RD-MF-100, PRO-RD-1DL-100 | 44d |
| PRO-R25-RD-DL-110 |  | Material Delivery & Site Inspection for Aggregate Base Course of Road Works | 17d | 2026-10-29 | 2026-11-18 | PRO-RD-MF-110 SS, PRO-RD-MF-110, PRO-RD-1DL-110 | 38d |
|  | 4 | **Bituminous Construction** |  | 2026-11-10 | 2026-12-10 |  |  |
| PRO-R25-RD-DL-160 |  | Material Delivery & Site Inspection for Prime Coat of Road Works | 26d | 2026-11-10 | 2026-12-10 | PRO-RD-MF-120, PRO-RD-MF-120 FF, PRO-RD-1DL-120 | 36d |
| PRO-R25-RD-DL-170 |  | Material Delivery & Site Inspection for Bituminous Base & Wearing Courses of Road Works | 26d | 2026-11-10 | 2026-12-10 | PRO-RD-MF-130, PRO-RD-1DL-130 | 38d |
|  | 2 | **Pavement Works** |  | 2026-10-29 | 2026-11-29 |  |  |
| PRO-R25-RD-DL-120 |  | Material Delivery & Site Inspection of Interlock Tiles for Landscaping | 26d | 2026-10-29 | 2026-11-29 | PRO-RD-MF-140 SS, PRO-RD-MF-140, PRO-RD-1DL-140 | 41d |
| PRO-R25-RD-DL-130 |  | Material Delivery & Site Inspection of Curbstones for Landscaping | 26d | 2026-10-29 | 2026-11-29 | PRO-RD-MF-150, PRO-RD-1DL-150 | 36d |
|  | 3 | **Traffic Signs Boards and Roads Marking** |  | 2026-10-15 | 2026-12-10 |  |  |
| PRO-R25-RD-DL-140 |  | Material Delivery & Site Inspection of Traffic Signs Boards For Road Works | 48d | 2026-10-15 | 2026-12-10 | PRO-RD-MF-160, PRO-RD-1DL-160 | 43d |
| PRO-R25-RD-DL-150 |  | Material Delivery & Site Inspection of Road Markings For Road Works | 30d | 2026-11-02 | 2026-12-07 | PRO-RD-MF-170, PRO-RD-1DL-170 | 44d |

| ID | WBS | Task | Duration | Start | Finish | Predecessors | Total float |
| --- | --- | --- | --- | --- | --- | --- | --- |
|  | IR1 | **Softscape and Planting Works** |  | 2026-01-24 | 2026-09-01 |  |  |
|  | PO | **Issuance of Purchase Orders** |  | 2026-01-24 | 2026-01-29 |  |  |
|  | 1 | **Main Line Pipes** |  | 2026-01-24 | 2026-01-29 |  |  |
| PRO-IR-PO-140 |  | Issuance of Purchase Order for Softscape and Planting Works | 6d | 2026-01-24 | 2026-01-29 | ENG-MT-IR-ML-A-140 | 42d |
| PRO-IR-PO-150 |  | Issuance of Purchase Order for Site Furnishings (Seating Bench,Stone Boulders and Gravel) | 6d | 2026-01-24 | 2026-01-29 | ENG-MT-IR-ML-A-150 | 42d |
|  | MF | **Manufacturing of Material** |  | 2026-01-31 | 2026-08-04 |  |  |
|  | 1 | **Main Line Pipes** |  | 2026-01-31 | 2026-08-04 |  |  |
| PRO-IR-MF-140 |  | Manufacturing of Softscape and Planting Works | 125d | 2026-01-31 | 2026-07-12 | PRO-IR-PO-140 | 42d |
| PRO-IR-MF-150 |  | Manufacturing of Valves for Site Furnishings (Seating Bench,Stone Boulders and Gravel) | 145d | 2026-01-31 | 2026-08-04 | PRO-IR-PO-150 | 42d |
|  | 1DL | **1st Material Delivery & Site Inspection** |  | 2026-07-12 | 2026-08-11 |  |  |
|  | 1 | **Main Line Pipes** |  | 2026-07-12 | 2026-08-11 |  |  |
| PRO-IR-1DL-140 |  | 1ST Material Delivery for Softscape and Planting Works | 6d | 2026-07-12 | 2026-07-19 | PRO-IR-MF-140 | 42d |
| PRO-IR-1DL-150 |  | 1ST Material Delivery for Site Furnishings (Seating Bench,Stone Boulders and Gravel) | 6d | 2026-08-04 | 2026-08-11 | PRO-IR-MF-150 | 42d |
|  | DL | **Material Delivery & Site Inspection** |  | 2026-07-19 | 2026-09-01 |  |  |
|  | 1 | **Main Line Pipes** |  | 2026-07-19 | 2026-09-01 |  |  |
| PRO-R25-IR-DL-140 |  | Material Delivery & Site Inspection of Softscape and Planting Works | 18d | 2026-07-19 | 2026-08-09 | PRO-IR-1DL-140 | 42d |
| PRO-R25-IR-DL-150 |  | Material Delivery & Site Inspection of Site Furnishings (Seating Bench,Stone Boulders and Gravel) | 18d | 2026-08-11 | 2026-09-01 | PRO-IR-1DL-150 | 42d |
|  | SW | **Sewage Network** |  | 2026-01-24 | 2026-09-29 |  |  |
|  | PO | **Issuance of Purchase Orders** |  | 2026-01-24 | 2026-01-29 |  |  |
|  | 1 | **Main Line Sections** |  | 2026-01-24 | 2026-01-29 |  |  |
| PRO-SW-PO-100 |  | Issuance of Purchase Order for Main Line Pipes of Sewage Network | 6d | 2026-01-24 | 2026-01-29 | ENG-MT-SW-ML-A-110 | 29d |
| PRO-SW-PO-110 |  | Issuance of Purchase Order for Manhole of Sewage Network | 6d | 2026-01-24 | 2026-01-29 | ENG-MT-SW-ML-A-100 | 42d |
|  | 3 | **Testing and Finishes** |  | 2026-01-24 | 2026-01-29 |  |  |
| PRO-SW-PO-120 |  | Issuance of Purchase Order for Manhole Covers of Sewage Network | 6d | 2026-01-24 | 2026-01-29 | ENG-MT-SW-TF-A-100 | 41d |
|  | MF | **Manufacturing of Material** |  | 2026-01-31 | 2026-08-22 |  |  |
|  | 1 | **Main Line Sections** |  | 2026-01-31 | 2026-04-16 |  |  |
| PRO-SW-MF-100 |  | Manufacturing of Main Line Pipes for Sewage Network | 43d | 2026-01-31 | 2026-04-02 | PRO-SW-PO-100 | 29d |
| PRO-SW-MF-110 |  | Manufacturing of Manholes for Sewage Network | 55d | 2026-01-31 | 2026-04-16 | PRO-SW-PO-110 | 42d |
|  | 3 | **Testing and Finishes** |  | 2026-01-31 | 2026-08-22 |  |  |
| PRO-SW-MF-120 |  | Manufacturing of Manhole Covers for Sewage Network | 160d | 2026-01-31 | 2026-08-22 | PRO-SW-PO-120 | 41d |
|  | 1DL | **1st Material Delivery & Site Inspection** |  | 2026-04-02 | 2026-08-29 |  |  |
|  | 1 | **Main Line Sections** |  | 2026-04-02 | 2026-04-23 |  |  |
| PRO-SW-1DL-100 |  | 1ST Material Delivery for Main Line Pipes of Sewage Network | 6d | 2026-04-02 | 2026-04-09 | PRO-SW-MF-100 | 29d |
| PRO-SW-1DL-110 |  | 1ST Material Delivery for Manholes of Sewage Network | 6d | 2026-04-16 | 2026-04-23 | PRO-SW-MF-110 | 42d |
|  | 3 | **Testing and Finishes** |  | 2026-08-22 | 2026-08-29 |  |  |
| PRO-SW-1DL-120 |  | 1ST Material Delivery for Manholes Covers of Sewage Network | 6d | 2026-08-22 | 2026-08-29 | PRO-SW-MF-120 | 41d |
|  | DL | **Material Delivery & Site Inspection** |  | 2026-04-09 | 2026-09-29 |  |  |
|  | 1 | **Main Line Sections** |  | 2026-04-09 | 2026-05-14 |  |  |
| PRO-R25-SW-DL-100 |  | Material Delivery & Site Inspection of Main Line Pipes for Sewage Network | 18d | 2026-04-09 | 2026-04-30 | PRO-SW-1DL-100, PRO-SW-MF-100 SS, PRO-SW-MF-100 FF | 30d |
| PRO-R25-SW-DL-110 |  | Material Delivery & Site Inspection of Manholes for Sewage Network | 18d | 2026-04-23 | 2026-05-14 | PRO-SW-1DL-110, PRO-SW-MF-110 SS, PRO-SW-MF-110 FF | 42d |
|  | 3 | **Testing and Finishes** |  | 2026-08-29 | 2026-09-29 |  |  |
| PRO-R25-SW-DL-120 |  | Material Delivery & Site Inspection of Manholes Covers for Sewage Network | 26d | 2026-08-29 | 2026-09-29 | PRO-SW-1DL-120, PRO-SW-MF-120 SS, PRO-SW-MF-120 FF | 41d |
|  | SD | **Storm Drainage Network** |  | 2026-01-24 | 2026-10-05 |  |  |
|  | MF | **Manufacturing of Material** |  | 2026-01-31 | 2026-08-27 |  |  |
|  | 1 | **Main Line Sections** |  | 2026-01-31 | 2026-04-05 |  |  |
| PRO-SD-MF-100 |  | Manufacturing of Materials for Manholes of Storm Drainage Network | 45d | 2026-01-31 | 2026-04-05 | PRO-SD-PO-100 | 38d |
| PRO-SD-MF-110 |  | Manufacturing of Materials for Main Line Pipes of Storm Drainage Network | 45d | 2026-01-31 | 2026-04-05 | PRO-SD-PO-110 | 0d |
|  | 2 | **Catch Basin Sections** |  | 2026-01-31 | 2026-03-07 |  |  |
| PRO-SD-MF-130 |  | Manufacturing of Materials for Catch Basins of Storm Drainage Network | 26d | 2026-01-31 | 2026-03-07 | PRO-SD-PO-130 | 35d |
| PRO-SD-MF-150 |  | Manufacturing of Materials for Catch Basin Pipes of Storm Drainage Network | 26d | 2026-01-31 | 2026-03-07 | PRO-SD-PO-150 | 35d |
|  | 3 | **Testing and Finishes** |  | 2026-01-31 | 2026-08-27 |  |  |
| PRO-SD-MF-120 |  | Manufacturing of Materials for Manhole Covers of Storm Drainage Network | 165d | 2026-01-31 | 2026-08-27 | PRO-SD-PO-120 | 40d |
| PRO-SD-MF-140 |  | Manufacturing of Materials for Catch Basin Covers of Storm Drainage Network | 150d | 2026-01-31 | 2026-08-10 | PRO-SD-PO-140 | 43d |
|  | PO | **Issuance of Purchase Orders** |  | 2026-01-24 | 2026-01-29 |  |  |
|  | 1 | **Main Line Sections** |  | 2026-01-24 | 2026-01-29 |  |  |
| PRO-SD-PO-100 |  | Issuance of Purchase Order for Manholes of Storm Drainage Network | 6d | 2026-01-24 | 2026-01-29 | ENG-MT-SD-ML-A-100 | 38d |
| PRO-SD-PO-110 |  | Issuance of Purchase Order for Main Line Pipes of Storm Drainage Network | 6d | 2026-01-24 | 2026-01-29 | ENG-MT-SD-ML-A-110 | 0d |
|  | 2 | **Catch Basin Sections** |  | 2026-01-24 | 2026-01-29 |  |  |
| PRO-SD-PO-130 |  | Issuance of Purchase Order for Catch Basins of Storm Drainage Network | 6d | 2026-01-24 | 2026-01-29 | ENG-MT-SD-CB-A-100 | 35d |
| PRO-SD-PO-150 |  | Issuance of Purchase Order for Catch Basin Pipes of Storm Drainage Network | 6d | 2026-01-24 | 2026-01-29 | ENG-MT-SD-CB-A-110 | 35d |
|  | 3 | **Testing and Finishes** |  | 2026-01-24 | 2026-01-29 |  |  |
| PRO-SD-PO-120 |  | Issuance of Purchase Order for Manhole Covers of Storm Drainage Network | 6d | 2026-01-24 | 2026-01-29 | ENG-MT-SD-TF-A-100 | 40d |
| PRO-SD-PO-140 |  | Issuance of Purchase Order for Catch Basin Covers of Storm Drainage Network | 6d | 2026-01-24 | 2026-01-29 | ENG-MT-SD-TF-A-110 | 43d |
|  | 1DL | **1st Material Delivery & Site Inspection** |  | 2026-03-07 | 2026-09-03 |  |  |
|  | 1 | **Main Line Sections** |  | 2026-04-05 | 2026-04-11 |  |  |
| PRO-SD-1DL-100 |  | 1ST Material Delivery for Manholes of Storm Drainage Network | 5d | 2026-04-05 | 2026-04-11 | PRO-SD-MF-100 | 38d |
| PRO-SD-1DL-110 |  | 1ST Material Delivery for Main Line Pipes of Storm Drainage Network | 5d | 2026-04-05 | 2026-04-11 | PRO-SD-MF-110 | 0d |
|  | 2 | **Catch Basin Sections** |  | 2026-03-07 | 2026-03-16 |  |  |
| PRO-SD-1DL-120 |  | 1ST Material Delivery for Catch Basin Pipes of Storm Drainage Network | 6d | 2026-03-07 | 2026-03-16 | PRO-SD-MF-150 | 35d |
| PRO-SD-1DL-130 |  | 1ST Material Delivery for Catch Basins of Storm Drainage Network | 6d | 2026-03-07 | 2026-03-16 | PRO-SD-MF-130 | 35d |

| ID | WBS | Task | Duration | Start | Finish | Predecessors | Total float |
| --- | --- | --- | --- | --- | --- | --- | --- |
|  | 3 | **Testing and Finishes** |  | 2026-08-10 | 2026-09-03 |  |  |
| PRO-SD-1DL-150 |  | 1ST Material Delivery for Catch Basin Covers of Storm Drainage Network | 6d | 2026-08-10 | 2026-08-17 | PRO-SD-MF-140 | 43d |
| PRO-SD-1DL-140 |  | 1ST Material Delivery for Manholes Covers of Storm Drainage Network | 6d | 2026-08-27 | 2026-09-03 | PRO-SD-MF-120 | 40d |
|  | DL | **Material Delivery & Site Inspection** |  | 2026-03-16 | 2026-10-05 |  |  |
|  | 1 | **Main Line Sections** |  | 2026-04-11 | 2026-04-19 |  |  |
| PRO-R25-SD-DL-100 |  | Material Delivery & Site Inspection of Manholes of Storm Drainage Network | 7d | 2026-04-11 | 2026-04-19 | PRO-SD-1DL-100, PRO-SD-MF-100 | 38d |
| PRO-R25-SD-DL-120 |  | Material Delivery & Site Inspection of Main Line Pipes of Storm Drainage Network | 7d | 2026-04-11 | 2026-04-19 | PRO-SD-1DL-110, PRO-SD-MF-110 | 0d |
|  | 2 | **Catch Basin Sections** |  | 2026-03-16 | 2026-05-13 |  |  |
| PRO-R25-SD-DL-110 |  | Material Delivery & Site Inspection of Catch Basin Pipes for Storm Drainage Network | 46d | 2026-03-16 | 2026-05-13 | PRO-SD-1DL-120, PRO-SD-MF-150 SS, PRO-SD-MF-150 FF | 35d |
| PRO-R25-SD-DL-130 |  | Material Delivery & Site Inspection of Catch Basins for Storm Drainage Network | 46d | 2026-03-16 | 2026-05-13 | PRO-SD-1DL-130, PRO-SD-MF-130 SS, PRO-SD-MF-130 FF | 35d |
|  | 3 | **Testing and Finishes** |  | 2026-08-17 | 2026-10-05 |  |  |
| PRO-R25-SD-DL-150 |  | Material Delivery & Site Inspection of Catch Basin Covers for Storm Drainage Network | 26d | 2026-08-17 | 2026-09-16 | PRO-SD-1DL-150, PRO-SD-MF-140 | 43d |
| PRO-R25-SD-DL-140 |  | Material Delivery & Site Inspection of Manholes Covers for Storm Drainage Network | 26d | 2026-09-03 | 2026-10-05 | PRO-SD-1DL-140, PRO-SD-MF-120, PRO-R25-IR-DL-150 | 40d |
|  | PW | **Potable Water Network** |  | 2026-01-24 | 2026-11-19 |  |  |
|  | PO | **Issuance of Purchase Orders** |  | 2026-01-24 | 2026-02-03 |  |  |
|  | 1 | **Main Line Sections** |  | 2026-01-24 | 2026-01-29 |  |  |
| PRO-PW-PO-100 |  | Issuance of Purchase Order for Main Line Pipes of Potable Water Network | 6d | 2026-01-24 | 2026-01-29 | ENG-MT-PW-ML-A-100 | 41d |
| PRO-PW-PO-110 |  | Issuance of Purchase Order for Valves of Potable Water Network | 6d | 2026-01-24 | 2026-01-29 | ENG-MT-PW-ML-A-110 | 43d |
|  | 3 | **Fire Hydrant** |  | 2026-01-24 | 2026-02-03 |  |  |
| PRO-PW-PO-120 |  | Issuance of Purchase Order for Fire Hydrants of Potable Water Network | 10d | 2026-01-24 | 2026-02-03 | ENG-MT-PW-FH-A-100 | 37d |
|  | 4 | **Testing and Finishes** |  | 2026-01-24 | 2026-02-03 |  |  |
| PRO-PW-PO-130 |  | Issuance of Purchase Order for Surface Box of Potable Water Network | 10d | 2026-01-24 | 2026-02-03 | ENG-MT-PW-TF-A-100 | 22d |
|  | MF | **Manufacturing of Material** |  | 2026-01-31 | 2026-10-13 |  |  |
|  | 1 | **Main Line Sections** |  | 2026-01-31 | 2026-08-05 |  |  |
| PRO-PW-MF-100 |  | Manufacturing of Main Line Pipes for Potable Water Network | 100d | 2026-01-31 | 2026-06-13 | PRO-PW-PO-100 | 41d |
| PRO-PW-MF-110 |  | Manufacturing of Valves for Potable Water Network | 140d | 2026-02-07 | 2026-08-05 | PRO-PW-PO-110, PRO-R25-PW-DL-120 FF | 37d |
|  | 3 | **Fire Hydrant** |  | 2026-02-04 | 2026-06-29 |  |  |
| PRO-PW-MF-120 |  | Manufacturing of Fire Hydrants for Potable Water Network | 110d | 2026-02-04 | 2026-06-29 | PRO-PW-PO-120 | 37d |
|  | 4 | **Testing and Finishes** |  | 2026-02-04 | 2026-10-13 |  |  |
| PRO-PW-MF-130 |  | Manufacturing for Surface Box of Potable Water Network | 200d | 2026-02-04 | 2026-10-13 | PRO-PW-PO-130 | 22d |
|  | 1DL | **1st Material Delivery & Site Inspection** |  | 2026-06-13 | 2026-10-20 |  |  |
|  | 1 | **Main Line Sections** |  | 2026-06-13 | 2026-08-12 |  |  |
| PRO-PW-1DL-100 |  | 1ST Material Delivery for Main Line Pipes of Potable Water Network | 6d | 2026-06-13 | 2026-06-20 | PRO-PW-MF-100 | 41d |
| PRO-PW-1DL-110 |  | 1ST Material Delivery for Valves of Potable Water Network | 6d | 2026-08-05 | 2026-08-12 | PRO-PW-MF-110 | 37d |
|  | 3 | **Fire Hydrant** |  | 2026-06-29 | 2026-07-06 |  |  |
| PRO-PW-1DL-120 |  | 1ST Material Delivery for Fire Hydrants of Potable Water Network | 6d | 2026-06-29 | 2026-07-06 | PRO-PW-MF-120 | 37d |
|  | 4 | **Testing and Finishes** |  | 2026-10-13 | 2026-10-20 |  |  |
| PRO-PW-1DL-130 |  | 1ST Material Delivery for Finishes of Potable Water Network | 6d | 2026-10-13 | 2026-10-20 | PRO-PW-MF-130 | 22d |
|  | DL | **Material Delivery & Site Inspection** |  | 2026-06-20 | 2026-11-19 |  |  |
|  | 1 | **Main Line Sections** |  | 2026-06-20 | 2026-09-02 |  |  |
| PRO-R25-PW-DL-100 |  | Material Delivery & Site Inspection of Main Line Pipes for Potable Water Network | 18d | 2026-06-20 | 2026-07-11 | PRO-PW-1DL-100 | 41d |
| PRO-R25-PW-DL-110 |  | Material Delivery & Site Inspection of Valves for Potable Water Network | 18d | 2026-08-12 | 2026-09-02 | PRO-PW-1DL-110 | 37d |
|  | 3 | **Fire Hydrant** |  | 2026-07-06 | 2026-08-05 |  |  |
| PRO-R25-PW-DL-120 |  | Material Delivery & Site Inspection of Fire Hydrants for Potable Water Network | 26d | 2026-07-06 | 2026-08-05 | PRO-PW-1DL-120 | 37d |
|  | 4 | **Testing and Finishes** |  | 2026-10-20 | 2026-11-19 |  |  |
| PRO-R25-PW-DL-130 |  | Material Delivery & Site Inspection for Finishes of Potable Water Network | 26d | 2026-10-20 | 2026-11-19 | PRO-PW-1DL-130 | 22d |
|  | IR | **Irrigation Network** |  | 2026-01-24 | 2026-08-26 |  |  |
|  | PO | **Issuance of Purchase Orders** |  | 2026-01-24 | 2026-01-29 |  |  |
|  | 1 | **Main Line Pipes** |  | 2026-01-24 | 2026-01-29 |  |  |
| PRO-IR-PO-100 |  | Issuance of Purchase Order for Main Line Pipes of Irrigation Network | 6d | 2026-01-24 | 2026-01-29 | ENG-MT-IR-ML-A-100 | 36d |
| PRO-IR-PO-110 |  | Issuance of Purchase Order for Valves of Irrigation Network | 6d | 2026-01-24 | 2026-01-29 | ENG-MT-IR-ML-A-110 | 43d |
|  | MF | **Manufacturing of Material** |  | 2026-01-31 | 2026-07-29 |  |  |
|  | 1 | **Main Line Pipes** |  | 2026-01-31 | 2026-07-29 |  |  |
| PRO-IR-MF-100 |  | Manufacturing of Main Line Pipes for Irrigation Network | 105d | 2026-01-31 | 2026-06-18 | PRO-IR-PO-100 | 36d |
| PRO-IR-MF-110 |  | Manufacturing of Valves for Irrigation Network | 140d | 2026-01-31 | 2026-07-29 | PRO-IR-PO-110 | 43d |
|  | 1DL | **1st Material Delivery & Site Inspection** |  | 2026-06-18 | 2026-08-05 |  |  |
|  | 1 | **Main Line Pipes** |  | 2026-06-18 | 2026-08-05 |  |  |
| PRO-IR-1DL-100 |  | 1ST Material Delivery for Main Line Pipes of Irrigation Network | 6d | 2026-06-18 | 2026-06-25 | PRO-IR-MF-100 | 36d |
| PRO-IR-1DL-110 |  | 1ST Material Delivery for Valves of Irrigation Network | 6d | 2026-07-29 | 2026-08-05 | PRO-IR-MF-110 | 43d |
|  | DL | **Material Delivery & Site Inspection** |  | 2026-06-25 | 2026-08-26 |  |  |
|  | 1 | **Main Line Pipes** |  | 2026-06-25 | 2026-08-26 |  |  |
| PRO-R25-IR-DL-100 |  | Material Delivery & Site Inspection of Main Line Pipes for Irrigation Network | 18d | 2026-06-25 | 2026-07-16 | PRO-IR-1DL-100, PRO-IR-MF-100 SS, PRO-IR-MF-100 FF | 36d |
| PRO-R25-IR-DL-110 |  | Material Delivery & Site Inspection of Valves for Irrigation Network | 18d | 2026-08-05 | 2026-08-26 | PRO-IR-1DL-110, PRO-IR-MF-110 | 43d |
|  | TSE | **Treated Sewage Effluent (Tse)** |  | 2026-01-24 | 2026-09-07 |  |  |
|  | PO | **Issuance of Purchase Orders** |  | 2026-01-24 | 2026-01-29 |  |  |
|  | 1 | **Main Line Pipes** |  | 2026-01-24 | 2026-01-29 |  |  |
| PRO-TSE-PO-120 |  | Issuance of Purchase Order for Main Line Pipes of Treated Sewage Effluent (Tse) | 6d | 2026-01-24 | 2026-01-29 | ENG-MT-IR-ML-A-120 | 40d |
| PRO-TSE-PO-130 |  | Issuance of Purchase Order for Valves of Treated Sewage Effluent (Tse) | 6d | 2026-01-24 | 2026-01-29 | ENG-MT-IR-ML-A-130 | 36d |
|  | MF | **Manufacturing of Material** |  | 2026-01-31 | 2026-08-10 |  |  |
|  | 1 | **Main Line Pipes** |  | 2026-01-31 | 2026-08-10 |  |  |

| ID | WBS | Task | Duration | Start | Finish | Predecessors | Total float |
| --- | --- | --- | --- | --- | --- | --- | --- |
| PRO-TSE-MF-120 |  | Manufacturing of Main Line Pipes for Treated Sewage Effluent (Tse) | 110d | 2026-01-31 | 2026-06-24 | PRO-TSE-PO-120 | 40d |
| PRO-TSE-MF-130 |  | Manufacturing of Valves for Treated Sewage Effluent (Tse) | 150d | 2026-01-31 | 2026-08-10 | PRO-TSE-PO-130 | 36d |
|  | 1DL | **1st Material Delivery & Site Inspection** |  | 2026-06-24 | 2026-08-17 |  |  |
|  | 1 | **Main Line Pipes** |  | 2026-06-24 | 2026-08-17 |  |  |
| PRO-TSE-1DL-120 |  | 1ST Material Delivery for Main Line Pipes of Treated Sewage Effluent (Tse) | 6d | 2026-06-24 | 2026-07-01 | PRO-TSE-MF-120 | 40d |
| PRO-TSE-1DL-130 |  | 1ST Material Delivery for Valves of Treated Sewage Effluent (Tse) | 6d | 2026-08-10 | 2026-08-17 | PRO-TSE-MF-130 | 36d |
|  | DL | **Material Delivery & Site Inspection** |  | 2026-07-01 | 2026-09-07 |  |  |
|  | 1 | **Main Line Pipes** |  | 2026-07-01 | 2026-09-07 |  |  |
| PRO-R25-TSE-DL-120 |  | Material Delivery & Site Inspection of Main Line Pipes for Treated Sewage Effluent (Tse) | 18d | 2026-07-01 | 2026-07-22 | PRO-TSE-MF-120 SS+15d, PRO-TSE-MF-120 FF, PRO-TSE-1DL-120 | 40d |
| PRO-R25-TSE-DL-130 |  | Material Delivery & Site Inspection of Valves for Treated Sewage Effluent (Tse) | 18d | 2026-08-17 | 2026-09-07 | PRO-TSE-MF-130, PRO-TSE-1DL-130 | 36d |
|  | MV | **Medium Voltage Network** |  | 2026-01-24 | 2026-10-24 |  |  |
|  | PO | **Issuance of Purchase Orders** |  | 2026-01-24 | 2026-02-05 |  |  |
|  | 1 | **Cabling Works** |  | 2026-01-24 | 2026-02-05 |  |  |
| PRO-MV-PO-100 |  | Issuance of Purchase Order for Medium Voltage Cables of Medium Voltage Network | 12d | 2026-01-24 | 2026-02-05 | ENG-MT-MV-ML-A-100 | 43d |
|  | 3 | **Termination and Testing Works** |  | 2026-01-24 | 2026-02-05 |  |  |
| PRO-MV-PO-120 |  | Issuance of Purchase Order for Termination and Joints Kits of Medium Voltage Network | 12d | 2026-01-24 | 2026-02-05 | ENG-MT-MV-TF-A-100 | 37d |
|  | MF | **Manufacturing of Material** |  | 2026-02-07 | 2026-08-23 |  |  |
|  | 1 | **Cabling Works** |  | 2026-02-07 | 2026-06-20 |  |  |
| PRO-MV-MF-100 |  | Manufacturing of Medium Voltage Cables for Medium Voltage Network | 100d | 2026-02-07 | 2026-06-20 | PRO-MV-PO-100 | 43d |
|  | 3 | **Termination and Testing Works** |  | 2026-02-07 | 2026-08-23 |  |  |
| PRO-MV-MF-110 |  | Manufacturing of Termination and Joints Kits for Medium Voltage Network | 155d | 2026-02-07 | 2026-08-23 | PRO-MV-PO-120 | 37d |
|  | 1DL | **1st Material Delivery & Site Inspection** |  | 2026-06-20 | 2026-09-22 |  |  |
|  | 1 | **Cabling Works** |  | 2026-06-20 | 2026-07-04 |  |  |
| PRO-MV-1DL-100 |  | 1ST Material Delivery for Medium Voltage Cables of Medium Voltage Network | 12d | 2026-06-20 | 2026-07-04 | PRO-MV-MF-100 | 43d |
|  | 3 | **Termination and Testing Works** |  | 2026-08-23 | 2026-09-22 |  |  |
| PRO-MV-1DL-120 |  | 1ST Material Delivery for Termination and Joints Kits of Medium Voltage Network | 26d | 2026-08-23 | 2026-09-22 | PRO-MV-MF-110 | 37d |
|  | DL | **Material Delivery & Site Inspection** |  | 2026-07-04 | 2026-10-24 |  |  |
|  | 1 | **Cabling Works** |  | 2026-07-04 | 2026-08-03 |  |  |
| PRO-MV-DL-100 |  | Material Delivery & Site Inspection of Medium Voltage Cables for Medium Voltage Network | 26d | 2026-07-04 | 2026-08-03 | PRO-MV-1DL-100, PRO-MV-MF-100 SS, PRO-MV-MF-100 FF | 43d |
|  | 3 | **Termination and Testing Works** |  | 2026-09-22 | 2026-10-24 |  |  |
| PRO-MV-DL-110 |  | Material Delivery & Site Inspection of Termination and Joints Kits for Medium Voltage Network | 26d | 2026-09-22 | 2026-10-24 | PRO-MV-1DL-120, PRO-MV-MF-110 SS, PRO-MV-MF-110 FF | 37d |
|  | SL | **Low Voltage and Street Lighting Network** |  | 2026-01-24 | 2026-11-30 |  |  |
|  | PO | **Issuance of Purchase Orders** |  | 2026-01-24 | 2026-02-03 |  |  |
|  | 1 | **Cabling Works** |  | 2026-01-24 | 2026-01-29 |  |  |
| PRO-SL-PO-100 |  | Issuance of Purchase Order for Lighting Cables of Street Lighting Network | 6d | 2026-01-24 | 2026-01-29 | ENG-MT-SL-ML-A-100 | 41d |
|  | 2 | **Lighting Poles Works** |  | 2026-01-24 | 2026-01-29 |  |  |
| PRO-SL-PO-110 |  | Issuance of Purchase Order for Lighting Poles Foundations of Street Lighting Network | 6d | 2026-01-24 | 2026-01-29 | ENG-MT-SL-S-100, ENG-MT-SL-A-100 | 44d |
| PRO-SL-PO-120 |  | Issuance of Purchase Order for Lighting Poles of Street Lighting Network | 6d | 2026-01-24 | 2026-01-29 | ENG-MT-SL-S-110, ENG-MT-SL-A-110 | 43d |
| PRO-SL-PO-140 |  | Issuance of Purchase Order for Lighting Fixtures of Street Lighting Network | 6d | 2026-01-24 | 2026-01-29 | ENG-MT-SL-S-120, ENG-MT-SL-A-120 | 32d |
|  | 3 | **Distribution Panel Board** |  | 2026-01-24 | 2026-02-03 |  |  |
| PRO-SL-PO-160 |  | Issuance of Purchase Order for Distrubution Panel Boards of Street Lighting Network | 10d | 2026-01-24 | 2026-02-03 | ENG-MT-SL-DB-S-100, ENG-MT-SL-DB-A-100 | 41d |
|  | 4 | **Earthing System Works** |  | 2026-01-24 | 2026-02-03 |  |  |
| PRO-SL-PO-150 |  | Issuance of Purchase Order for Lighting Earthing of Street Lighting Network | 10d | 2026-01-24 | 2026-02-03 | ENG-MT-SL-ES-S-100, ENG-MT-SL-ES-A-100 | 38d |
|  | 5 | **Termination and Testing Works** |  | 2026-01-24 | 2026-02-03 |  |  |
| PRO-SL-PO-130 |  | Issuance of Purchase Order for Fuse Boxes of Street Lighting Network | 10d | 2026-01-24 | 2026-02-03 | ENG-MT-SL-TF-S-100, ENG-MT-SL-TF-A-100 | 34d |
| PRO-SL-PO-170 |  | Issuance of Purchase Order for Cable Lugs of Street Lighting Network | 10d | 2026-01-24 | 2026-02-03 | ENG-MT-SL-TF-S-110, ENG-MT-SL-TF-A-110 | 31d |
|  | MF | **Manufacturing of Material** |  | 2026-01-31 | 2026-10-13 |  |  |
|  | 1 | **Cabling Works** |  | 2026-01-31 | 2026-07-23 |  |  |
| PRO-SL-MF-100 |  | Manufacturing of Lighting Cables for Street Lighting Network | 135d | 2026-01-31 | 2026-07-23 | PRO-SL-PO-100 | 41d |
|  | 2 | **Lighting Poles Works** |  | 2026-01-31 | 2026-10-08 |  |  |
| PRO-SL-MF-110 |  | Manufacturing of Lighting Poles Foundations for Street Lighting Network | 120d | 2026-01-31 | 2026-07-06 | PRO-SL-PO-110 | 44d |
| PRO-SL-MF-120 |  | Manufacturing of Lighting Poles for Street Lighting Network | 145d | 2026-01-31 | 2026-08-04 | PRO-SL-PO-120 | 43d |
| PRO-SL-MF-140 |  | Manufacturing of Lighting Fixtures for Street Lighting Network | 200d | 2026-01-31 | 2026-10-08 | PRO-SL-PO-140 | 32d |
|  | 3 | **Distribution Panel Board** |  | 2026-02-04 | 2026-09-13 |  |  |
| PRO-SL-MF-160 |  | Manufacturing of Distrubution Panel Boards for Street Lighting Network | 175d | 2026-02-04 | 2026-09-13 | PRO-SL-PO-160 | 41d |
|  | 4 | **Earthing System Works** |  | 2026-02-04 | 2026-10-01 |  |  |
| PRO-SL-MF-150 |  | Manufacturing of Lighting Earthing for Street Lighting Network | 190d | 2026-02-04 | 2026-10-01 | PRO-SL-PO-150 | 38d |
|  | 5 | **Termination and Testing Works** |  | 2026-02-04 | 2026-10-13 |  |  |
| PRO-SL-MF-130 |  | Manufacturing of Fuse Boxes for Street Lighting Network | 200d | 2026-02-04 | 2026-10-13 | PRO-SL-PO-130 | 34d |
| PRO-SL-MF-170 |  | Manufacturing of Cable Lugs for Street Lighting Network | 200d | 2026-02-04 | 2026-10-13 | PRO-SL-PO-170 | 31d |
|  | 1DL | **1st Material Delivery & Site Inspection** |  | 2026-07-06 | 2026-10-31 |  |  |
|  | 1 | **Cabling Works** |  | 2026-07-23 | 2026-07-30 |  |  |
| PRO-SL-1DL-100 |  | 1ST Material Delivery for Lighting Cables of Street Lighting Network | 6d | 2026-07-23 | 2026-07-30 | PRO-SL-MF-100 | 41d |
|  | 2 | **Lighting Poles Works** |  | 2026-07-06 | 2026-10-15 |  |  |
| PRO-SL-1DL-110 |  | 1ST Material Delivery for Lighting Poles Foundations of Street Lighting Network | 6d | 2026-07-06 | 2026-07-13 | PRO-SL-MF-110 | 44d |
| PRO-SL-1DL-120 |  | 1ST Material Delivery for Lighting Poles of Street Lighting Network | 6d | 2026-08-04 | 2026-08-11 | PRO-SL-MF-120 | 43d |
| PRO-SL-1DL-140 |  | 1ST Material Delivery for Lighting Fixtures of Street Lighting Network | 6d | 2026-10-08 | 2026-10-15 | PRO-SL-MF-140 | 32d |
|  | 3 | **Distribution Panel Board** |  | 2026-09-13 | 2026-09-20 |  |  |
| PRO-SL-1DL-160 |  | 1ST Material Delivery for Distrubution Panel Boards of Street Lighting Network | 6d | 2026-09-13 | 2026-09-20 | PRO-SL-MF-160 | 41d |
|  | 5 | **Termination and Testing Works** |  | 2026-10-13 | 2026-10-31 |  |  |

| ID | WBS | Task | Duration | Start | Finish | Predecessors | Total float |
| --- | --- | --- | --- | --- | --- | --- | --- |
| PRO-SL-1DL-130 |  | 1ST Material Delivery for Fuse Boxes of Street Lighting Network | 15d | 2026-10-13 | 2026-10-31 | PRO-SL-MF-130 | 34d |
| PRO-SL-1DL-170 |  | 1ST Material Delivery for Cable Lugs of Street Lighting Network | 15d | 2026-10-13 | 2026-10-31 | PRO-SL-MF-170 | 31d |
|  | 4 | **Earthing System Works** |  | 2026-10-01 | 2026-10-08 |  |  |
| PRO-SL-1DL-150 |  | 1ST Material Delivery for Lighting Earthing of Street Lighting Network | 6d | 2026-10-01 | 2026-10-08 | PRO-SL-MF-150 | 38d |
|  | DL | **Material Delivery & Site Inspection** |  | 2026-07-13 | 2026-11-30 |  |  |
|  | 1 | **Cabling Works** |  | 2026-07-30 | 2026-08-30 |  |  |
| PRO-R25-SL-DL-100 |  | Material Delivery & Site Inspection of Lighting Cables for Street Lighting Network | 26d | 2026-07-30 | 2026-08-30 | PRO-SL-MF-100 SS, PRO-SL-MF-100 FF, PRO-SL-1DL-100 | 41d |
|  | 2 | **Lighting Poles Works** |  | 2026-07-13 | 2026-11-15 |  |  |
| PRO-R25-SL-DL-110 |  | Material Delivery & Site Inspection of Lighting Poles Foundations for Street Lighting Network | 26d | 2026-07-13 | 2026-08-12 | PRO-SL-MF-110 SS, PRO-SL-MF-110 FF, PRO-SL-1DL-110 | 44d |
| PRO-R25-SL-DL-120 |  | Material Delivery & Site Inspection of Lighting Poles for Street Lighting Network | 26d | 2026-08-11 | 2026-09-10 | PRO-SL-1DL-120, PRO-SL-MF-120 | 43d |
| PRO-R25-SL-DL-140 |  | Material Delivery & Site Inspection of Lighting Fixtures for Street Lighting Network | 26d | 2026-10-15 | 2026-11-15 | PRO-SL-MF-140, PRO-SL-1DL-140 | 32d |
|  | 3 | **Distribution Panel Board** |  | 2026-09-20 | 2026-10-21 |  |  |
| PRO-R25-SL-DL-160 |  | Material Delivery & Site Inspection of Distrubution Panel Boards for Street Lighting Network | 26d | 2026-09-20 | 2026-10-21 | PRO-SL-MF-160, PRO-SL-1DL-160 | 41d |
|  | 4 | **Termination and Testing Works** |  | 2026-10-31 | 2026-11-30 |  |  |
| PRO-R25-SL-DL-130 |  | Material Delivery & Site Inspection of Fuse Boxes for Street Lighting Network | 26d | 2026-10-31 | 2026-11-30 | PRO-SL-MF-130, PRO-SL-1DL-130 | 34d |
| PRO-R25-SL-DL-170 |  | Material Delivery & Site Inspection of Cable Lugs for Street Lighting Network | 26d | 2026-10-31 | 2026-11-30 | PRO-SL-MF-170, PRO-SL-1DL-170 | 31d |
|  | 5 | **Earthing System Works** |  | 2026-10-08 | 2026-11-08 |  |  |
| PRO-R25-SL-DL-150 |  | Material Delivery & Site Inspection of Lighting Earthing for Street Lighting Network | 26d | 2026-10-08 | 2026-11-08 | PRO-SL-MF-150, PRO-SL-1DL-150 | 38d |
|  | TE | **Telecom Network** |  | 2026-01-24 | 2026-10-15 |  |  |
|  | PO | **Issuance of Purchase Orders** |  | 2026-01-24 | 2026-01-29 |  |  |
|  | 1 | **Ducts Works** |  | 2026-01-24 | 2026-01-29 |  |  |
| PRO-TE-PO-100 |  | Issuance of Purchase Order for Ducts forTelecom Network | 6d | 2026-01-24 | 2026-01-29 | ENG-MT-TE-A-100 | 39d |
|  | 3 | **Manholes Works** |  | 2026-01-24 | 2026-01-29 |  |  |
| PRO-TE-PO-110 |  | Issuance of Purchase Order for Manholes forTelecom Network | 6d | 2026-01-24 | 2026-01-29 | ENG-MT-TE-A-110 | 44d |
|  | 2 | **CCTV System Wroks** |  | 2026-01-24 | 2026-01-29 |  |  |
| PRO-CTV-PO-100 |  | Issuance of Purchase Order for Civil and Finishes Works of CCTV Complete System | 6d | 2026-01-24 | 2026-01-29 | ENG-MT-CTV-A-100 | 41d |
|  | MF | **Manufacturing of Material** |  | 2026-01-31 | 2026-08-22 |  |  |
|  | 1 | **Ducts Works** |  | 2026-01-31 | 2026-07-18 |  |  |
| PRO-TE-MF-100 |  | Manufacturing of Ducts for Telecom Network | 130d | 2026-01-31 | 2026-07-18 | PRO-TE-PO-100 | 39d |
|  | 3 | **Manholes Works** |  | 2026-01-31 | 2026-08-10 |  |  |
| PRO-TE-MF-110 |  | Manufacturing of Manholes for Telecom Network | 150d | 2026-01-31 | 2026-08-10 | PRO-TE-PO-110 | 44d |
|  | 2 | **CCTV System Wroks** |  | 2026-01-31 | 2026-08-22 |  |  |
| PRO-CTV-MF-100 |  | Manufacturing of Civil and Finishes Works for CCTV Complete System | 160d | 2026-01-31 | 2026-08-22 | PRO-CTV-PO-100 | 41d |
|  | 1DL | **1st Material Delivery & Site Inspection** |  | 2026-07-18 | 2026-09-02 |  |  |
|  | 1 | **Ducts Works** |  | 2026-07-18 | 2026-07-25 |  |  |
| PRO-TE-1DL-100 |  | 1ST Material Delivery for Ducts of Telecom Network | 6d | 2026-07-18 | 2026-07-25 | PRO-TE-MF-100 | 39d |
|  | 3 | **Manholes Works** |  | 2026-08-10 | 2026-08-17 |  |  |
| PRO-TE-1DL-110 |  | 1ST Material Delivery for Manholes of Telecom Network | 6d | 2026-08-10 | 2026-08-17 | PRO-TE-MF-110 | 44d |
|  | 2 | **CCTV System Wroks** |  | 2026-08-22 | 2026-09-02 |  |  |
| PRO-CTV-1DL-100 |  | 1ST Material Delivery for Civil and Finishes Works of CCTV Complete System | 10d | 2026-08-22 | 2026-09-02 | PRO-CTV-MF-100 | 41d |
|  | DL | **Material Delivery & Site Inspection** |  | 2026-07-25 | 2026-10-15 |  |  |
|  | 1 | **Ducts Works** |  | 2026-07-25 | 2026-09-05 |  |  |
| PRO-R25-TE-DL-100 |  | Material Delivery & Site Inspection for Ducts of Telecom Network | 36d | 2026-07-25 | 2026-09-05 | PRO-TE-MF-100 SS+15d, PRO-TE-MF-100 FF, PRO-TE-1DL-100 | 39d |
|  | 3 | **Manholes Works** |  | 2026-08-17 | 2026-09-16 |  |  |
| PRO-R25-TE-DL-110 |  | Material Delivery & Site Inspection of Manholes for Telecom Network | 26d | 2026-08-17 | 2026-09-16 | PRO-TE-MF-110 SS+15d, PRO-TE-MF-110 FF, PRO-TE-1DL-110 | 44d |
|  | 2 | **CCTV System Wroks** |  | 2026-09-02 | 2026-10-15 |  |  |
| PRO-R25-CTV-DL-100 |  | Material Delivery & Site Inspection of for Civil and Finishes Works of CCTV Complete System | 36d | 2026-09-02 | 2026-10-15 | PRO-CTV-MF-100, PRO-CTV-1DL-100, PRO-CTV-1DL-100 FF | 41d |
|  | 1 | **Superstructure Works** |  | 2026-01-12 | 2026-08-27 |  |  |
|  | 1 | **Issuance of Purchase Orders** |  | 2026-01-12 | 2026-02-02 |  |  |
|  | SL | **Pump Stations** |  | 2026-01-12 | 2026-01-25 |  |  |
| PRO-SPS-CV-PO-10 |  | Issuance of Purchase Order for Civil Works for Pump Stations | 12d | 2026-01-12 | 2026-01-25 | ENG-MT-PS-CV-A-150 | 5.25d |
|  | SL1 | **Lift Station** |  | 2026-01-12 | 2026-01-25 |  |  |
| PRO-LS-CV-PO-20 |  | Issuance of Purchase Order for Civil Works for Lift Stations | 12d | 2026-01-12 | 2026-01-25 | ENG-MT-SLS-CV-A-110 | 3.25d |
|  | SL11 | **Storage Tank (TSE)** |  | 2026-01-20 | 2026-02-02 |  |  |
| PRO-TSE-CV-PO-30 |  | Issuance of Purchase Order for Civil Works for Storage Tank (TSE) | 12d | 2026-01-20 | 2026-02-02 | ENG-MT-TSE-CV-A-140 | 9.75d |
|  | TE | **Storm Drainage Ponds** |  | 2026-01-20 | 2026-02-02 |  |  |
| PRO-DPO-CV-PO-10 |  | Issuance of Purchase Order for Civil Works for Storm Drainage Ponds | 12d | 2026-01-20 | 2026-02-02 | ENG-MT-DPO-CV-A-110 | 37d |
|  | SL12 | **Gaurd Room** |  | 2026-01-20 | 2026-02-02 |  |  |
| PRO-GR-CV-PO-40 |  | Issuance of Purchase Order for Civil Works for Gaurd Room | 12d | 2026-01-20 | 2026-02-02 | ENG-MT-GR-CV-A-130 | 10.75d |
|  | SL121 | **Fence** |  | 2026-01-20 | 2026-02-02 |  |  |
| PRO-FE-CV-PO-50 |  | Issuance of Purchase Order for Civil Works for Fence | 12d | 2026-01-20 | 2026-02-02 | ENG-MT-FE-CV-A-120 | 38d |
|  | 2 | **Manufacturing of Material** |  | 2026-01-24 | 2026-08-03 |  |  |
|  | SL | **Pump Stations** |  | 2026-01-26 | 2026-04-18 |  |  |
| PRO-SPS-CV-MF-10 |  | Manufacturing of Civil Works for Pump Stations | 60d | 2026-01-26 | 2026-04-18 | PRO-SPS-CV-PO-10 | 5.25d |
|  | SL1 | **Lift Station** |  | 2026-01-26 | 2026-06-08 |  |  |
| PRO-LS-CV-MF-30 |  | Manufacturing of Civil Works for Civil Works for Lift Stations | 100d | 2026-01-26 | 2026-06-08 | PRO-LS-CV-PO-20 | 3.25d |
|  | TE | **Storm Drainage Ponds** |  | 2026-02-03 | 2026-05-07 |  |  |
| PRO-DPO-CV-MF-10 |  | Manufacturing of Civil Works for Storm Drainage Ponds | 70d | 2026-02-03 | 2026-05-07 | PRO-DPO-CV-PO-10 | 37d |
|  | SL11 | **Storage Tank (TSE)** |  | 2026-02-03 | 2026-06-04 |  |  |
| PRO-TSE-CV-MF-40 |  | Manufacturing of Civil Works for Civil Works for Storage Tank (TSE) | 90d | 2026-02-03 | 2026-06-04 | PRO-TSE-CV-PO-30 | 9.75d |

| ID | WBS | Task | Duration | Start | Finish | Predecessors | Total float |
| --- | --- | --- | --- | --- | --- | --- | --- |
|  | SL12 | **Gaurd Room** |  | 2026-02-03 | 2026-05-25 |  |  |
| PRO-GR-CV-MF-50 |  | Manufacturing of Civil Works for Civil Works for Gaurd Room | 85d | 2026-02-03 | 2026-05-25 | PRO-GR-CV-PO-40 | 10.75d |
|  | SL121 | **Fence** |  | 2026-02-03 | 2026-04-26 |  |  |
| PRO-FE-CV-MF-60 |  | Manufacturing of Civil Works for Civil Works for Fence | 60d | 2026-02-03 | 2026-04-26 | PRO-FE-CV-PO-50 | 38d |
|  | SL1211 | **Softscape and Planting Works** |  | 2026-01-24 | 2026-08-03 |  |  |
| PRO-FE-CV-MF-70 |  | Manufacturing of Civil Works for Softscape and Planting Works | 150d | 2026-01-24 | 2026-08-03 | ENG-MT-PL-CV-A-160 | 26d |
|  | 3 | **1st Material Delivery & Site Inspection** |  | 2026-04-18 | 2026-06-16 |  |  |
|  | SL | **Pump Stations** |  | 2026-04-18 | 2026-04-20 |  |  |
| PRO-SPS-CV-1DL-10 |  | 1ST Material Delivery for Civil Works for Pump Stations | 2d | 2026-04-18 | 2026-04-20 | PRO-SPS-CV-MF-10 | 5.25d |
|  | SL1 | **Lift Station** |  | 2026-06-08 | 2026-06-09 |  |  |
| PRO-LS-CV-1DL-40 |  | 1ST Material Delivery for Civil Works for Civil Works for Lift Stations | 1d | 2026-06-08 | 2026-06-09 | PRO-LS-CV-MF-30 | 3.25d |
|  | TE | **Drainage Ponds** |  | 2026-05-07 | 2026-06-16 |  |  |
| PRO-DPO-CV-1DL-10 |  | 1ST Material Delivery for Civil Works for Drainage Ponds | 30d | 2026-05-07 | 2026-06-16 | PRO-DPO-CV-MF-10 | 37d |
|  | SL11 | **Storage Tank (TSE)** |  | 2026-06-04 | 2026-06-06 |  |  |
| PRO-TSE-CV-1DL-50 |  | 1ST Material Delivery for Civil Works for Civil Works for Storage Tank (TSE) | 1d | 2026-06-04 | 2026-06-06 | PRO-TSE-CV-MF-40 | 9.75d |
|  | SL12 | **Gaurd Room** |  | 2026-05-25 | 2026-06-13 |  |  |
| PRO-GR-CV-1DL-60 |  | 1ST Material Delivery for Civil Works for Civil Works for Gaurd Room | 12d | 2026-05-25 | 2026-06-13 | PRO-GR-CV-MF-50 | 10.75d |
|  | SL121 | **Fence** |  |  |  |  |  |
|  | 4 | **Material Delivery & Site Inspection** |  | 2026-02-21 | 2026-08-27 |  |  |
|  | SL | **Pump Stations** |  | 2026-04-20 | 2026-05-02 |  |  |
| PRO-SPS-CV-DL-10 |  | Material Delivery & Site Inspection for Civil Works for Pump Stations | 10d | 2026-04-20 | 2026-05-02 | PRO-SPS-CV-MF-10, PRO-SPS-CV-1DL-10 | 5.25d |
|  | SL1 | **Lift Station** |  | 2026-06-09 | 2026-07-04 |  |  |
| PRO-LS-CV-DL-50 |  | Material Delivery & Site Inspection for Civil Works for Lift Stations | 21d | 2026-06-09 | 2026-07-04 | PRO-LS-CV-MF-30, PRO-LS-CV-1DL-40 | 3.25d |
|  | TE | **Storm Drainage Ponds** |  | 2026-06-16 | 2026-07-27 |  |  |
| PRO-DPO-CV-DL-10 |  | Material Delivery & Site Inspection for Civil Works for Storm Drainage Ponds | 35d | 2026-06-16 | 2026-07-27 | PRO-DPO-CV-MF-10, PRO-DPO-CV-MF-10 SS, PRO-DPO-CV-1DL-10 | 37d |
|  | SL11 | **Storage Tank (TSE)** |  | 2026-06-04 | 2026-06-06 |  |  |
| PRO-TSE-CV-DL-60 |  | Material Delivery & Site Inspection for Civil Works for Storage Tank (TSE) | 1d | 2026-06-04 | 2026-06-06 | PRO-TSE-CV-MF-40 | 9.75d |
|  | SL12 | **Gaurd Room** |  | 2026-06-13 | 2026-07-07 |  |  |
| PRO-GR-CV-DL-70 |  | Material Delivery & Site Inspection for Civil Works for Gaurd Room | 21d | 2026-06-13 | 2026-07-07 | PRO-GR-CV-MF-50 SS+15d, PRO-GR-CV-MF-50 FF, PRO-GR-CV-1DL-60 | 10.75d |
|  | SL121 | **Fence** |  | 2026-02-21 | 2026-06-30 |  |  |
| PRO-FE-CV-DL-80 |  | Material Delivery & Site Inspection for Civil Works for Fence | 97d | 2026-02-21 | 2026-06-30 | PRO-FE-CV-MF-60 SS+15d, PRO-FE-CV-MF-60 FF | 38d |
|  | SL1211 | **Softscape and Planting Works** |  | 2026-08-03 | 2026-08-27 |  |  |
| PRO-FE-CV-DL-90 |  | Material Delivery & Site Inspection for Softscape and Planting Works | 21d | 2026-08-03 | 2026-08-27 | PRO-FE-CV-MF-70 | 26d |
|  | LL | **Long Lead Time Items** |  | 2026-01-24 | 2026-11-23 |  |  |
|  | 2 | **Infrastructure Networks** |  | 2026-01-24 | 2026-10-25 |  |  |
|  | 2 | **CCTV System Wroks of Telecom Network** |  | 2026-01-24 | 2026-10-25 |  |  |
|  | 3 | **Issuance of Purchase Orders** |  | 2026-01-24 | 2026-03-18 |  |  |
| PRO-CTV-LL-PO-10 |  | Issuance of Purchase Order for Low Current Works of CCTV Complete System with All Accessories | 40d | 2026-01-24 | 2026-03-18 | ENG-MT-CTV-A-110 | 40d |
|  | 1 | **Manufacturing of Material** |  | 2026-03-19 | 2026-08-03 |  |  |
| PRO-CTV-LL-MF-10 |  | Manufacturing of Low Current Works for CCTV Complete System with All Accessories | 110d | 2026-03-19 | 2026-08-03 | PRO-CTV-LL-PO-10 | 40d |
|  | 2 | **Material Shipping/Custom Clearance/Delivery** |  | 2026-08-03 | 2026-09-07 |  |  |
| PRO-CTV-LL-SH/DL-10 |  | Material Delivery for Low Current Works of CCTV Complete System with All Accessories | 30d | 2026-08-03 | 2026-09-07 | PRO-CTV-LL-MF-10 | 40d |
|  | 4 | **Material Site Inspection** |  | 2026-09-07 | 2026-10-25 |  |  |
| PRO-CTV-LL-MSI-10 |  | Material Site Inspection for Low Current Works of CCTV Complete System with All Accessories | 40d | 2026-09-07 | 2026-10-25 | PRO-CTV-LL-SH/DL-10 | 40d |
|  | 1 | **Superstructure Works** |  | 2026-01-24 | 2026-11-23 |  |  |
|  | SL | **Pump Stations** |  | 2026-01-24 | 2026-11-23 |  |  |
|  | 1 | **Issuance of Purchase Orders** |  | 2026-01-24 | 2026-04-15 |  |  |
| PRO-SPS-LL-PO-10 |  | Issuance of Purchase Order for Electromechanical Works for Pump Stations | 60d | 2026-01-24 | 2026-04-15 | ENG-MT-SPS-MC-A-110 | 37d |
|  | 2 | **Manufacturing of Material** |  | 2026-04-15 | 2026-08-03 |  |  |
| PRO-SPS-LL-MF-10 |  | Manufacturing of Electromechanical Works for Pump Stations | 90d | 2026-04-15 | 2026-08-03 | PRO-SPS-LL-PO-10 | 37d |
|  | 3 | **Material Shipping/Custom Clearance/Delivery** |  | 2026-08-03 | 2026-10-01 |  |  |
| PRO-SPS-LL-SH/DL-10 |  | Material Delivery for Electromechanical Works for Pump Stations | 50d | 2026-08-03 | 2026-10-01 | PRO-SPS-LL-MF-10 | 37d |
|  | 4 | **Material Site Inspection** |  | 2026-10-01 | 2026-11-23 |  |  |
| PRO-SPS-LL-MSI-10 |  | Material Site Inspection for Electromechanical Works for Pump Stations | 45d | 2026-10-01 | 2026-11-23 | PRO-SPS-LL-SH/DL-10 | 37d |
|  | SL1 | **Lift Stations** |  | 2026-01-24 | 2026-11-23 |  |  |
|  | 1 | **Issuance of Purchase Orders** |  | 2026-01-24 | 2026-04-15 |  |  |
| PRO-LS-LL-PO-20 |  | Issuance of Purchase Order for Electromechanical Works for Lift Stations | 60d | 2026-01-24 | 2026-04-15 | ENG-MT-SPS-MC-A-110 | 41d |
|  | 2 | **Manufacturing of Material** |  | 2026-04-15 | 2026-08-03 |  |  |
| PRO-LS-LL-MF-20 |  | Manufacturing of Electromechanical Works for Lift Stations | 90d | 2026-04-15 | 2026-08-03 | PRO-LS-LL-PO-20 | 41d |
|  | 3 | **Material Shipping/Custom Clearance/Delivery** |  | 2026-08-03 | 2026-10-01 |  |  |
| PRO-LS-LL-SH/DL-20 |  | Material Delivery for Electromechanical Works for Lift Stations | 50d | 2026-08-03 | 2026-10-01 | PRO-LS-LL-MF-20 | 41d |
|  | 4 | **Material Site Inspection** |  | 2026-10-01 | 2026-11-23 |  |  |
| PRO-LS-LL-MSI-20 |  | Material Site Inspection for Electromechanical Works for Lift Stations | 45d | 2026-10-01 | 2026-11-23 | PRO-LS-LL-SH/DL-20 | 41d |
|  | SL2 | **Storage Tank (TSE)** |  | 2026-01-24 | 2026-11-23 |  |  |
|  | 1 | **Issuance of Purchase Orders** |  | 2026-01-24 | 2026-04-15 |  |  |
| PRO-TSE-LL-PO-30 |  | Issuance of Purchase Order for Electromechanical Works for Storage Tank (TSE) | 60d | 2026-01-24 | 2026-04-15 | ENG-MT-TSE-MC-A-120 | 41d |
|  | 2 | **Manufacturing of Material** |  | 2026-04-15 | 2026-08-09 |  |  |
| PRO-TSE-LL-MF-30 |  | Manufacturing of Electromechanical Works for Storage Tank (TSE) | 95d | 2026-04-15 | 2026-08-09 | PRO-TSE-LL-PO-30 | 41d |
|  | 3 | **Material Shipping/Custom Clearance/Delivery** |  | 2026-08-09 | 2026-10-01 |  |  |
| PRO-TSE-LL-SH/DL-30 |  | Material Delivery for Electromechanical Works for Storage Tank (TSE) | 45d | 2026-08-09 | 2026-10-01 | PRO-TSE-LL-MF-30 | 41d |

| ID | WBS | Task | Duration | Start | Finish | Predecessors | Total float |
| --- | --- | --- | --- | --- | --- | --- | --- |
|  | 4 | **Material Site Inspection** |  | 2026-10-01 | 2026-11-23 |  |  |
| PRO-TSE-LL-MSI-30 |  | Material Site Inspection for Electromechanical Works for Storage Tank (TSE) | 45d | 2026-10-01 | 2026-11-23 | PRO-TSE-LL-SH/DL-30 | 41d |
|  | CON | **Construction Works** |  | 2026-02-24 | 2027-02-22 |  |  |
|  | INF | **Infrastructure Networks** |  | 2026-02-24 | 2026-12-27 |  |  |
|  | EW | **Earthworks** |  | 2026-02-24 | 2026-05-09 |  |  |
|  | EW | **Earthworks** |  | 2026-02-24 | 2026-05-09 |  |  |
| CO-EW-200 |  | Excavation Works Upto Design Level for Earthworks-P1 | 17d | 2026-02-24 | 2026-03-25 | MS-CS-PS SS, MOB-30, MOB-20, MOB-80, MOB-40, MOB-50, MOB-60 FS+15d, MOB-10, MOB-70, PRE-CON-MDC-10, PRE-CON-MDC-20, PRE-CON-MDC-30, PRE-CON-MDC-40, PRE-CON-MDC-50, PRE-CON-MDC-60, PRE-CON-MDC-70, PRE-CON-MDC-80, MS-CF-EBL, MS-CF-ENG | 0d |
| CO-EW-210 |  | Excavation Works Upto Design Level for Earthworks-P2 | 18d | 2026-03-25 | 2026-04-15 | CO-EW-200, MS-CF-MOB | 0d |
| CO-EW-110 |  | Embankments Works Upto Design Level for Earthworks | 20d | 2026-04-15 | 2026-05-09 | CO-EW-200 SS+10d, CO-EW-220 SS, CO-EW-220 FF | 0d |
| CO-EW-220 |  | Excavation Works Upto Design Level for Earthworks-P3 | 18d | 2026-04-15 | 2026-05-06 | CO-EW-210 | 0d |
|  | SD | **Storm Drainage Network** |  | 2026-04-15 | 2026-08-17 |  |  |
|  | MH25-MH12 | **FROM MH-25:MH-12** |  | 2026-04-15 | 2026-07-01 |  |  |
|  | ML | **Main Line Sections** |  | 2026-04-15 | 2026-05-21 |  |  |
| CO-SD-ML-100 |  | Trench Excavation and Bedding Works for Main Lines of Storm Drainage Network | 3d | 2026-04-15 | 2026-04-19 | CO-EW-200 SS+10d, CO-EW-110 SS, ENG-SH-SD-ML-A-110, ENG-MT-SD-ML-A-110, PRO-SD-1DL-110, CO-EW-220 SS | 0d |
| CO-SD-ML-120 |  | Pipes Laying Works for Main Lines of Storm Drainage Network | 14d | 2026-04-19 | 2026-05-05 | CO-SD-ML-100, PRO-R25-SD-DL-120 | 0d |
| CO-SD-ML-130 |  | Trench Backfilling and Compaction Works for Main Lines of Storm Drainage Network | 14d | 2026-05-05 | 2026-05-21 | CO-SD-ML-120 | 0d |
|  | MH | **Manholes** |  | 2026-05-05 | 2026-06-08 |  |  |
| CO-SD-MH-180 |  | Trench Excavation and Bedding Works for Manholes of Storm Drainage Network | 7d | 2026-05-05 | 2026-05-13 | CO-SD-ML-120, ENG-MT-SD-ML-A-100, PRO-SD-1DL-100 | 17d |
| CO-SD-MH-190 |  | Install RC Footing Works for Manholes of Storm Drainage Network | 7d | 2026-05-13 | 2026-05-21 | CO-SD-MH-180, PRO-R25-SD-DL-100 | 17d |
| CO-SD-MH-200 |  | Install RC Wall Rings & Slab Works for Manholes of Storm Drainage Network | 4d | 2026-05-21 | 2026-05-31 | CO-SD-MH-190 | 17d |
| CO-SD-MH-220 |  | Backfilling Works for Manholes of Storm Drainage Network | 7d | 2026-05-31 | 2026-06-08 | CO-SD-MH-200, CO-SD-ML-130 FF | 17d |
|  | CB | **Catch Basin Sections** |  | 2026-05-13 | 2026-07-01 |  |  |
| CO-SD-CB-140 |  | Trench Excavation and Bedding Works for Catch Basins of Storm Drainage Network | 10d | 2026-05-13 | 2026-05-25 | CO-SD-MH-180, ENG-MT-SD-CB-A-110, PRO-SD-1DL-120, PRO-SD-1DL-130 | 25d |
| CO-SD-CB-150 |  | Installation and Pipes Laying Connection Works for Catch Basins of Storm Drainage Network | 10d | 2026-06-08 | 2026-06-20 | CO-SD-CB-140, PRO-R25-SD-DL-110, PRO-R25-SD-DL-130, CO-SD-MH-220 | 17d |
| CO-SD-CB-170 |  | Trench Backfilling and Compaction Works for Catch Basins of Storm Drainage Network | 10d | 2026-06-20 | 2026-07-01 | CO-SD-CB-150, CO-SD-ML-130 FF, CO-SD-MH-220 | 17d |
|  | MH25-MH121 | **FROM MH-12:MH-01** |  | 2026-05-05 | 2026-08-17 |  |  |
|  | ML | **Main Line Sections** |  | 2026-05-05 | 2026-07-20 |  |  |
| CO-SD-ML-140 |  | Trench Excavation and Bedding Works for Main Lines of Storm Drainage Network | 20d | 2026-05-05 | 2026-06-02 | CO-SD-ML-100, PRO-R25-SW-DL-100 SS, CO-SD-ML-120 | 10d |
| CO-SD-ML-150 |  | Pipes Laying Works for Main Lines of Storm Drainage Network | 21d | 2026-06-02 | 2026-06-27 | CO-SD-ML-140, CO-SD-ML-120 | 10d |
| CO-SD-ML-160 |  | Trench Backfilling and Compaction Works for Main Lines of Storm Drainage Network | 20d | 2026-06-27 | 2026-07-20 | CO-SD-ML-150, CO-SD-ML-130 | 22d |
|  | MH | **Manholes** |  | 2026-06-27 | 2026-08-03 |  |  |
| CO-SD-MH-230 |  | Trench Excavation and Bedding Works for Manholes of Storm Drainage Network | 9d | 2026-06-27 | 2026-07-07 | CO-SD-ML-150, CO-SD-MH-180 | 10d |
| CO-SD-MH-240 |  | Install RC Footing Works for Manholes of Storm Drainage Network | 7d | 2026-07-07 | 2026-07-15 | CO-SD-MH-230, CO-SD-MH-190 | 10d |
| CO-SD-MH-250 |  | Install RC Wall Rings & Slab Works for Manholes of Storm Drainage Network | 7d | 2026-07-15 | 2026-07-23 | CO-SD-MH-240, CO-SD-MH-200 | 10d |
| CO-SD-MH-260 |  | Backfilling Works for Manholes of Storm Drainage Network | 9d | 2026-07-23 | 2026-08-03 | CO-SD-MH-250, CO-SD-ML-160 FF, CO-SD-MH-220 | 10d |
|  | CB | **Catch Basin Sections** |  | 2026-07-07 | 2026-08-17 |  |  |
| CO-SD-CB-180 |  | Trench Excavation and Bedding Works for Catch Basins of Storm Drainage Network | 9d | 2026-07-07 | 2026-07-18 | CO-SD-MH-230, CO-SD-CB-140, CO-SD-CB-170 | 12d |
| CO-SD-CB-190 |  | Installation and Pipes Laying Connection Works for Catch Basins of Storm Drainage Network | 12d | 2026-07-18 | 2026-08-01 | CO-SD-CB-180, CO-SD-CB-150 | 12d |
| CO-SD-CB-200 |  | Trench Backfilling and Compaction Works for Catch Basins of Storm Drainage Network | 12d | 2026-08-03 | 2026-08-17 | CO-SD-CB-190, CO-SD-ML-160 FF, CO-SD-CB-170, CO-SD-MH-260 | 10d |
|  | SW | **Sewage Network** |  | 2026-05-13 | 2026-08-27 |  |  |
|  | 2 | **FROM MH-18:MH-10** |  | 2026-05-13 | 2026-08-04 |  |  |
|  | ML | **Main Line Sections** |  | 2026-05-13 | 2026-07-22 |  |  |
| CO-SW-ML-100 |  | Trench Excavation and Bedding Works for Main Lines of Sewage Network | 18d | 2026-05-13 | 2026-06-08 | ENG-SH-SW-ML-A-110, ENG-MT-SW-ML-A-110, PRO-SW-1DL-100, CO-SD-ML-130 SS+7d | 0d |
| CO-SW-ML-120 |  | Pipes Laying Works for Main Lines of Sewage Network | 18d | 2026-06-08 | 2026-06-29 | CO-SW-ML-100 | 0d |
| CO-SW-ML-130 |  | Trench Backfilling and Compaction Works for Main Lines of Sewage Network | 20d | 2026-06-29 | 2026-07-22 | CO-SW-ML-120 | 27d |
|  | 1 | **Manholes** |  | 2026-06-29 | 2026-08-04 |  |  |
| CO-SW-MH-160 |  | Excavation Works for Main Line Manholes of Sewage Network | 7d | 2026-06-29 | 2026-07-07 | CO-SW-ML-120, ENG-MT-SW-ML-A-100, PRO-SW-1DL-110 | 0d |
| CO-SW-MH-170 |  | Installation RC Footing Works for Main Line Manholes of Sewage Network | 8d | 2026-07-07 | 2026-07-16 | CO-SW-MH-160, CO-SW-ML-120 FF | 2d |
| CO-SW-MH-180 |  | Install Grp Liner Wall Works for Main Line Manholes of Sewage Network | 8d | 2026-07-16 | 2026-07-26 | CO-SW-MH-170 | 7d |
| CO-SW-MH-190 |  | Pouring Grp Liner Wall Works for Main Line Manholes of Sewage Network | 4d | 2026-07-26 | 2026-07-30 | CO-SW-MH-180 | 16d |
| CO-SW-MH-200 |  | Backfilling Works for Main Line Manholes of Sewage Network | 4d | 2026-07-30 | 2026-08-04 | CO-SW-MH-190, CO-SW-ML-130 FF | 16d |
|  | 1 | **FROM MH-10:MH-01** |  | 2026-06-08 | 2026-08-27 |  |  |
|  | ML | **Main Line Sections** |  | 2026-06-08 | 2026-07-20 |  |  |
| CO-SW-ML-140 |  | Trench Excavation and Bedding Works for Main Lines of Sewage Network | 12d | 2026-06-08 | 2026-06-22 | CO-SW-ML-100, PRO-R25-SW-DL-100 | 1d |
| CO-SW-ML-150 |  | Pipes Laying Works for Main Lines of Sewage Network | 12d | 2026-06-22 | 2026-07-06 | CO-SW-ML-140, CO-SW-ML-120 SS | 1d |
| CO-SW-ML-160 |  | Trench Backfilling and Compaction Works for Main Lines of Sewage Network | 12d | 2026-07-06 | 2026-07-20 | CO-SW-ML-150, CO-SW-ML-130 SS | 33d |
|  | 1 | **Manholes** |  | 2026-07-07 | 2026-08-27 |  |  |
| CO-SW-MH-210 |  | Excavation Works for Main Line Manholes of Sewage Network | 10d | 2026-07-07 | 2026-07-19 | CO-SW-ML-150, CO-SW-MH-160, PRO-R25-SW-DL-110 | 0d |
| CO-SW-MH-220 |  | Installation RC Footing Works for Main Line Manholes of Sewage Network | 13d | 2026-07-19 | 2026-08-03 | CO-SW-MH-210, CO-SW-MH-170 | 0d |
| CO-SW-MH-230 |  | Install Grp Liner Wall Works for Main Line Manholes of Sewage Network | 13d | 2026-08-03 | 2026-08-18 | CO-SW-MH-220, CO-SW-MH-180 | 0d |
| CO-SW-MH-240 |  | Pouring Grp Liner Wall Works for Main Line Manholes of Sewage Network | 4d | 2026-08-18 | 2026-08-23 | CO-SW-MH-230, CO-SW-MH-190 | 0d |
| CO-SW-MH-250 |  | Backfilling Works for Main Line Manholes of Sewage Network | 4d | 2026-08-23 | 2026-08-27 | CO-SW-MH-240, CO-SW-ML-160 FF, CO-SW-MH-200 | 0d |
|  | PW | **Potable Water Network** |  | 2026-08-27 | 2026-11-22 |  |  |
|  | ML | **Main Line Sections** |  | 2026-08-27 | 2026-10-10 |  |  |
| CO-PW-ML-100 |  | Trench Excavation and Bedding Works for Main Lines of Potable Water Network | 12d | 2026-08-27 | 2026-09-10 | ENG-SH-PW-ML-A-110, ENG-MT-PW-ML-A-100, PRO-PW-1DL-100, PRO-R25-PW-DL-100, CO-SW-ML-130 SS+7d, CO-SW-MH-250 | 0d |
| CO-PW-ML-110 |  | Pipes Laying and accessories for Main Lines of Potable Water Network | 12d | 2026-09-10 | 2026-09-26 | CO-PW-ML-100 | 0d |
| CO-PW-ML-130 |  | Trench Backfilling and Compaction Works for Main Lines of Potable Water Network | 12d | 2026-09-26 | 2026-10-10 | CO-PW-ML-110 | 0d |
|  | VC | **Valve Chamber** |  | 2026-10-10 | 2026-10-28 |  |  |
| CO-PW-VC-170 |  | Excavation Works for Main Line Valves and Valve Chambers of Potable Water Network | 2d | 2026-10-10 | 2026-10-12 | CO-PW-ML-110, ENG-MT-PW-ML-A-110, PRO-PW-1DL-110, CO-PW-ML-130 | 0d |
| CO-PW-VC180 |  | Installation Works for Valve Chambers of Potable Water Network | 4d | 2026-10-12 | 2026-10-17 | CO-PW-VC-170 | 0d |

| ID | WBS | Task | Duration | Start | Finish | Predecessors | Total float |
| --- | --- | --- | --- | --- | --- | --- | --- |
| CO-PW-VC-190 |  | Installation Works for Valves of Potable Water Network | 7d | 2026-10-17 | 2026-10-25 | CO-PW-VC180, PRO-PW-1DL-110, PRO-R25-PW-DL-110 | 0d |
| CO-PW-VC-220 |  | Backfilling Works for Main Line Valves and Valve Chambers of Potable Water Network | 3d | 2026-10-25 | 2026-10-28 | CO-PW-VC-190, CO-PW-ML-130 FF | 0d |
|  | FH | **Fire Hydrant** |  | 2026-10-28 | 2026-11-22 |  |  |
| CO-PW-FH-140 |  | Excavation Works for Fire Hydrants of Potable Water Network | 7d | 2026-10-28 | 2026-11-05 | CO-PW-VC-170, ENG-SH-PW-FH-A-110, ENG-MT-PW-FH-A-100, PRO-PW-1DL-120, CO-PW-ML-130, CO-PW-VC180, CO-PW-VC-220, PRO-R25-PW-DL-120 | 0d |
| CO-PW-FH-150 |  | Installation Works for Fire Hydrant of Potable Water Network | 7d | 2026-11-05 | 2026-11-14 | CO-PW-FH-140 | 0d |
| CO-PW-FH-160 |  | Trench Backfilling and Compaction Works for Fire Hydrants of Potable Water Network | 7d | 2026-11-14 | 2026-11-22 | CO-PW-FH-150, CO-PW-VC-220 FF | 0d |
|  | IR | **Irrigation Network** |  | 2026-08-27 | 2026-12-08 |  |  |
|  | ML | **Main Line Pipes** |  | 2026-08-27 | 2026-12-08 |  |  |
| CO-IR-ML-100 |  | Trench Excavation and Bedding Works for Main Lines of Irrigation Network | 21d | 2026-08-27 | 2026-09-21 | ENG-SH-IR-ML-A-110, ENG-MT-IR-ML-A-100, PRO-IR-1DL-100, PRO-R25-IR-DL-100, CO-PW-ML-100 SS | 0d |
| CO-IR-ML-110 |  | Pipes Laying Works for Main Lines of Irrigation Network | 21d | 2026-09-21 | 2026-10-17 | CO-IR-ML-100, PRO-IR-1DL-100, CO-PW-ML-110 SS | 0d |
| CO-IR-ML-120 |  | Installation Works for Main Line Valves of Irrigation Network | 12d | 2026-10-17 | 2026-10-31 | CO-IR-ML-110, ENG-MT-IR-ML-A-110, PRO-IR-1DL-110, PRO-R25-IR-DL-110, CO-SW-MH-250 | 0d |
| CO-IR-ML-130 |  | Trench Backfilling and Compaction Works for Main Lines of Irrigation Network | 21d | 2026-10-31 | 2026-11-24 | CO-IR-ML-120, CO-PW-FH-140 SS, CO-PW-FH-140 FF | 0d |
| CO-IR-ML-140 |  | Installation Works for Bulbblers And Sprinklers of Irrigation Network | 12d | 2026-11-24 | 2026-12-08 | CO-IR-ML-130 | 0d |
|  | TSE | **Treated Sewage Effluent (Tse)** |  | 2026-08-27 | 2026-12-08 |  |  |
|  | ML | **Main Line Pipes** |  | 2026-08-27 | 2026-12-08 |  |  |
| CO-TSE-ML-150 |  | Trench Excavation and Bedding Works for Main Lines of Treated Sewage Effluent (Tse) | 18d | 2026-08-27 | 2026-09-17 | ENG-SH-TSE-ML-A-120, ENG-MT-IR-ML-A-120, PRO-TSE-1DL-120, PRO-R25-TSE-DL-120, CO-IR-ML-100 SS | 9d |
| CO-TSE-ML-160 |  | Pipes Laying Works for Main Lines of Treated Sewage Effluent (Tse) | 18d | 2026-09-21 | 2026-10-13 | CO-TSE-ML-150, PRO-TSE-1DL-120, CO-IR-ML-110 SS | 6d |
| CO-TSE-ML-170 |  | Installation Works for Main Line Valves of Treated Sewage Effluent (Tse) | 12d | 2026-10-17 | 2026-10-31 | CO-TSE-ML-160, ENG-MT-IR-ML-A-130, PRO-TSE-1DL-130, PRO-R25-TSE-DL-130, CO-IR-ML-120 SS | 3d |
| CO-TSE-ML-180 |  | Trench Backfilling and Compaction Works for Treated Sewage Effluent (Tse) | 18d | 2026-10-31 | 2026-11-21 | CO-TSE-ML-170, CO-IR-ML-130 SS | 3d |
| CO-TSE-ML-190 |  | Installation Works for Valve and Washout Chambers of Treated Sewage Effluent (Tse) | 12d | 2026-11-24 | 2026-12-08 | CO-TSE-ML-180, CO-IR-ML-140 SS | 0d |
|  | MV | **Medium Voltage Network** |  | 2026-09-10 | 2026-11-24 |  |  |
|  | CW | **Cabling Works** |  | 2026-09-10 | 2026-11-24 |  |  |
| CO-MV-ML-250 |  | Trench Excavation and Bedding Works for Medium Voltage Network | 21d | 2026-09-10 | 2026-10-06 | ENG-SH-MV-A-110, ENG-MT-MV-ML-A-100, PRO-MV-1DL-100, PRO-MV-DL-100, CO-TSE-ML-150 SS, CO-SW-TF-100 | 10d |
| CO-MV-ML-260 |  | Cable Laying Works for Medium Voltage Network | 21d | 2026-10-06 | 2026-10-31 | CO-MV-ML-250 | 10d |
| CO-MV-ML-270 |  | Trench Backfilling and Compaction Works for Medium Voltage Network | 21d | 2026-10-31 | 2026-11-24 | CO-MV-ML-260 | 10d |
|  | SL | **Street Lighting Network** |  | 2026-09-10 | 2026-12-07 |  |  |
|  | LP | **Lighting Poles Works** |  | 2026-09-10 | 2026-11-09 |  |  |
| CO-SL-LP-300 |  | Foundation Excavation Works for Lighting Poles of Street Lighting Network | 12d | 2026-09-10 | 2026-09-26 | ENG-SH-LV-A-120, ENG-SH-SL-A-110, ENG-MT-SL-A-100, PRO-R25-SL-DL-110, CO-MV-ML-250 SS | 19d |
| CO-SL-LP-310 |  | Installation Works for Lighting Poles Foundation of Street Lighting Network | 12d | 2026-09-26 | 2026-10-10 | CO-SL-LP-300 | 19d |
| CO-SL-LP-320 |  | Installation Works for Lighting Poles of Street Lighting Network | 14d | 2026-10-10 | 2026-10-26 | CO-SL-LP-310, ENG-MT-SL-A-110, PRO-R25-SL-DL-120 | 19d |
| CO-SL-LP-210 |  | Backfilling Works for Lighting Poles of Street Lighting Network | 12d | 2026-10-26 | 2026-11-09 | CO-SL-LP-320 | 19d |
|  | CW | **Cabling Works** |  | 2026-09-26 | 2026-11-07 |  |  |
| CO-SL-CL-250 |  | Trench Excavation and Bedding Works for Street Lighting Network | 10d | 2026-09-26 | 2026-10-07 | CO-SL-LP-310 SS, ENG-SH-LV-A-120, ENG-SH-SL-A-110, ENG-MT-SL-ML-A-100, PRO-SL-1DL-100, PRO-R25-SL-DL-100 | 19d |
| CO-SL-CL-260 |  | Cable Laying Works for Street Lighting Network | 10d | 2026-10-07 | 2026-10-19 | CO-SL-CL-250 | 19d |
| CO-SL-CL-270 |  | Trench Backfilling and Compaction Works for Street Lighting Network | 10d | 2026-10-26 | 2026-11-07 | CO-SL-CL-260, CO-SL-LP-210 SS | 21d |
|  | DPB | **Distrubution Panel Boards** |  | 2026-11-09 | 2026-12-07 |  |  |
| CO-SL-DB-250 |  | Foundation Excavation Works For Panel Boards of Street Lighting Network | 6d | 2026-11-09 | 2026-11-16 | CO-SL-LP-210, CO-SL-CL-270, ENG-MT-SL-DB-A-100 | 19d |
| CO-SL-DB-260 |  | Installation Works for Panel Board Concrete Foundations of Street Lighting Network | 6d | 2026-11-16 | 2026-11-23 | CO-SL-DB-250, PRO-R25-SL-DL-160 | 19d |
| CO-SL-DB-270 |  | Installation Works for Lighting Panel Boards of Street Lighting Network | 6d | 2026-11-23 | 2026-11-30 | CO-SL-DB-260 | 19d |
| CO-SL-DB-220 |  | A wall of concrete blocks to install the KWH meter of Street Lighting Network | 6d | 2026-11-30 | 2026-12-07 | CO-SL-DB-270 | 25d |
|  | TE | **Telecom Network** |  | 2026-09-26 | 2026-12-05 |  |  |
|  | PD | **Ducts Works** |  | 2026-09-26 | 2026-11-01 |  |  |
| CO-TE-DW-100 |  | Trench Excavation and Bedding Works for Ducts of Telecom Network | 7d | 2026-09-26 | 2026-10-04 | ENG-SH-TE-A-110, ENG-MT-TE-A-100, PRO-TE-1DL-100, PRO-R25-TE-DL-100, CO-SL-CL-250 SS | 22d |
| CO-TE-DW-110 |  | Pipes Laying Works for Ducts of Telecom Network | 7d | 2026-10-07 | 2026-10-15 | CO-TE-DW-100, CO-SL-CL-260 SS | 19d |
| CO-TE-DW-130 |  | Trench Backfilling and Compaction Works for Ducts of Telecom Network | 7d | 2026-10-15 | 2026-10-24 | CO-TE-DW-110 | 27d |
| CO-TE-DW-120 |  | Pouring Road Crossing Concrete Encasement | 7d | 2026-10-24 | 2026-11-01 | CO-TE-DW-130 | 27d |
|  | MH | **Manholes Works** |  | 2026-10-17 | 2026-11-10 |  |  |
| CO-TE-MH-140 |  | Excavation Works for Manholes of Telecom Network | 7d | 2026-10-17 | 2026-10-25 | CO-TE-DW-110 FS+1d, ENG-SH-TE-A-110, ENG-MT-TE-A-110, PRO-TE-1DL-110, PRO-R25-TE-DL-110 | 19d |
| CO-TE-MH-150 |  | Installation Works for Manholes of Telecom Network | 7d | 2026-10-25 | 2026-11-02 | CO-TE-MH-140 | 19d |
| CO-TE-MH-160 |  | Backfilling Works for Manholes of Telecom Network | 7d | 2026-11-02 | 2026-11-10 | CO-TE-MH-150, CO-TE-DW-120 FF | 19d |
|  | DD | **CCTV System Wroks** |  | 2026-11-10 | 2026-12-05 |  |  |
| CO-TE-CTV-100 |  | Digging and Pulling Trenches PVC ducts , Backfilling, Excavations, of Power Cable | 7d | 2026-11-10 | 2026-11-18 | CO-TE-MH-160, CO-TE-DW-120, ENG-SH-MSN-A-120, ENG-SH-CTV-A-110, ENG-MT-CTV-A-100, PRO-CTV-1DL-100, PRO-R25-CTV-DL-100, PRO-CTV-LL-MSI-10 FF | 19d |
| CO-TE-CTV-110 |  | Installation of Network Cable Cat.6A from Network switch to CCTV Camera and ACS Device | 7d | 2026-11-18 | 2026-11-26 | CO-TE-CTV-100 | 19d |
| CO-TE-CTV-130 |  | Installation of Access Control System | 7d | 2026-11-26 | 2026-12-05 | CO-TE-CTV-110 | 19d |
|  | RD | **Road Works** |  | 2026-11-02 | 2026-12-13 |  |  |
|  | 3 | **ST+1000:ST+1531** |  | 2026-11-02 | 2026-11-26 |  |  |
|  | RD | **Pre-Bituminous Construction** |  | 2026-11-02 | 2026-11-26 |  |  |
| CO-RD-PB-140 |  | Subgrade Layer for Road Works | 7d | 2026-11-02 | 2026-11-10 | CO-EW-200, CO-EW-110, CO-SD-ML-130, CO-SD-MH-220, CO-SD-CB-170, CO-SW-ML-130, CO-SW-MH-200, CO-PW-ML-130, CO-PW-VC-220, CO-IR-ML-130 SS, CO-TSE-ML-180 SS+2d, CO-MV-ML-270 SS+2d, CO-SL-LP-210 SS+1d, CO-SL-CL-270 SS+1d, CO-TE-DW-120 SS, PRO-R25-RD-DL-100, CO-EW-220 | 41d |
| CO-RD-PB-150 |  | Aggregate Base Course Layer for Road Works | 7d | 2026-11-18 | 2026-11-26 | CO-RD-PB-140, PRO-R25-RD-DL-110 | 38d |
|  | 2 | **ST+500:ST+1000** |  | 2026-11-16 | 2026-12-05 |  |  |
|  | RD | **Pre-Bituminous Construction** |  | 2026-11-16 | 2026-12-05 |  |  |
| CO-RD-PB-120 |  | Subgrade Layer for Road Works | 7d | 2026-11-16 | 2026-11-24 | CO-RD-PB-140, CO-SD-ML-160, CO-SD-MH-260, CO-SD-CB-200, CO-SW-ML-160, CO-SW-MH-250, CO-PW-ML-130, CO-PW-VC-220, CO-PW-FH-160 SS+2d, CO-TSE-ML-180 SS+2d, CO-IR-ML-130 SS+2d, CO-MV-ML-270 SS+2d, CO-SL-LP-210, CO-SL-CL-270, CO-TE-DW-120, CO-TE-MH-160 | 36d |
| CO-RD-PB-130 |  | Aggregate Base Course Layer for Road Works | 7d | 2026-11-26 | 2026-12-05 | CO-RD-PB-120, CO-RD-PB-150 | 38d |
|  | 1 | **ST+01:ST+500** |  | 2026-11-24 | 2026-12-13 |  |  |
|  | RD | **Pre-Bituminous Construction** |  | 2026-11-24 | 2026-12-13 |  |  |
| CO-RD-PB-100 |  | Subgrade Layer for Road Works | 7d | 2026-11-24 | 2026-12-02 | CO-RD-PB-120 | 41d |
| CO-RD-PB-110 |  | Aggregate Base Course Layer for Road Works | 7d | 2026-12-05 | 2026-12-13 | CO-RD-PB-100, CO-RD-PB-130 | 40d |
|  | 3 | **Finishes for Infrastructure Networks** |  | 2026-08-17 | 2026-12-27 |  |  |
|  | 11 | **Storm Drainage Network** |  | 2026-08-17 | 2026-10-24 |  |  |
|  | TF | **Testing and Finishes** |  | 2026-08-17 | 2026-10-24 |  |  |

| ID | WBS | Task | Duration | Start | Finish | Predecessors | Total float |
| --- | --- | --- | --- | --- | --- | --- | --- |
| CO-SD-ML-TF-100 |  | Testing Work for Pipes of Storm Drainage Network | 12d | 2026-08-17 | 2026-08-31 | CO-SD-ML-130, CO-SD-CB-200 | 25d |
| CO-SD-CB-TF-130 |  | Catch Basin Internal Finishes (Benching ) for Storm Drainage Network | 12d | 2026-08-31 | 2026-09-14 | CO-SD-CB-170, CO-SD-CB-200, CO-SD-ML-TF-100 | 25d |
| CO-SD-CB-TF-160 |  | Testing Works for Catch Basins of Storm Drainage Network | 8d | 2026-09-14 | 2026-09-24 | CO-SD-CB-170, CO-SD-ML-TF-100, CO-SD-CB-TF-130 | 25d |
| CO-SD-CB-TF-110 |  | Install Catch Basin Cover Works for External Finishes of Storm Drainage Network | 12d | 2026-09-24 | 2026-10-08 | CO-SD-CB-TF-130, PRO-SD-1DL-150, PRO-R25-SD-DL-150 FF, CO-SD-CB-TF-160 | 25d |
| CO-SD-MH-TF-120 |  | Main Manhole Internal Finishes (Benching ) for Storm Drainage Network | 12d | 2026-10-08 | 2026-10-22 | CO-SD-MH-220, PRO-SD-1DL-140, CO-SD-CB-200, CO-SD-CB-TF-160, CO-SD-CB-TF-110 | 25d |
| CO-SD-MH-TF-210 |  | Testing Works for Manholes of Storm Drainage Network | 1d | 2026-10-22 | 2026-10-24 | CO-SD-MH-220, CO-SD-ML-TF-100, CO-SD-MH-TF-120, PRO-R25-SD-DL-140, CO-SD-CB-TF-110 | 25d |
|  | 10 | **Sewage Network** |  | 2026-08-27 | 2026-10-24 |  |  |
|  | TF | **Testing and Finishes** |  | 2026-08-27 | 2026-10-24 |  |  |
| CO-SW-TF-100 |  | Final Testing For Main Line of Sewage Network | 12d | 2026-08-27 | 2026-09-10 | CO-SW-ML-130, CO-SW-MH-250 | 10d |
| CO-SW-TF-130 |  | Main Manhole Internal Finishes (Benching + Insulation) of Sewage Network | 16d | 2026-09-10 | 2026-09-30 | CO-SW-MH-200, CO-SW-TF-100 | 40d |
| CO-SW-TF-110 |  | Install Manhole Cover Works for External Finishes of Sewage Network | 16d | 2026-09-30 | 2026-10-19 | CO-SW-TF-130, PRO-SW-1DL-120, PRO-R25-SW-DL-120 | 40d |
| CO-SW-TF-210 |  | Testing Works for Main Line Manholes of Sewage Network | 4d | 2026-10-19 | 2026-10-24 | CO-SW-TF-130, CO-SW-TF-110 | 40d |
|  | 9 | **Potable Water Network** |  | 2026-11-22 | 2026-12-27 |  |  |
|  | TF | **Testing and Finishes** |  | 2026-11-22 | 2026-12-27 |  |  |
| CO-PW-TF-110 |  | Testing Work for Main Line of Potable Water Network | 10d | 2026-11-22 | 2026-12-03 | CO-PW-ML-130, CO-PW-FH-160 | 0d |
| CO-PW-TF-120 |  | Fire Hydrant Finishies (S.Box + Safety + Marker Post ) of Potable Water Network | 10d | 2026-12-03 | 2026-12-15 | CO-PW-FH-160, ENG-MT-PW-TF-A-100, CO-PW-TF-110 | 0d |
| CO-PW-TF-100 |  | Final Finishes works and Covers for Valves and Valve Chambers of Potable Water Network | 10d | 2026-12-15 | 2026-12-27 | CO-PW-VC-220, ENG-MT-PW-TF-A-100, PRO-PW-1DL-130, PRO-R25-PW-DL-130, CO-PW-TF-110, CO-PW-TF-120 | 0d |
|  | 13 | **Irrigation Network** |  | 2026-12-08 | 2026-12-27 |  |  |
|  | TF | **Testing and Finishes** |  | 2026-12-08 | 2026-12-27 |  |  |
| CO-IR-TF-160 |  | Final Testing (pressure tests) of Irrigation Network | 16d | 2026-12-08 | 2026-12-27 | CO-IR-ML-140 | 0d |
|  | 1 | **Treated Sewage Effluent (Tse)** |  | 2026-12-08 | 2026-12-27 |  |  |
|  | TF | **Testing and Finishes** |  | 2026-12-08 | 2026-12-27 |  |  |
| CO-TSE-TF-170 |  | Final Testing (pressure tests) of Treated Sewage Effluent (Tse) | 16d | 2026-12-08 | 2026-12-27 | CO-TSE-ML-190 | 0d |
|  | 14 | **Medium Voltage Network** |  | 2026-11-24 | 2026-12-15 |  |  |
|  | TT | **Termination and Testing Works** |  | 2026-11-24 | 2026-12-15 |  |  |
| CO-MV-TF-220 |  | Termination Works of Medium Voltage Network | 18d | 2026-11-24 | 2026-12-15 | CO-MV-ML-270, ENG-MT-MV-TF-A-100, PRO-MV-DL-110 | 10d |
|  | 12 | **Street Lighting Network** |  | 2026-11-30 | 2026-12-23 |  |  |
|  | TR | **Termination and Testing Works** |  | 2026-11-30 | 2026-12-23 |  |  |
| CO-SL-LP-330 |  | Installation Works for Lighting Fixtures With Drop Wire of Street Lighting Network | 9d | 2026-11-30 | 2026-12-10 | CO-SL-DB-270, CO-SL-LP-210, ENG-MT-SL-A-120, PRO-R25-SL-DL-140 | 19d |
| CO-SL-TF-200 |  | Testing Works for Lighting Poles of Street Lighting Network | 5d | 2026-12-14 | 2026-12-20 | CO-SL-DB-270, CO-SL-LP-330, CO-SL-ES-230, PRO-R25-SL-DL-130 | 22d |
| CO-SL-TF-220 |  | Termination Works For Lighting Poles Cables of Street Lighting Network | 8d | 2026-12-14 | 2026-12-23 | CO-SL-DB-270, CO-SL-LP-330, CO-SL-ES-230 | 19d |
| CO-SL-TF-230 |  | Termination Works For Panel Board Cables of Street Lighting Network | 8d | 2026-12-14 | 2026-12-23 | CO-SL-DB-270, CO-SL-LP-330, CO-SL-ES-230, PRO-R25-SL-DL-170, CO-SL-DB-220, PRO-SPS-LL-MSI-10 | 19d |
| CO-SL-TF-380 |  | Testing Works For Panel Board Cables of Street Lighting Network | 2d | 2026-12-14 | 2026-12-16 | CO-SL-DB-270, CO-SL-LP-330, CO-SL-ES-230 | 25d |
|  | ES | **Earthing System Works** |  | 2026-11-30 | 2026-12-14 |  |  |
| CO-SL-ES-220 |  | Install Earthing System Works for Lighting Poles of Street Lighting Network | 12d | 2026-11-30 | 2026-12-14 | CO-SL-LP-330 SS, ENG-MT-SL-ES-A-100, PRO-R25-SL-DL-150 | 19d |
| CO-SL-ES-230 |  | Install Earthing System Works for Lighting Panel Boards of Street Lighting Network | 12d | 2026-11-30 | 2026-12-14 | CO-SL-ES-220 SS | 19d |
|  | 3 | **Telecom Network** |  | 2026-12-05 | 2026-12-23 |  |  |
|  | 1 | **Testing and Finishes** |  | 2026-12-05 | 2026-12-23 |  |  |
| CO-TE-CTV-TF-110 |  | Smart Card Printer | 4d | 2026-12-05 | 2026-12-09 | CO-TE-CTV-130 | 19d |
| CO-TE-CTV-TF-120 |  | Card Issue Work Station | 4d | 2026-12-09 | 2026-12-14 | CO-TE-CTV-TF-110 | 19d |
| CO-TE-CTV-TF-130 |  | Photographic Camera with stand | 4d | 2026-12-14 | 2026-12-19 | CO-TE-CTV-TF-120 | 19d |
| CO-TE-CTV-TF-140 |  | Interface modules with CCTV, Fire and other systems | 4d | 2026-12-19 | 2026-12-23 | CO-TE-CTV-TF-130, PRO-LS-LL-MSI-20, PRO-TSE-LL-MSI-30 | 19d |
|  | 2 | **Road Works** |  | 2026-11-24 | 2026-12-23 |  |  |
|  | 3 | **ST+1000:ST+1531** |  | 2026-11-29 | 2026-12-23 |  |  |
|  | 1 | **Bituminous Construction** |  | 2026-12-10 | 2026-12-16 |  |  |
| CO-RD-B-150 |  | Application of Prime Coat Layer for Road Works | 2d | 2026-12-10 | 2026-12-13 | CO-RD-PV-160, PRO-R25-RD-DL-160 | 36d |
| CO-RD-B-160 |  | Bituminous Base Courses Layers for Road Works- | 3d | 2026-12-13 | 2026-12-16 | CO-RD-B-150, PRO-R25-RD-DL-170 | 36d |
|  | LS | **Pavement Works** |  | 2026-11-29 | 2026-12-16 |  |  |
| CO-RD-PV-160 |  | Fixing of Curbstone for Sidewalks Pavement | 10d | 2026-11-29 | 2026-12-10 | CO-RD-PB-140, PRO-R25-RD-DL-130 | 36d |
| CO-RD-PV-170 |  | Fixing of Interlock Tiles for Sidewalks Pavement | 10d | 2026-12-05 | 2026-12-16 | CO-RD-PV-160 SS+5d, PRO-R25-RD-DL-120 | 36d |
|  | TS | **Traffic Signs Boards and Roads Marking** |  | 2026-12-16 | 2026-12-23 |  |  |
| CO-RD-F-RM-180 |  | Application of Road Marking Works For Road Works | 2d | 2026-12-16 | 2026-12-19 | CO-RD-B-160, CO-RD-PV-170, PRO-R25-RD-DL-150 | 36d |
| CO-RD-F-TS-120 |  | Installation Works of Traffic Signs Boards For Road Works | 4d | 2026-12-19 | 2026-12-23 | CO-RD-F-RM-180, PRO-R25-RD-DL-140 | 36d |
|  | 1 | **ST+500:ST+1000** |  | 2026-11-24 | 2026-12-23 |  |  |
|  | 1 | **Bituminous Construction** |  | 2026-12-07 | 2026-12-14 |  |  |
| CO-RD-B-130 |  | Application of Prime Coat Layer for Road Works | 2d | 2026-12-07 | 2026-12-09 | CO-RD-PV-140, CO-RD-PB-130 | 36d |
| CO-RD-B-140 |  | Bituminous Base Courses Layers for Road Works- | 4d | 2026-12-09 | 2026-12-14 | CO-RD-B-130 | 36d |
|  | LS | **Pavement Works** |  | 2026-11-24 | 2026-12-13 |  |  |
| CO-RD-PV-140 |  | Fixing of Curbstone for Sidewalks Pavement | 11d | 2026-11-24 | 2026-12-07 | CO-RD-PB-120 | 36d |
| CO-RD-PV-150 |  | Fixing of Interlock Tiles for Sidewalks Pavement | 11d | 2026-11-30 | 2026-12-13 | CO-RD-PV-140 SS+5d | 37d |
|  | TS | **Traffic Signs Boards and Roads Marking** |  | 2026-12-14 | 2026-12-23 |  |  |
| CO-RD-F-RM-170 |  | Application of Road Marking Works For Road Works | 4d | 2026-12-14 | 2026-12-19 | CO-RD-B-140, CO-RD-PV-150 | 36d |
| CO-RD-F-TS-110 |  | Installation Works of Traffic Signs Boards For Road Works | 4d | 2026-12-19 | 2026-12-23 | CO-RD-F-RM-170 | 36d |
|  | 2 | **ST+01:ST+500** |  | 2026-12-02 | 2026-12-23 |  |  |
|  | 1 | **Bituminous Construction** |  | 2026-12-13 | 2026-12-19 |  |  |
| CO-RD-B-110 |  | Application of Prime Coat Layer for Road Works | 2d | 2026-12-13 | 2026-12-15 | CO-RD-PV-120, CO-RD-PB-110 | 40d |
| CO-RD-B-120 |  | Bituminous Base Courses Layers for Road Works- | 3d | 2026-12-15 | 2026-12-19 | CO-RD-B-110 | 40d |
|  | LS | **Pavement Works** |  | 2026-12-02 | 2026-12-17 |  |  |
| CO-RD-PV-120 |  | Fixing of Curbstone for Sidewalks Pavement | 8d | 2026-12-02 | 2026-12-12 | CO-RD-PB-100, CO-RD-PB-100 FF | 41d |
| CO-RD-PV-130 |  | Fixing of Interlock Tiles for Sidewalks Pavement | 8d | 2026-12-08 | 2026-12-17 | CO-RD-PV-120 SS+5d | 41d |

| ID | WBS | Task | Duration | Start | Finish | Predecessors | Total float |
| --- | --- | --- | --- | --- | --- | --- | --- |
|  | TS | **Traffic Signs Boards and Roads Marking** |  | 2026-12-19 | 2026-12-23 |  |  |
| CO-RD-F-RM-160 |  | Application of Road Marking Works For Road Works | 4d | 2026-12-19 | 2026-12-23 | CO-RD-B-120, CO-RD-PV-130 | 49.75d |
| CO-RD-F-TS-100 |  | Installation Works of Traffic Signs Boards For Road Works | 4d | 2026-12-19 | 2026-12-23 | CO-RD-F-RM-160 SS | 49.75d |
|  | GEN | **Superstructure Work** |  | 2026-04-21 | 2027-02-22 |  |  |
|  | 4 | **Utility Buildings** |  | 2026-05-02 | 2026-12-23 |  |  |
|  | 6 | **Storm Drainage Ponds** |  | 2026-08-03 | 2026-11-10 |  |  |
| CO-SD-PO-100-P1 |  | Excavation & Filling Works - PART 1 | 21d | 2026-08-03 | 2026-08-27 | ENG-SH-DPO-A-120, ENG-MT-DPO-CV-A-110, PRO-DPO-CV-1DL-10, CO-SD-CB-200 SS, PRO-DPO-CV-DL-10 FF | 10d |
| CO-SD-PO-110-P1 |  | Finished Grouted Riprap - PART 1 | 21d | 2026-08-27 | 2026-09-21 | CO-SD-PO-100-P1 | 10d |
| CO-SD-PO-100-P2 |  | Excavation & Filling Works - PART 2 | 21d | 2026-09-21 | 2026-10-17 | CO-SD-PO-100-P1, CO-SD-PO-110-P1 | 10d |
| CO-SD-PO-110-P2 |  | Finished Grouted Riprap - PART 2 | 21d | 2026-10-17 | 2026-11-10 | CO-SD-PO-100-P2, CO-SD-PO-110-P1 | 10d |
|  | 4 | **Pump Station** |  | 2026-05-02 | 2026-12-20 |  |  |
|  | 1 | **Civil work** |  | 2026-05-02 | 2026-08-13 |  |  |
|  | 1 | **Sup Structure** |  | 2026-05-02 | 2026-06-15 |  |  |
| CO-UB-PS-100 |  | Excavation Work for for Pump station building | 10d | 2026-05-02 | 2026-05-13 | ENG-SH-SPS-A-160, PRO-SPS-CV-1DL-10, PRO-SPS-CV-DL-10 FF, PRO-SPS-CV-DL-10 | 5.25d |
| CO-UB-PS-110 |  | pouring P.C Conceret for Pump station building | 3d | 2026-05-13 | 2026-05-17 | CO-UB-PS-100 | 5.25d |
| CO-UB-PS-120 |  | Formwork for Foundation for Pump station building | 7d | 2026-05-17 | 2026-05-25 | CO-UB-PS-110 | 5.25d |
| CO-UB-PS-130 |  | Steel fixing for Foundation for Pump station building | 5d | 2026-05-25 | 2026-06-04 | CO-UB-PS-120 | 5.25d |
| CO-UB-PS-140 |  | pouring for Foundation for Pump station building | 1d | 2026-06-04 | 2026-06-06 | CO-UB-PS-130 | 5.25d |
| CO-UB-PS-150 |  | curing and deshuttering formwork Pump station building | 3d | 2026-06-06 | 2026-06-09 | CO-UB-PS-140 | 5.25d |
| CO-UB-PS-160 |  | Backfilling and compaction work for pump station | 5d | 2026-06-09 | 2026-06-15 | CO-UB-PS-150 | 5.25d |
|  | 2 | **Super structure** |  | 2026-06-15 | 2026-08-13 |  |  |
| CO-UB-PS-170 |  | Formwork for Wall and columns for Pump station building | 12d | 2026-06-15 | 2026-06-29 | CO-UB-PS-160 | 5.25d |
| CO-UB-PS-180 |  | Steel fixing for Wall columns | 7d | 2026-06-29 | 2026-07-07 | CO-UB-PS-170 | 5.25d |
| CO-UB-PS-190 |  | pouring for Wall columns | 1d | 2026-07-07 | 2026-07-08 | CO-UB-PS-180 | 5.25d |
| CO-UB-PS-200 |  | curing and deshuttering formwork for Wall columns | 2d | 2026-07-08 | 2026-07-11 | CO-UB-PS-190 | 5.25d |
| CO-UB-PS-210 |  | Waterproofing for Walls columns | 4.75d | 2026-07-11 | 2026-07-15 | CO-UB-PS-200 | 5.25d |
| CO-UB-PS-220 |  | Formwork for pump roof | 12d | 2026-07-16 | 2026-07-29 | CO-UB-PS-210 | 5.25d |
| CO-UB-PS-230 |  | Steel fixing for pump roof | 10d | 2026-07-30 | 2026-08-10 | CO-UB-PS-220 | 5.25d |
| CO-UB-PS-240 |  | pouring for pump roof | 1d | 2026-08-11 | 2026-08-11 | CO-UB-PS-230 | 5.25d |
| CO-UB-PS-250 |  | curing and deshuttering formwork for pump roof | 2d | 2026-08-12 | 2026-08-13 | CO-UB-PS-240 | 5.25d |
|  | 2 | **Architectural work** |  | 2026-08-15 | 2026-11-10 |  |  |
| CO-UB-PS-260 |  | Executing Masonry Works for Pump station building | 12d | 2026-08-15 | 2026-08-27 | CO-UB-PS-250 | 5.25d |
| CO-UB-PS-270 |  | Executing Plastering Works for Pump station building | 14d | 2026-08-29 | 2026-09-13 | CO-UB-PS-260 | 5.25d |
| CO-UB-PS-280 |  | Executing Painting Works for Pump station building | 14d | 2026-09-14 | 2026-09-30 | CO-UB-PS-270 | 5.25d |
| CO-UB-PS-320 |  | Doors and windows Fixing &Stair Tiles | 7d | 2026-11-03 | 2026-11-10 | CO-UB-PS-280, CO-UB-PS-310 | 16.25d |
|  | 3 | **Electrical work** |  | 2026-10-01 | 2026-12-01 |  |  |
| CO-UB-PS-290 |  | Lighting system for pump house | 12d | 2026-10-01 | 2026-10-14 | CO-UB-PS-280 | 5.25d |
| CO-UB-PS-300 |  | Wiring connection for pump house | 9d | 2026-10-15 | 2026-10-25 | CO-UB-PS-290 | 5.25d |
| CO-UB-PS-310 |  | Sockets and switches for pump house | 7d | 2026-10-26 | 2026-11-02 | CO-UB-PS-300 | 5.25d |
| CO-UB-PS-330 |  | Installation for Distribution boards for pump house | 12d | 2026-11-03 | 2026-11-16 | CO-UB-PS-310 | 7.25d |
| CO-UB-PS-370 |  | Executing Earthing and bonding for the entire system | 13d | 2026-11-17 | 2026-12-01 | CO-UB-PS-330 | 7.25d |
|  | 4 | **Mechanical work** |  | 2026-11-03 | 2026-12-20 |  |  |
| CO-UB-PS-340 |  | Executing HVAC System for Pump station building | 14d | 2026-11-03 | 2026-11-18 | CO-UB-PS-270, CO-UB-PS-310 | 18.25d |
| CO-UB-PS-350 |  | Executing Fire Alarm System for Pump station building | 9d | 2026-11-03 | 2026-11-12 | CO-UB-PS-270, CO-UB-PS-310 | 5.25d |
| CO-UB-PS-360 |  | Executing Fire fighting institution works(piping and wire installation) for Pump station building | 9d | 2026-11-14 | 2026-11-23 | CO-UB-PS-350 | 5.25d |
| CO-UB-PS-380 |  | Executing Fire fighting finishing works for Pump station building | 9d | 2026-11-24 | 2026-12-03 | CO-UB-PS-360, CO-UB-PS-320 | 5.25d |
| CO-UB-PS-390 |  | Installation of pumps | 14d | 2026-12-05 | 2026-12-20 | CO-UB-PS-380, CO-UB-PS-370, CO-UB-PS-340 | 5.25d |
|  | 3 | **Lift Station** |  | 2026-07-04 | 2026-12-22 |  |  |
|  | 1 | **Civil work** |  | 2026-07-04 | 2026-10-01 |  |  |
|  | 1 | **Sup Structure** |  | 2026-07-04 | 2026-08-17 |  |  |
| CO-UB-LS-220 |  | Excavation Work for for Lift Station | 9d | 2026-07-04 | 2026-07-14 | CO-UB-PS-100, ENG-SH-LS-A-170, PRO-LS-CV-1DL-40, PRO-LS-CV-DL-50 | 3.25d |
| CO-UB-LS-230 |  | pouring P.C Conceret for Lift Station | 5d | 2026-07-14 | 2026-07-20 | CO-UB-LS-220 | 3.25d |
| CO-UB-LS-240 |  | Formwork for Foundation for Lift Station | 7d | 2026-07-20 | 2026-07-28 | CO-UB-LS-230 | 3.25d |
| CO-UB-LS-250 |  | Steel fixing for Foundation for Lift Station | 8d | 2026-07-28 | 2026-08-06 | CO-UB-LS-240 | 3.25d |
| CO-UB-LS-260 |  | pouring for Foundation for Lift Station | 1d | 2026-08-06 | 2026-08-08 | CO-UB-LS-250 | 3.25d |
| CO-UB-LS-270 |  | curing and deshuttering formwork Lift Station | 2d | 2026-08-08 | 2026-08-10 | CO-UB-LS-260 | 3.25d |
| CO-UB-LS-280 |  | Backfilling and compaction work for pump station | 6d | 2026-08-10 | 2026-08-17 | CO-UB-LS-270 | 3.25d |
|  | 2 | **Super structure** |  | 2026-08-17 | 2026-10-01 |  |  |
| CO-UB-LS-290 |  | Formwork for Wall and columns for Lift Station | 7d | 2026-08-17 | 2026-08-25 | CO-UB-LS-280 | 3.25d |
| CO-UB-LS-300 |  | Steel fixing for Wall columns | 9d | 2026-08-25 | 2026-09-05 | CO-UB-LS-290 | 3.25d |
| CO-UB-LS-310 |  | pouring for Wall columns | 1d | 2026-09-05 | 2026-09-06 | CO-UB-LS-300 | 3.25d |
| CO-UB-LS-320 |  | curing and deshuttering formwork for Wall columns | 2d | 2026-09-06 | 2026-09-08 | CO-UB-LS-310 | 3.25d |
| CO-UB-LS-330 |  | Waterproofing for Walls columns | 4d | 2026-09-08 | 2026-09-13 | CO-UB-LS-320 | 3.25d |
| CO-UB-LS-340 |  | Formwork for pump roof | 5d | 2026-09-13 | 2026-09-19 | CO-UB-LS-330 | 3.25d |
| CO-UB-LS-350 |  | Steel fixing for pump roof | 6d | 2026-09-19 | 2026-09-27 | CO-UB-LS-340 | 3.25d |
| CO-UB-LS-360 |  | pouring for pump roof | 1d | 2026-09-27 | 2026-09-28 | CO-UB-LS-350 | 3.25d |
| CO-UB-LS-370 |  | curing and deshuttering formwork for pump roof | 3d | 2026-09-28 | 2026-10-01 | CO-UB-LS-360 | 3.25d |
|  | 2 | **Architectural work** |  | 2026-10-01 | 2026-11-01 |  |  |
| CO-UB-LS-380 |  | Executing Masonry Works for Pump station building | 12d | 2026-10-01 | 2026-10-15 | CO-UB-LS-370 | 3.25d |
| CO-UB-LS-390 |  | Executing Plastering Works for Pump station building | 14d | 2026-10-15 | 2026-11-01 | CO-UB-LS-380 | 3.25d |

| ID | WBS | Task | Duration | Start | Finish | Predecessors | Total float |
| --- | --- | --- | --- | --- | --- | --- | --- |
|  | 3 | **Electrical work** |  | 2026-11-01 | 2026-12-22 |  |  |
| CO-UB-LS-400 |  | Lighting system for pump house | 11d | 2026-11-01 | 2026-11-14 | CO-UB-LS-390 | 3.25d |
| CO-UB-LS-420 |  | Wiring connection for pump house | 9d | 2026-11-14 | 2026-11-24 | CO-UB-LS-400 | 3.25d |
| CO-UB-LS-440 |  | Sockets and switches for pump house | 8d | 2026-11-24 | 2026-12-03 | CO-UB-LS-420 | 3.25d |
| CO-UB-LS-460 |  | Installation for Distribution boards for pump house | 9d | 2026-12-03 | 2026-12-14 | CO-UB-LS-440 | 3.25d |
| CO-UB-LS-480 |  | Executing Earthing and bonding for the entire system | 7.75d | 2026-12-14 | 2026-12-22 | CO-UB-LS-460 | 3.25d |
|  | 4 | **Mechanical work** |  | 2026-11-01 | 2026-12-08 |  |  |
| CO-UB-LS-410 |  | Internal pipe installation | 8d | 2026-11-01 | 2026-11-10 | CO-UB-LS-390 | 16d |
| CO-UB-LS-430 |  | Guide rails & lifting chains installation | 7d | 2026-11-10 | 2026-11-18 | CO-UB-LS-410 | 16d |
| CO-UB-LS-450 |  | ExeValve installation | 9d | 2026-11-18 | 2026-11-29 | CO-UB-LS-430 | 16d |
| CO-UB-LS-470 |  | Installation of pumps | 8d | 2026-11-29 | 2026-12-08 | CO-UB-LS-450 | 16d |
|  | 5 | **Potable Water Tank** |  | 2026-06-06 | 2026-09-12 |  |  |
|  | 1 | **Eearth Work** |  | 2026-06-06 | 2026-06-20 |  |  |
| CO-UB-PWT-100 |  | Excavation work for tank foundation tank formation level | 7d | 2026-06-06 | 2026-06-14 | ENG-SH-ST-A-180, PRO-TSE-CV-1DL-50, PRO-TSE-CV-DL-60 | 9.75d |
| CO-UB-PWT-110 |  | Soil replacement Up to tank formation level | 5d | 2026-06-14 | 2026-06-20 | CO-UB-PWT-100 | 9.75d |
|  | 2 | **Structural Work** |  | 2026-06-20 | 2026-07-09 |  |  |
| CO-UB-PWT-120 |  | Plain Concrete works | 3d | 2026-06-20 | 2026-06-23 | CO-UB-PWT-110 | 9.75d |
| CO-UB-PWT-130 |  | Form work for Tank Foundation | 6d | 2026-06-23 | 2026-06-30 | CO-UB-PWT-120 | 9.75d |
| CO-UB-PWT-140 |  | Steel Reinforcement work for Tank Foundation | 7d | 2026-06-30 | 2026-07-08 | CO-UB-PWT-130 | 9.75d |
| CO-UB-PWT-150 |  | Casting concrete for Tank Foundation | 1d | 2026-07-08 | 2026-07-09 | CO-UB-PWT-140 | 9.75d |
|  | 3 | **Tank Shell Erection&Roof Installation** |  | 2026-07-09 | 2026-08-23 |  |  |
| CO-UB-PWT-160 |  | Bottom ring installation | 10d | 2026-07-09 | 2026-07-21 | CO-UB-PWT-150 | 9.75d |
| CO-UB-PWT-170 |  | shell erection | 14d | 2026-07-21 | 2026-08-06 | CO-UB-PWT-160 | 9.75d |
| CO-UB-PWT-180 |  | Aluminum dome / steel roof installation | 14d | 2026-08-06 | 2026-08-23 | CO-UB-PWT-170 | 9.75d |
|  | 4 | **Mechanical Work&Accessories** |  | 2026-08-23 | 2026-09-12 |  |  |
| CO-UB-PWT-190 |  | Inlet / outlet piping connections | 6d | 2026-08-23 | 2026-08-30 | CO-UB-PWT-180 | 9.75d |
| CO-UB-PWT-200 |  | installation Valves | 6d | 2026-08-30 | 2026-09-06 | CO-UB-PWT-190 | 9.75d |
| CO-UB-PWT-210 |  | Ladders, platforms & handrails | 5d | 2026-09-06 | 2026-09-12 | CO-UB-PWT-200 | 9.75d |
|  | 2 | **IrrigationTank** |  | 2026-09-12 | 2026-12-16 |  |  |
|  | 1 | **Eearth Work** |  | 2026-09-12 | 2026-09-27 |  |  |
| CO-UB-IRT-140 |  | Excavation work for tank foundation tank formation level | 7d | 2026-09-12 | 2026-09-20 | CO-UB-PWT-100, CO-UB-PWT-210 | 9.75d |
| CO-UB-IRT-150 |  | Soil replacement Up to tank formation level | 5d | 2026-09-20 | 2026-09-27 | CO-UB-IRT-140 | 9.75d |
|  | 2 | **Structural Work** |  | 2026-09-27 | 2026-10-17 |  |  |
| CO-UB-IRT-160 |  | Plain Concrete works | 3d | 2026-09-27 | 2026-09-30 | CO-UB-IRT-150 | 9.75d |
| CO-UB-IRT-170 |  | Form work for Tank Foundation | 6d | 2026-09-30 | 2026-10-07 | CO-UB-IRT-160 | 9.75d |
| CO-UB-IRT-180 |  | Steel Reinforcement work for Tank Foundation | 7d | 2026-10-07 | 2026-10-15 | CO-UB-IRT-170 | 9.75d |
| CO-UB-IRT-190 |  | Casting concrete for Tank Foundation | 1d | 2026-10-15 | 2026-10-17 | CO-UB-IRT-180 | 9.75d |
|  | 3 | **Tank Shell Erection&Roof Installation** |  | 2026-10-17 | 2026-11-30 |  |  |
| CO-UB-IRT-200 |  | Bottom ring installation | 10d | 2026-10-17 | 2026-10-28 | CO-UB-IRT-190 | 9.75d |
| CO-UB-IRT-210 |  | shell erection | 14d | 2026-10-28 | 2026-11-14 | CO-UB-IRT-200 | 9.75d |
| CO-UB-IRT-220 |  | Aluminum dome / steel roof installation | 14d | 2026-11-14 | 2026-11-30 | CO-UB-IRT-210 | 9.75d |
|  | 4 | **Mechanical Work&Accessories** |  | 2026-11-30 | 2026-12-16 |  |  |
| CO-UB-IRT-230 |  | Inlet / outlet piping connections | 6d | 2026-11-30 | 2026-12-07 | CO-UB-IRT-220 | 9.75d |
| CO-UB-IRT-240 |  | installation Valves | 6d | 2026-12-07 | 2026-12-14 | CO-UB-IRT-230 | 9.75d |
| CO-UB-IRT-250 |  | Ladders, platforms & handrails | 2d | 2026-12-14 | 2026-12-16 | CO-UB-IRT-240 | 9.75d |
|  | 1 | **Control Room** |  | 2026-07-14 | 2026-12-23 |  |  |
|  | 5 | **Civil Work** |  | 2026-07-14 | 2026-09-16 |  |  |
| CO-UB-CR-100 |  | Excavation Work For Control Room Foundation | 7d | 2026-07-14 | 2026-07-22 | CO-UB-LS-220 | 19.75d |
| CO-UB-CR-110 |  | Pouring for Plain Concrete | 5d | 2026-07-22 | 2026-07-28 | CO-UB-CR-100 | 19.75d |
| CO-UB-CR-120 |  | Pouring R.C Footing For Control Room | 21d | 2026-07-28 | 2026-08-22 | CO-UB-CR-110 | 19.75d |
| CO-UB-CR-130 |  | Pouring R.C Columns For Control Room | 12d | 2026-08-22 | 2026-09-05 | CO-UB-CR-120 | 19.75d |
| CO-UB-CR-140 |  | Pouring Beams and Slab For Control Room | 10d | 2026-09-05 | 2026-09-16 | CO-UB-CR-130 | 19.75d |
|  | 6 | **Finishing Work** |  | 2026-09-16 | 2026-12-23 |  |  |
|  | 1 | **Architictural work** |  | 2026-09-16 | 2026-11-23 |  |  |
| CO-UB-CR-150 |  | Brick Work For Control Room | 20d | 2026-09-16 | 2026-10-11 | CO-UB-CR-140 | 19.75d |
| CO-UB-CR-160 |  | Thermal & Moisture Protection Work for Control Room | 7d | 2026-10-11 | 2026-10-19 | CO-UB-CR-150 | 19.75d |
| CO-UB-CR-200 |  | Install For Curtian Wall and Windows and Doors | 10d | 2026-10-19 | 2026-10-31 | CO-UB-CR-160 | 19.75d |
| CO-UB-CR-240 |  | External Finshing Work (Walls and Floor) | 10d | 2026-10-31 | 2026-11-11 | CO-UB-CR-200 | 19.75d |
| CO-UB-CR-250 |  | Internal Finshing Work (Walls,Floor and Ceiling) | 10d | 2026-11-11 | 2026-11-23 | CO-UB-CR-240 | 19.75d |
|  | 3 | **Mechanical Work** |  | 2026-10-11 | 2026-12-05 |  |  |
|  | 3 | **HVAC System** |  | 2026-10-11 | 2026-12-05 |  |  |
| CO-UB-CR-170 |  | Install of Refrigerant Piping ( fabricated metal ducts with flanges complete with supports, vanes, dampers ) | 4d | 2026-10-11 | 2026-10-15 | CO-UB-CR-150 | 38.75d |
| CO-UB-CR-260 |  | Install of Mini split actual capacity 2 Ton and Ducted split actual capacity 4 Ton | 7d | 2026-11-23 | 2026-12-01 | CO-UB-CR-250, CO-UB-CR-170 | 30.75d |
| CO-UB-CR-310 |  | Install of Air Grills 150mm x150mm and Air Diffuser 600mm x 600mm | 3d | 2026-12-01 | 2026-12-05 | CO-UB-CR-260, CO-UB-CR-170 | 30.75d |
|  | 4 | **Fire Fitting System** |  | 2026-10-15 | 2026-11-26 |  |  |
| CO-UB-CR-180 |  | Installation & Testing of 2 hours Fire rated system for closing the openings between rooms with help of Rock wool | 4d | 2026-10-15 | 2026-10-20 | CO-UB-CR-170 | 38.75d |
| CO-UB-CR-270 |  | Install Fire Extinguishers | 3d | 2026-11-23 | 2026-11-26 | CO-UB-CR-180, CO-UB-CR-250 | 37.75d |
|  | 4 | **Electrical Work** |  | 2026-10-20 | 2026-12-17 |  |  |
|  | 1 | **LV Power** |  | 2026-11-23 | 2026-12-10 |  |  |
| CO-UB-CR-190 |  | Install of Distribution board For Control Room | 5d | 2026-11-23 | 2026-11-29 | CO-UB-CR-170, CO-UB-CR-150, CO-UB-CR-250 | 25.75d |

| ID | WBS | Task | Duration | Start | Finish | Predecessors | Total float |
| --- | --- | --- | --- | --- | --- | --- | --- |
| CO-UB-CR-220 |  | Install of Earting Cable for Control Room | 5d | 2026-11-29 | 2026-12-05 | CO-UB-CR-190 | 25.75d |
| CO-UB-CR-280 |  | Install of Socket outlet and LED Lighting | 5d | 2026-12-05 | 2026-12-10 | CO-UB-CR-190, CO-UB-CR-250, CO-UB-CR-220 | 25.75d |
|  | 3 | **Fire Detection And Alarm System** |  | 2026-10-20 | 2026-12-17 |  |  |
| CO-UB-CR-210 |  | Install of 2C x 1.5 Sqm FR Rated Armored - Cable For Loop Wiring | 5d | 2026-10-20 | 2026-10-26 | CO-UB-CR-170, CO-UB-CR-180 | 38.75d |
| CO-UB-CR-230 |  | Install of Transmission Communication cable - Fiber Optics 12Core | 5d | 2026-10-26 | 2026-11-01 | CO-UB-CR-210 | 38.75d |
| CO-UB-CR-290 |  | Install of power supply system for fire alarm control panel | 5d | 2026-11-23 | 2026-11-29 | CO-UB-CR-230, CO-UB-CR-250 | 19.75d |
| CO-UB-CR-300 |  | Install of Fire Alarm Control panel | 6d | 2026-11-29 | 2026-12-06 | CO-UB-CR-250 FF, CO-UB-CR-210, CO-UB-CR-230, CO-UB-CR-290 | 19.75d |
| CO-UB-CR-320 |  | Installation of the addressable manual call point with operation safety glass breaking | 3d | 2026-12-06 | 2026-12-09 | CO-UB-CR-300, CO-UB-CR-250 | 19.75d |
| CO-UB-CR-330 |  | Install of the photoelectric heat & smoke detector | 3d | 2026-12-09 | 2026-12-13 | CO-UB-CR-320 | 19.75d |
| CO-UB-CR-340 |  | Install of Sounder With Beacon | 3d | 2026-12-09 | 2026-12-13 | CO-UB-CR-330 SS | 19.75d |
| CO-UB-CR-350 |  | Install of Addressable Control module | 4d | 2026-12-13 | 2026-12-17 | CO-UB-CR-340 | 19.75d |
|  | 2 | **Furnitures work** |  | 2026-12-17 | 2026-12-23 |  |  |
| CO-UB-CR-360 |  | Office Chairs,Tables and Stand | 5d | 2026-12-17 | 2026-12-23 | CO-UB-CR-350, CO-UB-CR-280, CO-UB-CR-270, CO-UB-CR-310 | 19.75d |
|  | ML | **Softscape and Planting Works** |  | 2026-08-27 | 2026-10-22 |  |  |
|  | 1 | **Planting Beds Preparation** |  | 2026-08-27 | 2026-09-16 |  |  |
| CO-LS-PL-100 |  | Excavation of planting beds | 7d | 2026-08-27 | 2026-09-05 | PRO-FE-CV-DL-90, PRO-R25-IR-DL-140 | 26d |
| CO-LS-PL-110 |  | Supply & placement of suitable topsoil | 5d | 2026-09-05 | 2026-09-10 | CO-LS-PL-100 | 26d |
| CO-LS-PL-120 |  | Soil improvement (fertilizer, compost, additives) | 5d | 2026-09-10 | 2026-09-16 | CO-LS-PL-110 | 26d |
|  | 2 | **Supports & Protection** |  | 2026-09-16 | 2026-09-29 |  |  |
| CO-LS-PL-130 |  | installation of plant supports / stakes | 5d | 2026-09-16 | 2026-09-22 | CO-LS-PL-120 | 26d |
| CO-LS-PL-140 |  | Ties and protection materials | 5d | 2026-09-22 | 2026-09-29 | CO-LS-PL-130 | 26d |
|  | 3 | **Plant Supply** |  | 2026-09-29 | 2026-10-05 |  |  |
| CO-LS-PL-150 |  | installation of trees | 5d | 2026-09-29 | 2026-10-05 | CO-LS-PL-140 | 26d |
|  | 4 | **Site Furnishings** |  | 2026-10-05 | 2026-10-22 |  |  |
| CO-LS-PL-160 |  | installation of Seating benches | 5d | 2026-10-05 | 2026-10-11 | CO-LS-PL-150 | 26d |
| CO-LS-PL-170 |  | tone boulders – placement & fixing Works | 5d | 2026-10-11 | 2026-10-17 | CO-LS-PL-160 | 26d |
| CO-LS-PL-180 |  | Gravel Works | 5d | 2026-10-17 | 2026-10-22 | CO-LS-PL-170 | 26d |
|  | 1 | **Fence and Gaurd Room** |  | 2026-04-21 | 2027-02-22 |  |  |
|  | 1 | **Gaurd Room Work** |  | 2026-06-29 | 2027-01-03 |  |  |
|  | 1 | **Civil Work** |  | 2026-06-29 | 2026-09-01 |  |  |
| A1000 |  | Excavation Work For Gaurd Room Foundation | 7d | 2026-06-29 | 2026-07-07 | MS-CF-MOB, ENG-SH-GR-A-190, PRO-GR-CV-1DL-60, PRO-GR-CV-DL-70 FF | 10.75d |
| A1010 |  | Pouring for Plain Concrete | 5d | 2026-07-07 | 2026-07-13 | A1000 | 10.75d |
| A1020 |  | Pouring R.C Footing For Gaurd Room | 21d | 2026-07-13 | 2026-08-06 | A1010 | 10.75d |
| A1030 |  | Pouring R.C Columns For Gaurd Room | 12d | 2026-08-06 | 2026-08-20 | A1020 | 10.75d |
| A1040 |  | Pouring Beams and Slab For Gaurd Room | 10d | 2026-08-20 | 2026-09-01 | A1030 | 10.75d |
|  | 2 | **Finishing Work** |  | 2026-09-01 | 2027-01-03 |  |  |
|  | 1 | **Architictural work** |  | 2026-09-01 | 2026-11-15 |  |  |
| A1050 |  | Brick Work For Gaurd Room | 20d | 2026-09-01 | 2026-09-26 | A1040 | 10.75d |
| A1060 |  | Thermal & Moisture Protection Work for Gaurd Room | 7d | 2026-09-26 | 2026-10-04 | A1050 | 16.75d |
| A1070 |  | Install For Curtian Wall and Windows and Doors | 10d | 2026-10-11 | 2026-10-22 | A1060, A1130, A1150 | 10.75d |
| A1080 |  | External Finshing Work (Walls and Floor) | 10d | 2026-10-22 | 2026-11-03 | A1070 | 10.75d |
| A1090 |  | Internal Finshing Work (Walls,Floor and Ceiling) | 10d | 2026-11-03 | 2026-11-15 | A1080 | 10.75d |
|  | 3 | **Mechanical Work** |  | 2026-09-26 | 2026-11-26 |  |  |
|  | 1 | **Sanitary Drainage & Plumbing System** |  | 2026-09-26 | 2026-10-11 |  |  |
| A1110 |  | Install Sanitary Piping System (UPVC) | 4d | 2026-09-26 | 2026-09-30 | A1050 | 10.75d |
| A1120 |  | Install Base mounted flush tank water Western water closet system | 6d | 2026-09-30 | 2026-10-07 | A1110 | 10.75d |
| A1130 |  | Install 1 meter length 10mm diameter Flexible Hose and Gate Valves and Slow Closing Valve | 3d | 2026-10-07 | 2026-10-11 | A1120 | 10.75d |
|  | 2 | **Water Supply System** |  | 2026-09-26 | 2026-11-17 |  |  |
| A1240 |  | Install GRP water tanks capacity of each 1000 liter | 3d | 2026-09-26 | 2026-09-29 | A1050 | 11.75d |
| A1140 |  | Install for Cold Water Pipe complete with joints, angles, reducer etc. | 5d | 2026-09-29 | 2026-10-05 | A1240 | 11.75d |
| A1150 |  | Install for Hot Water Pipe complete with joints, angles, reducer etc. | 4d | 2026-10-05 | 2026-10-10 | A1140 | 11.75d |
| A1160 |  | Install for Isolation Valve,Spray Head,Roof Drain,Floor Drain,Gully teap,Vend on Roof to exhaust air | 3d | 2026-10-10 | 2026-10-13 | A1150 | 36.75d |
| A1170 |  | Install of Inspection chamber, size 800x900x1000 | 2d | 2026-10-13 | 2026-10-15 | A1160 | 36.75d |
| A1180 |  | Install OF Electric Water Heater set with connection and Water meter complete with accessories | 2d | 2026-11-15 | 2026-11-17 | A1170, A1090 | 10.75d |
|  | 3 | **HVAC System** |  | 2026-09-30 | 2026-11-26 |  |  |
| A1200 |  | Install of Refrigerant Piping ( fabricated metal ducts with flanges complete with supports, vanes, dampers ) | 4d | 2026-09-30 | 2026-10-05 | A1050, A1110 | 37.75d |
| A1190 |  | Install of Mini split actual capacity 2 Ton and Ducted split actual capacity 4 Ton | 7d | 2026-11-15 | 2026-11-23 | A1090, A1200 | 37.75d |
| A1210 |  | Install of Air Grills 150mm x150mm and Air Diffuser 600mm x 600mm | 3d | 2026-11-23 | 2026-11-26 | A1190, A1200 | 37.75d |
|  | 4 | **Fire Fitting System** |  | 2026-10-05 | 2026-11-22 |  |  |
| A1220 |  | Installation & Testing of 2 hours Fire rated system for closing the openings between rooms with help of Rock wool | 6d | 2026-10-05 | 2026-10-12 | A1200 | 42.75d |
| A1230 |  | Install Fire Extinguishers | 6d | 2026-11-15 | 2026-11-22 | A1220, A1090 | 41.75d |
|  | 4 | **Electrical Work** |  | 2026-10-05 | 2026-12-28 |  |  |
|  | 1 | **LV Power** |  | 2026-10-05 | 2026-11-21 |  |  |
| A1250 |  | Install of Distribution board For Gaurd Room | 5d | 2026-10-05 | 2026-10-11 | A1200, A1050 | 37.75d |
| A1270 |  | Install of Earting Cable for Gaurd Room | 5d | 2026-10-11 | 2026-10-17 | A1250 | 37.75d |
| A1260 |  | Install of Socket outlet and LED Lighting | 5d | 2026-11-15 | 2026-11-21 | A1250, A1090, A1270 | 42.75d |
|  | 3 | **Fire Detection And Alarm System** |  | 2026-10-12 | 2026-12-09 |  |  |
| A1340 |  | Install of 2C x 1.5 Sqm FR Rated Armored - Cable For Loop Wiring | 5d | 2026-10-12 | 2026-10-18 | A1200, A1220 | 42.75d |
| A1350 |  | Install of Transmission Communication cable - Fiber Optics 12Core | 5d | 2026-10-18 | 2026-10-24 | A1340 | 42.75d |
| A1360 |  | Install of power supply system for fire alarm control panel | 5d | 2026-11-15 | 2026-11-21 | A1350, A1090 | 23.75d |

| ID | WBS | Task | Duration | Start | Finish | Predecessors | Total float |
| --- | --- | --- | --- | --- | --- | --- | --- |
| A1280 |  | Install of Fire Alarm Control panel | 6d | 2026-11-21 | 2026-11-28 | A1090 FF, A1340, A1350, A1360 | 23.75d |
| A1290 |  | Installation of the addressable manual call point with operation safety glass breaking | 3d | 2026-11-28 | 2026-12-01 | A1280, A1090 | 23.75d |
| A1300 |  | Install of the photoelectric heat & smoke detector | 3d | 2026-12-01 | 2026-12-05 | A1290 | 23.75d |
| A1310 |  | Install of Sounder With Beacon | 3d | 2026-12-01 | 2026-12-05 | A1300 SS | 23.75d |
| A1320 |  | Install of Addressable Control module | 4d | 2026-12-05 | 2026-12-09 | A1310 | 23.75d |
|  | 2 | **Security System** |  | 2026-11-17 | 2026-12-28 |  |  |
| A1580 |  | Install 8 Port Industrial PoE Switch 10/100BaseT (0 deg to +70 deg. Celsius) | 6d | 2026-11-17 | 2026-11-24 | A1250, A1090, A1180, A1270 | 10.75d |
| A1590 |  | Optical Fiber,48 Core Splice Closure | 3d | 2026-11-24 | 2026-11-28 | A1580 | 11.75d |
| A1650 |  | Pole/Bollard mounted IP( PoE) and 12U rack dimension | 4d | 2026-11-24 | 2026-11-29 | A1580 | 10.75d |
| A1600 |  | Boom Barrier at Security Guard Room | 6d | 2026-11-29 | 2026-12-06 | A1590, A1650 | 10.75d |
| A1610 |  | Pedestrian turnstile at Security Guard Room | 7d | 2026-12-06 | 2026-12-14 | A1600 | 10.75d |
| A1620 |  | Access Control Unit and Access Card Reader | 4d | 2026-12-14 | 2026-12-19 | A1610 | 10.75d |
| A1630 |  | Magnetic Lock and Break Glass and Exit Push button | 5d | 2026-12-19 | 2026-12-24 | A1620 | 10.75d |
| A1640 |  | Door Sensor and Biometrics Reader | 3d | 2026-12-24 | 2026-12-28 | A1630, A1320 | 10.75d |
|  | 2 | **Furnitures work** |  | 2026-12-28 | 2027-01-03 |  |  |
| A1100 |  | Office Chairs,Tables and Stand | 5d | 2026-12-28 | 2027-01-03 | A1640, A1320, A1260, A1230, A1210, A1180 | 10.75d |
|  | 2 | **Fence Work** |  | 2026-04-21 | 2027-02-22 |  |  |
|  | 1 | **Northern Fence N01:N03** |  | 2026-04-21 | 2026-12-19 |  |  |
|  | 1 | **Civil Work** |  | 2026-04-21 | 2026-06-10 |  |  |
| CO-SU-FE-N-CI-100 |  | Excavation Work For Northern Fence | 7d | 2026-04-21 | 2026-04-29 | ENG-SH-GR-A-200, PRO-FE-CV-DL-80 SS+3d, CO-EW-110 SS+5d, PRO-FE-CV-MF-60 SS | 0d |
| CO-SU-FE-N-CI-110 |  | Pouring for Plain Concrete Northern Fence | 3d | 2026-04-29 | 2026-05-03 | CO-SU-FE-N-CI-100 | 0d |
| CO-SU-FE-N-CI-120 |  | Pouring R.C Footing For Northern Fence | 10d | 2026-05-03 | 2026-05-14 | CO-SU-FE-N-CI-110 | 0d |
| CO-SU-FE-N-CI-130 |  | Pouring R.C Columns For Northern Fence | 5d | 2026-05-14 | 2026-05-20 | CO-SU-FE-N-CI-120 | 0d |
| CO-SU-FE-N-CI-140 |  | Pouring Beams For Northern Fence | 4d | 2026-06-06 | 2026-06-10 | CO-SU-FE-N-CI-130, CO-SU-FE-N-AR-100 | 1d |
|  | 5 | **Finishing Work** |  | 2026-05-20 | 2026-12-19 |  |  |
|  | 3 | **Electrical Work** |  | 2026-06-06 | 2026-12-19 |  |  |
| CO-SU-FE-N-EL-100 |  | Trench excavation to receive 2 nos 50mm diameter PVC Conduit | 10d | 2026-06-06 | 2026-06-17 | CO-SU-FE-N-AR-100 | 37d |
| CO-SU-FE-N-EL-110 |  | Trench excavation to receive 3 nos 50mm diameter PVC Conduit | 10d | 2026-06-06 | 2026-06-17 | CO-SU-FE-N-EL-100 SS | 37d |
| CO-SU-FE-N-EL-120 |  | Fixing of Control cable,CAT6A cable | 12d | 2026-06-17 | 2026-07-01 | CO-SU-FE-N-EL-100, CO-SU-FE-N-EL-110 | 37d |
| CO-SU-FE-N-EL-130 |  | Install 800mm x 800mm x 800mm height concrete handhole | 12d | 2026-06-17 | 2026-07-01 | CO-SU-FE-N-EL-100, CO-SU-FE-N-EL-110 | 37d |
| CO-SU-FE-N-EL-140 |  | Hot dipped galvanized cable conduits for CAT6A cable and Control Cables embedded to wall | 11d | 2026-06-17 | 2026-06-30 | CO-SU-FE-N-EL-100, CO-SU-FE-N-EL-110 | 38d |
| CO-SU-FE-N-EL-150 |  | Fixing Earthing Work (Earth Pit,Grounding rod,Tinned Copper wire) | 16d | 2026-07-01 | 2026-07-20 | CO-SU-FE-N-EL-120, CO-SU-FE-N-EL-130, CO-SU-FE-N-EL-140 | 37d |
| CO-SU-FE-N-EL-160 |  | Field Equipment Cabinet enclosed outdoor complete with precast concrete footing, | 10d | 2026-07-20 | 2026-08-01 | CO-SU-FE-N-EL-150 | 37d |
| CO-SU-FE-N-EL-170 |  | Fence Lightining 400V, 3PH, 60Hz lighting control panel (LCP-02) | 8d | 2026-07-20 | 2026-07-29 | CO-SU-FE-N-EL-150 | 39d |
| CO-SU-FE-N-EL-180 |  | Install of direct buried armored cable 4C-16mm2 ,10mm2 | 9d | 2026-08-01 | 2026-08-11 | CO-SU-FE-N-EL-160, CO-SU-FE-N-EL-170 | 37d |
| CO-SU-FE-N-EL-190 |  | Install 16mm2,10mm2 CU/PVC wire | 9d | 2026-08-01 | 2026-08-11 | CO-SU-FE-N-EL-160, CO-SU-FE-N-EL-170 | 37d |
| CO-SU-FE-N-EL-200 |  | FEC-CCTV ( 4C-16mm2 CU/XLPE/PVC direct buried armored cable,16mm2 CU/PVC wire | 8d | 2026-08-01 | 2026-08-10 | CO-SU-FE-N-EL-160, CO-SU-FE-N-EL-170 | 43d |
| CO-SU-FE-N-EL-210 |  | Junction Box for lighting fixture | 8d | 2026-08-11 | 2026-08-20 | CO-SU-FE-N-EL-180, CO-SU-FE-N-EL-190 | 37d |
| CO-SU-FE-N-EL-220 |  | IR Intrusion Detection System Quad Beams | 8d | 2026-11-30 | 2026-12-09 | CO-SU-FE-N-EL-180, CO-SU-FE-N-EL-190, CO-SU-FE-N-EL-200, CO-SU-FE-N-EL-210, CO-SU-FE-N-AR-130, CO-SU-FE-N-AR-140, CO-SU-FE-N-AR-120, CO-SU-FE-EP2-AR-400 | 21d |
| CO-SU-FE-N-EL-230 |  | Install of 38W, 230V, 1PH, 60Hz fence, led linear uplight lighting, IP66 | 9d | 2026-11-30 | 2026-12-10 | CO-SU-FE-N-EL-190, CO-SU-FE-N-EL-200, CO-SU-FE-N-EL-210, CO-SU-FE-N-AR-120, CO-SU-FE-N-AR-130, CO-SU-FE-N-AR-140, CO-SU-FE-EP2-AR-400 | 20d |
| CO-SU-FE-N-EL-240 |  | Install, fixings, testing and commissioning 80W LED | 7d | 2026-12-10 | 2026-12-19 | CO-SU-FE-N-EL-220, CO-SU-FE-N-EL-230 | 20d |
|  | 4 | **Architictural work** |  | 2026-05-20 | 2026-11-19 |  |  |
| CO-SU-FE-N-AR-100 |  | Install Brick Work For Northern Fence | 10d | 2026-05-20 | 2026-06-06 | CO-SU-FE-N-CI-130 | 1d |
| CO-SU-FE-N-AR-110 |  | External plastering to walls and columns | 7d | 2026-08-11 | 2026-08-19 | CO-SU-FE-N-AR-100, CO-SU-FE-N-CI-140, CO-SU-FE-N-EL-200, CO-SU-FE-N-EL-190, CO-SU-FE-N-EL-180 | 42d |
| CO-SU-FE-N-AR-120 |  | Install 50mm thick random cut stone cladding | 7d | 2026-08-19 | 2026-08-27 | CO-SU-FE-N-AR-110 | 42d |
| CO-SU-FE-N-AR-130 |  | Install 2 coats of weatherproof paint at walls | 6d | 2026-08-27 | 2026-09-03 | CO-SU-FE-N-AR-120 | 42d |
| CO-SU-FE-N-AR-140 |  | Install Stone coping 500mm,525mm | 4d | 2026-09-03 | 2026-09-08 | CO-SU-FE-N-AR-130 | 42d |
| CO-SU-FE-N-AR-150 |  | Install MODON Signage | 7d | 2026-11-11 | 2026-11-19 | CO-SU-FE-N-AR-140, CO-SU-FE-WP2-AR-260 | 42.75d |
|  | 2 | **Western Fence P1 ( W01:W06 )** |  | 2026-05-20 | 2026-12-27 |  |  |
|  | 1 | **Civil Work** |  | 2026-05-20 | 2026-08-20 |  |  |
| CO-SU-FE-WP1-CI-150 |  | Excavation Work For Northern Fence | 10d | 2026-05-20 | 2026-06-06 | CO-SU-FE-N-CI-120, CO-SU-FE-N-CI-130, CO-SU-FE-N-CI-130 FF | 0d |
| CO-SU-FE-WP1-CI-160 |  | Pouring for Plain Concrete Northern Fence | 5d | 2026-06-06 | 2026-06-11 | CO-SU-FE-WP1-CI-150 | 0d |
| CO-SU-FE-WP1-CI-170 |  | Pouring R.C Footing For Northern Fence | 15d | 2026-06-11 | 2026-06-29 | CO-SU-FE-WP1-CI-160, CO-SU-FE-N-CI-140 | 0d |
| CO-SU-FE-WP1-CI-180 |  | Pouring R.C Columns For Northern Fence | 16d | 2026-06-29 | 2026-07-18 | CO-SU-FE-WP1-CI-170 | 10d |
| CO-SU-FE-WP1-CI-190 |  | Pouring Beams For Northern Fence | 19d | 2026-07-29 | 2026-08-20 | CO-SU-FE-WP1-CI-180, CO-SU-FE-WP1-AR-160 | 10d |
|  | 5 | **Finishing Work** |  | 2026-07-18 | 2026-12-27 |  |  |
|  | 3 | **Electrical Work** |  | 2026-07-29 | 2026-12-27 |  |  |
| CO-SU-FE-WP1-EL-260 |  | Trench excavation to receive 2 nos 50mm diameter PVC Conduit | 21d | 2026-07-29 | 2026-08-23 | CO-SU-FE-WP1-AR-160, CO-SU-FE-N-EL-100 | 35d |
| CO-SU-FE-WP1-EL-320 |  | Trench excavation to receive 3 nos 50mm diameter PVC Conduit | 21d | 2026-07-29 | 2026-08-23 | CO-SU-FE-WP1-EL-260 SS, CO-SU-FE-N-EL-110 | 35d |
| CO-SU-FE-WP1-EL-300 |  | Fixing of Control cable,CAT6A cable | 14d | 2026-08-23 | 2026-09-08 | CO-SU-FE-WP1-EL-260, CO-SU-FE-WP1-EL-320, CO-SU-FE-N-EL-120 | 42d |
| CO-SU-FE-WP1-EL-310 |  | Install 800mm x 800mm x 800mm height concrete handhole | 21d | 2026-08-23 | 2026-09-16 | CO-SU-FE-WP1-EL-260, CO-SU-FE-WP1-EL-320, CO-SU-FE-N-EL-130, CO-SU-FE-N-EL-210 | 35d |
| CO-SU-FE-WP1-EL-330 |  | Hot dipped galvanized cable conduits for CAT6A cable and Control Cables embedded to wall | 14d | 2026-08-23 | 2026-09-08 | CO-SU-FE-WP1-EL-260, CO-SU-FE-WP1-EL-320, CO-SU-FE-N-EL-140 | 42d |
| CO-SU-FE-WP1-EL-280 |  | Fixing Earthing Work (Earth Pit,Grounding rod,Tinned Copper wire) | 14d | 2026-09-16 | 2026-10-04 | CO-SU-FE-WP1-EL-300, CO-SU-FE-WP1-EL-310, CO-SU-FE-WP1-EL-330, CO-SU-FE-N-EL-150, CO-SU-FE-N-AR-140, CO-SU-FE-N-EL-210 | 35d |
| CO-SU-FE-WP1-EL-340 |  | Field Equipment Cabinet enclosed outdoor complete with precast concrete footing, | 9d | 2026-10-04 | 2026-10-14 | CO-SU-FE-WP1-EL-280, CO-SU-FE-N-EL-160 | 35d |
| CO-SU-FE-WP1-EL-350 |  | Fence Lightining 400V, 3PH, 60Hz lighting control panel (LCP-02) | 9d | 2026-10-04 | 2026-10-14 | CO-SU-FE-WP1-EL-280, CO-SU-FE-N-EL-170 | 35d |
| CO-SU-FE-WP1-EL-360 |  | Install of direct buried armored cable 4C-16mm2 ,10mm2 | 10d | 2026-10-14 | 2026-10-26 | CO-SU-FE-WP1-EL-340, CO-SU-FE-WP1-EL-350, CO-SU-FE-N-EL-180 | 35d |
| CO-SU-FE-WP1-EL-370 |  | Install 16mm2,10mm2 CU/PVC wire | 10d | 2026-10-14 | 2026-10-26 | CO-SU-FE-WP1-EL-340, CO-SU-FE-WP1-EL-350, CO-SU-FE-N-EL-190 | 35d |
| CO-SU-FE-WP1-EL-390 |  | FEC-CCTV ( 4C-16mm2 CU/XLPE/PVC direct buried armored cable,16mm2 CU/PVC wire | 9d | 2026-10-14 | 2026-10-25 | CO-SU-FE-WP1-EL-340, CO-SU-FE-WP1-EL-350, CO-SU-FE-N-EL-200 | 36d |
| CO-SU-FE-WP1-EL-250 |  | Junction Box for lighting fixture | 11d | 2026-10-26 | 2026-11-08 | CO-SU-FE-WP1-EL-360, CO-SU-FE-WP1-EL-370, CO-SU-FE-N-EL-210 | 44d |
| CO-SU-FE-WP1-EL-290 |  | IR Intrusion Detection System Quad Beams | 7d | 2026-12-09 | 2026-12-17 | CO-SU-FE-WP1-EL-360, CO-SU-FE-WP1-EL-370, CO-SU-FE-WP1-EL-390, CO-SU-FE-WP1-EL-250, CO-SU-FE-WP1-AR-190, CO-SU-FE-WP1-AR-200, CO-SU-FE-WP1-AR-180, CO-SU-FE-N-EL-220 | 21d |

| ID | WBS | Task | Duration | Start | Finish | Predecessors | Total float |
| --- | --- | --- | --- | --- | --- | --- | --- |
| CO-SU-FE-WP1-EL-380 |  | Install of 38W, 230V, 1PH, 60Hz fence, led linear uplight lighting, IP66 | 7d | 2026-12-09 | 2026-12-17 | CO-SU-FE-WP1-EL-370, CO-SU-FE-WP1-EL-390, CO-SU-FE-WP1-EL-250, CO-SU-FE-WP1-AR-180, CO-SU-FE-WP1-AR-190, CO-SU-FE-WP1-AR-200, CO-SU-FE-N-EL-220 | 21d |
| CO-SU-FE-WP1-EL-270 |  | Install, fixings, testing and commissioning 80W LED | 7d | 2026-12-19 | 2026-12-27 | CO-SU-FE-WP1-EL-290, CO-SU-FE-WP1-EL-380, CO-SU-FE-N-EL-240 | 20d |
|  | 4 | **Architictural work** |  | 2026-07-18 | 2026-12-02 |  |  |
| CO-SU-FE-WP1-AR-160 |  | Install Brick Work For Northern Fence | 10d | 2026-07-18 | 2026-07-29 | CO-SU-FE-WP1-CI-180 | 10d |
| CO-SU-FE-WP1-AR-170 |  | External plastering to walls and columns | 7d | 2026-10-26 | 2026-11-03 | CO-SU-FE-WP1-AR-160, CO-SU-FE-WP1-CI-190, CO-SU-FE-WP1-EL-390, CO-SU-FE-WP1-EL-370, CO-SU-FE-WP1-EL-360 | 35d |
| CO-SU-FE-WP1-AR-180 |  | Install 50mm thick random cut stone cladding | 7d | 2026-11-03 | 2026-11-11 | CO-SU-FE-WP1-AR-170 | 35d |
| CO-SU-FE-WP1-AR-190 |  | Install 2 coats of weatherproof paint at walls | 6d | 2026-11-11 | 2026-11-18 | CO-SU-FE-WP1-AR-180 | 35d |
| CO-SU-FE-WP1-AR-200 |  | Install Stone coping 500mm,525mm | 4d | 2026-11-18 | 2026-11-23 | CO-SU-FE-WP1-AR-190 | 35d |
| CO-SU-FE-WP1-AR-210 |  | Install MODON Signage | 8d | 2026-11-23 | 2026-12-02 | CO-SU-FE-WP1-AR-200, CO-SU-FE-N-AR-150 | 39.75d |
|  | 3 | **Western Fence P2 ( W07:W12 )** |  | 2026-06-11 | 2027-01-04 |  |  |
|  | 1 | **Civil Work** |  | 2026-06-11 | 2026-08-29 |  |  |
| CO-SU-FE-WP2-CI-200 |  | Excavation Work For Northern Fence | 5d | 2026-06-11 | 2026-06-17 | CO-SU-FE-WP1-CI-170 SS | 0d |
| CO-SU-FE-WP2-CI-210 |  | Pouring for Plain Concrete Northern Fence | 5d | 2026-06-17 | 2026-06-23 | CO-SU-FE-WP2-CI-200 | 0d |
| CO-SU-FE-WP2-CI-220 |  | Pouring R.C Footing For Northern Fence | 10d | 2026-06-23 | 2026-07-05 | CO-SU-FE-WP2-CI-210 | 0d |
| CO-SU-FE-WP2-CI-230 |  | Pouring R.C Columns For Northern Fence | 9d | 2026-07-05 | 2026-07-15 | CO-SU-FE-WP2-CI-220 | 21d |
| CO-SU-FE-WP2-CI-240 |  | Pouring Beams For Northern Fence | 7d | 2026-08-20 | 2026-08-29 | CO-SU-FE-WP2-CI-230, CO-SU-FE-WP2-AR-220, CO-SU-FE-WP1-CI-190 | 10d |
|  | 5 | **Finishing Work** |  | 2026-07-15 | 2027-01-04 |  |  |
|  | 3 | **Electrical Work** |  | 2026-08-08 | 2027-01-04 |  |  |
| CO-SU-FE-WP2-EL-410 |  | Trench excavation to receive 2 nos 50mm diameter PVC Conduit | 4d | 2026-08-08 | 2026-08-12 | CO-SU-FE-WP2-AR-220 | 42.75d |
| CO-SU-FE-WP2-EL-470 |  | Trench excavation to receive 3 nos 50mm diameter PVC Conduit | 6d | 2026-08-08 | 2026-08-15 | CO-SU-FE-WP2-EL-410 SS | 42.75d |
| CO-SU-FE-WP2-EL-450 |  | Fixing of Control cable,CAT6A cable | 7d | 2026-08-15 | 2026-08-23 | CO-SU-FE-WP2-EL-410, CO-SU-FE-WP2-EL-470 | 42.75d |
| CO-SU-FE-WP2-EL-460 |  | Install 800mm x 800mm x 800mm height concrete handhole | 7d | 2026-08-15 | 2026-08-23 | CO-SU-FE-WP2-EL-410, CO-SU-FE-WP2-EL-470 | 42.75d |
| CO-SU-FE-WP2-EL-480 |  | Hot dipped galvanized cable conduits for CAT6A cable and Control Cables embedded to wall | 7d | 2026-08-15 | 2026-08-23 | CO-SU-FE-WP2-EL-410, CO-SU-FE-WP2-EL-470 | 42.75d |
| CO-SU-FE-WP2-EL-430 |  | Fixing Earthing Work (Earth Pit,Grounding rod,Tinned Copper wire) | 6d | 2026-08-23 | 2026-08-30 | CO-SU-FE-WP2-EL-450, CO-SU-FE-WP2-EL-460, CO-SU-FE-WP2-EL-480 | 42.75d |
| CO-SU-FE-WP2-EL-490 |  | Field Equipment Cabinet enclosed outdoor complete with precast concrete footing, | 4d | 2026-08-30 | 2026-09-03 | CO-SU-FE-WP2-EL-430 | 42.75d |
| CO-SU-FE-WP2-EL-500 |  | Fence Lightining 400V, 3PH, 60Hz lighting control panel (LCP-02) | 4d | 2026-08-30 | 2026-09-03 | CO-SU-FE-WP2-EL-430 | 42.75d |
| CO-SU-FE-WP2-EL-510 |  | Install of direct buried armored cable 4C-16mm2 ,10mm2 | 7d | 2026-09-03 | 2026-09-12 | CO-SU-FE-WP2-EL-490, CO-SU-FE-WP2-EL-500 | 43d |
| CO-SU-FE-WP2-EL-520 |  | Install 16mm2,10mm2 CU/PVC wire | 7d | 2026-09-03 | 2026-09-12 | CO-SU-FE-WP2-EL-490, CO-SU-FE-WP2-EL-500 | 43d |
| CO-SU-FE-WP2-EL-540 |  | FEC-CCTV ( 4C-16mm2 CU/XLPE/PVC direct buried armored cable,16mm2 CU/PVC wire | 8d | 2026-09-03 | 2026-09-13 | CO-SU-FE-WP2-EL-490, CO-SU-FE-WP2-EL-500 | 42.75d |
| CO-SU-FE-WP2-EL-400 |  | Junction Box for lighting fixture | 3d | 2026-09-12 | 2026-09-15 | CO-SU-FE-WP2-EL-510, CO-SU-FE-WP2-EL-520 | 43d |
| CO-SU-FE-WP2-EL-440 |  | IR Intrusion Detection System Quad Beams | 7d | 2026-12-17 | 2026-12-26 | CO-SU-FE-WP2-EL-510, CO-SU-FE-WP2-EL-520, CO-SU-FE-WP2-EL-540, CO-SU-FE-WP2-EL-400, CO-SU-FE-WP2-AR-250, CO-SU-FE-WP2-AR-260, CO-SU-FE-WP2-AR-240, CO-SU-FE-WP1-EL-290 | 21d |
| CO-SU-FE-WP2-EL-530 |  | Install of 38W, 230V, 1PH, 60Hz fence, led linear uplight lighting, IP66 | 7d | 2026-12-17 | 2026-12-26 | CO-SU-FE-WP2-EL-520, CO-SU-FE-WP2-EL-540, CO-SU-FE-WP2-EL-400, CO-SU-FE-WP2-AR-240, CO-SU-FE-WP2-AR-250, CO-SU-FE-WP2-AR-260, CO-SU-FE-WP1-EL-290 | 21d |
| CO-SU-FE-WP2-EL-420 |  | Install, fixings, testing and commissioning 80W LED | 7d | 2026-12-27 | 2027-01-04 | CO-SU-FE-WP2-EL-440, CO-SU-FE-WP2-EL-530, CO-SU-FE-WP1-EL-270 | 20d |
|  | 4 | **Architictural work** |  | 2026-07-15 | 2026-12-12 |  |  |
| CO-SU-FE-WP2-AR-220 |  | Install Brick Work For Northern Fence | 20d | 2026-07-15 | 2026-08-08 | CO-SU-FE-WP2-CI-230 | 21d |
| CO-SU-FE-WP2-AR-230 |  | External plastering to walls and columns | 15d | 2026-09-13 | 2026-10-01 | CO-SU-FE-WP2-AR-220, CO-SU-FE-WP2-CI-240, CO-SU-FE-WP2-EL-540, CO-SU-FE-WP2-EL-520, CO-SU-FE-WP2-EL-510 | 42.75d |
| CO-SU-FE-WP2-AR-240 |  | Install 50mm thick random cut stone cladding | 15d | 2026-10-01 | 2026-10-19 | CO-SU-FE-WP2-AR-230 | 42.75d |
| CO-SU-FE-WP2-AR-250 |  | Install 2 coats of weatherproof paint at walls | 10d | 2026-10-19 | 2026-10-31 | CO-SU-FE-WP2-AR-240 | 42.75d |
| CO-SU-FE-WP2-AR-260 |  | Install Stone coping 500mm,525mm | 10d | 2026-10-31 | 2026-11-11 | CO-SU-FE-WP2-AR-250 | 42.75d |
| CO-SU-FE-WP2-AR-270 |  | Install MODON Signage | 8d | 2026-12-02 | 2026-12-12 | CO-SU-FE-WP2-AR-260, CO-SU-FE-WP1-AR-210 | 39.75d |
|  | 4 | **Southern Fence S01:S05** |  | 2026-06-23 | 2027-01-12 |  |  |
|  | 1 | **Civil Work** |  | 2026-06-23 | 2026-09-02 |  |  |
| CO-SU-FE-S-CI-250 |  | Excavation Work For Northern Fence | 7d | 2026-06-23 | 2026-07-01 | CO-SU-FE-WP2-CI-220 SS | 0d |
| CO-SU-FE-S-CI-260 |  | Pouring for Plain Concrete Northern Fence | 3d | 2026-07-01 | 2026-07-05 | CO-SU-FE-S-CI-250 | 0d |
| CO-SU-FE-S-CI-270 |  | Pouring R.C Footing For Northern Fence | 10d | 2026-07-05 | 2026-07-16 | CO-SU-FE-S-CI-260 | 0d |
| CO-SU-FE-S-CI-280 |  | Pouring R.C Columns For Northern Fence | 5d | 2026-07-16 | 2026-07-22 | CO-SU-FE-S-CI-270 | 27d |
| CO-SU-FE-S-CI-290 |  | Pouring Beams For Northern Fence | 4d | 2026-08-29 | 2026-09-02 | CO-SU-FE-S-CI-280, CO-SU-FE-S-AR-280, CO-SU-FE-WP2-CI-240 | 10d |
|  | 5 | **Finishing Work** |  | 2026-07-22 | 2027-01-12 |  |  |
|  | 3 | **Electrical Work** |  | 2026-08-09 | 2027-01-12 |  |  |
| CO-SU-FE-S-EL-560 |  | Trench excavation to receive 2 nos 50mm diameter PVC Conduit | 14d | 2026-08-09 | 2026-08-25 | CO-SU-FE-S-AR-280 | 42d |
| CO-SU-FE-S-EL-620 |  | Trench excavation to receive 3 nos 50mm diameter PVC Conduit | 16d | 2026-08-09 | 2026-08-27 | CO-SU-FE-S-EL-560 SS | 42d |
| CO-SU-FE-S-EL-600 |  | Fixing of Control cable,CAT6A cable | 17d | 2026-08-27 | 2026-09-16 | CO-SU-FE-S-EL-560, CO-SU-FE-S-EL-620 | 42d |
| CO-SU-FE-S-EL-610 |  | Install 800mm x 800mm x 800mm height concrete handhole | 17d | 2026-08-27 | 2026-09-16 | CO-SU-FE-S-EL-560, CO-SU-FE-S-EL-620 | 42d |
| CO-SU-FE-S-EL-630 |  | Hot dipped galvanized cable conduits for CAT6A cable and Control Cables embedded to wall | 17d | 2026-08-27 | 2026-09-16 | CO-SU-FE-S-EL-560, CO-SU-FE-S-EL-620 | 42d |
| CO-SU-FE-S-EL-580 |  | Fixing Earthing Work (Earth Pit,Grounding rod,Tinned Copper wire) | 6d | 2026-09-16 | 2026-09-24 | CO-SU-FE-S-EL-600, CO-SU-FE-S-EL-610, CO-SU-FE-S-EL-630, CO-SU-FE-WP2-EL-400 | 42d |
| CO-SU-FE-S-EL-640 |  | Field Equipment Cabinet enclosed outdoor complete with precast concrete footing, | 4d | 2026-09-24 | 2026-09-29 | CO-SU-FE-S-EL-580 | 42d |
| CO-SU-FE-S-EL-650 |  | Fence Lightining 400V, 3PH, 60Hz lighting control panel (LCP-02) | 4d | 2026-09-24 | 2026-09-29 | CO-SU-FE-S-EL-580 | 42d |
| CO-SU-FE-S-EL-660 |  | Install of direct buried armored cable 4C-16mm2 ,10mm2 | 7d | 2026-09-29 | 2026-10-07 | CO-SU-FE-S-EL-640, CO-SU-FE-S-EL-650 | 42d |
| CO-SU-FE-S-EL-670 |  | Install 16mm2,10mm2 CU/PVC wire | 7d | 2026-09-29 | 2026-10-07 | CO-SU-FE-S-EL-640, CO-SU-FE-S-EL-650 | 42d |
| CO-SU-FE-S-EL-690 |  | FEC-CCTV ( 4C-16mm2 CU/XLPE/PVC direct buried armored cable,16mm2 CU/PVC wire | 7d | 2026-09-29 | 2026-10-07 | CO-SU-FE-S-EL-640, CO-SU-FE-S-EL-650 | 43d |
| CO-SU-FE-S-EL-550 |  | Junction Box for lighting fixture | 7d | 2026-10-07 | 2026-10-15 | CO-SU-FE-S-EL-660, CO-SU-FE-S-EL-670, CO-SU-FE-WP2-EL-400 | 42d |
| CO-SU-FE-S-EL-590 |  | IR Intrusion Detection System Quad Beams | 7d | 2026-12-26 | 2027-01-03 | CO-SU-FE-S-EL-660, CO-SU-FE-S-EL-670, CO-SU-FE-S-EL-690, CO-SU-FE-S-EL-550, CO-SU-FE-S-AR-310, CO-SU-FE-S-AR-320, CO-SU-FE-S-AR-300, CO-SU-FE-WP2-EL-440 | 21d |
| CO-SU-FE-S-EL-680 |  | Install of 38W, 230V, 1PH, 60Hz fence, led linear uplight lighting, IP66 | 7d | 2026-12-26 | 2027-01-03 | CO-SU-FE-S-EL-670, CO-SU-FE-S-EL-690, CO-SU-FE-S-EL-550, CO-SU-FE-S-AR-300, CO-SU-FE-S-AR-310, CO-SU-FE-S-AR-320, CO-SU-FE-WP2-EL-440 | 21d |
| CO-SU-FE-S-EL-570 |  | Install, fixings, testing and commissioning 80W LED | 7d | 2027-01-04 | 2027-01-12 | CO-SU-FE-S-EL-590, CO-SU-FE-S-EL-680, CO-SU-FE-WP2-EL-420 | 20d |
|  | 4 | **Architictural work** |  | 2026-07-22 | 2026-12-21 |  |  |
| CO-SU-FE-S-AR-280 |  | Install Brick Work For Northern Fence | 15d | 2026-07-22 | 2026-08-09 | CO-SU-FE-S-CI-280 | 27d |
| CO-SU-FE-S-AR-290 |  | External plastering to walls and columns | 14d | 2026-10-07 | 2026-10-24 | CO-SU-FE-S-AR-280, CO-SU-FE-S-CI-290, CO-SU-FE-S-EL-690, CO-SU-FE-S-EL-670, CO-SU-FE-S-EL-660 | 43d |
| CO-SU-FE-S-AR-300 |  | Install 50mm thick random cut stone cladding | 14d | 2026-10-24 | 2026-11-09 | CO-SU-FE-S-AR-290 | 43d |
| CO-SU-FE-S-AR-310 |  | Install 2 coats of weatherproof paint at walls | 8d | 2026-11-09 | 2026-11-18 | CO-SU-FE-S-AR-300, CO-SU-FE-WP1-EL-250 | 43d |
| CO-SU-FE-S-AR-320 |  | Install Stone coping 500mm,525mm | 10d | 2026-11-18 | 2026-11-30 | CO-SU-FE-S-AR-310 | 43d |

| ID | WBS | Task | Duration | Start | Finish | Predecessors | Total float |
| --- | --- | --- | --- | --- | --- | --- | --- |
| CO-SU-FE-S-AR-330 |  | Install MODON Signage | 8d | 2026-12-12 | 2026-12-21 | CO-SU-FE-S-AR-320, CO-SU-FE-WP2-AR-270, CO-SU-FE-WP2-AR-270 FF, CO-SU-FE-WP2-AR-270 SS | 39.75d |
|  | 5 | **Eastern Fence P1 ( E01:E06 )** |  | 2026-07-05 | 2027-01-20 |  |  |
|  | 1 | **Civil Work** |  | 2026-07-05 | 2026-10-01 |  |  |
| CO-SU-FE-EP1-CI-300 |  | Excavation Work For Northern Fence | 15d | 2026-07-05 | 2026-07-22 | CO-SU-FE-S-CI-270 SS | 0d |
| CO-SU-FE-EP1-CI-310 |  | Pouring for Plain Concrete Northern Fence | 8d | 2026-07-22 | 2026-08-01 | CO-SU-FE-EP1-CI-300 | 0d |
| CO-SU-FE-EP1-CI-320 |  | Pouring R.C Footing For Northern Fence | 20d | 2026-08-01 | 2026-08-24 | CO-SU-FE-EP1-CI-310 | 0d |
| CO-SU-FE-EP1-CI-330 |  | Pouring R.C Columns For Northern Fence | 15d | 2026-08-24 | 2026-09-10 | CO-SU-FE-EP1-CI-320 | 18d |
| CO-SU-FE-EP1-CI-340 |  | Pouring Beams For Northern Fence | 7d | 2026-09-22 | 2026-10-01 | CO-SU-FE-EP1-CI-330, CO-SU-FE-EP1-AR-340, CO-SU-FE-S-CI-290 | 24d |
|  | 5 | **Finishing Work** |  | 2026-09-10 | 2027-01-20 |  |  |
|  | 3 | **Electrical Work** |  | 2026-09-22 | 2027-01-20 |  |  |
| CO-SU-FE-EP1-EL-710 |  | Trench excavation to receive 2 nos 50mm diameter PVC Conduit | 4d | 2026-09-22 | 2026-09-28 | CO-SU-FE-EP1-AR-340 | 18d |
| CO-SU-FE-EP1-EL-770 |  | Trench excavation to receive 3 nos 50mm diameter PVC Conduit | 6d | 2026-09-22 | 2026-09-30 | CO-SU-FE-EP1-EL-710 SS | 18d |
| CO-SU-FE-EP1-EL-750 |  | Fixing of Control cable,CAT6A cable | 7d | 2026-09-30 | 2026-10-08 | CO-SU-FE-EP1-EL-710, CO-SU-FE-EP1-EL-770 | 18d |
| CO-SU-FE-EP1-EL-760 |  | Install 800mm x 800mm x 800mm height concrete handhole | 7d | 2026-09-30 | 2026-10-08 | CO-SU-FE-EP1-EL-710, CO-SU-FE-EP1-EL-770 | 18d |
| CO-SU-FE-EP1-EL-780 |  | Hot dipped galvanized cable conduits for CAT6A cable and Control Cables embedded to wall | 7d | 2026-09-30 | 2026-10-08 | CO-SU-FE-EP1-EL-710, CO-SU-FE-EP1-EL-770 | 18d |
| CO-SU-FE-EP1-EL-730 |  | Fixing Earthing Work (Earth Pit,Grounding rod,Tinned Copper wire) | 6d | 2026-10-08 | 2026-10-15 | CO-SU-FE-EP1-EL-750, CO-SU-FE-EP1-EL-760, CO-SU-FE-EP1-EL-780, CO-SU-FE-EP1-CI-340 | 18d |
| CO-SU-FE-EP1-EL-790 |  | Field Equipment Cabinet enclosed outdoor complete with precast concrete footing, | 4d | 2026-10-15 | 2026-10-20 | CO-SU-FE-EP1-EL-730 | 18d |
| CO-SU-FE-EP1-EL-800 |  | Fence Lightining 400V, 3PH, 60Hz lighting control panel (LCP-02) | 4d | 2026-10-15 | 2026-10-20 | CO-SU-FE-EP1-EL-730 | 18d |
| CO-SU-FE-EP1-EL-810 |  | Install of direct buried armored cable 4C-16mm2 ,10mm2 | 7d | 2026-10-20 | 2026-10-28 | CO-SU-FE-EP1-EL-790, CO-SU-FE-EP1-EL-800 | 27d |
| CO-SU-FE-EP1-EL-820 |  | Install 16mm2,10mm2 CU/PVC wire | 7d | 2026-10-20 | 2026-10-28 | CO-SU-FE-EP1-EL-790, CO-SU-FE-EP1-EL-800 | 27d |
| CO-SU-FE-EP1-EL-840 |  | FEC-CCTV ( 4C-16mm2 CU/XLPE/PVC direct buried armored cable,16mm2 CU/PVC wire | 7d | 2026-10-20 | 2026-10-28 | CO-SU-FE-EP1-EL-790, CO-SU-FE-EP1-EL-800 | 18d |
| CO-SU-FE-EP1-EL-700 |  | Junction Box for lighting fixture | 3d | 2026-10-28 | 2026-11-01 | CO-SU-FE-EP1-EL-810, CO-SU-FE-EP1-EL-820, CO-SU-FE-S-EL-550 | 31d |
| CO-SU-FE-EP1-EL-740 |  | IR Intrusion Detection System Quad Beams | 7d | 2027-01-03 | 2027-01-11 | CO-SU-FE-EP1-EL-810, CO-SU-FE-EP1-EL-820, CO-SU-FE-EP1-EL-840, CO-SU-FE-EP1-EL-700, CO-SU-FE-EP1-AR-370, CO-SU-FE-EP1-AR-380, CO-SU-FE-EP1-AR-360, CO-SU-FE-S-EL-590 | 21d |
| CO-SU-FE-EP1-EL-830 |  | Install of 38W, 230V, 1PH, 60Hz fence, led linear uplight lighting, IP66 | 7d | 2027-01-03 | 2027-01-11 | CO-SU-FE-EP1-EL-820, CO-SU-FE-EP1-EL-840, CO-SU-FE-EP1-EL-700, CO-SU-FE-EP1-AR-360, CO-SU-FE-EP1-AR-370, CO-SU-FE-EP1-AR-380, CO-SU-FE-S-EL-590 | 21d |
| CO-SU-FE-EP1-EL-720 |  | Install, fixings, testing and commissioning 80W LED | 7d | 2027-01-12 | 2027-01-20 | CO-SU-FE-EP1-EL-740, CO-SU-FE-EP1-EL-830, CO-SU-FE-S-EL-570 | 20d |
|  | 4 | **Architictural work** |  | 2026-09-10 | 2027-01-03 |  |  |
| CO-SU-FE-EP1-AR-340 |  | Install Brick Work For Northern Fence | 10d | 2026-09-10 | 2026-09-22 | CO-SU-FE-EP1-CI-330 | 18d |
| CO-SU-FE-EP1-AR-350 |  | External plastering to walls and columns | 10d | 2026-10-28 | 2026-11-09 | CO-SU-FE-EP1-AR-340, CO-SU-FE-EP1-CI-340, CO-SU-FE-EP1-EL-840, CO-SU-FE-EP1-EL-820, CO-SU-FE-EP1-EL-810 | 27d |
| CO-SU-FE-EP1-AR-360 |  | Install 50mm thick random cut stone cladding | 12d | 2026-11-09 | 2026-11-23 | CO-SU-FE-EP1-AR-350, CO-SU-FE-EP1-EL-840 | 27d |
| CO-SU-FE-EP1-AR-370 |  | Install 2 coats of weatherproof paint at walls | 14d | 2026-11-23 | 2026-12-09 | CO-SU-FE-EP1-AR-360 | 27d |
| CO-SU-FE-EP1-AR-380 |  | Install Stone coping 500mm,525mm | 15d | 2026-12-09 | 2026-12-27 | CO-SU-FE-EP1-AR-370 | 27d |
| CO-SU-FE-EP1-AR-390 |  | Install MODON Signage | 6d | 2026-12-27 | 2027-01-03 | CO-SU-FE-EP1-AR-380, CO-SU-FE-S-AR-330 | 34.75d |
|  | 6 | **Eastern Fence P2 ( E07:E13 )** |  | 2026-08-24 | 2027-02-22 |  |  |
|  | 1 | **Civil Work** |  | 2026-08-24 | 2026-12-12 |  |  |
| CO-SU-FE-EP2-CI-350 |  | Excavation Work For Northern Fence | 18d | 2026-08-24 | 2026-09-14 | CO-SU-FE-EP1-CI-320 | 0d |
| CO-SU-FE-EP2-CI-360 |  | Pouring for Plain Concrete Northern Fence | 15d | 2026-09-14 | 2026-10-03 | CO-SU-FE-EP2-CI-350, CO-SU-FE-S-CI-290 | 0d |
| CO-SU-FE-EP2-CI-370 |  | Pouring R.C Footing For Northern Fence | 21d | 2026-10-03 | 2026-10-27 | CO-SU-FE-EP2-CI-360 | 0d |
| CO-SU-FE-EP2-CI-380 |  | Pouring R.C Columns For Northern Fence | 19d | 2026-10-27 | 2026-11-18 | CO-SU-FE-EP2-CI-370, CO-SU-FE-EP1-CI-330 | 0d |
| CO-SU-FE-EP2-CI-390 |  | Pouring Beams For Northern Fence | 10d | 2026-11-30 | 2026-12-12 | CO-SU-FE-EP2-CI-380, CO-SU-FE-EP2-AR-400, CO-SU-FE-EP1-CI-340 | 23d |
|  | 5 | **Finishing Work** |  | 2026-11-18 | 2027-02-22 |  |  |
|  | 3 | **Electrical Work** |  | 2026-11-30 | 2027-02-22 |  |  |
| CO-SU-FE-EP2-EL-860 |  | Trench excavation to receive 2 nos 50mm diameter PVC Conduit | 4d | 2026-11-30 | 2026-12-05 | CO-SU-FE-EP2-AR-400 | 0d |
| CO-SU-FE-EP2-EL-920 |  | Trench excavation to receive 3 nos 50mm diameter PVC Conduit | 6d | 2026-11-30 | 2026-12-07 | CO-SU-FE-EP2-EL-860 SS | 0d |
| CO-SU-FE-EP2-EL-900 |  | Fixing of Control cable,CAT6A cable | 7d | 2026-12-07 | 2026-12-15 | CO-SU-FE-EP2-EL-860, CO-SU-FE-EP2-EL-920, CO-SU-FE-EP1-EL-700 | 0d |
| CO-SU-FE-EP2-EL-910 |  | Install 800mm x 800mm x 800mm height concrete handhole | 7d | 2026-12-07 | 2026-12-15 | CO-SU-FE-EP2-EL-860, CO-SU-FE-EP2-EL-920 | 0d |
| CO-SU-FE-EP2-EL-930 |  | Hot dipped galvanized cable conduits for CAT6A cable and Control Cables embedded to wall | 7d | 2026-12-07 | 2026-12-15 | CO-SU-FE-EP2-EL-860, CO-SU-FE-EP2-EL-920 | 0d |
| CO-SU-FE-EP2-EL-880 |  | Fixing Earthing Work (Earth Pit,Grounding rod,Tinned Copper wire) | 6d | 2026-12-15 | 2026-12-22 | CO-SU-FE-EP2-EL-900, CO-SU-FE-EP2-EL-910, CO-SU-FE-EP2-EL-930 | 0d |
| CO-SU-FE-EP2-EL-940 |  | Field Equipment Cabinet enclosed outdoor complete with precast concrete footing, | 4d | 2026-12-22 | 2026-12-27 | CO-SU-FE-EP2-EL-880 | 0d |
| CO-SU-FE-EP2-EL-950 |  | Fence Lightining 400V, 3PH, 60Hz lighting control panel (LCP-02) | 4d | 2026-12-22 | 2026-12-27 | CO-SU-FE-EP2-EL-880 | 0d |
| CO-SU-FE-EP2-EL-960 |  | Install of direct buried armored cable 4C-16mm2 ,10mm2 | 7d | 2026-12-27 | 2027-01-04 | CO-SU-FE-EP2-EL-940, CO-SU-FE-EP2-EL-950 | 0d |
| CO-SU-FE-EP2-EL-970 |  | Install 16mm2,10mm2 CU/PVC wire | 7d | 2026-12-27 | 2027-01-04 | CO-SU-FE-EP2-EL-940, CO-SU-FE-EP2-EL-950 | 0d |
| CO-SU-FE-EP2-EL-990 |  | FEC-CCTV ( 4C-16mm2 CU/XLPE/PVC direct buried armored cable,16mm2 CU/PVC wire | 7d | 2026-12-27 | 2027-01-04 | CO-SU-FE-EP2-EL-940, CO-SU-FE-EP2-EL-950 | 3d |
| CO-SU-FE-EP2-EL-850 |  | Junction Box for lighting fixture | 3d | 2027-01-04 | 2027-01-07 | CO-SU-FE-EP2-EL-960, CO-SU-FE-EP2-EL-970 | 0d |
| CO-SU-FE-EP2-EL-890 |  | IR Intrusion Detection System Quad Beams | 7d | 2027-02-04 | 2027-02-14 | CO-SU-FE-EP2-EL-960, CO-SU-FE-EP2-EL-970, CO-SU-FE-EP2-EL-990, CO-SU-FE-EP2-EL-850, CO-SU-FE-EP2-AR-430, CO-SU-FE-EP2-AR-440, CO-SU-FE-EP2-AR-420, CO-SU-FE-EP1-EL-740 | 0d |
| CO-SU-FE-EP2-EL-980 |  | Install of 38W, 230V, 1PH, 60Hz fence, led linear uplight lighting, IP66 | 7d | 2027-02-04 | 2027-02-14 | CO-SU-FE-EP2-EL-970, CO-SU-FE-EP2-EL-990, CO-SU-FE-EP2-EL-850, CO-SU-FE-EP2-AR-420, CO-SU-FE-EP2-AR-430, CO-SU-FE-EP2-AR-440, CO-SU-FE-EP1-EL-740 | 0d |
| CO-SU-FE-EP2-EL-870 |  | Install, fixings, testing and commissioning 80W LED | 5.75d | 2027-02-14 | 2027-02-22 | CO-SU-FE-EP2-EL-890, CO-SU-FE-EP2-EL-980, CO-SU-FE-EP1-EL-720 | 0d |
|  | 4 | **Architictural work** |  | 2026-11-18 | 2027-02-13 |  |  |
| CO-SU-FE-EP2-AR-400 |  | Install Brick Work For Northern Fence | 10d | 2026-11-18 | 2026-11-30 | CO-SU-FE-EP2-CI-380, CO-SU-FE-EP1-EL-840 | 0d |
| CO-SU-FE-EP2-AR-410 |  | External plastering to walls and columns | 7d | 2027-01-07 | 2027-01-16 | CO-SU-FE-EP2-AR-400, CO-SU-FE-EP2-CI-390, CO-SU-FE-EP2-EL-990, CO-SU-FE-EP2-EL-970, CO-SU-FE-EP2-EL-960, CO-SU-FE-EP2-EL-850 | 0d |
| CO-SU-FE-EP2-AR-420 |  | Install 50mm thick random cut stone cladding | 7d | 2027-01-16 | 2027-01-24 | CO-SU-FE-EP2-AR-410 | 0d |
| CO-SU-FE-EP2-AR-430 |  | Install 2 coats of weatherproof paint at walls | 6d | 2027-01-24 | 2027-01-31 | CO-SU-FE-EP2-AR-420 | 0d |
| CO-SU-FE-EP2-AR-440 |  | Install Stone coping 500mm,525mm | 4d | 2027-01-31 | 2027-02-04 | CO-SU-FE-EP2-AR-430 | 0d |
| CO-SU-FE-EP2-AR-450 |  | Install MODON Signage | 6d | 2027-02-04 | 2027-02-13 | CO-SU-FE-EP2-AR-440, CO-SU-FE-EP1-AR-390 | 6.75d |
|  | TC | **Testing and Comissioning** |  | 2026-11-10 | 2027-02-22 |  |  |
|  | INF | **Infrastructure Networks** |  | 2026-11-10 | 2027-02-22 |  |  |
|  | PW1 | **Irrigation Network** |  | 2026-12-27 | 2027-01-14 |  |  |
| T/C-IR |  | Testing and Commissioning of Irrigation Network | 16d | 2026-12-27 | 2027-01-14 | T/C-PW SS, CO-IR-TF-160, CO-TSE-TF-170, CO-LS-PL-180 | 0d |
|  | PW11 | **TSE Network** |  | 2026-12-27 | 2027-01-14 |  |  |
| T/C-TSE-10 |  | Testing and Commissioning of TSE Network | 16d | 2026-12-27 | 2027-01-14 | CO-TSE-TF-170, T/C-SD, CO-UB-IRT-250 | 0.75d |
|  | PW | **Potable Water Network** |  | 2026-12-27 | 2027-01-14 |  |  |

| ID | WBS | Task | Duration | Start | Finish | Predecessors | Total float |
| --- | --- | --- | --- | --- | --- | --- | --- |
| T/C-PW |  | Testing and Commissioning of Potable Water Network | 16d | 2026-12-27 | 2027-01-14 | T/C-SW, CO-PW-TF-110, CO-PW-TF-100, CO-PW-TF-120, CO-UB-PS-390, CO-UB-LS-470, CO-UB-LS-480, MS-CF-MV | 0d |
|  | SW | **Sewage Network** |  | 2026-11-28 | 2026-12-15 |  |  |
| T/C-SW |  | Testing and Commissioning of Sewage Network | 15d | 2026-11-28 | 2026-12-15 | T/C-SD, CO-SW-TF-100, CO-SW-TF-210, MS-CF-SW | 10d |
|  | SD | **Storm Drainage Network** |  | 2026-11-10 | 2026-11-28 |  |  |
| T/C-SD |  | Testing and Commissioning of Storm Drainage Network | 15d | 2026-11-10 | 2026-11-28 | CO-SD-ML-TF-100, CO-SD-CB-TF-160, CO-SD-MH-TF-210, CO-SD-PO-110-P2, MS-CF-SD, CO-LS-PL-180 | 10d |
|  | SL | **Street Lighting Network** |  | 2027-01-14 | 2027-02-03 |  |  |
| T/C-SL |  | Testing and Commissioning of Street Lighting Network | 17d | 2027-01-14 | 2027-02-03 | T/C-IR, CO-SL-TF-220, CO-SL-TF-230, CO-SL-TF-200, CO-SL-TF-380, CO-SL-LP-330, MS-CF-SL, T/C-DPO | 0d |
|  | TE | **Telecom Network** |  | 2027-01-14 | 2027-02-03 |  |  |
| T/C-TE |  | Testing and Commissioning of Telecom Network | 17d | 2027-01-14 | 2027-02-03 | T/C-SL SS, CO-TE-CTV-TF-110, CO-TE-CTV-TF-120, CO-TE-CTV-TF-130, CO-TE-CTV-TF-140, MS-CF-TE | 0d |
|  | MV | **Medium Voltage Network** |  | 2027-01-14 | 2027-02-03 |  |  |
| T/C-MV |  | Testing and Commissioning of Medium Voltage Network | 17d | 2027-01-14 | 2027-02-03 | T/C-TE SS, CO-MV-TF-220, MS-CF-MV | 0d |
|  | RD | **Road Works** |  | 2027-02-03 | 2027-02-22 |  |  |
| T/C-RD |  | Testing and Commissioning of Road Works | 13.75d | 2027-02-03 | 2027-02-22 | T/C-MV, T/C-TE, T/C-SL, T/C-SD, CO-RD-B-160, CO-RD-PV-160, CO-RD-PV-170, CO-RD-F-RM-180, CO-RD-F-TS-120, CO-RD-B-130, CO-RD-B-140, CO-RD-PV-140, CO-RD-PV-150, CO-RD-F-RM-170, CO-RD-F-TS-110, CO-RD-B-110, CO-RD-B-120, CO-RD-PV-120, CO-RD-PV-130, CO-RD-F-RM-160 FF, CO-RD-F-TS-100 FF, MS-CF-PW, MS-CF-IR, MS-CF-TSE | 0d |
|  | 1 | **Utility Buildings** |  | 2026-11-10 | 2027-02-22 |  |  |
| T/C-DPO |  | Testing and Commissioning of Storm Drainage Ponds | 30d | 2026-11-10 | 2026-12-15 | CO-SD-PO-110-P1, CO-SD-PO-110-P2 | 26d |
| T/C-CTV |  | Testing and Commissioning of Guard Room and Fence | 30d | 2027-01-03 | 2027-02-07 | CO-UB-CR-360, A1100 | 10.75d |
| T/C-SPS |  | Testing and Commissioning of Sewage Pump Stations& soft scape and planting work | 30d | 2027-01-14 | 2027-02-22 | T/C-TSE-10, CO-UB-PS-390 | 0.75d |
|  | 1 | **Handing over and close out** |  | 2026-12-15 | 2027-02-22 |  |  |
|  | 2 | **As-Built** |  | 2026-12-15 | 2027-02-09 |  |  |
| HO-100 |  | Submission As-Built Drawing For Sewage Network | 14d | 2026-12-15 | 2026-12-31 | T/C-SW | 42.75d |
| HO-130 |  | Submission As-Built Drawing For Pond | 14d | 2026-12-15 | 2026-12-31 | T/C-DPO | 42.75d |
| HO-200 |  | Submission As-Built Drawing For Storm Network | 14d | 2026-12-15 | 2026-12-31 | T/C-SD SS, T/C-DPO | 42.75d |
| HO-180 |  | Submission As-Built Drawing For Irrigation Network | 12d | 2026-12-27 | 2027-01-10 | T/C-IR SS | 34.75d |
| HO-190 |  | As-Built Drawing For Potable Water Network | 12d | 2026-12-27 | 2027-01-10 | T/C-PW SS | 34.75d |
| HO-150 |  | Submission As-Built Drawing For Street Lighting Network | 12d | 2027-01-14 | 2027-01-28 | T/C-SL SS | 18.75d |
| HO-160 |  | Submission As-Built Drawing For Telecom Network | 12d | 2027-01-14 | 2027-01-28 | T/C-TE SS | 18.75d |
| HO-170 |  | Submission As-Built Drawing For Medium Voltage Network | 12d | 2027-01-14 | 2027-01-28 | T/C-MV SS | 18.75d |
| HO-210 |  | Submission As-Built Drawing For Pump station | 12d | 2027-01-14 | 2027-01-28 | T/C-SPS SS | 18.75d |
| HO-140 |  | Submission As-Built Drawing For Roads Network | 5d | 2027-02-03 | 2027-02-09 | T/C-RD SS | 8.75d |
|  | 1 | **De-Mobilization Works** |  | 2027-02-13 | 2027-02-22 |  |  |
| HO-120 |  | Remove material stock & Storage area | 7d | 2027-02-13 | 2027-02-22 | T/C-RD SS, T/C-RD FF | 0d |
| HO-220 |  | Removing Portable Caravan | 5d | 2027-02-15 | 2027-02-22 | T/C-RD SS, T/C-RD FF | 0d |
| HO-230 |  | Remove Temporary Car Shades | 5d | 2027-02-15 | 2027-02-22 | T/C-RD SS, T/C-RD FF | 0d |
|  | 3 | **Handing Over** |  | 2027-02-13 | 2027-02-22 |  |  |
| HO-110 |  | Final Testing Work | 7d | 2027-02-13 | 2027-02-22 | T/C-RD SS, T/C-RD FF | 0d |
| HO-250 |  | Review B.O.Q Qty. to ensure compliance with the actual status | 7d | 2027-02-13 | 2027-02-22 | T/C-RD SS, T/C-RD FF | 0d |
| HO-260 |  | Review FIR Approval to ensure compliance with the actual status | 7d | 2027-02-13 | 2027-02-22 | T/C-RD SS, T/C-RD FF | 0d |
| HO-270 |  | Review the sample drawing to ensure compliance with the actual status | 7d | 2027-02-13 | 2027-02-22 | T/C-RD SS, T/C-RD FF | 0d |
| HO-240 |  | Final Walkthrough and Inspection | 2d | 2027-02-20 | 2027-02-22 | T/C-RD SS, T/C-RD FF | 0d |
| HO-280 |  | Punch List Completion | 2d | 2027-02-20 | 2027-02-22 | T/C-RD SS, T/C-RD FF | 0d |

## Version 2 (data date 2026-06-23, saved 2026-10-19, file 4.MOD3-3147-RECOVERY-REV0.00-7-9-2026-FINAL (1).xer)

Note of the change: Renumber project folders 01–23 in order (after removing projects 12 and 25)

Last finish 2027-02-22 → 2027-02-24 (+2d). Complete tasks 0 → 117.

Added:

| ID | Task | Duration | Start | Finish | Predecessors | Resources |
| --- | --- | --- | --- | --- | --- | --- |
| ENG-SH-SD-CB-S-100_R | Submission Shop Drawings for Secondary Line and Catch Basin of Storm Drainage Network(Remaining) | 4.5d | 2026-06-23 | 2026-06-28 | MS-CS-PS SS, ENG-SH-SD-ML-S-100 SS, ENG-SH-SD-CB-S-100 | Unskilled Labor [22.77 h]; Electrical Technician [8.78 h]; Plumber [2.06 h]; Carpenter [2.5 h]; Mason [1.99 h]; Steel Fixer [2.54 h]; Skilled Labor [6.86 h] |
| ENG-SH-SL-S-100_R | Submission Shop Drawings for Street Lighting Network(Remaining) | 6d | 2026-06-23 | 2026-06-29 | MS-CS-PS SS, ENG-SH-MV-S-100 SS+4d, ENG-SH-SL-S-100 | Unskilled Labor [30.36 h]; Electrical Technician [11.71 h]; Plumber [2.74 h]; Carpenter [3.34 h]; Mason [2.65 h]; Steel Fixer [3.39 h]; Skilled Labor [9.15 h] |
| ENG-SH-SPS-S-150_R | Submission Shop Drawings Package for Sewage Pump Stations(Remaining) | 6d | 2026-06-24 | 2026-06-30 | ENG-SH-PW-ML-A-110 FF, MS-CS-PS SS, ENG-SH-SPS-S-150 | Unskilled Labor [30.36 h]; Electrical Technician [11.71 h]; Plumber [2.74 h]; Carpenter [3.34 h]; Mason [2.65 h]; Steel Fixer [3.39 h]; Skilled Labor [9.15 h] |
| ENG-SH-LS-S-160_R | Submission Shop Drawings Package for Lift Stations(Remaining) | 6d | 2026-06-24 | 2026-06-30 | ENG-SH-SW-ML-A-110 FF, MS-CS-PS SS, ENG-SH-LS-S-160 | Unskilled Labor [30.36 h]; Electrical Technician [11.71 h]; Plumber [2.74 h]; Carpenter [3.34 h]; Mason [2.65 h]; Steel Fixer [3.39 h]; Skilled Labor [9.15 h] |
| ENG-SH-GR-S-190_R | Submission Shop Drawings Package for Fence(Remaining) | 3.48d | 2026-06-23 | 2026-06-27 | MS-CS-PS SS, ENG-SH-RD-A-100 SS, ENG-SH-GR-S-190 | Unskilled Labor [17.61 h]; Electrical Technician [6.79 h]; Plumber [1.59 h]; Carpenter [1.93 h]; Mason [1.54 h]; Steel Fixer [1.97 h]; Skilled Labor [5.31 h] |
| ENG-SH-GR-A-200_R | Approval Shop Drawings Package for Fence(Remaining) | 4.2d | 2026-06-23 | 2026-06-28 | ENG-SH-GR-S-190_R SS, ENG-SH-GR-A-200, ENG-SH-GR-S-190_R FF | Unskilled Labor [21.25 h]; Electrical Technician [8.2 h]; Plumber [1.92 h]; Carpenter [2.34 h]; Mason [1.86 h]; Steel Fixer [2.37 h]; Skilled Labor [6.44 h] |
| PRO-PW-PO-100_R | Issuance of Purchase Order for Main Line Pipes of Potable Water Network(Remaining) | 5d | 2026-07-01 | 2026-07-07 | ENG-MT-PW-ML-A-100 FF, PRO-PW-PO-100, PRO-SD-PO-110 | Unskilled Labor [13.44 h]; Electrical Technician [5.18 h]; Plumber [1.21 h]; Carpenter [1.48 h]; Mason [1.17 h]; Steel Fixer [1.5 h]; Skilled Labor [4.05 h] |
| PRO-PW-MF-100_R | Manufacturing of Main Line Pipes for Potable Water Network(Remaining) | 96.5d | 2026-07-07 | 2026-10-11 | PRO-PW-PO-100_R, PRO-PW-MF-100 | Unskilled Labor [259.43 h]; Electrical Technician [100.06 h]; Plumber [23.44 h]; Carpenter [28.5 h]; Mason [22.68 h]; Steel Fixer [28.97 h]; Skilled Labor [78.68 h] |
| PRO-PW-1DL-100_R | 1ST Material Delivery for Main Line Pipes of Potable Water Network(Remaining) | 70.5d | 2026-07-07 | 2026-09-28 | PRO-PW-MF-100_R SS, PRO-PW-1DL-100 | Unskilled Labor [189.53 h]; Electrical Technician [73.1 h]; Plumber [17.13 h]; Carpenter [20.82 h]; Mason [16.57 h]; Steel Fixer [21.17 h]; Skilled Labor [57.13 h] |
| PRO-R25-PW-DL-100_R | Material Delivery & Site Inspection of Main Line Pipes for Potable Water Network(Remaining) | 0d | 2026-09-29 | 2026-09-29 | PRO-PW-1DL-100_R, PRO-R25-PW-DL-100 | Depth Between 0m to 1.50m; Depth Between 1.50m to 2.50m; Depth > 2.50m |
| PRO-IR-PO-100_R | Issuance of Purchase Order for Main Line Pipes of Irrigation Network(Remaining) | 3.3d | 2026-07-07 | 2026-07-11 | ENG-MT-IR-ML-A-100, PRO-IR-PO-100, PRO-PW-PO-100_R | Unskilled Labor [8.87 h]; Electrical Technician [3.42 h]; Plumber [0.8 h]; Carpenter [0.97 h]; Mason [0.78 h]; Steel Fixer [0.99 h]; Skilled Labor [2.67 h] |
| PRO-R25-TSE-DL-120_R | Material Delivery & Site Inspection of Main Line Pipes for Treated Sewage Effluent (Tse)(Remaining) | 0d | 2026-10-10 | 2026-10-10 | PRO-TSE-MF-120 FF, PRO-TSE-1DL-120 FF, PRO-R25-TSE-DL-120 | Depth Between 0m to 1.50m; Depth Between 1.50m to 2.50m; Depth > 2.50m |
| CO-EW-200_R | Excavation Works Upto Design Level for Earthworks-P1(Remaining) | 10d | 2026-07-04 | 2026-07-14 | MS-CF-EBL FF, MS-CF-ENG FF, MS-CS-PS SS, MOB-30, MOB-20, MOB-80, MOB-40, MOB-50, MOB-60 FF+15d, MOB-10, MOB-70, PRE-CON-MDC-10, PRE-CON-MDC-20, PRE-CON-MDC-30, PRE-CON-MDC-40, PRE-CON-MDC-50, PRE-CON-MDC-60, PRE-CON-MDC-70, PRE-CON-MDC-80, CO-EW-200 | Unskilled Labor [930.24 h]; Dozer [350 h]; Excavator [300 h]; Loader [400 h]; Dump Truck [650 h]; Excavations (including Roads , Plots and Pond) [177897] |
| CO-EW-210_R | Excavation Works Upto Design Level for Earthworks-P2(Remaining) | 10d | 2026-07-04 | 2026-07-14 | MS-CF-MOB FF, CO-EW-200_R SS, CO-EW-210, ENG-SH-HS-S-100 FS+4.35d, ENG-SH-LS-S-160_R | Unskilled Labor [236 h]; Dozer [236 h]; Excavator [236 h]; Loader [236 h]; Dump Truck [430 h]; Excavations (including Roads , Plots and Pond) [91484.9] |
| CO-EW-220_R | Excavation Works Upto Design Level for Earthworks-P3(Remaining) | 11.52d | 2026-07-04 | 2026-07-16 | CO-EW-210_R SS, CO-EW-220 | Unskilled Labor [1105.92 h]; Dozer [300 h]; Excavator [222 h]; Loader [322 h]; Dump Truck [650 h]; Excavations (including Roads , Plots and Pond) [191968] |
| CO-EW-110_R | Embankments Works Upto Design Level for Earthworks(Remaining) | 16d | 2026-07-15 | 2026-08-02 | CO-EW-200_R SS+10d, CO-EW-220_R SS, CO-EW-220_R FF, CO-EW-110 | Unskilled Labor [470 h]; Dozer [470 h]; Excavator [270 h]; Loader [470 h]; Dump Truck [870 h]; Embankments to the Site and Roads (including Roads , Plots and Pond) [371005] |

Removed: PRO-SD-1DL-100 1ST Material Delivery for Manholes of Storm Drainage Network; CO-SU-FE-WP2-EL-500 Fence Lightining 400V, 3PH, 60Hz lighting control panel (LCP-02); HO-200 Submission As-Built Drawing For Storm Network; HO-120 Remove material stock & Storage area; HO-220 Removing Portable Caravan; HO-110 Final Testing Work; HO-260 Review FIR Approval to ensure compliance with the actual status; HO-270 Review the sample drawing to ensure compliance with the actual status; HO-240 Final Walkthrough and Inspection; HO-280 Punch List Completion

Changed:

| ID | Task | Start | Finish | Duration | Complete | Total float | Predecessors | Other |
| --- | --- | --- | --- | --- | --- | --- | --- | --- |
| MS | **Key Milestones** |  | 2027-02-22 → 2027-02-24 (+2d) |  |  |  |  |  |
| CM | **Contractual Milestones** |  | 2027-02-22 → 2027-02-24 (+2d) |  |  |  |  |  |
| MS-CS-PS | Project Commencement Date ( Site Handover ) | 2025-12-23 A | 2025-12-23 A |  | 0% → 100% | 0d → none |  |  |
| MS-CF-EBL | Completion of Execution Plan and Baseline Schedule | 2026-01-22 → 2026-01-18 A (-4d) | 2026-01-22 → 2026-01-18 A (-4d) |  | 0% → 100% | 25d → none | PRE-CON-MDC-20 FF, PRE-CON-MDC-10 FF → PRE-CON-MDC-20 FF, PRE-CON-MDC-10 FF, PRE-CON-MDC-20 |  |
| MS-CF-MOB | Completion of Mobilization and Site Preperation Works | 2026-02-21 → 2026-01-18 A (-34d) | 2026-02-21 → 2026-01-18 A (-34d) |  | 0% → 100% | 18d → none | MOB-30 FF, MOB-20 FF, MOB-80 FF, MOB-40 FF, MOB-50 FF, MOB-60 FF, MOB-10 FF, MOB-70 FF, PRE-CON-MDC-10 FF, PRE-CON-MDC-20 FF, PRE-CON-MDC-30 FF, PRE-CON-MDC-40 FF, PRE-CON-MDC-50 FF, PRE-CON-MDC-60 FF, PRE-CON-MDC-70 FF, PRE-CON-MDC-80 FF → MOB-30 FF, MOB-20 FF, MOB-80 FF, MOB-40 FF, MOB-50 FF, MOB-60 FF, MOB-10 FF, MOB-70 FF, PRE-CON-MDC-10 FF, PRE-CON-MDC-20 FF, PRE-CON-MDC-30 FF, PRE-CON-MDC-40 FF, PRE-CON-MDC-50 FF, PRE-CON-MDC-60 FF, PRE-CON-MDC-70 FF, PRE-CON-MDC-80 FF, MOB-30 |  |
| MS-CF-ENG | Completion of Submitting and Approval of Shopdrwing and Material | 2026-01-22 → 2026-07-14 (+173d) | 2026-01-22 → 2026-07-14 (+173d) |  |  | 25d → -1.5d | PRE-CON-MDC-30 FF, PRE-CON-MDC-40 FF, PRE-CON-MDC-50 FF, PRE-CON-MDC-60 FF, PRE-CON-MDC-70 FF, PRE-CON-MDC-80 FF, ENG-SH-RD-A-110 FF, ENG-SH-HS-A-110 FF, ENG-SH-TSB-A-100 FF, ENG-SH-MRK-A-110 FF, ENG-SH-SW-ML-A-110 FF, ENG-SH-SD-ML-A-110 FF, ENG-SH-SD-CB-A-110 FF, ENG-SH-PW-ML-A-110 FF, ENG-SH-PW-FH-A-110 FF, ENG-SH-IR-ML-A-110 FF, ENG-SH-TSE-ML-A-120 FF, ENG-SH-MV-A-110 FF, ENG-SH-LV-A-120 FF, ENG-SH-SL-A-110 FF, ENG-SH-MSN-A-120 FF, ENG-SH-TE-A-110 FF, ENG-SH-CTV-A-110 FF, ENG-SH-SPS-A-160 FF, ENG-SH-LS-A-170 FF, ENG-SH-DPO-A-120 FF, ENG-SH-ST-A-180 FF, ENG-SH-GR-A-190 FF, ENG-SH-GR-A-200 FF, ENG-MT-RD-A-100 FF, ENG-MT-RD-A-110 FF, ENG-MT-RD-A-120 FF, ENG-MT-RD-A-130 FF, ENG-MT-RD-A-140 FF, ENG-MT-RD-A-150 FF, ENG-MT-TS-A-100 FF, ENG-MT-TS-A-110 FF, ENG-MT-IR-ML-A-140 FF, ENG-MT-IR-ML-A-150 FF, ENG-MT-SW-ML-A-100 FF, ENG-MT-SW-ML-A-110 FF, ENG-MT-SW-TF-A-100 FF, ENG-MT-SD-ML-A-100 FF, ENG-MT-SD-ML-A-110 FF, ENG-MT-SD-CB-A-100 FF, ENG-MT-SD-CB-A-110 FF, ENG-MT-SD-TF-A-100 FF, ENG-MT-SD-TF-A-110 FF, ENG-MT-PW-ML-A-100 FF, ENG-MT-PW-ML-A-110 FF, ENG-MT-PW-FH-A-100 FF, ENG-MT-PW-TF-A-100 FF, ENG-MT-IR-ML-A-100 FF, ENG-MT-IR-ML-A-110 FF, ENG-MT-IR-ML-A-120 FF, ENG-MT-IR-ML-A-130 FF, ENG-MT-MV-ML-A-100 FF, ENG-MT-MV-TF-A-100 FF, ENG-MT-SL-ML-A-100 FF, ENG-MT-SL-A-100 FF, ENG-MT-SL-A-110 FF, ENG-MT-SL-A-120 FF, ENG-MT-SL-DB-A-100 FF, ENG-MT-SL-TF-A-100 FF, ENG-MT-SL-ES-A-100 FF, ENG-MT-TE-A-100 FF, ENG-MT-TE-A-110 FF, ENG-MT-CTV-A-100 FF, ENG-MT-PS-CV-A-150 FF, ENG-MT-SLS-CV-A-110 FF, ENG-MT-DPO-CV-A-110 FF, ENG-MT-TSE-CV-A-140 FF, ENG-MT-GR-CV-A-130 FF, ENG-MT-FE-CV-A-120 FF, ENG-MT-PL-CV-A-160 FF, ENG-MT-CTV-A-110 FF, ENG-MT-SPS-MC-A-110 FF, ENG-MT-TSE-MC-A-120 FF → PRE-CON-MDC-30 FF, PRE-CON-MDC-40 FF, PRE-CON-MDC-50 FF, PRE-CON-MDC-60 FF, PRE-CON-MDC-70 FF, PRE-CON-MDC-80 FF, ENG-SH-RD-A-110 FF, ENG-SH-HS-A-110 FF, ENG-SH-TSB-A-100 FF, ENG-SH-MRK-A-110 FF, ENG-SH-SW-ML-A-110 FF, ENG-SH-SD-ML-A-110 FF, ENG-SH-SD-CB-A-110 FF, ENG-SH-PW-ML-A-110 FF, ENG-SH-PW-FH-A-110 FF, ENG-SH-IR-ML-A-110 FF, ENG-SH-TSE-ML-A-120 FF, ENG-SH-MV-A-110 FF, ENG-SH-LV-A-120 FF, ENG-SH-SL-A-110 FF, ENG-SH-MSN-A-120 FF, ENG-SH-TE-A-110 FF, ENG-SH-CTV-A-110 FF, ENG-SH-SPS-A-160 FF, ENG-SH-LS-A-170 FF, ENG-SH-DPO-A-120 FF, ENG-SH-ST-A-180 FF, ENG-SH-GR-A-190 FF, ENG-SH-GR-A-200_R FF, ENG-MT-RD-A-100 FF, ENG-MT-RD-A-110 FF, ENG-MT-RD-A-120 FF, ENG-MT-RD-A-130 FF, ENG-MT-RD-A-140 FF, ENG-MT-RD-A-150 FF, ENG-MT-TS-A-100 FF, ENG-MT-TS-A-110 FF, ENG-MT-IR-ML-A-140 FF, ENG-MT-IR-ML-A-150 FF, ENG-MT-SW-ML-A-100 FF, ENG-MT-SW-ML-A-110 FF, ENG-MT-SW-TF-A-100 FF, ENG-MT-SD-ML-A-100 FF, ENG-MT-SD-ML-A-110 FF, ENG-MT-SD-CB-A-100 FF, ENG-MT-SD-CB-A-110 FF, ENG-MT-SD-TF-A-100 FF, ENG-MT-SD-TF-A-110 FF, ENG-MT-PW-ML-A-100 FF, ENG-MT-PW-ML-A-110 FF, ENG-MT-PW-FH-A-100 FF, ENG-MT-PW-TF-A-100 FF, ENG-MT-IR-ML-A-100 FF, ENG-MT-IR-ML-A-110 FF, ENG-MT-IR-ML-A-120 FF, ENG-MT-IR-ML-A-130 FF, ENG-MT-MV-ML-A-100 FF, ENG-MT-MV-TF-A-100 FF, ENG-MT-SL-ML-A-100 FF, ENG-MT-SL-A-100 FF, ENG-MT-SL-A-110 FF, ENG-MT-SL-A-120 FF, ENG-MT-SL-DB-A-100 FF, ENG-MT-SL-TF-A-100 FF, ENG-MT-SL-ES-A-100 FF, ENG-MT-TE-A-100 FF, ENG-MT-TE-A-110 FF, ENG-MT-CTV-A-100 FF, ENG-MT-PS-CV-A-150 FF, ENG-MT-SLS-CV-A-110 FF, ENG-MT-DPO-CV-A-110 FF, ENG-MT-TSE-CV-A-140 FF, ENG-MT-GR-CV-A-130 FF, ENG-MT-FE-CV-A-120 FF, ENG-MT-PL-CV-A-160 FF, ENG-MT-CTV-A-110 FF, ENG-MT-SPS-MC-A-110 FF, ENG-MT-TSE-MC-A-120 FF, PRE-CON-MDC-30 |  |
| MS-CF-IR | Completion of Construction Works for Irrigation Network | 2026-12-27 → 2027-01-03 (+7d) | 2026-12-27 → 2027-01-03 (+7d) |  |  |  | CO-IR-TF-160 FF → CO-IR-TF-160 FF, CO-IR-TF-160 |  |
| MS-CF-SD | Completion of Construction Works for Storm Drainage Network | 2026-10-24 → 2027-01-03 (+71d) | 2026-10-24 → 2027-01-03 (+71d) |  |  | 25d → 2d | CO-SD-MH-TF-210 FF → CO-SD-ML-TF-100 FF, CO-SD-MH-TF-120 FF, CO-SD-CB-TF-160 FF, CO-SD-CB-TF-130 FF, CO-SD-CB-TF-110 FF, CO-SD-PO-110-P2 FF, CO-SD-PO-110-P1 FF, CO-SD-ML-TF-100 |  |
| MS-CF-MV | Completion of Construction Works for Medium Voltage Network | 2026-12-15 → 2027-01-11 (+27d) | 2026-12-15 → 2027-01-11 (+27d) |  |  | 10d → 7d | CO-MV-TF-220 FF → CO-MV-TF-220 FF, CO-MV-TF-220 |  |
| MS-CF-SW | Completion of Construction Works for Sewage Network | 2026-10-24 → 2027-01-13 (+81d) | 2026-10-24 → 2027-01-13 (+81d) |  |  | 40d → 2d | CO-SW-TF-110 FF, CO-SW-TF-210 FF → CO-SW-TF-110 FF, CO-SW-TF-210 FF, CO-SW-TF-110 |  |
| MS-CF-TSE | Completion of Construction Works for Treated Sewage Effluent Network | 2026-12-27 → 2027-01-17 (+21d) | 2026-12-27 → 2027-01-17 (+21d) |  |  | 33d → 21.5d | CO-TSE-TF-170 FF → CO-TSE-TF-170 FF, CO-TSE-TF-170 |  |
| MS-CF-TE | Completion of Construction Works for Telecom Network | 2026-12-23 → 2027-01-20 (+28d) | 2026-12-23 → 2027-01-20 (+28d) |  |  | 19d → -1d | CO-TE-CTV-TF-140 FF → CO-TE-CTV-TF-140 FF, CO-TE-CTV-TF-140 |  |
| MS-CF-SL | Completion of Construction Works for Street Lighting Network | 2026-12-23 → 2027-01-27 (+35d) | 2026-12-23 → 2027-01-27 (+35d) |  |  | 19d → 6d | CO-SL-TF-230 FF, CO-SL-TF-220 FF → CO-SL-TF-230 FF, CO-SL-TF-220 FF, CO-SL-TF-230 |  |
| MS-CF-PW | Completion of Construction Works for Potable Water Network | 2026-12-27 → 2027-01-28 (+32d) | 2026-12-27 → 2027-01-28 (+32d) |  |  | 33d → 11.5d | CO-PW-TF-120 FF, CO-UB-IRT-250 FF, CO-PW-TF-100 FF → CO-PW-TF-120 FF, CO-UB-IRT-250 FF, CO-PW-TF-100 FF, CO-PW-TF-120 |  |
| MS-CF-RD | Completion of Construction Works for Road Works | 2026-12-23 → 2027-02-16 (+55d) | 2026-12-23 → 2027-02-16 (+55d) |  |  | 49.75d → 4.5d | CO-RD-F-TS-120 FF, CO-RD-F-TS-110 FF, CO-RD-F-TS-100 FF → CO-RD-F-TS-120 FF, CO-RD-F-TS-110 FF, CO-RD-F-TS-100 FF, CO-RD-F-TS-120 |  |
| MS-CF-PF | Project Completion Date | 2027-02-22 → 2027-02-24 (+2d) | 2027-02-22 → 2027-02-24 (+2d) |  |  | 0d → -1.5d | A1100 FF, CO-SD-PO-110-P2 FF, MS-CF-PW FF, MS-CF-IR FF, MS-CF-SW FF, MS-CF-SD FF, MS-CF-TSE FF, MS-CF-MV FF, MS-CF-SL FF, MS-CF-TE FF, MS-CF-RD FF, MS-CF-EBL FF, MS-CF-ENG FF, CO-SU-FE-EP2-EL-870 FF, CO-SU-FE-EP2-AR-450 FF, T/C-CTV FF, HO-130 FF, Submission As-Built Drawing For Storm Network FF, HO-100 FF, HO-180 FF, HO-190 FF, HO-150 FF, HO-160 FF, HO-170 FF, HO-210 FF, HO-140 FF, Remove material stock & Storage area FF, Removing Portable Caravan FF, HO-230 FF, Final Testing Work FF, HO-250 FF, Review FIR Approval to ensure compliance with the actual status FF, Review the sample drawing to ensure compliance with the actual status FF, Final Walkthrough and Inspection FF, Punch List Completion FF, CO-LS-PL-180 FF → A1100 FF, CO-SD-PO-110-P2 FF, MS-CF-PW FF, MS-CF-IR FF, MS-CF-SW FF, MS-CF-SD FF, MS-CF-TSE FF, MS-CF-MV FF, MS-CF-SL FF, MS-CF-TE FF, MS-CF-RD FF, MS-CF-EBL FF, MS-CF-ENG FF, CO-SU-FE-EP2-EL-870 FF, CO-SU-FE-EP2-AR-450 FF, T/C-CTV FF, HO-130 FF, HO-100 FF, HO-180 FF, HO-190 FF, HO-150 FF, HO-160 FF, HO-170 FF, HO-210 FF, HO-140 FF, HO-230 FF, HO-250 FF, CO-LS-PL-180 FF, T/C-IR FF, T/C-RD FF, T/C-SD FF, T/C-DPO FF, CO-SD-ML-130 FF, CO-SD-MH-220 FF, CO-SD-CB-170 FF, CO-SD-ML-160 FF, CO-SD-MH-260 FF, CO-SD-CB-200 FF, CO-SD-CB-TF-110 FF, CO-SD-CB-TF-130 FF, CO-SD-CB-TF-160 FF, CO-SD-MH-TF-120 FF, CO-SD-MH-TF-210 FF, CO-SD-ML-TF-100 FF, T/C-TSE-10 FF, T/C-TE FF, T/C-MV FF, T/C-SL FF, T/C-SW FF, T/C-PW FF, A1100 |  |
| MOB | **Preliminaries and Mobilization Works** |  | 2026-02-21 → 2026-01-26 (-26d) |  |  |  |  |  |
| MOB | **Mobilization Works** |  | 2026-02-21 → 2026-01-26 (-26d) |  |  |  |  |  |
| MOB-20 | Project Site Layout Plan Approval | 2025-12-23 A | 2025-12-29 A | 6d → 6.25d | 0% → 100% | 1d → none |  |  |
| MOB-30 | Supply & Install of Project Supervision Offices | 2025-12-23 A | 2025-12-23 → 2026-01-26 A (+34d) | 0d → 29d | 0% → 100% | 0d → none |  | resources Unskilled Labor [864 h]; Excavator [216 h]; Mobile Crane [216 h]; Grader [216 h]; Skilled Labor [216 h] → Unskilled Labor; Excavator; Mobile Crane; Grader; Skilled Labor |
| MOB-80 | Construction Site Access Roads | 2025-12-23 A | 2026-02-21 → 2026-01-26 A (-26d) | 51d → 29d | 0% → 100% | 1d → none |  | resources Skilled Labor [408 h]; Unskilled Labor [408 h]; Loader [408 h]; Dump Truck [408 h]; Grader [408 h] → Unskilled Labor; Loader [408 h]; Dump Truck [408 h]; Grader [408 h]; Skilled Labor |
| MOB-90 | Site Surveying Work | 2025-12-23 A | 2025-12-28 → 2026-01-26 A (+29d) | 5d → 30d | 0% → 100% | 25d → none |  | resources Skilled Labor [40 h]; Unskilled Labor [40 h] → Unskilled Labor; Skilled Labor |
| MOB-10 | Clear and Grub for Offices and Access Roads | 2026-01-12 → 2025-12-31 A (-12d) | 2026-02-10 → 2026-01-26 A (-15d) | 26d → 23d | 0% → 100% | 9d → none |  |  |
| MOB-40 | Construction Project Store | 2025-12-31 A | 2026-01-22 → 2026-01-26 A (+4d) | 20d → 23d | 0% → 100% | 0d → none |  | resources Skilled Labor [160 h]; Unskilled Labor [640 h]; Loader [160 h]; Grader [160 h] → Unskilled Labor; Loader [160 h]; Grader [160 h]; Skilled Labor |
| MOB-50 | Mobilization of Major Manpower | 2026-01-12 → 2025-12-31 A (-12d) | 2026-02-03 → 2026-01-26 A (-8d) | 20d → 23.25d | 0% → 100% | 0d → none |  |  |
| MOB-60 | Mobilization of Major Equipments | 2026-01-12 → 2025-12-31 A (-12d) | 2026-02-03 → 2026-01-26 A (-8d) | 20d → 23.25d | 0% → 100% | 0d → none |  |  |
| MOB-70 | Installation Project Sign Board | 2026-01-24 → 2026-01-12 A (-12d) | 2026-02-03 → 2026-01-26 A (-8d) | 10d → 12.75d | 0% → 100% | 15d → none |  | resources Skilled Labor [80 h]; Unskilled Labor [160 h]; Excavator [80 h] → Unskilled Labor; Excavator [80 h]; Skilled Labor |
| 1 | **Project Main Documents From The Contractor** |  | 2026-01-22 → 2026-01-18 (-4d) |  |  |  |  |  |
| PRE-CON-MDC-10 | Submission Project Execution Plan | 2025-12-23 A | 2026-01-22 → 2026-01-18 A (-4d) | 27d → 23.25d | 0% → 100% | 25d → none |  |  |
| PRE-CON-MDC-20 | Submission Project Baseline Schedule | 2025-12-23 A | 2026-01-22 → 2026-01-18 A (-4d) | 27d → 23.25d | 0% → 100% | 25d → none |  |  |
| PRE-CON-MDC-30 | Submission Project Health & Safety Plan | 2025-12-23 A | 2026-01-22 → 2026-01-18 A (-4d) | 27d → 23.25d | 0% → 100% | 25d → none |  |  |
| PRE-CON-MDC-40 | Submission Project Quality Control Plan | 2025-12-23 A | 2026-01-22 → 2026-01-18 A (-4d) | 27d → 23.25d | 0% → 100% | 25d → none |  |  |
| PRE-CON-MDC-50 | Submission Project Surveying Report | 2025-12-23 A | 2026-01-22 → 2026-01-18 A (-4d) | 27d → 23.25d | 0% → 100% | 25d → none | MS-CS-PS SS, MOB-90 SS → MS-CS-PS SS, MOB-90 SS, MOB-90 FF |  |
| PRE-CON-MDC-60 | Submission Project Geotechnical Soil Report | 2025-12-23 A | 2026-01-22 → 2026-01-18 A (-4d) | 27d → 23.25d | 0% → 100% | 25d → none |  |  |
| PRE-CON-MDC-70 | Submission Project Environmental Plan | 2025-12-23 A | 2026-01-22 → 2026-01-18 A (-4d) | 27d → 23.25d | 0% → 100% | 25d → none |  |  |
| PRE-CON-MDC-80 | Submission Project Organization Chart and Communications Plan | 2025-12-23 A | 2026-01-22 → 2026-01-18 A (-4d) | 27d → 23.25d | 0% → 100% | 25d → none |  |  |
| ENG | **Engineering Works** | 2025-12-23 → 2026-01-06 (+14d) | 2026-01-22 → 2026-07-14 (+173d) |  |  |  |  |  |
| SD | **Shop Drawings** | 2025-12-31 → 2026-01-17 (+17d) | 2026-01-22 → 2026-07-14 (+173d) |  |  |  |  |  |
| INF | **Infrastructure Networks** | 2025-12-31 → 2026-01-17 (+17d) | 2026-01-22 → 2026-07-14 (+173d) |  |  |  |  |  |
| RD | **Road Works** | 2025-12-31 → 2026-01-17 (+17d) | 2026-01-22 → 2026-07-13 (+172d) |  |  |  |  |  |
| 1 | **Road Pavement Works** | 2025-12-31 → 2026-01-17 (+17d) | 2026-01-19 → 2026-07-04 (+166d) |  |  |  |  |  |
| 1 | **Submittal** | 2025-12-31 → 2026-01-17 (+17d) | 2026-01-07 → 2026-01-19 (+12d) |  |  |  |  |  |
| ENG-SH-RD-S-100 | Submission Shop Drawings for Plan and Profile of Road Works | 2025-12-31 → 2026-01-17 A (+17d) | 2026-01-07 → 2026-01-19 A (+12d) | 7d → 3.25d | 0% → 100% | 0d → none |  |  |
| ENG-SH-RD-S-110 | Submission Shop Drawings for Roads Typical Sections and Pavement Details | 2025-12-31 → 2026-01-17 A (+17d) | 2026-01-07 → 2026-01-19 A (+12d) | 7d → 3.25d | 0% → 100% | 0d → none |  |  |
| 2 | **Approval** | 2026-01-08 → 2026-01-19 (+11d) | 2026-01-19 → 2026-07-04 (+166d) |  |  |  |  |  |
| ENG-SH-RD-A-100 | Approval Shop Drawings for Plan and Profile of Road Works | 2026-01-08 → 2026-01-19 A (+11d) | 2026-01-19 → 2026-02-02 A (+14d) | 10d → 13.25d | 0% → 100% | 25d → none |  |  |
| ENG-SH-RD-A-110 | Approval Shop Drawings for Roads Typical Sections and Pavement Details | 2026-01-08 → 2026-06-23 (+166d) | 2026-01-19 → 2026-07-04 (+166d) |  |  | 28d → 7.5d |  | resources none → Unskilled Labor [50.6 h]; Electrical Technician [19.52 h]; Plumber [4.57 h]; Carpenter [5.56 h]; Mason [4.42 h]; Steel Fixer [5.65 h]; Skilled Labor [15.25 h] |
| 10 | **Pavement Works** | 2025-12-31 → 2026-06-23 (+174d) | 2026-01-18 → 2026-07-01 (+164d) |  |  |  |  |  |
| 1 | **Submittal** | 2025-12-31 → 2026-06-23 (+174d) | 2026-01-06 → 2026-06-27 (+172d) |  |  |  |  |  |
| ENG-SH-HS-S-100 | Submission Shop Drawings for Hardscaping (Curbstone& Interlock) Works | 2025-12-31 → 2026-06-23 (+174d) | 2026-01-06 → 2026-06-27 (+172d) | 6d → 3.5d |  | 25d → 0d |  | resources none → Unskilled Labor [17.71 h]; Electrical Technician [6.83 h]; Plumber [1.6 h]; Carpenter [1.95 h]; Mason [1.55 h]; Steel Fixer [1.98 h]; Skilled Labor [5.34 h] |
| 2 | **Approval** | 2026-01-07 → 2026-06-27 (+171d) | 2026-01-18 → 2026-07-01 (+164d) |  |  |  |  |  |
| ENG-SH-HS-A-110 | Approval Shop Drawings for Hardscaping (Curbstone& Interlock) Works | 2026-01-07 → 2026-06-27 (+171d) | 2026-01-18 → 2026-07-01 (+164d) | 10d → 4d |  | 25d → 0d |  | resources none → Unskilled Labor [20.24 h]; Electrical Technician [7.81 h]; Plumber [1.83 h]; Carpenter [2.22 h]; Mason [1.77 h]; Steel Fixer [2.26 h]; Skilled Labor [6.1 h] |
| 11 | **Traffic Sign Boards and Road Marking** | 2026-01-07 → 2026-06-27 (+171d) | 2026-01-22 → 2026-07-13 (+172d) |  |  |  |  |  |
| 1 | **Submittal** | 2026-01-07 → 2026-06-27 (+171d) | 2026-01-21 → 2026-07-12 (+172d) |  |  |  |  |  |
| ENG-SH-TSB-S-100 | Submission Shop Drawings for Traffic Signs Boards | 2026-01-07 → 2026-06-27 (+171d) | 2026-01-13 → 2026-07-04 (+172d) |  |  | 25d → 7d |  | resources none → Unskilled Labor [30.36 h]; Electrical Technician [11.71 h]; Plumber [2.74 h]; Carpenter [3.34 h]; Mason [2.65 h]; Steel Fixer [3.39 h]; Skilled Labor [9.15 h] |
| ENG-SH-MRK-S-110 | Submission Shop Drawings for Pavement Markings | 2026-01-15 → 2026-07-05 (+171d) | 2026-01-21 → 2026-07-12 (+172d) |  |  | 25d → 0d |  | resources none → Unskilled Labor [30.36 h]; Electrical Technician [11.71 h]; Plumber [2.74 h]; Carpenter [3.34 h]; Mason [2.65 h]; Steel Fixer [3.39 h]; Skilled Labor [9.15 h] |
| 2 | **Approval** | 2026-01-07 → 2026-06-27 (+171d) | 2026-01-22 → 2026-07-13 (+172d) |  |  |  |  |  |
| ENG-SH-TSB-A-100 | Approval Shop Drawings for Traffic Signs Boards | 2026-01-07 → 2026-06-27 (+171d) | 2026-01-14 → 2026-07-05 (+172d) |  |  | 25d → 7d | ENG-SH-TSB-S-100 SS → ENG-SH-TSB-S-100 SS, ENG-SH-TSB-S-100 FF | resources none → Unskilled Labor [35.42 h]; Electrical Technician [13.66 h]; Plumber [3.2 h]; Carpenter [3.89 h]; Mason [3.1 h]; Steel Fixer [3.96 h]; Skilled Labor [10.68 h] |
| ENG-SH-MRK-A-110 | Approval Shop Drawings for Pavement Markings | 2026-01-15 → 2026-07-05 (+171d) | 2026-01-22 → 2026-07-13 (+172d) |  |  | 25d → 0d | ENG-SH-MRK-S-110 SS → ENG-SH-MRK-S-110 SS, ENG-SH-MRK-S-110 FF | resources none → Unskilled Labor [35.42 h]; Electrical Technician [13.66 h]; Plumber [3.2 h]; Carpenter [3.89 h]; Mason [3.1 h]; Steel Fixer [3.96 h]; Skilled Labor [10.68 h] |
| SW | **Sewage Network** | 2026-01-08 → 2026-01-17 (+9d) | 2026-01-21 → 2026-06-30 (+160d) |  |  |  |  |  |
| 1 | **Main Line Sections** | 2026-01-08 → 2026-01-17 (+9d) | 2026-01-21 → 2026-06-30 (+160d) |  |  |  |  |  |
| 1 | **Submittal** | 2026-01-08 → 2026-01-17 (+9d) | 2026-01-13 → 2026-01-18 (+5d) |  |  |  |  |  |
| ENG-SH-SW-ML-S-100 | Submission Shop Drawings for Main Line and Manholes of Sewage Network | 2026-01-08 → 2026-01-17 A (+9d) | 2026-01-13 → 2026-01-18 A (+5d) | 5d → 2.25d | 0% → 100% | 0d → none | MS-CS-PS SS, ENG-SH-RD-S-100, ENG-SH-RD-S-110 → MS-CS-PS SS, ENG-SH-RD-S-100, ENG-SH-RD-S-110 SS |  |
| 2 | **Approval** | 2026-01-14 → 2026-06-23 (+160d) | 2026-01-21 → 2026-06-30 (+160d) |  |  |  |  |  |
| ENG-SH-SW-ML-A-110 | Approval Shop Drawings for Main Line and Manholes of Sewage Network | 2026-01-14 → 2026-06-23 (+160d) | 2026-01-21 → 2026-06-30 (+160d) |  |  | 25d → 5.5d |  | resources none → Unskilled Labor [35.42 h]; Electrical Technician [13.66 h]; Plumber [3.2 h]; Carpenter [3.89 h]; Mason [3.1 h]; Steel Fixer [3.96 h]; Skilled Labor [10.68 h] |
| ST | **Storm Drainage Network** | 2026-01-08 → 2026-01-17 (+9d) | 2026-01-22 → 2026-07-06 (+165d) |  |  |  |  |  |
| 1 | **Main Line Sections** | 2026-01-08 → 2026-01-17 (+9d) | 2026-01-22 → 2026-05-31 (+129d) |  |  |  |  |  |
| 1 | **Submittal** | 2026-01-08 → 2026-01-17 (+9d) | 2026-01-14 → 2026-01-18 (+4d) |  |  |  |  |  |
| ENG-SH-SD-ML-S-100 | Submission Shop Drawings for Main Line and Manholes of Storm Drainage Network | 2026-01-08 → 2026-01-17 A (+9d) | 2026-01-14 → 2026-01-18 A (+4d) | 6d → 2.25d | 0% → 100% | 0d → none |  |  |
| 2 | **Approval** | 2026-01-15 → 2026-05-16 (+121d) | 2026-01-22 → 2026-05-31 (+129d) |  |  |  |  |  |

| ID | Task | Start | Finish | Duration | Complete | Total float | Predecessors | Other |
| --- | --- | --- | --- | --- | --- | --- | --- | --- |
| ENG-SH-SD-ML-A-110 | Approval Shop Drawings for Main Line and Manholes of Storm Drainage Network | 2026-01-15 → 2026-05-16 A (+121d) | 2026-01-22 → 2026-05-31 A (+129d) |  | 0% → 100% | 25d → none |  |  |
| 2 | **Catch Basin Sections** | 2026-01-08 → 2026-01-17 (+9d) | 2026-01-22 → 2026-07-06 (+165d) |  |  |  |  |  |
| 1 | **Submittal** | 2026-01-08 → 2026-01-17 (+9d) | 2026-01-14 → 2026-06-28 (+165d) |  |  |  |  |  |
| ENG-SH-SD-CB-S-100 | Submission Shop Drawings for Secondary Line and Catch Basin of Storm Drainage Network(Completed) | 2026-01-08 → 2026-01-17 A (+9d) | 2026-01-14 → 2026-06-15 A (+152d) | 6d → 115.25d | 0% → 100% | 25d → none |  | was named Submission Shop Drawings for Secondary Line and Catch Basin of Storm Drainage Network |
| 2 | **Approval** | 2026-01-15 → 2026-06-28 (+164d) | 2026-01-22 → 2026-07-06 (+165d) |  |  |  |  |  |
| ENG-SH-SD-CB-A-110 | Approval Shop Drawings for Secondary Line and Catch Basin of Storm Drainage Network | 2026-01-15 → 2026-06-28 (+164d) | 2026-01-22 → 2026-07-06 (+165d) |  |  | 25d → 6d | ENG-SH-SD-CB-S-100 → ENG-SH-SD-CB-S-100_R | resources none → Unskilled Labor [35.42 h]; Electrical Technician [13.66 h]; Plumber [3.2 h]; Carpenter [3.89 h]; Mason [3.1 h]; Steel Fixer [3.96 h]; Skilled Labor [10.68 h] |
| PW | **Potable Water Network** | 2026-01-08 → 2026-01-18 (+10d) | 2026-01-21 → 2026-07-06 (+166d) |  |  |  |  |  |
| 1 | **Main Line Sections** | 2026-01-08 → 2026-01-18 (+10d) | 2026-01-21 → 2026-06-30 (+160d) |  |  |  |  |  |
| 1 | **Submittal** | 2026-01-08 → 2026-01-18 (+10d) | 2026-01-13 → 2026-01-21 (+8d) |  |  |  |  |  |
| ENG-SH-PW-ML-S-100 | Submission Shop Drawings for Main Line and Valve Chambers of Potable Water Network | 2026-01-08 → 2026-01-18 A (+10d) | 2026-01-13 → 2026-01-21 A (+8d) | 5d → 4.25d | 0% → 100% | 22d → none |  |  |
| 2 | **Approval** | 2026-01-14 → 2026-06-23 (+160d) | 2026-01-21 → 2026-06-30 (+160d) |  |  |  |  |  |
| ENG-SH-PW-ML-A-110 | Approval Shop Drawings for Main Line and Valve Chambers of Potable Water Network | 2026-01-14 → 2026-06-23 (+160d) | 2026-01-21 → 2026-06-30 (+160d) |  |  | 25d → 8.5d |  | resources none → Unskilled Labor [35.42 h]; Electrical Technician [13.66 h]; Plumber [3.2 h]; Carpenter [3.89 h]; Mason [3.1 h]; Steel Fixer [3.96 h]; Skilled Labor [10.68 h] |
| 2 | **Fire Hydrant** | 2026-01-08 → 2026-06-23 (+166d) | 2026-01-21 → 2026-07-06 (+166d) |  |  |  |  |  |
| 1 | **Submittal** | 2026-01-08 → 2026-06-23 (+166d) | 2026-01-13 → 2026-06-28 (+166d) |  |  |  |  |  |
| ENG-SH-PW-FH-S-100 | Submission Shop Drawings for Fire Hydrant Network | 2026-01-08 → 2026-06-23 (+166d) | 2026-01-13 → 2026-06-28 (+166d) |  |  | 26d → 5.5d |  | resources none → Unskilled Labor [25.3 h]; Electrical Technician [9.76 h]; Plumber [2.29 h]; Carpenter [2.78 h]; Mason [2.21 h]; Steel Fixer [2.83 h]; Skilled Labor [7.63 h] |
| 2 | **Approval** | 2026-01-14 → 2026-06-29 (+166d) | 2026-01-21 → 2026-07-06 (+166d) |  |  |  |  |  |
| ENG-SH-PW-FH-A-110 | Approval Shop Drawings for Fire Hydrant Network | 2026-01-14 → 2026-06-29 (+166d) | 2026-01-21 → 2026-07-06 (+166d) |  |  | 26d → 5.5d |  | resources none → Unskilled Labor [35.42 h]; Electrical Technician [13.66 h]; Plumber [3.2 h]; Carpenter [3.89 h]; Mason [3.1 h]; Steel Fixer [3.96 h]; Skilled Labor [10.68 h] |
| IR | **Irrigation Network** | 2026-01-08 → 2026-06-23 (+166d) | 2026-01-22 → 2026-07-07 (+166d) |  |  |  |  |  |
| 1 | **Main Line Sections** | 2026-01-08 → 2026-06-23 (+166d) | 2026-01-22 → 2026-07-07 (+166d) |  |  |  |  |  |
| 1 | **Submittal** | 2026-01-08 → 2026-06-23 (+166d) | 2026-01-14 → 2026-06-29 (+166d) |  |  |  |  |  |
| ENG-SH-IR-ML-S-100 | Submission Shop Drawings for Main Line and Valves & Bulbblers and Sprinklers of Irrigation Network | 2026-01-08 → 2026-06-23 (+166d) | 2026-01-14 → 2026-06-29 (+166d) |  |  | 25d → -1.5d |  | resources none → Unskilled Labor [30.36 h]; Electrical Technician [11.71 h]; Plumber [2.74 h]; Carpenter [3.34 h]; Mason [2.65 h]; Steel Fixer [3.39 h]; Skilled Labor [9.15 h] |
| 2 | **Approval** | 2026-01-15 → 2026-06-30 (+166d) | 2026-01-22 → 2026-07-07 (+166d) |  |  |  |  |  |
| ENG-SH-IR-ML-A-110 | Approval Shop Drawings for Main Line and Valves & Bulbblers and Sprinklers of Irrigation Network | 2026-01-15 → 2026-06-30 (+166d) | 2026-01-22 → 2026-07-07 (+166d) |  |  | 25d → 4.5d |  | resources none → Unskilled Labor [35.42 h]; Electrical Technician [13.66 h]; Plumber [3.2 h]; Carpenter [3.89 h]; Mason [3.1 h]; Steel Fixer [3.96 h]; Skilled Labor [10.68 h] |
| TSE | **Treated Sewage Effluent Network** | 2026-01-08 → 2026-06-23 (+166d) | 2026-01-22 → 2026-07-07 (+166d) |  |  |  |  |  |
| 1 | **Main Line Sections** | 2026-01-08 → 2026-06-23 (+166d) | 2026-01-22 → 2026-07-07 (+166d) |  |  |  |  |  |
| 1 | **Submittal** | 2026-01-08 → 2026-06-23 (+166d) | 2026-01-14 → 2026-06-29 (+166d) |  |  |  |  |  |
| ENG-SH-TSE-ML-S-110 | Submission Shop Drawings for Main Line Treated Sewage Effluent Network | 2026-01-08 → 2026-06-23 (+166d) | 2026-01-14 → 2026-06-29 (+166d) |  |  | 25d → 4.5d |  | resources none → Unskilled Labor [30.36 h]; Electrical Technician [11.71 h]; Plumber [2.74 h]; Carpenter [3.34 h]; Mason [2.65 h]; Steel Fixer [3.39 h]; Skilled Labor [9.15 h] |
| 2 | **Approval** | 2026-01-15 → 2026-06-30 (+166d) | 2026-01-22 → 2026-07-07 (+166d) |  |  |  |  |  |
| ENG-SH-TSE-ML-A-120 | Approval Shop Drawings for Main Line Treated Sewage Effluent Network | 2026-01-15 → 2026-06-30 (+166d) | 2026-01-22 → 2026-07-07 (+166d) |  |  | 25d → 4.5d |  | resources none → Unskilled Labor [35.42 h]; Electrical Technician [13.66 h]; Plumber [3.2 h]; Carpenter [3.89 h]; Mason [3.1 h]; Steel Fixer [3.96 h]; Skilled Labor [10.68 h] |
| MV | **Medium Voltage Network** | 2026-01-08 → 2026-01-17 (+9d) | 2026-01-22 → 2026-07-07 (+166d) |  |  |  |  |  |
| 1 | **Submittal** | 2026-01-08 → 2026-01-17 (+9d) | 2026-01-14 → 2026-01-22 (+8d) |  |  |  |  |  |
| ENG-SH-MV-S-100 | Submission Shop Drawings for Medium Voltage Network | 2026-01-08 → 2026-01-17 A (+9d) | 2026-01-14 → 2026-01-22 A (+8d) | 6d → 6.25d | 0% → 100% | 25d → none | MS-CS-PS SS, ENG-SH-IR-ML-S-100 SS → MS-CS-PS SS, MS-CS-PS |  |
| 2 | **Approval** | 2026-01-15 → 2026-06-30 (+166d) | 2026-01-22 → 2026-07-07 (+166d) |  |  |  |  |  |
| ENG-SH-MV-A-110 | Approval Shop Drawings for Medium Voltage Network | 2026-01-15 → 2026-06-30 (+166d) | 2026-01-22 → 2026-07-07 (+166d) |  |  | 25d → 4.5d | ENG-SH-MV-S-100 → ENG-SH-MV-S-100, ENG-SH-IR-ML-S-100 | resources none → Unskilled Labor [35.42 h]; Electrical Technician [13.66 h]; Plumber [3.2 h]; Carpenter [3.89 h]; Mason [3.1 h]; Steel Fixer [3.96 h]; Skilled Labor [10.68 h] |
| LV | **Low Voltage Network** | 2026-01-08 → 2026-06-23 (+166d) | 2026-01-22 → 2026-07-07 (+166d) |  |  |  |  |  |
| 1 | **Submittal** | 2026-01-08 → 2026-06-23 (+166d) | 2026-01-14 → 2026-06-29 (+166d) |  |  |  |  |  |
| ENG-SH-LV-S-110 | Submission Shop Drawings for Low Voltage Network | 2026-01-08 → 2026-06-23 (+166d) | 2026-01-14 → 2026-06-29 (+166d) |  |  | 25d → -1.5d |  | resources none → Unskilled Labor [30.36 h]; Electrical Technician [11.71 h]; Plumber [2.74 h]; Carpenter [3.34 h]; Mason [2.65 h]; Steel Fixer [3.39 h]; Skilled Labor [9.15 h] |
| 2 | **Approval** | 2026-01-15 → 2026-06-30 (+166d) | 2026-01-22 → 2026-07-07 (+166d) |  |  |  |  |  |
| ENG-SH-LV-A-120 | Approval Shop Drawings for Low Voltage Network | 2026-01-15 → 2026-06-30 (+166d) | 2026-01-22 → 2026-07-07 (+166d) |  |  | 25d → 4.5d |  | resources none → Unskilled Labor [35.42 h]; Electrical Technician [13.66 h]; Plumber [3.2 h]; Carpenter [3.89 h]; Mason [3.1 h]; Steel Fixer [3.96 h]; Skilled Labor [10.68 h] |
| SL | **Street Lighting Network** | 2026-01-13 → 2026-01-17 (+4d) | 2026-01-22 → 2026-07-02 (+161d) |  |  |  |  |  |
| 1 | **Submittal** | 2026-01-13 → 2026-01-17 (+4d) | 2026-01-19 → 2026-06-29 (+161d) |  |  |  |  |  |
| ENG-SH-SL-S-100 | Submission Shop Drawings for Street Lighting Network(Completed) | 2026-01-13 → 2026-01-17 A (+4d) | 2026-01-19 → 2026-06-15 A (+147d) | 6d → 115.25d | 0% → 100% | 25d → none |  | was named Submission Shop Drawings for Street Lighting Network |
| 2 | **Approval** | 2026-01-15 → 2026-06-25 (+161d) | 2026-01-22 → 2026-07-02 (+161d) |  |  |  |  |  |
| ENG-SH-SL-A-110 | Approval Shop Drawings for Street Lighting Network | 2026-01-15 → 2026-06-25 (+161d) | 2026-01-22 → 2026-07-02 (+161d) |  |  | 25d → 8.5d | ENG-SH-SL-S-100 SS+2d → ENG-SH-SL-S-100_R SS+2d, ENG-SH-SL-S-100_R FF | resources none → Unskilled Labor [35.42 h]; Electrical Technician [13.66 h]; Plumber [3.2 h]; Carpenter [3.89 h]; Mason [3.1 h]; Steel Fixer [3.96 h]; Skilled Labor [10.68 h] |
| TL | **Telecom Network** | 2026-01-14 → 2026-06-30 (+167d) | 2026-01-22 → 2026-07-14 (+173d) |  |  |  |  |  |
| 1 | **Submittal** | 2026-01-15 → 2026-06-30 (+166d) | 2026-01-21 → 2026-07-06 (+166d) |  |  |  |  |  |
| ENG-SH-CTV-S-100 | Submission Shop Drawings for CCTV Complete System | 2026-01-15 → 2026-06-30 (+166d) | 2026-01-21 → 2026-07-06 (+166d) |  |  | 25d → -1.5d | MS-CS-PS SS, ENG-SH-TE-S-100 SS → MS-CS-PS SS, ENG-SH-TE-S-100 SS, ENG-SH-TE-S-100 FF | resources none → Unskilled Labor [30.36 h]; Electrical Technician [11.71 h]; Plumber [2.74 h]; Carpenter [3.34 h]; Mason [2.65 h]; Steel Fixer [3.39 h]; Skilled Labor [9.15 h] |
| ENG-SH-MSN-S-110 | Submission Shop Drawings for MSN System | 2026-01-15 → 2026-06-30 (+166d) | 2026-01-21 → 2026-07-06 (+166d) |  |  | 26d → -1.5d |  | resources none → Unskilled Labor [30.36 h]; Electrical Technician [11.71 h]; Plumber [2.74 h]; Carpenter [3.34 h]; Mason [2.65 h]; Steel Fixer [3.39 h]; Skilled Labor [9.15 h] |
| ENG-SH-TE-S-100 | Submission Shop Drawings for Telecom Network | 2026-01-15 → 2026-06-30 (+166d) | 2026-01-21 → 2026-07-06 (+166d) |  |  | 25d → -1.5d |  | resources none → Unskilled Labor [30.36 h]; Electrical Technician [11.71 h]; Plumber [2.74 h]; Carpenter [3.34 h]; Mason [2.65 h]; Steel Fixer [3.39 h]; Skilled Labor [9.15 h] |
| 2 | **Approval** | 2026-01-14 → 2026-06-30 (+167d) | 2026-01-22 → 2026-07-14 (+173d) |  |  |  |  |  |
| ENG-SH-CTV-A-110 | Approval Shop Drawings for CCTV Complete System | 2026-01-15 → 2026-06-30 (+166d) | 2026-01-22 → 2026-07-07 (+166d) |  |  | 25d → 4.5d |  | resources none → Unskilled Labor [35.42 h]; Electrical Technician [13.66 h]; Plumber [3.2 h]; Carpenter [3.89 h]; Mason [3.1 h]; Steel Fixer [3.96 h]; Skilled Labor [10.68 h] |
| ENG-SH-TE-A-110 | Approval Shop Drawings for Telecom Network | 2026-01-15 → 2026-06-30 (+166d) | 2026-01-22 → 2026-07-07 (+166d) |  |  | 25d → 4.5d | ENG-SH-TE-S-100 SS → ENG-SH-TE-S-100 SS, ENG-SH-TE-S-100 FF | resources none → Unskilled Labor [35.42 h]; Electrical Technician [13.66 h]; Plumber [3.2 h]; Carpenter [3.89 h]; Mason [3.1 h]; Steel Fixer [3.96 h]; Skilled Labor [10.68 h] |
| ENG-SH-MSN-A-120 | Approval Shop Drawings for MSN System | 2026-01-14 → 2026-07-07 (+174d) | 2026-01-21 → 2026-07-14 (+174d) |  |  | 26d → -1.5d | ENG-SH-MSN-S-110 FF → ENG-SH-MSN-S-110 FF, ENG-SH-MSN-S-110 | resources none → Unskilled Labor [35.42 h]; Electrical Technician [13.66 h]; Plumber [3.2 h]; Carpenter [3.89 h]; Mason [3.1 h]; Steel Fixer [3.96 h]; Skilled Labor [10.68 h] |
| 1 | **Superstructure Works** | 2026-01-08 → 2026-01-17 (+9d) | 2026-01-22 → 2026-07-07 (+166d) |  |  |  |  |  |
| PS | **Pump Stations** | 2026-01-14 → 2026-01-17 (+3d) | 2026-01-22 → 2026-07-02 (+161d) |  |  |  |  |  |
| 1 | **Submittal** | 2026-01-14 → 2026-01-17 (+3d) | 2026-01-20 → 2026-06-30 (+161d) |  |  |  |  |  |
| ENG-SH-SPS-S-150 | Submission Shop Drawings Package for Sewage Pump Stations(Completed) | 2026-01-14 → 2026-01-17 A (+3d) | 2026-01-20 → 2026-06-15 A (+146d) | 6d → 115.25d | 0% → 100% | 25d → none | MS-CS-PS SS, ENG-SH-PW-ML-A-110 SS → MS-CS-PS SS | was named Submission Shop Drawings Package for Sewage Pump Stations |
| 2 | **Approval** | 2026-01-17 → 2026-06-27 (+161d) | 2026-01-22 → 2026-07-02 (+161d) |  |  |  |  |  |
| ENG-SH-SPS-A-160 | Approval Shop Drawings Package for Sewage Pump Stations | 2026-01-17 → 2026-06-27 (+161d) | 2026-01-22 → 2026-07-02 (+161d) |  |  | 25d → 8.5d | ENG-SH-SPS-S-150 SS+2d → ENG-SH-SPS-S-150_R SS+2d, ENG-SH-SPS-S-150_R FF | resources none → Unskilled Labor [30.36 h]; Electrical Technician [11.71 h]; Plumber [2.74 h]; Carpenter [3.34 h]; Mason [2.65 h]; Steel Fixer [3.39 h]; Skilled Labor [9.15 h] |
| LS | **Lift Station** | 2026-01-14 → 2026-01-17 (+3d) | 2026-01-22 → 2026-07-02 (+161d) |  |  |  |  |  |
| 1 | **Submittal** | 2026-01-14 → 2026-01-17 (+3d) | 2026-01-20 → 2026-06-30 (+161d) |  |  |  |  |  |
| ENG-SH-LS-S-160 | Submission Shop Drawings Package for Lift Stations(Completed) | 2026-01-14 → 2026-01-17 A (+3d) | 2026-01-20 → 2026-06-15 A (+146d) | 6d → 115.25d | 0% → 100% | 25d → none | MS-CS-PS SS, ENG-SH-SW-ML-A-110 SS → MS-CS-PS SS | was named Submission Shop Drawings Package for Lift Stations |
| 2 | **Approval** | 2026-01-17 → 2026-06-27 (+161d) | 2026-01-22 → 2026-07-02 (+161d) |  |  |  |  |  |
| ENG-SH-LS-A-170 | Approval Shop Drawings Package for Lift Stations | 2026-01-17 → 2026-06-27 (+161d) | 2026-01-22 → 2026-07-02 (+161d) |  |  | 25d → 8.5d | ENG-SH-LS-S-160 SS+2d → ENG-SH-LS-S-160_R SS+2d | resources none → Unskilled Labor [30.36 h]; Electrical Technician [11.71 h]; Plumber [2.74 h]; Carpenter [3.34 h]; Mason [2.65 h]; Steel Fixer [3.39 h]; Skilled Labor [9.15 h] |
| PO | **Storm Drainage Ponds** | 2026-01-15 → 2026-06-28 (+164d) | 2026-01-22 → 2026-07-06 (+165d) |  |  |  |  |  |
| 1 | **Submittal** | 2026-01-15 → 2026-06-28 (+164d) | 2026-01-21 → 2026-07-05 (+165d) |  |  |  |  |  |
| ENG-SH-DPO-S-110 | Submission Shop Drawings Package for Storm Drainage Ponds | 2026-01-15 → 2026-06-28 (+164d) | 2026-01-21 → 2026-07-05 (+165d) |  |  | 25d → 6d |  | resources none → Unskilled Labor [30.36 h]; Electrical Technician [11.71 h]; Plumber [2.74 h]; Carpenter [3.34 h]; Mason [2.65 h]; Steel Fixer [3.39 h]; Skilled Labor [9.15 h] |
| 2 | **Approval** | 2026-01-17 → 2026-06-29 (+163d) | 2026-01-22 → 2026-07-06 (+165d) |  |  |  |  |  |
| ENG-SH-DPO-A-120 | Approval Shop Drawings Package for Storm Drainage Ponds | 2026-01-17 → 2026-06-29 (+163d) | 2026-01-22 → 2026-07-06 (+165d) |  |  | 25d → 6d | ENG-SH-DPO-S-110 SS+1d → ENG-SH-DPO-S-110 SS+1d, ENG-SH-DPO-S-110 FF | resources none → Unskilled Labor [30.36 h]; Electrical Technician [11.71 h]; Plumber [2.74 h]; Carpenter [3.34 h]; Mason [2.65 h]; Steel Fixer [3.39 h]; Skilled Labor [9.15 h] |
| ST | **Storage Tank (TSE)** | 2026-01-15 → 2026-06-30 (+166d) | 2026-01-22 → 2026-07-07 (+166d) |  |  |  |  |  |

| ID | Task | Start | Finish | Duration | Complete | Total float | Predecessors | Other |
| --- | --- | --- | --- | --- | --- | --- | --- | --- |
| 1 | **Submittal** | 2026-01-15 → 2026-06-30 (+166d) | 2026-01-21 → 2026-07-06 (+166d) |  |  |  |  |  |
| ENG-SH-ST-S-170 | Submission Shop Drawings Package for Storage Tank TSE | 2026-01-15 → 2026-06-30 (+166d) | 2026-01-21 → 2026-07-06 (+166d) |  |  | 25d → 4.5d |  | resources none → Unskilled Labor [30.36 h]; Electrical Technician [11.71 h]; Plumber [2.74 h]; Carpenter [3.34 h]; Mason [2.65 h]; Steel Fixer [3.39 h]; Skilled Labor [9.15 h] |
| 2 | **Approval** | 2026-01-17 → 2026-07-01 (+165d) | 2026-01-22 → 2026-07-07 (+166d) |  |  |  |  |  |
| ENG-SH-ST-A-180 | Approval Shop Drawings Package for Storage Tank TSE | 2026-01-17 → 2026-07-01 (+165d) | 2026-01-22 → 2026-07-07 (+166d) |  |  | 25d → 4.5d | ENG-SH-ST-S-170 SS+1d → ENG-SH-ST-S-170 SS+1d, ENG-SH-ST-S-170 FF | resources none → Unskilled Labor [30.36 h]; Electrical Technician [11.71 h]; Plumber [2.74 h]; Carpenter [3.34 h]; Mason [2.65 h]; Steel Fixer [3.39 h]; Skilled Labor [9.15 h] |
| GR | **Gaurd Room** | 2026-01-17 → 2026-06-23 (+157d) | 2026-01-22 → 2026-06-29 (+158d) |  |  |  |  |  |
| ENG-SH-GR-A-190 | Approval Shop Drawings Package for Gaurd Room | 2026-01-17 → 2026-06-23 (+157d) | 2026-01-22 → 2026-06-29 (+158d) |  |  | 25d → 11.5d | ENG-SH-GR-S-180 SS → ENG-SH-GR-S-180 SS, ENG-SH-GR-S-180 FF | resources none → Unskilled Labor [30.36 h]; Electrical Technician [11.71 h]; Plumber [2.74 h]; Carpenter [3.34 h]; Mason [2.65 h]; Steel Fixer [3.39 h]; Skilled Labor [9.15 h] |
| 1 | **Submittal** | 2026-01-17 → 2026-06-23 (+157d) | 2026-01-22 → 2026-06-29 (+158d) |  |  |  |  |  |
| ENG-SH-GR-S-180 | Submission Shop Drawings Package for Gaurd Room | 2026-01-17 → 2026-06-23 (+157d) | 2026-01-22 → 2026-06-29 (+158d) |  |  | 25d → 11.5d |  | resources none → Unskilled Labor [30.36 h]; Electrical Technician [11.71 h]; Plumber [2.74 h]; Carpenter [3.34 h]; Mason [2.65 h]; Steel Fixer [3.39 h]; Skilled Labor [9.15 h] |
| FE | **Fence** | 2026-01-08 → 2026-01-29 (+21d) | 2026-01-22 → 2026-06-28 (+157d) |  |  |  |  |  |
| 1 | **Submittal** | 2026-01-08 → 2026-01-29 (+21d) | 2026-01-14 → 2026-06-27 (+164d) |  |  |  |  |  |
| ENG-SH-GR-S-190 | Submission Shop Drawings Package for Fence(Completed) | 2026-01-08 → 2026-01-29 A (+21d) | 2026-01-14 → 2026-06-15 A (+152d) | 6d → 104.25d | 0% → 100% | 25d → none |  | was named Submission Shop Drawings Package for Fence |
| 2 | **Approval** | 2026-01-15 → 2026-01-29 (+14d) | 2026-01-22 → 2026-06-28 (+157d) |  |  |  |  |  |
| ENG-SH-GR-A-200 | Approval Shop Drawings Package for Fence(Completed) | 2026-01-15 → 2026-01-29 A (+14d) | 2026-01-22 → 2026-06-15 A (+144d) | 7d → 104.25d | 0% → 100% | 25d → none | ENG-SH-GR-S-190 → ENG-SH-GR-S-190 SS | was named Approval Shop Drawings Package for Fence |
| SD11 | **Material Submittals and Approvals** | 2025-12-23 → 2026-01-06 (+14d) | 2026-01-22 → 2026-07-12 (+171d) |  |  |  |  |  |
| 2 | **Short Lead Time Items** | 2025-12-23 → 2026-01-06 (+14d) | 2026-01-22 → 2026-07-12 (+171d) |  |  |  |  |  |
| INF | **Infrastructure Networks** | 2026-01-07 → 2026-01-06 (-1d) | 2026-01-22 → 2026-07-12 (+171d) |  |  |  |  |  |
| 10 | **Road Works** | 2026-01-07 → 2026-01-10 (+3d) | 2026-01-22 → 2026-03-11 (+48d) |  |  |  |  |  |
| MS | **Submission of Material** | 2026-01-07 → 2026-01-10 (+3d) | 2026-01-14 → 2026-03-07 (+52d) |  |  |  |  |  |
| 1 | **Roads Works** | 2026-01-08 → 2026-01-10 (+2d) | 2026-01-14 → 2026-01-19 (+5d) |  |  |  |  |  |
| ENG-MT-RD-S-100 | Material Submittal for Subgrade of Road Works | 2026-01-08 → 2026-01-10 A (+2d) | 2026-01-14 → 2026-01-19 A (+5d) | 6d → 9.25d | 0% → 100% | 25d → none |  |  |
| ENG-MT-RD-S-110 | Material Submittal for Aggregate Base Course of Road Works | 2026-01-08 → 2026-01-10 A (+2d) | 2026-01-14 → 2026-01-19 A (+5d) | 6d → 9.25d | 0% → 100% | 25d → none |  |  |
| ENG-MT-RD-S-120 | Material Submittal for Prime Coat of Road Works | 2026-01-08 → 2026-01-10 A (+2d) | 2026-01-14 → 2026-01-19 A (+5d) | 6d → 9.25d | 0% → 100% | 25d → none |  |  |
| ENG-MT-RD-S-130 | Material Submittal for Bituminous Base & Wearing Courses of Road Works | 2026-01-08 → 2026-01-10 A (+2d) | 2026-01-14 → 2026-01-19 A (+5d) | 6d → 9.25d | 0% → 100% | 25d → none |  |  |
| 10 | **Pavement Works** | 2026-01-08 → 2026-01-11 (+3d) | 2026-01-14 → 2026-01-19 (+5d) |  |  |  |  |  |
| ENG-MT-RD-S-140 | Material Submittal for Interlock Tiles of Landscaping | 2026-01-08 → 2026-01-11 A (+3d) | 2026-01-14 → 2026-01-19 A (+5d) | 6d → 8.25d | 0% → 100% | 25d → none |  |  |
| ENG-MT-RD-S-150 | Material Submittal for Curbstones of Landscaping | 2026-01-08 → 2026-01-11 A (+3d) | 2026-01-14 → 2026-01-19 A (+5d) | 6d → 8.25d | 0% → 100% | 25d → none |  |  |
| 11 | **Traffic Signs Boards and Roads Marking** | 2026-01-07 → 2026-02-26 (+50d) | 2026-01-13 → 2026-03-07 (+53d) |  |  |  |  |  |
| ENG-MT-TS-S-100 | Material Submittal for Traffic Signs Boards of Road Works | 2026-01-07 → 2026-02-26 A (+50d) | 2026-01-13 → 2026-02-28 A (+46d) | 6d → 1.25d | 0% → 100% | 26d → none | ENG-SH-TSB-A-100 SS → MS-CS-PS |  |
| ENG-MT-TS-S-110 | Material Submittal for Road Markings of Road Works | 2026-01-07 → 2026-03-01 A (+53d) | 2026-01-13 → 2026-03-07 A (+53d) |  | 0% → 100% | 26d → none | ENG-SH-TSB-S-100 SS → ENG-SH-RD-A-100 |  |
| NA | **Approval of Material** | 2026-01-15 → 2026-01-18 (+3d) | 2026-01-22 → 2026-03-11 (+48d) |  |  |  |  |  |
| 1 | **Road Works** | 2026-01-15 → 2026-01-18 (+3d) | 2026-01-22 → 2026-01-20 (-2d) |  |  |  |  |  |
| ENG-MT-RD-A-100 | Material Approval for Subgrade of Road Works | 2026-01-15 → 2026-01-18 A (+3d) | 2026-01-22 → 2026-01-20 A (-2d) | 7d → 0d | 0% → 100% | 25d → none |  | resources Subgrade [2963] → Subgrade |
| ENG-MT-RD-A-110 | Material Approval for Aggregate Base Course of Road Works | 2026-01-15 → 2026-01-18 A (+3d) | 2026-01-22 → 2026-01-20 A (-2d) | 7d → 0d | 0% → 100% | 25d → none |  | resources Aggregate base course [1482] → Aggregate base course |
| ENG-MT-RD-A-120 | Material Approval for Prime Coat of Road Works | 2026-01-15 → 2026-01-18 A (+3d) | 2026-01-22 → 2026-01-20 A (-2d) | 7d → 0d | 0% → 100% | 25d → none |  | resources Bituminous base course (Grading I - Class A), including Prime Coat (MC1) [494] → Bituminous base course (Grading I - Class A), including Prime Coat (MC1) |
| ENG-MT-RD-A-130 | Material Approval for Bituminous Base & Wearing Courses of Road Works | 2026-01-15 → 2026-01-18 A (+3d) | 2026-01-22 → 2026-01-20 A (-2d) | 7d → 0d | 0% → 100% | 25d → none |  | resources Bituminous concrete wearing course, (Grading I - Class A), including tack coat (RC2) [494] → Bituminous concrete wearing course, (Grading I - Class A), including tack coat (RC2) |
| 2 | **Pavement Works** | 2026-01-15 → 2026-01-18 (+3d) | 2026-01-22 → 2026-01-20 (-2d) |  |  |  |  |  |
| ENG-MT-RD-A-140 | Material Approval of Interlock Tiles for Landscaping | 2026-01-15 → 2026-01-18 A (+3d) | 2026-01-22 → 2026-01-20 A (-2d) | 7d → 0d | 0% → 100% | 25d → none |  | resources 60mm thick [27926]; 80mm thick [38996.8] → 60mm thick; 80mm thick |
| ENG-MT-RD-A-150 | Material Approval of Curbstones for Landscaping | 2026-01-15 → 2026-01-18 A (+3d) | 2026-01-22 → 2026-01-20 A (-2d) | 7d → 0d | 0% → 100% | 25d → none |  | resources Precast Concrete Curbstone 150X300X900 Type (K1-A) [7267]; Precast Concrete Curbstone 100X200X500 Type (K4) [5638]; Precast Concrete Curbstone 150X300X500 Type (K1-B) [2210]; Precast Concrete Curbstone Type (K1-C) [99]; Flush Kerb Type (D) [188] → Precast Concrete Curbstone 150X300X900 Type (K1-A); Precast Concrete Curbstone 100X200X500 Type (K4); Precast Concrete Curbstone 150X300X500 Type (K1-B); Precast Concrete Curbstone Type (K1-C); Flush Kerb Type (D) |
| 3 | **Traffic Signs Boards and Roads Marking** | 2026-01-15 → 2026-02-28 (+44d) | 2026-01-22 → 2026-03-11 (+48d) |  |  |  |  |  |
| ENG-MT-TS-A-100 | Material Approval for Traffic Signs Boards of Road Works | 2026-01-15 → 2026-02-28 A (+44d) | 2026-01-22 → 2026-03-02 A (+39d) | 7d → 0d | 0% → 100% | 25d → none | ENG-MT-TS-S-100, ENG-SH-TSB-A-100 → ENG-MT-TS-S-100, MS-CS-PS | resources Traffic signs, ground mounted, Sheet Aluminum, (breakaway) Single post IPE, with all accessories [99]; Precast Concrete Blister Warning Tactile Paver Brown Finish 300*300*60mm [64] → Traffic signs, ground mounted, Sheet Aluminum, (breakaway) Single post IPE, with all accessories; Precast Concrete Blister Warning Tactile Paver Brown Finish 300*300*60mm |
| ENG-MT-TS-A-110 | Material Approval for Road Markings of Road Works | 2026-01-15 → 2026-03-08 A (+52d) | 2026-01-22 → 2026-03-11 A (+48d) | 7d → 0d | 0% → 100% | 25d → none | ENG-MT-TS-S-110, ENG-SH-MRK-A-110 SS → MS-CS-PS | resources Retroreflective Thermoplastic White Traffic lines [965]; Retroreflective Thermoplastic Yellow, Traffic lines [1445] → Retroreflective Thermoplastic White Traffic lines; Retroreflective Thermoplastic Yellow, Traffic lines |
| 6 | **Softscape and Planting Works** | 2026-01-07 → 2026-06-27 (+171d) | 2026-01-22 → 2026-07-12 (+171d) |  |  |  |  |  |
| 1 | **Submission of Material** | 2026-01-07 → 2026-06-27 (+171d) | 2026-01-14 → 2026-07-04 (+171d) |  |  |  |  |  |
| ENG-MT-IR-ML-S-140 | Material Submittal for Softscape and Planting Works | 2026-01-07 → 2026-06-27 (+171d) | 2026-01-14 → 2026-07-04 (+171d) | 7d → 6d |  | 25d → 1d |  | resources none → Unskilled Labor [30.36 h]; Electrical Technician [11.71 h]; Plumber [2.74 h]; Carpenter [3.34 h]; Mason [2.65 h]; Steel Fixer [3.39 h]; Skilled Labor [9.15 h] |
| ENG-MT-IR-ML-S-150 | Material Submittal for Site Furnishings (Seating Bench,Stone Boulders and Gravel) | 2026-01-07 → 2026-06-27 (+171d) | 2026-01-14 → 2026-07-04 (+171d) | 7d → 6d |  | 25d → 2d |  | resources none → Unskilled Labor [30.36 h]; Electrical Technician [11.71 h]; Plumber [2.74 h]; Carpenter [3.34 h]; Mason [2.65 h]; Steel Fixer [3.39 h]; Skilled Labor [9.15 h] |
| 2 | **Approval of Material** | 2026-01-15 → 2026-07-04 (+170d) | 2026-01-22 → 2026-07-12 (+171d) |  |  |  |  |  |
| ENG-MT-IR-ML-A-140 | Material Approval for Softscape and Planting Works | 2026-01-15 → 2026-07-04 (+170d) | 2026-01-22 → 2026-07-12 (+171d) |  |  | 25d → 1d |  | resources none → Unskilled Labor [35.42 h]; Electrical Technician [13.66 h]; Plumber [3.2 h]; Carpenter [3.89 h]; Mason [3.1 h]; Steel Fixer [3.96 h]; Skilled Labor [10.68 h] |
| ENG-MT-IR-ML-A-150 | Material Approval for Site Furnishings (Seating Bench,Stone Boulders and Gravel) | 2026-01-15 → 2026-07-04 (+170d) | 2026-01-22 → 2026-07-11 (+170d) | 7d → 6d |  | 25d → 2d |  | resources none → Unskilled Labor [30.36 h]; Electrical Technician [11.71 h]; Plumber [2.74 h]; Carpenter [3.34 h]; Mason [2.65 h]; Steel Fixer [3.39 h]; Skilled Labor [9.15 h] |
| 2 | **Sewage Network** | 2026-01-08 → 2026-01-11 (+3d) | 2026-01-22 → 2026-07-07 (+166d) |  |  |  |  |  |
| MS | **Submission of Material** | 2026-01-08 → 2026-01-11 (+3d) | 2026-01-14 → 2026-06-29 (+166d) |  |  |  |  |  |
| 1 | **Main Line Sections** | 2026-01-08 → 2026-01-11 (+3d) | 2026-01-14 → 2026-01-26 (+12d) |  |  |  |  |  |
| ENG-MT-SW-ML-S-110 | Material Submittal for Main Line Pipes of Sewage Network | 2026-01-08 → 2026-01-11 A (+3d) | 2026-01-14 → 2026-01-26 A (+12d) | 6d → 14.25d | 0% → 100% | 25d → none |  |  |
| ENG-MT-SW-ML-S-100 | Material Submittal for Manholes of Sewage Network | 2026-01-08 → 2026-01-20 A (+12d) | 2026-01-14 → 2026-01-25 A (+11d) | 6d → 5.25d | 0% → 100% | 25d → none |  |  |
| 3 | **Testing and Finishes** | 2026-01-08 → 2026-06-23 (+166d) | 2026-01-14 → 2026-06-29 (+166d) |  |  |  |  |  |
| ENG-MT-SW-TF-S-100 | Material Submittal for Manhole Covers of Sewage Network | 2026-01-08 → 2026-06-23 (+166d) | 2026-01-14 → 2026-06-29 (+166d) |  |  | 25d → 2d |  | resources none → Unskilled Labor [30.36 h]; Electrical Technician [11.71 h]; Plumber [2.74 h]; Carpenter [3.34 h]; Mason [2.65 h]; Steel Fixer [3.39 h]; Skilled Labor [9.15 h] |
| MA | **Approval of Material** | 2026-01-15 → 2026-01-21 (+6d) | 2026-01-22 → 2026-07-07 (+166d) |  |  |  |  |  |
| 1 | **Main Line Sections** | 2026-01-15 → 2026-01-21 (+6d) | 2026-01-22 → 2026-01-26 (+4d) |  |  |  |  |  |
| ENG-MT-SW-ML-A-100 | Material Approval for Manholes of Sewage Network | 2026-01-15 → 2026-01-21 A (+6d) | 2026-01-22 → 2026-01-26 A (+4d) | 7d → 0d | 0% → 100% | 25d → none |  | resources Depth: 0 - 1.5m [2]; Depth: 1.51 - 2.5m [35]; Depth: 2.51 - 3.5m [2]; Depth > 3.50m [1] → Depth: 0 - 1.5m; Depth: 1.51 - 2.5m; Depth: 2.51 - 3.5m; Depth > 3.50m |
| ENG-MT-SW-ML-A-110 | Material Approval for Main Line Pipes of Sewage Network | 2026-01-15 → 2026-01-22 A (+7d) | 2026-01-22 → 2026-01-25 A (+3d) | 7d → 0d | 0% → 100% | 25d → none |  | resources Depth Between 0m to 1.50m [40]; Depth Between 1.50m to 2.50m [246]; Depth > 2.50m [10]; Depth Between 0m to 1.50m [22]; Depth Between 1.50m to 2.50m [1600]; Depth Between 2.50m to 3.50m [75]; Depth > 3.50m [15]; HDPE Force Main (PE 100, SDR 11, PN 16 bar) DN 160 mm diameter, in trenches depth: 0- 1.5m [25]; HDPE Force Main (PE 100, SDR 11, PN 16 bar) DN 160 mm diameter, in trenches depth: 1.51- 2.5m [40] → Depth Between 0m to 1.50m; Depth Between 1.50m to 2.50m; Depth > 2.50m; Depth Between 2.50m to 3.50m; Depth > 3.50m; HDPE Force Main (PE 100, SDR 11, PN 16 bar) DN 160 mm diameter, in trenches depth: 0- 1.5m; HDPE Force Main (PE 100, SDR 11, PN 16 bar) DN 160 mm diameter, in trenches depth: 1.51- 2.5m |
| 3 | **Testing and Finishes** | 2026-01-15 → 2026-06-30 (+166d) | 2026-01-22 → 2026-07-07 (+166d) |  |  |  |  |  |
| ENG-MT-SW-TF-A-100 | Material Approval for Manhole Covers of Sewage Network | 2026-01-15 → 2026-06-30 (+166d) | 2026-01-22 → 2026-07-07 (+166d) |  |  | 25d → 2d |  | resources none → Unskilled Labor [35.42 h]; Electrical Technician [13.66 h]; Plumber [3.2 h]; Carpenter [3.89 h]; Mason [3.1 h]; Steel Fixer [3.96 h]; Skilled Labor [10.68 h] |
| 9 | **Storm Drainage Network** | 2026-01-08 → 2026-01-06 (-2d) | 2026-01-22 → 2026-07-07 (+166d) |  |  |  |  |  |
| MS | **Submission of Material** | 2026-01-08 → 2026-01-06 (-2d) | 2026-01-14 → 2026-06-29 (+166d) |  |  |  |  |  |
| 1 | **Main Line Sections** | 2026-01-08 → 2026-01-06 (-2d) | 2026-01-14 → 2026-01-13 (-1d) |  |  |  |  |  |
| ENG-MT-SD-ML-S-100 | Material Submittal for Manholes of Storm Drainage Network | 2026-01-08 → 2026-01-06 A (-2d) | 2026-01-14 → 2026-01-13 A (-1d) | 6d → 7.25d | 0% → 100% | 25d → none | ENG-SH-SD-ML-S-100 SS → ENG-SH-SD-ML-S-100 SS, ENG-SH-SD-ML-A-110 |  |
| ENG-MT-SD-ML-S-110 | Material Submittal for Main Line Pipes of Storm Drainage Network | 2026-01-08 → 2026-01-06 A (-2d) | 2026-01-14 → 2026-01-13 A (-1d) | 6d → 7.25d | 0% → 100% | 0d → none |  |  |
| 2 | **Catch Basin Sections** | 2026-01-08 → 2026-01-06 (-2d) | 2026-01-14 → 2026-01-13 (-1d) |  |  |  |  |  |
| ENG-MT-SD-CB-S-100 | Material Submittal for Catch Basins of Storm Drainage Network | 2026-01-08 → 2026-01-06 A (-2d) | 2026-01-14 → 2026-01-13 A (-1d) | 6d → 7.25d | 0% → 100% | 25d → none |  |  |
| ENG-MT-SD-CB-S-110 | Material Submittal for Catch Basin Pipes of Storm Drainage Network | 2026-01-08 → 2026-01-06 A (-2d) | 2026-01-14 → 2026-01-13 A (-1d) | 6d → 7.25d | 0% → 100% | 25d → none |  |  |
| 3 | **Testing and Finishes** | 2026-01-08 → 2026-06-23 (+166d) | 2026-01-14 → 2026-06-29 (+166d) |  |  |  |  |  |

| ID | Task | Start | Finish | Duration | Complete | Total float | Predecessors | Other |
| --- | --- | --- | --- | --- | --- | --- | --- | --- |
| ENG-MT-SD-TF-S-100 | Material Submittal for Manhole Covers of Storm Drainage Network | 2026-01-08 → 2026-06-23 (+166d) | 2026-01-14 → 2026-06-29 (+166d) |  |  | 25d → 4.5d |  | resources none → Unskilled Labor [30.36 h]; Electrical Technician [11.71 h]; Plumber [2.74 h]; Carpenter [3.34 h]; Mason [2.65 h]; Steel Fixer [3.39 h]; Skilled Labor [9.15 h] |
| ENG-MT-SD-TF-S-110 | Material Submittal for Catch Basin Covers of Storm Drainage Network | 2026-01-08 → 2026-06-23 (+166d) | 2026-01-14 → 2026-06-29 (+166d) |  |  | 25d → 4.5d |  | resources none → Unskilled Labor [30.36 h]; Electrical Technician [11.71 h]; Plumber [2.74 h]; Carpenter [3.34 h]; Mason [2.65 h]; Steel Fixer [3.39 h]; Skilled Labor [9.15 h] |
| MA | **Approval of Material** |  | 2026-01-22 → 2026-07-07 (+166d) |  |  |  |  |  |
| 1 | **Main Line Sections** |  | 2026-01-22 → 2026-01-19 (-3d) |  |  |  |  |  |
| ENG-MT-SD-ML-A-100 | Material Approval for Manholes of Storm Drainage Network | 2026-01-15 A | 2026-01-22 → 2026-01-19 A (-3d) | 7d → 0d | 0% → 100% | 25d → none |  | resources MH depth 1.5 - 2.5m [20]; MH depth 2.5 - 3.5m [17]; MH depth > 3.50m [1]; MH depth 2.5 -3.5m [2] → MH depth 1.5 - 2.5m; MH depth 2.5 - 3.5m; MH depth > 3.50m; MH depth 2.5 -3.5m |
| ENG-MT-SD-ML-A-110 | Material Approval for Main Line Pipes of Storm Drainage Network | 2026-01-15 A | 2026-01-22 → 2026-01-19 A (-3d) | 7d → 0d | 0% → 100% | 0d → none |  | resources Depth Between 1.50m to 2.50m [548]; Depth Between 2.50m to 3.50m [439]; Depth > 3.50m [15]; Depth Between 2.50m to 3.50m [191]; Depth Between 0m to 1.50m [28]; Depth Between 1.50m to 2.50m [10]; Depth Between 2.50m to 3.50m [94]; Depth > 3.50m [7]; Depth Between 2.50m to 3.50m [121]; Depth Between 3.50m to 4.50m [371]; Depth > 4.50m [15]; Depth Between 3.50m to 4.50m [737]; Depth > 4.50m [25] → Depth Between 1.50m to 2.50m; Depth Between 2.50m to 3.50m; Depth > 3.50m; Depth Between 0m to 1.50m; Depth Between 3.50m to 4.50m; Depth > 4.50m |
| 2 | **Catch Basin Sections** |  | 2026-01-22 → 2026-01-19 (-3d) |  |  |  |  |  |
| ENG-MT-SD-CB-A-100 | Material Approval for Catch Basins of Storm Drainage Network | 2026-01-15 A | 2026-01-22 → 2026-01-19 A (-3d) | 7d → 0d | 0% → 100% | 25d → none |  | resources Single Catch Basin 1000mm x 1000mm [197]; Double Catch Basin 1200mm x 2300mm [4] → Single Catch Basin 1000mm x 1000mm; Double Catch Basin 1200mm x 2300mm |
| ENG-MT-SD-CB-A-110 | Material Approval for Catch Basin Pipes of Storm Drainage Network | 2026-01-15 A | 2026-01-22 → 2026-01-19 A (-3d) | 7d → 0d | 0% → 100% | 25d → none |  | resources Depth Between 0m to 1.50m [95]; Depth Between 1.50m to 2.50m [2819]; Depth > 2.50m [15] → Depth Between 0m to 1.50m; Depth Between 1.50m to 2.50m; Depth > 2.50m |
| 3 | **Testing and Finishes** | 2026-01-15 → 2026-06-30 (+166d) | 2026-01-22 → 2026-07-07 (+166d) |  |  |  |  |  |
| ENG-MT-SD-TF-A-100 | Material Approval for Manhole Covers of Storm Drainage Network | 2026-01-15 → 2026-06-30 (+166d) | 2026-01-22 → 2026-07-07 (+166d) |  |  | 25d → 4.5d |  | resources none → Unskilled Labor [35.42 h]; Electrical Technician [13.66 h]; Plumber [3.2 h]; Carpenter [3.89 h]; Mason [3.1 h]; Steel Fixer [3.96 h]; Skilled Labor [10.68 h] |
| ENG-MT-SD-TF-A-110 | Material Approval for Catch Basin Covers of Storm Drainage Network | 2026-01-15 → 2026-06-30 (+166d) | 2026-01-22 → 2026-07-07 (+166d) |  |  | 25d → 4.5d |  | resources none → Unskilled Labor [35.42 h]; Electrical Technician [13.66 h]; Plumber [3.2 h]; Carpenter [3.89 h]; Mason [3.1 h]; Steel Fixer [3.96 h]; Skilled Labor [10.68 h] |
| 3 | **Potable Water Network** | 2026-01-08 → 2026-01-24 (+16d) | 2026-01-22 → 2026-07-07 (+166d) |  |  |  |  |  |
| MS | **Submission of Material** | 2026-01-08 → 2026-01-24 (+16d) | 2026-01-14 → 2026-06-29 (+166d) |  |  |  |  |  |
| 1 | **Main Line Sections** | 2026-01-08 → 2026-01-24 (+16d) | 2026-01-14 → 2026-06-29 (+166d) |  |  |  |  |  |
| ENG-MT-PW-ML-S-100 | Material Submittal for Main Line Pipes of Potable Water Network | 2026-01-08 → 2026-01-24 A (+16d) | 2026-01-14 → 2026-01-25 A (+11d) |  | 0% → 100% | 25d → none |  |  |
| ENG-MT-PW-ML-S-110 | Material Submittal for Main Line Valves of Potable Water Network | 2026-01-08 → 2026-06-23 (+166d) | 2026-01-14 → 2026-06-29 (+166d) |  |  | 25d → 4.5d |  | resources none → Unskilled Labor [30.36 h]; Electrical Technician [11.71 h]; Plumber [2.74 h]; Carpenter [3.34 h]; Mason [2.65 h]; Steel Fixer [3.39 h]; Skilled Labor [9.15 h] |
| 3 | **Fire Hydrant** | 2026-01-08 → 2026-06-23 (+166d) | 2026-01-14 → 2026-06-29 (+166d) |  |  |  |  |  |
| ENG-MT-PW-FH-S-100 | Material Submittal for Fire Hydrant of Potable Water Network | 2026-01-08 → 2026-06-23 (+166d) | 2026-01-14 → 2026-06-29 (+166d) |  |  | 25d → 4.5d |  | resources none → Unskilled Labor [30.36 h]; Electrical Technician [11.71 h]; Plumber [2.74 h]; Carpenter [3.34 h]; Mason [2.65 h]; Steel Fixer [3.39 h]; Skilled Labor [9.15 h] |
| 4 | **Testing and Finishes** | 2026-01-08 → 2026-06-23 (+166d) | 2026-01-14 → 2026-06-29 (+166d) |  |  |  |  |  |
| ENG-MT-PW-TF-S-100 | Material Submittal for Surface Box of Potable Water Network | 2026-01-08 → 2026-06-23 (+166d) | 2026-01-14 → 2026-06-29 (+166d) |  |  | 22d → 4.5d |  | resources none → Unskilled Labor [30.36 h]; Electrical Technician [11.71 h]; Plumber [2.74 h]; Carpenter [3.34 h]; Mason [2.65 h]; Steel Fixer [3.39 h]; Skilled Labor [9.15 h] |
| MA | **Approval of Material** | 2026-01-15 → 2026-01-25 (+10d) | 2026-01-22 → 2026-07-07 (+166d) |  |  |  |  |  |
| 1 | **Main Line Sections** | 2026-01-15 → 2026-01-25 (+10d) | 2026-01-22 → 2026-07-07 (+166d) |  |  |  |  |  |
| ENG-MT-PW-ML-A-100 | Material Approval for Main Line Pipes of Potable Water Network | 2026-01-15 → 2026-01-25 A (+10d) | 2026-01-22 → 2026-01-27 A (+5d) |  | 0% → 100% | 25d → none |  |  |
| ENG-MT-PW-ML-A-110 | Material Approval for Valves of Potable Water Network | 2026-01-15 → 2026-06-30 (+166d) | 2026-01-22 → 2026-07-07 (+166d) |  |  | 25d → 4.5d |  | resources none → Unskilled Labor [35.42 h]; Electrical Technician [13.66 h]; Plumber [3.2 h]; Carpenter [3.89 h]; Mason [3.1 h]; Steel Fixer [3.96 h]; Skilled Labor [10.68 h] |
| 3 | **Fire Hydrant** | 2026-01-15 → 2026-06-30 (+166d) | 2026-01-22 → 2026-07-07 (+166d) |  |  |  |  |  |
| ENG-MT-PW-FH-A-100 | Material Approval for Fire Hydrants of Potable Water Network | 2026-01-15 → 2026-06-30 (+166d) | 2026-01-22 → 2026-07-07 (+166d) |  |  | 25d → 4.5d |  | resources none → Unskilled Labor [35.42 h]; Electrical Technician [13.66 h]; Plumber [3.2 h]; Carpenter [3.89 h]; Mason [3.1 h]; Steel Fixer [3.96 h]; Skilled Labor [10.68 h] |
| 4 | **Testing and Finishes** | 2026-01-15 → 2026-06-30 (+166d) | 2026-01-22 → 2026-07-07 (+166d) |  |  |  |  |  |
| ENG-MT-PW-TF-A-100 | Material Approval for Surface Box of Potable Water Network | 2026-01-15 → 2026-06-30 (+166d) | 2026-01-22 → 2026-07-07 (+166d) |  |  | 22d → 4.5d |  | resources none → Unskilled Labor [35.42 h]; Electrical Technician [13.66 h]; Plumber [3.2 h]; Carpenter [3.89 h]; Mason [3.1 h]; Steel Fixer [3.96 h]; Skilled Labor [10.68 h] |
| 4 | **Irrigation Network** | 2026-01-07 → 2026-01-06 (-1d) | 2026-01-22 → 2026-01-27 (+5d) |  |  |  |  |  |
| MS | **Submission of Material** | 2026-01-07 → 2026-01-06 (-1d) | 2026-01-14 → 2026-01-27 (+13d) |  |  |  |  |  |
| 1 | **Main Line Pipes** | 2026-01-07 → 2026-01-06 (-1d) | 2026-01-14 → 2026-01-27 (+13d) |  |  |  |  |  |
| ENG-MT-IR-ML-S-100 | Material Submittal for Main Line Pipes of Irrigation Network | 2026-01-07 → 2026-01-06 A (-1d) | 2026-01-14 → 2026-01-27 A (+13d) | 7d → 19.25d | 0% → 100% | 25d → none | ENG-SH-HS-S-100 → MS-CS-PS |  |
| ENG-MT-IR-ML-S-110 | Material Submittal for Main Line Valves of Irrigation Network | 2026-01-07 → 2026-01-06 A (-1d) | 2026-01-14 → 2026-01-27 A (+13d) | 7d → 19.25d | 0% → 100% | 25d → none | ENG-SH-HS-S-100 → MS-CS-PS |  |
| MA | **Approval of Material** | 2026-01-15 → 2026-01-18 (+3d) | 2026-01-22 → 2026-01-26 (+4d) |  |  |  |  |  |
| 1 | **Main Line Pipes** | 2026-01-15 → 2026-01-18 (+3d) | 2026-01-22 → 2026-01-26 (+4d) |  |  |  |  |  |
| ENG-MT-IR-ML-A-100 | Material Approval for Main Line Pipes of Irrigation Network | 2026-01-15 → 2026-01-18 A (+3d) | 2026-01-22 → 2026-01-24 A (+2d) | 7d → 0d | 0% → 100% | 25d → none |  | resources Depth Between 0m to 1.50m [6]; Depth Between 1.50m to 2.50m [6]; Depth > 2.50m [2]; Depth Between 0m to 1.50m [420]; Depth Between 1.50m to 2.50m [280]; Depth > 2.50m [10]; Depth Between 0m to 1.50m [50]; Depth Between 1.50m to 2.50m [10]; Depth > 2.50m [5]; Depth Between 0m to 1.50m [320]; Depth Between 1.50m to 2.50m [1310]; Depth > 2.50m [20]; pipe line O.D 32 mm PN 10, in depth 0 to 1.5 m [3350]; pipe line O.D 40 mm PN 10, in depth 0 to 1.5 m [1850]; pipe line O.D 50 mm PN 10, in depth 0 to 1.5 m [250] → Depth Between 0m to 1.50m; Depth Between 1.50m to 2.50m; Depth > 2.50m; pipe line O.D 32 mm PN 10, in depth 0 to 1.5 m; pipe line O.D 40 mm PN 10, in depth 0 to 1.5 m; pipe line O.D 50 mm PN 10, in depth 0 to 1.5 m |
| ENG-MT-IR-ML-A-110 | Material Approval for Valves of Irrigation Network | 2026-01-15 → 2026-01-24 A (+9d) | 2026-01-22 → 2026-01-26 A (+4d) | 7d → 0d | 0% → 100% | 25d → none |  | resources Gate valves Dia 50 mm [1]; Gate valves Dia 100 mm [12]; Gate valves Dia 150 mm [17]; Gate valves Dia 250 mm [9]; Air valves with Dia 50 mm [1]; Washout valve Dia 100 mm [2]; 3-outlet fire hydrant (2 x 2.5 inch and 1 x 4.5 inch) in the form of a separate dry vacuum cylinder, complete according to drawings. [17]; Wash out chamber (2500x 2500mm) [2]; Air valve chamber (1000x 1000 mm) [1]; Flow meter chamber (1500x 2500 mm) [1]; Flow meter dia 100 mm [1]; Gate valve 50 mm PN16 [7]; Direct Burried Gate valve 40 mm PN16 [12]; Pressure–compensating bubblers 110 Lit/Hr [850]; Flushing Bronze gate valve dia 1.5" inside PVC box [19]; Air release valve 1.5" inside PVC box [19]; Extra flexible pressure compensating on surface inline dripline`s, O.D. is 16.1 mm [12000]; Electrical Solenoid Valve ( 1.5") inside PVC box [12]; Electrical Solenoid Valve ( 2") inside PVC box [7]; Quick coupling valve 1" inside a round valve box 10" size with a manual gate valve, hose swivel and key with all accessories [53]; Advanced Irrigation controller subject to client approval, can connect with Centarl Control system [1]; Decoder cables 12 AWG between valves and controllers, The cables shall be pulled through 32Ø UPVC conduit [3500]; Preparing the irrigation program for the entire system and providing technical services for monitoring and controlling the central irrigation systems [1] → Gate valves Dia 50 mm; Gate valves Dia 100 mm; Gate valves Dia 150 mm; Gate valves Dia 250 mm; Air valves with Dia 50 mm; Washout valve Dia 100 mm; 3-outlet fire hydrant (2 x 2.5 inch and 1 x 4.5 inch) in the form of a separate dry vacuum cylinder, complete according to drawings.; Wash out chamber (2500x 2500mm); Air valve chamber (1000x 1000 mm); Flow meter chamber (1500x 2500 mm); Flow meter dia 100 mm; Gate valve 50 mm PN16; Direct Burried Gate valve 40 mm PN16; Pressure compensating bubblers 110 Lit/Hr; Flushing Bronze gate valve dia 1.5" inside PVC box; Air release valve 1.5" inside PVC box; Extra flexible pressure compensating on surface inline dripline`s, O.D. is 16.1 mm; Electrical Solenoid Valve ( 1.5") inside PVC box; Electrical Solenoid Valve ( 2") inside PVC box; Quick coupling valve 1" inside a round valve box 10" size with a manual gate valve, hose swivel and key with all accessories; Advanced Irrigation controller subject to client approval, can connect with Centarl Control system; Decoder cables 12 AWG between valves and controllers, The cables shall be pulled through 32 UPVC conduit; Preparing the irrigation program for the entire system and providing technical services for monitoring and controlling the central irrigation systems |
| 1 | **Treated Sewage Effluent (Tse)** | 2026-01-07 → 2026-01-17 (+10d) | 2026-01-22 → 2026-02-16 (+25d) |  |  |  |  |  |
| MS | **Submission of Material** | 2026-01-07 → 2026-01-17 (+10d) | 2026-01-14 → 2026-02-04 (+21d) |  |  |  |  |  |
| 1 | **Main Line Pipes** | 2026-01-07 → 2026-01-17 (+10d) | 2026-01-14 → 2026-02-04 (+21d) |  |  |  |  |  |
| ENG-MT-IR-ML-S-120 | Material Submittal for Main Line Pipes of Irrigation Network | 2026-01-07 → 2026-01-17 A (+10d) | 2026-01-14 → 2026-01-26 A (+12d) | 7d → 9.25d | 0% → 100% | 25d → none | ENG-SH-HS-S-100 → MS-CS-PS |  |
| ENG-MT-IR-ML-S-130 | Material Submittal for Main Line Valves of Irrigation Network | 2026-01-07 → 2026-02-03 A (+27d) | 2026-01-14 → 2026-02-04 A (+21d) | 7d → 2.25d | 0% → 100% | 25d → none | ENG-SH-HS-S-100 → MS-CS-PS |  |
| MA | **Approval of Material** | 2026-01-15 → 2026-01-29 (+14d) | 2026-01-22 → 2026-02-16 (+25d) |  |  |  |  |  |
| 1 | **Main Line Pipes** | 2026-01-15 → 2026-01-29 (+14d) | 2026-01-22 → 2026-02-16 (+25d) |  |  |  |  |  |
| ENG-MT-IR-ML-A-120 | Material Approval for Main Line Pipes of Irrigation Network | 2026-01-15 → 2026-01-29 A (+14d) | 2026-01-22 → 2026-02-16 A (+25d) | 7d → 0d | 0% → 100% | 25d → none |  | resources Depth Between 0m to 1.50m [10]; Depth Between 1.50m to 2.50m [5]; Depth > 2.50m [2]; Depth Between 0m to 1.50m [920]; Depth Between 0m to 1.50m [412.98]; Depth Between 1.50m to 2.50m [45]; Depth > 2.50m [10]; Depth Between 0m to 1.50m [850]; Depth Between 1.50m to 2.50m [260]; Depth > 2.50m [25]; Depth Between 0m to 1.50m [60]; Depth Between 1.50m to 2.50m [40]; Depth > 2.50m [8] → Depth Between 0m to 1.50m; Depth Between 1.50m to 2.50m; Depth > 2.50m |
| ENG-MT-IR-ML-A-130 | Material Approval for Valves of Irrigation Network | 2026-01-15 → 2026-02-04 A (+20d) | 2026-01-22 → 2026-02-09 A (+18d) | 7d → 0d | 0% → 100% | 25d → none |  | resources Gate valves dia 50 mm [1]; Gate valves dia 100 mm [14]; Gate valves dia 150 mm [5]; Gate valves dia 200 mm [2]; Air valves with dia 50 mm [1]; Washout valve dia 100 mm [2]; Wash out chamber (2500x 2500mm) [2]; Air valve chamber (1000x 1000 mm) [1]; Flow meter chamber (1500x 3000 mm) [1]; Flow meter dia 150 mm [1] → Gate valves dia 50 mm; Gate valves dia 100 mm; Gate valves dia 150 mm; Gate valves dia 200 mm; Air valves with dia 50 mm; Washout valve dia 100 mm; Wash out chamber (2500x 2500mm); Air valve chamber (1000x 1000 mm); Flow meter chamber (1500x 3000 mm); Flow meter dia 150 mm |
| 5 | **Medium Voltage Network** | 2026-01-08 → 2026-01-06 (-2d) | 2026-01-22 → 2026-07-07 (+166d) |  |  |  |  |  |
| MS | **Submission of Material** | 2026-01-08 → 2026-01-06 (-2d) | 2026-01-14 → 2026-06-29 (+166d) |  |  |  |  |  |
| 1 | **Cabling Works** | 2026-01-08 → 2026-01-06 (-2d) | 2026-01-14 → 2026-01-13 (-1d) |  |  |  |  |  |
| ENG-MT-MV-ML-S-100 | Material Submittal for Medium Voltage Cables of Medium Voltage Network | 2026-01-08 → 2026-01-06 A (-2d) | 2026-01-14 → 2026-01-13 A (-1d) | 6d → 7.25d | 0% → 100% | 25d → none |  |  |
| 3 | **Termination and Testing Works** | 2026-01-08 → 2026-06-23 (+166d) | 2026-01-14 → 2026-06-29 (+166d) |  |  |  |  |  |
| ENG-MT-MV-TF-S-100 | Material Submittal for Termination Kits of Medium Voltage Network | 2026-01-08 → 2026-06-23 (+166d) | 2026-01-14 → 2026-06-29 (+166d) |  |  | 25d → 4.5d |  | resources none → Unskilled Labor [30.36 h]; Electrical Technician [11.71 h]; Plumber [2.74 h]; Carpenter [3.34 h]; Mason [2.65 h]; Steel Fixer [3.39 h]; Skilled Labor [9.15 h] |
| MA | **Approval of Material** | 2026-01-15 → 2026-01-14 (-1d) | 2026-01-22 → 2026-07-07 (+166d) |  |  |  |  |  |
| 1 | **Cabling Works** | 2026-01-15 → 2026-01-14 (-1d) | 2026-01-22 → 2026-01-20 (-2d) |  |  |  |  |  |
| ENG-MT-MV-ML-A-100 | Material Approval for Medium Voltage Cables of Medium Voltage Network | 2026-01-15 → 2026-01-14 A (-1d) | 2026-01-22 → 2026-01-20 A (-2d) | 7d → 0d | 0% → 100% | 25d → none | ENG-MT-MV-ML-S-100, ENG-SH-MV-S-100 → ENG-MT-MV-ML-S-100, ENG-SH-MV-S-100 SS | resources Excavation for Trench size 40cm wide and 80cm deep (for 1 cable) [200.56]; Excavation for Trench Size 60cm wide and 80cm deep (for 2 cables) [100.1]; Excavation for Trench Size 90cm wide and 80cm deep (for 3 cables) [139.32]; Excavation for Trench Size 180cm wide and 80cm deep (for 6 cables) [61.92]; Excavation for Trench Size 210 cm wide and 80cm deep (for 7 cables) [72.24]; Excavation for Trench Size 240cm wide and 80cm deep (for 8 cables) [441.7]; Duct bank for (33) cables [126]; Duct bank for (21) cables [200]; Duct bank for (15) cables [60.09]; HV Cable Road Crossing [64.15] → Excavation for Trench size 40cm wide and 80cm deep (for 1 cable); Excavation for Trench Size 60cm wide and 80cm deep (for 2 cables); Excavation for Trench Size 90cm wide and 80cm deep (for 3 cables); Excavation for Trench Size 180cm wide and 80cm deep (for 6 cables); Excavation for Trench Size 210 cm wide and 80cm deep (for 7 cables); Excavation for Trench Size 240cm wide and 80cm deep (for 8 cables); Duct bank for (33) cables; Duct bank for (21) cables; Duct bank for (15) cables; HV Cable Road Crossing |
| 3 | **Termination and Testing Works** | 2026-01-15 → 2026-06-30 (+166d) | 2026-01-22 → 2026-07-07 (+166d) |  |  |  |  |  |
| ENG-MT-MV-TF-A-100 | Material Approval for Termination and Joints Kits of Medium Voltage Network | 2026-01-15 → 2026-06-30 (+166d) | 2026-01-22 → 2026-07-07 (+166d) |  |  | 25d → 4.5d |  | resources none → Unskilled Labor [35.42 h]; Electrical Technician [13.66 h]; Plumber [3.2 h]; Carpenter [3.89 h]; Mason [3.1 h]; Steel Fixer [3.96 h]; Skilled Labor [10.68 h] |
| 7 | **Street Lighting Network** | 2026-01-08 → 2026-01-06 (-2d) | 2026-01-22 → 2026-07-07 (+166d) |  |  |  |  |  |
| MS | **Submission of Material** | 2026-01-08 → 2026-01-06 (-2d) | 2026-01-21 → 2026-07-06 (+166d) |  |  |  |  |  |
| 1 | **Cabling Works** | 2026-01-08 → 2026-02-01 (+24d) | 2026-01-14 → 2026-02-08 (+25d) |  |  |  |  |  |
| ENG-MT-SL-ML-S-100 | Material Submittal for Lighting Cables of Street Lighting Network | 2026-01-08 → 2026-02-01 A (+24d) | 2026-01-14 → 2026-02-08 A (+25d) |  | 0% → 100% | 25d → none |  |  |
| 2 | **Lighting Poles Works** | 2026-01-08 → 2026-01-06 (-2d) | 2026-01-14 → 2026-01-19 (+5d) |  |  |  |  |  |
| ENG-MT-SL-S-100 | Material Submittal for Lighting Poles Concrete Foundations of Street Lighting Network | 2026-01-08 → 2026-01-06 A (-2d) | 2026-01-14 → 2026-01-13 A (-1d) | 6d → 7.25d | 0% → 100% | 25d → none |  |  |
| ENG-MT-SL-S-110 | Material Submittal for Lighting Poles of Street Lighting Network | 2026-01-08 → 2026-01-06 A (-2d) | 2026-01-14 → 2026-01-13 A (-1d) | 6d → 7.25d | 0% → 100% | 25d → none |  |  |
| ENG-MT-SL-S-120 | Material Submittal for Lighting Fixtures of Street Lighting Network | 2026-01-08 → 2026-01-15 A (+7d) | 2026-01-14 → 2026-01-19 A (+5d) |  | 0% → 100% | 25d → none |  |  |
| 3 | **Distribution Panel Board** | 2026-01-08 → 2026-02-18 (+41d) | 2026-01-14 → 2026-02-19 (+36d) |  |  |  |  |  |
| ENG-MT-SL-DB-S-100 | Material Submittal for Lighting Distrubution Panel Boards of Street Lighting Network | 2026-01-08 → 2026-02-18 A (+41d) | 2026-01-14 → 2026-02-19 A (+36d) | 6d → 1.25d | 0% → 100% | 25d → none |  |  |
| 5 | **Termination and Testing Works** | 2026-01-08 → 2026-06-23 (+166d) | 2026-01-14 → 2026-06-29 (+166d) |  |  |  |  |  |
| ENG-MT-SL-TF-S-100 | Material Submittal for Fuse Boxes of Street Lighting Network | 2026-01-08 → 2026-06-23 (+166d) | 2026-01-14 → 2026-06-29 (+166d) |  |  | 25d → 0d |  | resources none → Unskilled Labor [30.36 h]; Electrical Technician [11.71 h]; Plumber [2.74 h]; Carpenter [3.34 h]; Mason [2.65 h]; Steel Fixer [3.39 h]; Skilled Labor [9.15 h] |

| ID | Task | Start | Finish | Duration | Complete | Total float | Predecessors | Other |
| --- | --- | --- | --- | --- | --- | --- | --- | --- |
| ENG-MT-SL-TF-S-110 | Material Submittal for Cable Lugs of Street Lighting Network | 2026-01-08 → 2026-06-23 (+166d) | 2026-01-14 → 2026-06-29 (+166d) |  |  | 25d → 11.5d |  | resources none → Unskilled Labor [30.36 h]; Electrical Technician [11.71 h]; Plumber [2.74 h]; Carpenter [3.34 h]; Mason [2.65 h]; Steel Fixer [3.39 h]; Skilled Labor [9.15 h] |
| 4 | **Earthing System Works** | 2026-01-15 → 2026-06-30 (+166d) | 2026-01-21 → 2026-07-06 (+166d) |  |  |  |  |  |
| ENG-MT-SL-ES-S-100 | Material Submittal for Lighting Earthing of Street Lighting Network | 2026-01-15 → 2026-06-30 (+166d) | 2026-01-21 → 2026-07-06 (+166d) |  |  | 25d → 11.5d |  | resources none → Unskilled Labor [30.36 h]; Electrical Technician [11.71 h]; Plumber [2.74 h]; Carpenter [3.34 h]; Mason [2.65 h]; Steel Fixer [3.39 h]; Skilled Labor [9.15 h] |
| MA | **Approval of Material** | 2026-01-15 → 2026-01-14 (-1d) | 2026-01-22 → 2026-07-07 (+166d) |  |  |  |  |  |
| 1 | **Cabling Works** | 2026-01-15 → 2026-02-04 (+20d) | 2026-01-22 → 2026-02-09 (+18d) |  |  |  |  |  |
| ENG-MT-SL-ML-A-100 | Material Approval for Lighting Cables of Street Lighting Network | 2026-01-15 → 2026-02-04 A (+20d) | 2026-01-22 → 2026-02-09 A (+18d) | 7d → 0d | 0% → 100% | 25d → none | ENG-MT-SL-ML-S-100 → ENG-MT-MV-ML-S-100 | resources Road crossing ducts, 2 ways (2 x 150mm HDPE) [228.69]; Road crossing ducts, 2 ways (2 x 110mm UPVC) [90.85]; Road crossing ducts, 3 ways (3 x 110mm UPVC) [30.19]; 4C-300mm2 CU/XLPE / PVC ARMORED CABLE [70]; 4C-240mm2 CU/XLPE / PVC ARMORED CABLE [40]; 4C-185mm2 CU/XLPE / PVC ARMORED CABLE [40]; 4C-50mm2 CU/XLPE / PVC ARMORED CABLE [150]; 4C-16mm2 CU/XLPE / PVC ARMORED CABLE [3485]; 4C-16MM2 CU/XLPE / PVC CABLE [1395]; 1Cx150sq.mm2,Cu, PVC wire [75]; 1Cx120sq.mm2,Cu, PVC wire [75]; 1Cx95sq.mm,Cu, PVC wire [40]; 1Cx70sq.mm2,Cu, PVC wire [20]; 1Cx25sq.mm2,Cu, PVC wire [75]; 1Cx16sq.mm2,Cu, PVC wire [3485]; 1Cx10sq.mm2,Cu, PVC wire [50]; Supply and installation of KWH meter mounting frame including concrete block for installation of KWH meter [6] → Road crossing ducts, 2 ways (2 x 150mm HDPE); Road crossing ducts, 2 ways (2 x 110mm UPVC); Road crossing ducts, 3 ways (3 x 110mm UPVC); 4C-300mm2 CU/XLPE / PVC ARMORED CABLE; 4C-240mm2 CU/XLPE / PVC ARMORED CABLE; 4C-185mm2 CU/XLPE / PVC ARMORED CABLE; 4C-50mm2 CU/XLPE / PVC ARMORED CABLE; 4C-16mm2 CU/XLPE / PVC ARMORED CABLE; 4C-16MM2 CU/XLPE / PVC CABLE; 1Cx150sq.mm2,Cu, PVC wire; 1Cx120sq.mm2,Cu, PVC wire; 1Cx95sq.mm,Cu, PVC wire; 1Cx70sq.mm2,Cu, PVC wire; 1Cx25sq.mm2,Cu, PVC wire; 1Cx16sq.mm2,Cu, PVC wire; 1Cx10sq.mm2,Cu, PVC wire; Supply and installation of KWH meter mounting frame including concrete block for installation of KWH meter |
| 2 | **Lighting Poles Works** | 2026-01-15 → 2026-01-14 (-1d) | 2026-01-22 → 2026-01-25 (+3d) |  |  |  |  |  |
| ENG-MT-SL-A-100 | Material Approval for Lighting Poles Concrete Foundations of Street Lighting Network | 2026-01-15 → 2026-01-14 A (-1d) | 2026-01-22 → 2026-01-25 A (+3d) | 7d → 10.25d | 0% → 100% | 25d → none |  |  |
| ENG-MT-SL-A-110 | Material Approval for Lighting Poles of Street Lighting Network | 2026-01-15 → 2026-01-14 A (-1d) | 2026-01-22 → 2026-01-25 A (+3d) | 7d → 0d | 0% → 100% | 25d → none |  | resources Lighting poles with 1 arm, height of (12) meters, including the power distribution box, cables, and RCC foundation. [39]; Lighting poles with 2 arms, height of (12) meters, including the power distribution box, cables, and RCC foundation. [36] → Lighting poles with 1 arm, height of (12) meters, including the power distribution box, cables, and RCC foundation.; Lighting poles with 2 arms, height of (12) meters, including the power distribution box, cables, and RCC foundation. |
| ENG-MT-SL-A-120 | Material Approval for Lighting Fixtures of Street Lighting Network | 2026-01-15 → 2026-01-22 A (+7d) | 2026-01-22 → 2026-01-25 A (+3d) | 7d → 0d | 0% → 100% | 25d → none | ENG-MT-SL-S-120 → ENG-MT-MV-ML-S-100 | resources Street Lighting( LED) Luminaire of Output ? 20,965 lumen complete with control gear and lamp, (129.1) WATT. [111] → Street Lighting( LED) Luminaire of Output ? 20,965 lumen complete with control gear and lamp, (129.1) WATT. |
| 3 | **Distribution Panel Board** | 2026-01-15 → 2026-02-21 (+37d) | 2026-01-22 → 2026-03-23 (+60d) |  |  |  |  |  |
| ENG-MT-SL-DB-A-100 | Material Approval for Distrubution Panel Boards of Street Lighting Network | 2026-01-15 → 2026-02-21 A (+37d) | 2026-01-22 → 2026-03-23 A (+60d) | 7d → 0d | 0% → 100% | 25d → none |  | resources Street Lighting panels LCP (01) [1] → Street Lighting panels LCP (01) |
| 4 | **Earthing System Works** | 2026-01-15 → 2026-06-30 (+166d) | 2026-01-22 → 2026-06-30 (+159d) |  |  |  |  |  |
| ENG-MT-SL-ES-A-100 | Material Approval for Lighting Earthing of Street Lighting Network | 2026-01-15 → 2026-06-30 (+166d) | 2026-01-22 → 2026-06-30 (+159d) | 7d → 0d |  | 25d → 11.5d |  | resources Including earthing of lighting poles, masts, feeder pillars, unit substations and LV feeders. [75] → Including earthing of lighting poles, masts, feeder pillars, unit substations and LV feeders. |
| 5 | **Termination and Testing Works** | 2026-01-15 → 2026-06-30 (+166d) | 2026-01-22 → 2026-07-07 (+166d) |  |  |  |  |  |
| ENG-MT-SL-TF-A-100 | Material Approval for Fuse Boxes of Street Lighting Network | 2026-01-15 → 2026-06-30 (+166d) | 2026-01-22 → 2026-07-07 (+166d) |  |  | 25d → 0d |  | resources none → Unskilled Labor [35.42 h]; Electrical Technician [13.66 h]; Plumber [3.2 h]; Carpenter [3.89 h]; Mason [3.1 h]; Steel Fixer [3.96 h]; Skilled Labor [10.68 h] |
| ENG-MT-SL-TF-A-110 | Material Approval for Cable Lugs of Street Lighting Network | 2026-01-15 → 2026-06-30 (+166d) | 2026-01-22 → 2026-07-07 (+166d) |  |  | 25d → 11.5d |  | resources none → Unskilled Labor [35.42 h]; Electrical Technician [13.66 h]; Plumber [3.2 h]; Carpenter [3.89 h]; Mason [3.1 h]; Steel Fixer [3.96 h]; Skilled Labor [10.68 h] |
| 8 | **Telecom Network** | 2026-01-15 → 2026-01-17 (+2d) | 2026-01-22 → 2026-01-26 (+4d) |  |  |  |  |  |
| MS | **Submission of Material** | 2026-01-15 → 2026-01-17 (+2d) | 2026-01-21 → 2026-01-26 (+5d) |  |  |  |  |  |
| 1 | **Ducts Works** | 2026-01-15 → 2026-01-17 (+2d) | 2026-01-21 → 2026-01-26 (+5d) |  |  |  |  |  |
| ENG-MT-TE-S-100 | Material Submittal for Ducts of Telecom Network | 2026-01-15 → 2026-01-17 A (+2d) | 2026-01-21 → 2026-01-26 A (+5d) | 6d → 9.25d | 0% → 100% | 25d → none | ENG-SH-CTV-S-100 SS → MS-CS-PS |  |
| 3 | **Manholes Works** | 2026-01-15 → 2026-01-17 (+2d) | 2026-01-21 → 2026-01-26 (+5d) |  |  |  |  |  |
| ENG-MT-TE-S-110 | Material Submittal for Manholes of Telecom Network | 2026-01-15 → 2026-01-17 A (+2d) | 2026-01-21 → 2026-01-26 A (+5d) | 6d → 9.25d | 0% → 100% | 25d → none | ENG-SH-CTV-S-100 SS → MS-CS-PS |  |
| 2 | **CCTV System Wroks** | 2026-01-15 → 2026-01-17 (+2d) | 2026-01-21 → 2026-01-26 (+5d) |  |  |  |  |  |
| ENG-MT-CTV-S-100 | Material Submittal for Civil and Finishes Works of CCTV Complete System | 2026-01-15 → 2026-01-17 A (+2d) | 2026-01-21 → 2026-01-26 A (+5d) | 6d → 9.25d | 0% → 100% | 25d → none | ENG-SH-CTV-S-100 SS → MS-CS-PS |  |
| MA | **Approval of Material** | 2026-01-15 → 2026-01-17 (+2d) | 2026-01-22 → 2026-01-26 (+4d) |  |  |  |  |  |
| 1 | **Ducts Works** | 2026-01-15 → 2026-01-17 (+2d) | 2026-01-22 → 2026-01-26 (+4d) |  |  |  |  |  |
| ENG-MT-TE-A-100 | Material Approval for Ducts of Telecom Network | 2026-01-15 → 2026-01-17 A (+2d) | 2026-01-22 → 2026-01-26 A (+4d) | 7d → 0d | 0% → 100% | 25d → none | ENG-MT-TE-S-100 SS, ENG-SH-CTV-S-100 SS → ENG-MT-TE-S-100 SS, MS-CS-PS, ENG-MT-TE-S-100 FF | resources 2-ways ducts, 50mm diameter [516]; 6-ways ducts, 110mm diameter [2082]; 9-ways ducts, 6 x 160mm & 2 x 100mm [3054]; 6 PVC ducts 150x200 mm (60mm diameter) [162]; 6 PVC ducts 600x800 mm (120mm diameter) [282]; 6 PVC ducts 800x800 mm (170mm diameter) [402] → 2-ways ducts, 50mm diameter; 6-ways ducts, 110mm diameter; 9-ways ducts, 6 x 160mm & 2 x 100mm; 6 PVC ducts 150x200 mm (60mm diameter); 6 PVC ducts 600x800 mm (120mm diameter); 6 PVC ducts 800x800 mm (170mm diameter) |
| 3 | **Manholes Works** | 2026-01-15 → 2026-01-17 (+2d) | 2026-01-22 → 2026-01-26 (+4d) |  |  |  |  |  |
| ENG-MT-TE-A-110 | Material Approval for Manholes of Telecom Network | 2026-01-15 → 2026-01-17 A (+2d) | 2026-01-22 → 2026-01-26 A (+4d) | 7d → 0d | 0% → 100% | 25d → none | ENG-MT-TE-S-110 SS, ENG-SH-CTV-S-100 SS → ENG-MT-TE-S-110 SS, MS-CS-PS, ENG-MT-TE-S-110 FF | resources Manhole Type 2 (1600 x 1600 x 2000) [25]; Manhole Type 3 (1200 x 1200 x 2000) [31] → Manhole Type 2 (1600 x 1600 x 2000); Manhole Type 3 (1200 x 1200 x 2000) |
| 2 | **CCTV System Wroks** | 2026-01-15 → 2026-01-17 (+2d) | 2026-01-22 → 2026-01-26 (+4d) |  |  |  |  |  |
| ENG-MT-CTV-A-100 | Material Approval for Civil and Finishes Works of CCTV Complete System | 2026-01-15 → 2026-01-17 A (+2d) | 2026-01-22 → 2026-01-26 A (+4d) | 7d → 0d | 0% → 100% | 25d → none | ENG-MT-CTV-S-100 SS, ENG-SH-CTV-S-100 SS → ENG-MT-CTV-S-100 SS, MS-CS-PS, ENG-MT-CTV-S-100 FF | resources 6 PVC ducts 200x150 mm (60mm diameter) [138]; 2-ways ducts, 50mm diameter [498] → 6 PVC ducts 200x150 mm (60mm diameter); 2-ways ducts, 50mm diameter |
| 1 | **Superstructure Works** | 2025-12-23 → 2026-01-15 (+23d) | 2026-01-22 → 2026-06-30 (+159d) |  |  |  |  |  |
| SL1111 | **Pump Stations** | 2025-12-23 → 2026-01-17 (+25d) | 2026-01-11 → 2026-01-28 (+17d) |  |  |  |  |  |
| 1 | **Submission of Material** | 2025-12-23 → 2026-01-17 (+25d) | 2025-12-30 → 2026-01-26 (+27d) |  |  |  |  |  |
| ENG-MT-PS-CV-S-140 | Material Submittal for Civil Works for Sewage Pump Stations | 2025-12-23 → 2026-01-17 A (+25d) | 2025-12-30 → 2026-01-26 A (+27d) | 7d → 9.25d | 0% → 100% | 5.25d → none |  |  |
| 2 | **Approval of Material** | 2025-12-31 → 2026-01-18 (+18d) | 2026-01-11 → 2026-01-28 (+17d) |  |  |  |  |  |
| ENG-MT-PS-CV-A-150 | Material Approval for Civil Works for Sewage Pump Stations | 2025-12-31 → 2026-01-18 A (+18d) | 2026-01-11 → 2026-01-28 A (+17d) | 10d → 0d | 0% → 100% | 5.25d → none |  | resources Price [108644 SAR] → Price |
| SL | **Lift Station** | 2025-12-23 → 2026-01-17 (+25d) | 2026-01-11 → 2026-01-28 (+17d) |  |  |  |  |  |
| 1 | **Submission of Material** | 2025-12-23 → 2026-01-17 (+25d) | 2025-12-30 → 2026-01-27 (+28d) |  |  |  |  |  |
| ENG-MT-SLS-CV-S-100 | Material Submittal for Civil Works for Lift Stations | 2025-12-23 → 2026-01-17 A (+25d) | 2025-12-30 → 2026-01-27 A (+28d) | 7d → 10.25d | 0% → 100% | 3.25d → none |  |  |
| 2 | **Approval of Material** | 2025-12-31 → 2026-01-17 (+17d) | 2026-01-11 → 2026-01-28 (+17d) |  |  |  |  |  |
| ENG-MT-SLS-CV-A-110 | Material Approval for Civil Works for Sewage Lift Stations | 2025-12-31 → 2026-01-17 A (+17d) | 2026-01-11 → 2026-01-28 A (+17d) | 10d → 0d | 0% → 100% | 3.25d → none |  | resources Price [84501.1 SAR] → Price |
| TE | **Storm Drainage Ponds** | 2025-12-31 → 2026-02-08 (+39d) | 2026-01-19 → 2026-02-17 (+29d) |  |  |  |  |  |
| 1 | **Submission of Material** | 2025-12-31 → 2026-02-08 (+39d) | 2026-01-07 → 2026-02-10 (+34d) |  |  |  |  |  |
| ENG-MT-DPO-CV-S-100 | Material Submittal for Civil Works for Storm Drainage Ponds | 2025-12-31 → 2026-02-08 A (+39d) | 2026-01-07 → 2026-02-10 A (+34d) | 7d → 3.25d | 0% → 100% | 28d → none |  |  |
| 2 | **Approval of Material** | 2026-01-08 → 2026-02-10 (+33d) | 2026-01-19 → 2026-02-17 (+29d) |  |  |  |  |  |
| ENG-MT-DPO-CV-A-110 | Material Approval for Civil Works for Storm Drainage Ponds | 2026-01-08 → 2026-02-10 A (+33d) | 2026-01-19 → 2026-02-17 A (+29d) | 10d → 0d | 0% → 100% | 28d → none |  | resources Finished grouted riprap for Pond 300mm as per drawings [3720] → Finished grouted riprap for Pond 300mm as per drawings |
| SL111 | **Storage Tank (TSE)** | 2025-12-31 → 2026-02-04 (+35d) | 2026-01-19 → 2026-06-30 (+162d) |  |  |  |  |  |
| 1 | **Submission of Material** | 2025-12-31 → 2026-06-23 (+174d) | 2026-01-07 → 2026-06-30 (+174d) |  |  |  |  |  |
| ENG-MT-TSE-CV-S-130 | Material Submittal for Civil Works for Storage Tank (TSE) | 2025-12-31 → 2026-06-23 (+174d) | 2026-01-07 → 2026-06-30 (+174d) |  |  | 9.75d → 13.25d |  | resources none → Unskilled Labor [35.42 h]; Electrical Technician [13.66 h]; Plumber [3.2 h]; Carpenter [3.89 h]; Mason [3.1 h]; Steel Fixer [3.96 h]; Skilled Labor [10.68 h] |
| 2 | **Approval of Material** | 2026-01-08 → 2026-02-04 (+27d) | 2026-01-19 → 2026-02-09 (+21d) |  |  |  |  |  |
| ENG-MT-TSE-CV-A-140 | Material Approval for Civil Works for Storage Tank (TSE) | 2026-01-08 → 2026-02-04 A (+27d) | 2026-01-19 → 2026-02-09 A (+21d) | 10d → 0d | 0% → 100% | 9.75d → none | ENG-MT-TSE-CV-S-130 → ENG-MT-SLS-CV-S-100 | resources Glass Fused Bolted (GLS) 1500 m3 Tank with associated accessories & manufacturer recommendation for the foundation [1] → Glass Fused Bolted (GLS) 1500 m3 Tank with associated accessories & manufacturer recommendation for the foundation |
| SL11 | **Gaurd Room** | 2025-12-23 → 2026-02-09 (+48d) | 2026-01-19 → 2026-02-17 (+29d) |  |  |  |  |  |
| 1 | **Submission of Material** | 2025-12-23 → 2026-02-09 (+48d) | 2026-01-03 → 2026-02-10 (+38d) |  |  |  |  |  |
| ENG-MT-GR-CV-S-120 | Material Submittal for Civil Works for Gaurd Room | 2025-12-23 → 2026-02-09 A (+48d) | 2026-01-03 → 2026-02-10 A (+38d) | 10d → 2.25d | 0% → 100% | 10.75d → none |  |  |
| 2 | **Approval of Material** | 2026-01-04 → 2026-02-10 (+37d) | 2026-01-19 → 2026-02-17 (+29d) |  |  |  |  |  |
| ENG-MT-GR-CV-A-130 | Material Approval for Civil Works for Gaurd Room | 2026-01-04 → 2026-02-10 A (+37d) | 2026-01-19 → 2026-02-17 A (+29d) | 14d → 0d | 0% → 100% | 10.75d → none |  | resources Slab on Grade [20]; Slabs [31]; Lightweight Concrete Roof insulation as per Architect's specification [155]; Insulated brickwork. with expanded polystyrene 200mm thick; vertical straight wall complete with accessories . [102]; Common brickwork. 150mm thick; vertical straight wall complete with accessories. [180]; 2 perpendicular layers of cold bitumen coats [155]; 2 layer of 4mm HDPE membrane, 2 perpendicular layers cold bitumen coats [155]; 1 layer EPOXY Paint 300 micron [155]; Membrane fully bonded to prime deck and upstand [155]; Geotextile Filter membrane uv resistance [155]; 85mm thick thermal insulation [155]; 1.5mm thick epdm waterproofing membrane [155]; CW01 - 4500 mm width x 3700 mm height [1]; CW02 - 4500 mm width x 3700 mm height [1]; CW03 - 4500 mm width x 3700 mm height [1]; CW04 - 4500 mm width x 3700 mm height [1]; CW05 - 7500 mm width x 4250 mm height [1]; CW06 - 7500 mm width x 4250 mm height [1]; W01 - 1000 mm width x 2000 mm height [1]; W02 - 2000 mm width x 2000 mm height [2]; W03 - 2000 mm width x 1000 mm height [3]; D2 - 900 mm x 2200 mm height temper door [7]; D3 - 950 mm x 2000 mm height temper door [2]; Supply and install 300*300mm terrazzo tiles with 150mm high skirting at perimeter with approv [133]; Supply and install 300*300mm glazed ceramic wall tiles on cement mortar and including rough [95]; Supply and install internal plastering and 2 coats of acrylic paint at walls includin [216]; Supply and install 300*300mm glazed ceramic wall tiles on cement mortar and including rough and smooth p [12]; Supply and install 600*600mm porcelain tiles with approved quality on 30 mm mortar inclu [125]; Supply and install 12.5mm thk, gypsum board suspended ceiling including s [5]; Office Chairs [4]; Office Tables [4]; Guard Stand [2]; Magnetic Control Access barrier, Automatic Vehicular Barriers to be installed on ground with magnetic access [6]; Supply and install Hand Wash Basin with Water Tap, angle valve, P-trap connected to 50mm diameter s [3]; Supply and install paper towel dispenser, surface mounted, satin finish stainless steel as per approv [3]; Supply and install mirror, size 460*910mm as per approved sample including frames, backing and all accessories to complete. [3]; Supply and install towel ring , surface mounted, satin finish stainless steel as per approved sample including accessories. [3]; Kitchen sink with single bowl with hot/cold water mixer. [3]; Supply and install Base mounted flush tank water Western water closet system with lid connected to 110mm soil pipe [2]; Gate Valves [2]; Slow Closing Valve [2]; 1 meter length 10mm diameter Flexible Hose with insulated handle complete with fork support, index push, vacuum breaker [2]; 50mm diameter [37]; 75mm diameter [4]; 80mm diameter [11]; 100mm diameter [2]; 110mm diameter [12]; 13mm diameter [1]; 15mm diameter [1]; 20mm diameter [1]; 25mm diameter [19]; 32mm diameter [35]; 40mm diameter [12]; 50mm diameter [1]; 20mm diameter [5]; 25mm diameter [12]; Isolation Valve Size 20 [3]; Isolation Valve Size 25 [3]; Isolation Valve Size 32 [5]; Isolation Valve Size 40 [1]; Isolation Valve Size 50 [1]; 20 mm diameter spray head for cold water supply [3]; Supply and install Electric Water Heater set with connection [3]; Water meter complete with accessories. [3]; Roof drain [3]; Vent on a roof to exhaust air [3]; Floor drain 100x80mm [4]; Gully trap 300x300 mm [3]; inspection chamber, size 800x900x1000 [3]; Mini split actual capacity 2 Ton [1]; Ducted split actual capacity 4 Ton [2]; Supply, fabricate, install and testing factory fabricated metal ducts with flanges complete with supports, vanes, [40]; Supplying, installation testing & commissioning of external insulation on ducts [40]; Supply, fix, testing and commissioning of exhaust air/fresh air louvers of powder coated extruded aluminium construction. [1]; Providing, fixing, testing and commissioning of powder coated extruded aluminum sections grills and diffusers with dampers. [2]; Air Grills 150mm x150mm [2]; Air Diffuser 600mm x 600mm [6]; Supply, Installation & Testing of 2 hours Fire rated system for closing the openings between roo [1]; 4.5 KG CO2 Type Fire Extinguishers [4]; 6 KG ABC Type Fire Extinguishers [4]; Floor cleanout, size 75 mm diameter [2]; Floor cleanout, size 110 mm diameter [4]; GRP water tanks capacity of each 1000 liter complete with all fittings, all valves and concrete pad [3]; Guard Room 1 [1]; Guard Room 2 [1]; Guard Room 3 [1]; 30A, 2P AC Disconnect Switch [11]; 20A Duplex Receptacle Floor Mounted [12]; Twin Socket outlet [6]; Twin Socket outlet, Weather Proof [5]; Single gang Lighting switch [6]; 2way Single gang Lighting switch [2]; 36W LED linear Pendant lighting [14]; 36W LED Emergency linear Pendant lighting [6]; 13W recess mounted LED down light fitting [8]; 13W recess emergency mounted LED down light fitting with 1.5 Hr Battery [6]; 10.4W LED Exit light with 1.5 Hr Battery [3]; 4mm2 Cu./FRLSZH Cable [600]; 6mm2 Cu./FRLSZH Cable [110]; 8 Port Industrial PoE Switch 10/100BaseT (0 deg to +70 deg. Celsius) [31]; 06C Optical Fiber SM [2505]; 48C Optical Fiber SM [7010]; 48 Core Splice Closure [7]; Boom Barrier at Security Guard Room [6]; Pedestrian turnstile at Security Guard Room [6]; Access Control Unit [3]; Access Card Reader [3]; Magnetic Lock [3]; Break Glass [3]; Exit Push button [3]; Door Sensor [3]; Biometrics Reader [2]; Pole/Bollard mounted IP( PoE), Automatic Number Plate Recognition (ANPR, camera, 5MP,IP 66, IR illumin [6]; 12U rack dimension (W x H x L) 600 x 625 x 600 mm [1]; Fire Alarm Control panel with fire alarm zoning with Mimic panel with fire alarm zoning [4]; Main Fire Alarm Control panel with fire alarm zoning with Mimic panel with fire alarm zoning [1]; Supply and installation of the addressable manual call point with operation safety glass breaking and pushbutton [17]; Supply and installation of the photoelectric heat & smoke detector with base [41]; Sounder With Beacon [20]; Addressable Control module for Sounders [20]; Addressable Control module for HVAC System [2]; Addressable Monitor module for HVAC System [2]; 2C x 1.5 Sqm FR Rated Armored - Cable For Loop Wiring [1800]; DACT (Auto - Dailer) for 24x7 Civil Defence [1]; Transmission Communication cable - Fiber Optics 12Core [2500]; Transmission Communication cable - Ethernet Cable [500]; Supply, install to site and installation of power supply system for fire alarm control panel [1]; Supply, install to site and installation of power cable [1600]; Fire Fighter’s Telephone Centre [1]; Fireman’s Telephone Jack [2]; Voice Command Center [1] → Slab on Grade; Slabs; Lightweight Concrete Roof insulation as per Architect's specification; Insulated brickwork. with expanded polystyrene 200mm thick; vertical straight wall complete with accessories .; Common brickwork. 150mm thick; vertical straight wall complete with accessories.; 2 perpendicular layers of cold bitumen coats; 2 layer of 4mm HDPE membrane, 2 perpendicular layers cold bitumen coats; 1 layer EPOXY Paint 300 micron; Membrane fully bonded to prime deck and upstand; Geotextile Filter membrane uv resistance; 85mm thick thermal insulation; 1.5mm thick epdm waterproofing membrane; CW01 - 4500 mm width x 3700 mm height; CW02 - 4500 mm width x 3700 mm height; CW03 - 4500 mm width x 3700 mm height; CW04 - 4500 mm width x 3700 mm height; CW05 - 7500 mm width x 4250 mm height; CW06 - 7500 mm width x 4250 mm height; W01 - 1000 mm width x 2000 mm height; W02 - 2000 mm width x 2000 mm height; W03 - 2000 mm width x 1000 mm height; D2 - 900 mm x 2200 mm height temper door; D3 - 950 mm x 2000 mm height temper door; Supply and install 300*300mm terrazzo tiles with 150mm high skirting at perimeter with approv; Supply and install 300*300mm glazed ceramic wall tiles on cement mortar and including rough; Supply and install internal plastering and 2 coats of acrylic paint at walls includin; Supply and install 300*300mm glazed ceramic wall tiles on cement mortar and including rough and smooth p; Supply and install 600*600mm porcelain tiles with approved quality on 30 mm mortar inclu; Supply and install 12.5mm thk, gypsum board suspended ceiling including s; Office Chairs; Office Tables; Guard Stand; Magnetic Control Access barrier, Automatic Vehicular Barriers to be installed on ground with magnetic access; Supply and install Hand Wash Basin with Water Tap, angle valve, P-trap connected to 50mm diameter s; Supply and install paper towel dispenser, surface mounted, satin finish stainless steel as per approv; Supply and install mirror, size 460*910mm as per approved sample including frames, backing and all accessories to complete.; Supply and install towel ring , surface mounted, satin finish stainless steel as per approved sample including accessories.; Kitchen sink with single bowl with hot/cold water mixer.; Supply and install Base mounted flush tank water Western water closet system with lid connected to 110mm soil pipe; Gate Valves; Slow Closing Valve; 1 meter length 10mm diameter Flexible Hose with insulated handle complete with fork support, index push, vacuum breaker; 50mm diameter; 75mm diameter; 80mm diameter; 100mm diameter; 110mm diameter; 13mm diameter; 15mm diameter; 20mm diameter; 25mm diameter; 32mm diameter; 40mm diameter; Isolation Valve Size 20; Isolation Valve Size 25; Isolation Valve Size 32; Isolation Valve Size 40; Isolation Valve Size 50; 20 mm diameter spray head for cold water supply; Supply and install Electric Water Heater set with connection; Water meter complete with accessories.; Roof drain; Vent on a roof to exhaust air; Floor drain 100x80mm; Gully trap 300x300 mm; inspection chamber, size 800x900x1000; Mini split actual capacity 2 Ton; Ducted split actual capacity 4 Ton; Supply, fabricate, install and testing factory fabricated metal ducts with flanges complete with supports, vanes,; Supplying, installation testing & commissioning of external insulation on ducts; Supply, fix, testing and commissioning of exhaust air/fresh air louvers of powder coated extruded aluminium construction.; Providing, fixing, testing and commissioning of powder coated extruded aluminum sections grills and diffusers with dampers.; Air Grills 150mm x150mm; Air Diffuser 600mm x 600mm; Supply, Installation & Testing of 2 hours Fire rated system for closing the openings between roo; 4.5 KG CO2 Type Fire Extinguishers; 6 KG ABC Type Fire Extinguishers; Floor cleanout, size 75 mm diameter; Floor cleanout, size 110 mm diameter; GRP water tanks capacity of each 1000 liter complete with all fittings, all valves and concrete pad; Guard Room 1; Guard Room 2; Guard Room 3; 30A, 2P AC Disconnect Switch; 20A Duplex Receptacle Floor Mounted; Twin Socket outlet; Twin Socket outlet, Weather Proof; Single gang Lighting switch; 2way Single gang Lighting switch; 36W LED linear Pendant lighting; 36W LED Emergency linear Pendant lighting; 13W recess mounted LED down light fitting; 13W recess emergency mounted LED down light fitting with 1.5 Hr Battery; 10.4W LED Exit light with 1.5 Hr Battery; 4mm2 Cu./FRLSZH Cable; 6mm2 Cu./FRLSZH Cable; 8 Port Industrial PoE Switch 10/100BaseT (0 deg to +70 deg. Celsius); 06C Optical Fiber SM; 48C Optical Fiber SM; 48 Core Splice Closure; Boom Barrier at Security Guard Room; Pedestrian turnstile at Security Guard Room; Access Control Unit; Access Card Reader; Magnetic Lock; Break Glass; Exit Push button; Door Sensor; Biometrics Reader; Pole/Bollard mounted IP( PoE), Automatic Number Plate Recognition (ANPR, camera, 5MP,IP 66, IR illumin; 12U rack dimension (W x H x L) 600 x 625 x 600 mm; Fire Alarm Control panel with fire alarm zoning with Mimic panel with fire alarm zoning; Main Fire Alarm Control panel with fire alarm zoning with Mimic panel with fire alarm zoning; Supply and installation of the addressable manual call point with operation safety glass breaking and pushbutton; Supply and installation of the photoelectric heat & smoke detector with base; Sounder With Beacon; Addressable Control module for Sounders; Addressable Control module for HVAC System; Addressable Monitor module for HVAC System; 2C x 1.5 Sqm FR Rated Armored - Cable For Loop Wiring; DACT (Auto - Dailer) for 24x7 Civil Defence; Transmission Communication cable - Fiber Optics 12Core; Transmission Communication cable - Ethernet Cable; Supply, install to site and installation of power supply system for fire alarm control panel; Supply, install to site and installation of power cable; Fire Fighter s Telephone Centre; Fireman s Telephone Jack; Voice Command Center |
| SL1 | **Fence** | 2025-12-23 → 2026-01-15 (+23d) | 2026-01-19 → 2026-03-03 (+43d) |  |  |  |  |  |
| 1 | **Submission of Material** | 2025-12-23 → 2026-01-15 (+23d) | 2026-01-03 → 2026-02-28 (+56d) |  |  |  |  |  |
| ENG-MT-FE-CV-S-110 | Material Submittal for Civil Works for Fence | 2025-12-23 → 2026-01-15 A (+23d) | 2026-01-03 → 2026-02-28 A (+56d) | 10d → 35.12d | 0% → 100% | 28d → none |  |  |
| 2 | **Approval of Material** | 2026-01-04 → 2026-01-22 (+18d) | 2026-01-19 → 2026-03-03 (+43d) |  |  |  |  |  |
| ENG-MT-FE-CV-A-120 | Material Approval for Civil Works for Fence | 2026-01-04 → 2026-01-22 A (+18d) | 2026-01-19 → 2026-03-03 A (+43d) | 14d → 0d | 0% → 100% | 28d → none |  | resources 100 mm thickness lean concrete under the foundation [1500]; Foundation [7310]; Walls [1960]; Beams [288]; Columns [372]; Common brickwork. 300mm thick; vertical straight wall complete with accessories. [8775]; Two Layers of Bituminous Coating [39170]; 20x20 Approved Polysulfide Joint Sealant [415]; Supply and install 33mm thick Lexan cladding blue complete with necessary framings [1114.96]; Supply and install 50mm thick random cut stone cladding complete with 600m [14316.8]; Supply and install External plastering to walls and columns min. 15mm thick with cement mortar of specified grade including [16765]; Supply and install 2 coats of weatherproof paint at walls including one prime coat and [16765]; Guard room coping 350mm [57]; Guard room coping 450mm [27]; Stone coping 500mm [2555]; Stone coping 525mm [1224]; Supply and install MODON Signage with Logo Type 1 [24]; Supply and install MODON Signage Type 2 [24]; Supply and install "Triangle Style" signage [55]; Junction Box for lighting fixture [136]; Trench excavation to receive 2 nos 50mm diameter PVC Conduit, sand bedding and embedded with sa [3505]; Supply, Install, fixings, testing and commissioning 80W LED Projector waterproof DJ effect light including c [3]; Earth Pit [17]; Grounding rod 20mmX3m [9]; Grounding rod with Pit 20mmX3m [4]; Earthing Bar [3]; 120mm2 Tinned copper wire [200]; IR Intrusion Detection System Quad Beams (Tx & Rx) (SL-350 QDM) [60]; Control cable [3110]; CAT6A cable [3110]; Field Equipment Cabinet enclosed outdoor complete with precast concrete footing, suitable for parame [19]; Supply and install 800mm x 800mm x 800mm height concrete handhole with bituminous paint all aroun [19]; 800mm depth minimum Trench excavation to receive 3 nos 50mm diameter PVC Conduit with spacer, sand bedding an [1500]; Hot dipped galvanized cable conduits for CAT6A cable and Control Cables embedded to wall [420]; 400V, 3PH, 60Hz lighting control panel (LCP-02) [1]; 38W, 230V, 1PH, 60Hz fence, led linear uplight lighting, IP66 [136]; 4C-16mm2 CU/XLPE/PVC direct buried armored cable [1300]; 4C-10mm2 CU/XLPE/PVC direct buried armored cable [850]; 16mm2 CU/PVC wire [1300]; 10mm2 CU/PVC wire [850]; 4C-16mm2 CU/XLPE/PVC direct buried armored cable [4080]; 16mm2 CU/PVC wire [4080] → 100 mm thickness lean concrete under the foundation; Foundation; Walls; Beams; Columns; Common brickwork. 300mm thick; vertical straight wall complete with accessories.; Two Layers of Bituminous Coating; 20x20 Approved Polysulfide Joint Sealant; Supply and install 33mm thick Lexan cladding blue complete with necessary framings; Supply and install 50mm thick random cut stone cladding complete with 600m; Supply and install External plastering to walls and columns min. 15mm thick with cement mortar of specified grade including; Supply and install 2 coats of weatherproof paint at walls including one prime coat and; Guard room coping 350mm; Guard room coping 450mm; Stone coping 500mm; Stone coping 525mm; Supply and install MODON Signage with Logo Type 1; Supply and install MODON Signage Type 2; Supply and install "Triangle Style" signage; Junction Box for lighting fixture; Trench excavation to receive 2 nos 50mm diameter PVC Conduit, sand bedding and embedded with sa; Supply, Install, fixings, testing and commissioning 80W LED Projector waterproof DJ effect light including c; Earth Pit; Grounding rod 20mmX3m; Grounding rod with Pit 20mmX3m; Earthing Bar; 120mm2 Tinned copper wire; IR Intrusion Detection System Quad Beams (Tx & Rx) (SL-350 QDM); Control cable; CAT6A cable; Field Equipment Cabinet enclosed outdoor complete with precast concrete footing, suitable for parame; Supply and install 800mm x 800mm x 800mm height concrete handhole with bituminous paint all aroun; 800mm depth minimum Trench excavation to receive 3 nos 50mm diameter PVC Conduit with spacer, sand bedding an; Hot dipped galvanized cable conduits for CAT6A cable and Control Cables embedded to wall; 400V, 3PH, 60Hz lighting control panel (LCP-02); 38W, 230V, 1PH, 60Hz fence, led linear uplight lighting, IP66; 4C-16mm2 CU/XLPE/PVC direct buried armored cable; 4C-10mm2 CU/XLPE/PVC direct buried armored cable; 16mm2 CU/PVC wire; 10mm2 CU/PVC wire |
| SL12 | **Softscape and Planting Works** | 2026-01-15 → 2026-02-28 (+44d) | 2026-01-22 → 2026-03-08 (+45d) |  |  |  |  |  |
| 1 | **Submission of Material** | 2026-01-15 → 2026-02-28 (+44d) | 2026-01-22 → 2026-03-01 (+38d) |  |  |  |  |  |
| ENG-MT-PL-CV-S-150 | Material Submittal for Softscape and Planting Works | 2026-01-15 → 2026-02-28 A (+44d) | 2026-01-22 → 2026-03-01 A (+38d) | 7d → 1.25d | 0% → 100% | 25d → none | ENG-SH-MRK-A-110 SS → MS-CS-PS |  |
| 2 | **Approval of Material** | 2026-01-15 → 2026-03-01 (+45d) | 2026-01-22 → 2026-03-08 (+45d) |  |  |  |  |  |
| ENG-MT-PL-CV-A-160 | Material Approval for Softscape and Planting Works | 2026-01-15 → 2026-03-01 A (+45d) | 2026-01-22 → 2026-03-08 A (+45d) | 7d → 0d | 0% → 100% | 25d → none | ENG-MT-PL-CV-S-150 SS → ENG-MT-PL-CV-S-150 SS, ENG-MT-PL-CV-S-150 FF | resources Price [101924 SAR] → Price |
| 1 | **Long Lead Time Items** | 2026-01-08 → 2026-01-15 (+7d) | 2026-01-22 → 2026-07-02 (+161d) |  |  |  |  |  |
| 1 | **Infrastructure Networks** | 2026-01-08 → 2026-01-15 (+7d) |  |  |  |  |  |  |

| ID | Task | Start | Finish | Duration | Complete | Total float | Predecessors | Other |
| --- | --- | --- | --- | --- | --- | --- | --- | --- |
| 2 | **CCTV System Wroks of Telecom Network** | 2026-01-08 → 2026-01-15 (+7d) |  |  |  |  |  |  |
| 1 | **Submission of Material** | 2026-01-08 → 2026-01-15 (+7d) | 2026-01-14 → 2026-01-18 (+4d) |  |  |  |  |  |
| ENG-MT-CTV-S-110 | Material Submittal for Low Current Works of CCTV Complete System with All Accessories | 2026-01-08 → 2026-01-15 A (+7d) | 2026-01-14 → 2026-01-18 A (+4d) | 6d → 3.25d | 0% → 100% | 25d → none |  |  |
| 2 | **Approval of Material** | 2026-01-15 → 2026-01-18 (+3d) |  |  |  |  |  |  |
| ENG-MT-CTV-A-110 | Material Approval for Low Current Works of CCTV Complete System with All Accessories | 2026-01-15 → 2026-01-18 A (+3d) | 2026-01-22 A | 7d → 0d | 0% → 100% | 25d → none | ENG-MT-CTV-S-110 → ENG-MT-CTV-S-110 SS, ENG-MT-CTV-S-110 FF | resources NVR Server with RAID (5, 6 or 10) to record all cameras storage 80TB with all hardware / software / licenses etc. [2]; VMS Server with RAID (5, 6 or 10) complete Hardware / Software with one Color Laser Printer and all associated [2]; Licenses for Cameras, Workstations and Keyboards [1]; Work Station (MMI with two monitors each, for Monitoring for CCTV & ACS) [1]; Keyboard with joystick for CCTV with all accessories as per specification [1]; Pole mounted IP( PoE) Fixed camera, 5MP,IP 66, IR illumination, 3-8mm varifocal, auto iris lens type [44]; Wall mounted IP( PoE) Fixed camera, 5MP,IP 66, IR illumination, 3-8mm varifocal, auto iris lens type [78]; 5MP Dome camera ceiling Mounted IP (PoE) indoor [17]; 5MP PTZ Multi Sensor Camera IP(PoE) 360 Degree View Outdoor with accessories (IP 66) [7]; 8 Port Industrial PoE Switch 10/100BaseT (0 deg to +70 deg. Celsius) [12]; Filed Equipment cabinet (FEC), with fan and ventilation, NEMEX 4X ,door, minimum size (600x600x400mm) [12]; IP Phone Communication server (hot standby) 50 Port equipped, Gateway, Gatekeeper, H.323, SIP, redundant Power etc. [3]; IP Phone Voice gateway [1]; Voice IP Phone [1]; NMS Server for IP phone and NETWORK Elements [1]; NMS Workstation [1]; Firm Ware, software & licenses [1]; Data Cable [1]; Power Cable [1]; Layer 3, 24 Port non-PoE switch10/1000BaseT/LX (-40 deg to +70 deg. Celsius), stack module and associated [2]; Layer 2, 24 Port non-PoE switch10/1000BaseT (-40 deg to +70 deg. Celsiu [6]; Network Management System Server [2]; Network Management System workstation [1]; 42U rack dimension (W x H x L) 800 x 2000 x 1000 mm [2]; 12U rack dimension (W x H x L) 600 x 625 x 600 mm [1]; 06C Optical Fiber SM [1820]; 48C Optical Fiber SM [5800]; 48 Core Splice Closure [7]; Optical fiber patch cord 5m [24]; Data Cable (STP CAT 6A) [10320]; 3C Power Cable armored 1.5mm2 [10320]; 3C Power Cable armored 2.5 mm2 [10320]; UTP CAT6A Patch Cord 1m/3m/5m [23]; Access Control Unit [5]; Access Card Reader [5]; Magnetic Lock [5]; Break Glass [4]; Exit Push button [5]; Door Sensor [5]; Biometrics Reader [8]; Smart Card Printer [1]; Card Issue Work Station [1]; Photographic Camera with stand [1]; Interface modules with CCTV, Fire and other systems [1] → NVR Server with RAID (5, 6 or 10) to record all cameras storage 80TB with all hardware / software / licenses etc.; VMS Server with RAID (5, 6 or 10) complete Hardware / Software with one Color Laser Printer and all associated; Licenses for Cameras, Workstations and Keyboards; Work Station (MMI with two monitors each, for Monitoring for CCTV & ACS); Keyboard with joystick for CCTV with all accessories as per specification; Pole mounted IP( PoE) Fixed camera, 5MP,IP 66, IR illumination, 3-8mm varifocal, auto iris lens type; Wall mounted IP( PoE) Fixed camera, 5MP,IP 66, IR illumination, 3-8mm varifocal, auto iris lens type; 5MP Dome camera ceiling Mounted IP (PoE) indoor; 5MP PTZ Multi Sensor Camera IP(PoE) 360 Degree View Outdoor with accessories (IP 66); 8 Port Industrial PoE Switch 10/100BaseT (0 deg to +70 deg. Celsius); Filed Equipment cabinet (FEC), with fan and ventilation, NEMEX 4X ,door, minimum size (600x600x400mm); IP Phone Communication server (hot standby) 50 Port equipped, Gateway, Gatekeeper, H.323, SIP, redundant Power etc.; IP Phone Voice gateway; Voice IP Phone; NMS Server for IP phone and NETWORK Elements; NMS Workstation; Firm Ware, software & licenses; Data Cable; Power Cable; Layer 3, 24 Port non-PoE switch10/1000BaseT/LX (-40 deg to +70 deg. Celsius), stack module and associated; Layer 2, 24 Port non-PoE switch10/1000BaseT (-40 deg to +70 deg. Celsiu; Network Management System Server; Network Management System workstation; 42U rack dimension (W x H x L) 800 x 2000 x 1000 mm; 12U rack dimension (W x H x L) 600 x 625 x 600 mm; 06C Optical Fiber SM; 48C Optical Fiber SM; 48 Core Splice Closure; Optical fiber patch cord 5m; Data Cable (STP CAT 6A); 3C Power Cable armored 1.5mm2; 3C Power Cable armored 2.5 mm2; UTP CAT6A Patch Cord 1m/3m/5m; Access Control Unit; Access Card Reader; Magnetic Lock; Break Glass; Exit Push button; Door Sensor; Biometrics Reader; Smart Card Printer; Card Issue Work Station; Photographic Camera with stand; Interface modules with CCTV, Fire and other systems |
| 2 | **Superstructure Works** | 2026-01-14 → 2026-06-24 (+161d) | 2026-01-22 → 2026-07-02 (+161d) |  |  |  |  |  |
| SL | **Pump Stations** | 2026-01-14 → 2026-06-24 (+161d) | 2026-01-22 → 2026-07-02 (+161d) |  |  |  |  |  |
| 1 | **Submission of Material** | 2026-01-14 → 2026-06-24 (+161d) | 2026-01-21 → 2026-07-01 (+161d) |  |  |  |  |  |
| ENG-MT-SPS-MC-S-100 | Material Submittal for Electromechanical Works for Pump Stations | 2026-01-14 → 2026-06-24 (+161d) | 2026-01-21 → 2026-07-01 (+161d) |  |  | 25d → 8.5d | ENG-SH-SPS-S-150 SS → ENG-SH-SPS-S-150_R SS, ENG-SH-SPS-S-150_R FF | resources none → Unskilled Labor [35.42 h]; Electrical Technician [13.66 h]; Plumber [3.2 h]; Carpenter [3.89 h]; Mason [3.1 h]; Steel Fixer [3.96 h]; Skilled Labor [10.68 h] |
| 2 | **Approval of Material** | 2026-01-14 → 2026-06-24 (+161d) | 2026-01-22 → 2026-07-02 (+161d) |  |  |  |  |  |
| ENG-MT-SPS-MC-A-110 | Material Approval for Electromechanical Works for Pump Stations | 2026-01-14 → 2026-06-24 (+161d) | 2026-01-22 → 2026-07-02 (+161d) |  |  | 25d → 8.5d | ENG-MT-SPS-MC-S-100 SS → ENG-MT-SPS-MC-S-100 SS, ENG-MT-SPS-MC-S-100 FF | resources none → Unskilled Labor [40.48 h]; Electrical Technician [15.61 h]; Plumber [3.66 h]; Carpenter [4.45 h]; Mason [3.54 h]; Steel Fixer [4.52 h]; Skilled Labor [12.2 h] |
| SL1 | **Storage Tank (TSE)** | 2026-01-14 → 2026-06-24 (+161d) | 2026-01-22 → 2026-07-02 (+161d) |  |  |  |  |  |
| 1 | **Submission of Material** | 2026-01-14 → 2026-06-24 (+161d) | 2026-01-21 → 2026-07-01 (+161d) |  |  |  |  |  |
| ENG-MT-TSE-MC-S-110 | Material Submittal for Electromechanical Works for Storage Tank (TSE) | 2026-01-14 → 2026-06-24 (+161d) | 2026-01-21 → 2026-07-01 (+161d) |  |  | 25d → 8.5d | ENG-MT-SPS-MC-S-100 SS → ENG-MT-SPS-MC-S-100 SS, ENG-MT-SPS-MC-S-100 FF | resources none → Unskilled Labor [35.42 h]; Electrical Technician [13.66 h]; Plumber [3.2 h]; Carpenter [3.89 h]; Mason [3.1 h]; Steel Fixer [3.96 h]; Skilled Labor [10.68 h] |
| 2 | **Approval of Material** | 2026-01-14 → 2026-06-24 (+161d) | 2026-01-22 → 2026-07-02 (+161d) |  |  |  |  |  |
| ENG-MT-TSE-MC-A-120 | Material Approval for Electromechanical Works for Storage Tank (TSE) | 2026-01-14 → 2026-06-24 (+161d) | 2026-01-22 → 2026-07-02 (+161d) |  |  | 25d → 8.5d | ENG-MT-TSE-MC-S-110 SS → ENG-MT-TSE-MC-S-110 SS, ENG-MT-TSE-MC-S-110 FF | resources none → Unskilled Labor [40.48 h]; Electrical Technician [15.61 h]; Plumber [3.66 h]; Carpenter [4.45 h]; Mason [3.54 h]; Steel Fixer [4.52 h]; Skilled Labor [12.2 h] |
| PROC | **Procurement Cycle** | 2026-01-12 → 2026-01-28 (+16d) | 2026-12-10 → 2027-01-28 (+49d) |  |  |  |  |  |
| NLL | **Short Lead Time Items** | 2026-01-12 → 2026-01-28 (+16d) | 2026-12-10 → 2027-01-28 (+49d) |  |  |  |  |  |
| INF | **Infrastructure Networks** | 2026-01-24 → 2026-01-28 (+4d) | 2026-12-10 → 2027-01-28 (+49d) |  |  |  |  |  |
| RD | **Road Works** | 2026-01-24 → 2026-06-23 (+150d) | 2026-12-10 → 2026-12-05 (-5d) |  |  |  |  |  |
| PO | **Issuance of Purchase Orders** | 2026-01-24 → 2026-06-23 (+150d) | 2026-02-05 → 2026-07-30 (+175d) |  |  |  |  |  |
| 1 | **Road Works** | 2026-01-24 → 2026-06-23 (+150d) | 2026-02-05 → 2026-07-22 (+167d) |  |  |  |  |  |
| PRO-RD-PO-100 | Issuance of Purchase Order for Subgrade of Road Works | 2026-01-24 → 2026-06-23 (+150d) | 2026-02-05 → 2026-06-30 (+145d) | 12d → 7d |  | 44d → 26.75d |  | resources none → Unskilled Labor [18.82 h]; Electrical Technician [7.26 h]; Plumber [1.7 h]; Carpenter [2.07 h]; Mason [1.64 h]; Steel Fixer [2.1 h]; Skilled Labor [5.67 h] |
| PRO-RD-PO-110 | Issuance of Purchase Order for Aggregate Base Course of Road Works | 2026-01-24 → 2026-06-23 (+150d) | 2026-02-05 → 2026-06-30 (+145d) | 12d → 7d |  | 38d → 32.25d |  | resources none → Unskilled Labor [18.82 h]; Electrical Technician [7.26 h]; Plumber [1.7 h]; Carpenter [2.07 h]; Mason [1.64 h]; Steel Fixer [2.1 h]; Skilled Labor [5.67 h] |
| PRO-RD-PO-120 | Issuance of Purchase Order for Prime Coat of Road Works | 2026-01-24 → 2026-07-15 (+172d) | 2026-02-05 → 2026-07-22 (+167d) | 12d → 7d |  | 36d → 28.25d | ENG-MT-RD-A-120 → ENG-MT-RD-A-120, PRO-SW-PO-120 | resources none → Unskilled Labor [18.82 h]; Electrical Technician [7.26 h]; Plumber [1.7 h]; Carpenter [2.07 h]; Mason [1.64 h]; Steel Fixer [2.1 h]; Skilled Labor [5.67 h] |
| PRO-RD-PO-130 | Issuance of Purchase Order for Bituminous Base & Wearing Courses of Road Works | 2026-01-24 → 2026-07-15 (+172d) | 2026-02-05 → 2026-07-22 (+167d) | 12d → 7d |  | 38d → 19.25d | ENG-MT-RD-A-130 → ENG-MT-RD-A-130, PRO-SW-PO-120 | resources none → Unskilled Labor [18.82 h]; Electrical Technician [7.26 h]; Plumber [1.7 h]; Carpenter [2.07 h]; Mason [1.64 h]; Steel Fixer [2.1 h]; Skilled Labor [5.67 h] |
| 2 | **Pavement Works** | 2026-01-24 → 2026-07-23 (+180d) | 2026-02-05 → 2026-07-30 (+175d) |  |  |  |  |  |
| PRO-RD-PO-140 | Issuance of Purchase Order for Interlock Tiles of Landscaping | 2026-01-24 → 2026-07-23 (+180d) | 2026-02-05 → 2026-07-30 (+175d) | 12d → 7d |  | 41d → 19.25d | ENG-MT-RD-A-140 → ENG-MT-RD-A-140, PRO-RD-PO-130 | resources none → Unskilled Labor [18.82 h]; Electrical Technician [7.26 h]; Plumber [1.7 h]; Carpenter [2.07 h]; Mason [1.64 h]; Steel Fixer [2.1 h]; Skilled Labor [5.67 h] |
| PRO-RD-PO-150 | Issuance of Purchase Order for Curbstones of Landscaping | 2026-01-24 → 2026-07-23 (+180d) | 2026-02-05 → 2026-07-30 (+175d) | 12d → 7d |  | 36d → 32.8d | ENG-MT-RD-A-150 → ENG-MT-RD-A-150, PRO-RD-PO-130 | resources none → Unskilled Labor [18.82 h]; Electrical Technician [7.26 h]; Plumber [1.7 h]; Carpenter [2.07 h]; Mason [1.64 h]; Steel Fixer [2.1 h]; Skilled Labor [5.67 h] |
| 3 | **Traffic Signs Boards and Roads Marking** | 2026-01-24 → 2026-07-05 (+162d) | 2026-02-05 → 2026-07-21 (+166d) |  |  |  |  |  |
| PRO-RD-PO-160 | Issuance of Purchase Order for Traffic Signs Boards of Road Works | 2026-01-24 → 2026-07-05 (+162d) | 2026-02-05 → 2026-07-13 (+158d) | 12d → 7d |  | 43d → 52.75d | ENG-MT-TS-A-100 → ENG-MT-TS-A-100, ENG-SH-TSB-A-100 | resources none → Unskilled Labor [18.82 h]; Electrical Technician [7.26 h]; Plumber [1.7 h]; Carpenter [2.07 h]; Mason [1.64 h]; Steel Fixer [2.1 h]; Skilled Labor [5.67 h] |
| PRO-RD-PO-170 | Issuance of Purchase Order for Road Markings of Road Works | 2026-01-24 → 2026-07-13 (+170d) | 2026-02-05 → 2026-07-21 (+166d) | 12d → 7d |  | 44d → 55.5d | ENG-MT-TS-A-110 → ENG-MT-TS-A-110, ENG-MT-TS-S-110, ENG-SH-MRK-A-110 | resources none → Unskilled Labor [18.82 h]; Electrical Technician [7.26 h]; Plumber [1.7 h]; Carpenter [2.07 h]; Mason [1.64 h]; Steel Fixer [2.1 h]; Skilled Labor [5.67 h] |
| MF | **Manufacturing of Material** | 2026-02-07 → 2026-07-01 (+144d) | 2026-10-27 → 2026-11-19 (+23d) |  |  |  |  |  |
| 1 | **Road Works** | 2026-02-07 → 2026-07-01 (+144d) | 2026-10-27 → 2026-11-19 (+23d) |  |  |  |  |  |
| PRO-RD-MF-100 | Manufacturing of Subgrade for Road Works | 2026-02-07 → 2026-07-01 (+144d) | 2026-09-21 → 2026-10-18 (+27d) | 180d → 110d |  | 44d → 31.5d |  | resources none → Unskilled Labor [295.73 h]; Electrical Technician [114.06 h]; Plumber [26.72 h]; Carpenter [32.49 h]; Mason [25.85 h]; Steel Fixer [33.02 h]; Skilled Labor [89.13 h] |
| PRO-RD-MF-110 | Manufacturing of Aggregate Base Course for Road Works | 2026-02-07 → 2026-07-01 (+144d) | 2026-10-15 → 2026-10-28 (+13d) | 200d → 120d |  |  |  | resources none → Unskilled Labor [322.61 h]; Electrical Technician [124.43 h]; Plumber [29.15 h]; Carpenter [35.44 h]; Mason [28.2 h]; Steel Fixer [36.03 h]; Skilled Labor [97.24 h] |
| PRO-RD-MF-120 | Manufacturing of Prime Coat for Road Works | 2026-02-07 → 2026-07-23 (+166d) | 2026-10-27 → 2026-11-19 (+23d) | 210d → 120d |  | 36d → 33d |  | resources none → Unskilled Labor [322.61 h]; Electrical Technician [124.43 h]; Plumber [29.15 h]; Carpenter [35.44 h]; Mason [28.2 h]; Steel Fixer [36.03 h]; Skilled Labor [97.24 h] |
| PRO-RD-MF-130 | Manufacturing of Bituminous Base & Wearing Courses for Road Works | 2026-02-07 → 2026-07-23 (+166d) | 2026-10-27 → 2026-11-19 (+23d) | 210d → 120d |  | 38d → 41d |  | resources none → Unskilled Labor [322.61 h]; Electrical Technician [124.43 h]; Plumber [29.15 h]; Carpenter [35.44 h]; Mason [28.2 h]; Steel Fixer [36.03 h]; Skilled Labor [97.24 h] |
| 2 | **Pavement Works** | 2026-02-07 → 2026-07-31 (+174d) | 2026-10-15 → 2026-10-28 (+13d) |  |  |  |  |  |
| PRO-RD-MF-140 | Manufacturing of Interlock Tiles for Landscaping | 2026-02-07 → 2026-07-31 (+174d) | 2026-10-15 → 2026-10-28 (+13d) | 200d → 90d |  | 41d → 53d |  | resources none → Unskilled Labor [241.96 h]; Electrical Technician [93.32 h]; Plumber [21.86 h]; Carpenter [26.58 h]; Mason [21.15 h]; Steel Fixer [27.02 h]; Skilled Labor [72.93 h] |
| PRO-RD-MF-150 | Manufacturing of Curbstones for Landscaping | 2026-02-07 → 2026-07-31 (+174d) | 2026-10-15 → 2026-10-28 (+13d) | 200d → 90d |  | 36d → 38.8d |  | resources none → Unskilled Labor [241.96 h]; Electrical Technician [93.32 h]; Plumber [21.86 h]; Carpenter [26.58 h]; Mason [21.15 h]; Steel Fixer [27.02 h]; Skilled Labor [72.93 h] |
| 3 | **Traffic Signs Boards and Roads Marking** | 2026-02-07 → 2026-07-13 (+156d) | 2026-10-15 → 2026-11-03 (+19d) |  |  |  |  |  |
| PRO-RD-MF-160 | Manufacturing of Traffic Signs Boards for Road Works | 2026-02-07 → 2026-07-13 (+156d) | 2026-09-28 → 2026-10-21 (+23d) | 185d → 100d |  | 43d → 61.75d |  | resources none → Unskilled Labor [268.84 h]; Electrical Technician [103.69 h]; Plumber [24.29 h]; Carpenter [29.54 h]; Mason [23.5 h]; Steel Fixer [30.02 h]; Skilled Labor [81.03 h] |
| PRO-RD-MF-170 | Manufacturing of Road Markings for Road Works | 2026-02-07 → 2026-07-21 (+164d) | 2026-10-15 → 2026-11-03 (+19d) | 200d → 105d |  | 44d → 66.75d |  | resources none → Unskilled Labor [282.28 h]; Electrical Technician [108.87 h]; Plumber [25.51 h]; Carpenter [31.01 h]; Mason [24.67 h]; Steel Fixer [31.52 h]; Skilled Labor [85.08 h] |
| 1DL | **1st Material Delivery & Site Inspection** | 2026-09-21 → 2026-10-19 (+28d) | 2026-11-10 → 2026-12-03 (+23d) |  |  |  |  |  |
| 1 | **Road Works** | 2026-09-21 → 2026-10-19 (+28d) | 2026-11-10 → 2026-12-03 (+23d) |  |  |  |  |  |
| PRO-RD-1DL-100 | 1ST Material Delivery for Subgrade of Road Works | 2026-09-21 → 2026-10-19 (+28d) | 2026-10-06 → 2026-11-01 (+26d) |  |  | 44d → 27.5d |  | resources none → Unskilled Labor [32.26 h]; Electrical Technician [12.44 h]; Plumber [2.91 h]; Carpenter [3.54 h]; Mason [2.82 h]; Steel Fixer [3.6 h]; Skilled Labor [9.72 h] |
| PRO-RD-1DL-110 | 1ST Material Delivery for Aggregate Base Course of Road Works | 2026-10-15 → 2026-10-29 (+14d) | 2026-10-29 → 2026-11-11 (+13d) |  |  | 38d → 32d |  | resources none → Unskilled Labor [32.26 h]; Electrical Technician [12.44 h]; Plumber [2.91 h]; Carpenter [3.54 h]; Mason [2.82 h]; Steel Fixer [3.6 h]; Skilled Labor [9.72 h] |
| PRO-RD-1DL-120 | 1ST Material Delivery for Prime Coat of Road Works | 2026-10-27 → 2026-11-21 (+25d) | 2026-11-10 → 2026-12-03 (+23d) |  |  | 36d → 28d |  | resources none → Unskilled Labor [32.26 h]; Electrical Technician [12.44 h]; Plumber [2.91 h]; Carpenter [3.54 h]; Mason [2.82 h]; Steel Fixer [3.6 h]; Skilled Labor [9.72 h] |
| PRO-RD-1DL-130 | 1ST Material Delivery for Bituminous Base & Wearing Courses of Road Works | 2026-10-27 → 2026-11-21 (+25d) | 2026-11-10 → 2026-12-03 (+23d) |  |  | 38d → 35d |  | resources none → Unskilled Labor [32.26 h]; Electrical Technician [12.44 h]; Plumber [2.91 h]; Carpenter [3.54 h]; Mason [2.82 h]; Steel Fixer [3.6 h]; Skilled Labor [9.72 h] |
| 2 | **Pavement Works** | 2026-10-15 → 2026-10-29 (+14d) | 2026-10-29 → 2026-11-11 (+13d) |  |  |  |  |  |
| PRO-RD-1DL-140 | 1ST Material Delivery for Interlock Tiles of Landscaping | 2026-10-15 → 2026-10-29 (+14d) | 2026-10-29 → 2026-11-11 (+13d) |  |  | 41d → 45d |  | resources none → Unskilled Labor [32.26 h]; Electrical Technician [12.44 h]; Plumber [2.91 h]; Carpenter [3.54 h]; Mason [2.82 h]; Steel Fixer [3.6 h]; Skilled Labor [9.72 h] |
| PRO-RD-1DL-150 | 1ST Material Delivery for Curbstones of Landscaping | 2026-10-15 → 2026-10-29 (+14d) | 2026-10-29 → 2026-11-11 (+13d) |  |  | 36d → 32.8d |  | resources none → Unskilled Labor [32.26 h]; Electrical Technician [12.44 h]; Plumber [2.91 h]; Carpenter [3.54 h]; Mason [2.82 h]; Steel Fixer [3.6 h]; Skilled Labor [9.72 h] |
| 3 | **Traffic Signs Boards and Roads Marking** | 2026-09-28 → 2026-10-21 (+23d) | 2026-11-02 → 2026-11-25 (+23d) |  |  |  |  |  |
| PRO-RD-1DL-160 | 1ST Material Delivery for Traffic Signs Boards of Road Works | 2026-09-28 → 2026-10-21 (+23d) | 2026-10-15 → 2026-11-08 (+24d) |  |  | 43d → 52.75d |  | resources none → Unskilled Labor [40.33 h]; Electrical Technician [15.55 h]; Plumber [3.64 h]; Carpenter [4.43 h]; Mason [3.52 h]; Steel Fixer [4.5 h]; Skilled Labor [12.15 h] |
| PRO-RD-1DL-170 | 1ST Material Delivery for Road Markings of Road Works | 2026-10-15 → 2026-11-08 (+24d) | 2026-11-02 → 2026-11-25 (+23d) |  |  | 44d → 52.75d |  | resources none → Unskilled Labor [40.33 h]; Electrical Technician [15.55 h]; Plumber [3.64 h]; Carpenter [4.43 h]; Mason [3.52 h]; Steel Fixer [4.5 h]; Skilled Labor [12.15 h] |
| DL | **Material Delivery & Site Inspection** | 2026-10-06 → 2026-11-02 (+27d) | 2026-12-10 → 2026-12-05 (-5d) |  |  |  |  |  |
| 1 | **Pre-Bituminous Construction** | 2026-10-06 → 2026-11-02 (+27d) | 2026-11-18 → 2026-11-12 (-6d) |  |  |  |  |  |
| PRO-R25-RD-DL-100 | Material Delivery & Site Inspection for Subgrade of Road Works | 2026-10-06 → 2026-11-02 (+27d) | 2026-10-29 → 2026-11-02 (+4d) | 20d → 0d |  | 44d → 27.5d |  | resources Subgrade [2963] → Subgrade |
| PRO-R25-RD-DL-110 | Material Delivery & Site Inspection for Aggregate Base Course of Road Works | 2026-10-29 → 2026-11-12 (+14d) | 2026-11-18 → 2026-11-12 (-6d) | 17d → 0d |  | 38d → 32d |  | resources Aggregate base course [1482] → Aggregate base course |
| 4 | **Bituminous Construction** | 2026-11-10 → 2026-12-05 (+25d) | 2026-12-10 → 2026-12-05 (-5d) |  |  |  |  |  |
| PRO-R25-RD-DL-160 | Material Delivery & Site Inspection for Prime Coat of Road Works | 2026-11-10 → 2026-12-05 (+25d) | 2026-12-10 → 2026-12-05 (-5d) | 26d → 0d |  | 36d → 28d |  | resources Bituminous base course (Grading I - Class A), including Prime Coat (MC1) [494] → Bituminous base course (Grading I - Class A), including Prime Coat (MC1) |
| PRO-R25-RD-DL-170 | Material Delivery & Site Inspection for Bituminous Base & Wearing Courses of Road Works | 2026-11-10 → 2026-12-05 (+25d) | 2026-12-10 → 2026-12-05 (-5d) | 26d → 0d |  | 38d → 35d |  | resources Bituminous concrete wearing course, (Grading I - Class A), including tack coat (RC2) [494] → Bituminous concrete wearing course, (Grading I - Class A), including tack coat (RC2) |
| 2 | **Pavement Works** | 2026-10-29 → 2026-11-12 (+14d) | 2026-11-29 → 2026-11-12 (-17d) |  |  |  |  |  |
| PRO-R25-RD-DL-120 | Material Delivery & Site Inspection of Interlock Tiles for Landscaping | 2026-10-29 → 2026-11-12 (+14d) | 2026-11-29 → 2026-11-12 (-17d) | 26d → 0d |  | 41d → 45d |  | resources 60mm thick [27926]; 80mm thick [38996.8] → 60mm thick; 80mm thick |
| PRO-R25-RD-DL-130 | Material Delivery & Site Inspection of Curbstones for Landscaping | 2026-10-29 → 2026-11-12 (+14d) | 2026-11-29 → 2026-11-12 (-17d) | 26d → 0d |  | 36d → 32.8d |  | resources Precast Concrete Curbstone 150X300X900 Type (K1-A) [7267]; Precast Concrete Curbstone 100X200X500 Type (K4) [5638]; Precast Concrete Curbstone 150X300X500 Type (K1-B) [2210]; Precast Concrete Curbstone Type (K1-C) [99]; Flush Kerb Type (D) [188] → Precast Concrete Curbstone 150X300X900 Type (K1-A); Precast Concrete Curbstone 100X200X500 Type (K4); Precast Concrete Curbstone 150X300X500 Type (K1-B); Precast Concrete Curbstone Type (K1-C); Flush Kerb Type (D) |
| 3 | **Traffic Signs Boards and Roads Marking** | 2026-10-15 → 2026-11-08 (+24d) | 2026-12-10 → 2026-11-25 (-15d) |  |  |  |  |  |
| PRO-R25-RD-DL-140 | Material Delivery & Site Inspection of Traffic Signs Boards For Road Works | 2026-10-15 → 2026-11-08 (+24d) | 2026-12-10 → 2026-11-08 (-32d) | 48d → 0d |  | 43d → 74.75d |  | resources Traffic signs, ground mounted, Sheet Aluminum, (breakaway) Single post IPE, with all accessories [99]; Precast Concrete Blister Warning Tactile Paver Brown Finish 300*300*60mm [64] → Traffic signs, ground mounted, Sheet Aluminum, (breakaway) Single post IPE, with all accessories; Precast Concrete Blister Warning Tactile Paver Brown Finish 300*300*60mm |
| PRO-R25-RD-DL-150 | Material Delivery & Site Inspection of Road Markings For Road Works | 2026-11-02 → 2026-11-25 (+23d) | 2026-12-07 → 2026-11-25 (-12d) | 30d → 0d |  | 44d → 52.75d |  | resources Retroreflective Thermoplastic White Traffic lines [965]; Retroreflective Thermoplastic Yellow, Traffic lines [1445] → Retroreflective Thermoplastic White Traffic lines; Retroreflective Thermoplastic Yellow, Traffic lines |
| IR1 | **Softscape and Planting Works** | 2026-01-24 → 2026-07-11 (+168d) | 2026-09-01 → 2026-11-10 (+70d) |  |  |  |  |  |

| ID | Task | Start | Finish | Duration | Total float | Predecessors | Other |
| --- | --- | --- | --- | --- | --- | --- | --- |
| PO | **Issuance of Purchase Orders** | 2026-01-24 → 2026-07-11 (+168d) | 2026-01-29 → 2026-07-19 (+171d) |  |  |  |  |
| 1 | **Main Line Pipes** | 2026-01-24 → 2026-07-11 (+168d) | 2026-01-29 → 2026-07-19 (+171d) |  |  |  |  |
| PRO-IR-PO-150 | Issuance of Purchase Order for Site Furnishings (Seating Bench,Stone Boulders and Gravel) | 2026-01-24 → 2026-07-11 (+168d) | 2026-01-29 → 2026-07-18 (+170d) |  | 42d → 16.75d |  | resources none → Unskilled Labor [16.13 h]; Electrical Technician [6.22 h]; Plumber [1.46 h]; Carpenter [1.77 h]; Mason [1.41 h]; Steel Fixer [1.8 h]; Skilled Labor [4.86 h] |
| PRO-IR-PO-140 | Issuance of Purchase Order for Softscape and Planting Works | 2026-01-24 → 2026-07-12 (+169d) | 2026-01-29 → 2026-07-19 (+171d) |  | 42d → 12.75d |  | resources none → Unskilled Labor [16.13 h]; Electrical Technician [6.22 h]; Plumber [1.46 h]; Carpenter [1.77 h]; Mason [1.41 h]; Steel Fixer [1.8 h]; Skilled Labor [4.86 h] |
| MF | **Manufacturing of Material** | 2026-01-31 → 2026-07-18 (+168d) | 2026-08-04 → 2026-10-17 (+74d) |  |  |  |  |
| 1 | **Main Line Pipes** | 2026-01-31 → 2026-07-18 (+168d) | 2026-08-04 → 2026-10-17 (+74d) |  |  |  |  |
| PRO-IR-MF-150 | Manufacturing of Valves for Site Furnishings (Seating Bench,Stone Boulders and Gravel) | 2026-01-31 → 2026-07-18 (+168d) | 2026-08-04 → 2026-10-16 (+73d) | 145d → 90d | 42d → 18.75d |  | resources none → Unskilled Labor [241.96 h]; Electrical Technician [93.32 h]; Plumber [21.86 h]; Carpenter [26.58 h]; Mason [21.15 h]; Steel Fixer [27.02 h]; Skilled Labor [72.93 h] |
| PRO-IR-MF-140 | Manufacturing of Softscape and Planting Works | 2026-01-31 → 2026-07-19 (+169d) | 2026-07-12 → 2026-10-17 (+97d) | 125d → 90d | 42d → 14.75d |  | resources none → Unskilled Labor [241.96 h]; Electrical Technician [93.32 h]; Plumber [21.86 h]; Carpenter [26.58 h]; Mason [21.15 h]; Steel Fixer [27.02 h]; Skilled Labor [72.93 h] |
| 1DL | **1st Material Delivery & Site Inspection** | 2026-07-12 → 2026-10-17 (+97d) | 2026-08-11 → 2026-10-24 (+74d) |  |  |  |  |
| 1 | **Main Line Pipes** | 2026-07-12 → 2026-10-17 (+97d) | 2026-08-11 → 2026-10-24 (+74d) |  |  |  |  |
| PRO-IR-1DL-150 | 1ST Material Delivery for Site Furnishings (Seating Bench,Stone Boulders and Gravel) | 2026-08-04 → 2026-10-17 (+74d) | 2026-08-11 → 2026-10-22 (+72d) |  | 42d → 16d |  | resources none → Unskilled Labor [16.13 h]; Electrical Technician [6.22 h]; Plumber [1.46 h]; Carpenter [1.77 h]; Mason [1.41 h]; Steel Fixer [1.8 h]; Skilled Labor [4.86 h] |
| PRO-IR-1DL-140 | 1ST Material Delivery for Softscape and Planting Works | 2026-07-12 → 2026-10-17 (+97d) | 2026-07-19 → 2026-10-24 (+97d) |  | 42d → 12.75d |  | resources none → Unskilled Labor [16.13 h]; Electrical Technician [6.22 h]; Plumber [1.46 h]; Carpenter [1.77 h]; Mason [1.41 h]; Steel Fixer [1.8 h]; Skilled Labor [4.86 h] |
| DL | **Material Delivery & Site Inspection** | 2026-07-19 → 2026-10-24 (+97d) | 2026-09-01 → 2026-11-10 (+70d) |  |  |  |  |
| 1 | **Main Line Pipes** | 2026-07-19 → 2026-10-24 (+97d) | 2026-09-01 → 2026-11-10 (+70d) |  |  |  |  |
| PRO-R25-IR-DL-150 | Material Delivery & Site Inspection of Site Furnishings (Seating Bench,Stone Boulders and Gravel) | 2026-08-11 → 2026-10-24 (+74d) | 2026-09-01 → 2026-11-10 (+70d) | 18d → 16d | 42d → 16d |  | resources none → Unskilled Labor [43.01 h]; Electrical Technician [16.59 h]; Plumber [3.89 h]; Carpenter [4.73 h]; Mason [3.76 h]; Steel Fixer [4.8 h]; Skilled Labor [12.96 h] |
| PRO-R25-IR-DL-140 | Material Delivery & Site Inspection of Softscape and Planting Works | 2026-07-19 → 2026-10-24 (+97d) | 2026-08-09 → 2026-11-07 (+90d) | 18d → 12d | 42d → 12.75d |  | resources none → Unskilled Labor [32.26 h]; Electrical Technician [12.44 h]; Plumber [2.91 h]; Carpenter [3.54 h]; Mason [2.82 h]; Steel Fixer [3.6 h]; Skilled Labor [9.72 h] |
| SW | **Sewage Network** | 2026-01-24 → 2026-06-23 (+150d) | 2026-09-29 → 2026-12-28 (+90d) |  |  |  |  |
| PO | **Issuance of Purchase Orders** | 2026-01-24 → 2026-06-23 (+150d) | 2026-01-29 → 2026-07-14 (+166d) |  |  |  |  |
| 1 | **Main Line Sections** | 2026-01-24 → 2026-06-23 (+150d) | 2026-01-29 → 2026-06-29 (+151d) |  |  |  |  |
| PRO-SW-PO-100 | Issuance of Purchase Order for Main Line Pipes of Sewage Network | 2026-01-24 → 2026-06-23 (+150d) | 2026-01-29 → 2026-06-29 (+151d) |  | 29d → 4.5d |  | resources none → Unskilled Labor [16.13 h]; Electrical Technician [6.22 h]; Plumber [1.46 h]; Carpenter [1.77 h]; Mason [1.41 h]; Steel Fixer [1.8 h]; Skilled Labor [4.86 h] |
| PRO-SW-PO-110 | Issuance of Purchase Order for Manhole of Sewage Network | 2026-01-24 → 2026-06-23 (+150d) | 2026-01-29 → 2026-06-29 (+151d) |  | 42d → 11.5d |  | resources none → Unskilled Labor [16.13 h]; Electrical Technician [6.22 h]; Plumber [1.46 h]; Carpenter [1.77 h]; Mason [1.41 h]; Steel Fixer [1.8 h]; Skilled Labor [4.86 h] |
| 3 | **Testing and Finishes** | 2026-01-24 → 2026-07-08 (+165d) | 2026-01-29 → 2026-07-14 (+166d) |  |  |  |  |
| PRO-SW-PO-120 | Issuance of Purchase Order for Manhole Covers of Sewage Network | 2026-01-24 → 2026-07-08 (+165d) | 2026-01-29 → 2026-07-14 (+166d) |  | 41d → 2d |  | resources none → Unskilled Labor [16.13 h]; Electrical Technician [6.22 h]; Plumber [1.46 h]; Carpenter [1.77 h]; Mason [1.41 h]; Steel Fixer [1.8 h]; Skilled Labor [4.86 h] |
| MF | **Manufacturing of Material** | 2026-01-31 → 2026-06-30 (+150d) | 2026-08-22 → 2026-11-21 (+91d) |  |  |  |  |
| 1 | **Main Line Sections** | 2026-01-31 → 2026-06-30 (+150d) | 2026-04-16 → 2026-08-08 (+114d) |  |  |  |  |
| PRO-SW-MF-100 | Manufacturing of Main Line Pipes for Sewage Network | 2026-01-31 → 2026-06-30 (+150d) | 2026-04-02 → 2026-07-19 (+108d) | 43d → 20d | 29d → 5.25d |  | resources none → Unskilled Labor [53.77 h]; Electrical Technician [20.74 h]; Plumber [4.86 h]; Carpenter [5.91 h]; Mason [4.7 h]; Steel Fixer [6 h]; Skilled Labor [16.21 h] |
| PRO-SW-MF-110 | Manufacturing of Manholes for Sewage Network | 2026-01-31 → 2026-06-30 (+150d) | 2026-04-16 → 2026-08-08 (+114d) | 55d → 40d | 42d → 13.25d |  | resources none → Unskilled Labor [107.54 h]; Electrical Technician [41.48 h]; Plumber [9.72 h]; Carpenter [11.81 h]; Mason [9.4 h]; Steel Fixer [12.01 h]; Skilled Labor [32.41 h] |
| 3 | **Testing and Finishes** | 2026-01-31 → 2026-07-15 (+165d) | 2026-08-22 → 2026-11-21 (+91d) |  |  |  |  |
| PRO-SW-MF-120 | Manufacturing of Manhole Covers for Sewage Network | 2026-01-31 → 2026-07-15 (+165d) | 2026-08-22 → 2026-11-21 (+91d) | 160d → 130d | 41d → 2d |  | resources none → Unskilled Labor [349.5 h]; Electrical Technician [134.8 h]; Plumber [31.58 h]; Carpenter [38.4 h]; Mason [30.55 h]; Steel Fixer [39.03 h]; Skilled Labor [105.34 h] |
| 1DL | **1st Material Delivery & Site Inspection** | 2026-04-02 → 2026-07-20 (+109d) | 2026-08-29 → 2026-11-28 (+91d) |  |  |  |  |
| 1 | **Main Line Sections** | 2026-04-02 → 2026-07-20 (+109d) | 2026-04-23 → 2026-08-15 (+114d) |  |  |  |  |
| PRO-SW-1DL-100 | 1ST Material Delivery for Main Line Pipes of Sewage Network | 2026-04-02 → 2026-07-20 (+109d) | 2026-04-09 → 2026-07-26 (+108d) |  | 29d → 4.5d |  | resources none → Unskilled Labor [16.13 h]; Electrical Technician [6.22 h]; Plumber [1.46 h]; Carpenter [1.77 h]; Mason [1.41 h]; Steel Fixer [1.8 h]; Skilled Labor [4.86 h] |
| PRO-SW-1DL-110 | 1ST Material Delivery for Manholes of Sewage Network | 2026-04-16 → 2026-08-09 (+115d) | 2026-04-23 → 2026-08-15 (+114d) |  | 42d → 11.5d |  | resources none → Unskilled Labor [16.13 h]; Electrical Technician [6.22 h]; Plumber [1.46 h]; Carpenter [1.77 h]; Mason [1.41 h]; Steel Fixer [1.8 h]; Skilled Labor [4.86 h] |
| 3 | **Testing and Finishes** | 2026-08-22 → 2026-11-22 (+92d) | 2026-08-29 → 2026-11-28 (+91d) |  |  |  |  |
| PRO-SW-1DL-120 | 1ST Material Delivery for Manholes Covers of Sewage Network | 2026-08-22 → 2026-11-22 (+92d) | 2026-08-29 → 2026-11-28 (+91d) |  | 41d → 2d |  | resources none → Unskilled Labor [16.13 h]; Electrical Technician [6.22 h]; Plumber [1.46 h]; Carpenter [1.77 h]; Mason [1.41 h]; Steel Fixer [1.8 h]; Skilled Labor [4.86 h] |
| DL | **Material Delivery & Site Inspection** | 2026-04-09 → 2026-07-27 (+109d) | 2026-09-29 → 2026-12-28 (+90d) |  |  |  |  |
| 1 | **Main Line Sections** | 2026-04-09 → 2026-07-27 (+109d) | 2026-05-14 → 2026-08-09 (+87d) |  |  |  |  |
| PRO-R25-SW-DL-100 | Material Delivery & Site Inspection of Main Line Pipes for Sewage Network | 2026-04-09 → 2026-07-27 (+109d) | 2026-04-30 → 2026-07-27 (+88d) | 18d → 0d | 30d → 14d |  | resources Depth Between 0m to 1.50m [40]; Depth Between 1.50m to 2.50m [246]; Depth > 2.50m [10]; Depth Between 0m to 1.50m [22]; Depth Between 1.50m to 2.50m [1600]; Depth Between 2.50m to 3.50m [75]; Depth > 3.50m [15]; HDPE Force Main (PE 100, SDR 11, PN 16 bar) DN 160 mm diameter, in trenches depth: 0- 1.5m [25]; HDPE Force Main (PE 100, SDR 11, PN 16 bar) DN 160 mm diameter, in trenches depth: 1.51- 2.5m [40] → Depth Between 0m to 1.50m; Depth Between 1.50m to 2.50m; Depth > 2.50m; Depth Between 2.50m to 3.50m; Depth > 3.50m; HDPE Force Main (PE 100, SDR 11, PN 16 bar) DN 160 mm diameter, in trenches depth: 0- 1.5m; HDPE Force Main (PE 100, SDR 11, PN 16 bar) DN 160 mm diameter, in trenches depth: 1.51- 2.5m |
| PRO-R25-SW-DL-110 | Material Delivery & Site Inspection of Manholes for Sewage Network | 2026-04-23 → 2026-08-09 (+108d) | 2026-05-14 → 2026-08-09 (+87d) | 18d → 0d | 42d → 24.5d | PRO-SW-1DL-110, PRO-SW-MF-110 SS, PRO-SW-MF-110 FF → PRO-SW-1DL-110 SS, PRO-SW-MF-110 SS, PRO-SW-MF-110 FF | resources Depth: 0 - 1.5m [2]; Depth: 1.51 - 2.5m [35]; Depth: 2.51 - 3.5m [2]; Depth > 3.50m [1] → Depth: 0 - 1.5m; Depth: 1.51 - 2.5m; Depth: 2.51 - 3.5m; Depth > 3.50m |
| 3 | **Testing and Finishes** | 2026-08-29 → 2026-11-29 (+92d) | 2026-09-29 → 2026-12-28 (+90d) |  |  |  |  |
| PRO-R25-SW-DL-120 | Material Delivery & Site Inspection of Manholes Covers for Sewage Network | 2026-08-29 → 2026-11-29 (+92d) | 2026-09-29 → 2026-12-28 (+90d) |  | 41d → 2d |  | resources none → Unskilled Labor [69.9 h]; Electrical Technician [26.96 h]; Plumber [6.32 h]; Carpenter [7.68 h]; Mason [6.11 h]; Steel Fixer [7.81 h]; Skilled Labor [21.07 h] |
| SD | **Storm Drainage Network** | 2026-01-24 → 2026-06-23 (+150d) | 2026-10-05 → 2026-12-10 (+66d) |  |  |  |  |
| MF | **Manufacturing of Material** | 2026-01-31 → 2026-06-30 (+150d) | 2026-08-27 → 2026-10-22 (+56d) |  |  |  |  |
| 1 | **Main Line Sections** | 2026-01-31 → 2026-06-30 (+150d) | 2026-04-05 → 2026-08-08 (+125d) |  |  |  |  |
| PRO-SD-MF-100 | Manufacturing of Materials for Manholes of Storm Drainage Network | 2026-01-31 → 2026-06-30 (+150d) | 2026-04-05 → 2026-08-08 (+125d) | 45d → 40d | 38d → 0d |  | resources none → Unskilled Labor [107.54 h]; Electrical Technician [41.48 h]; Plumber [9.72 h]; Carpenter [11.81 h]; Mason [9.4 h]; Steel Fixer [12.01 h]; Skilled Labor [32.41 h] |
| PRO-SD-MF-110 | Manufacturing of Materials for Main Line Pipes of Storm Drainage Network | 2026-01-31 → 2026-07-01 (+151d) | 2026-04-05 → 2026-07-09 (+95d) | 45d → 8d | 0d → 6d |  | resources none → Unskilled Labor [21.51 h]; Electrical Technician [8.3 h]; Plumber [1.94 h]; Carpenter [2.36 h]; Mason [1.88 h]; Steel Fixer [2.4 h]; Skilled Labor [6.48 h] |
| 2 | **Catch Basin Sections** | 2026-01-31 → 2026-06-30 (+150d) | 2026-03-07 → 2026-07-19 (+134d) |  |  |  |  |
| PRO-SD-MF-130 | Manufacturing of Materials for Catch Basins of Storm Drainage Network | 2026-01-31 → 2026-06-30 (+150d) | 2026-03-07 → 2026-07-19 (+134d) | 26d → 20d | 35d → 30d |  | resources none → Unskilled Labor [53.77 h]; Electrical Technician [20.74 h]; Plumber [4.86 h]; Carpenter [5.91 h]; Mason [4.7 h]; Steel Fixer [6 h]; Skilled Labor [16.21 h] |
| PRO-SD-MF-150 | Manufacturing of Materials for Catch Basin Pipes of Storm Drainage Network | 2026-01-31 → 2026-06-30 (+150d) | 2026-03-07 → 2026-07-19 (+134d) | 26d → 20d | 35d → 30d |  | resources none → Unskilled Labor [53.77 h]; Electrical Technician [20.74 h]; Plumber [4.86 h]; Carpenter [5.91 h]; Mason [4.7 h]; Steel Fixer [6 h]; Skilled Labor [16.21 h] |
| 3 | **Testing and Finishes** | 2026-01-31 → 2026-07-15 (+165d) | 2026-08-27 → 2026-10-22 (+56d) |  |  |  |  |
| PRO-SD-MF-120 | Manufacturing of Materials for Manhole Covers of Storm Drainage Network | 2026-01-31 → 2026-07-15 (+165d) | 2026-08-27 → 2026-10-22 (+56d) | 165d → 100d | 40d → 31d |  | resources none → Unskilled Labor [268.84 h]; Electrical Technician [103.69 h]; Plumber [24.29 h]; Carpenter [29.54 h]; Mason [23.5 h]; Steel Fixer [30.02 h]; Skilled Labor [81.03 h] |
| PRO-SD-MF-140 | Manufacturing of Materials for Catch Basin Covers of Storm Drainage Network | 2026-01-31 → 2026-07-15 (+165d) | 2026-08-10 → 2026-10-22 (+73d) | 150d → 100d | 43d → 26d |  | resources none → Unskilled Labor [268.84 h]; Electrical Technician [103.69 h]; Plumber [24.29 h]; Carpenter [29.54 h]; Mason [23.5 h]; Steel Fixer [30.02 h]; Skilled Labor [81.03 h] |
| PO | **Issuance of Purchase Orders** | 2026-01-24 → 2026-06-23 (+150d) | 2026-01-29 → 2026-07-14 (+166d) |  |  |  |  |
| 1 | **Main Line Sections** | 2026-01-24 → 2026-06-23 (+150d) | 2026-01-29 → 2026-07-01 (+153d) |  |  |  |  |
| PRO-SD-PO-100 | Issuance of Purchase Order for Manholes of Storm Drainage Network | 2026-01-24 → 2026-06-23 (+150d) | 2026-01-29 → 2026-06-30 (+152d) | 6d → 6.2d | 38d → 0.05d |  | resources none → Unskilled Labor [16.67 h]; Electrical Technician [6.43 h]; Plumber [1.51 h]; Carpenter [1.83 h]; Mason [1.46 h]; Steel Fixer [1.86 h]; Skilled Labor [5.02 h] |
| PRO-SD-PO-110 | Issuance of Purchase Order for Main Line Pipes of Storm Drainage Network | 2026-01-24 → 2026-06-28 (+155d) | 2026-01-29 → 2026-07-01 (+153d) | 6d → 3d | 0d → 0.75d | ENG-MT-SD-ML-A-110 → ENG-MT-SD-ML-A-110, MS-CS-PS SS, ENG-SH-SD-CB-S-100_R | resources none → Unskilled Labor [8.07 h]; Electrical Technician [3.11 h]; Plumber [0.73 h]; Carpenter [0.89 h]; Mason [0.7 h]; Steel Fixer [0.9 h]; Skilled Labor [2.43 h] |
| 2 | **Catch Basin Sections** | 2026-01-24 → 2026-06-23 (+150d) | 2026-01-29 → 2026-06-29 (+151d) |  |  |  |  |
| PRO-SD-PO-130 | Issuance of Purchase Order for Catch Basins of Storm Drainage Network | 2026-01-24 → 2026-06-23 (+150d) | 2026-01-29 → 2026-06-29 (+151d) |  | 35d → 26.25d |  | resources none → Unskilled Labor [16.13 h]; Electrical Technician [6.22 h]; Plumber [1.46 h]; Carpenter [1.77 h]; Mason [1.41 h]; Steel Fixer [1.8 h]; Skilled Labor [4.86 h] |
| PRO-SD-PO-150 | Issuance of Purchase Order for Catch Basin Pipes of Storm Drainage Network | 2026-01-24 → 2026-06-23 (+150d) | 2026-01-29 → 2026-06-29 (+151d) |  | 35d → 26.25d |  | resources none → Unskilled Labor [16.13 h]; Electrical Technician [6.22 h]; Plumber [1.46 h]; Carpenter [1.77 h]; Mason [1.41 h]; Steel Fixer [1.8 h]; Skilled Labor [4.86 h] |
| 3 | **Testing and Finishes** | 2026-01-24 → 2026-07-08 (+165d) | 2026-01-29 → 2026-07-14 (+166d) |  |  |  |  |
| PRO-SD-PO-120 | Issuance of Purchase Order for Manhole Covers of Storm Drainage Network | 2026-01-24 → 2026-07-08 (+165d) | 2026-01-29 → 2026-07-14 (+166d) |  | 40d → 26.25d |  | resources none → Unskilled Labor [16.13 h]; Electrical Technician [6.22 h]; Plumber [1.46 h]; Carpenter [1.77 h]; Mason [1.41 h]; Steel Fixer [1.8 h]; Skilled Labor [4.86 h] |
| PRO-SD-PO-140 | Issuance of Purchase Order for Catch Basin Covers of Storm Drainage Network | 2026-01-24 → 2026-07-08 (+165d) | 2026-01-29 → 2026-07-14 (+166d) |  | 43d → 22.25d |  | resources none → Unskilled Labor [16.13 h]; Electrical Technician [6.22 h]; Plumber [1.46 h]; Carpenter [1.77 h]; Mason [1.41 h]; Steel Fixer [1.8 h]; Skilled Labor [4.86 h] |
| 1DL | **1st Material Delivery & Site Inspection** | 2026-03-07 → 2026-07-09 (+124d) | 2026-09-03 → 2026-10-29 (+56d) |  |  |  |  |
| 1 | **Main Line Sections** | 2026-04-05 → 2026-07-09 (+95d) | 2026-04-11 → 2026-07-16 (+96d) |  |  |  |  |
| PRO-SD-1DL-110 | 1ST Material Delivery for Main Line Pipes of Storm Drainage Network | 2026-04-05 → 2026-07-09 (+95d) | 2026-04-11 → 2026-07-16 (+96d) | 5d → 6d | 0d → 5d |  | resources none → Unskilled Labor [16.13 h]; Electrical Technician [6.22 h]; Plumber [1.46 h]; Carpenter [1.77 h]; Mason [1.41 h]; Steel Fixer [1.8 h]; Skilled Labor [4.86 h] |
| 2 | **Catch Basin Sections** | 2026-03-07 → 2026-07-20 (+135d) | 2026-03-16 → 2026-07-26 (+132d) |  |  |  |  |
| PRO-SD-1DL-120 | 1ST Material Delivery for Catch Basin Pipes of Storm Drainage Network | 2026-03-07 → 2026-07-20 (+135d) | 2026-03-16 → 2026-07-26 (+132d) |  | 35d → 26d |  | resources none → Unskilled Labor [16.13 h]; Electrical Technician [6.22 h]; Plumber [1.46 h]; Carpenter [1.77 h]; Mason [1.41 h]; Steel Fixer [1.8 h]; Skilled Labor [4.86 h] |
| PRO-SD-1DL-130 | 1ST Material Delivery for Catch Basins of Storm Drainage Network | 2026-03-07 → 2026-07-20 (+135d) | 2026-03-16 → 2026-07-26 (+132d) |  | 35d → 26d |  | resources none → Unskilled Labor [16.13 h]; Electrical Technician [6.22 h]; Plumber [1.46 h]; Carpenter [1.77 h]; Mason [1.41 h]; Steel Fixer [1.8 h]; Skilled Labor [4.86 h] |
| 3 | **Testing and Finishes** | 2026-08-10 → 2026-10-24 (+75d) | 2026-09-03 → 2026-10-29 (+56d) |  |  |  |  |
| PRO-SD-1DL-140 | 1ST Material Delivery for Manholes Covers of Storm Drainage Network | 2026-08-27 → 2026-10-24 (+58d) | 2026-09-03 → 2026-10-29 (+56d) |  | 40d → 26d |  | resources none → Unskilled Labor [16.13 h]; Electrical Technician [6.22 h]; Plumber [1.46 h]; Carpenter [1.77 h]; Mason [1.41 h]; Steel Fixer [1.8 h]; Skilled Labor [4.86 h] |

| ID | Task | Start | Finish | Duration | Complete | Total float | Predecessors | Other |
| --- | --- | --- | --- | --- | --- | --- | --- | --- |
| PRO-SD-1DL-150 | 1ST Material Delivery for Catch Basin Covers of Storm Drainage Network | 2026-08-10 → 2026-10-24 (+75d) | 2026-08-17 → 2026-10-29 (+73d) |  |  | 43d → 22d |  | resources none → Unskilled Labor [16.13 h]; Electrical Technician [6.22 h]; Plumber [1.46 h]; Carpenter [1.77 h]; Mason [1.41 h]; Steel Fixer [1.8 h]; Skilled Labor [4.86 h] |
| DL | **Material Delivery & Site Inspection** | 2026-03-16 → 2026-07-16 (+122d) | 2026-10-05 → 2026-12-10 (+66d) |  |  |  |  |  |
| 1 | **Main Line Sections** | 2026-04-11 → 2026-07-16 (+96d) | 2026-04-19 → 2026-08-09 (+112d) |  |  |  |  |  |
| PRO-R25-SD-DL-120 | Material Delivery & Site Inspection of Main Line Pipes of Storm Drainage Network | 2026-04-11 → 2026-07-16 (+96d) | 2026-04-19 → 2026-07-16 (+88d) | 7d → 0d |  | 0d → 5d |  | resources Depth Between 1.50m to 2.50m [548]; Depth Between 2.50m to 3.50m [439]; Depth > 3.50m [15]; Depth Between 2.50m to 3.50m [191]; Depth Between 0m to 1.50m [28]; Depth Between 1.50m to 2.50m [10]; Depth Between 2.50m to 3.50m [94]; Depth > 3.50m [7]; Depth Between 2.50m to 3.50m [121]; Depth Between 3.50m to 4.50m [371]; Depth > 4.50m [15]; Depth Between 3.50m to 4.50m [737]; Depth > 4.50m [25] → Depth Between 1.50m to 2.50m; Depth Between 2.50m to 3.50m; Depth > 3.50m; Depth Between 0m to 1.50m; Depth Between 3.50m to 4.50m; Depth > 4.50m |
| PRO-R25-SD-DL-100 | Material Delivery & Site Inspection of Manholes of Storm Drainage Network | 2026-04-11 → 2026-08-09 (+120d) | 2026-04-19 → 2026-08-09 (+112d) | 7d → 0d |  | 38d → 0d | 1ST Material Delivery for Manholes of Storm Drainage Network, PRO-SD-MF-100 → PRO-SD-MF-100 | resources MH depth 1.5 - 2.5m [20]; MH depth 2.5 - 3.5m [17]; MH depth > 3.50m [1]; MH depth 2.5 -3.5m [2] → MH depth 1.5 - 2.5m; MH depth 2.5 - 3.5m; MH depth > 3.50m; MH depth 2.5 -3.5m |
| 2 | **Catch Basin Sections** | 2026-03-16 → 2026-07-27 (+133d) | 2026-05-13 → 2026-07-27 (+75d) |  |  |  |  |  |
| PRO-R25-SD-DL-110 | Material Delivery & Site Inspection of Catch Basin Pipes for Storm Drainage Network | 2026-03-16 → 2026-07-27 (+133d) | 2026-05-13 → 2026-07-27 (+75d) | 46d → 0d |  | 35d → 36d |  | resources Depth Between 0m to 1.50m [95]; Depth Between 1.50m to 2.50m [2819]; Depth > 2.50m [15] → Depth Between 0m to 1.50m; Depth Between 1.50m to 2.50m; Depth > 2.50m |
| PRO-R25-SD-DL-130 | Material Delivery & Site Inspection of Catch Basins for Storm Drainage Network | 2026-03-16 → 2026-07-27 (+133d) | 2026-05-13 → 2026-07-27 (+75d) | 46d → 0d |  | 35d → 36d |  | resources Single Catch Basin 1000mm x 1000mm [197]; Double Catch Basin 1200mm x 2300mm [4] → Single Catch Basin 1000mm x 1000mm; Double Catch Basin 1200mm x 2300mm |
| 3 | **Testing and Finishes** | 2026-08-17 → 2026-10-31 (+75d) | 2026-10-05 → 2026-12-10 (+66d) |  |  |  |  |  |
| PRO-R25-SD-DL-150 | Material Delivery & Site Inspection of Catch Basin Covers for Storm Drainage Network | 2026-08-17 → 2026-10-31 (+75d) | 2026-09-16 → 2026-11-22 (+67d) | 26d → 20d |  | 43d → 22d |  | resources none → Unskilled Labor [53.77 h]; Electrical Technician [20.74 h]; Plumber [4.86 h]; Carpenter [5.91 h]; Mason [4.7 h]; Steel Fixer [6 h]; Skilled Labor [16.21 h] |
| PRO-R25-SD-DL-140 | Material Delivery & Site Inspection of Manholes Covers for Storm Drainage Network | 2026-09-03 → 2026-11-11 (+69d) | 2026-10-05 → 2026-12-10 (+66d) |  |  | 40d → 16d |  | resources none → Unskilled Labor [69.9 h]; Electrical Technician [26.96 h]; Plumber [6.32 h]; Carpenter [7.68 h]; Mason [6.11 h]; Steel Fixer [7.81 h]; Skilled Labor [21.07 h] |
| PW | **Potable Water Network** | 2026-01-24 → 2026-04-01 (+67d) | 2026-11-19 → 2026-12-13 (+24d) |  |  |  |  |  |
| PO | **Issuance of Purchase Orders** | 2026-01-24 → 2026-04-02 (+68d) | 2026-02-03 → 2026-07-19 (+166d) |  |  |  |  |  |
| 1 | **Main Line Sections** | 2026-01-24 → 2026-04-02 (+68d) | 2026-01-29 → 2026-07-14 (+166d) |  |  |  |  |  |
| PRO-PW-PO-100 | Issuance of Purchase Order for Main Line Pipes of Potable Water Network(Completed) | 2026-01-24 → 2026-04-02 A (+68d) | 2026-01-29 → 2026-06-15 A (+137d) | 6d → 60.5d | 0% → 100% | 41d → none |  | was named Issuance of Purchase Order for Main Line Pipes of Potable Water Network |
| PRO-PW-PO-110 | Issuance of Purchase Order for Valves of Potable Water Network | 2026-01-24 → 2026-07-08 (+165d) | 2026-01-29 → 2026-07-14 (+166d) |  |  | 43d → 19.75d |  | resources none → Unskilled Labor [16.13 h]; Electrical Technician [6.22 h]; Plumber [1.46 h]; Carpenter [1.77 h]; Mason [1.41 h]; Steel Fixer [1.8 h]; Skilled Labor [4.86 h] |
| 3 | **Fire Hydrant** | 2026-01-24 → 2026-07-08 (+165d) | 2026-02-03 → 2026-07-19 (+166d) |  |  |  |  |  |
| PRO-PW-PO-120 | Issuance of Purchase Order for Fire Hydrants of Potable Water Network | 2026-01-24 → 2026-07-08 (+165d) | 2026-02-03 → 2026-07-19 (+166d) |  |  | 37d → 34.75d |  | resources none → Unskilled Labor [26.88 h]; Electrical Technician [10.37 h]; Plumber [2.43 h]; Carpenter [2.95 h]; Mason [2.35 h]; Steel Fixer [3 h]; Skilled Labor [8.1 h] |
| 4 | **Testing and Finishes** | 2026-01-24 → 2026-07-08 (+165d) | 2026-02-03 → 2026-07-19 (+166d) |  |  |  |  |  |
| PRO-PW-PO-130 | Issuance of Purchase Order for Surface Box of Potable Water Network | 2026-01-24 → 2026-07-08 (+165d) | 2026-02-03 → 2026-07-19 (+166d) |  |  | 22d → 30.25d |  | resources none → Unskilled Labor [26.88 h]; Electrical Technician [10.37 h]; Plumber [2.43 h]; Carpenter [2.95 h]; Mason [2.35 h]; Steel Fixer [3 h]; Skilled Labor [8.1 h] |
| MF | **Manufacturing of Material** | 2026-01-31 → 2026-04-04 (+63d) | 2026-10-13 → 2026-11-06 (+24d) |  |  |  |  |  |
| 1 | **Main Line Sections** | 2026-01-31 → 2026-04-04 (+63d) | 2026-08-05 → 2026-10-12 (+68d) |  |  |  |  |  |
| PRO-PW-MF-100 | Manufacturing of Main Line Pipes for Potable Water Network(Completed) | 2026-01-31 → 2026-04-04 A (+63d) | 2026-06-13 → 2026-06-15 A (+2d) | 100d → 30d | 0% → 100% | 41d → none | PRO-PW-PO-100 → PRO-PW-PO-100 SS | was named Manufacturing of Main Line Pipes for Potable Water Network |
| PRO-PW-MF-110 | Manufacturing of Valves for Potable Water Network | 2026-02-07 → 2026-07-15 (+158d) | 2026-08-05 → 2026-10-12 (+68d) | 140d → 90d |  | 37d → 22.5d |  | resources none → Unskilled Labor [241.96 h]; Electrical Technician [93.32 h]; Plumber [21.86 h]; Carpenter [26.58 h]; Mason [21.15 h]; Steel Fixer [27.02 h]; Skilled Labor [72.93 h] |
| 3 | **Fire Hydrant** | 2026-02-04 → 2026-07-20 (+166d) | 2026-06-29 → 2026-09-17 (+80d) |  |  |  |  |  |
| PRO-PW-MF-120 | Manufacturing of Fire Hydrants for Potable Water Network | 2026-02-04 → 2026-07-20 (+166d) | 2026-06-29 → 2026-09-17 (+80d) | 110d → 60d |  | 37d → 40.5d |  | resources none → Unskilled Labor [161.31 h]; Electrical Technician [62.21 h]; Plumber [14.57 h]; Carpenter [17.72 h]; Mason [14.1 h]; Steel Fixer [18.01 h]; Skilled Labor [48.62 h] |
| 4 | **Testing and Finishes** | 2026-02-04 → 2026-07-20 (+166d) | 2026-10-13 → 2026-11-06 (+24d) |  |  |  |  |  |
| PRO-PW-MF-130 | Manufacturing for Surface Box of Potable Water Network | 2026-02-04 → 2026-07-20 (+166d) | 2026-10-13 → 2026-11-06 (+24d) | 200d → 110d |  | 22d → 35d |  | resources none → Unskilled Labor [295.73 h]; Electrical Technician [114.06 h]; Plumber [26.72 h]; Carpenter [32.49 h]; Mason [25.85 h]; Steel Fixer [33.02 h]; Skilled Labor [89.13 h] |
| 1DL | **1st Material Delivery & Site Inspection** | 2026-06-13 → 2026-04-05 (-69d) | 2026-10-20 → 2026-11-12 (+23d) |  |  |  |  |  |
| 1 | **Main Line Sections** | 2026-06-13 → 2026-04-05 (-69d) | 2026-08-12 → 2026-10-19 (+68d) |  |  |  |  |  |
| PRO-PW-1DL-100 | 1ST Material Delivery for Main Line Pipes of Potable Water Network(Completed) | 2026-06-13 → 2026-04-05 A (-69d) | 2026-06-20 → 2026-06-15 A (-5d) | 6d → 58.5d | 0% → 100% | 41d → none | PRO-PW-MF-100 → PRO-PW-MF-100 SS | was named 1ST Material Delivery for Main Line Pipes of Potable Water Network |
| PRO-PW-1DL-110 | 1ST Material Delivery for Valves of Potable Water Network | 2026-08-05 → 2026-10-13 (+69d) | 2026-08-12 → 2026-10-19 (+68d) |  |  | 37d → 19.5d |  | resources none → Unskilled Labor [16.13 h]; Electrical Technician [6.22 h]; Plumber [1.46 h]; Carpenter [1.77 h]; Mason [1.41 h]; Steel Fixer [1.8 h]; Skilled Labor [4.86 h] |
| 3 | **Fire Hydrant** | 2026-06-29 → 2026-09-19 (+82d) | 2026-07-06 → 2026-09-26 (+82d) |  |  |  |  |  |
| PRO-PW-1DL-120 | 1ST Material Delivery for Fire Hydrants of Potable Water Network | 2026-06-29 → 2026-09-19 (+82d) | 2026-07-06 → 2026-09-26 (+82d) |  |  | 37d → 33.5d |  | resources none → Unskilled Labor [16.13 h]; Electrical Technician [6.22 h]; Plumber [1.46 h]; Carpenter [1.77 h]; Mason [1.41 h]; Steel Fixer [1.8 h]; Skilled Labor [4.86 h] |
| 4 | **Testing and Finishes** | 2026-10-13 → 2026-11-07 (+25d) | 2026-10-20 → 2026-11-12 (+23d) |  |  |  |  |  |
| PRO-PW-1DL-130 | 1ST Material Delivery for Finishes of Potable Water Network | 2026-10-13 → 2026-11-07 (+25d) | 2026-10-20 → 2026-11-12 (+23d) |  |  | 22d → 30d |  | resources none → Unskilled Labor [16.13 h]; Electrical Technician [6.22 h]; Plumber [1.46 h]; Carpenter [1.77 h]; Mason [1.41 h]; Steel Fixer [1.8 h]; Skilled Labor [4.86 h] |
| DL | **Material Delivery & Site Inspection** | 2026-06-20 → 2026-04-01 (-80d) | 2026-11-19 → 2026-12-13 (+24d) |  |  |  |  |  |
| 1 | **Main Line Sections** | 2026-06-20 → 2026-04-01 (-80d) | 2026-09-02 → 2026-10-20 (+48d) |  |  |  |  |  |
| PRO-R25-PW-DL-100 | Material Delivery & Site Inspection of Main Line Pipes for Potable Water Network(Completed) | 2026-06-20 → 2026-04-01 A (-80d) | 2026-07-11 → 2026-06-15 A (-26d) | 18d → 0d | 0% → 100% | 41d → none | PRO-PW-1DL-100 → PRO-PW-1DL-100 SS | was named Material Delivery & Site Inspection of Main Line Pipes for Potable Water Network; resources Depth Between 0m to 1.50m [6]; Depth Between 1.50m to 2.50m [6]; Depth > 2.50m [2]; Depth Between 0m to 1.50m [420]; Depth Between 1.50m to 2.50m [280]; Depth > 2.50m [10]; Depth Between 0m to 1.50m [50]; Depth Between 1.50m to 2.50m [10]; Depth > 2.50m [5]; Depth Between 0m to 1.50m [320]; Depth Between 1.50m to 2.50m [1310]; Depth > 2.50m [20] → Depth Between 0m to 1.50m; Depth Between 1.50m to 2.50m; Depth > 2.50m |
| PRO-R25-PW-DL-110 | Material Delivery & Site Inspection of Valves for Potable Water Network | 2026-08-12 → 2026-10-20 (+69d) | 2026-09-02 → 2026-10-20 (+48d) | 18d → 0d |  | 37d → 25.5d |  | resources Gate valves Dia 50 mm [1]; Gate valves Dia 100 mm [12]; Gate valves Dia 150 mm [17]; Gate valves Dia 250 mm [9]; Air valves with Dia 50 mm [1]; Washout valve Dia 100 mm [2]; Wash out chamber (2500x 2500mm) [2]; Air valve chamber (1000x 1000 mm) [1]; Flow meter chamber (1500x 2500 mm) [1]; Flow meter dia 100 mm [1] → Gate valves Dia 50 mm; Gate valves Dia 100 mm; Gate valves Dia 150 mm; Gate valves Dia 250 mm; Air valves with Dia 50 mm; Washout valve Dia 100 mm; Wash out chamber (2500x 2500mm); Air valve chamber (1000x 1000 mm); Flow meter chamber (1500x 2500 mm); Flow meter dia 100 mm |
| 3 | **Fire Hydrant** | 2026-07-06 → 2026-09-27 (+83d) | 2026-08-05 → 2026-09-27 (+53d) |  |  |  |  |  |
| PRO-R25-PW-DL-120 | Material Delivery & Site Inspection of Fire Hydrants for Potable Water Network | 2026-07-06 → 2026-09-27 (+83d) | 2026-08-05 → 2026-09-27 (+53d) | 26d → 0d |  | 37d → 33.5d |  | resources 3-outlet fire hydrant (2 x 2.5 inch and 1 x 4.5 inch) in the form of a separate dry vacuum cylinder, complete according to drawings. [17] → 3-outlet fire hydrant (2 x 2.5 inch and 1 x 4.5 inch) in the form of a separate dry vacuum cylinder, complete according to drawings. |
| 4 | **Testing and Finishes** | 2026-10-20 → 2026-11-14 (+25d) | 2026-11-19 → 2026-12-13 (+24d) |  |  |  |  |  |
| PRO-R25-PW-DL-130 | Material Delivery & Site Inspection for Finishes of Potable Water Network | 2026-10-20 → 2026-11-14 (+25d) | 2026-11-19 → 2026-12-13 (+24d) |  |  | 22d → 30d |  | resources none → Unskilled Labor [69.9 h]; Electrical Technician [26.96 h]; Plumber [6.32 h]; Carpenter [7.68 h]; Mason [6.11 h]; Steel Fixer [7.81 h]; Skilled Labor [21.07 h] |
| IR | **Irrigation Network** | 2026-01-24 → 2026-01-28 (+4d) | 2026-08-26 → 2026-10-27 (+62d) |  |  |  |  |  |
| PO | **Issuance of Purchase Orders** | 2026-01-24 → 2026-01-28 (+4d) | 2026-01-29 → 2026-07-21 (+173d) |  |  |  |  |  |
| 1 | **Main Line Pipes** | 2026-01-24 → 2026-01-28 (+4d) | 2026-01-29 → 2026-07-21 (+173d) |  |  |  |  |  |
| PRO-IR-PO-100 | Issuance of Purchase Order for Main Line Pipes of Irrigation Network(Completed) | 2026-01-24 → 2026-01-28 A (+4d) | 2026-01-29 → 2026-06-15 A (+137d) | 6d → 105.25d | 0% → 100% | 36d → none |  | was named Issuance of Purchase Order for Main Line Pipes of Irrigation Network |
| PRO-IR-PO-110 | Issuance of Purchase Order for Valves of Irrigation Network | 2026-01-24 → 2026-07-15 (+172d) | 2026-01-29 → 2026-07-21 (+173d) |  |  | 43d → 21.75d | ENG-MT-IR-ML-A-110 → ENG-MT-IR-ML-A-110, ENG-SH-HS-S-100, PRO-PW-PO-110 | resources none → Unskilled Labor [16.13 h]; Electrical Technician [6.22 h]; Plumber [1.46 h]; Carpenter [1.77 h]; Mason [1.41 h]; Steel Fixer [1.8 h]; Skilled Labor [4.86 h] |
| MF | **Manufacturing of Material** | 2026-01-31 → 2026-07-11 (+161d) | 2026-07-29 → 2026-10-19 (+82d) |  |  |  |  |  |
| 1 | **Main Line Pipes** | 2026-01-31 → 2026-07-11 (+161d) | 2026-07-29 → 2026-10-19 (+82d) |  |  |  |  |  |
| PRO-IR-MF-100 | Manufacturing of Main Line Pipes for Irrigation Network | 2026-01-31 → 2026-07-11 (+161d) | 2026-06-18 → 2026-10-05 (+109d) | 105d → 86d |  | 36d → 18.2d | PRO-IR-PO-100 → PRO-IR-PO-100_R | resources none → Unskilled Labor [231.2 h]; Electrical Technician [89.17 h]; Plumber [20.89 h]; Carpenter [25.4 h]; Mason [20.21 h]; Steel Fixer [25.82 h]; Skilled Labor [69.69 h] |
| PRO-IR-MF-110 | Manufacturing of Valves for Irrigation Network | 2026-01-31 → 2026-07-22 (+172d) | 2026-07-29 → 2026-10-19 (+82d) | 140d → 90d |  | 43d → 25.5d |  | resources none → Unskilled Labor [241.96 h]; Electrical Technician [93.32 h]; Plumber [21.86 h]; Carpenter [26.58 h]; Mason [21.15 h]; Steel Fixer [27.02 h]; Skilled Labor [72.93 h] |
| 1DL | **1st Material Delivery & Site Inspection** | 2026-06-18 → 2026-10-05 (+109d) | 2026-08-05 → 2026-10-26 (+82d) |  |  |  |  |  |
| 1 | **Main Line Pipes** | 2026-06-18 → 2026-10-05 (+109d) | 2026-08-05 → 2026-10-26 (+82d) |  |  |  |  |  |
| PRO-IR-1DL-100 | 1ST Material Delivery for Main Line Pipes of Irrigation Network | 2026-06-18 → 2026-10-05 (+109d) | 2026-06-25 → 2026-10-11 (+108d) | 6d → 5d |  | 36d → 15.2d |  | resources none → Unskilled Labor [13.44 h]; Electrical Technician [5.18 h]; Plumber [1.21 h]; Carpenter [1.48 h]; Mason [1.17 h]; Steel Fixer [1.5 h]; Skilled Labor [4.05 h] |
| PRO-IR-1DL-110 | 1ST Material Delivery for Valves of Irrigation Network | 2026-07-29 → 2026-10-20 (+83d) | 2026-08-05 → 2026-10-26 (+82d) |  |  | 43d → 21.5d |  | resources none → Unskilled Labor [16.13 h]; Electrical Technician [6.22 h]; Plumber [1.46 h]; Carpenter [1.77 h]; Mason [1.41 h]; Steel Fixer [1.8 h]; Skilled Labor [4.86 h] |
| DL | **Material Delivery & Site Inspection** | 2026-06-25 → 2026-10-11 (+108d) | 2026-08-26 → 2026-10-27 (+62d) |  |  |  |  |  |
| 1 | **Main Line Pipes** | 2026-06-25 → 2026-10-11 (+108d) | 2026-08-26 → 2026-10-27 (+62d) |  |  |  |  |  |
| PRO-R25-IR-DL-100 | Material Delivery & Site Inspection of Main Line Pipes for Irrigation Network | 2026-06-25 → 2026-10-11 (+108d) | 2026-07-16 → 2026-10-11 (+87d) | 18d → 0d |  | 36d → 15.2d |  | resources pipe line O.D 32 mm PN 10, in depth 0 to 1.5 m [3350]; pipe line O.D 40 mm PN 10, in depth 0 to 1.5 m [1850]; pipe line O.D 50 mm PN 10, in depth 0 to 1.5 m [250] → pipe line O.D 32 mm PN 10, in depth 0 to 1.5 m; pipe line O.D 40 mm PN 10, in depth 0 to 1.5 m; pipe line O.D 50 mm PN 10, in depth 0 to 1.5 m |
| PRO-R25-IR-DL-110 | Material Delivery & Site Inspection of Valves for Irrigation Network | 2026-08-05 → 2026-10-27 (+83d) | 2026-08-26 → 2026-10-27 (+62d) | 18d → 0d |  | 43d → 21.5d |  | resources Gate valve 50 mm PN16 [7]; Direct Burried Gate valve 40 mm PN16 [12]; Pressure–compensating bubblers 110 Lit/Hr [850]; Flushing Bronze gate valve dia 1.5" inside PVC box [19]; Air release valve 1.5" inside PVC box [19]; Extra flexible pressure compensating on surface inline dripline`s, O.D. is 16.1 mm [12000]; Electrical Solenoid Valve ( 1.5") inside PVC box [12]; Electrical Solenoid Valve ( 2") inside PVC box [7]; Quick coupling valve 1" inside a round valve box 10" size with a manual gate valve, hose swivel and key with all accessories [53]; Advanced Irrigation controller subject to client approval, can connect with Centarl Control system [1]; Decoder cables 12 AWG between valves and controllers, The cables shall be pulled through 32Ø UPVC conduit [3500]; Preparing the irrigation program for the entire system and providing technical services for monitoring and controlling the central irrigation systems [1] → Gate valve 50 mm PN16; Direct Burried Gate valve 40 mm PN16; Pressure compensating bubblers 110 Lit/Hr; Flushing Bronze gate valve dia 1.5" inside PVC box; Air release valve 1.5" inside PVC box; Extra flexible pressure compensating on surface inline dripline`s, O.D. is 16.1 mm; Electrical Solenoid Valve ( 1.5") inside PVC box; Electrical Solenoid Valve ( 2") inside PVC box; Quick coupling valve 1" inside a round valve box 10" size with a manual gate valve, hose swivel and key with all accessories; Advanced Irrigation controller subject to client approval, can connect with Centarl Control system; Decoder cables 12 AWG between valves and controllers, The cables shall be pulled through 32 UPVC conduit; Preparing the irrigation program for the entire system and providing technical services for monitoring and controlling the central irrigation systems |
| TSE | **Treated Sewage Effluent (Tse)** | 2026-01-24 → 2026-04-01 (+67d) | 2026-09-07 → 2026-10-10 (+33d) |  |  |  |  |  |
| PO | **Issuance of Purchase Orders** | 2026-01-24 → 2026-06-27 (+154d) | 2026-01-29 → 2026-07-04 (+156d) |  |  |  |  |  |
| 1 | **Main Line Pipes** | 2026-01-24 → 2026-06-27 (+154d) | 2026-01-29 → 2026-07-04 (+156d) |  |  |  |  |  |
| PRO-TSE-PO-120 | Issuance of Purchase Order for Main Line Pipes of Treated Sewage Effluent (Tse) | 2026-01-24 → 2026-06-27 (+154d) | 2026-01-29 → 2026-07-04 (+156d) |  |  | 40d → 19.25d | ENG-MT-IR-ML-A-120 → ENG-MT-IR-ML-A-120, ENG-SH-HS-S-100 | resources none → Unskilled Labor [16.13 h]; Electrical Technician [6.22 h]; Plumber [1.46 h]; Carpenter [1.77 h]; Mason [1.41 h]; Steel Fixer [1.8 h]; Skilled Labor [4.86 h] |
| PRO-TSE-PO-130 | Issuance of Purchase Order for Valves of Treated Sewage Effluent (Tse) | 2026-01-24 → 2026-06-27 (+154d) | 2026-01-29 → 2026-07-04 (+156d) |  |  | 36d → 38.25d | ENG-MT-IR-ML-A-130 → ENG-MT-IR-ML-A-130, ENG-SH-HS-S-100 | resources none → Unskilled Labor [16.13 h]; Electrical Technician [6.22 h]; Plumber [1.46 h]; Carpenter [1.77 h]; Mason [1.41 h]; Steel Fixer [1.8 h]; Skilled Labor [4.86 h] |
| MF | **Manufacturing of Material** | 2026-01-31 → 2026-07-04 (+154d) | 2026-08-10 → 2026-10-02 (+53d) |  |  |  |  |  |
| 1 | **Main Line Pipes** | 2026-01-31 → 2026-07-04 (+154d) | 2026-08-10 → 2026-10-02 (+53d) |  |  |  |  |  |
| PRO-TSE-MF-120 | Manufacturing of Main Line Pipes for Treated Sewage Effluent (Tse) | 2026-01-31 → 2026-07-04 (+154d) | 2026-06-24 → 2026-10-02 (+100d) | 110d → 90d |  | 40d → 22.25d |  | resources none → Unskilled Labor [241.96 h]; Electrical Technician [93.32 h]; Plumber [21.86 h]; Carpenter [26.58 h]; Mason [21.15 h]; Steel Fixer [27.02 h]; Skilled Labor [72.93 h] |
| PRO-TSE-MF-130 | Manufacturing of Valves for Treated Sewage Effluent (Tse) | 2026-01-31 → 2026-07-04 (+154d) | 2026-08-10 → 2026-10-02 (+53d) | 150d → 90d |  | 36d → 44.25d |  | resources none → Unskilled Labor [241.96 h]; Electrical Technician [93.32 h]; Plumber [21.86 h]; Carpenter [26.58 h]; Mason [21.15 h]; Steel Fixer [27.02 h]; Skilled Labor [72.93 h] |

| ID | Task | Start | Finish | Duration | Complete | Total float | Predecessors | Other |
| --- | --- | --- | --- | --- | --- | --- | --- | --- |
| 1DL | **1st Material Delivery & Site Inspection** | 2026-06-24 → 2026-10-03 (+101d) | 2026-08-17 → 2026-10-08 (+52d) |  |  |  |  |  |
| 1 | **Main Line Pipes** | 2026-06-24 → 2026-10-03 (+101d) | 2026-08-17 → 2026-10-08 (+52d) |  |  |  |  |  |
| PRO-TSE-1DL-120 | 1ST Material Delivery for Main Line Pipes of Treated Sewage Effluent (Tse) | 2026-06-24 → 2026-10-03 (+101d) | 2026-07-01 → 2026-10-08 (+99d) |  |  | 40d → 18.5d |  | resources none → Unskilled Labor [16.13 h]; Electrical Technician [6.22 h]; Plumber [1.46 h]; Carpenter [1.77 h]; Mason [1.41 h]; Steel Fixer [1.8 h]; Skilled Labor [4.86 h] |
| PRO-TSE-1DL-130 | 1ST Material Delivery for Valves of Treated Sewage Effluent (Tse) | 2026-08-10 → 2026-10-03 (+54d) | 2026-08-17 → 2026-10-08 (+52d) |  |  | 36d → 37.5d |  | resources none → Unskilled Labor [16.13 h]; Electrical Technician [6.22 h]; Plumber [1.46 h]; Carpenter [1.77 h]; Mason [1.41 h]; Steel Fixer [1.8 h]; Skilled Labor [4.86 h] |
| DL | **Material Delivery & Site Inspection** | 2026-07-01 → 2026-04-01 (-91d) | 2026-09-07 → 2026-10-10 (+33d) |  |  |  |  |  |
| 1 | **Main Line Pipes** | 2026-07-01 → 2026-04-01 (-91d) | 2026-09-07 → 2026-10-10 (+33d) |  |  |  |  |  |
| PRO-R25-TSE-DL-120 | Material Delivery & Site Inspection of Main Line Pipes for Treated Sewage Effluent (Tse)(Completed) | 2026-07-01 → 2026-04-01 A (-91d) | 2026-07-22 → 2026-06-15 A (-37d) | 18d → 0d | 0% → 100% | 40d → none | PRO-TSE-MF-120 SS+15d, PRO-TSE-MF-120 FF, PRO-TSE-1DL-120 → PRO-IR-PO-100 | was named Material Delivery & Site Inspection of Main Line Pipes for Treated Sewage Effluent (Tse); resources Depth Between 0m to 1.50m [10]; Depth Between 1.50m to 2.50m [5]; Depth > 2.50m [2]; Depth Between 0m to 1.50m [920]; Depth Between 0m to 1.50m [412.98]; Depth Between 1.50m to 2.50m [45]; Depth > 2.50m [10]; Depth Between 0m to 1.50m [850]; Depth Between 1.50m to 2.50m [260]; Depth > 2.50m [25]; Depth Between 0m to 1.50m [60]; Depth Between 1.50m to 2.50m [40]; Depth > 2.50m [8] → Depth Between 0m to 1.50m; Depth Between 1.50m to 2.50m; Depth > 2.50m |
| PRO-R25-TSE-DL-130 | Material Delivery & Site Inspection of Valves for Treated Sewage Effluent (Tse) | 2026-08-17 → 2026-10-10 (+54d) | 2026-09-07 → 2026-10-10 (+33d) | 18d → 0d |  | 36d → 37.5d |  | resources Gate valves dia 50 mm [1]; Gate valves dia 100 mm [14]; Gate valves dia 150 mm [5]; Gate valves dia 200 mm [2]; Air valves with dia 50 mm [1]; Washout valve dia 100 mm [2]; Wash out chamber (2500x 2500mm) [2]; Air valve chamber (1000x 1000 mm) [1]; Flow meter chamber (1500x 3000 mm) [1]; Flow meter dia 150 mm [1] → Gate valves dia 50 mm; Gate valves dia 100 mm; Gate valves dia 150 mm; Gate valves dia 200 mm; Air valves with dia 50 mm; Washout valve dia 100 mm; Wash out chamber (2500x 2500mm); Air valve chamber (1000x 1000 mm); Flow meter chamber (1500x 3000 mm); Flow meter dia 150 mm |
| MV | **Medium Voltage Network** | 2026-01-24 → 2026-06-23 (+150d) | 2026-10-24 → 2026-12-05 (+42d) |  |  |  |  |  |
| PO | **Issuance of Purchase Orders** | 2026-01-24 → 2026-06-23 (+150d) | 2026-02-05 → 2026-07-21 (+166d) |  |  |  |  |  |
| 1 | **Cabling Works** | 2026-01-24 → 2026-06-23 (+150d) | 2026-02-05 → 2026-07-06 (+151d) |  |  |  |  |  |
| PRO-MV-PO-100 | Issuance of Purchase Order for Medium Voltage Cables of Medium Voltage Network | 2026-01-24 → 2026-06-23 (+150d) | 2026-02-05 → 2026-07-06 (+151d) |  |  | 43d → 36.75d |  | resources none → Unskilled Labor [32.26 h]; Electrical Technician [12.44 h]; Plumber [2.91 h]; Carpenter [3.54 h]; Mason [2.82 h]; Steel Fixer [3.6 h]; Skilled Labor [9.72 h] |
| 3 | **Termination and Testing Works** | 2026-01-24 → 2026-07-08 (+165d) | 2026-02-05 → 2026-07-21 (+166d) |  |  |  |  |  |
| PRO-MV-PO-120 | Issuance of Purchase Order for Termination and Joints Kits of Medium Voltage Network | 2026-01-24 → 2026-07-08 (+165d) | 2026-02-05 → 2026-07-21 (+166d) |  |  | 37d → 16.25d |  | resources none → Unskilled Labor [32.26 h]; Electrical Technician [12.44 h]; Plumber [2.91 h]; Carpenter [3.54 h]; Mason [2.82 h]; Steel Fixer [3.6 h]; Skilled Labor [9.72 h] |
| MF | **Manufacturing of Material** | 2026-02-07 → 2026-07-07 (+150d) | 2026-08-23 → 2026-10-19 (+57d) |  |  |  |  |  |
| 1 | **Cabling Works** | 2026-02-07 → 2026-07-07 (+150d) | 2026-06-20 → 2026-09-04 (+76d) |  |  |  |  |  |
| PRO-MV-MF-100 | Manufacturing of Medium Voltage Cables for Medium Voltage Network | 2026-02-07 → 2026-07-07 (+150d) | 2026-06-20 → 2026-09-04 (+76d) | 100d → 60d |  | 43d → 42.5d |  | resources none → Unskilled Labor [161.31 h]; Electrical Technician [62.21 h]; Plumber [14.57 h]; Carpenter [17.72 h]; Mason [14.1 h]; Steel Fixer [18.01 h]; Skilled Labor [48.62 h] |
| 3 | **Termination and Testing Works** | 2026-02-07 → 2026-07-22 (+165d) | 2026-08-23 → 2026-10-19 (+57d) |  |  |  |  |  |
| PRO-MV-MF-110 | Manufacturing of Termination and Joints Kits for Medium Voltage Network | 2026-02-07 → 2026-07-22 (+165d) | 2026-08-23 → 2026-10-19 (+57d) | 155d → 90d |  | 37d → 19d |  | resources none → Unskilled Labor [241.96 h]; Electrical Technician [93.32 h]; Plumber [21.86 h]; Carpenter [26.58 h]; Mason [21.15 h]; Steel Fixer [27.02 h]; Skilled Labor [72.93 h] |
| 1DL | **1st Material Delivery & Site Inspection** | 2026-06-20 → 2026-09-05 (+77d) | 2026-09-22 → 2026-11-04 (+43d) |  |  |  |  |  |
| 1 | **Cabling Works** | 2026-06-20 → 2026-09-05 (+77d) | 2026-07-04 → 2026-09-17 (+75d) |  |  |  |  |  |
| PRO-MV-1DL-100 | 1ST Material Delivery for Medium Voltage Cables of Medium Voltage Network | 2026-06-20 → 2026-09-05 (+77d) | 2026-07-04 → 2026-09-17 (+75d) |  |  | 43d → 35.5d |  | resources none → Unskilled Labor [32.26 h]; Electrical Technician [12.44 h]; Plumber [2.91 h]; Carpenter [3.54 h]; Mason [2.82 h]; Steel Fixer [3.6 h]; Skilled Labor [9.72 h] |
| 3 | **Termination and Testing Works** | 2026-08-23 → 2026-10-20 (+58d) | 2026-09-22 → 2026-11-04 (+43d) |  |  |  |  |  |
| PRO-MV-1DL-120 | 1ST Material Delivery for Termination and Joints Kits of Medium Voltage Network | 2026-08-23 → 2026-10-20 (+58d) | 2026-09-22 → 2026-11-04 (+43d) | 26d → 14d |  | 37d → 16d |  | resources none → Unskilled Labor [37.64 h]; Electrical Technician [14.52 h]; Plumber [3.4 h]; Carpenter [4.14 h]; Mason [3.29 h]; Steel Fixer [4.2 h]; Skilled Labor [11.34 h] |
| DL | **Material Delivery & Site Inspection** | 2026-07-04 → 2026-09-19 (+77d) | 2026-10-24 → 2026-12-05 (+42d) |  |  |  |  |  |
| 1 | **Cabling Works** | 2026-07-04 → 2026-09-19 (+77d) | 2026-08-03 → 2026-09-19 (+47d) |  |  |  |  |  |
| PRO-MV-DL-100 | Material Delivery & Site Inspection of Medium Voltage Cables for Medium Voltage Network | 2026-07-04 → 2026-09-19 (+77d) | 2026-08-03 → 2026-09-19 (+47d) | 26d → 0d |  | 43d → 35.5d |  | resources Excavation for Trench size 40cm wide and 80cm deep (for 1 cable) [200.56]; Excavation for Trench Size 60cm wide and 80cm deep (for 2 cables) [100.1]; Excavation for Trench Size 90cm wide and 80cm deep (for 3 cables) [139.32]; Excavation for Trench Size 180cm wide and 80cm deep (for 6 cables) [61.92]; Excavation for Trench Size 210 cm wide and 80cm deep (for 7 cables) [72.24]; Excavation for Trench Size 240cm wide and 80cm deep (for 8 cables) [441.7]; Duct bank for (33) cables [126]; Duct bank for (21) cables [200]; Duct bank for (15) cables [60.09]; HV Cable Road Crossing [64.15] → Excavation for Trench size 40cm wide and 80cm deep (for 1 cable); Excavation for Trench Size 60cm wide and 80cm deep (for 2 cables); Excavation for Trench Size 90cm wide and 80cm deep (for 3 cables); Excavation for Trench Size 180cm wide and 80cm deep (for 6 cables); Excavation for Trench Size 210 cm wide and 80cm deep (for 7 cables); Excavation for Trench Size 240cm wide and 80cm deep (for 8 cables); Duct bank for (33) cables; Duct bank for (21) cables; Duct bank for (15) cables; HV Cable Road Crossing |
| 3 | **Termination and Testing Works** | 2026-09-22 → 2026-11-05 (+44d) | 2026-10-24 → 2026-12-05 (+42d) |  |  |  |  |  |
| PRO-MV-DL-110 | Material Delivery & Site Inspection of Termination and Joints Kits for Medium Voltage Network | 2026-09-22 → 2026-11-05 (+44d) | 2026-10-24 → 2026-12-05 (+42d) |  |  | 37d → 16d |  | resources none → Unskilled Labor [69.9 h]; Electrical Technician [26.96 h]; Plumber [6.32 h]; Carpenter [7.68 h]; Mason [6.11 h]; Steel Fixer [7.81 h]; Skilled Labor [21.07 h] |
| SL | **Low Voltage and Street Lighting Network** | 2026-01-24 → 2026-06-23 (+150d) | 2026-11-30 → 2027-01-28 (+59d) |  |  |  |  |  |
| PO | **Issuance of Purchase Orders** | 2026-01-24 → 2026-06-23 (+150d) | 2026-02-03 → 2026-08-06 (+184d) |  |  |  |  |  |
| 1 | **Cabling Works** | 2026-01-24 → 2026-06-23 (+150d) | 2026-01-29 → 2026-06-29 (+151d) |  |  |  |  |  |
| PRO-SL-PO-100 | Issuance of Purchase Order for Lighting Cables of Street Lighting Network | 2026-01-24 → 2026-06-23 (+150d) | 2026-01-29 → 2026-06-29 (+151d) |  |  | 41d → 36.75d | ENG-MT-SL-ML-A-100 → ENG-MT-SL-ML-A-100, ENG-MT-SL-ML-S-100 | resources none → Unskilled Labor [16.13 h]; Electrical Technician [6.22 h]; Plumber [1.46 h]; Carpenter [1.77 h]; Mason [1.41 h]; Steel Fixer [1.8 h]; Skilled Labor [4.86 h] |
| 2 | **Lighting Poles Works** | 2026-01-24 → 2026-06-23 (+150d) | 2026-01-29 → 2026-08-06 (+189d) |  |  |  |  |  |
| PRO-SL-PO-110 | Issuance of Purchase Order for Lighting Poles Foundations of Street Lighting Network | 2026-01-24 → 2026-06-23 (+150d) | 2026-01-29 → 2026-06-29 (+151d) |  |  | 44d → 7.75d |  | resources none → Unskilled Labor [16.13 h]; Electrical Technician [6.22 h]; Plumber [1.46 h]; Carpenter [1.77 h]; Mason [1.41 h]; Steel Fixer [1.8 h]; Skilled Labor [4.86 h] |
| PRO-SL-PO-120 | Issuance of Purchase Order for Lighting Poles of Street Lighting Network | 2026-01-24 → 2026-06-23 (+150d) | 2026-01-29 → 2026-06-29 (+151d) |  |  | 43d → 41.75d |  | resources none → Unskilled Labor [16.13 h]; Electrical Technician [6.22 h]; Plumber [1.46 h]; Carpenter [1.77 h]; Mason [1.41 h]; Steel Fixer [1.8 h]; Skilled Labor [4.86 h] |
| PRO-SL-PO-140 | Issuance of Purchase Order for Lighting Fixtures of Street Lighting Network | 2026-01-24 → 2026-08-01 (+189d) | 2026-01-29 → 2026-08-06 (+189d) |  |  | 32d → 19.25d | ENG-MT-SL-S-120, ENG-MT-SL-A-120 → ENG-MT-SL-S-120, ENG-MT-SL-A-120, PRO-RD-PO-140 | resources none → Unskilled Labor [16.13 h]; Electrical Technician [6.22 h]; Plumber [1.46 h]; Carpenter [1.77 h]; Mason [1.41 h]; Steel Fixer [1.8 h]; Skilled Labor [4.86 h] |
| 3 | **Distribution Panel Board** | 2026-01-24 → 2026-06-23 (+150d) | 2026-02-03 → 2026-07-04 (+151d) |  |  |  |  |  |
| PRO-SL-PO-160 | Issuance of Purchase Order for Distrubution Panel Boards of Street Lighting Network | 2026-01-24 → 2026-06-23 (+150d) | 2026-02-03 → 2026-07-04 (+151d) |  |  | 41d → 52.25d |  | resources none → Unskilled Labor [26.88 h]; Electrical Technician [10.37 h]; Plumber [2.43 h]; Carpenter [2.95 h]; Mason [2.35 h]; Steel Fixer [3 h]; Skilled Labor [8.1 h] |
| 4 | **Earthing System Works** | 2026-01-24 → 2026-07-07 (+164d) | 2026-02-03 → 2026-07-15 (+162d) |  |  |  |  |  |
| PRO-SL-PO-150 | Issuance of Purchase Order for Lighting Earthing of Street Lighting Network | 2026-01-24 → 2026-07-07 (+164d) | 2026-02-03 → 2026-07-15 (+162d) | 10d → 8d |  | 38d → 28.25d |  | resources none → Unskilled Labor [21.51 h]; Electrical Technician [8.3 h]; Plumber [1.94 h]; Carpenter [2.36 h]; Mason [1.88 h]; Steel Fixer [2.4 h]; Skilled Labor [6.48 h] |
| 5 | **Termination and Testing Works** | 2026-01-24 → 2026-07-08 (+165d) | 2026-02-03 → 2026-07-16 (+163d) |  |  |  |  |  |
| PRO-SL-PO-130 | Issuance of Purchase Order for Fuse Boxes of Street Lighting Network | 2026-01-24 → 2026-07-08 (+165d) | 2026-02-03 → 2026-07-16 (+163d) | 10d → 8d |  | 34d → 0d |  | resources none → Unskilled Labor [21.51 h]; Electrical Technician [8.3 h]; Plumber [1.94 h]; Carpenter [2.36 h]; Mason [1.88 h]; Steel Fixer [2.4 h]; Skilled Labor [6.48 h] |
| PRO-SL-PO-170 | Issuance of Purchase Order for Cable Lugs of Street Lighting Network | 2026-01-24 → 2026-07-08 (+165d) | 2026-02-03 → 2026-07-16 (+163d) | 10d → 8d |  | 31d → 30.25d |  | resources none → Unskilled Labor [21.51 h]; Electrical Technician [8.3 h]; Plumber [1.94 h]; Carpenter [2.36 h]; Mason [1.88 h]; Steel Fixer [2.4 h]; Skilled Labor [6.48 h] |
| MF | **Manufacturing of Material** | 2026-01-31 → 2026-06-30 (+150d) | 2026-10-13 → 2026-12-12 (+60d) |  |  |  |  |  |
| 1 | **Cabling Works** | 2026-01-31 → 2026-06-30 (+150d) | 2026-07-23 → 2026-09-27 (+66d) |  |  |  |  |  |
| PRO-SL-MF-100 | Manufacturing of Lighting Cables for Street Lighting Network | 2026-01-31 → 2026-06-30 (+150d) | 2026-07-23 → 2026-09-27 (+66d) | 135d → 90d |  | 41d → 42.5d |  | resources none → Unskilled Labor [241.96 h]; Electrical Technician [93.32 h]; Plumber [21.86 h]; Carpenter [26.58 h]; Mason [21.15 h]; Steel Fixer [27.02 h]; Skilled Labor [72.93 h] |
| 2 | **Lighting Poles Works** | 2026-01-31 → 2026-06-30 (+150d) | 2026-10-08 → 2026-12-12 (+65d) |  |  |  |  |  |
| PRO-SL-MF-110 | Manufacturing of Lighting Poles Foundations for Street Lighting Network | 2026-01-31 → 2026-06-30 (+150d) | 2026-07-06 → 2026-09-27 (+83d) | 120d → 90d |  | 44d → 8.62d |  | resources none → Unskilled Labor [241.96 h]; Electrical Technician [93.32 h]; Plumber [21.86 h]; Carpenter [26.58 h]; Mason [21.15 h]; Steel Fixer [27.02 h]; Skilled Labor [72.93 h] |
| PRO-SL-MF-120 | Manufacturing of Lighting Poles for Street Lighting Network | 2026-01-31 → 2026-06-30 (+150d) | 2026-08-04 → 2026-09-27 (+54d) | 145d → 90d |  | 43d → 48.5d |  | resources none → Unskilled Labor [241.96 h]; Electrical Technician [93.32 h]; Plumber [21.86 h]; Carpenter [26.58 h]; Mason [21.15 h]; Steel Fixer [27.02 h]; Skilled Labor [72.93 h] |
| PRO-SL-MF-140 | Manufacturing of Lighting Fixtures for Street Lighting Network | 2026-01-31 → 2026-08-07 (+188d) | 2026-10-08 → 2026-12-12 (+65d) | 200d → 128d |  | 32d → 23d |  | resources none → Unskilled Labor [344.12 h]; Electrical Technician [132.72 h]; Plumber [31.09 h]; Carpenter [37.81 h]; Mason [30.08 h]; Steel Fixer [38.43 h]; Skilled Labor [103.72 h] |
| 3 | **Distribution Panel Board** | 2026-02-04 → 2026-07-05 (+151d) | 2026-09-13 → 2026-10-22 (+39d) |  |  |  |  |  |
| PRO-SL-MF-160 | Manufacturing of Distrubution Panel Boards for Street Lighting Network | 2026-02-04 → 2026-07-05 (+151d) | 2026-09-13 → 2026-10-22 (+39d) | 175d → 110d |  | 41d → 60d |  | resources none → Unskilled Labor [295.73 h]; Electrical Technician [114.06 h]; Plumber [26.72 h]; Carpenter [32.49 h]; Mason [25.85 h]; Steel Fixer [33.02 h]; Skilled Labor [89.13 h] |
| 4 | **Earthing System Works** | 2026-02-04 → 2026-07-16 (+162d) | 2026-10-01 → 2026-12-02 (+62d) |  |  |  |  |  |
| PRO-SL-MF-150 | Manufacturing of Lighting Earthing for Street Lighting Network | 2026-02-04 → 2026-07-16 (+162d) | 2026-10-01 → 2026-12-02 (+62d) | 190d → 140d |  | 38d → 33d |  | resources none → Unskilled Labor [376.38 h]; Electrical Technician [145.17 h]; Plumber [34.01 h]; Carpenter [41.35 h]; Mason [32.9 h]; Steel Fixer [42.03 h]; Skilled Labor [113.44 h] |
| 5 | **Termination and Testing Works** | 2026-02-04 → 2026-07-17 (+163d) | 2026-10-13 → 2026-12-12 (+60d) |  |  |  |  |  |
| PRO-SL-MF-130 | Manufacturing of Fuse Boxes for Street Lighting Network | 2026-02-04 → 2026-07-17 (+163d) | 2026-10-13 → 2026-12-12 (+60d) | 200d → 149d |  | 34d → 0d |  | resources none → Unskilled Labor [400.58 h]; Electrical Technician [154.5 h]; Plumber [36.19 h]; Carpenter [44.01 h]; Mason [35.01 h]; Steel Fixer [44.73 h]; Skilled Labor [120.73 h] |
| PRO-SL-MF-170 | Manufacturing of Cable Lugs for Street Lighting Network | 2026-02-04 → 2026-07-17 (+163d) | 2026-10-13 → 2026-11-03 (+21d) | 200d → 110d |  | 31d → 36d |  | resources none → Unskilled Labor [295.73 h]; Electrical Technician [114.06 h]; Plumber [26.72 h]; Carpenter [32.49 h]; Mason [25.85 h]; Steel Fixer [33.02 h]; Skilled Labor [89.13 h] |
| 1DL | **1st Material Delivery & Site Inspection** | 2026-07-06 → 2026-09-28 (+84d) | 2026-10-31 → 2026-12-29 (+59d) |  |  |  |  |  |
| 1 | **Cabling Works** | 2026-07-23 → 2026-09-28 (+67d) | 2026-07-30 → 2026-10-04 (+66d) |  |  |  |  |  |
| PRO-SL-1DL-100 | 1ST Material Delivery for Lighting Cables of Street Lighting Network | 2026-07-23 → 2026-09-28 (+67d) | 2026-07-30 → 2026-10-04 (+66d) |  |  | 41d → 36.5d |  | resources none → Unskilled Labor [16.13 h]; Electrical Technician [6.22 h]; Plumber [1.46 h]; Carpenter [1.77 h]; Mason [1.41 h]; Steel Fixer [1.8 h]; Skilled Labor [4.86 h] |
| 2 | **Lighting Poles Works** | 2026-07-06 → 2026-09-28 (+84d) | 2026-10-15 → 2026-12-19 (+65d) |  |  |  |  |  |
| PRO-SL-1DL-110 | 1ST Material Delivery for Lighting Poles Foundations of Street Lighting Network | 2026-07-06 → 2026-09-28 (+84d) | 2026-07-13 → 2026-10-04 (+83d) |  |  | 44d → 7.5d |  | resources none → Unskilled Labor [16.13 h]; Electrical Technician [6.22 h]; Plumber [1.46 h]; Carpenter [1.77 h]; Mason [1.41 h]; Steel Fixer [1.8 h]; Skilled Labor [4.86 h] |
| PRO-SL-1DL-120 | 1ST Material Delivery for Lighting Poles of Street Lighting Network | 2026-08-04 → 2026-09-28 (+55d) | 2026-08-11 → 2026-10-04 (+54d) |  |  | 43d → 41.5d |  | resources none → Unskilled Labor [16.13 h]; Electrical Technician [6.22 h]; Plumber [1.46 h]; Carpenter [1.77 h]; Mason [1.41 h]; Steel Fixer [1.8 h]; Skilled Labor [4.86 h] |
| PRO-SL-1DL-140 | 1ST Material Delivery for Lighting Fixtures of Street Lighting Network | 2026-10-08 → 2026-12-13 (+66d) | 2026-10-15 → 2026-12-19 (+65d) |  |  | 32d → 20d |  | resources none → Unskilled Labor [16.13 h]; Electrical Technician [6.22 h]; Plumber [1.46 h]; Carpenter [1.77 h]; Mason [1.41 h]; Steel Fixer [1.8 h]; Skilled Labor [4.86 h] |
| 3 | **Distribution Panel Board** | 2026-09-13 → 2026-10-24 (+41d) | 2026-09-20 → 2026-10-29 (+39d) |  |  |  |  |  |
| PRO-SL-1DL-160 | 1ST Material Delivery for Distrubution Panel Boards of Street Lighting Network | 2026-09-13 → 2026-10-24 (+41d) | 2026-09-20 → 2026-10-29 (+39d) |  |  | 41d → 51d |  | resources none → Unskilled Labor [16.13 h]; Electrical Technician [6.22 h]; Plumber [1.46 h]; Carpenter [1.77 h]; Mason [1.41 h]; Steel Fixer [1.8 h]; Skilled Labor [4.86 h] |
| 5 | **Termination and Testing Works** | 2026-10-13 → 2026-11-03 (+21d) | 2026-10-31 → 2026-12-29 (+59d) |  |  |  |  |  |
| PRO-SL-1DL-170 | 1ST Material Delivery for Cable Lugs of Street Lighting Network | 2026-10-13 → 2026-11-03 (+21d) | 2026-10-31 → 2026-11-21 (+21d) |  |  | 31d → 31.12d |  | resources none → Unskilled Labor [40.33 h]; Electrical Technician [15.55 h]; Plumber [3.64 h]; Carpenter [4.43 h]; Mason [3.52 h]; Steel Fixer [4.5 h]; Skilled Labor [12.15 h] |
| PRO-SL-1DL-130 | 1ST Material Delivery for Fuse Boxes of Street Lighting Network | 2026-10-13 → 2026-12-13 (+61d) | 2026-10-31 → 2026-12-29 (+59d) |  |  | 34d → 0d |  | resources none → Unskilled Labor [40.33 h]; Electrical Technician [15.55 h]; Plumber [3.64 h]; Carpenter [4.43 h]; Mason [3.52 h]; Steel Fixer [4.5 h]; Skilled Labor [12.15 h] |

| ID | Task | Start | Finish | Duration | Complete | Total float | Predecessors | Other |
| --- | --- | --- | --- | --- | --- | --- | --- | --- |
| 4 | **Earthing System Works** | 2026-10-01 → 2026-12-03 (+63d) | 2026-10-08 → 2026-12-09 (+62d) |  |  |  |  |  |
| PRO-SL-1DL-150 | 1ST Material Delivery for Lighting Earthing of Street Lighting Network | 2026-10-01 → 2026-12-03 (+63d) | 2026-10-08 → 2026-12-09 (+62d) |  |  | 38d → 28d |  | resources none → Unskilled Labor [16.13 h]; Electrical Technician [6.22 h]; Plumber [1.46 h]; Carpenter [1.77 h]; Mason [1.41 h]; Steel Fixer [1.8 h]; Skilled Labor [4.86 h] |
| DL | **Material Delivery & Site Inspection** | 2026-07-13 → 2026-10-05 (+84d) | 2026-11-30 → 2027-01-28 (+59d) |  |  |  |  |  |
| 1 | **Cabling Works** | 2026-07-30 → 2026-10-05 (+67d) | 2026-08-30 → 2026-10-05 (+36d) |  |  |  |  |  |
| PRO-R25-SL-DL-100 | Material Delivery & Site Inspection of Lighting Cables for Street Lighting Network | 2026-07-30 → 2026-10-05 (+67d) | 2026-08-30 → 2026-10-05 (+36d) | 26d → 0d |  | 41d → 36.5d |  | resources Road crossing ducts, 2 ways (2 x 150mm HDPE) [228.69]; Road crossing ducts, 2 ways (2 x 110mm UPVC) [90.85]; Road crossing ducts, 3 ways (3 x 110mm UPVC) [30.19]; 4C-300mm2 CU/XLPE / PVC ARMORED CABLE [70]; 4C-240mm2 CU/XLPE / PVC ARMORED CABLE [40]; 4C-185mm2 CU/XLPE / PVC ARMORED CABLE [40]; 4C-50mm2 CU/XLPE / PVC ARMORED CABLE [150]; 4C-16mm2 CU/XLPE / PVC ARMORED CABLE [3485]; 4C-16MM2 CU/XLPE / PVC CABLE [1395]; 1Cx150sq.mm2,Cu, PVC wire [75]; 1Cx120sq.mm2,Cu, PVC wire [75]; 1Cx95sq.mm,Cu, PVC wire [40]; 1Cx70sq.mm2,Cu, PVC wire [20]; 1Cx25sq.mm2,Cu, PVC wire [75]; 1Cx16sq.mm2,Cu, PVC wire [3485]; 1Cx10sq.mm2,Cu, PVC wire [50]; Supply and installation of KWH meter mounting frame including concrete block for installation of KWH meter [6] → Road crossing ducts, 2 ways (2 x 150mm HDPE); Road crossing ducts, 2 ways (2 x 110mm UPVC); Road crossing ducts, 3 ways (3 x 110mm UPVC); 4C-300mm2 CU/XLPE / PVC ARMORED CABLE; 4C-240mm2 CU/XLPE / PVC ARMORED CABLE; 4C-185mm2 CU/XLPE / PVC ARMORED CABLE; 4C-50mm2 CU/XLPE / PVC ARMORED CABLE; 4C-16mm2 CU/XLPE / PVC ARMORED CABLE; 4C-16MM2 CU/XLPE / PVC CABLE; 1Cx150sq.mm2,Cu, PVC wire; 1Cx120sq.mm2,Cu, PVC wire; 1Cx95sq.mm,Cu, PVC wire; 1Cx70sq.mm2,Cu, PVC wire; 1Cx25sq.mm2,Cu, PVC wire; 1Cx16sq.mm2,Cu, PVC wire; 1Cx10sq.mm2,Cu, PVC wire; Supply and installation of KWH meter mounting frame including concrete block for installation of KWH meter |
| 2 | **Lighting Poles Works** | 2026-07-13 → 2026-10-05 (+84d) | 2026-11-15 → 2026-12-20 (+35d) |  |  |  |  |  |
| PRO-R25-SL-DL-110 | Material Delivery & Site Inspection of Lighting Poles Foundations for Street Lighting Network | 2026-07-13 → 2026-10-05 (+84d) | 2026-08-12 → 2026-10-25 (+74d) | 26d → 18d |  | 44d → 7.5d |  | resources none → Unskilled Labor [48.39 h]; Electrical Technician [18.66 h]; Plumber [4.37 h]; Carpenter [5.32 h]; Mason [4.23 h]; Steel Fixer [5.4 h]; Skilled Labor [14.59 h] |
| PRO-R25-SL-DL-120 | Material Delivery & Site Inspection of Lighting Poles for Street Lighting Network | 2026-08-11 → 2026-10-05 (+55d) | 2026-09-10 → 2026-10-05 (+25d) | 26d → 0d |  | 43d → 41.5d |  | resources Lighting poles with 1 arm, height of (12) meters, including the power distribution box, cables, and RCC foundation. [39]; Lighting poles with 2 arms, height of (12) meters, including the power distribution box, cables, and RCC foundation. [36] → Lighting poles with 1 arm, height of (12) meters, including the power distribution box, cables, and RCC foundation.; Lighting poles with 2 arms, height of (12) meters, including the power distribution box, cables, and RCC foundation. |
| PRO-R25-SL-DL-140 | Material Delivery & Site Inspection of Lighting Fixtures for Street Lighting Network | 2026-10-15 → 2026-12-20 (+66d) | 2026-11-15 → 2026-12-20 (+35d) | 26d → 0d |  | 32d → 20d |  | resources Street Lighting( LED) Luminaire of Output ? 20,965 lumen complete with control gear and lamp, (129.1) WATT. [111] → Street Lighting( LED) Luminaire of Output ? 20,965 lumen complete with control gear and lamp, (129.1) WATT. |
| 3 | **Distribution Panel Board** | 2026-09-20 → 2026-10-31 (+41d) | 2026-10-21 → 2026-10-31 (+10d) |  |  |  |  |  |
| PRO-R25-SL-DL-160 | Material Delivery & Site Inspection of Distrubution Panel Boards for Street Lighting Network | 2026-09-20 → 2026-10-31 (+41d) | 2026-10-21 → 2026-10-31 (+10d) | 26d → 0d |  | 41d → 51d |  | resources Street Lighting panels LCP (01) [1] → Street Lighting panels LCP (01) |
| 4 | **Termination and Testing Works** | 2026-10-31 → 2026-11-21 (+21d) | 2026-11-30 → 2027-01-28 (+59d) |  |  |  |  |  |
| PRO-R25-SL-DL-170 | Material Delivery & Site Inspection of Cable Lugs for Street Lighting Network | 2026-10-31 → 2026-11-21 (+21d) | 2026-11-30 → 2026-12-21 (+21d) |  |  | 31d → 31.12d |  | resources none → Unskilled Labor [69.9 h]; Electrical Technician [26.96 h]; Plumber [6.32 h]; Carpenter [7.68 h]; Mason [6.11 h]; Steel Fixer [7.81 h]; Skilled Labor [21.07 h] |
| PRO-R25-SL-DL-130 | Material Delivery & Site Inspection of Fuse Boxes for Street Lighting Network | 2026-10-31 → 2026-12-30 (+60d) | 2026-11-30 → 2027-01-28 (+59d) |  |  | 34d → 0d |  | resources none → Unskilled Labor [69.9 h]; Electrical Technician [26.96 h]; Plumber [6.32 h]; Carpenter [7.68 h]; Mason [6.11 h]; Steel Fixer [7.81 h]; Skilled Labor [21.07 h] |
| 5 | **Earthing System Works** | 2026-10-08 → 2026-12-10 (+63d) | 2026-11-08 → 2026-12-10 (+32d) |  |  |  |  |  |
| PRO-R25-SL-DL-150 | Material Delivery & Site Inspection of Lighting Earthing for Street Lighting Network | 2026-10-08 → 2026-12-10 (+63d) | 2026-11-08 → 2026-12-10 (+32d) | 26d → 0d |  | 38d → 28d |  | resources Including earthing of lighting poles, masts, feeder pillars, unit substations and LV feeders. [75] → Including earthing of lighting poles, masts, feeder pillars, unit substations and LV feeders. |
| TE | **Telecom Network** | 2026-01-24 → 2026-07-07 (+164d) | 2026-10-15 → 2026-10-24 (+9d) |  |  |  |  |  |
| PO | **Issuance of Purchase Orders** | 2026-01-24 → 2026-07-07 (+164d) | 2026-01-29 → 2026-07-13 (+165d) |  |  |  |  |  |
| 1 | **Ducts Works** | 2026-01-24 → 2026-07-07 (+164d) | 2026-01-29 → 2026-07-13 (+165d) |  |  |  |  |  |
| PRO-TE-PO-100 | Issuance of Purchase Order for Ducts forTelecom Network | 2026-01-24 → 2026-07-07 (+164d) | 2026-01-29 → 2026-07-13 (+165d) |  |  | 39d → 48.25d | ENG-MT-TE-A-100 → ENG-MT-TE-A-100, ENG-SH-CTV-S-100 | resources none → Unskilled Labor [16.13 h]; Electrical Technician [6.22 h]; Plumber [1.46 h]; Carpenter [1.77 h]; Mason [1.41 h]; Steel Fixer [1.8 h]; Skilled Labor [4.86 h] |
| 3 | **Manholes Works** | 2026-01-24 → 2026-07-07 (+164d) | 2026-01-29 → 2026-07-13 (+165d) |  |  |  |  |  |
| PRO-TE-PO-110 | Issuance of Purchase Order for Manholes forTelecom Network | 2026-01-24 → 2026-07-07 (+164d) | 2026-01-29 → 2026-07-13 (+165d) |  |  | 44d → 30.25d | ENG-MT-TE-A-110 → ENG-MT-TE-A-110, ENG-SH-CTV-S-100 | resources none → Unskilled Labor [16.13 h]; Electrical Technician [6.22 h]; Plumber [1.46 h]; Carpenter [1.77 h]; Mason [1.41 h]; Steel Fixer [1.8 h]; Skilled Labor [4.86 h] |
| 2 | **CCTV System Wroks** | 2026-01-24 → 2026-07-07 (+164d) | 2026-01-29 → 2026-07-13 (+165d) |  |  |  |  |  |
| PRO-CTV-PO-100 | Issuance of Purchase Order for Civil and Finishes Works of CCTV Complete System | 2026-01-24 → 2026-07-07 (+164d) | 2026-01-29 → 2026-07-13 (+165d) |  |  | 41d → 45d | ENG-MT-CTV-A-100 → ENG-MT-CTV-A-100, ENG-SH-CTV-S-100 | resources none → Unskilled Labor [16.13 h]; Electrical Technician [6.22 h]; Plumber [1.46 h]; Carpenter [1.77 h]; Mason [1.41 h]; Steel Fixer [1.8 h]; Skilled Labor [4.86 h] |
| MF | **Manufacturing of Material** | 2026-01-31 → 2026-07-14 (+164d) | 2026-08-22 → 2026-10-11 (+50d) |  |  |  |  |  |
| 1 | **Ducts Works** | 2026-01-31 → 2026-07-14 (+164d) | 2026-07-18 → 2026-09-11 (+55d) |  |  |  |  |  |
| PRO-TE-MF-100 | Manufacturing of Ducts for Telecom Network | 2026-01-31 → 2026-07-14 (+164d) | 2026-07-18 → 2026-09-11 (+55d) | 130d → 60d |  | 39d → 56d |  | resources none → Unskilled Labor [161.31 h]; Electrical Technician [62.21 h]; Plumber [14.57 h]; Carpenter [17.72 h]; Mason [14.1 h]; Steel Fixer [18.01 h]; Skilled Labor [48.62 h] |
| 3 | **Manholes Works** | 2026-01-31 → 2026-07-14 (+164d) | 2026-08-10 → 2026-10-11 (+62d) |  |  |  |  |  |
| PRO-TE-MF-110 | Manufacturing of Manholes for Telecom Network | 2026-01-31 → 2026-07-14 (+164d) | 2026-08-10 → 2026-10-11 (+62d) | 150d → 90d |  | 44d → 35d |  | resources none → Unskilled Labor [241.96 h]; Electrical Technician [93.32 h]; Plumber [21.86 h]; Carpenter [26.58 h]; Mason [21.15 h]; Steel Fixer [27.02 h]; Skilled Labor [72.93 h] |
| 2 | **CCTV System Wroks** | 2026-01-31 → 2026-07-14 (+164d) | 2026-08-22 → 2026-10-11 (+50d) |  |  |  |  |  |
| PRO-CTV-MF-100 | Manufacturing of Civil and Finishes Works for CCTV Complete System | 2026-01-31 → 2026-07-14 (+164d) | 2026-08-22 → 2026-10-11 (+50d) | 160d → 90d |  | 41d → 52d |  | resources none → Unskilled Labor [241.96 h]; Electrical Technician [93.32 h]; Plumber [21.86 h]; Carpenter [26.58 h]; Mason [21.15 h]; Steel Fixer [27.02 h]; Skilled Labor [72.93 h] |
| 1DL | **1st Material Delivery & Site Inspection** | 2026-07-18 → 2026-09-12 (+56d) | 2026-09-02 → 2026-10-22 (+50d) |  |  |  |  |  |
| 1 | **Ducts Works** | 2026-07-18 → 2026-09-12 (+56d) | 2026-07-25 → 2026-09-17 (+54d) |  |  |  |  |  |
| PRO-TE-1DL-100 | 1ST Material Delivery for Ducts of Telecom Network | 2026-07-18 → 2026-09-12 (+56d) | 2026-07-25 → 2026-09-17 (+54d) |  |  | 39d → 47d |  | resources none → Unskilled Labor [16.13 h]; Electrical Technician [6.22 h]; Plumber [1.46 h]; Carpenter [1.77 h]; Mason [1.41 h]; Steel Fixer [1.8 h]; Skilled Labor [4.86 h] |
| 3 | **Manholes Works** | 2026-08-10 → 2026-10-12 (+63d) | 2026-08-17 → 2026-10-18 (+62d) |  |  |  |  |  |
| PRO-TE-1DL-110 | 1ST Material Delivery for Manholes of Telecom Network | 2026-08-10 → 2026-10-12 (+63d) | 2026-08-17 → 2026-10-18 (+62d) |  |  | 44d → 30d |  | resources none → Unskilled Labor [16.13 h]; Electrical Technician [6.22 h]; Plumber [1.46 h]; Carpenter [1.77 h]; Mason [1.41 h]; Steel Fixer [1.8 h]; Skilled Labor [4.86 h] |
| 2 | **CCTV System Wroks** | 2026-08-22 → 2026-10-12 (+51d) | 2026-09-02 → 2026-10-22 (+50d) |  |  |  |  |  |
| PRO-CTV-1DL-100 | 1ST Material Delivery for Civil and Finishes Works of CCTV Complete System | 2026-08-22 → 2026-10-12 (+51d) | 2026-09-02 → 2026-10-22 (+50d) |  |  | 41d → 45d |  | resources none → Unskilled Labor [26.88 h]; Electrical Technician [10.37 h]; Plumber [2.43 h]; Carpenter [2.95 h]; Mason [2.35 h]; Steel Fixer [3 h]; Skilled Labor [8.1 h] |
| DL | **Material Delivery & Site Inspection** | 2026-07-25 → 2026-09-19 (+56d) | 2026-10-15 → 2026-10-24 (+9d) |  |  |  |  |  |
| 1 | **Ducts Works** | 2026-07-25 → 2026-09-19 (+56d) | 2026-09-05 → 2026-09-19 (+14d) |  |  |  |  |  |
| PRO-R25-TE-DL-100 | Material Delivery & Site Inspection for Ducts of Telecom Network | 2026-07-25 → 2026-09-19 (+56d) | 2026-09-05 → 2026-09-19 (+14d) | 36d → 0d |  | 39d → 47d | PRO-TE-MF-100 SS+15d, PRO-TE-MF-100 FF, PRO-TE-1DL-100 → PRO-TE-MF-100 SS+13d, PRO-TE-MF-100 FF, PRO-TE-1DL-100 | resources 2-ways ducts, 50mm diameter [516]; 6-ways ducts, 110mm diameter [2082]; 9-ways ducts, 6 x 160mm & 2 x 100mm [3054]; 6 PVC ducts 150x200 mm (60mm diameter) [162]; 6 PVC ducts 600x800 mm (120mm diameter) [282]; 6 PVC ducts 800x800 mm (170mm diameter) [402] → 2-ways ducts, 50mm diameter; 6-ways ducts, 110mm diameter; 9-ways ducts, 6 x 160mm & 2 x 100mm; 6 PVC ducts 150x200 mm (60mm diameter); 6 PVC ducts 600x800 mm (120mm diameter); 6 PVC ducts 800x800 mm (170mm diameter) |
| 3 | **Manholes Works** | 2026-08-17 → 2026-10-19 (+63d) | 2026-09-16 → 2026-10-19 (+33d) |  |  |  |  |  |
| PRO-R25-TE-DL-110 | Material Delivery & Site Inspection of Manholes for Telecom Network | 2026-08-17 → 2026-10-19 (+63d) | 2026-09-16 → 2026-10-19 (+33d) | 26d → 0d |  | 44d → 30d |  | resources Manhole Type 2 (1600 x 1600 x 2000) [25]; Manhole Type 3 (1200 x 1200 x 2000) [31] → Manhole Type 2 (1600 x 1600 x 2000); Manhole Type 3 (1200 x 1200 x 2000) |
| 2 | **CCTV System Wroks** | 2026-09-02 → 2026-10-24 (+52d) | 2026-10-15 → 2026-10-24 (+9d) |  |  |  |  |  |
| PRO-R25-CTV-DL-100 | Material Delivery & Site Inspection of for Civil and Finishes Works of CCTV Complete System | 2026-09-02 → 2026-10-24 (+52d) | 2026-10-15 → 2026-10-24 (+9d) | 36d → 0d |  | 41d → 45d |  | resources 6 PVC ducts 200x150 mm (60mm diameter) [138]; 2-ways ducts, 50mm diameter [498] → 6 PVC ducts 200x150 mm (60mm diameter); 2-ways ducts, 50mm diameter |
| 1 | **Superstructure Works** | 2026-01-12 → 2026-01-29 (+17d) | 2026-08-27 → 2026-10-11 (+45d) |  |  |  |  |  |
| 1 | **Issuance of Purchase Orders** | 2026-01-12 → 2026-01-29 (+17d) | 2026-02-02 → 2026-07-13 (+161d) |  |  |  |  |  |
| SL | **Pump Stations** | 2026-01-12 → 2026-01-29 (+17d) | 2026-01-25 → 2026-02-01 (+7d) |  |  |  |  |  |
| PRO-SPS-CV-PO-10 | Issuance of Purchase Order for Civil Works for Pump Stations | 2026-01-12 → 2026-01-29 A (+17d) | 2026-01-25 → 2026-02-01 A (+7d) | 12d → 3.25d | 0% → 100% | 5.25d → none |  |  |
| SL1 | **Lift Station** | 2026-01-12 → 2026-01-29 (+17d) | 2026-01-25 → 2026-02-01 (+7d) |  |  |  |  |  |
| PRO-LS-CV-PO-20 | Issuance of Purchase Order for Civil Works for Lift Stations | 2026-01-12 → 2026-01-29 A (+17d) | 2026-01-25 → 2026-02-01 A (+7d) | 12d → 3.25d | 0% → 100% | 3.25d → none |  |  |
| SL11 | **Storage Tank (TSE)** | 2026-01-20 → 2026-07-01 (+162d) | 2026-02-02 → 2026-07-13 (+161d) |  |  |  |  |  |
| PRO-TSE-CV-PO-30 | Issuance of Purchase Order for Civil Works for Storage Tank (TSE) | 2026-01-20 → 2026-07-01 (+162d) | 2026-02-02 → 2026-07-13 (+161d) | 12d → 11d |  | 9.75d → 13.25d | ENG-MT-TSE-CV-A-140 → ENG-MT-TSE-CV-A-140, ENG-MT-TSE-CV-S-130 | resources none → Unskilled Labor [29.57 h]; Electrical Technician [11.41 h]; Plumber [2.67 h]; Carpenter [3.25 h]; Mason [2.58 h]; Steel Fixer [3.3 h]; Skilled Labor [8.91 h] |
| TE | **Storm Drainage Ponds** | 2026-01-20 → 2026-06-23 (+154d) | 2026-02-02 → 2026-07-04 (+152d) |  |  |  |  |  |
| PRO-DPO-CV-PO-10 | Issuance of Purchase Order for Civil Works for Storm Drainage Ponds | 2026-01-20 → 2026-06-23 (+154d) | 2026-02-02 → 2026-07-04 (+152d) | 12d → 10d |  | 37d → 14.25d |  | resources none → Unskilled Labor [26.88 h]; Electrical Technician [10.37 h]; Plumber [2.43 h]; Carpenter [2.95 h]; Mason [2.35 h]; Steel Fixer [3 h]; Skilled Labor [8.1 h] |
| SL12 | **Gaurd Room** | 2026-01-20 → 2026-06-23 (+154d) | 2026-02-02 → 2026-07-05 (+153d) |  |  |  |  |  |
| PRO-GR-CV-PO-40 | Issuance of Purchase Order for Civil Works for Gaurd Room | 2026-01-20 → 2026-06-23 (+154d) | 2026-02-02 → 2026-07-05 (+153d) | 12d → 10.5d |  | 10.75d → 25.75d |  | resources none → Unskilled Labor [28.23 h]; Electrical Technician [10.89 h]; Plumber [2.55 h]; Carpenter [3.1 h]; Mason [2.47 h]; Steel Fixer [3.15 h]; Skilled Labor [8.51 h] |
| SL121 | **Fence** | 2026-01-20 → 2026-06-23 (+154d) | 2026-02-02 → 2026-07-04 (+152d) |  |  |  |  |  |
| PRO-FE-CV-PO-50 | Issuance of Purchase Order for Civil Works for Fence | 2026-01-20 → 2026-06-23 (+154d) | 2026-02-02 → 2026-07-04 (+152d) | 12d → 9.85d |  | 38d → -0.85d |  | resources none → Unskilled Labor [26.48 h]; Electrical Technician [10.21 h]; Plumber [2.39 h]; Carpenter [2.91 h]; Mason [2.31 h]; Steel Fixer [2.96 h]; Skilled Labor [7.98 h] |
| 2 | **Manufacturing of Material** | 2026-01-24 → 2026-06-23 (+150d) | 2026-08-03 → 2026-10-11 (+69d) |  |  |  |  |  |
| SL | **Pump Stations** | 2026-01-26 → 2026-06-23 (+148d) | 2026-04-18 → 2026-08-01 (+105d) |  |  |  |  |  |
| PRO-SPS-CV-MF-10 | Manufacturing of Civil Works for Pump Stations | 2026-01-26 → 2026-06-23 (+148d) | 2026-04-18 → 2026-08-01 (+105d) | 60d → 40d |  | 5.25d → 28d |  | resources none → Unskilled Labor [107.54 h]; Electrical Technician [41.48 h]; Plumber [9.72 h]; Carpenter [11.81 h]; Mason [9.4 h]; Steel Fixer [12.01 h]; Skilled Labor [32.41 h] |
| SL1 | **Lift Station** | 2026-01-26 → 2026-06-23 (+148d) | 2026-06-08 → 2026-08-01 (+54d) |  |  |  |  |  |
| PRO-LS-CV-MF-30 | Manufacturing of Civil Works for Civil Works for Lift Stations | 2026-01-26 → 2026-06-23 (+148d) | 2026-06-08 → 2026-08-01 (+54d) | 100d → 40d |  | 3.25d → 45d |  | resources none → Unskilled Labor [107.54 h]; Electrical Technician [41.48 h]; Plumber [9.72 h]; Carpenter [11.81 h]; Mason [9.4 h]; Steel Fixer [12.01 h]; Skilled Labor [32.41 h] |
| TE | **Storm Drainage Ponds** | 2026-02-03 → 2026-07-05 (+152d) | 2026-05-07 → 2026-09-02 (+118d) |  |  |  |  |  |
| PRO-DPO-CV-MF-10 | Manufacturing of Civil Works for Storm Drainage Ponds | 2026-02-03 → 2026-07-05 (+152d) | 2026-05-07 → 2026-09-02 (+118d) | 70d → 60d |  | 37d → 16d |  | resources none → Unskilled Labor [161.31 h]; Electrical Technician [62.21 h]; Plumber [14.57 h]; Carpenter [17.72 h]; Mason [14.1 h]; Steel Fixer [18.01 h]; Skilled Labor [48.62 h] |
| SL11 | **Storage Tank (TSE)** | 2026-02-03 → 2026-07-14 (+161d) | 2026-06-04 → 2026-08-22 (+79d) |  |  |  |  |  |
| PRO-TSE-CV-MF-40 | Manufacturing of Civil Works for Civil Works for Storage Tank (TSE) | 2026-02-03 → 2026-07-14 (+161d) | 2026-06-04 → 2026-08-22 (+79d) | 90d → 40d |  | 9.75d → 15d |  | resources none → Unskilled Labor [107.54 h]; Electrical Technician [41.48 h]; Plumber [9.72 h]; Carpenter [11.81 h]; Mason [9.4 h]; Steel Fixer [12.01 h]; Skilled Labor [32.41 h] |
| SL12 | **Gaurd Room** | 2026-02-03 → 2026-07-05 (+152d) | 2026-05-25 → 2026-08-14 (+81d) |  |  |  |  |  |
| PRO-GR-CV-MF-50 | Manufacturing of Civil Works for Civil Works for Gaurd Room | 2026-02-03 → 2026-07-05 (+152d) | 2026-05-25 → 2026-08-14 (+81d) | 85d → 40d |  | 10.75d → 29.75d |  | resources none → Unskilled Labor [107.54 h]; Electrical Technician [41.48 h]; Plumber [9.72 h]; Carpenter [11.81 h]; Mason [9.4 h]; Steel Fixer [12.01 h]; Skilled Labor [32.41 h] |

| ID | Task | Start | Finish | Duration | Total float | Predecessors | Other |
| --- | --- | --- | --- | --- | --- | --- | --- |
| SL121 | **Fence** | 2026-02-03 → 2026-07-04 (+151d) | 2026-04-26 → 2026-07-24 (+89d) |  |  |  |  |
| PRO-FE-CV-MF-60 | Manufacturing of Civil Works for Civil Works for Fence | 2026-02-03 → 2026-07-04 (+151d) | 2026-04-26 → 2026-07-24 (+89d) | 60d → 20d | 38d → -1d |  | resources none → Unskilled Labor [53.77 h]; Electrical Technician [20.74 h]; Plumber [4.86 h]; Carpenter [5.91 h]; Mason [4.7 h]; Steel Fixer [6 h]; Skilled Labor [16.21 h] |
| SL1211 | **Softscape and Planting Works** | 2026-01-24 → 2026-07-13 (+170d) | 2026-08-03 → 2026-10-11 (+69d) |  |  |  |  |
| PRO-FE-CV-MF-70 | Manufacturing of Civil Works for Softscape and Planting Works | 2026-01-24 → 2026-07-13 (+170d) | 2026-08-03 → 2026-10-11 (+69d) | 150d → 90d | 26d → 41.75d | ENG-MT-PL-CV-A-160 → ENG-MT-PL-CV-A-160, ENG-SH-MRK-A-110 | resources none → Unskilled Labor [241.96 h]; Electrical Technician [93.32 h]; Plumber [21.86 h]; Carpenter [26.58 h]; Mason [21.15 h]; Steel Fixer [27.02 h]; Skilled Labor [72.93 h] |
| 3 | **1st Material Delivery & Site Inspection** | 2026-04-18 → 2026-08-02 (+106d) | 2026-06-16 → 2026-10-08 (+114d) |  |  |  |  |
| SL | **Pump Stations** | 2026-04-18 → 2026-08-02 (+106d) | 2026-04-20 → 2026-08-03 (+105d) |  |  |  |  |
| PRO-SPS-CV-1DL-10 | 1ST Material Delivery for Civil Works for Pump Stations | 2026-04-18 → 2026-08-02 (+106d) | 2026-04-20 → 2026-08-03 (+105d) |  | 5.25d → 24.04d |  | resources none → Unskilled Labor [5.38 h]; Electrical Technician [2.07 h]; Plumber [0.49 h]; Carpenter [0.59 h]; Mason [0.47 h]; Steel Fixer [0.6 h]; Skilled Labor [1.62 h] |
| SL1 | **Lift Station** | 2026-06-08 → 2026-08-02 (+55d) | 2026-06-09 → 2026-08-02 (+54d) |  |  |  |  |
| PRO-LS-CV-1DL-40 | 1ST Material Delivery for Civil Works for Civil Works for Lift Stations | 2026-06-08 → 2026-08-02 (+55d) | 2026-06-09 → 2026-08-02 (+54d) |  | 3.25d → 39d |  | resources none → Unskilled Labor [2.69 h]; Electrical Technician [1.04 h]; Plumber [0.24 h]; Carpenter [0.3 h]; Mason [0.23 h]; Steel Fixer [0.3 h]; Skilled Labor [0.81 h] |
| TE | **Drainage Ponds** | 2026-05-07 → 2026-09-03 (+119d) | 2026-06-16 → 2026-10-08 (+114d) |  |  |  |  |
| PRO-DPO-CV-1DL-10 | 1ST Material Delivery for Civil Works for Drainage Ponds | 2026-05-07 → 2026-09-03 (+119d) | 2026-06-16 → 2026-10-08 (+114d) |  | 37d → 13d |  | resources none → Unskilled Labor [80.65 h]; Electrical Technician [31.11 h]; Plumber [7.29 h]; Carpenter [8.86 h]; Mason [7.05 h]; Steel Fixer [9.01 h]; Skilled Labor [24.31 h] |
| SL11 | **Storage Tank (TSE)** | 2026-06-04 → 2026-08-23 (+80d) | 2026-06-06 → 2026-08-23 (+78d) |  |  |  |  |
| PRO-TSE-CV-1DL-50 | 1ST Material Delivery for Civil Works for Civil Works for Storage Tank (TSE) | 2026-06-04 → 2026-08-23 (+80d) | 2026-06-06 → 2026-08-23 (+78d) |  | 9.75d → 13d |  | resources none → Unskilled Labor [2.69 h]; Electrical Technician [1.04 h]; Plumber [0.24 h]; Carpenter [0.3 h]; Mason [0.23 h]; Steel Fixer [0.3 h]; Skilled Labor [0.81 h] |
| SL12 | **Gaurd Room** | 2026-05-25 → 2026-08-15 (+82d) | 2026-06-13 → 2026-08-27 (+75d) |  |  |  |  |
| PRO-GR-CV-1DL-60 | 1ST Material Delivery for Civil Works for Civil Works for Gaurd Room | 2026-05-25 → 2026-08-15 (+82d) | 2026-06-13 → 2026-08-27 (+75d) |  | 10.75d → 25d |  | resources none → Unskilled Labor [32.26 h]; Electrical Technician [12.44 h]; Plumber [2.91 h]; Carpenter [3.54 h]; Mason [2.82 h]; Steel Fixer [3.6 h]; Skilled Labor [9.72 h] |
| 4 | **Material Delivery & Site Inspection** | 2026-02-21 → 2026-07-25 (+154d) | 2026-08-27 → 2026-10-11 (+45d) |  |  |  |  |
| SL | **Pump Stations** | 2026-04-20 → 2026-08-04 (+106d) | 2026-05-02 → 2026-08-04 (+94d) |  |  |  |  |
| PRO-SPS-CV-DL-10 | Material Delivery & Site Inspection for Civil Works for Pump Stations | 2026-04-20 → 2026-08-04 (+106d) | 2026-05-02 → 2026-08-04 (+94d) | 10d → 0d | 5.25d → 24.04d |  | resources Price [724295 SAR] → Price |
| SL1 | **Lift Station** | 2026-06-09 → 2026-08-03 (+55d) | 2026-07-04 → 2026-08-03 (+30d) |  |  |  |  |
| PRO-LS-CV-DL-50 | Material Delivery & Site Inspection for Civil Works for Lift Stations | 2026-06-09 → 2026-08-03 (+55d) | 2026-07-04 → 2026-08-03 (+30d) | 21d → 0d | 3.25d → 39d |  | resources Price [563340 SAR] → Price |
| TE | **Storm Drainage Ponds** | 2026-06-16 → 2026-10-10 (+116d) | 2026-07-27 → 2026-10-10 (+75d) |  |  |  |  |
| PRO-DPO-CV-DL-10 | Material Delivery & Site Inspection for Civil Works for Storm Drainage Ponds | 2026-06-16 → 2026-10-10 (+116d) | 2026-07-27 → 2026-10-10 (+75d) | 35d → 0d | 37d → 28d |  | resources Finished grouted riprap for Pond 300mm as per drawings [3720] → Finished grouted riprap for Pond 300mm as per drawings |
| SL11 | **Storage Tank (TSE)** | 2026-06-04 → 2026-08-23 (+80d) | 2026-06-06 → 2026-08-23 (+78d) |  |  |  |  |
| PRO-TSE-CV-DL-60 | Material Delivery & Site Inspection for Civil Works for Storage Tank (TSE) | 2026-06-04 → 2026-08-23 (+80d) | 2026-06-06 → 2026-08-23 (+78d) | 1d → 0d | 9.75d → 14d |  | resources Glass Fused Bolted (GLS) 1500 m3 Tank with associated accessories & manufacturer recommendation for the foundation [1] → Glass Fused Bolted (GLS) 1500 m3 Tank with associated accessories & manufacturer recommendation for the foundation |
| SL12 | **Gaurd Room** | 2026-06-13 → 2026-08-29 (+77d) | 2026-07-07 → 2026-08-29 (+53d) |  |  |  |  |
| PRO-GR-CV-DL-70 | Material Delivery & Site Inspection for Civil Works for Gaurd Room | 2026-06-13 → 2026-08-29 (+77d) | 2026-07-07 → 2026-08-29 (+53d) | 21d → 0d | 10.75d → 25d | PRO-GR-CV-MF-50 SS+15d, PRO-GR-CV-MF-50 FF, PRO-GR-CV-1DL-60 → PRO-GR-CV-MF-50 SS+2d, PRO-GR-CV-MF-50 FF, PRO-GR-CV-1DL-60 | resources Slab on Grade [20]; Slabs [31]; Lightweight Concrete Roof insulation as per Architect's specification [155]; Insulated brickwork. with expanded polystyrene 200mm thick; vertical straight wall complete with accessories . [102]; Common brickwork. 150mm thick; vertical straight wall complete with accessories. [180]; 2 perpendicular layers of cold bitumen coats [155]; 2 layer of 4mm HDPE membrane, 2 perpendicular layers cold bitumen coats [155]; 1 layer EPOXY Paint 300 micron [155]; Membrane fully bonded to prime deck and upstand [155]; Geotextile Filter membrane uv resistance [155]; 85mm thick thermal insulation [155]; 1.5mm thick epdm waterproofing membrane [155]; CW01 - 4500 mm width x 3700 mm height [1]; CW02 - 4500 mm width x 3700 mm height [1]; CW03 - 4500 mm width x 3700 mm height [1]; CW04 - 4500 mm width x 3700 mm height [1]; CW05 - 7500 mm width x 4250 mm height [1]; CW06 - 7500 mm width x 4250 mm height [1]; W01 - 1000 mm width x 2000 mm height [1]; W02 - 2000 mm width x 2000 mm height [2]; W03 - 2000 mm width x 1000 mm height [3]; D2 - 900 mm x 2200 mm height temper door [7]; D3 - 950 mm x 2000 mm height temper door [2]; Supply and install 300*300mm terrazzo tiles with 150mm high skirting at perimeter with approv [133]; Supply and install 300*300mm glazed ceramic wall tiles on cement mortar and including rough [95]; Supply and install internal plastering and 2 coats of acrylic paint at walls includin [216]; Supply and install 300*300mm glazed ceramic wall tiles on cement mortar and including rough and smooth p [12]; Supply and install 600*600mm porcelain tiles with approved quality on 30 mm mortar inclu [125]; Supply and install 12.5mm thk, gypsum board suspended ceiling including s [5]; Office Chairs [4]; Office Tables [4]; Guard Stand [2]; Magnetic Control Access barrier, Automatic Vehicular Barriers to be installed on ground with magnetic access [6]; Supply and install Hand Wash Basin with Water Tap, angle valve, P-trap connected to 50mm diameter s [3]; Supply and install paper towel dispenser, surface mounted, satin finish stainless steel as per approv [3]; Supply and install mirror, size 460*910mm as per approved sample including frames, backing and all accessories to complete. [3]; Supply and install towel ring , surface mounted, satin finish stainless steel as per approved sample including accessories. [3]; Kitchen sink with single bowl with hot/cold water mixer. [3]; Supply and install Base mounted flush tank water Western water closet system with lid connected to 110mm soil pipe [2]; Gate Valves [2]; Slow Closing Valve [2]; 1 meter length 10mm diameter Flexible Hose with insulated handle complete with fork support, index push, vacuum breaker [2]; 50mm diameter [37]; 75mm diameter [4]; 80mm diameter [11]; 100mm diameter [2]; 110mm diameter [12]; 13mm diameter [1]; 15mm diameter [1]; 20mm diameter [1]; 25mm diameter [19]; 32mm diameter [35]; 40mm diameter [12]; 50mm diameter [1]; 20mm diameter [5]; 25mm diameter [12]; Isolation Valve Size 20 [3]; Isolation Valve Size 25 [3]; Isolation Valve Size 32 [5]; Isolation Valve Size 40 [1]; Isolation Valve Size 50 [1]; 20 mm diameter spray head for cold water supply [3]; Supply and install Electric Water Heater set with connection [3]; Water meter complete with accessories. [3]; Roof drain [3]; Vent on a roof to exhaust air [3]; Floor drain 100x80mm [4]; Gully trap 300x300 mm [3]; inspection chamber, size 800x900x1000 [3]; Mini split actual capacity 2 Ton [1]; Ducted split actual capacity 4 Ton [2]; Supply, fabricate, install and testing factory fabricated metal ducts with flanges complete with supports, vanes, [40]; Supplying, installation testing & commissioning of external insulation on ducts [40]; Supply, fix, testing and commissioning of exhaust air/fresh air louvers of powder coated extruded aluminium construction. [1]; Providing, fixing, testing and commissioning of powder coated extruded aluminum sections grills and diffusers with dampers. [2]; Air Grills 150mm x150mm [2]; Air Diffuser 600mm x 600mm [6]; Supply, Installation & Testing of 2 hours Fire rated system for closing the openings between roo [1]; 4.5 KG CO2 Type Fire Extinguishers [4]; 6 KG ABC Type Fire Extinguishers [4]; Floor cleanout, size 75 mm diameter [2]; Floor cleanout, size 110 mm diameter [4]; GRP water tanks capacity of each 1000 liter complete with all fittings, all valves and concrete pad [3]; Guard Room 1 [1]; Guard Room 2 [1]; Guard Room 3 [1]; 30A, 2P AC Disconnect Switch [11]; 20A Duplex Receptacle Floor Mounted [12]; Twin Socket outlet [6]; Twin Socket outlet, Weather Proof [5]; Single gang Lighting switch [6]; 2way Single gang Lighting switch [2]; 36W LED linear Pendant lighting [14]; 36W LED Emergency linear Pendant lighting [6]; 13W recess mounted LED down light fitting [8]; 13W recess emergency mounted LED down light fitting with 1.5 Hr Battery [6]; 10.4W LED Exit light with 1.5 Hr Battery [3]; 4mm2 Cu./FRLSZH Cable [600]; 6mm2 Cu./FRLSZH Cable [110]; 8 Port Industrial PoE Switch 10/100BaseT (0 deg to +70 deg. Celsius) [31]; 06C Optical Fiber SM [2505]; 48C Optical Fiber SM [7010]; 48 Core Splice Closure [7]; Boom Barrier at Security Guard Room [6]; Pedestrian turnstile at Security Guard Room [6]; Access Control Unit [3]; Access Card Reader [3]; Magnetic Lock [3]; Break Glass [3]; Exit Push button [3]; Door Sensor [3]; Biometrics Reader [2]; Pole/Bollard mounted IP( PoE), Automatic Number Plate Recognition (ANPR, camera, 5MP,IP 66, IR illumin [6]; 12U rack dimension (W x H x L) 600 x 625 x 600 mm [1]; Fire Alarm Control panel with fire alarm zoning with Mimic panel with fire alarm zoning [4]; Main Fire Alarm Control panel with fire alarm zoning with Mimic panel with fire alarm zoning [1]; Supply and installation of the addressable manual call point with operation safety glass breaking and pushbutton [17]; Supply and installation of the photoelectric heat & smoke detector with base [41]; Sounder With Beacon [20]; Addressable Control module for Sounders [20]; Addressable Control module for HVAC System [2]; Addressable Monitor module for HVAC System [2]; 2C x 1.5 Sqm FR Rated Armored - Cable For Loop Wiring [1800]; DACT (Auto - Dailer) for 24x7 Civil Defence [1]; Transmission Communication cable - Fiber Optics 12Core [2500]; Transmission Communication cable - Ethernet Cable [500]; Supply, install to site and installation of power supply system for fire alarm control panel [1]; Supply, install to site and installation of power cable [1600]; Fire Fighter’s Telephone Centre [1]; Fireman’s Telephone Jack [2]; Voice Command Center [1] → Slab on Grade; Slabs; Lightweight Concrete Roof insulation as per Architect's specification; Insulated brickwork. with expanded polystyrene 200mm thick; vertical straight wall complete with accessories .; Common brickwork. 150mm thick; vertical straight wall complete with accessories.; 2 perpendicular layers of cold bitumen coats; 2 layer of 4mm HDPE membrane, 2 perpendicular layers cold bitumen coats; 1 layer EPOXY Paint 300 micron; Membrane fully bonded to prime deck and upstand; Geotextile Filter membrane uv resistance; 85mm thick thermal insulation; 1.5mm thick epdm waterproofing membrane; CW01 - 4500 mm width x 3700 mm height; CW02 - 4500 mm width x 3700 mm height; CW03 - 4500 mm width x 3700 mm height; CW04 - 4500 mm width x 3700 mm height; CW05 - 7500 mm width x 4250 mm height; CW06 - 7500 mm width x 4250 mm height; W01 - 1000 mm width x 2000 mm height; W02 - 2000 mm width x 2000 mm height; W03 - 2000 mm width x 1000 mm height; D2 - 900 mm x 2200 mm height temper door; D3 - 950 mm x 2000 mm height temper door; Supply and install 300*300mm terrazzo tiles with 150mm high skirting at perimeter with approv; Supply and install 300*300mm glazed ceramic wall tiles on cement mortar and including rough; Supply and install internal plastering and 2 coats of acrylic paint at walls includin; Supply and install 300*300mm glazed ceramic wall tiles on cement mortar and including rough and smooth p; Supply and install 600*600mm porcelain tiles with approved quality on 30 mm mortar inclu; Supply and install 12.5mm thk, gypsum board suspended ceiling including s; Office Chairs; Office Tables; Guard Stand; Magnetic Control Access barrier, Automatic Vehicular Barriers to be installed on ground with magnetic access; Supply and install Hand Wash Basin with Water Tap, angle valve, P-trap connected to 50mm diameter s; Supply and install paper towel dispenser, surface mounted, satin finish stainless steel as per approv; Supply and install mirror, size 460*910mm as per approved sample including frames, backing and all accessories to complete.; Supply and install towel ring , surface mounted, satin finish stainless steel as per approved sample including accessories.; Kitchen sink with single bowl with hot/cold water mixer.; Supply and install Base mounted flush tank water Western water closet system with lid connected to 110mm soil pipe; Gate Valves; Slow Closing Valve; 1 meter length 10mm diameter Flexible Hose with insulated handle complete with fork support, index push, vacuum breaker; 50mm diameter; 75mm diameter; 80mm diameter; 100mm diameter; 110mm diameter; 13mm diameter; 15mm diameter; 20mm diameter; 25mm diameter; 32mm diameter; 40mm diameter; Isolation Valve Size 20; Isolation Valve Size 25; Isolation Valve Size 32; Isolation Valve Size 40; Isolation Valve Size 50; 20 mm diameter spray head for cold water supply; Supply and install Electric Water Heater set with connection; Water meter complete with accessories.; Roof drain; Vent on a roof to exhaust air; Floor drain 100x80mm; Gully trap 300x300 mm; inspection chamber, size 800x900x1000; Mini split actual capacity 2 Ton; Ducted split actual capacity 4 Ton; Supply, fabricate, install and testing factory fabricated metal ducts with flanges complete with supports, vanes,; Supplying, installation testing & commissioning of external insulation on ducts; Supply, fix, testing and commissioning of exhaust air/fresh air louvers of powder coated extruded aluminium construction.; Providing, fixing, testing and commissioning of powder coated extruded aluminum sections grills and diffusers with dampers.; Air Grills 150mm x150mm; Air Diffuser 600mm x 600mm; Supply, Installation & Testing of 2 hours Fire rated system for closing the openings between roo; 4.5 KG CO2 Type Fire Extinguishers; 6 KG ABC Type Fire Extinguishers; Floor cleanout, size 75 mm diameter; Floor cleanout, size 110 mm diameter; GRP water tanks capacity of each 1000 liter complete with all fittings, all valves and concrete pad; Guard Room 1; Guard Room 2; Guard Room 3; 30A, 2P AC Disconnect Switch; 20A Duplex Receptacle Floor Mounted; Twin Socket outlet; Twin Socket outlet, Weather Proof; Single gang Lighting switch; 2way Single gang Lighting switch; 36W LED linear Pendant lighting; 36W LED Emergency linear Pendant lighting; 13W recess mounted LED down light fitting; 13W recess emergency mounted LED down light fitting with 1.5 Hr Battery; 10.4W LED Exit light with 1.5 Hr Battery; 4mm2 Cu./FRLSZH Cable; 6mm2 Cu./FRLSZH Cable; 8 Port Industrial PoE Switch 10/100BaseT (0 deg to +70 deg. Celsius); 06C Optical Fiber SM; 48C Optical Fiber SM; 48 Core Splice Closure; Boom Barrier at Security Guard Room; Pedestrian turnstile at Security Guard Room; Access Control Unit; Access Card Reader; Magnetic Lock; Break Glass; Exit Push button; Door Sensor; Biometrics Reader; Pole/Bollard mounted IP( PoE), Automatic Number Plate Recognition (ANPR, camera, 5MP,IP 66, IR illumin; 12U rack dimension (W x H x L) 600 x 625 x 600 mm; Fire Alarm Control panel with fire alarm zoning with Mimic panel with fire alarm zoning; Main Fire Alarm Control panel with fire alarm zoning with Mimic panel with fire alarm zoning; Supply and installation of the addressable manual call point with operation safety glass breaking and pushbutton; Supply and installation of the photoelectric heat & smoke detector with base; Sounder With Beacon; Addressable Control module for Sounders; Addressable Control module for HVAC System; Addressable Monitor module for HVAC System; 2C x 1.5 Sqm FR Rated Armored - Cable For Loop Wiring; DACT (Auto - Dailer) for 24x7 Civil Defence; Transmission Communication cable - Fiber Optics 12Core; Transmission Communication cable - Ethernet Cable; Supply, install to site and installation of power supply system for fire alarm control panel; Supply, install to site and installation of power cable; Fire Fighter s Telephone Centre; Fireman s Telephone Jack; Voice Command Center |
| SL121 | **Fence** | 2026-02-21 → 2026-07-25 (+154d) | 2026-06-30 → 2026-07-25 (+25d) |  |  |  |  |
| PRO-FE-CV-DL-80 | Material Delivery & Site Inspection for Civil Works for Fence | 2026-02-21 → 2026-07-25 (+154d) | 2026-06-30 → 2026-07-25 (+25d) | 97d → 0d | 38d → -0.15d | PRO-FE-CV-MF-60 SS+15d, PRO-FE-CV-MF-60 FF → PRO-FE-CV-MF-60 SS+10d, PRO-FE-CV-MF-60 FF | resources 100 mm thickness lean concrete under the foundation [1500]; Foundation [7310]; Walls [1960]; Beams [288]; Columns [372]; Common brickwork. 300mm thick; vertical straight wall complete with accessories. [8775]; Two Layers of Bituminous Coating [39170]; 20x20 Approved Polysulfide Joint Sealant [415]; Supply and install 33mm thick Lexan cladding blue complete with necessary framings [1114.96]; Supply and install 50mm thick random cut stone cladding complete with 600m [14316.8]; Supply and install External plastering to walls and columns min. 15mm thick with cement mortar of specified grade including [16765]; Supply and install 2 coats of weatherproof paint at walls including one prime coat and [16765]; Guard room coping 350mm [57]; Guard room coping 450mm [27]; Stone coping 500mm [2555]; Stone coping 525mm [1224]; Supply and install MODON Signage with Logo Type 1 [24]; Supply and install MODON Signage Type 2 [24]; Supply and install "Triangle Style" signage [55]; Junction Box for lighting fixture [136]; Trench excavation to receive 2 nos 50mm diameter PVC Conduit, sand bedding and embedded with sa [3505]; Supply, Install, fixings, testing and commissioning 80W LED Projector waterproof DJ effect light including c [3]; Earth Pit [17]; Grounding rod 20mmX3m [9]; Grounding rod with Pit 20mmX3m [4]; Earthing Bar [3]; 120mm2 Tinned copper wire [200]; IR Intrusion Detection System Quad Beams (Tx & Rx) (SL-350 QDM) [60]; Control cable [3110]; CAT6A cable [3110]; Field Equipment Cabinet enclosed outdoor complete with precast concrete footing, suitable for parame [19]; Supply and install 800mm x 800mm x 800mm height concrete handhole with bituminous paint all aroun [19]; 800mm depth minimum Trench excavation to receive 3 nos 50mm diameter PVC Conduit with spacer, sand bedding an [1500]; Hot dipped galvanized cable conduits for CAT6A cable and Control Cables embedded to wall [420]; 400V, 3PH, 60Hz lighting control panel (LCP-02) [1]; 38W, 230V, 1PH, 60Hz fence, led linear uplight lighting, IP66 [136]; 4C-16mm2 CU/XLPE/PVC direct buried armored cable [1300]; 4C-10mm2 CU/XLPE/PVC direct buried armored cable [850]; 16mm2 CU/PVC wire [1300]; 10mm2 CU/PVC wire [850]; 4C-16mm2 CU/XLPE/PVC direct buried armored cable [4080]; 16mm2 CU/PVC wire [4080] → 100 mm thickness lean concrete under the foundation; Foundation; Walls; Beams; Columns; Common brickwork. 300mm thick; vertical straight wall complete with accessories.; Two Layers of Bituminous Coating; 20x20 Approved Polysulfide Joint Sealant; Supply and install 33mm thick Lexan cladding blue complete with necessary framings; Supply and install 50mm thick random cut stone cladding complete with 600m; Supply and install External plastering to walls and columns min. 15mm thick with cement mortar of specified grade including; Supply and install 2 coats of weatherproof paint at walls including one prime coat and; Guard room coping 350mm; Guard room coping 450mm; Stone coping 500mm; Stone coping 525mm; Supply and install MODON Signage with Logo Type 1; Supply and install MODON Signage Type 2; Supply and install "Triangle Style" signage; Junction Box for lighting fixture; Trench excavation to receive 2 nos 50mm diameter PVC Conduit, sand bedding and embedded with sa; Supply, Install, fixings, testing and commissioning 80W LED Projector waterproof DJ effect light including c; Earth Pit; Grounding rod 20mmX3m; Grounding rod with Pit 20mmX3m; Earthing Bar; 120mm2 Tinned copper wire; IR Intrusion Detection System Quad Beams (Tx & Rx) (SL-350 QDM); Control cable; CAT6A cable; Field Equipment Cabinet enclosed outdoor complete with precast concrete footing, suitable for parame; Supply and install 800mm x 800mm x 800mm height concrete handhole with bituminous paint all aroun; 800mm depth minimum Trench excavation to receive 3 nos 50mm diameter PVC Conduit with spacer, sand bedding an; Hot dipped galvanized cable conduits for CAT6A cable and Control Cables embedded to wall; 400V, 3PH, 60Hz lighting control panel (LCP-02); 38W, 230V, 1PH, 60Hz fence, led linear uplight lighting, IP66; 4C-16mm2 CU/XLPE/PVC direct buried armored cable; 4C-10mm2 CU/XLPE/PVC direct buried armored cable; 16mm2 CU/PVC wire; 10mm2 CU/PVC wire |
| SL1211 | **Softscape and Planting Works** | 2026-08-03 → 2026-10-11 (+69d) | 2026-08-27 → 2026-10-11 (+45d) |  |  |  |  |
| PRO-FE-CV-DL-90 | Material Delivery & Site Inspection for Softscape and Planting Works | 2026-08-03 → 2026-10-11 (+69d) | 2026-08-27 → 2026-10-11 (+45d) | 21d → 0d | 26d → 35.75d |  | resources Price [679494 SAR] → Price |
| LL | **Long Lead Time Items** | 2026-01-24 → 2026-06-23 (+150d) | 2026-11-23 → 2026-12-23 (+30d) |  |  |  |  |
| 2 | **Infrastructure Networks** | 2026-01-24 → 2026-06-23 (+150d) | 2026-10-25 → 2026-10-31 (+6d) |  |  |  |  |
| 2 | **CCTV System Wroks of Telecom Network** | 2026-01-24 → 2026-06-23 (+150d) | 2026-10-25 → 2026-10-31 (+6d) |  |  |  |  |
| 3 | **Issuance of Purchase Orders** | 2026-01-24 → 2026-06-23 (+150d) | 2026-03-18 → 2026-07-15 (+119d) |  |  |  |  |
| PRO-CTV-LL-PO-10 | Issuance of Purchase Order for Low Current Works of CCTV Complete System with All Accessories | 2026-01-24 → 2026-06-23 (+150d) | 2026-03-18 → 2026-07-15 (+119d) | 40d → 20d | 40d → 43d |  | resources none → Unskilled Labor [53.77 h]; Electrical Technician [20.74 h]; Plumber [4.86 h]; Carpenter [5.91 h]; Mason [4.7 h]; Steel Fixer [6 h]; Skilled Labor [16.21 h] |
| 1 | **Manufacturing of Material** | 2026-03-19 → 2026-07-16 (+119d) | 2026-08-03 → 2026-10-13 (+71d) |  |  |  |  |
| PRO-CTV-LL-MF-10 | Manufacturing of Low Current Works for CCTV Complete System with All Accessories | 2026-03-19 → 2026-07-16 (+119d) | 2026-08-03 → 2026-10-13 (+71d) | 110d → 90d | 40d → 50d |  | resources none → Unskilled Labor [241.96 h]; Electrical Technician [93.32 h]; Plumber [21.86 h]; Carpenter [26.58 h]; Mason [21.15 h]; Steel Fixer [27.02 h]; Skilled Labor [72.93 h] |
| 2 | **Material Shipping/Custom Clearance/Delivery** | 2026-08-03 → 2026-10-13 (+71d) | 2026-09-07 → 2026-10-31 (+54d) |  |  |  |  |
| PRO-CTV-LL-SH/DL-10 | Material Delivery for Low Current Works of CCTV Complete System with All Accessories | 2026-08-03 → 2026-10-13 (+71d) | 2026-09-07 → 2026-10-31 (+54d) | 30d → 15d | 40d → 43.12d |  | resources none → Unskilled Labor [40.33 h]; Electrical Technician [15.55 h]; Plumber [3.64 h]; Carpenter [4.43 h]; Mason [3.52 h]; Steel Fixer [4.5 h]; Skilled Labor [12.15 h] |
| 4 | **Material Site Inspection** | 2026-09-07 → 2026-10-31 (+54d) | 2026-10-25 → 2026-10-31 (+6d) |  |  |  |  |
| PRO-CTV-LL-MSI-10 | Material Site Inspection for Low Current Works of CCTV Complete System with All Accessories | 2026-09-07 → 2026-10-31 (+54d) | 2026-10-25 → 2026-10-31 (+6d) | 40d → 0d | 40d → 43.12d |  | resources NVR Server with RAID (5, 6 or 10) to record all cameras storage 80TB with all hardware / software / licenses etc. [2]; VMS Server with RAID (5, 6 or 10) complete Hardware / Software with one Color Laser Printer and all associated [2]; Licenses for Cameras, Workstations and Keyboards [1]; Work Station (MMI with two monitors each, for Monitoring for CCTV & ACS) [1]; Keyboard with joystick for CCTV with all accessories as per specification [1]; Pole mounted IP( PoE) Fixed camera, 5MP,IP 66, IR illumination, 3-8mm varifocal, auto iris lens type [44]; Wall mounted IP( PoE) Fixed camera, 5MP,IP 66, IR illumination, 3-8mm varifocal, auto iris lens type [78]; 5MP Dome camera ceiling Mounted IP (PoE) indoor [17]; 5MP PTZ Multi Sensor Camera IP(PoE) 360 Degree View Outdoor with accessories (IP 66) [7]; 8 Port Industrial PoE Switch 10/100BaseT (0 deg to +70 deg. Celsius) [12]; Filed Equipment cabinet (FEC), with fan and ventilation, NEMEX 4X ,door, minimum size (600x600x400mm) [12]; IP Phone Communication server (hot standby) 50 Port equipped, Gateway, Gatekeeper, H.323, SIP, redundant Power etc. [3]; IP Phone Voice gateway [1]; Voice IP Phone [1]; NMS Server for IP phone and NETWORK Elements [1]; NMS Workstation [1]; Firm Ware, software & licenses [1]; Data Cable [1]; Power Cable [1]; Layer 3, 24 Port non-PoE switch10/1000BaseT/LX (-40 deg to +70 deg. Celsius), stack module and associated [2]; Layer 2, 24 Port non-PoE switch10/1000BaseT (-40 deg to +70 deg. Celsiu [6]; Network Management System Server [2]; Network Management System workstation [1]; 42U rack dimension (W x H x L) 800 x 2000 x 1000 mm [2]; 12U rack dimension (W x H x L) 600 x 625 x 600 mm [1]; 06C Optical Fiber SM [1820]; 48C Optical Fiber SM [5800]; 48 Core Splice Closure [7]; Optical fiber patch cord 5m [24]; Data Cable (STP CAT 6A) [10320]; 3C Power Cable armored 1.5mm2 [10320]; 3C Power Cable armored 2.5 mm2 [10320]; UTP CAT6A Patch Cord 1m/3m/5m [23]; Access Control Unit [5]; Access Card Reader [5]; Magnetic Lock [5]; Break Glass [4]; Exit Push button [5]; Door Sensor [5]; Biometrics Reader [8]; Smart Card Printer [1]; Card Issue Work Station [1]; Photographic Camera with stand [1]; Interface modules with CCTV, Fire and other systems [1] → NVR Server with RAID (5, 6 or 10) to record all cameras storage 80TB with all hardware / software / licenses etc.; VMS Server with RAID (5, 6 or 10) complete Hardware / Software with one Color Laser Printer and all associated; Licenses for Cameras, Workstations and Keyboards; Work Station (MMI with two monitors each, for Monitoring for CCTV & ACS); Keyboard with joystick for CCTV with all accessories as per specification; Pole mounted IP( PoE) Fixed camera, 5MP,IP 66, IR illumination, 3-8mm varifocal, auto iris lens type; Wall mounted IP( PoE) Fixed camera, 5MP,IP 66, IR illumination, 3-8mm varifocal, auto iris lens type; 5MP Dome camera ceiling Mounted IP (PoE) indoor; 5MP PTZ Multi Sensor Camera IP(PoE) 360 Degree View Outdoor with accessories (IP 66); 8 Port Industrial PoE Switch 10/100BaseT (0 deg to +70 deg. Celsius); Filed Equipment cabinet (FEC), with fan and ventilation, NEMEX 4X ,door, minimum size (600x600x400mm); IP Phone Communication server (hot standby) 50 Port equipped, Gateway, Gatekeeper, H.323, SIP, redundant Power etc.; IP Phone Voice gateway; Voice IP Phone; NMS Server for IP phone and NETWORK Elements; NMS Workstation; Firm Ware, software & licenses; Data Cable; Power Cable; Layer 3, 24 Port non-PoE switch10/1000BaseT/LX (-40 deg to +70 deg. Celsius), stack module and associated; Layer 2, 24 Port non-PoE switch10/1000BaseT (-40 deg to +70 deg. Celsiu; Network Management System Server; Network Management System workstation; 42U rack dimension (W x H x L) 800 x 2000 x 1000 mm; 12U rack dimension (W x H x L) 600 x 625 x 600 mm; 06C Optical Fiber SM; 48C Optical Fiber SM; 48 Core Splice Closure; Optical fiber patch cord 5m; Data Cable (STP CAT 6A); 3C Power Cable armored 1.5mm2; 3C Power Cable armored 2.5 mm2; UTP CAT6A Patch Cord 1m/3m/5m; Access Control Unit; Access Card Reader; Magnetic Lock; Break Glass; Exit Push button; Door Sensor; Biometrics Reader; Smart Card Printer; Card Issue Work Station; Photographic Camera with stand; Interface modules with CCTV, Fire and other systems |
| 1 | **Superstructure Works** | 2026-01-24 → 2026-07-04 (+161d) | 2026-11-23 → 2026-12-23 (+30d) |  |  |  |  |
| SL | **Pump Stations** | 2026-01-24 → 2026-07-04 (+161d) | 2026-11-23 → 2026-12-20 (+27d) |  |  |  |  |
| 1 | **Issuance of Purchase Orders** | 2026-01-24 → 2026-07-04 (+161d) | 2026-04-15 → 2026-08-06 (+113d) |  |  |  |  |
| PRO-SPS-LL-PO-10 | Issuance of Purchase Order for Electromechanical Works for Pump Stations | 2026-01-24 → 2026-07-04 (+161d) | 2026-04-15 → 2026-08-06 (+113d) | 60d → 30d | 37d → 31.25d |  | resources none → Unskilled Labor [80.65 h]; Electrical Technician [31.11 h]; Plumber [7.29 h]; Carpenter [8.86 h]; Mason [7.05 h]; Steel Fixer [9.01 h]; Skilled Labor [24.31 h] |
| 2 | **Manufacturing of Material** | 2026-04-15 → 2026-08-07 (+114d) | 2026-08-03 → 2026-10-05 (+63d) |  |  |  |  |
| PRO-SPS-LL-MF-10 | Manufacturing of Electromechanical Works for Pump Stations | 2026-04-15 → 2026-08-07 (+114d) | 2026-08-03 → 2026-10-05 (+63d) | 90d → 60d |  |  | resources none → Unskilled Labor [161.31 h]; Electrical Technician [62.21 h]; Plumber [14.57 h]; Carpenter [17.72 h]; Mason [14.1 h]; Steel Fixer [18.01 h]; Skilled Labor [48.62 h] |
| 3 | **Material Shipping/Custom Clearance/Delivery** | 2026-08-03 → 2026-10-06 (+64d) | 2026-10-01 → 2026-11-09 (+39d) |  |  |  |  |
| PRO-SPS-LL-SH/DL-10 | Material Delivery for Electromechanical Works for Pump Stations | 2026-08-03 → 2026-10-06 (+64d) | 2026-10-01 → 2026-11-09 (+39d) | 50d → 30d | 37d → 32d |  | resources none → Unskilled Labor [80.65 h]; Electrical Technician [31.11 h]; Plumber [7.29 h]; Carpenter [8.86 h]; Mason [7.05 h]; Steel Fixer [9.01 h]; Skilled Labor [24.31 h] |
| 4 | **Material Site Inspection** | 2026-10-01 → 2026-11-10 (+40d) | 2026-11-23 → 2026-12-20 (+27d) |  |  |  |  |
| PRO-SPS-LL-MSI-10 | Material Site Inspection for Electromechanical Works for Pump Stations | 2026-10-01 → 2026-11-10 (+40d) | 2026-11-23 → 2026-12-20 (+27d) | 45d → 35d | 37d → 32d |  | resources none → Unskilled Labor [94.09 h]; Electrical Technician [36.29 h]; Plumber [8.5 h]; Carpenter [10.34 h]; Mason [8.22 h]; Steel Fixer [10.51 h]; Skilled Labor [28.36 h] |
| SL1 | **Lift Stations** | 2026-01-24 → 2026-07-04 (+161d) | 2026-11-23 → 2026-12-23 (+30d) |  |  |  |  |
| 1 | **Issuance of Purchase Orders** | 2026-01-24 → 2026-07-04 (+161d) | 2026-04-15 → 2026-08-06 (+113d) |  |  |  |  |
| PRO-LS-LL-PO-20 | Issuance of Purchase Order for Electromechanical Works for Lift Stations | 2026-01-24 → 2026-07-04 (+161d) | 2026-04-15 → 2026-08-06 (+113d) | 60d → 30d | 41d → 18.25d |  | resources none → Unskilled Labor [80.65 h]; Electrical Technician [31.11 h]; Plumber [7.29 h]; Carpenter [8.86 h]; Mason [7.05 h]; Steel Fixer [9.01 h]; Skilled Labor [24.31 h] |
| 2 | **Manufacturing of Material** | 2026-04-15 → 2026-08-07 (+114d) | 2026-08-03 → 2026-10-05 (+63d) |  |  |  |  |
| PRO-LS-LL-MF-20 | Manufacturing of Electromechanical Works for Lift Stations | 2026-04-15 → 2026-08-07 (+114d) | 2026-08-03 → 2026-10-05 (+63d) | 90d → 60d | 41d → 22d |  | resources none → Unskilled Labor [161.31 h]; Electrical Technician [62.21 h]; Plumber [14.57 h]; Carpenter [17.72 h]; Mason [14.1 h]; Steel Fixer [18.01 h]; Skilled Labor [48.62 h] |
| 3 | **Material Shipping/Custom Clearance/Delivery** | 2026-08-03 → 2026-10-06 (+64d) | 2026-10-01 → 2026-11-09 (+39d) |  |  |  |  |
| PRO-LS-LL-SH/DL-20 | Material Delivery for Electromechanical Works for Lift Stations | 2026-08-03 → 2026-10-06 (+64d) | 2026-10-01 → 2026-11-09 (+39d) | 50d → 30d | 41d → 19d |  | resources none → Unskilled Labor [80.65 h]; Electrical Technician [31.11 h]; Plumber [7.29 h]; Carpenter [8.86 h]; Mason [7.05 h]; Steel Fixer [9.01 h]; Skilled Labor [24.31 h] |
| 4 | **Material Site Inspection** | 2026-10-01 → 2026-11-10 (+40d) | 2026-11-23 → 2026-12-23 (+30d) |  |  |  |  |
| PRO-LS-LL-MSI-20 | Material Site Inspection for Electromechanical Works for Lift Stations | 2026-10-01 → 2026-11-10 (+40d) | 2026-11-23 → 2026-12-23 (+30d) | 45d → 38d | 41d → 19d |  | resources none → Unskilled Labor [102.16 h]; Electrical Technician [39.4 h]; Plumber [9.23 h]; Carpenter [11.22 h]; Mason [8.93 h]; Steel Fixer [11.41 h]; Skilled Labor [30.79 h] |
| SL2 | **Storage Tank (TSE)** | 2026-01-24 → 2026-07-04 (+161d) | 2026-11-23 → 2026-12-23 (+30d) |  |  |  |  |
| 1 | **Issuance of Purchase Orders** | 2026-01-24 → 2026-07-04 (+161d) | 2026-04-15 → 2026-08-06 (+113d) |  |  |  |  |
| PRO-TSE-LL-PO-30 | Issuance of Purchase Order for Electromechanical Works for Storage Tank (TSE) | 2026-01-24 → 2026-07-04 (+161d) | 2026-04-15 → 2026-08-06 (+113d) | 60d → 30d | 41d → 18.25d |  | resources none → Unskilled Labor [80.65 h]; Electrical Technician [31.11 h]; Plumber [7.29 h]; Carpenter [8.86 h]; Mason [7.05 h]; Steel Fixer [9.01 h]; Skilled Labor [24.31 h] |
| 2 | **Manufacturing of Material** | 2026-04-15 → 2026-08-07 (+114d) | 2026-08-09 → 2026-10-05 (+57d) |  |  |  |  |
| PRO-TSE-LL-MF-30 | Manufacturing of Electromechanical Works for Storage Tank (TSE) | 2026-04-15 → 2026-08-07 (+114d) | 2026-08-09 → 2026-10-05 (+57d) | 95d → 60d | 41d → 22d |  | resources none → Unskilled Labor [161.31 h]; Electrical Technician [62.21 h]; Plumber [14.57 h]; Carpenter [17.72 h]; Mason [14.1 h]; Steel Fixer [18.01 h]; Skilled Labor [48.62 h] |
| 3 | **Material Shipping/Custom Clearance/Delivery** | 2026-08-09 → 2026-10-06 (+58d) | 2026-10-01 → 2026-11-09 (+39d) |  |  |  |  |
| PRO-TSE-LL-SH/DL-30 | Material Delivery for Electromechanical Works for Storage Tank (TSE) | 2026-08-09 → 2026-10-06 (+58d) | 2026-10-01 → 2026-11-09 (+39d) | 45d → 30d | 41d → 19d |  | resources none → Unskilled Labor [80.65 h]; Electrical Technician [31.11 h]; Plumber [7.29 h]; Carpenter [8.86 h]; Mason [7.05 h]; Steel Fixer [9.01 h]; Skilled Labor [24.31 h] |
| 4 | **Material Site Inspection** | 2026-10-01 → 2026-11-10 (+40d) | 2026-11-23 → 2026-12-23 (+30d) |  |  |  |  |
| PRO-TSE-LL-MSI-30 | Material Site Inspection for Electromechanical Works for Storage Tank (TSE) | 2026-10-01 → 2026-11-10 (+40d) | 2026-11-23 → 2026-12-23 (+30d) | 45d → 38d | 41d → 19d |  | resources none → Unskilled Labor [102.16 h]; Electrical Technician [39.4 h]; Plumber [9.23 h]; Carpenter [11.22 h]; Mason [8.93 h]; Steel Fixer [11.41 h]; Skilled Labor [30.79 h] |
| CON | **Construction Works** | 2026-02-24 → 2026-03-07 (+11d) | 2027-02-22 → 2027-02-23 (+1d) |  |  |  |  |

| ID | Task | Start | Finish | Duration | Complete | Total float | Predecessors | Other |
| --- | --- | --- | --- | --- | --- | --- | --- | --- |
| INF | **Infrastructure Networks** | 2026-02-24 → 2026-03-07 (+11d) | 2026-12-27 → 2027-02-16 (+51d) |  |  |  |  |  |
| EW | **Earthworks** | 2026-02-24 → 2026-03-07 (+11d) | 2026-05-09 → 2026-08-02 (+85d) |  |  |  |  |  |
| EW | **Earthworks** | 2026-02-24 → 2026-03-07 (+11d) | 2026-05-09 → 2026-08-02 (+85d) |  |  |  |  |  |
| CO-EW-200 | Excavation Works Upto Design Level for Earthworks-P1(Completed) | 2026-02-24 → 2026-03-07 A (+11d) | 2026-03-25 → 2026-06-15 A (+82d) | 17d → 77d | 0% → 100% | 0d → none | MS-CS-PS SS, MOB-30, MOB-20, MOB-80, MOB-40, MOB-50, MOB-60 FS+15d, MOB-10, MOB-70, PRE-CON-MDC-10, PRE-CON-MDC-20, PRE-CON-MDC-30, PRE-CON-MDC-40, PRE-CON-MDC-50, PRE-CON-MDC-60, PRE-CON-MDC-70, PRE-CON-MDC-80, MS-CF-EBL, MS-CF-ENG → MS-CS-PS SS, MOB-30, MOB-20, MOB-80, MOB-40, MOB-50, MOB-60 FF+15d, MOB-10, MOB-70, PRE-CON-MDC-10, PRE-CON-MDC-20, PRE-CON-MDC-30, PRE-CON-MDC-40, PRE-CON-MDC-50, PRE-CON-MDC-60, PRE-CON-MDC-70, PRE-CON-MDC-80 | was named Excavation Works Upto Design Level for Earthworks-P1; resources Excavations (including Roads , Plots and Pond) [200967]; Unskilled Labor [1632 h]; Dozer [1632 h]; Excavator [1632 h]; Loader [1632 h]; Dump Truck [3264 h] → Unskilled Labor [701.76 h]; Dozer [701.76 h]; Excavator [701.76 h]; Loader [701.76 h]; Dump Truck [1403.52 h]; Excavations (including Roads , Plots and Pond) [128979] |
| CO-EW-210 | Excavation Works Upto Design Level for Earthworks-P2(Completed) | 2026-03-25 → 2026-04-02 A (+8d) | 2026-04-15 → 2026-06-15 A (+61d) | 18d → 59.25d | 0% → 100% | 0d → none | CO-EW-200, MS-CF-MOB → CO-EW-200 SS | was named Excavation Works Upto Design Level for Earthworks-P2; resources Excavations (including Roads , Plots and Pond) [100483]; Unskilled Labor [864 h]; Dozer [864 h]; Excavator [864 h]; Loader [864 h]; Dump Truck [1728 h] → Unskilled Labor [336.96 h]; Dozer [336.96 h]; Excavator [336.96 h]; Loader [336.96 h]; Dump Truck [673.92 h]; Excavations (including Roads , Plots and Pond) [58490.3] |
| CO-EW-220 | Excavation Works Upto Design Level for Earthworks-P3(Completed) | 2026-04-15 → 2026-04-02 A (-13d) | 2026-05-06 → 2026-06-15 A (+40d) | 18d → 59.25d | 0% → 100% | 0d → none | CO-EW-210 → CO-EW-210 SS | was named Excavation Works Upto Design Level for Earthworks-P3; resources Excavations (including Roads , Plots and Pond) [200967]; Unskilled Labor [1728 h]; Dozer [1728 h]; Excavator [1728 h]; Loader [1728 h]; Dump Truck [3456 h] → Unskilled Labor [622.08 h]; Dozer [622.08 h]; Excavator [622.08 h]; Loader [622.08 h]; Dump Truck [1244.16 h]; Excavations (including Roads , Plots and Pond) [107982] |
| CO-EW-110 | Embankments Works Upto Design Level for Earthworks(Completed) | 2026-04-15 → 2026-04-28 A (+13d) | 2026-05-09 → 2026-06-15 A (+37d) | 20d → 38d | 0% → 100% | 0d → none |  | was named Embankments Works Upto Design Level for Earthworks; resources Embankments to the Site and Roads (including Roads , Plots and Pond) [314650]; Unskilled Labor [2240 h]; Dozer [2240 h]; Excavator [2240 h]; Loader [2240 h]; Dump Truck [4480 h] → Unskilled Labor [470.4 h]; Dozer [470.4 h]; Excavator [470.4 h]; Loader [470.4 h]; Dump Truck [940.8 h]; Embankments to the Site and Roads (including Roads , Plots and Pond) [98621.6] |
| SD | **Storm Drainage Network** | 2026-04-15 → 2026-07-15 (+91d) | 2026-08-17 → 2026-11-01 (+76d) |  |  |  |  |  |
| MH25-MH12 | **FROM MH-25:MH-12** | 2026-04-15 → 2026-07-15 (+91d) | 2026-07-01 → 2026-09-30 (+91d) |  |  |  |  |  |
| ML | **Main Line Sections** | 2026-04-15 → 2026-07-15 (+91d) | 2026-05-21 → 2026-08-04 (+75d) |  |  |  |  |  |
| CO-SD-ML-100 | Trench Excavation and Bedding Works for Main Lines of Storm Drainage Network | 2026-04-15 → 2026-07-15 (+91d) | 2026-04-19 → 2026-07-18 (+90d) |  |  | 0d → 3.5d | CO-EW-200 SS+10d, CO-EW-110 SS, ENG-SH-SD-ML-A-110, ENG-MT-SD-ML-A-110, PRO-SD-1DL-110, CO-EW-220 SS → CO-EW-200_R SS+10d, CO-EW-110_R SS, ENG-SH-SD-ML-A-110, ENG-MT-SD-ML-A-110, PRO-SD-1DL-110 SS, CO-EW-220_R SS, CO-EW-210_R | resources Depth Between 0m to 1.50m; Depth Between 0m to 1.50m [13.06]; Depth Between 1.50m to 2.50m [387.61]; Depth > 2.50m [2.06]; Depth Between 1.50m to 2.50m [75.35]; Depth Between 2.50m to 3.50m [60.36]; Depth > 3.50m [2.06]; Depth Between 2.50m to 3.50m [26.26]; Depth Between 0m to 1.50m [3.85]; Depth Between 1.50m to 2.50m [1.38]; Depth Between 2.50m to 3.50m [12.93]; Depth > 3.50m [0.96]; Depth Between 2.50m to 3.50m [16.64]; Depth Between 3.50m to 4.50m [51.01]; Depth > 4.50m [2.06]; Depth Between 3.50m to 4.50m [101.34]; Depth > 4.50m [3.44]; Skilled Labor [96 h]; Unskilled Labor [96 h]; Excavator [96 h] → Unskilled Labor [96 h]; Excavator [96 h]; Skilled Labor [96 h]; Depth Between 0m to 1.50m; Depth Between 0m to 1.50m [19.5]; Depth Between 1.50m to 2.50m [578.53]; Depth > 2.50m [3.08]; Depth Between 1.50m to 2.50m [112.46]; Depth Between 2.50m to 3.50m [90.09]; Depth > 3.50m [3.08]; Depth Between 2.50m to 3.50m [39.2]; Depth Between 0m to 1.50m [5.75]; Depth Between 1.50m to 2.50m [2.05]; Depth Between 2.50m to 3.50m [19.29]; Depth > 3.50m [1.44]; Depth Between 2.50m to 3.50m [24.83]; Depth Between 3.50m to 4.50m [76.14]; Depth > 4.50m [3.08]; Depth Between 3.50m to 4.50m [151.25]; Depth > 4.50m [5.13] |
| CO-SD-ML-120 | Pipes Laying Works for Main Lines of Storm Drainage Network | 2026-04-19 → 2026-07-19 (+91d) | 2026-05-05 → 2026-07-23 (+79d) | 14d → 5d |  | 0d → 3.5d | CO-SD-ML-100, PRO-R25-SD-DL-120 → CO-SD-ML-100, PRO-R25-SD-DL-120, CO-EW-210_R | resources Depth Between 0m to 1.50m [23.51]; Depth Between 1.50m to 2.50m [697.7]; Depth > 2.50m [3.71]; Depth Between 1.50m to 2.50m [135.63]; Depth Between 2.50m to 3.50m [108.65]; Depth > 3.50m [3.71]; Depth Between 2.50m to 3.50m [47.27]; Depth Between 0m to 1.50m [6.93]; Depth Between 1.50m to 2.50m [2.48]; Depth Between 2.50m to 3.50m [23.27]; Depth > 3.50m [1.73]; Depth Between 2.50m to 3.50m [29.95]; Depth Between 3.50m to 4.50m [91.82]; Depth > 4.50m [3.71]; Depth Between 3.50m to 4.50m [182.41]; Depth > 4.50m [6.19]; Skilled Labor [224 h]; Unskilled Labor [448 h]; Plumber [224 h]; Excavator [224 h] → Unskilled Labor [448 h]; Plumber [224 h]; Excavator [224 h]; Skilled Labor [224 h]; Depth Between 0m to 1.50m [35.09]; Depth Between 1.50m to 2.50m [1041.35]; Depth > 2.50m [5.54]; Depth Between 1.50m to 2.50m [202.43]; Depth Between 2.50m to 3.50m [162.17]; Depth > 3.50m [5.54]; Depth Between 2.50m to 3.50m [70.56]; Depth Between 0m to 1.50m [10.34]; Depth Between 1.50m to 2.50m [3.69]; Depth Between 2.50m to 3.50m [34.72]; Depth > 3.50m [2.59]; Depth Between 2.50m to 3.50m [44.7]; Depth Between 3.50m to 4.50m [137.05]; Depth > 4.50m [5.54]; Depth Between 3.50m to 4.50m [272.25]; Depth > 4.50m [9.24] |
| CO-SD-ML-130 | Trench Backfilling and Compaction Works for Main Lines of Storm Drainage Network | 2026-05-05 → 2026-07-25 (+81d) | 2026-05-21 → 2026-08-04 (+75d) | 14d → 10d |  | 0d → 3.5d | CO-SD-ML-120 → CO-SD-ML-120, CO-EW-210_R, CO-EW-220_R, PRO-R25-SD-DL-120 | resources Depth Between 0m to 1.50m [10.45]; Depth Between 1.50m to 2.50m [310.09]; Depth > 2.50m [1.65]; Depth Between 1.50m to 2.50m [60.28]; Depth Between 2.50m to 3.50m [48.29]; Depth > 3.50m [1.65]; Depth Between 2.50m to 3.50m [21.01]; Depth Between 0m to 1.50m [3.08]; Depth Between 1.50m to 2.50m [1.1]; Depth Between 2.50m to 3.50m [10.34]; Depth > 3.50m [0.77]; Depth Between 2.50m to 3.50m [13.31]; Depth Between 3.50m to 4.50m [40.81]; Depth > 4.50m [1.65]; Depth Between 3.50m to 4.50m [81.07]; Depth > 4.50m [2.75]; Unskilled Labor [224 h]; Excavator [224 h]; JCB [224 h]; Dump Truck [224 h] → Unskilled Labor [224 h]; Excavator [224 h]; JCB [224 h]; Dump Truck [224 h]; Depth Between 0m to 1.50m [15.6]; Depth Between 1.50m to 2.50m [462.82]; Depth > 2.50m [2.46]; Depth Between 1.50m to 2.50m [89.97]; Depth Between 2.50m to 3.50m [72.07]; Depth > 3.50m [2.46]; Depth Between 2.50m to 3.50m [31.36]; Depth Between 0m to 1.50m [4.6]; Depth Between 1.50m to 2.50m [1.64]; Depth Between 2.50m to 3.50m [15.43]; Depth > 3.50m [1.15]; Depth Between 2.50m to 3.50m [19.87]; Depth Between 3.50m to 4.50m [60.91]; Depth > 4.50m [2.46]; Depth Between 3.50m to 4.50m [121]; Depth > 4.50m [4.1] |
| MH | **Manholes** | 2026-05-05 → 2026-08-09 (+96d) | 2026-06-08 → 2026-09-06 (+90d) |  |  |  |  |  |
| CO-SD-MH-180 | Trench Excavation and Bedding Works for Manholes of Storm Drainage Network | 2026-05-05 → 2026-08-09 (+96d) | 2026-05-13 → 2026-08-16 (+95d) |  |  | 17d → 0d | CO-SD-ML-120, ENG-MT-SD-ML-A-100, 1ST Material Delivery for Manholes of Storm Drainage Network → CO-SD-ML-120, ENG-MT-SD-ML-A-100, PRO-R25-SD-DL-100 SS, PRO-SD-MF-100, CO-EW-210_R, CO-EW-220_R, CO-EW-110_R | resources MH depth 1.5 - 2.5m [1.65]; MH depth 2.5 - 3.5m [1.35]; MH depth > 3.50m [0.15]; MH depth 2.5 -3.5m [0.15]; Skilled Labor [56 h]; Unskilled Labor [56 h]; Excavator [56 h] → Unskilled Labor [56 h]; Excavator [56 h]; Skilled Labor [56 h]; MH depth 1.5 - 2.5m [2.46]; MH depth 2.5 - 3.5m [2.01]; MH depth > 3.50m [0.22]; MH depth 2.5 -3.5m [0.22] |
| CO-SD-MH-190 | Install RC Footing Works for Manholes of Storm Drainage Network | 2026-05-13 → 2026-08-17 (+96d) | 2026-05-21 → 2026-08-24 (+95d) |  |  | 17d → 0d |  | resources MH depth 1.5 - 2.5m [2.75]; MH depth 2.5 - 3.5m [2.25]; MH depth > 3.50m [0.25]; MH depth 2.5 -3.5m [0.25]; Skilled Labor [56 h]; Unskilled Labor [112 h]; Plumber [56 h]; Excavator [56 h] → Unskilled Labor [112 h]; Plumber [56 h]; Excavator [56 h]; Skilled Labor [56 h]; MH depth 1.5 - 2.5m [4.1]; MH depth 2.5 - 3.5m [3.36]; MH depth > 3.50m [0.37]; MH depth 2.5 -3.5m [0.37] |
| CO-SD-MH-200 | Install RC Wall Rings & Slab Works for Manholes of Storm Drainage Network | 2026-05-21 → 2026-08-25 (+96d) | 2026-05-31 → 2026-08-29 (+90d) |  |  | 17d → 0d | CO-SD-MH-190 → CO-SD-MH-190, PRO-R25-SD-DL-100 | resources MH depth 1.5 - 2.5m [1.65]; MH depth 2.5 - 3.5m [1.35]; MH depth > 3.50m [0.15]; MH depth 2.5 -3.5m [0.15]; Unskilled Labor [64 h]; Plumber [32 h]; Excavator [32 h]; Mobile Crane [32 h] → Unskilled Labor [64 h]; Plumber [32 h]; Excavator [32 h]; Mobile Crane [32 h]; MH depth 1.5 - 2.5m [2.46]; MH depth 2.5 - 3.5m [2.01]; MH depth > 3.50m [0.22]; MH depth 2.5 -3.5m [0.22] |
| CO-SD-MH-220 | Backfilling Works for Manholes of Storm Drainage Network | 2026-05-31 → 2026-08-30 (+91d) | 2026-06-08 → 2026-09-06 (+90d) |  |  | 17d → 0d |  | resources MH depth 1.5 - 2.5m [2.2]; MH depth 2.5 - 3.5m [1.8]; MH depth > 3.50m [0.2]; MH depth 2.5 -3.5m [0.2]; Unskilled Labor [56 h]; Excavator [56 h]; JCB [56 h]; Dump Truck [56 h] → Unskilled Labor [56 h]; Excavator [56 h]; JCB [56 h]; Dump Truck [56 h]; MH depth 1.5 - 2.5m [3.28]; MH depth 2.5 - 3.5m [2.69]; MH depth > 3.50m [0.3]; MH depth 2.5 -3.5m [0.3] |
| CB | **Catch Basin Sections** | 2026-05-13 → 2026-08-17 (+96d) | 2026-07-01 → 2026-09-30 (+91d) |  |  |  |  |  |
| CO-SD-CB-140 | Trench Excavation and Bedding Works for Catch Basins of Storm Drainage Network | 2026-05-13 → 2026-08-17 (+96d) | 2026-05-25 → 2026-08-27 (+94d) |  |  | 25d → 8d | CO-SD-MH-180, ENG-MT-SD-CB-A-110, PRO-SD-1DL-120, PRO-SD-1DL-130 → CO-SD-MH-180, ENG-MT-SD-CB-A-110, PRO-SD-1DL-120, PRO-SD-1DL-130, PRO-R25-SD-DL-100 | resources Single Catch Basin 1000mm x 1000mm [16.2]; Double Catch Basin 1200mm x 2300mm [0.3]; Skilled Labor [160 h]; Unskilled Labor [160 h]; Excavator [160 h] → Unskilled Labor [160 h]; Excavator [160 h]; Skilled Labor [160 h]; Single Catch Basin 1000mm x 1000mm [24.18]; Double Catch Basin 1200mm x 2300mm [0.45] |
| CO-SD-CB-150 | Installation and Pipes Laying Connection Works for Catch Basins of Storm Drainage Network | 2026-06-08 → 2026-09-07 (+91d) | 2026-06-20 → 2026-09-17 (+89d) |  |  | 17d → 0d |  | resources Single Catch Basin 1000mm x 1000mm [48.6]; Double Catch Basin 1200mm x 2300mm [0.9]; Skilled Labor [160 h]; Unskilled Labor [320 h]; Plumber [160 h]; Excavator [160 h] → Unskilled Labor [320 h]; Plumber [160 h]; Excavator [160 h]; Skilled Labor [160 h]; Single Catch Basin 1000mm x 1000mm [72.54]; Double Catch Basin 1200mm x 2300mm [1.34] |
| CO-SD-CB-170 | Trench Backfilling and Compaction Works for Catch Basins of Storm Drainage Network | 2026-06-20 → 2026-09-19 (+91d) | 2026-07-01 → 2026-09-30 (+91d) |  |  | 17d → 0d |  | resources Single Catch Basin 1000mm x 1000mm [21.6]; Double Catch Basin 1200mm x 2300mm [0.4]; Unskilled Labor [160 h]; Excavator [160 h]; JCB [160 h]; Dump Truck [160 h] → Unskilled Labor [160 h]; Excavator [160 h]; JCB [160 h]; Dump Truck [160 h]; Single Catch Basin 1000mm x 1000mm [32.24]; Double Catch Basin 1200mm x 2300mm [0.6] |
| MH25-MH121 | **FROM MH-12:MH-01** | 2026-05-05 → 2026-08-03 (+90d) | 2026-08-17 → 2026-11-01 (+76d) |  |  |  |  |  |
| ML | **Main Line Sections** | 2026-05-05 → 2026-08-03 (+90d) | 2026-07-20 → 2026-09-28 (+70d) |  |  |  |  |  |
| CO-SD-ML-140 | Trench Excavation and Bedding Works for Main Lines of Storm Drainage Network | 2026-05-05 → 2026-08-03 (+90d) | 2026-06-02 → 2026-08-18 (+77d) | 20d → 14d |  | 10d → 8d | CO-SD-ML-100, PRO-R25-SW-DL-100 SS, CO-SD-ML-120 → CO-SD-ML-100, PRO-R25-SW-DL-100, CO-SD-ML-120 SS, CO-EW-220_R, CO-EW-110_R | resources Depth Between 0m to 1.50m [10.69]; Depth Between 1.50m to 2.50m [317.14]; Depth > 2.50m [1.69]; Depth Between 1.50m to 2.50m [61.65]; Depth Between 2.50m to 3.50m [49.39]; Depth > 3.50m [1.69]; Depth Between 2.50m to 3.50m [21.49]; Depth Between 0m to 1.50m [3.15]; Depth Between 1.50m to 2.50m [1.12]; Depth Between 2.50m to 3.50m [10.57]; Depth > 3.50m [0.79]; Depth Between 2.50m to 3.50m [13.61]; Depth Between 3.50m to 4.50m [41.74]; Depth > 4.50m [1.69]; Depth Between 3.50m to 4.50m [82.91]; Depth > 4.50m [2.81]; Skilled Labor [160 h]; Unskilled Labor [160 h]; Excavator [160 h] → Unskilled Labor [160 h]; Excavator [160 h]; Skilled Labor [160 h]; Depth Between 0m to 1.50m [15.95]; Depth Between 1.50m to 2.50m [473.34]; Depth > 2.50m [2.52]; Depth Between 1.50m to 2.50m [92.01]; Depth Between 2.50m to 3.50m [73.71]; Depth > 3.50m [2.52]; Depth Between 2.50m to 3.50m [32.07]; Depth Between 0m to 1.50m [4.7]; Depth Between 1.50m to 2.50m [1.68]; Depth Between 2.50m to 3.50m [15.78]; Depth > 3.50m [1.18]; Depth Between 2.50m to 3.50m [20.32]; Depth Between 3.50m to 4.50m [62.29]; Depth > 4.50m [2.52]; Depth Between 3.50m to 4.50m [123.75]; Depth > 4.50m [4.2] |
| CO-SD-ML-150 | Pipes Laying Works for Main Lines of Storm Drainage Network | 2026-06-02 → 2026-08-19 (+78d) | 2026-06-27 → 2026-09-03 (+68d) | 21d → 14d |  | 10d → 8d |  | resources Depth Between 0m to 1.50m [19.24]; Depth Between 1.50m to 2.50m [570.85]; Depth > 2.50m [3.04]; Depth Between 1.50m to 2.50m [110.97]; Depth Between 2.50m to 3.50m [88.9]; Depth > 3.50m [3.04]; Depth Between 2.50m to 3.50m [38.68]; Depth Between 0m to 1.50m [5.67]; Depth Between 1.50m to 2.50m [2.02]; Depth Between 2.50m to 3.50m [19.04]; Depth > 3.50m [1.42]; Depth Between 2.50m to 3.50m [24.5]; Depth Between 3.50m to 4.50m [75.13]; Depth > 4.50m [3.04]; Depth Between 3.50m to 4.50m [149.24]; Depth > 4.50m [5.06]; Skilled Labor [168 h]; Unskilled Labor [336 h]; Plumber [168 h]; Excavator [168 h] → Unskilled Labor [336 h]; Plumber [168 h]; Excavator [168 h]; Skilled Labor [168 h]; Depth Between 0m to 1.50m [28.71]; Depth Between 1.50m to 2.50m [852.01]; Depth > 2.50m [4.53]; Depth Between 1.50m to 2.50m [165.63]; Depth Between 2.50m to 3.50m [132.68]; Depth > 3.50m [4.53]; Depth Between 2.50m to 3.50m [57.73]; Depth Between 0m to 1.50m [8.46]; Depth Between 1.50m to 2.50m [3.02]; Depth Between 2.50m to 3.50m [28.41]; Depth > 3.50m [2.12]; Depth Between 2.50m to 3.50m [36.57]; Depth Between 3.50m to 4.50m [112.13]; Depth > 4.50m [4.53]; Depth Between 3.50m to 4.50m [222.75]; Depth > 4.50m [7.56] |
| CO-SD-ML-160 | Trench Backfilling and Compaction Works for Main Lines of Storm Drainage Network | 2026-06-27 → 2026-09-05 (+70d) | 2026-07-20 → 2026-09-28 (+70d) |  |  | 22d → 20d |  | resources Depth Between 0m to 1.50m [8.55]; Depth Between 1.50m to 2.50m [253.71]; Depth > 2.50m [1.35]; Depth Between 1.50m to 2.50m [49.32]; Depth Between 2.50m to 3.50m [39.51]; Depth > 3.50m [1.35]; Depth Between 2.50m to 3.50m [17.19]; Depth Between 0m to 1.50m [2.52]; Depth Between 1.50m to 2.50m [0.9]; Depth Between 2.50m to 3.50m [8.46]; Depth > 3.50m [0.63]; Depth Between 2.50m to 3.50m [10.89]; Depth Between 3.50m to 4.50m [33.39]; Depth > 4.50m [1.35]; Depth Between 3.50m to 4.50m [66.33]; Depth > 4.50m [2.25]; Unskilled Labor [160 h]; Excavator [160 h]; JCB [160 h]; Dump Truck [160 h] → Unskilled Labor [160 h]; Excavator [160 h]; JCB [160 h]; Dump Truck [160 h]; Depth Between 0m to 1.50m [12.76]; Depth Between 1.50m to 2.50m [378.67]; Depth > 2.50m [2.01]; Depth Between 1.50m to 2.50m [73.61]; Depth Between 2.50m to 3.50m [58.97]; Depth > 3.50m [2.01]; Depth Between 2.50m to 3.50m [25.66]; Depth Between 0m to 1.50m [3.76]; Depth Between 1.50m to 2.50m [1.34]; Depth Between 2.50m to 3.50m [12.63]; Depth > 3.50m [0.94]; Depth Between 2.50m to 3.50m [16.25]; Depth Between 3.50m to 4.50m [49.84]; Depth > 4.50m [2.01]; Depth Between 3.50m to 4.50m [99]; Depth > 4.50m [3.36] |
| MH | **Manholes** | 2026-06-27 → 2026-09-05 (+70d) | 2026-08-03 → 2026-10-12 (+70d) |  |  |  |  |  |
| CO-SD-MH-230 | Trench Excavation and Bedding Works for Manholes of Storm Drainage Network | 2026-06-27 → 2026-09-05 (+70d) | 2026-07-07 → 2026-09-14 (+69d) |  |  | 10d → 8d | CO-SD-ML-150, CO-SD-MH-180 → CO-SD-ML-150, CO-SD-MH-180, PRO-R25-SD-DL-100 | resources MH depth 1.5 - 2.5m [1.35]; MH depth 2.5 - 3.5m [1.2]; MH depth > 3.50m; MH depth 2.5 -3.5m [0.15]; Skilled Labor [72 h]; Unskilled Labor [72 h]; Excavator [72 h] → Unskilled Labor [72 h]; Excavator [72 h]; Skilled Labor [72 h]; MH depth 1.5 - 2.5m [2.01]; MH depth 2.5 - 3.5m [1.79]; MH depth > 3.50m; MH depth 2.5 -3.5m [0.22] |
| CO-SD-MH-240 | Install RC Footing Works for Manholes of Storm Drainage Network | 2026-07-07 → 2026-09-15 (+70d) | 2026-07-15 → 2026-09-22 (+69d) |  |  | 10d → 8d | CO-SD-MH-230, CO-SD-MH-190 → CO-SD-MH-230, CO-SD-MH-190, PRO-R25-SD-DL-100 | resources MH depth 1.5 - 2.5m [2.25]; MH depth 2.5 - 3.5m [2]; MH depth > 3.50m; MH depth 2.5 -3.5m [0.25]; Skilled Labor [56 h]; Unskilled Labor [112 h]; Plumber [56 h]; Excavator [56 h] → Unskilled Labor [112 h]; Plumber [56 h]; Excavator [56 h]; Skilled Labor [56 h]; MH depth 1.5 - 2.5m [3.36]; MH depth 2.5 - 3.5m [2.99]; MH depth > 3.50m; MH depth 2.5 -3.5m [0.37] |
| CO-SD-MH-250 | Install RC Wall Rings & Slab Works for Manholes of Storm Drainage Network | 2026-07-15 → 2026-09-24 (+71d) | 2026-07-23 → 2026-10-01 (+70d) |  |  | 10d → 8d |  | resources MH depth 1.5 - 2.5m [1.35]; MH depth 2.5 - 3.5m [1.2]; MH depth > 3.50m; MH depth 2.5 -3.5m [0.15]; Unskilled Labor [112 h]; Plumber [56 h]; Excavator [56 h]; Mobile Crane [56 h] → Unskilled Labor [112 h]; Plumber [56 h]; Excavator [56 h]; Mobile Crane [56 h]; MH depth 1.5 - 2.5m [2.01]; MH depth 2.5 - 3.5m [1.79]; MH depth > 3.50m; MH depth 2.5 -3.5m [0.22] |
| CO-SD-MH-260 | Backfilling Works for Manholes of Storm Drainage Network | 2026-07-23 → 2026-10-03 (+72d) | 2026-08-03 → 2026-10-12 (+70d) |  |  | 10d → 8d |  | resources MH depth 1.5 - 2.5m [1.8]; MH depth 2.5 - 3.5m [1.6]; MH depth > 3.50m; MH depth 2.5 -3.5m [0.2]; Unskilled Labor [72 h]; Excavator [72 h]; JCB [72 h]; Dump Truck [72 h] → Unskilled Labor [72 h]; Excavator [72 h]; JCB [72 h]; Dump Truck [72 h]; MH depth 1.5 - 2.5m [2.69]; MH depth 2.5 - 3.5m [2.39]; MH depth > 3.50m; MH depth 2.5 -3.5m [0.3] |
| CB | **Catch Basin Sections** | 2026-07-07 → 2026-10-01 (+86d) | 2026-08-17 → 2026-11-01 (+76d) |  |  |  |  |  |
| CO-SD-CB-180 | Trench Excavation and Bedding Works for Catch Basins of Storm Drainage Network | 2026-07-07 → 2026-10-01 (+86d) | 2026-07-18 → 2026-10-11 (+85d) |  |  | 12d → 0d |  | resources Single Catch Basin 1000mm x 1000mm [13.35]; Double Catch Basin 1200mm x 2300mm [0.3]; Skilled Labor [144 h]; Unskilled Labor [144 h]; Excavator [144 h] → Unskilled Labor [144 h]; Excavator [144 h]; Skilled Labor [144 h]; Single Catch Basin 1000mm x 1000mm [19.93]; Double Catch Basin 1200mm x 2300mm [0.45] |
| CO-SD-CB-190 | Installation and Pipes Laying Connection Works for Catch Basins of Storm Drainage Network | 2026-07-18 → 2026-10-12 (+86d) | 2026-08-01 → 2026-10-21 (+81d) | 12d → 9d |  | 12d → 0d |  | resources Single Catch Basin 1000mm x 1000mm [40.05]; Double Catch Basin 1200mm x 2300mm [0.9]; Skilled Labor [192 h]; Unskilled Labor [384 h]; Plumber [192 h]; Excavator [192 h] → Unskilled Labor [384 h]; Plumber [192 h]; Excavator [192 h]; Skilled Labor [192 h]; Single Catch Basin 1000mm x 1000mm [59.78]; Double Catch Basin 1200mm x 2300mm [1.34] |
| CO-SD-CB-200 | Trench Backfilling and Compaction Works for Catch Basins of Storm Drainage Network | 2026-08-03 → 2026-10-22 (+80d) | 2026-08-17 → 2026-11-01 (+76d) | 12d → 9d |  | 10d → 0d |  | resources Single Catch Basin 1000mm x 1000mm [17.8]; Double Catch Basin 1200mm x 2300mm [0.4]; Unskilled Labor [192 h]; Excavator [192 h]; JCB [192 h]; Dump Truck [192 h] → Unskilled Labor [192 h]; Excavator [192 h]; JCB [192 h]; Dump Truck [192 h]; Single Catch Basin 1000mm x 1000mm [26.57]; Double Catch Basin 1200mm x 2300mm [0.6] |
| SW | **Sewage Network** | 2026-05-13 → 2026-08-03 (+82d) | 2026-08-27 → 2026-10-13 (+47d) |  |  |  |  |  |
| 2 | **FROM MH-18:MH-10** | 2026-05-13 → 2026-08-03 (+82d) | 2026-08-04 → 2026-10-04 (+61d) |  |  |  |  |  |
| ML | **Main Line Sections** | 2026-05-13 → 2026-08-03 (+82d) | 2026-07-22 → 2026-09-22 (+62d) |  |  |  |  |  |
| CO-SW-ML-100 | Trench Excavation and Bedding Works for Main Lines of Sewage Network | 2026-05-13 → 2026-08-03 (+82d) | 2026-06-08 → 2026-08-16 (+69d) | 18d → 12d |  | 0d → -1.5d | ENG-SH-SW-ML-A-110, ENG-MT-SW-ML-A-110, PRO-SW-1DL-100, CO-SD-ML-130 SS+7d → ENG-SH-SW-ML-A-110, ENG-MT-SW-ML-A-110, PRO-SW-1DL-100, CO-SD-ML-130 SS+3d, CO-EW-220_R, CO-EW-110_R | resources Depth Between 0m to 1.50m [4]; Depth Between 1.50m to 2.50m [24.6]; Depth > 2.50m [1]; Depth Between 0m to 1.50m [2.2]; Depth Between 1.50m to 2.50m [160]; Depth Between 2.50m to 3.50m [7.5]; Depth > 3.50m [1.5]; HDPE Force Main (PE 100, SDR 11, PN 16 bar) DN 160 mm diameter, in trenches depth: 0- 1.5m [2.5]; HDPE Force Main (PE 100, SDR 11, PN 16 bar) DN 160 mm diameter, in trenches depth: 1.51- 2.5m [4]; Skilled Labor [144 h]; Unskilled Labor [144 h]; Excavator [144 h] → Unskilled Labor [144 h]; Excavator [144 h]; Skilled Labor [144 h]; Depth Between 0m to 1.50m [5.97]; Depth Between 1.50m to 2.50m [36.72]; Depth > 2.50m [1.49]; Depth Between 0m to 1.50m [3.28]; Depth Between 1.50m to 2.50m [238.81]; Depth Between 2.50m to 3.50m [11.19]; Depth > 3.50m [2.24]; HDPE Force Main (PE 100, SDR 11, PN 16 bar) DN 160 mm diameter, in trenches depth: 0- 1.5m [3.73]; HDPE Force Main (PE 100, SDR 11, PN 16 bar) DN 160 mm diameter, in trenches depth: 1.51- 2.5m [5.97] |
| CO-SW-ML-120 | Pipes Laying Works for Main Lines of Sewage Network | 2026-06-08 → 2026-08-17 (+70d) | 2026-06-29 → 2026-08-30 (+62d) | 18d → 12d |  | 0d → -1.5d |  | resources Depth Between 0m to 1.50m [7.2]; Depth Between 1.50m to 2.50m [44.28]; Depth > 2.50m [1.8]; Depth Between 0m to 1.50m [3.96]; Depth Between 1.50m to 2.50m [288]; Depth Between 2.50m to 3.50m [13.5]; Depth > 3.50m [2.7]; HDPE Force Main (PE 100, SDR 11, PN 16 bar) DN 160 mm diameter, in trenches depth: 0- 1.5m [4.5]; HDPE Force Main (PE 100, SDR 11, PN 16 bar) DN 160 mm diameter, in trenches depth: 1.51- 2.5m [7.2]; Skilled Labor [144 h]; Unskilled Labor [288 h]; Plumber [144 h]; Excavator [144 h] → Unskilled Labor [288 h]; Plumber [144 h]; Excavator [144 h]; Skilled Labor [144 h]; Depth Between 0m to 1.50m [10.75]; Depth Between 1.50m to 2.50m [66.09]; Depth > 2.50m [2.69]; Depth Between 0m to 1.50m [5.91]; Depth Between 1.50m to 2.50m [429.85]; Depth Between 2.50m to 3.50m [20.15]; Depth > 3.50m [4.03]; HDPE Force Main (PE 100, SDR 11, PN 16 bar) DN 160 mm diameter, in trenches depth: 0- 1.5m [6.72]; HDPE Force Main (PE 100, SDR 11, PN 16 bar) DN 160 mm diameter, in trenches depth: 1.51- 2.5m [10.75] |
| CO-SW-ML-130 | Trench Backfilling and Compaction Works for Main Lines of Sewage Network | 2026-06-29 → 2026-08-31 (+63d) | 2026-07-22 → 2026-09-22 (+62d) |  |  | 27d → 1.5d |  | resources Depth Between 0m to 1.50m [3.2]; Depth Between 1.50m to 2.50m [19.68]; Depth > 2.50m [0.8]; Depth Between 0m to 1.50m [1.76]; Depth Between 1.50m to 2.50m [128]; Depth Between 2.50m to 3.50m [6]; Depth > 3.50m [1.2]; HDPE Force Main (PE 100, SDR 11, PN 16 bar) DN 160 mm diameter, in trenches depth: 0- 1.5m [2]; HDPE Force Main (PE 100, SDR 11, PN 16 bar) DN 160 mm diameter, in trenches depth: 1.51- 2.5m [3.2]; Unskilled Labor [160 h]; Excavator [160 h]; JCB [160 h]; Dump Truck [160 h] → Unskilled Labor [160 h]; Excavator [160 h]; JCB [160 h]; Dump Truck [160 h]; Depth Between 0m to 1.50m [4.78]; Depth Between 1.50m to 2.50m [29.37]; Depth > 2.50m [1.19]; Depth Between 0m to 1.50m [2.63]; Depth Between 1.50m to 2.50m [191.04]; Depth Between 2.50m to 3.50m [8.96]; Depth > 3.50m [1.79]; HDPE Force Main (PE 100, SDR 11, PN 16 bar) DN 160 mm diameter, in trenches depth: 0- 1.5m [2.99]; HDPE Force Main (PE 100, SDR 11, PN 16 bar) DN 160 mm diameter, in trenches depth: 1.51- 2.5m [4.78] |
| 1 | **Manholes** | 2026-06-29 → 2026-08-31 (+63d) | 2026-08-04 → 2026-10-04 (+61d) |  |  |  |  |  |
| CO-SW-MH-160 | Excavation Works for Main Line Manholes of Sewage Network | 2026-06-29 → 2026-08-31 (+63d) | 2026-07-07 → 2026-09-07 (+62d) |  |  | 0d → -1.5d |  | resources Depth: 0 - 1.5m [0.15]; Depth: 1.51 - 2.5m [2.1]; Depth: 2.51 - 3.5m [0.15]; Depth > 3.50m; Skilled Labor [56 h]; Unskilled Labor [56 h]; Excavator [56 h] → Unskilled Labor [56 h]; Excavator [56 h]; Skilled Labor [56 h]; Depth: 0 - 1.5m [0.22]; Depth: 1.51 - 2.5m [3.13]; Depth: 2.51 - 3.5m [0.22]; Depth > 3.50m |
| CO-SW-MH-170 | Installation RC Footing Works for Main Line Manholes of Sewage Network | 2026-07-07 → 2026-09-08 (+63d) | 2026-07-16 → 2026-09-15 (+61d) | 8d → 7d |  | 2d → -0.5d |  | resources Depth: 0 - 1.5m [0.2]; Depth: 1.51 - 2.5m [2.8]; Depth: 2.51 - 3.5m [0.2]; Depth > 3.50m; Unskilled Labor [128 h]; Plumber [64 h]; Excavator [64 h]; Mobile Crane [64 h] → Unskilled Labor [128 h]; Plumber [64 h]; Excavator [64 h]; Mobile Crane [64 h]; Depth: 0 - 1.5m [0.3]; Depth: 1.51 - 2.5m [4.18]; Depth: 2.51 - 3.5m [0.3]; Depth > 3.50m |
| CO-SW-MH-180 | Install Grp Liner Wall Works for Main Line Manholes of Sewage Network | 2026-07-16 → 2026-09-16 (+62d) | 2026-07-26 → 2026-09-24 (+60d) | 8d → 7d |  | 7d → -0.5d |  | resources Depth: 0 - 1.5m [0.2]; Depth: 1.51 - 2.5m [2.8]; Depth: 2.51 - 3.5m [0.2]; Depth > 3.50m; Unskilled Labor [128 h]; Plumber [64 h]; Excavator [64 h]; Mobile Crane [64 h] → Unskilled Labor [128 h]; Plumber [64 h]; Excavator [64 h]; Mobile Crane [64 h]; Depth: 0 - 1.5m [0.3]; Depth: 1.51 - 2.5m [4.18]; Depth: 2.51 - 3.5m [0.3]; Depth > 3.50m |
| CO-SW-MH-190 | Pouring Grp Liner Wall Works for Main Line Manholes of Sewage Network | 2026-07-26 → 2026-09-26 (+62d) | 2026-07-30 → 2026-09-29 (+61d) |  |  | 16d → 2.5d |  | resources Depth: 0 - 1.5m [0.05]; Depth: 1.51 - 2.5m [0.7]; Depth: 2.51 - 3.5m [0.05]; Depth > 3.50m; Skilled Labor [32 h]; Unskilled Labor [64 h]; Mason [32 h] → Unskilled Labor [64 h]; Mason [32 h]; Skilled Labor [32 h]; Depth: 0 - 1.5m [0.07]; Depth: 1.51 - 2.5m [1.04]; Depth: 2.51 - 3.5m [0.07]; Depth > 3.50m |
| CO-SW-MH-200 | Backfilling Works for Main Line Manholes of Sewage Network | 2026-07-30 → 2026-09-30 (+62d) | 2026-08-04 → 2026-10-04 (+61d) |  |  | 16d → 2.5d | CO-SW-MH-190, CO-SW-ML-130 FF → CO-SW-MH-190, CO-SW-ML-130 FF, CO-SW-ML-130 | resources Depth: 0 - 1.5m [0.2]; Depth: 1.51 - 2.5m [2.8]; Depth: 2.51 - 3.5m [0.2]; Depth > 3.50m; Unskilled Labor [32 h]; Excavator [32 h]; JCB [32 h]; Dump Truck [32 h] → Unskilled Labor [32 h]; Excavator [32 h]; JCB [32 h]; Dump Truck [32 h]; Depth: 0 - 1.5m [0.3]; Depth: 1.51 - 2.5m [4.18]; Depth: 2.51 - 3.5m [0.3]; Depth > 3.50m |
| 1 | **FROM MH-10:MH-01** | 2026-06-08 → 2026-08-17 (+70d) | 2026-08-27 → 2026-10-13 (+47d) |  |  |  |  |  |
| ML | **Main Line Sections** | 2026-06-08 → 2026-08-17 (+70d) | 2026-07-20 → 2026-09-14 (+56d) |  |  |  |  |  |
| CO-SW-ML-140 | Trench Excavation and Bedding Works for Main Lines of Sewage Network | 2026-06-08 → 2026-08-17 (+70d) | 2026-06-22 → 2026-08-23 (+62d) | 12d → 6d |  | 1d → 0.04d | CO-SW-ML-100, PRO-R25-SW-DL-100 → CO-SW-ML-100, PRO-R25-SW-DL-100 SS | resources Depth Between 0m to 1.50m [6]; Depth Between 1.50m to 2.50m [36.9]; Depth > 2.50m [1.5]; Depth Between 0m to 1.50m [3.3]; Depth Between 1.50m to 2.50m [240]; Depth Between 2.50m to 3.50m [11.25]; Depth > 3.50m [2.25]; HDPE Force Main (PE 100, SDR 11, PN 16 bar) DN 160 mm diameter, in trenches depth: 0- 1.5m [3.75]; HDPE Force Main (PE 100, SDR 11, PN 16 bar) DN 160 mm diameter, in trenches depth: 1.51- 2.5m [6]; Skilled Labor [96 h]; Unskilled Labor [96 h]; Excavator [96 h] → Unskilled Labor [96 h]; Excavator [96 h]; Skilled Labor [96 h]; Depth Between 0m to 1.50m [8.96]; Depth Between 1.50m to 2.50m [55.07]; Depth > 2.50m [2.24]; Depth Between 0m to 1.50m [4.93]; Depth Between 1.50m to 2.50m [358.21]; Depth Between 2.50m to 3.50m [16.79]; Depth > 3.50m [3.36]; HDPE Force Main (PE 100, SDR 11, PN 16 bar) DN 160 mm diameter, in trenches depth: 0- 1.5m [5.6]; HDPE Force Main (PE 100, SDR 11, PN 16 bar) DN 160 mm diameter, in trenches depth: 1.51- 2.5m [8.96] |
| CO-SW-ML-150 | Pipes Laying Works for Main Lines of Sewage Network | 2026-06-22 → 2026-08-24 (+63d) | 2026-07-06 → 2026-08-31 (+56d) | 12d → 7d |  | 1d → 0.04d |  | resources Depth Between 0m to 1.50m [10.8]; Depth Between 1.50m to 2.50m [66.42]; Depth > 2.50m [2.7]; Depth Between 0m to 1.50m [5.94]; Depth Between 1.50m to 2.50m [432]; Depth Between 2.50m to 3.50m [20.25]; Depth > 3.50m [4.05]; HDPE Force Main (PE 100, SDR 11, PN 16 bar) DN 160 mm diameter, in trenches depth: 0- 1.5m [6.75]; HDPE Force Main (PE 100, SDR 11, PN 16 bar) DN 160 mm diameter, in trenches depth: 1.51- 2.5m [10.8]; Skilled Labor [96 h]; Unskilled Labor [192 h]; Plumber [96 h]; Excavator [96 h] → Unskilled Labor [192 h]; Plumber [96 h]; Excavator [96 h]; Skilled Labor [96 h]; Depth Between 0m to 1.50m [16.12]; Depth Between 1.50m to 2.50m [99.13]; Depth > 2.50m [4.03]; Depth Between 0m to 1.50m [8.87]; Depth Between 1.50m to 2.50m [644.78]; Depth Between 2.50m to 3.50m [30.22]; Depth > 3.50m [6.04]; HDPE Force Main (PE 100, SDR 11, PN 16 bar) DN 160 mm diameter, in trenches depth: 0- 1.5m [10.07]; HDPE Force Main (PE 100, SDR 11, PN 16 bar) DN 160 mm diameter, in trenches depth: 1.51- 2.5m [16.12] |
| CO-SW-ML-160 | Trench Backfilling and Compaction Works for Main Lines of Sewage Network | 2026-07-06 → 2026-09-01 (+57d) | 2026-07-20 → 2026-09-14 (+56d) |  |  | 33d → 0.5d |  | resources Depth Between 0m to 1.50m [4.8]; Depth Between 1.50m to 2.50m [29.52]; Depth > 2.50m [1.2]; Depth Between 0m to 1.50m [2.64]; Depth Between 1.50m to 2.50m [192]; Depth Between 2.50m to 3.50m [9]; Depth > 3.50m [1.8]; HDPE Force Main (PE 100, SDR 11, PN 16 bar) DN 160 mm diameter, in trenches depth: 0- 1.5m [3]; HDPE Force Main (PE 100, SDR 11, PN 16 bar) DN 160 mm diameter, in trenches depth: 1.51- 2.5m [4.8]; Unskilled Labor [96 h]; Excavator [96 h]; JCB [96 h]; Dump Truck [96 h] → Unskilled Labor [96 h]; Excavator [96 h]; JCB [96 h]; Dump Truck [96 h]; Depth Between 0m to 1.50m [7.16]; Depth Between 1.50m to 2.50m [44.06]; Depth > 2.50m [1.79]; Depth Between 0m to 1.50m [3.94]; Depth Between 1.50m to 2.50m [286.57]; Depth Between 2.50m to 3.50m [13.43]; Depth > 3.50m [2.69]; HDPE Force Main (PE 100, SDR 11, PN 16 bar) DN 160 mm diameter, in trenches depth: 0- 1.5m [4.48]; HDPE Force Main (PE 100, SDR 11, PN 16 bar) DN 160 mm diameter, in trenches depth: 1.51- 2.5m [7.16] |
| 1 | **Manholes** | 2026-07-07 → 2026-09-08 (+63d) | 2026-08-27 → 2026-10-13 (+47d) |  |  |  |  |  |
| CO-SW-MH-210 | Excavation Works for Main Line Manholes of Sewage Network | 2026-07-07 → 2026-09-08 (+63d) | 2026-07-19 → 2026-09-16 (+59d) | 10d → 8d |  | 0d → -1.5d |  | resources Depth: 0 - 1.5m [0.15]; Depth: 1.51 - 2.5m [3.15]; Depth: 2.51 - 3.5m [0.15]; Depth > 3.50m [0.15]; Skilled Labor [80 h]; Unskilled Labor [80 h]; Excavator [80 h] → Unskilled Labor [80 h]; Excavator [80 h]; Skilled Labor [80 h]; Depth: 0 - 1.5m [0.22]; Depth: 1.51 - 2.5m [4.7]; Depth: 2.51 - 3.5m [0.22]; Depth > 3.50m [0.22] |
| CO-SW-MH-220 | Installation RC Footing Works for Main Line Manholes of Sewage Network | 2026-07-19 → 2026-09-17 (+60d) | 2026-08-03 → 2026-09-26 (+54d) | 13d → 7d |  | 0d → -1.5d | CO-SW-MH-210, CO-SW-MH-170 → CO-SW-MH-210, CO-SW-MH-170, CO-SW-ML-160 | resources Depth: 0 - 1.5m [0.2]; Depth: 1.51 - 2.5m [4.2]; Depth: 2.51 - 3.5m [0.2]; Depth > 3.50m [0.2]; Unskilled Labor [208 h]; Plumber [104 h]; Excavator [104 h]; Mobile Crane [104 h] → Unskilled Labor [208 h]; Plumber [104 h]; Excavator [104 h]; Mobile Crane [104 h]; Depth: 0 - 1.5m [0.3]; Depth: 1.51 - 2.5m [6.27]; Depth: 2.51 - 3.5m [0.3]; Depth > 3.50m [0.3] |
| CO-SW-MH-230 | Install Grp Liner Wall Works for Main Line Manholes of Sewage Network | 2026-08-03 → 2026-09-27 (+55d) | 2026-08-18 → 2026-10-04 (+47d) | 13d → 7d |  | 0d → -1.5d |  | resources Depth: 0 - 1.5m [0.2]; Depth: 1.51 - 2.5m [4.2]; Depth: 2.51 - 3.5m [0.2]; Depth > 3.50m [0.2]; Unskilled Labor [208 h]; Plumber [104 h]; Excavator [104 h]; Mobile Crane [104 h] → Unskilled Labor [208 h]; Plumber [104 h]; Excavator [104 h]; Mobile Crane [104 h]; Depth: 0 - 1.5m [0.3]; Depth: 1.51 - 2.5m [6.27]; Depth: 2.51 - 3.5m [0.3]; Depth > 3.50m [0.3] |
| CO-SW-MH-240 | Pouring Grp Liner Wall Works for Main Line Manholes of Sewage Network | 2026-08-18 → 2026-10-05 (+48d) | 2026-08-23 → 2026-10-08 (+46d) |  |  | 0d → -1.5d |  | resources Depth: 0 - 1.5m [0.05]; Depth: 1.51 - 2.5m [1.05]; Depth: 2.51 - 3.5m [0.05]; Depth > 3.50m [0.05]; Skilled Labor [32 h]; Unskilled Labor [64 h]; Mason [32 h] → Unskilled Labor [64 h]; Mason [32 h]; Skilled Labor [32 h]; Depth: 0 - 1.5m [0.07]; Depth: 1.51 - 2.5m [1.57]; Depth: 2.51 - 3.5m [0.07]; Depth > 3.50m [0.07] |
| CO-SW-MH-250 | Backfilling Works for Main Line Manholes of Sewage Network | 2026-08-23 → 2026-10-10 (+48d) | 2026-08-27 → 2026-10-13 (+47d) |  |  | 0d → -1.5d | CO-SW-MH-240, CO-SW-ML-160 FF, CO-SW-MH-200 → CO-SW-MH-240, CO-SW-ML-160, CO-SW-MH-200 | resources Depth: 0 - 1.5m [0.2]; Depth: 1.51 - 2.5m [4.2]; Depth: 2.51 - 3.5m [0.2]; Depth > 3.50m [0.2]; Unskilled Labor [32 h]; Excavator [32 h]; JCB [32 h]; Dump Truck [32 h] → Unskilled Labor [32 h]; Excavator [32 h]; JCB [32 h]; Dump Truck [32 h]; Depth: 0 - 1.5m [0.3]; Depth: 1.51 - 2.5m [6.27]; Depth: 2.51 - 3.5m [0.3]; Depth > 3.50m [0.3] |
| PW | **Potable Water Network** | 2026-08-27 → 2026-10-14 (+48d) | 2026-11-22 → 2026-12-23 (+31d) |  |  |  |  |  |
| ML | **Main Line Sections** | 2026-08-27 → 2026-10-14 (+48d) | 2026-10-10 → 2026-11-10 (+31d) |  |  |  |  |  |
| CO-PW-ML-100 | Trench Excavation and Bedding Works for Main Lines of Potable Water Network | 2026-08-27 → 2026-10-14 (+48d) | 2026-09-10 → 2026-10-22 (+42d) | 12d → 8d |  | 0d → -1.5d | ENG-SH-PW-ML-A-110, ENG-MT-PW-ML-A-100, PRO-PW-1DL-100, PRO-R25-PW-DL-100, CO-SW-ML-130 SS+7d, CO-SW-MH-250 → ENG-SH-PW-ML-A-110, ENG-MT-PW-ML-A-100, PRO-PW-1DL-100_R, PRO-R25-PW-DL-100_R, CO-SW-ML-130, CO-SW-MH-250, PRO-PW-MF-100_R, CO-SW-MH-250 FF | resources Depth Between 0m to 1.50m [1.5]; Depth Between 1.50m to 2.50m [1.5]; Depth > 2.50m [0.5]; Depth Between 0m to 1.50m [105]; Depth Between 1.50m to 2.50m [70]; Depth > 2.50m [2.5]; Depth Between 0m to 1.50m [12.5]; Depth Between 1.50m to 2.50m [2.5]; Depth > 2.50m [1.25]; Depth Between 0m to 1.50m [80]; Depth Between 1.50m to 2.50m [327.5]; Depth > 2.50m [5]; Skilled Labor [192 h]; Unskilled Labor [192 h]; Excavator [192 h] → Unskilled Labor [192 h]; Excavator [192 h]; Skilled Labor [192 h]; Depth Between 0m to 1.50m [2.24]; Depth Between 1.50m to 2.50m [2.24]; Depth > 2.50m [0.75]; Depth Between 0m to 1.50m [156.72]; Depth Between 1.50m to 2.50m [104.48]; Depth > 2.50m [3.73]; Depth Between 0m to 1.50m [18.66]; Depth Between 1.50m to 2.50m [3.73]; Depth > 2.50m [1.87]; Depth Between 0m to 1.50m [119.4]; Depth Between 1.50m to 2.50m [488.81]; Depth > 2.50m [7.46] |
| CO-PW-ML-110 | Pipes Laying and accessories for Main Lines of Potable Water Network | 2026-09-10 → 2026-10-24 (+44d) | 2026-09-26 → 2026-11-01 (+36d) | 12d → 8d |  | 0d → -1.5d |  | resources Depth Between 0m to 1.50m [2.7]; Depth Between 1.50m to 2.50m [2.7]; Depth > 2.50m [0.9]; Depth Between 0m to 1.50m [189]; Depth Between 1.50m to 2.50m [126]; Depth > 2.50m [4.5]; Depth Between 0m to 1.50m [22.5]; Depth Between 1.50m to 2.50m [4.5]; Depth > 2.50m [2.25]; Depth Between 0m to 1.50m [144]; Depth Between 1.50m to 2.50m [589.5]; Depth > 2.50m [9]; Skilled Labor [192 h]; Unskilled Labor [384 h]; Plumber [192 h]; Excavator [192 h] → Unskilled Labor [384 h]; Plumber [192 h]; Excavator [192 h]; Skilled Labor [192 h]; Depth Between 0m to 1.50m [4.03]; Depth Between 1.50m to 2.50m [4.03]; Depth > 2.50m [1.34]; Depth Between 0m to 1.50m [282.09]; Depth Between 1.50m to 2.50m [188.06]; Depth > 2.50m [6.72]; Depth Between 0m to 1.50m [33.58]; Depth Between 1.50m to 2.50m [6.72]; Depth > 2.50m [3.36]; Depth Between 0m to 1.50m [214.93]; Depth Between 1.50m to 2.50m [879.85]; Depth > 2.50m [13.43] |
| CO-PW-ML-130 | Trench Backfilling and Compaction Works for Main Lines of Potable Water Network | 2026-09-26 → 2026-11-02 (+37d) | 2026-10-10 → 2026-11-10 (+31d) | 12d → 8d |  | 0d → 0.5d |  | resources Depth Between 0m to 1.50m [1.2]; Depth Between 1.50m to 2.50m [1.2]; Depth > 2.50m [0.4]; Depth Between 0m to 1.50m [84]; Depth Between 1.50m to 2.50m [56]; Depth > 2.50m [2]; Depth Between 0m to 1.50m [10]; Depth Between 1.50m to 2.50m [2]; Depth > 2.50m [1]; Depth Between 0m to 1.50m [64]; Depth Between 1.50m to 2.50m [262]; Depth > 2.50m [4]; Unskilled Labor [192 h]; Excavator [192 h]; JCB [192 h]; Dump Truck [192 h] → Unskilled Labor [192 h]; Excavator [192 h]; JCB [192 h]; Dump Truck [192 h]; Depth Between 0m to 1.50m [1.79]; Depth Between 1.50m to 2.50m [1.79]; Depth > 2.50m [0.6]; Depth Between 0m to 1.50m [125.37]; Depth Between 1.50m to 2.50m [83.58]; Depth > 2.50m [2.99]; Depth Between 0m to 1.50m [14.93]; Depth Between 1.50m to 2.50m [2.99]; Depth > 2.50m [1.49]; Depth Between 0m to 1.50m [95.52]; Depth Between 1.50m to 2.50m [391.04]; Depth > 2.50m [5.97] |
| VC | **Valve Chamber** | 2026-10-10 → 2026-11-11 (+32d) | 2026-10-28 → 2026-11-29 (+32d) |  |  |  |  |  |
| CO-PW-VC-170 | Excavation Works for Main Line Valves and Valve Chambers of Potable Water Network | 2026-10-10 → 2026-11-11 (+32d) | 2026-10-12 → 2026-11-12 (+31d) |  |  | 0d → 0.5d |  | resources Wash out chamber (2500x 2500mm) [0.5]; Air valve chamber (1000x 1000 mm) [0.25]; Skilled Labor [16 h]; Unskilled Labor [16 h]; Excavator [16 h] → Unskilled Labor [16 h]; Excavator [16 h]; Skilled Labor [16 h]; Wash out chamber (2500x 2500mm) [0.75]; Air valve chamber (1000x 1000 mm) [0.37] |
| CO-PW-VC180 | Installation Works for Valve Chambers of Potable Water Network | 2026-10-12 → 2026-11-14 (+33d) | 2026-10-17 → 2026-11-17 (+31d) |  |  | 0d → 0.5d |  | resources Wash out chamber (2500x 2500mm) [0.9]; Air valve chamber (1000x 1000 mm) [0.45]; Unskilled Labor [64 h]; Plumber [32 h]; Excavator [32 h]; Mobile Crane [32 h] → Unskilled Labor [64 h]; Plumber [32 h]; Excavator [32 h]; Mobile Crane [32 h]; Wash out chamber (2500x 2500mm) [1.34]; Air valve chamber (1000x 1000 mm) [0.67] |
| CO-PW-VC-190 | Installation Works for Valves of Potable Water Network | 2026-10-17 → 2026-11-18 (+32d) | 2026-10-25 → 2026-11-25 (+31d) |  |  | 0d → 0.5d |  | resources Gate valves Dia 50 mm [1]; Gate valves Dia 100 mm [12]; Gate valves Dia 150 mm [17]; Gate valves Dia 250 mm [9]; Air valves with Dia 50 mm [1]; Washout valve Dia 100 mm [2]; Flow meter chamber (1500x 2500 mm) [1]; Flow meter dia 100 mm [1]; Unskilled Labor [112 h]; Plumber [56 h] → Unskilled Labor [112 h]; Plumber [56 h]; Gate valves Dia 50 mm [1.49]; Gate valves Dia 100 mm [17.91]; Gate valves Dia 150 mm [25.37]; Gate valves Dia 250 mm [13.43]; Air valves with Dia 50 mm [1.49]; Washout valve Dia 100 mm [2.99]; Flow meter chamber (1500x 2500 mm) [1.49]; Flow meter dia 100 mm [1.49] |
| CO-PW-VC-220 | Backfilling Works for Main Line Valves and Valve Chambers of Potable Water Network | 2026-10-25 → 2026-11-26 (+32d) | 2026-10-28 → 2026-11-29 (+32d) |  |  | 0d → 0.5d |  | resources Wash out chamber (2500x 2500mm) [0.4]; Air valve chamber (1000x 1000 mm) [0.2]; Unskilled Labor [24 h]; Excavator [24 h]; JCB [24 h]; Dump Truck [24 h] → Unskilled Labor [24 h]; Excavator [24 h]; JCB [24 h]; Dump Truck [24 h]; Wash out chamber (2500x 2500mm) [0.6]; Air valve chamber (1000x 1000 mm) [0.3] |
| FH | **Fire Hydrant** | 2026-10-28 → 2026-11-30 (+33d) | 2026-11-22 → 2026-12-23 (+31d) |  |  |  |  |  |

| ID | Task | Start | Finish | Duration | Total float | Predecessors | Other |
| --- | --- | --- | --- | --- | --- | --- | --- |
| CO-PW-FH-140 | Excavation Works for Fire Hydrants of Potable Water Network | 2026-10-28 → 2026-11-30 (+33d) | 2026-11-05 → 2026-12-07 (+32d) |  | 0d → 0.5d |  | resources 3-outlet fire hydrant (2 x 2.5 inch and 1 x 4.5 inch) in the form of a separate dry vacuum cylinder, complete according to drawings. [4.25]; Skilled Labor [56 h]; Unskilled Labor [56 h]; Excavator [56 h] → Unskilled Labor [56 h]; Excavator [56 h]; Skilled Labor [56 h]; 3-outlet fire hydrant (2 x 2.5 inch and 1 x 4.5 inch) in the form of a separate dry vacuum cylinder, complete according to drawings. [6.34] |
| CO-PW-FH-150 | Installation Works for Fire Hydrant of Potable Water Network | 2026-11-05 → 2026-12-08 (+33d) | 2026-11-14 → 2026-12-15 (+31d) |  | 0d → 0.5d |  | resources 3-outlet fire hydrant (2 x 2.5 inch and 1 x 4.5 inch) in the form of a separate dry vacuum cylinder, complete according to drawings. [7.65]; Skilled Labor [56 h]; Unskilled Labor [112 h]; Plumber [56 h]; Excavator [56 h] → Unskilled Labor [112 h]; Plumber [56 h]; Excavator [56 h]; Skilled Labor [56 h]; 3-outlet fire hydrant (2 x 2.5 inch and 1 x 4.5 inch) in the form of a separate dry vacuum cylinder, complete according to drawings. [11.42] |
| CO-PW-FH-160 | Trench Backfilling and Compaction Works for Fire Hydrants of Potable Water Network | 2026-11-14 → 2026-12-16 (+32d) | 2026-11-22 → 2026-12-23 (+31d) |  | 0d → 0.5d |  | resources 3-outlet fire hydrant (2 x 2.5 inch and 1 x 4.5 inch) in the form of a separate dry vacuum cylinder, complete according to drawings. [3.4]; Unskilled Labor [56 h]; Excavator [56 h]; JCB [56 h]; Dump Truck [56 h] → Unskilled Labor [56 h]; Excavator [56 h]; JCB [56 h]; Dump Truck [56 h]; 3-outlet fire hydrant (2 x 2.5 inch and 1 x 4.5 inch) in the form of a separate dry vacuum cylinder, complete according to drawings. [5.07] |
| IR | **Irrigation Network** | 2026-08-27 → 2026-10-24 (+58d) | 2026-12-08 → 2026-12-20 (+12d) |  |  |  |  |
| ML | **Main Line Pipes** | 2026-08-27 → 2026-10-24 (+58d) | 2026-12-08 → 2026-12-20 (+12d) |  |  |  |  |
| CO-IR-ML-100 | Trench Excavation and Bedding Works for Main Lines of Irrigation Network | 2026-08-27 → 2026-10-24 (+58d) | 2026-09-21 → 2026-11-03 (+43d) | 21d → 10d | 0d → 5d | ENG-SH-IR-ML-A-110, ENG-MT-IR-ML-A-100, PRO-IR-1DL-100, PRO-R25-IR-DL-100, CO-PW-ML-100 SS → ENG-SH-IR-ML-A-110, ENG-MT-IR-ML-A-100, PRO-IR-1DL-100, PRO-R25-IR-DL-100, CO-PW-ML-100, ENG-SH-HS-S-100 | resources pipe line O.D 32 mm PN 10, in depth 0 to 1.5 m [837.5]; pipe line O.D 40 mm PN 10, in depth 0 to 1.5 m [462.5]; pipe line O.D 50 mm PN 10, in depth 0 to 1.5 m [62.5]; Skilled Labor [336 h]; Unskilled Labor [336 h]; Excavator [336 h] → Unskilled Labor [336 h]; Excavator [336 h]; Skilled Labor [336 h]; pipe line O.D 32 mm PN 10, in depth 0 to 1.5 m [1250]; pipe line O.D 40 mm PN 10, in depth 0 to 1.5 m [690.3]; pipe line O.D 50 mm PN 10, in depth 0 to 1.5 m [93.28] |
| CO-IR-ML-110 | Pipes Laying Works for Main Lines of Irrigation Network | 2026-09-21 → 2026-11-04 (+44d) | 2026-10-17 → 2026-11-15 (+29d) | 21d → 9.5d | 0d → 5d | CO-IR-ML-100, PRO-IR-1DL-100, CO-PW-ML-110 SS → CO-IR-ML-100, PRO-IR-1DL-100, CO-PW-ML-110 | resources pipe line O.D 32 mm PN 10, in depth 0 to 1.5 m [1507.5]; pipe line O.D 40 mm PN 10, in depth 0 to 1.5 m [832.5]; pipe line O.D 50 mm PN 10, in depth 0 to 1.5 m [112.5]; Skilled Labor [336 h]; Unskilled Labor [672 h]; Plumber [336 h]; Excavator [336 h] → Unskilled Labor [672 h]; Plumber [336 h]; Excavator [336 h]; Skilled Labor [336 h]; pipe line O.D 32 mm PN 10, in depth 0 to 1.5 m [2250]; pipe line O.D 40 mm PN 10, in depth 0 to 1.5 m [1242.54]; pipe line O.D 50 mm PN 10, in depth 0 to 1.5 m [167.91] |
| CO-IR-ML-120 | Installation Works for Main Line Valves of Irrigation Network | 2026-10-17 → 2026-11-15 (+29d) | 2026-10-31 → 2026-11-25 (+25d) | 12d → 9d | 0d → 5d | CO-IR-ML-110, ENG-MT-IR-ML-A-110, PRO-IR-1DL-110, PRO-R25-IR-DL-110, CO-SW-MH-250 → CO-IR-ML-110, ENG-MT-IR-ML-A-110, PRO-IR-1DL-110, PRO-R25-IR-DL-110 SS, CO-SW-MH-250, CO-PW-ML-130, PRO-R25-IR-DL-110 FF | resources Gate valve 50 mm PN16 [7]; Direct Burried Gate valve 40 mm PN16 [12]; Flushing Bronze gate valve dia 1.5" inside PVC box [19]; Air release valve 1.5" inside PVC box [19]; Extra flexible pressure compensating on surface inline dripline`s, O.D. is 16.1 mm [12000]; Electrical Solenoid Valve ( 1.5") inside PVC box [12]; Electrical Solenoid Valve ( 2") inside PVC box [7]; Quick coupling valve 1" inside a round valve box 10" size with a manual gate valve, hose swivel and key with all accessories [53]; Advanced Irrigation controller subject to client approval, can connect with Centarl Control system [1]; Decoder cables 12 AWG between valves and controllers, The cables shall be pulled through 32Ø UPVC conduit [3500]; Preparing the irrigation program for the entire system and providing technical services for monitoring and controlling the central irrigation systems [1]; Unskilled Labor [192 h]; Plumber [96 h] → Unskilled Labor [192 h]; Plumber [96 h]; Gate valve 50 mm PN16 [10.45]; Direct Burried Gate valve 40 mm PN16 [17.91]; Flushing Bronze gate valve dia 1.5" inside PVC box [28.36]; Air release valve 1.5" inside PVC box [28.36]; Extra flexible pressure compensating on surface inline dripline`s, O.D. is 16.1 mm [17910.5]; Electrical Solenoid Valve ( 1.5") inside PVC box [17.91]; Electrical Solenoid Valve ( 2") inside PVC box [10.45]; Quick coupling valve 1" inside a round valve box 10" size with a manual gate valve, hose swivel and key with all accessories [79.1]; Advanced Irrigation controller subject to client approval, can connect with Centarl Control system [1.49]; Decoder cables 12 AWG between valves and controllers, The cables shall be pulled through 32 UPVC conduit [5223.88]; Preparing the irrigation program for the entire system and providing technical services for monitoring and controlling the central irrigation systems [1.49] |
| CO-IR-ML-130 | Trench Backfilling and Compaction Works for Main Lines of Irrigation Network | 2026-10-31 → 2026-11-30 (+30d) | 2026-11-24 → 2026-12-09 (+15d) | 21d → 9d | 0d → 1.5d |  | resources pipe line O.D 32 mm PN 10, in depth 0 to 1.5 m [670]; pipe line O.D 40 mm PN 10, in depth 0 to 1.5 m [370]; pipe line O.D 50 mm PN 10, in depth 0 to 1.5 m [50]; Unskilled Labor [336 h]; Excavator [336 h]; JCB [336 h]; Dump Truck [336 h] → Unskilled Labor [336 h]; Excavator [336 h]; JCB [336 h]; Dump Truck [336 h]; pipe line O.D 32 mm PN 10, in depth 0 to 1.5 m [1000]; pipe line O.D 40 mm PN 10, in depth 0 to 1.5 m [552.24]; pipe line O.D 50 mm PN 10, in depth 0 to 1.5 m [74.63] |
| CO-IR-ML-140 | Installation Works for Bulbblers And Sprinklers of Irrigation Network | 2026-11-24 → 2026-12-10 (+16d) | 2026-12-08 → 2026-12-20 (+12d) | 12d → 9d | 0d → 8.5d |  | resources Pressure–compensating bubblers 110 Lit/Hr [850]; Unskilled Labor [192 h]; Plumber [96 h] → Unskilled Labor [192 h]; Plumber [96 h]; Pressure compensating bubblers 110 Lit/Hr [1268.66] |
| TSE | **Treated Sewage Effluent (Tse)** | 2026-08-27 → 2026-10-24 (+58d) | 2026-12-08 → 2026-12-20 (+12d) |  |  |  |  |
| ML | **Main Line Pipes** | 2026-08-27 → 2026-10-24 (+58d) | 2026-12-08 → 2026-12-20 (+12d) |  |  |  |  |
| CO-TSE-ML-150 | Trench Excavation and Bedding Works for Main Lines of Treated Sewage Effluent (Tse) | 2026-08-27 → 2026-10-24 (+58d) | 2026-09-17 → 2026-11-02 (+46d) | 18d → 9d | 9d → 6.5d | ENG-SH-TSE-ML-A-120, ENG-MT-IR-ML-A-120, PRO-TSE-1DL-120, PRO-R25-TSE-DL-120, CO-IR-ML-100 SS → ENG-SH-TSE-ML-A-120, ENG-MT-IR-ML-A-120, PRO-TSE-1DL-120, PRO-R25-TSE-DL-120_R, CO-IR-ML-100 SS, CO-PW-ML-100 | resources Depth Between 0m to 1.50m [2.5]; Depth Between 1.50m to 2.50m [1.25]; Depth > 2.50m [0.5]; Depth Between 0m to 1.50m [230]; Depth Between 0m to 1.50m [17.5]; Depth Between 1.50m to 2.50m [11.25]; Depth > 2.50m [2.5]; Depth Between 0m to 1.50m [212.5]; Depth Between 1.50m to 2.50m [65]; Depth > 2.50m [6.25]; Depth Between 0m to 1.50m [15]; Depth Between 1.50m to 2.50m [10]; Depth > 2.50m [2]; Skilled Labor [144 h]; Unskilled Labor [144 h]; Excavator [144 h] → Unskilled Labor [144 h]; Excavator [144 h]; Skilled Labor [144 h]; Depth Between 0m to 1.50m [3.73]; Depth Between 1.50m to 2.50m [1.87]; Depth > 2.50m [0.75]; Depth Between 0m to 1.50m [343.28]; Depth Between 0m to 1.50m [26.12]; Depth Between 1.50m to 2.50m [16.79]; Depth > 2.50m [3.73]; Depth Between 0m to 1.50m [317.16]; Depth Between 1.50m to 2.50m [97.01]; Depth > 2.50m [9.33]; Depth Between 0m to 1.50m [22.39]; Depth Between 1.50m to 2.50m [14.93]; Depth > 2.50m [2.99] |
| CO-TSE-ML-160 | Pipes Laying Works for Main Lines of Treated Sewage Effluent (Tse) | 2026-09-21 → 2026-11-04 (+44d) | 2026-10-13 → 2026-11-14 (+32d) | 18d → 9d | 6d → 6.5d |  | resources Depth Between 0m to 1.50m [4.5]; Depth Between 1.50m to 2.50m [2.25]; Depth > 2.50m [0.9]; Depth Between 0m to 1.50m [414]; Depth Between 0m to 1.50m [31.5]; Depth Between 1.50m to 2.50m [20.25]; Depth > 2.50m [4.5]; Depth Between 0m to 1.50m [382.5]; Depth Between 1.50m to 2.50m [117]; Depth > 2.50m [11.25]; Depth Between 0m to 1.50m [27]; Depth Between 1.50m to 2.50m [18]; Depth > 2.50m [3.6]; Skilled Labor [144 h]; Unskilled Labor [288 h]; Plumber [144 h]; Excavator [144 h] → Unskilled Labor [288 h]; Plumber [144 h]; Excavator [144 h]; Skilled Labor [144 h]; Depth Between 0m to 1.50m [6.72]; Depth Between 1.50m to 2.50m [3.36]; Depth > 2.50m [1.34]; Depth Between 0m to 1.50m [617.91]; Depth Between 0m to 1.50m [47.01]; Depth Between 1.50m to 2.50m [30.22]; Depth > 2.50m [6.72]; Depth Between 0m to 1.50m [570.9]; Depth Between 1.50m to 2.50m [174.63]; Depth > 2.50m [16.79]; Depth Between 0m to 1.50m [40.3]; Depth Between 1.50m to 2.50m [26.87]; Depth > 2.50m [5.37] |
| CO-TSE-ML-170 | Installation Works for Main Line Valves of Treated Sewage Effluent (Tse) | 2026-10-17 → 2026-11-15 (+29d) | 2026-10-31 → 2026-11-24 (+24d) | 12d → 8d | 3d → 6d |  | resources Gate valves dia 50 mm [1]; Gate valves dia 100 mm [14]; Gate valves dia 150 mm [5]; Gate valves dia 200 mm [2]; Air valves with dia 50 mm [1]; Washout valve dia 100 mm [2]; Flow meter dia 150 mm [1]; Unskilled Labor [192 h]; Plumber [96 h] → Unskilled Labor [192 h]; Plumber [96 h]; Gate valves dia 50 mm [1.49]; Gate valves dia 100 mm [20.9]; Gate valves dia 150 mm [7.46]; Gate valves dia 200 mm [2.99]; Air valves with dia 50 mm [1.49]; Washout valve dia 100 mm [2.99]; Flow meter dia 150 mm [1.49] |
| CO-TSE-ML-180 | Trench Backfilling and Compaction Works for Treated Sewage Effluent (Tse) | 2026-10-31 → 2026-11-30 (+30d) | 2026-11-21 → 2026-12-09 (+18d) | 18d → 9d | 3d → 1.5d |  | resources Depth Between 0m to 1.50m [2]; Depth Between 1.50m to 2.50m [1]; Depth > 2.50m [0.4]; Depth Between 0m to 1.50m [184]; Depth Between 0m to 1.50m [14]; Depth Between 1.50m to 2.50m [9]; Depth > 2.50m [2]; Depth Between 0m to 1.50m [170]; Depth Between 1.50m to 2.50m [52]; Depth > 2.50m [5]; Depth Between 0m to 1.50m [12]; Depth Between 1.50m to 2.50m [8]; Depth > 2.50m [1.6]; Unskilled Labor [144 h]; Excavator [144 h]; JCB [144 h]; Dump Truck [144 h] → Unskilled Labor [144 h]; Excavator [144 h]; JCB [144 h]; Dump Truck [144 h]; Depth Between 0m to 1.50m [2.99]; Depth Between 1.50m to 2.50m [1.49]; Depth > 2.50m [0.6]; Depth Between 0m to 1.50m [274.63]; Depth Between 0m to 1.50m [20.9]; Depth Between 1.50m to 2.50m [13.43]; Depth > 2.50m [2.99]; Depth Between 0m to 1.50m [253.73]; Depth Between 1.50m to 2.50m [77.61]; Depth > 2.50m [7.46]; Depth Between 0m to 1.50m [17.91]; Depth Between 1.50m to 2.50m [11.94]; Depth > 2.50m [2.39] |
| CO-TSE-ML-190 | Installation Works for Valve and Washout Chambers of Treated Sewage Effluent (Tse) | 2026-11-24 → 2026-12-10 (+16d) | 2026-12-08 → 2026-12-20 (+12d) | 12d → 9d | 0d → 20.5d |  | resources Wash out chamber (2500x 2500mm) [2]; Air valve chamber (1000x 1000 mm) [3.51]; Flow meter chamber (1500x 3000 mm) [1]; Unskilled Labor [192 h]; Plumber [96 h]; Excavator [96 h]; Mobile Crane [96 h] → Unskilled Labor [192 h]; Plumber [96 h]; Excavator [96 h]; Mobile Crane [96 h]; Wash out chamber (2500x 2500mm) [2.99]; Air valve chamber (1000x 1000 mm) [5.23]; Flow meter chamber (1500x 3000 mm) [1.49] |
| MV | **Medium Voltage Network** | 2026-09-10 → 2026-11-02 (+53d) | 2026-11-24 → 2026-12-21 (+27d) |  |  |  |  |
| CW | **Cabling Works** | 2026-09-10 → 2026-11-02 (+53d) | 2026-11-24 → 2026-12-21 (+27d) |  |  |  |  |
| CO-MV-ML-250 | Trench Excavation and Bedding Works for Medium Voltage Network | 2026-09-10 → 2026-11-02 (+53d) | 2026-10-06 → 2026-11-14 (+39d) | 21d → 11d | 10d → -1.5d | ENG-SH-MV-A-110, ENG-MT-MV-ML-A-100, PRO-MV-1DL-100, PRO-MV-DL-100, CO-TSE-ML-150 SS, CO-SW-TF-100 → ENG-SH-MV-A-110, ENG-MT-MV-ML-A-100, PRO-MV-1DL-100, PRO-MV-DL-100, CO-TSE-ML-150 SS, CO-SW-TF-100, CO-SD-ML-130, CO-SD-MH-220, CO-SD-CB-170, CO-SD-ML-160, CO-SD-MH-260, CO-SD-CB-200 SS, CO-SW-ML-130, CO-SW-MH-200, CO-SW-ML-160, CO-SW-MH-250, CO-PW-ML-110 | resources Excavation for Trench size 40cm wide and 80cm deep (for 1 cable) [200.56]; Excavation for Trench Size 60cm wide and 80cm deep (for 2 cables) [100.1]; Excavation for Trench Size 90cm wide and 80cm deep (for 3 cables) [139.32]; Excavation for Trench Size 180cm wide and 80cm deep (for 6 cables) [61.92]; Excavation for Trench Size 210 cm wide and 80cm deep (for 7 cables) [72.24]; Excavation for Trench Size 240cm wide and 80cm deep (for 8 cables) [441.7]; Unskilled Labor [168 h]; Excavator [168 h]; JCB [168 h] → Unskilled Labor [168 h]; Excavator [168 h]; JCB [168 h]; Excavation for Trench size 40cm wide and 80cm deep (for 1 cable) [299.34]; Excavation for Trench Size 60cm wide and 80cm deep (for 2 cables) [149.41]; Excavation for Trench Size 90cm wide and 80cm deep (for 3 cables) [207.94]; Excavation for Trench Size 180cm wide and 80cm deep (for 6 cables) [92.42]; Excavation for Trench Size 210 cm wide and 80cm deep (for 7 cables) [107.82]; Excavation for Trench Size 240cm wide and 80cm deep (for 8 cables) [659.25] |
| CO-MV-ML-260 | Cable Laying Works for Medium Voltage Network | 2026-10-06 → 2026-11-15 (+40d) | 2026-10-31 → 2026-12-02 (+32d) | 21d → 16d | 10d → -1.5d |  | resources Duct bank for (33) cables [88.2]; Duct bank for (21) cables [140]; Duct bank for (15) cables [42.06]; HV Cable Road Crossing [44.91]; Electrical Technician [168 h]; Cable Drum Trailer [168 h]; Boom Truck [168 h]; Pulling Machine [168 h] → Electrical Technician [168 h]; Cable Drum Trailer [168 h]; Boom Truck [168 h]; Pulling Machine [168 h]; Duct bank for (33) cables [131.64]; Duct bank for (21) cables [208.96]; Duct bank for (15) cables [62.78]; HV Cable Road Crossing [67.02] |
| CO-MV-ML-270 | Trench Backfilling and Compaction Works for Medium Voltage Network | 2026-10-31 → 2026-12-03 (+33d) | 2026-11-24 → 2026-12-21 (+27d) | 21d → 16d | 10d → -1.5d |  | resources Duct bank for (33) cables [25.2]; Duct bank for (21) cables [40]; Duct bank for (15) cables [12.02]; HV Cable Road Crossing [12.83]; Unskilled Labor [168 h]; Excavator [168 h]; JCB [168 h]; Dump Truck [168 h] → Unskilled Labor [168 h]; Excavator [168 h]; JCB [168 h]; Dump Truck [168 h]; Duct bank for (33) cables [37.61]; Duct bank for (21) cables [59.7]; Duct bank for (15) cables [17.94]; HV Cable Road Crossing [19.15] |
| SL | **Street Lighting Network** | 2026-09-10 → 2026-11-02 (+53d) | 2026-12-07 → 2027-01-18 (+42d) |  |  |  |  |
| LP | **Lighting Poles Works** | 2026-09-10 → 2026-11-02 (+53d) | 2026-11-09 → 2026-12-12 (+33d) |  |  |  |  |
| CO-SL-LP-300 | Foundation Excavation Works for Lighting Poles of Street Lighting Network | 2026-09-10 → 2026-11-02 (+53d) | 2026-09-26 → 2026-11-10 (+45d) | 12d → 8d | 19d → 1.5d | ENG-SH-LV-A-120, ENG-SH-SL-A-110, ENG-MT-SL-A-100, PRO-R25-SL-DL-110, CO-MV-ML-250 SS → ENG-SH-LV-A-120, ENG-SH-SL-A-110, ENG-MT-SL-A-100, PRO-R25-SL-DL-110, CO-MV-ML-250 SS, CO-SD-CB-200 SS+2d, CO-SD-MH-260, CO-SD-ML-160, CO-SW-ML-130, CO-SW-MH-200, CO-SW-ML-160, CO-SW-MH-250 | resources Lighting poles with 1 arm, height of (12) meters, including the power distribution box, cables, and RCC foundation. [3.9]; Lighting poles with 2 arms, height of (12) meters, including the power distribution box, cables, and RCC foundation. [3.6]; Unskilled Labor [96 h]; Excavator [96 h]; JCB [96 h]; Dump Truck [96 h] → Unskilled Labor [96 h]; Excavator [96 h]; JCB [96 h]; Dump Truck [96 h]; Lighting poles with 1 arm, height of (12) meters, including the power distribution box, cables, and RCC foundation. [5.82]; Lighting poles with 2 arms, height of (12) meters, including the power distribution box, cables, and RCC foundation. [5.37] |
| CO-SL-LP-310 | Installation Works for Lighting Poles Foundation of Street Lighting Network | 2026-09-26 → 2026-11-11 (+46d) | 2026-10-10 → 2026-11-19 (+40d) | 12d → 8d | 19d → 1.5d |  | resources Lighting poles with 1 arm, height of (12) meters, including the power distribution box, cables, and RCC foundation. [7.8]; Lighting poles with 2 arms, height of (12) meters, including the power distribution box, cables, and RCC foundation. [7.2]; Skilled Labor [96 h]; Unskilled Labor [96 h]; Boom Truck [96 h] → Unskilled Labor [96 h]; Boom Truck [96 h]; Skilled Labor [96 h]; Lighting poles with 1 arm, height of (12) meters, including the power distribution box, cables, and RCC foundation. [11.64]; Lighting poles with 2 arms, height of (12) meters, including the power distribution box, cables, and RCC foundation. [10.75] |
| CO-SL-LP-320 | Installation Works for Lighting Poles of Street Lighting Network | 2026-10-10 → 2026-11-21 (+42d) | 2026-10-26 → 2026-11-30 (+35d) | 14d → 9d | 19d → 1.5d |  | resources Lighting poles with 1 arm, height of (12) meters, including the power distribution box, cables, and RCC foundation. [15.6]; Lighting poles with 2 arms, height of (12) meters, including the power distribution box, cables, and RCC foundation. [14.4]; Skilled Labor [112 h]; Electrical Technician [112 h]; Boom Truck [112 h] → Electrical Technician [112 h]; Boom Truck [112 h]; Skilled Labor [112 h]; Lighting poles with 1 arm, height of (12) meters, including the power distribution box, cables, and RCC foundation. [23.28]; Lighting poles with 2 arms, height of (12) meters, including the power distribution box, cables, and RCC foundation. [21.49] |
| CO-SL-LP-210 | Backfilling Works for Lighting Poles of Street Lighting Network | 2026-10-26 → 2026-12-01 (+36d) | 2026-11-09 → 2026-12-12 (+33d) | 12d → 10d | 19d → 1.5d |  | resources Lighting poles with 1 arm, height of (12) meters, including the power distribution box, cables, and RCC foundation. [3.9]; Lighting poles with 2 arms, height of (12) meters, including the power distribution box, cables, and RCC foundation. [3.6]; Unskilled Labor [96 h]; Excavator [96 h]; JCB [96 h]; Dump Truck [96 h] → Unskilled Labor [96 h]; Excavator [96 h]; JCB [96 h]; Dump Truck [96 h]; Lighting poles with 1 arm, height of (12) meters, including the power distribution box, cables, and RCC foundation. [5.82]; Lighting poles with 2 arms, height of (12) meters, including the power distribution box, cables, and RCC foundation. [5.37] |
| CW | **Cabling Works** | 2026-09-26 → 2026-11-11 (+46d) | 2026-11-07 → 2026-12-09 (+32d) |  |  |  |  |
| CO-SL-CL-250 | Trench Excavation and Bedding Works for Street Lighting Network | 2026-09-26 → 2026-11-11 (+46d) | 2026-10-07 → 2026-11-18 (+42d) | 10d → 7d | 19d → 4.5d | CO-SL-LP-310 SS, ENG-SH-LV-A-120, ENG-SH-SL-A-110, ENG-MT-SL-ML-A-100, PRO-SL-1DL-100, PRO-R25-SL-DL-100 → CO-SL-LP-310 SS, ENG-SH-LV-A-120, ENG-SH-SL-A-110, ENG-MT-SL-ML-A-100, PRO-SL-1DL-100, PRO-R25-SL-DL-100, CO-SL-LP-300 | resources Road crossing ducts, 2 ways (2 x 150mm HDPE) [228.69]; Road crossing ducts, 2 ways (2 x 110mm UPVC) [90.85]; Road crossing ducts, 3 ways (3 x 110mm UPVC) [30.19]; Unskilled Labor [240 h]; Excavator [240 h]; JCB [240 h] → Unskilled Labor [240 h]; Excavator [240 h]; JCB [240 h]; Road crossing ducts, 2 ways (2 x 150mm HDPE) [341.33]; Road crossing ducts, 2 ways (2 x 110mm UPVC) [135.6]; Road crossing ducts, 3 ways (3 x 110mm UPVC) [45.06] |
| CO-SL-CL-260 | Cable Laying Works for Street Lighting Network | 2026-10-07 → 2026-11-19 (+43d) | 2026-10-19 → 2026-11-26 (+38d) | 10d → 7d | 19d → 4.5d | CO-SL-CL-250 → CO-SL-CL-250, CO-SL-LP-300 | resources 4C-300mm2 CU/XLPE / PVC ARMORED CABLE [56]; 4C-240mm2 CU/XLPE / PVC ARMORED CABLE [32]; 4C-185mm2 CU/XLPE / PVC ARMORED CABLE [32]; 4C-50mm2 CU/XLPE / PVC ARMORED CABLE [120]; 4C-16mm2 CU/XLPE / PVC ARMORED CABLE [2788]; 4C-16MM2 CU/XLPE / PVC CABLE [1116]; 1Cx150sq.mm2,Cu, PVC wire [60]; 1Cx120sq.mm2,Cu, PVC wire [60]; 1Cx95sq.mm,Cu, PVC wire [32]; 1Cx70sq.mm2,Cu, PVC wire [16]; 1Cx25sq.mm2,Cu, PVC wire [60]; 1Cx16sq.mm2,Cu, PVC wire [2788]; 1Cx10sq.mm2,Cu, PVC wire [40]; Electrical Technician [240 h]; Cable Drum Trailer [240 h]; Boom Truck [240 h]; Pulling Machine [240 h] → Electrical Technician [240 h]; Cable Drum Trailer [240 h]; Boom Truck [240 h]; Pulling Machine [240 h]; 4C-300mm2 CU/XLPE / PVC ARMORED CABLE [83.58]; 4C-240mm2 CU/XLPE / PVC ARMORED CABLE [47.76]; 4C-185mm2 CU/XLPE / PVC ARMORED CABLE [47.76]; 4C-50mm2 CU/XLPE / PVC ARMORED CABLE [179.1]; 4C-16mm2 CU/XLPE / PVC ARMORED CABLE [4161.19]; 4C-16MM2 CU/XLPE / PVC CABLE [1665.67]; 1Cx150sq.mm2,Cu, PVC wire [89.55]; 1Cx120sq.mm2,Cu, PVC wire [89.55]; 1Cx95sq.mm,Cu, PVC wire [47.76]; 1Cx70sq.mm2,Cu, PVC wire [23.88]; 1Cx25sq.mm2,Cu, PVC wire [89.55]; 1Cx16sq.mm2,Cu, PVC wire [4161.19]; 1Cx10sq.mm2,Cu, PVC wire [59.7] |
| CO-SL-CL-270 | Trench Backfilling and Compaction Works for Street Lighting Network | 2026-10-26 → 2026-12-01 (+36d) | 2026-11-07 → 2026-12-09 (+32d) | 10d → 8d | 21d → 1.5d |  | resources 4C-300mm2 CU/XLPE / PVC ARMORED CABLE [14]; 4C-240mm2 CU/XLPE / PVC ARMORED CABLE [8]; 4C-185mm2 CU/XLPE / PVC ARMORED CABLE [8]; 4C-50mm2 CU/XLPE / PVC ARMORED CABLE [30]; 4C-16mm2 CU/XLPE / PVC ARMORED CABLE [697]; 4C-16MM2 CU/XLPE / PVC CABLE [279]; 1Cx150sq.mm2,Cu, PVC wire [15]; 1Cx120sq.mm2,Cu, PVC wire [15]; 1Cx95sq.mm,Cu, PVC wire [8]; 1Cx70sq.mm2,Cu, PVC wire [4]; 1Cx25sq.mm2,Cu, PVC wire [15]; 1Cx16sq.mm2,Cu, PVC wire [697]; 1Cx10sq.mm2,Cu, PVC wire [10]; Unskilled Labor [240 h]; Excavator [240 h]; JCB [240 h]; Dump Truck [240 h] → Unskilled Labor [240 h]; Excavator [240 h]; JCB [240 h]; Dump Truck [240 h]; 4C-300mm2 CU/XLPE / PVC ARMORED CABLE [20.9]; 4C-240mm2 CU/XLPE / PVC ARMORED CABLE [11.94]; 4C-185mm2 CU/XLPE / PVC ARMORED CABLE [11.94]; 4C-50mm2 CU/XLPE / PVC ARMORED CABLE [44.78]; 4C-16mm2 CU/XLPE / PVC ARMORED CABLE [1040.3]; 4C-16MM2 CU/XLPE / PVC CABLE [416.42]; 1Cx150sq.mm2,Cu, PVC wire [22.39]; 1Cx120sq.mm2,Cu, PVC wire [22.39]; 1Cx95sq.mm,Cu, PVC wire [11.94]; 1Cx70sq.mm2,Cu, PVC wire [5.97]; 1Cx25sq.mm2,Cu, PVC wire [22.39]; 1Cx16sq.mm2,Cu, PVC wire [1040.3]; 1Cx10sq.mm2,Cu, PVC wire [14.93] |
| DPB | **Distrubution Panel Boards** | 2026-11-09 → 2026-12-22 (+43d) | 2026-12-07 → 2027-01-18 (+42d) |  |  |  |  |
| CO-SL-DB-250 | Foundation Excavation Works For Panel Boards of Street Lighting Network | 2026-11-09 → 2026-12-22 (+43d) | 2026-11-16 → 2026-12-28 (+42d) |  | 19d → 0d | CO-SL-LP-210, CO-SL-CL-270, ENG-MT-SL-DB-A-100 → CO-SL-LP-210, CO-SL-CL-270, ENG-MT-SL-DB-A-100, CO-MV-ML-270, CO-TSE-ML-180 | resources Street Lighting panels LCP (01) [0.2]; Unskilled Labor [48 h]; Excavator [48 h]; JCB [48 h]; Dump Truck [48 h] → Unskilled Labor [48 h]; Excavator [48 h]; JCB [48 h]; Dump Truck [48 h]; Street Lighting panels LCP (01) [0.3] |
| CO-SL-DB-260 | Installation Works for Panel Board Concrete Foundations of Street Lighting Network | 2026-11-16 → 2026-12-29 (+43d) | 2026-11-23 → 2027-01-04 (+42d) |  | 19d → 0d |  | resources Street Lighting panels LCP (01) [0.2]; Skilled Labor [48 h]; Unskilled Labor [48 h]; Boom Truck [48 h] → Unskilled Labor [48 h]; Boom Truck [48 h]; Skilled Labor [48 h]; Street Lighting panels LCP (01) [0.3] |
| CO-SL-DB-270 | Installation Works for Lighting Panel Boards of Street Lighting Network | 2026-11-23 → 2027-01-05 (+43d) | 2026-11-30 → 2027-01-11 (+42d) |  | 19d → 0d |  | resources Street Lighting panels LCP (01) [0.4]; Skilled Labor [48 h]; Electrical Technician [48 h]; Boom Truck [48 h] → Electrical Technician [48 h]; Boom Truck [48 h]; Skilled Labor [48 h]; Street Lighting panels LCP (01) [0.6] |
| CO-SL-DB-220 | A wall of concrete blocks to install the KWH meter of Street Lighting Network | 2026-11-30 → 2027-01-12 (+43d) | 2026-12-07 → 2027-01-18 (+42d) |  | 25d → 7d |  | resources Supply and installation of KWH meter mounting frame including concrete block for installation of KWH meter [6]; Unskilled Labor [96 h]; Mason [48 h] → Unskilled Labor [96 h]; Mason [48 h]; Supply and installation of KWH meter mounting frame including concrete block for installation of KWH meter [8.96] |
| TE | **Telecom Network** | 2026-09-26 → 2026-11-15 (+50d) | 2026-12-05 → 2027-01-02 (+28d) |  |  |  |  |
| PD | **Ducts Works** | 2026-09-26 → 2026-11-15 (+50d) | 2026-11-01 → 2026-12-14 (+43d) |  |  |  |  |
| CO-TE-DW-100 | Trench Excavation and Bedding Works for Ducts of Telecom Network | 2026-09-26 → 2026-11-15 (+50d) | 2026-10-04 → 2026-11-18 (+45d) | 7d → 4d | 22d → -1d | ENG-SH-TE-A-110, ENG-MT-TE-A-100, PRO-TE-1DL-100, PRO-R25-TE-DL-100, CO-SL-CL-250 SS → ENG-SH-TE-A-110, ENG-MT-TE-A-100, PRO-TE-1DL-100, PRO-R25-TE-DL-100, CO-MV-ML-250 | resources 2-ways ducts, 50mm diameter [129]; 6-ways ducts, 110mm diameter [520.5]; 9-ways ducts, 6 x 160mm & 2 x 100mm [763.5]; Skilled Labor [168 h]; Unskilled Labor [168 h]; Excavator [168 h] → Unskilled Labor [168 h]; Excavator [168 h]; Skilled Labor [168 h]; 2-ways ducts, 50mm diameter [192.54]; 6-ways ducts, 110mm diameter [776.87]; 9-ways ducts, 6 x 160mm & 2 x 100mm [1139.55] |
| CO-TE-DW-110 | Pipes Laying Works for Ducts of Telecom Network | 2026-10-07 → 2026-11-19 (+43d) | 2026-10-15 → 2026-11-23 (+39d) | 7d → 4d | 19d → -1d | CO-TE-DW-100, CO-SL-CL-260 SS → CO-TE-DW-100 | resources 2-ways ducts, 50mm diameter [283.8]; 6-ways ducts, 110mm diameter [1145.1]; 9-ways ducts, 6 x 160mm & 2 x 100mm [1679.7]; Unskilled Labor [336 h]; Electrical Technician [168 h]; Excavator [168 h] → Unskilled Labor [336 h]; Electrical Technician [168 h]; Excavator [168 h]; 2-ways ducts, 50mm diameter [423.58]; 6-ways ducts, 110mm diameter [1709.1]; 9-ways ducts, 6 x 160mm & 2 x 100mm [2507.01] |
| CO-TE-DW-130 | Trench Backfilling and Compaction Works for Ducts of Telecom Network | 2026-10-15 → 2026-11-24 (+40d) | 2026-10-24 → 2026-12-02 (+39d) | 7d → 8d | 27d → 0d |  | resources 2-ways ducts, 50mm diameter [103.2]; 6-ways ducts, 110mm diameter [416.4]; 9-ways ducts, 6 x 160mm & 2 x 100mm [610.8]; Unskilled Labor [168 h]; Excavator [168 h]; JCB [168 h]; Dump Truck [168 h] → Unskilled Labor [168 h]; Excavator [168 h]; JCB [168 h]; Dump Truck [168 h]; 2-ways ducts, 50mm diameter [154.03]; 6-ways ducts, 110mm diameter [621.49]; 9-ways ducts, 6 x 160mm & 2 x 100mm [911.64] |
| CO-TE-DW-120 | Pouring Road Crossing Concrete Encasement | 2026-10-24 → 2026-12-03 (+40d) | 2026-11-01 → 2026-12-14 (+43d) | 7d → 10d | 27d → 0d |  | resources 6 PVC ducts 150x200 mm (60mm diameter) [162]; 6 PVC ducts 600x800 mm (120mm diameter) [282]; 6 PVC ducts 800x800 mm (170mm diameter) [402]; Unskilled Labor [112 h]; Mason [56 h] → Unskilled Labor [112 h]; Mason [56 h]; 6 PVC ducts 150x200 mm (60mm diameter) [241.79]; 6 PVC ducts 600x800 mm (120mm diameter) [420.9]; 6 PVC ducts 800x800 mm (170mm diameter) [600] |
| MH | **Manholes Works** | 2026-10-17 → 2026-11-24 (+38d) | 2026-11-10 → 2026-12-15 (+35d) |  |  |  |  |
| CO-TE-MH-140 | Excavation Works for Manholes of Telecom Network | 2026-10-17 → 2026-11-24 (+38d) | 2026-10-25 → 2026-11-29 (+35d) | 7d → 5d | 19d → -1d | CO-TE-DW-110 FS+1d, ENG-SH-TE-A-110, ENG-MT-TE-A-110, PRO-TE-1DL-110, PRO-R25-TE-DL-110 → CO-TE-DW-110, ENG-SH-TE-A-110, ENG-MT-TE-A-110, PRO-TE-1DL-110, PRO-R25-TE-DL-110 | resources Manhole Type 2 (1600 x 1600 x 2000) [6.25]; Manhole Type 3 (1200 x 1200 x 2000) [7.75]; Skilled Labor [112 h]; Unskilled Labor [112 h]; Excavator [112 h] → Unskilled Labor [112 h]; Excavator [112 h]; Skilled Labor [112 h]; Manhole Type 2 (1600 x 1600 x 2000) [9.33]; Manhole Type 3 (1200 x 1200 x 2000) [11.57] |
| CO-TE-MH-150 | Installation Works for Manholes of Telecom Network | 2026-10-25 → 2026-11-30 (+36d) | 2026-11-02 → 2026-12-07 (+35d) |  | 19d → -1d |  | resources Manhole Type 2 (1600 x 1600 x 2000) [13.75]; Manhole Type 3 (1200 x 1200 x 2000) [17.05]; Unskilled Labor [224 h]; Plumber [112 h]; Excavator [112 h]; Mobile Crane [112 h] → Unskilled Labor [224 h]; Plumber [112 h]; Excavator [112 h]; Mobile Crane [112 h]; Manhole Type 2 (1600 x 1600 x 2000) [20.52]; Manhole Type 3 (1200 x 1200 x 2000) [25.45] |
| CO-TE-MH-160 | Backfilling Works for Manholes of Telecom Network | 2026-11-02 → 2026-12-08 (+36d) | 2026-11-10 → 2026-12-15 (+35d) |  | 19d → -1d |  | resources Manhole Type 2 (1600 x 1600 x 2000) [5]; Manhole Type 3 (1200 x 1200 x 2000) [6.2]; Unskilled Labor [112 h]; Excavator [112 h]; JCB [112 h]; Dump Truck [112 h] → Unskilled Labor [112 h]; Excavator [112 h]; JCB [112 h]; Dump Truck [112 h]; Manhole Type 2 (1600 x 1600 x 2000) [7.46]; Manhole Type 3 (1200 x 1200 x 2000) [9.25] |
| DD | **CCTV System Wroks** | 2026-11-10 → 2026-12-16 (+36d) | 2026-12-05 → 2027-01-02 (+28d) |  |  |  |  |
| CO-TE-CTV-100 | Digging and Pulling Trenches PVC ducts , Backfilling, Excavations, of Power Cable | 2026-11-10 → 2026-12-16 (+36d) | 2026-11-18 → 2026-12-21 (+33d) | 7d → 5d | 19d → -1d |  | resources 6 PVC ducts 200x150 mm (60mm diameter) [138]; 2-ways ducts, 50mm diameter [498]; Unskilled Labor [56 h]; Electrical Technician [112 h]; Excavator [56 h] → Unskilled Labor [56 h]; Electrical Technician [112 h]; Excavator [56 h]; 6 PVC ducts 200x150 mm (60mm diameter) [205.97]; 2-ways ducts, 50mm diameter [743.28] |
| CO-TE-CTV-110 | Installation of Network Cable Cat.6A from Network switch to CCTV Camera and ACS Device | 2026-11-18 → 2026-12-22 (+34d) | 2026-11-26 → 2026-12-27 (+31d) | 7d → 5d | 19d → -1d |  | resources NVR Server with RAID (5, 6 or 10) to record all cameras storage 80TB with all hardware / software / licenses etc. [2]; VMS Server with RAID (5, 6 or 10) complete Hardware / Software with one Color Laser Printer and all associated [2]; Licenses for Cameras, Workstations and Keyboards [1]; Work Station (MMI with two monitors each, for Monitoring for CCTV & ACS) [1]; Keyboard with joystick for CCTV with all accessories as per specification [1]; Pole mounted IP( PoE) Fixed camera, 5MP,IP 66, IR illumination, 3-8mm varifocal, auto iris lens type [44]; Wall mounted IP( PoE) Fixed camera, 5MP,IP 66, IR illumination, 3-8mm varifocal, auto iris lens type [78]; 5MP Dome camera ceiling Mounted IP (PoE) indoor [17]; 5MP PTZ Multi Sensor Camera IP(PoE) 360 Degree View Outdoor with accessories (IP 66) [7]; 8 Port Industrial PoE Switch 10/100BaseT (0 deg to +70 deg. Celsius) [12]; Filed Equipment cabinet (FEC), with fan and ventilation, NEMEX 4X ,door, minimum size (600x600x400mm) [12]; IP Phone Communication server (hot standby) 50 Port equipped, Gateway, Gatekeeper, H.323, SIP, redundant Power etc. [3]; IP Phone Voice gateway [1]; Voice IP Phone [1]; NMS Server for IP phone and NETWORK Elements [1]; NMS Workstation [1]; Firm Ware, software & licenses [1]; Data Cable [1]; Power Cable [1]; Layer 3, 24 Port non-PoE switch10/1000BaseT/LX (-40 deg to +70 deg. Celsius), stack module and associated [2]; Layer 2, 24 Port non-PoE switch10/1000BaseT (-40 deg to +70 deg. Celsiu [6]; Network Management System Server [2]; Network Management System workstation [1]; 42U rack dimension (W x H x L) 800 x 2000 x 1000 mm [2]; 12U rack dimension (W x H x L) 600 x 625 x 600 mm [1]; 06C Optical Fiber SM [1820]; 48C Optical Fiber SM [5800]; 48 Core Splice Closure [7]; Optical fiber patch cord 5m [24]; Data Cable (STP CAT 6A) [10320]; 3C Power Cable armored 1.5mm2 [10320]; 3C Power Cable armored 2.5 mm2 [10320]; UTP CAT6A Patch Cord 1m/3m/5m [23]; Unskilled Labor [56 h]; Electrical Technician [112 h] → Unskilled Labor [56 h]; Electrical Technician [112 h]; NVR Server with RAID (5, 6 or 10) to record all cameras storage 80TB with all hardware / software / licenses etc. [2.99]; VMS Server with RAID (5, 6 or 10) complete Hardware / Software with one Color Laser Printer and all associated [2.99]; Licenses for Cameras, Workstations and Keyboards [1.49]; Work Station (MMI with two monitors each, for Monitoring for CCTV & ACS) [1.49]; Keyboard with joystick for CCTV with all accessories as per specification [1.49]; Pole mounted IP( PoE) Fixed camera, 5MP,IP 66, IR illumination, 3-8mm varifocal, auto iris lens type [65.67]; Wall mounted IP( PoE) Fixed camera, 5MP,IP 66, IR illumination, 3-8mm varifocal, auto iris lens type [116.42]; 5MP Dome camera ceiling Mounted IP (PoE) indoor [25.37]; 5MP PTZ Multi Sensor Camera IP(PoE) 360 Degree View Outdoor with accessories (IP 66) [10.45]; 8 Port Industrial PoE Switch 10/100BaseT (0 deg to +70 deg. Celsius) [17.91]; Filed Equipment cabinet (FEC), with fan and ventilation, NEMEX 4X ,door, minimum size (600x600x400mm) [17.91]; IP Phone Communication server (hot standby) 50 Port equipped, Gateway, Gatekeeper, H.323, SIP, redundant Power etc. [4.48]; IP Phone Voice gateway [1.49]; Voice IP Phone [1.49]; NMS Server for IP phone and NETWORK Elements [1.49]; NMS Workstation [1.49]; Firm Ware, software & licenses [1.49]; Data Cable [1.49]; Power Cable [1.49]; Layer 3, 24 Port non-PoE switch10/1000BaseT/LX (-40 deg to +70 deg. Celsius), stack module and associated [2.99]; Layer 2, 24 Port non-PoE switch10/1000BaseT (-40 deg to +70 deg. Celsiu [8.96]; Network Management System Server [2.99]; Network Management System workstation [1.49]; 42U rack dimension (W x H x L) 800 x 2000 x 1000 mm [2.99]; 12U rack dimension (W x H x L) 600 x 625 x 600 mm [1.49]; 06C Optical Fiber SM [2716.42]; 48C Optical Fiber SM [8656.72]; 48 Core Splice Closure [10.45]; Optical fiber patch cord 5m [35.82]; Data Cable (STP CAT 6A) [15403]; 3C Power Cable armored 1.5mm2 [15403]; 3C Power Cable armored 2.5 mm2 [15403]; UTP CAT6A Patch Cord 1m/3m/5m [34.33] |
| CO-TE-CTV-130 | Installation of Access Control System | 2026-11-26 → 2026-12-28 (+32d) | 2026-12-05 → 2027-01-02 (+28d) | 7d → 5d | 19d → -1d |  | resources Access Control Unit [5]; Access Card Reader [5]; Magnetic Lock [5]; Break Glass [4]; Exit Push button [5]; Door Sensor [5]; Biometrics Reader [8]; Unskilled Labor [56 h]; Electrical Technician [112 h] → Unskilled Labor [56 h]; Electrical Technician [112 h]; Access Control Unit [7.46]; Access Card Reader [7.46]; Magnetic Lock [7.46]; Break Glass [5.97]; Exit Push button [7.46]; Door Sensor [7.46]; Biometrics Reader [11.94] |
| RD | **Road Works** | 2026-11-02 → 2026-12-06 (+34d) | 2026-12-13 → 2027-02-02 (+51d) |  |  |  |  |
| 3 | **ST+1000:ST+1531** | 2026-11-02 → 2026-12-06 (+34d) | 2026-11-26 → 2027-01-06 (+41d) |  |  |  |  |
| RD | **Pre-Bituminous Construction** | 2026-11-02 → 2026-12-06 (+34d) | 2026-11-26 → 2027-01-06 (+41d) |  |  |  |  |
| CO-RD-PB-140 | Subgrade Layer for Road Works | 2026-11-02 → 2026-12-06 (+34d) | 2026-11-10 → 2026-12-21 (+41d) | 7d → 13.5d | 41d → -1.5d | CO-EW-200, CO-EW-110, CO-SD-ML-130, CO-SD-MH-220, CO-SD-CB-170, CO-SW-ML-130, CO-SW-MH-200, CO-PW-ML-130, CO-PW-VC-220, CO-IR-ML-130 SS, CO-TSE-ML-180 SS+2d, CO-MV-ML-270 SS+2d, CO-SL-LP-210 SS+1d, CO-SL-CL-270 SS+1d, CO-TE-DW-120 SS, PRO-R25-RD-DL-100, CO-EW-220 → CO-EW-200_R, CO-EW-110_R, CO-SD-ML-130, CO-SD-MH-220, CO-SD-CB-170, CO-SW-ML-130, CO-SW-MH-200, CO-PW-ML-130, CO-PW-VC-220, CO-IR-ML-130 SS, CO-TSE-ML-180 SS+2d, CO-MV-ML-270 SS+2d, CO-SL-LP-210 SS+1d, CO-SL-CL-270 SS+1d, CO-TE-DW-120 SS, PRO-R25-RD-DL-100, CO-EW-220_R, CO-MV-ML-260, CO-TE-DW-130 | resources Subgrade [1037.05]; Loader [56 h]; Dump Truck [56 h]; Water Tanker [56 h]; Compactor [56 h]; Grader [56 h] → Loader [56 h]; Dump Truck [56 h]; Water Tanker [56 h]; Compactor [56 h]; Grader [56 h]; Subgrade [2294.03] |
| CO-RD-PB-150 | Aggregate Base Course Layer for Road Works | 2026-11-18 → 2026-12-21 (+33d) | 2026-11-26 → 2027-01-06 (+41d) | 7d → 14d | 38d → -1.5d | CO-RD-PB-140, PRO-R25-RD-DL-110 → CO-RD-PB-140, PRO-R25-RD-DL-110, CO-TSE-ML-180 | resources Aggregate base course [518.7]; Loader [56 h]; Dump Truck [56 h]; Water Tanker [56 h]; Compactor [56 h]; Grader [56 h] → Loader [56 h]; Dump Truck [56 h]; Water Tanker [56 h]; Compactor [56 h]; Grader [56 h]; Aggregate base course [774.18] |
| 2 | **ST+500:ST+1000** | 2026-11-16 → 2026-12-22 (+36d) | 2026-12-05 → 2027-01-19 (+45d) |  |  |  |  |
| RD | **Pre-Bituminous Construction** | 2026-11-16 → 2026-12-22 (+36d) | 2026-12-05 → 2027-01-19 (+45d) |  |  |  |  |
| CO-RD-PB-120 | Subgrade Layer for Road Works | 2026-11-16 → 2026-12-22 (+36d) | 2026-11-24 → 2027-01-03 (+40d) | 7d → 10.8d | 36d → -0.8d | CO-RD-PB-140, CO-SD-ML-160, CO-SD-MH-260, CO-SD-CB-200, CO-SW-ML-160, CO-SW-MH-250, CO-PW-ML-130, CO-PW-VC-220, CO-PW-FH-160 SS+2d, CO-TSE-ML-180 SS+2d, CO-IR-ML-130 SS+2d, CO-MV-ML-270 SS+2d, CO-SL-LP-210, CO-SL-CL-270, CO-TE-DW-120, CO-TE-MH-160 → CO-RD-PB-140, CO-SD-ML-160, CO-SD-MH-260, CO-SD-CB-200, CO-SW-ML-160, CO-SW-MH-250, CO-PW-ML-130, CO-PW-VC-220, CO-PW-FH-160 SS+2d, CO-TSE-ML-180 SS+2d, CO-IR-ML-130 SS+2d, CO-MV-ML-270, CO-SL-LP-210, CO-SL-CL-270, CO-TE-DW-120, CO-TE-MH-160, CO-TE-DW-130, CO-TSE-ML-180 | resources Subgrade [1037.05]; Loader [56 h]; Dump Truck [56 h]; Water Tanker [56 h]; Compactor [56 h]; Grader [56 h] → Loader [56 h]; Dump Truck [56 h]; Water Tanker [56 h]; Compactor [56 h]; Grader [56 h]; Subgrade [801.49] |
| CO-RD-PB-130 | Aggregate Base Course Layer for Road Works | 2026-11-26 → 2027-01-06 (+41d) | 2026-12-05 → 2027-01-19 (+45d) | 7d → 11d | 38d → -1.5d |  | resources Aggregate base course [518.7]; Loader [56 h]; Dump Truck [56 h]; Water Tanker [56 h]; Compactor [56 h]; Grader [56 h] → Loader [56 h]; Dump Truck [56 h]; Water Tanker [56 h]; Compactor [56 h]; Grader [56 h]; Aggregate base course [774.18] |
| 1 | **ST+01:ST+500** | 2026-11-24 → 2027-01-03 (+40d) | 2026-12-13 → 2027-02-02 (+51d) |  |  |  |  |
| RD | **Pre-Bituminous Construction** | 2026-11-24 → 2027-01-03 (+40d) | 2026-12-13 → 2027-02-02 (+51d) |  |  |  |  |
| CO-RD-PB-100 | Subgrade Layer for Road Works | 2026-11-24 → 2027-01-03 (+40d) | 2026-12-02 → 2027-01-17 (+46d) | 7d → 12d | 41d → -0.8d | CO-RD-PB-120 → CO-RD-PB-120, CO-TE-DW-130, CO-TE-MH-160, CO-SL-CL-270, CO-MV-ML-270, CO-TSE-ML-180, CO-IR-ML-130, CO-PW-FH-160 | resources Subgrade [888.9]; Loader [56 h]; Dump Truck [56 h]; Water Tanker [56 h]; Compactor [56 h]; Grader [56 h] → Loader [56 h]; Dump Truck [56 h]; Water Tanker [56 h]; Compactor [56 h]; Grader [56 h]; Subgrade [1326.72] |
| CO-RD-PB-110 | Aggregate Base Course Layer for Road Works | 2026-12-05 → 2027-01-19 (+45d) | 2026-12-13 → 2027-02-02 (+51d) | 7d → 12d | 40d → -1.5d |  | resources Aggregate base course [444.6]; Loader [56 h]; Dump Truck [56 h]; Water Tanker [56 h]; Compactor [56 h]; Grader [56 h] → Loader [56 h]; Dump Truck [56 h]; Water Tanker [56 h]; Compactor [56 h]; Grader [56 h]; Aggregate base course [663.58] |
| 3 | **Finishes for Infrastructure Networks** | 2026-08-17 → 2026-10-14 (+58d) | 2026-12-27 → 2027-02-16 (+51d) |  |  |  |  |
| 11 | **Storm Drainage Network** | 2026-08-17 → 2026-11-02 (+77d) | 2026-10-24 → 2027-01-05 (+73d) |  |  |  |  |
| TF | **Testing and Finishes** | 2026-08-17 → 2026-11-02 (+77d) | 2026-10-24 → 2027-01-05 (+73d) |  |  |  |  |
| CO-SD-ML-TF-100 | Testing Work for Pipes of Storm Drainage Network | 2026-08-17 → 2026-11-02 (+77d) | 2026-08-31 → 2026-11-12 (+73d) | 12d → 10d | 25d → 0d | CO-SD-ML-130, CO-SD-CB-200 → CO-SD-ML-130, CO-SD-CB-200, CO-SD-MH-220, CO-SD-CB-170, CO-SD-ML-160, CO-SD-MH-260 | resources Depth Between 0m to 1.50m [9.5]; Depth Between 1.50m to 2.50m [281.9]; Depth > 2.50m [1.5]; Depth Between 1.50m to 2.50m [54.8]; Depth Between 2.50m to 3.50m [43.9]; Depth > 3.50m [1.5]; Depth Between 2.50m to 3.50m [19.1]; Depth Between 0m to 1.50m [2.8]; Depth Between 1.50m to 2.50m [1]; Depth Between 2.50m to 3.50m [9.4]; Depth > 3.50m [0.7]; Depth Between 2.50m to 3.50m [12.1]; Depth Between 3.50m to 4.50m [37.1]; Depth > 4.50m [1.5]; Depth Between 3.50m to 4.50m [73.7]; Depth > 4.50m [2.5]; Unskilled Labor [192 h]; Plumber [192 h]; Water Tanker [192 h] → Unskilled Labor [192 h]; Plumber [192 h]; Water Tanker [192 h]; Depth Between 0m to 1.50m [14.18]; Depth Between 1.50m to 2.50m [420.75]; Depth > 2.50m [2.24]; Depth Between 1.50m to 2.50m [81.79]; Depth Between 2.50m to 3.50m [65.52]; Depth > 3.50m [2.24]; Depth Between 2.50m to 3.50m [28.51]; Depth Between 0m to 1.50m [4.18]; Depth Between 1.50m to 2.50m [1.49]; Depth Between 2.50m to 3.50m [14.03]; Depth > 3.50m [1.04]; Depth Between 2.50m to 3.50m [18.06]; Depth Between 3.50m to 4.50m [55.37]; Depth > 4.50m [2.24]; Depth Between 3.50m to 4.50m [110]; Depth > 4.50m [3.73] |
| CO-SD-CB-TF-130 | Catch Basin Internal Finishes (Benching ) for Storm Drainage Network | 2026-08-31 → 2026-11-14 (+75d) | 2026-09-14 → 2026-11-24 (+71d) | 12d → 10d | 25d → 0d |  | resources Single Catch Basin 1000mm x 1000mm [9.85]; Double Catch Basin 1200mm x 2300mm [0.2]; Unskilled Labor [192 h]; Mason [192 h]; JCB [192 h] → Unskilled Labor [192 h]; Mason [192 h]; JCB [192 h]; Single Catch Basin 1000mm x 1000mm [14.7]; Double Catch Basin 1200mm x 2300mm [0.3] |
| CO-SD-CB-TF-160 | Testing Works for Catch Basins of Storm Drainage Network | 2026-09-14 → 2026-11-25 (+72d) | 2026-09-24 → 2026-12-06 (+73d) | 8d → 10d | 25d → 0d | CO-SD-CB-170, CO-SD-ML-TF-100, CO-SD-CB-TF-130 → CO-SD-CB-170, CO-SD-ML-TF-100, CO-SD-CB-TF-130, CO-SD-CB-200 | resources Single Catch Basin 1000mm x 1000mm [19.7]; Double Catch Basin 1200mm x 2300mm [0.4]; Unskilled Labor [128 h]; Plumber [128 h]; Water Tanker [128 h] → Unskilled Labor [128 h]; Plumber [128 h]; Water Tanker [128 h]; Single Catch Basin 1000mm x 1000mm [29.4]; Double Catch Basin 1200mm x 2300mm [0.6] |

| ID | Task | Start | Finish | Duration | Total float | Predecessors | Other |
| --- | --- | --- | --- | --- | --- | --- | --- |
| CO-SD-CB-TF-110 | Install Catch Basin Cover Works for External Finishes of Storm Drainage Network | 2026-09-24 → 2026-12-07 (+74d) | 2026-10-08 → 2026-12-17 (+70d) | 12d → 10d | 25d → 0d |  | resources Single Catch Basin 1000mm x 1000mm [9.85]; Double Catch Basin 1200mm x 2300mm [0.2]; Unskilled Labor [192 h]; Mason [192 h]; JCB [192 h] → Unskilled Labor [192 h]; Mason [192 h]; JCB [192 h]; Single Catch Basin 1000mm x 1000mm [14.7]; Double Catch Basin 1200mm x 2300mm [0.3] |
| CO-SD-MH-TF-120 | Main Manhole Internal Finishes (Benching ) for Storm Drainage Network | 2026-10-08 → 2026-12-19 (+72d) | 2026-10-22 → 2026-12-29 (+68d) | 12d → 10d | 25d → 0d |  | resources MH depth 1.5 - 2.5m [3]; MH depth 2.5 - 3.5m [2.55]; MH depth > 3.50m [0.15]; MH depth 2.5 -3.5m [0.3]; Unskilled Labor [96 h]; Mason [96 h]; JCB [96 h] → Unskilled Labor [96 h]; Mason [96 h]; JCB [96 h]; MH depth 1.5 - 2.5m [4.48]; MH depth 2.5 - 3.5m [3.81]; MH depth > 3.50m [0.22]; MH depth 2.5 -3.5m [0.45] |
| CO-SD-MH-TF-210 | Testing Works for Manholes of Storm Drainage Network | 2026-10-22 → 2026-12-30 (+69d) | 2026-10-24 → 2027-01-05 (+73d) | 1d → 6d | 25d → 0d | CO-SD-MH-220, CO-SD-ML-TF-100, CO-SD-MH-TF-120, PRO-R25-SD-DL-140, CO-SD-CB-TF-110 → CO-SD-MH-220, CO-SD-ML-TF-100, CO-SD-MH-TF-120, PRO-R25-SD-DL-140, CO-SD-CB-TF-110, CO-SD-MH-260 | resources MH depth 1.5 - 2.5m [2]; MH depth 2.5 - 3.5m [1.7]; MH depth > 3.50m [0.1]; MH depth 2.5 -3.5m [0.2]; Unskilled Labor [24 h]; Plumber [24 h]; Water Tanker [24 h] → Unskilled Labor [24 h]; Plumber [24 h]; Water Tanker [24 h]; MH depth 1.5 - 2.5m [2.99]; MH depth 2.5 - 3.5m [2.54]; MH depth > 3.50m [0.15]; MH depth 2.5 -3.5m [0.3] |
| 10 | **Sewage Network** | 2026-08-27 → 2026-10-14 (+48d) | 2026-10-24 → 2027-01-13 (+81d) |  |  |  |  |
| TF | **Testing and Finishes** | 2026-08-27 → 2026-10-14 (+48d) | 2026-10-24 → 2027-01-13 (+81d) |  |  |  |  |
| CO-SW-TF-100 | Final Testing For Main Line of Sewage Network | 2026-08-27 → 2026-10-14 (+48d) | 2026-09-10 → 2026-10-24 (+44d) | 12d → 9d | 10d → 5.5d | CO-SW-ML-130, CO-SW-MH-250 → CO-SW-ML-130, CO-SW-MH-250, CO-SW-MH-200, CO-SW-ML-160 | resources Depth Between 0m to 1.50m [4]; Depth Between 1.50m to 2.50m [24.6]; Depth > 2.50m [1]; Depth Between 0m to 1.50m [2.2]; Depth Between 1.50m to 2.50m [160]; Depth Between 2.50m to 3.50m [7.5]; Depth > 3.50m [1.5]; HDPE Force Main (PE 100, SDR 11, PN 16 bar) DN 160 mm diameter, in trenches depth: 0- 1.5m [2.5]; HDPE Force Main (PE 100, SDR 11, PN 16 bar) DN 160 mm diameter, in trenches depth: 1.51- 2.5m [4]; Unskilled Labor [96 h]; Plumber [96 h]; Water Tanker [96 h] → Unskilled Labor [96 h]; Plumber [96 h]; Water Tanker [96 h]; Depth Between 0m to 1.50m [5.97]; Depth Between 1.50m to 2.50m [36.72]; Depth > 2.50m [1.49]; Depth Between 0m to 1.50m [3.28]; Depth Between 1.50m to 2.50m [238.81]; Depth Between 2.50m to 3.50m [11.19]; Depth > 3.50m [2.24]; HDPE Force Main (PE 100, SDR 11, PN 16 bar) DN 160 mm diameter, in trenches depth: 0- 1.5m [3.73]; HDPE Force Main (PE 100, SDR 11, PN 16 bar) DN 160 mm diameter, in trenches depth: 1.51- 2.5m [5.97] |
| CO-SW-TF-130 | Main Manhole Internal Finishes (Benching + Insulation) of Sewage Network | 2026-09-10 → 2026-10-25 (+45d) | 2026-09-30 → 2026-11-17 (+48d) | 16d → 21d | 40d → 37d | CO-SW-MH-200, CO-SW-TF-100 → CO-SW-MH-200, CO-SW-TF-100, CO-SW-MH-250 | resources Depth: 0 - 1.5m [0.1]; Depth: 1.51 - 2.5m [1.75]; Depth: 2.51 - 3.5m [0.1]; Depth > 3.50m [0.05]; Unskilled Labor [128 h]; Mason [128 h]; JCB [128 h] → Unskilled Labor [128 h]; Mason [128 h]; JCB [128 h]; Depth: 0 - 1.5m [0.15]; Depth: 1.51 - 2.5m [2.61]; Depth: 2.51 - 3.5m [0.15]; Depth > 3.50m [0.07] |
| CO-SW-TF-110 | Install Manhole Cover Works for External Finishes of Sewage Network | 2026-09-30 → 2026-12-29 (+90d) | 2026-10-19 → 2027-01-09 (+82d) | 16d → 10d | 40d → 2d |  | resources Depth: 0 - 1.5m [0.1]; Depth: 1.51 - 2.5m [1.75]; Depth: 2.51 - 3.5m [0.1]; Depth > 3.50m [0.05]; Unskilled Labor [128 h]; Mason [128 h]; JCB [128 h] → Unskilled Labor [128 h]; Mason [128 h]; JCB [128 h]; Depth: 0 - 1.5m [0.15]; Depth: 1.51 - 2.5m [2.61]; Depth: 2.51 - 3.5m [0.15]; Depth > 3.50m [0.07] |
| CO-SW-TF-210 | Testing Works for Main Line Manholes of Sewage Network | 2026-10-19 → 2027-01-10 (+83d) | 2026-10-24 → 2027-01-13 (+81d) |  | 40d → 2d |  | resources Depth: 0 - 1.5m [0.2]; Depth: 1.51 - 2.5m [3.5]; Depth: 2.51 - 3.5m [0.2]; Depth > 3.50m [0.1]; Unskilled Labor [64 h]; Plumber [64 h]; Water Tanker [64 h] → Unskilled Labor [64 h]; Plumber [64 h]; Water Tanker [64 h]; Depth: 0 - 1.5m [0.3]; Depth: 1.51 - 2.5m [5.22]; Depth: 2.51 - 3.5m [0.3]; Depth > 3.50m [0.15] |
| 9 | **Potable Water Network** | 2026-11-22 → 2026-12-24 (+32d) | 2026-12-27 → 2027-01-28 (+32d) |  |  |  |  |
| TF | **Testing and Finishes** | 2026-11-22 → 2026-12-24 (+32d) | 2026-12-27 → 2027-01-28 (+32d) |  |  |  |  |
| CO-PW-TF-110 | Testing Work for Main Line of Potable Water Network | 2026-11-22 → 2026-12-24 (+32d) | 2026-12-03 → 2027-01-05 (+33d) | 10d → 10.5d | 0d → 0.5d | CO-PW-ML-130, CO-PW-FH-160 → CO-PW-ML-130, CO-PW-FH-160, CO-PW-VC180, CO-PW-FH-160 FF | resources Depth Between 0m to 1.50m [0.6]; Depth Between 1.50m to 2.50m [0.6]; Depth > 2.50m [0.2]; Depth Between 0m to 1.50m [42]; Depth Between 1.50m to 2.50m [28]; Depth > 2.50m [1]; Depth Between 0m to 1.50m [5]; Depth Between 1.50m to 2.50m [1]; Depth > 2.50m [0.5]; Depth Between 0m to 1.50m [32]; Depth Between 1.50m to 2.50m [131]; Depth > 2.50m [2]; Unskilled Labor [160 h]; Plumber [160 h]; Water Tanker [160 h] → Unskilled Labor [160 h]; Plumber [160 h]; Water Tanker [160 h]; Depth Between 0m to 1.50m [0.9]; Depth Between 1.50m to 2.50m [0.9]; Depth > 2.50m [0.3]; Depth Between 0m to 1.50m [62.69]; Depth Between 1.50m to 2.50m [41.79]; Depth > 2.50m [1.49]; Depth Between 0m to 1.50m [7.46]; Depth Between 1.50m to 2.50m [1.49]; Depth > 2.50m [0.75]; Depth Between 0m to 1.50m [47.76]; Depth Between 1.50m to 2.50m [195.52]; Depth > 2.50m [2.99] |
| CO-PW-TF-120 | Fire Hydrant Finishies (S.Box + Safety + Marker Post ) of Potable Water Network | 2026-12-03 → 2027-01-05 (+33d) | 2026-12-15 → 2027-01-17 (+33d) |  | 0d → 0.5d |  | resources 3-outlet fire hydrant (2 x 2.5 inch and 1 x 4.5 inch) in the form of a separate dry vacuum cylinder, complete according to drawings. [1.7]; Unskilled Labor [80 h]; Plumber [80 h] → Unskilled Labor [80 h]; Plumber [80 h]; 3-outlet fire hydrant (2 x 2.5 inch and 1 x 4.5 inch) in the form of a separate dry vacuum cylinder, complete according to drawings. [2.54] |
| CO-PW-TF-100 | Final Finishes works and Covers for Valves and Valve Chambers of Potable Water Network | 2026-12-15 → 2027-01-17 (+33d) | 2026-12-27 → 2027-01-28 (+32d) |  | 0d → 0.5d |  | resources Wash out chamber (2500x 2500mm) [0.2]; Air valve chamber (1000x 1000 mm) [0.1]; Unskilled Labor [80 h]; Mason [80 h]; JCB [80 h] → Unskilled Labor [80 h]; Mason [80 h]; JCB [80 h]; Wash out chamber (2500x 2500mm) [0.3]; Air valve chamber (1000x 1000 mm) [0.15] |
| 13 | **Irrigation Network** | 2026-12-08 → 2026-12-21 (+13d) | 2026-12-27 → 2027-01-03 (+7d) |  |  |  |  |
| TF | **Testing and Finishes** | 2026-12-08 → 2026-12-21 (+13d) | 2026-12-27 → 2027-01-03 (+7d) |  |  |  |  |
| CO-IR-TF-160 | Final Testing (pressure tests) of Irrigation Network | 2026-12-08 → 2026-12-21 (+13d) | 2026-12-27 → 2027-01-03 (+7d) | 16d → 12d | 0d → 8.5d | CO-IR-ML-140 → CO-IR-ML-140, CO-IR-ML-130 | resources pipe line O.D 32 mm PN 10, in depth 0 to 1.5 m [335]; pipe line O.D 40 mm PN 10, in depth 0 to 1.5 m [185]; pipe line O.D 50 mm PN 10, in depth 0 to 1.5 m [25]; Unskilled Labor [256 h]; Plumber [256 h]; Water Tanker [256 h] → Unskilled Labor [256 h]; Plumber [256 h]; Water Tanker [256 h]; pipe line O.D 32 mm PN 10, in depth 0 to 1.5 m [500]; pipe line O.D 40 mm PN 10, in depth 0 to 1.5 m [276.12]; pipe line O.D 50 mm PN 10, in depth 0 to 1.5 m [37.31] |
| 1 | **Treated Sewage Effluent (Tse)** | 2026-12-08 → 2027-01-04 (+27d) | 2026-12-27 → 2027-01-17 (+21d) |  |  |  |  |
| TF | **Testing and Finishes** | 2026-12-08 → 2027-01-04 (+27d) | 2026-12-27 → 2027-01-17 (+21d) |  |  |  |  |
| CO-TSE-TF-170 | Final Testing (pressure tests) of Treated Sewage Effluent (Tse) | 2026-12-08 → 2027-01-04 (+27d) | 2026-12-27 → 2027-01-17 (+21d) | 16d → 11.5d | 0d → 8.5d | CO-TSE-ML-190 → CO-TSE-ML-190, CO-IR-TF-160, CO-TSE-ML-180 | resources Depth Between 0m to 1.50m [1]; Depth Between 1.50m to 2.50m [0.5]; Depth > 2.50m [0.2]; Depth Between 0m to 1.50m [92]; Depth Between 0m to 1.50m [7]; Depth Between 1.50m to 2.50m [4.5]; Depth > 2.50m [1]; Depth Between 0m to 1.50m [85]; Depth Between 1.50m to 2.50m [26]; Depth > 2.50m [2.5]; Depth Between 0m to 1.50m [6]; Depth Between 1.50m to 2.50m [4]; Depth > 2.50m [0.8]; Unskilled Labor [128 h]; Plumber [128 h]; Water Tanker [128 h] → Unskilled Labor [128 h]; Plumber [128 h]; Water Tanker [128 h]; Depth Between 0m to 1.50m [1.49]; Depth Between 1.50m to 2.50m [0.75]; Depth > 2.50m [0.3]; Depth Between 0m to 1.50m [137.31]; Depth Between 0m to 1.50m [10.45]; Depth Between 1.50m to 2.50m [6.72]; Depth > 2.50m [1.49]; Depth Between 0m to 1.50m [126.87]; Depth Between 1.50m to 2.50m [38.81]; Depth > 2.50m [3.73]; Depth Between 0m to 1.50m [8.96]; Depth Between 1.50m to 2.50m [5.97]; Depth > 2.50m [1.19] |
| 14 | **Medium Voltage Network** | 2026-11-24 → 2026-12-22 (+28d) | 2026-12-15 → 2027-01-11 (+27d) |  |  |  |  |
| TT | **Termination and Testing Works** | 2026-11-24 → 2026-12-22 (+28d) | 2026-12-15 → 2027-01-11 (+27d) |  |  |  |  |
| CO-MV-TF-220 | Termination Works of Medium Voltage Network | 2026-11-24 → 2026-12-22 (+28d) | 2026-12-15 → 2027-01-11 (+27d) |  | 10d → 2d |  | resources Duct bank for (33) cables [12.6]; Duct bank for (21) cables [20]; Duct bank for (15) cables [6.01]; HV Cable Road Crossing [6.42]; Unskilled Labor [144 h]; Electrical Technician [288 h] → Unskilled Labor [144 h]; Electrical Technician [288 h]; Duct bank for (33) cables [18.81]; Duct bank for (21) cables [29.85]; Duct bank for (15) cables [8.97]; HV Cable Road Crossing [9.57] |
| 12 | **Street Lighting Network** | 2026-11-30 → 2027-01-12 (+43d) | 2026-12-23 → 2027-02-03 (+42d) |  |  |  |  |
| TR | **Termination and Testing Works** | 2026-11-30 → 2027-01-12 (+43d) | 2026-12-23 → 2027-02-03 (+42d) |  |  |  |  |
| CO-SL-LP-330 | Installation Works for Lighting Fixtures With Drop Wire of Street Lighting Network | 2026-11-30 → 2027-01-12 (+43d) | 2026-12-10 → 2027-01-19 (+40d) | 9d → 7d | 19d → 0d |  | resources Street Lighting( LED) Luminaire of Output ? 20,965 lumen complete with control gear and lamp, (129.1) WATT. [111]; Unskilled Labor [72 h]; Electrical Technician [144 h] → Unskilled Labor [72 h]; Electrical Technician [144 h]; Street Lighting( LED) Luminaire of Output ? 20,965 lumen complete with control gear and lamp, (129.1) WATT. [165.67] |
| CO-SL-TF-220 | Termination Works For Lighting Poles Cables of Street Lighting Network | 2026-12-14 → 2027-01-20 (+37d) | 2026-12-23 → 2027-01-27 (+35d) | 8d → 7d | 19d → 6d |  | resources Lighting poles with 1 arm, height of (12) meters, including the power distribution box, cables, and RCC foundation. [3.9]; Lighting poles with 2 arms, height of (12) meters, including the power distribution box, cables, and RCC foundation. [3.6]; Unskilled Labor [64 h]; Electrical Technician [128 h] → Unskilled Labor [64 h]; Electrical Technician [128 h]; Lighting poles with 1 arm, height of (12) meters, including the power distribution box, cables, and RCC foundation. [5.82]; Lighting poles with 2 arms, height of (12) meters, including the power distribution box, cables, and RCC foundation. [5.37] |
| CO-SL-TF-230 | Termination Works For Panel Board Cables of Street Lighting Network | 2026-12-14 → 2027-01-20 (+37d) | 2026-12-23 → 2027-01-27 (+35d) | 8d → 7d | 19d → 6d |  | resources Street Lighting panels LCP (01) [0.1]; Unskilled Labor [64 h]; Electrical Technician [128 h] → Unskilled Labor [64 h]; Electrical Technician [128 h]; Street Lighting panels LCP (01) [0.15] |
| CO-SL-TF-380 | Testing Works For Panel Board Cables of Street Lighting Network | 2026-12-14 → 2027-01-20 (+37d) | 2026-12-16 → 2027-01-21 (+36d) |  | 25d → 11d |  | resources Street Lighting panels LCP (01) [0.1]; Unskilled Labor [48 h]; Electrical Technician [96 h] → Unskilled Labor [48 h]; Electrical Technician [96 h]; Street Lighting panels LCP (01) [0.15] |
| CO-SL-TF-200 | Testing Works for Lighting Poles of Street Lighting Network | 2026-12-14 → 2027-01-30 (+47d) | 2026-12-20 → 2027-02-03 (+45d) |  | 22d → 0d |  | resources Lighting poles with 1 arm, height of (12) meters, including the power distribution box, cables, and RCC foundation. [3.9]; Lighting poles with 2 arms, height of (12) meters, including the power distribution box, cables, and RCC foundation. [3.6]; Unskilled Labor [80 h]; Electrical Technician [160 h] → Unskilled Labor [80 h]; Electrical Technician [160 h]; Lighting poles with 1 arm, height of (12) meters, including the power distribution box, cables, and RCC foundation. [5.82]; Lighting poles with 2 arms, height of (12) meters, including the power distribution box, cables, and RCC foundation. [5.37] |
| ES | **Earthing System Works** | 2026-11-30 → 2027-01-12 (+43d) | 2026-12-14 → 2027-01-19 (+36d) |  |  |  |  |
| CO-SL-ES-220 | Install Earthing System Works for Lighting Poles of Street Lighting Network | 2026-11-30 → 2027-01-12 (+43d) | 2026-12-14 → 2027-01-19 (+36d) | 12d → 7d | 19d → 0d |  | resources Including earthing of lighting poles, masts, feeder pillars, unit substations and LV feeders. [52.5]; Unskilled Labor [96 h]; Electrical Technician [192 h] → Unskilled Labor [96 h]; Electrical Technician [192 h]; Including earthing of lighting poles, masts, feeder pillars, unit substations and LV feeders. [78.36] |
| CO-SL-ES-230 | Install Earthing System Works for Lighting Panel Boards of Street Lighting Network | 2026-11-30 → 2027-01-12 (+43d) | 2026-12-14 → 2027-01-19 (+36d) | 12d → 7d | 19d → 0d |  | resources Including earthing of lighting poles, masts, feeder pillars, unit substations and LV feeders. [22.5]; Unskilled Labor [96 h]; Electrical Technician [192 h] → Unskilled Labor [96 h]; Electrical Technician [192 h]; Including earthing of lighting poles, masts, feeder pillars, unit substations and LV feeders. [33.58] |
| 3 | **Telecom Network** | 2026-12-05 → 2027-01-03 (+29d) | 2026-12-23 → 2027-01-20 (+28d) |  |  |  |  |
| 1 | **Testing and Finishes** | 2026-12-05 → 2027-01-03 (+29d) | 2026-12-23 → 2027-01-20 (+28d) |  |  |  |  |
| CO-TE-CTV-TF-110 | Smart Card Printer | 2026-12-05 → 2027-01-03 (+29d) | 2026-12-09 → 2027-01-06 (+28d) |  | 19d → -1d |  | resources Smart Card Printer [1]; Unskilled Labor [32 h]; Electrical Technician [64 h] → Unskilled Labor [32 h]; Electrical Technician [64 h]; Smart Card Printer [1.49] |
| CO-TE-CTV-TF-120 | Card Issue Work Station | 2026-12-09 → 2027-01-07 (+29d) | 2026-12-14 → 2027-01-11 (+28d) |  | 19d → -1d |  | resources Card Issue Work Station [1]; Unskilled Labor [32 h]; Electrical Technician [64 h] → Unskilled Labor [32 h]; Electrical Technician [64 h]; Card Issue Work Station [1.49] |
| CO-TE-CTV-TF-130 | Photographic Camera with stand | 2026-12-14 → 2027-01-12 (+29d) | 2026-12-19 → 2027-01-16 (+28d) |  | 19d → -1d |  | resources Photographic Camera with stand [1]; Unskilled Labor [32 h]; Electrical Technician [64 h] → Unskilled Labor [32 h]; Electrical Technician [64 h]; Photographic Camera with stand [1.49] |
| CO-TE-CTV-TF-140 | Interface modules with CCTV, Fire and other systems | 2026-12-19 → 2027-01-17 (+29d) | 2026-12-23 → 2027-01-20 (+28d) |  | 19d → -1d |  | resources Interface modules with CCTV, Fire and other systems [1]; Unskilled Labor [32 h]; Electrical Technician [64 h] → Unskilled Labor [32 h]; Electrical Technician [64 h]; Interface modules with CCTV, Fire and other systems [1.49] |
| 2 | **Road Works** | 2026-11-24 → 2026-12-21 (+27d) | 2026-12-23 → 2027-02-16 (+55d) |  |  |  |  |
| 3 | **ST+1000:ST+1531** | 2026-11-29 → 2026-12-21 (+22d) | 2026-12-23 → 2027-02-08 (+47d) |  |  |  |  |
| 1 | **Bituminous Construction** | 2026-12-10 → 2027-01-06 (+27d) | 2026-12-16 → 2027-01-23 (+38d) |  |  |  |  |
| CO-RD-B-150 | Application of Prime Coat Layer for Road Works | 2026-12-10 → 2027-01-06 (+27d) | 2026-12-13 → 2027-01-14 (+32d) | 2d → 7d | 36d → -0.5d | CO-RD-PV-160, PRO-R25-RD-DL-160 → CO-RD-PV-160, PRO-R25-RD-DL-160, CO-RD-PB-150 | resources Bituminous base course (Grading I - Class A), including Prime Coat (MC1) [172.9]; Skilled Labor [16 h]; Unskilled Labor [16 h]; MC1 Sprinkler [16 h] → Unskilled Labor [16 h]; MC1 Sprinkler [16 h]; Skilled Labor [16 h]; Bituminous base course (Grading I - Class A), including Prime Coat (MC1) [258.06] |
| CO-RD-B-160 | Bituminous Base Courses Layers for Road Works- | 2026-12-13 → 2027-01-14 (+32d) | 2026-12-16 → 2027-01-23 (+38d) | 3d → 7d | 36d → -0.5d | CO-RD-B-150, PRO-R25-RD-DL-170 → CO-RD-B-150, PRO-R25-RD-DL-170, CO-RD-PV-160 | resources Bituminous concrete wearing course, (Grading I - Class A), including tack coat (RC2) [172.9]; Bob Cat [24 h]; Dump Truck [24 h]; Compactor [24 h]; Asphalt Paver [24 h] → Bob Cat [24 h]; Dump Truck [24 h]; Compactor [24 h]; Asphalt Paver [24 h]; Bituminous concrete wearing course, (Grading I - Class A), including tack coat (RC2) [258.06] |
| LS | **Pavement Works** | 2026-11-29 → 2026-12-21 (+22d) | 2026-12-16 → 2027-01-17 (+32d) |  |  |  |  |
| CO-RD-PV-160 | Fixing of Curbstone for Sidewalks Pavement | 2026-11-29 → 2026-12-21 (+22d) | 2026-12-10 → 2027-01-04 (+25d) | 10d → 12.2d | 36d → -0.7d |  | resources Precast Concrete Curbstone 150X300X900 Type (K1-A) [2543.45]; Precast Concrete Curbstone 100X200X500 Type (K4) [1973.3]; Precast Concrete Curbstone 150X300X500 Type (K1-B) [773.5]; Precast Concrete Curbstone Type (K1-C) [34.65]; Flush Kerb Type (D) [65.8]; Unskilled Labor [160 h]; Mason [160 h]; JCB [160 h]; Compactor [160 h]; Forklift [160 h] → Unskilled Labor [160 h]; Mason [160 h]; JCB [160 h]; Compactor [160 h]; Forklift [160 h]; Precast Concrete Curbstone 150X300X900 Type (K1-A) [3796.19]; Precast Concrete Curbstone 100X200X500 Type (K4) [2945.22]; Precast Concrete Curbstone 150X300X500 Type (K1-B) [1154.48]; Precast Concrete Curbstone Type (K1-C) [51.72]; Flush Kerb Type (D) [98.21] |
| CO-RD-PV-170 | Fixing of Interlock Tiles for Sidewalks Pavement | 2026-12-05 → 2027-01-04 (+30d) | 2026-12-16 → 2027-01-17 (+32d) | 10d → 11d | 36d → -0.7d | CO-RD-PV-160 SS+5d, PRO-R25-RD-DL-120 → CO-RD-PV-160, PRO-R25-RD-DL-120 | resources 60mm thick [9774.1]; 80mm thick [13648.9]; Unskilled Labor [160 h]; Mason [160 h]; JCB [160 h]; Compactor [160 h]; Forklift [160 h] → Unskilled Labor [160 h]; Mason [160 h]; JCB [160 h]; Compactor [160 h]; Forklift [160 h]; 60mm thick [14588.2]; 80mm thick [20371.5] |
| TS | **Traffic Signs Boards and Roads Marking** | 2026-12-16 → 2027-01-23 (+38d) | 2026-12-23 → 2027-02-08 (+47d) |  |  |  |  |
| CO-RD-F-RM-180 | Application of Road Marking Works For Road Works | 2026-12-16 → 2027-01-23 (+38d) | 2026-12-19 → 2027-01-31 (+43d) | 2d → 7d | 36d → 2.5d |  | resources Retroreflective Thermoplastic White Traffic lines [337.75]; Retroreflective Thermoplastic Yellow, Traffic lines [505.75]; Road Marking Machine [32 h] → Road Marking Machine [32 h]; Retroreflective Thermoplastic White Traffic lines [504.1]; Retroreflective Thermoplastic Yellow, Traffic lines [754.85] |
| CO-RD-F-TS-120 | Installation Works of Traffic Signs Boards For Road Works | 2026-12-19 → 2027-01-31 (+43d) | 2026-12-23 → 2027-02-08 (+47d) | 4d → 7d | 36d → 2.5d |  | resources Traffic signs, ground mounted, Sheet Aluminum, (breakaway) Single post IPE, with all accessories [34.65]; Precast Concrete Blister Warning Tactile Paver Brown Finish 300*300*60mm [22.4]; Skilled Labor [64 h]; Unskilled Labor [64 h] → Unskilled Labor [64 h]; Skilled Labor [64 h]; Traffic signs, ground mounted, Sheet Aluminum, (breakaway) Single post IPE, with all accessories [51.72]; Precast Concrete Blister Warning Tactile Paver Brown Finish 300*300*60mm [33.43] |
| 1 | **ST+500:ST+1000** | 2026-11-24 → 2027-01-04 (+41d) | 2026-12-23 → 2027-02-14 (+53d) |  |  |  |  |
| 1 | **Bituminous Construction** | 2026-12-07 → 2027-01-23 (+47d) | 2026-12-14 → 2027-02-01 (+49d) |  |  |  |  |
| CO-RD-B-130 | Application of Prime Coat Layer for Road Works | 2026-12-07 → 2027-01-23 (+47d) | 2026-12-09 → 2027-01-27 (+49d) | 2d → 4d | 36d → -0.5d | CO-RD-PV-140, CO-RD-PB-130 → CO-RD-PV-140, CO-RD-PB-130, CO-RD-B-150, CO-RD-B-160 | resources Bituminous base course (Grading I - Class A), including Prime Coat (MC1) [172.9]; Skilled Labor [16 h]; Unskilled Labor [16 h]; MC1 Sprinkler [16 h] → Unskilled Labor [16 h]; MC1 Sprinkler [16 h]; Skilled Labor [16 h]; Bituminous base course (Grading I - Class A), including Prime Coat (MC1) [258.06] |
| CO-RD-B-140 | Bituminous Base Courses Layers for Road Works- | 2026-12-09 → 2027-01-27 (+49d) | 2026-12-14 → 2027-02-01 (+49d) |  | 36d → -0.5d |  | resources Bituminous concrete wearing course, (Grading I - Class A), including tack coat (RC2) [172.9]; Bob Cat [32 h]; Dump Truck [32 h]; Compactor [32 h]; Asphalt Paver [32 h] → Bob Cat [32 h]; Dump Truck [32 h]; Compactor [32 h]; Asphalt Paver [32 h]; Bituminous concrete wearing course, (Grading I - Class A), including tack coat (RC2) [258.06] |
| LS | **Pavement Works** | 2026-11-24 → 2027-01-04 (+41d) | 2026-12-13 → 2027-01-30 (+48d) |  |  |  |  |
| CO-RD-PV-140 | Fixing of Curbstone for Sidewalks Pavement | 2026-11-24 → 2027-01-04 (+41d) | 2026-12-07 → 2027-01-17 (+41d) |  | 36d → -0.7d | CO-RD-PB-120 → CO-RD-PB-120, CO-RD-PV-160 | resources Precast Concrete Curbstone 150X300X900 Type (K1-A) [2543.45]; Precast Concrete Curbstone 100X200X500 Type (K4) [1973.3]; Precast Concrete Curbstone 150X300X500 Type (K1-B) [773.5]; Precast Concrete Curbstone Type (K1-C) [34.65]; Flush Kerb Type (D) [65.8]; Unskilled Labor [176 h]; Mason [176 h]; JCB [176 h]; Compactor [176 h]; Forklift [176 h] → Unskilled Labor [176 h]; Mason [176 h]; JCB [176 h]; Compactor [176 h]; Forklift [176 h]; Precast Concrete Curbstone 150X300X900 Type (K1-A) [3796.19]; Precast Concrete Curbstone 100X200X500 Type (K4) [2945.22]; Precast Concrete Curbstone 150X300X500 Type (K1-B) [1154.48]; Precast Concrete Curbstone Type (K1-C) [51.72]; Flush Kerb Type (D) [98.21] |
| CO-RD-PV-150 | Fixing of Interlock Tiles for Sidewalks Pavement | 2026-11-30 → 2027-01-17 (+48d) | 2026-12-13 → 2027-01-30 (+48d) |  | 37d → -0.7d | CO-RD-PV-140 SS+5d → CO-RD-PV-140, CO-RD-PV-170 | resources 60mm thick [9774.1]; 80mm thick [13648.9]; Unskilled Labor [176 h]; Mason [176 h]; JCB [176 h]; Compactor [176 h]; Forklift [176 h] → Unskilled Labor [176 h]; Mason [176 h]; JCB [176 h]; Compactor [176 h]; Forklift [176 h]; 60mm thick [14588.2]; 80mm thick [20371.5] |
| TS | **Traffic Signs Boards and Roads Marking** | 2026-12-14 → 2027-02-02 (+50d) | 2026-12-23 → 2027-02-14 (+53d) |  |  |  |  |
| CO-RD-F-RM-170 | Application of Road Marking Works For Road Works | 2026-12-14 → 2027-02-02 (+50d) | 2026-12-19 → 2027-02-08 (+51d) | 4d → 5d | 36d → -1.5d | CO-RD-B-140, CO-RD-PV-150 → CO-RD-B-140, CO-RD-PV-150, CO-RD-PB-110, CO-RD-PB-130 | resources Retroreflective Thermoplastic White Traffic lines [337.75]; Retroreflective Thermoplastic Yellow, Traffic lines [505.75]; Road Marking Machine [64 h] → Road Marking Machine [64 h]; Retroreflective Thermoplastic White Traffic lines [504.1]; Retroreflective Thermoplastic Yellow, Traffic lines [754.85] |
| CO-RD-F-TS-110 | Installation Works of Traffic Signs Boards For Road Works | 2026-12-19 → 2027-02-08 (+51d) | 2026-12-23 → 2027-02-14 (+53d) |  | 36d → -1.5d |  | resources Traffic signs, ground mounted, Sheet Aluminum, (breakaway) Single post IPE, with all accessories [34.65]; Precast Concrete Blister Warning Tactile Paver Brown Finish 300*300*60mm [22.4]; Skilled Labor [64 h]; Unskilled Labor [64 h] → Unskilled Labor [64 h]; Skilled Labor [64 h]; Traffic signs, ground mounted, Sheet Aluminum, (breakaway) Single post IPE, with all accessories [51.72]; Precast Concrete Blister Warning Tactile Paver Brown Finish 300*300*60mm [33.43] |
| 2 | **ST+01:ST+500** | 2026-12-02 → 2027-01-17 (+46d) | 2026-12-23 → 2027-02-16 (+55d) |  |  |  |  |
| 1 | **Bituminous Construction** | 2026-12-13 → 2027-02-02 (+51d) | 2026-12-19 → 2027-02-14 (+57d) |  |  |  |  |
| CO-RD-B-110 | Application of Prime Coat Layer for Road Works | 2026-12-13 → 2027-02-02 (+51d) | 2026-12-15 → 2027-02-08 (+55d) | 2d → 5d | 40d → -1.5d | CO-RD-PV-120, CO-RD-PB-110 → CO-RD-PV-120, CO-RD-PB-110, CO-RD-B-130 | resources Bituminous base course (Grading I - Class A), including Prime Coat (MC1) [148.2]; Skilled Labor [16 h]; Unskilled Labor [16 h]; MC1 Sprinkler [16 h] → Unskilled Labor [16 h]; MC1 Sprinkler [16 h]; Skilled Labor [16 h]; Bituminous base course (Grading I - Class A), including Prime Coat (MC1) [221.19] |
| CO-RD-B-120 | Bituminous Base Courses Layers for Road Works- | 2026-12-15 → 2027-02-08 (+55d) | 2026-12-19 → 2027-02-14 (+57d) | 3d → 4d | 40d → -1.5d |  | resources Bituminous concrete wearing course, (Grading I - Class A), including tack coat (RC2) [148.2]; Bob Cat [24 h]; Dump Truck [24 h]; Compactor [24 h]; Asphalt Paver [24 h] → Bob Cat [24 h]; Dump Truck [24 h]; Compactor [24 h]; Asphalt Paver [24 h]; Bituminous concrete wearing course, (Grading I - Class A), including tack coat (RC2) [221.19] |
| LS | **Pavement Works** | 2026-12-02 → 2027-01-17 (+46d) | 2026-12-17 → 2027-02-14 (+59d) |  |  |  |  |
| CO-RD-PV-120 | Fixing of Curbstone for Sidewalks Pavement | 2026-12-02 → 2027-01-17 (+46d) | 2026-12-12 → 2027-01-30 (+49d) | 8d → 11d | 41d → -0.8d | CO-RD-PB-100, CO-RD-PB-100 FF → CO-RD-PB-100, CO-RD-PB-100 FF, CO-RD-PV-140 | resources Precast Concrete Curbstone 150X300X900 Type (K1-A) [2180.1]; Precast Concrete Curbstone 100X200X500 Type (K4) [1691.4]; Precast Concrete Curbstone 150X300X500 Type (K1-B) [663]; Precast Concrete Curbstone Type (K1-C) [29.7]; Flush Kerb Type (D) [56.4]; Unskilled Labor [160 h]; Mason [160 h]; JCB [160 h]; Compactor [160 h]; Forklift [160 h] → Unskilled Labor [160 h]; Mason [160 h]; JCB [160 h]; Compactor [160 h]; Forklift [160 h]; Precast Concrete Curbstone 150X300X900 Type (K1-A) [3253.88]; Precast Concrete Curbstone 100X200X500 Type (K4) [2524.48]; Precast Concrete Curbstone 150X300X500 Type (K1-B) [989.55]; Precast Concrete Curbstone Type (K1-C) [44.33]; Flush Kerb Type (D) [84.18] |
| CO-RD-PV-130 | Fixing of Interlock Tiles for Sidewalks Pavement | 2026-12-08 → 2027-01-30 (+53d) | 2026-12-17 → 2027-02-14 (+59d) | 8d → 11d | 41d → -0.8d | CO-RD-PV-120 SS+5d → CO-RD-PV-120, CO-RD-PV-150 | resources 60mm thick [8377.8]; 80mm thick [11699]; Unskilled Labor [160 h]; Mason [160 h]; JCB [160 h]; Compactor [160 h]; Forklift [160 h] → Unskilled Labor [160 h]; Mason [160 h]; JCB [160 h]; Compactor [160 h]; Forklift [160 h]; 60mm thick [12504.2]; 80mm thick [17461.3] |
| TS | **Traffic Signs Boards and Roads Marking** | 2026-12-19 → 2027-02-15 (+58d) | 2026-12-23 → 2027-02-16 (+55d) |  |  |  |  |
| CO-RD-F-RM-160 | Application of Road Marking Works For Road Works | 2026-12-19 → 2027-02-15 (+58d) | 2026-12-23 → 2027-02-16 (+55d) | 4d → 1d | 49.75d → 1.5d |  | resources Retroreflective Thermoplastic White Traffic lines [289.5]; Retroreflective Thermoplastic Yellow, Traffic lines [433.5]; Road Marking Machine [48 h] → Road Marking Machine [48 h]; Retroreflective Thermoplastic White Traffic lines [432.09]; Retroreflective Thermoplastic Yellow, Traffic lines [647.01] |
| CO-RD-F-TS-100 | Installation Works of Traffic Signs Boards For Road Works | 2026-12-19 → 2027-02-15 (+58d) | 2026-12-23 → 2027-02-16 (+55d) | 4d → 1d | 49.75d → 1.5d |  | resources Traffic signs, ground mounted, Sheet Aluminum, (breakaway) Single post IPE, with all accessories [29.7]; Precast Concrete Blister Warning Tactile Paver Brown Finish 300*300*60mm [19.2]; Skilled Labor [48 h]; Unskilled Labor [48 h] → Unskilled Labor [48 h]; Skilled Labor [48 h]; Traffic signs, ground mounted, Sheet Aluminum, (breakaway) Single post IPE, with all accessories [44.33]; Precast Concrete Blister Warning Tactile Paver Brown Finish 300*300*60mm [28.66] |

| ID | Task | Start | Finish | Duration | Total float | Predecessors | Other |
| --- | --- | --- | --- | --- | --- | --- | --- |
| GEN | **Superstructure Work** | 2026-04-21 → 2026-07-28 (+98d) | 2027-02-22 → 2027-02-23 (+1d) |  |  |  |  |
| 4 | **Utility Buildings** | 2026-05-02 → 2026-08-24 (+114d) | 2026-12-23 → 2027-01-28 (+36d) |  |  |  |  |
| 6 | **Storm Drainage Ponds** | 2026-08-03 → 2026-10-22 (+80d) | 2026-11-10 → 2027-01-03 (+54d) |  |  |  |  |
| CO-SD-PO-100-P1 | Excavation & Filling Works - PART 1 | 2026-08-03 → 2026-10-22 (+80d) | 2026-08-27 → 2026-11-08 (+73d) | 21d → 15d | 10d → 2d | ENG-SH-DPO-A-120, ENG-MT-DPO-CV-A-110, PRO-DPO-CV-1DL-10, CO-SD-CB-200 SS, PRO-DPO-CV-DL-10 FF → ENG-SH-DPO-A-120, ENG-MT-DPO-CV-A-110, PRO-DPO-CV-1DL-10, PRO-DPO-CV-DL-10 FF, CO-SD-CB-190, CO-SD-MH-260, CO-SD-ML-160, CO-SD-CB-170, CO-SD-MH-220, CO-SD-ML-130, CO-SW-ML-130, CO-SW-MH-200, CO-SW-ML-160, CO-SW-MH-250 | resources Skilled Labor [168 h]; Unskilled Labor [336 h]; Excavator [168 h] → Unskilled Labor [336 h]; Excavator [168 h]; Skilled Labor [168 h] |
| CO-SD-PO-110-P1 | Finished Grouted Riprap - PART 1 | 2026-08-27 → 2026-11-09 (+74d) | 2026-09-21 → 2026-11-26 (+66d) | 21d → 16d | 10d → 2d |  | resources Finished grouted riprap for Pond 300mm as per drawings [2046]; Unskilled Labor [336 h]; Mason [336 h] → Unskilled Labor [336 h]; Mason [336 h]; Finished grouted riprap for Pond 300mm as per drawings [3053.73] |
| CO-SD-PO-100-P2 | Excavation & Filling Works - PART 2 | 2026-09-21 → 2026-11-28 (+68d) | 2026-10-17 → 2026-12-15 (+59d) | 21d → 16d | 10d → 2d |  |  |
| CO-SD-PO-110-P2 | Finished Grouted Riprap - PART 2 | 2026-10-17 → 2026-12-16 (+60d) | 2026-11-10 → 2027-01-03 (+54d) | 21d → 16d | 10d → 2d |  | resources Finished grouted riprap for Pond 300mm as per drawings [1674]; Unskilled Labor [336 h]; Mason [336 h] → Unskilled Labor [336 h]; Mason [336 h]; Finished grouted riprap for Pond 300mm as per drawings [2498.51] |
| 4 | **Pump Station** | 2026-05-02 → 2026-09-01 (+122d) | 2026-12-20 → 2027-01-28 (+39d) |  |  |  |  |
| 1 | **Civil work** | 2026-05-02 → 2026-09-01 (+122d) | 2026-08-13 → 2026-12-02 (+111d) |  |  |  |  |
| 1 | **Sup Structure** | 2026-05-02 → 2026-09-01 (+122d) | 2026-06-15 → 2026-10-18 (+125d) |  |  |  |  |
| CO-UB-PS-100 | Excavation Work for for Pump station building | 2026-05-02 → 2026-09-01 (+122d) | 2026-05-13 → 2026-09-09 (+119d) | 10d → 8d | 5.25d → 0.04d | ENG-SH-SPS-A-160, PRO-SPS-CV-1DL-10, PRO-SPS-CV-DL-10 FF, PRO-SPS-CV-DL-10 → ENG-SH-SPS-A-160, PRO-SPS-CV-1DL-10, PRO-SPS-CV-DL-10 FF, PRO-SPS-CV-DL-10, CO-SW-ML-150 | resources Price; Skilled Labor [80 h]; Unskilled Labor [160 h]; Excavator [80 h] → Price; Unskilled Labor [160 h]; Excavator [80 h]; Skilled Labor [80 h] |
| CO-UB-PS-110 | pouring P.C Conceret for Pump station building | 2026-05-13 → 2026-09-10 (+120d) | 2026-05-17 → 2026-09-13 (+119d) |  | 5.25d → 0.04d |  | resources Price [48286.3 SAR]; Unskilled Labor [24 h]; Mason [24 h] → Price [72069.1 SAR]; Unskilled Labor [24 h]; Mason [24 h] |
| CO-UB-PS-120 | Formwork for Foundation for Pump station building | 2026-05-17 → 2026-09-14 (+120d) | 2026-05-25 → 2026-09-24 (+122d) | 7d → 9d | 5.25d → 0.04d |  | resources Price [48286.3 SAR]; Unskilled Labor [56 h]; Carpenter [112 h] → Price [72069.1 SAR]; Unskilled Labor [56 h]; Carpenter [112 h] |
| CO-UB-PS-130 | Steel fixing for Foundation for Pump station building | 2026-05-25 → 2026-09-26 (+124d) | 2026-06-04 → 2026-10-05 (+123d) | 5d → 9d | 5.25d → 0.04d |  | resources Price [48286.3 SAR]; Unskilled Labor [40 h]; Steel Fixer [120 h] → Price [72069.1 SAR]; Unskilled Labor [40 h]; Steel Fixer [120 h] |
| CO-UB-PS-140 | pouring for Foundation for Pump station building | 2026-06-04 → 2026-10-06 (+124d) | 2026-06-06 → 2026-10-06 (+122d) |  | 5.25d → 0.04d |  | resources Price [48286.3 SAR]; Unskilled Labor [8 h]; Mason [8 h] → Price [72069.1 SAR]; Unskilled Labor [8 h]; Mason [8 h] |
| CO-UB-PS-150 | curing and deshuttering formwork Pump station building | 2026-06-06 → 2026-10-07 (+123d) | 2026-06-09 → 2026-10-10 (+123d) |  | 5.25d → 0.04d |  | resources Price [48286.3 SAR]; Unskilled Labor [72 h]; Carpenter [48 h] → Price [72069.1 SAR]; Unskilled Labor [72 h]; Carpenter [48 h] |
| CO-UB-PS-160 | Backfilling and compaction work for pump station | 2026-06-09 → 2026-10-11 (+124d) | 2026-06-15 → 2026-10-18 (+125d) | 5d → 7d | 5.25d → 0.04d |  | resources Price [48286.3 SAR]; Skilled Labor [40 h]; Unskilled Labor [80 h]; Excavator [40 h] → Price [72069.1 SAR]; Unskilled Labor [80 h]; Excavator [40 h]; Skilled Labor [40 h] |
| 2 | **Super structure** | 2026-06-15 → 2026-10-19 (+126d) | 2026-08-13 → 2026-12-02 (+111d) |  |  |  |  |
| CO-UB-PS-170 | Formwork for Wall and columns for Pump station building | 2026-06-15 → 2026-10-19 (+126d) | 2026-06-29 → 2026-10-29 (+122d) | 12d → 9.21d | 5.25d → 0.04d |  | resources Price [48286.3 SAR]; Unskilled Labor [96 h]; Carpenter [192 h] → Price [72069.1 SAR]; Unskilled Labor [96 h]; Carpenter [192 h] |
| CO-UB-PS-180 | Steel fixing for Wall columns | 2026-06-29 → 2026-10-29 (+122d) | 2026-07-07 → 2026-11-07 (+123d) |  | 5.25d → 0.04d |  | resources Price [48286.3 SAR]; Unskilled Labor [56 h]; Steel Fixer [168 h] → Price [72069.1 SAR]; Unskilled Labor [56 h]; Steel Fixer [168 h] |
| CO-UB-PS-190 | pouring for Wall columns | 2026-07-07 → 2026-11-07 (+123d) | 2026-07-08 → 2026-11-08 (+123d) |  | 5.25d → 0.04d |  | resources Price [48286.3 SAR]; Unskilled Labor [8 h]; Mason [8 h] → Price [72069.1 SAR]; Unskilled Labor [8 h]; Mason [8 h] |
| CO-UB-PS-200 | curing and deshuttering formwork for Wall columns | 2026-07-08 → 2026-11-08 (+123d) | 2026-07-11 → 2026-11-10 (+122d) |  | 5.25d → 0.04d |  | resources Price [48286.3 SAR]; Unskilled Labor [48 h]; Carpenter [32 h] → Price [72069.1 SAR]; Unskilled Labor [48 h]; Carpenter [32 h] |
| CO-UB-PS-210 | Waterproofing for Walls columns | 2026-07-11 → 2026-11-10 (+122d) | 2026-07-15 → 2026-11-15 (+123d) |  | 5.25d → 0.04d |  | resources Price [48286.3 SAR]; Unskilled Labor [40 h]; Mason [40 h] → Price [72069.1 SAR]; Unskilled Labor [40 h]; Mason [40 h] |
| CO-UB-PS-220 | Formwork for pump roof | 2026-07-16 → 2026-11-15 (+122d) | 2026-07-29 → 2026-11-22 (+116d) | 12d → 6d | 5.25d → 0.04d |  | resources Price [48286.3 SAR]; Unskilled Labor [96 h]; Carpenter [192 h] → Price [72069.1 SAR]; Unskilled Labor [96 h]; Carpenter [192 h] |
| CO-UB-PS-230 | Steel fixing for pump roof | 2026-07-30 → 2026-11-22 (+115d) | 2026-08-10 → 2026-11-29 (+111d) | 10d → 6d | 5.25d → 0.04d |  | resources Price [48286.3 SAR]; Unskilled Labor [80 h]; Steel Fixer [240 h] → Price [72069.1 SAR]; Unskilled Labor [80 h]; Steel Fixer [240 h] |
| CO-UB-PS-240 | pouring for pump roof | 2026-08-11 → 2026-11-29 (+110d) | 2026-08-11 → 2026-11-30 (+111d) |  | 5.25d → 0.04d |  | resources Price [48286.3 SAR]; Unskilled Labor [8 h]; Mason [8 h] → Price [72069.1 SAR]; Unskilled Labor [8 h]; Mason [8 h] |
| CO-UB-PS-250 | curing and deshuttering formwork for pump roof | 2026-08-12 → 2026-11-30 (+110d) | 2026-08-13 → 2026-12-02 (+111d) |  | 5.25d → 0.04d |  | resources Price [48286.3 SAR]; Unskilled Labor [48 h]; Carpenter [32 h] → Price [72069.1 SAR]; Unskilled Labor [48 h]; Carpenter [32 h] |
| 2 | **Architectural work** | 2026-08-15 → 2026-12-02 (+109d) | 2026-11-10 → 2027-01-12 (+63d) |  |  |  |  |
| CO-UB-PS-260 | Executing Masonry Works for Pump station building | 2026-08-15 → 2026-12-02 (+109d) | 2026-08-27 → 2026-12-08 (+103d) | 12d → 5d | 5.25d → 0.04d |  | resources Price [123130 SAR]; Unskilled Labor [192 h]; Mason [192 h] → Price [183776 SAR]; Unskilled Labor [192 h]; Mason [192 h] |
| CO-UB-PS-270 | Executing Plastering Works for Pump station building | 2026-08-29 → 2026-12-08 (+101d) | 2026-09-13 → 2026-12-14 (+92d) | 14d → 5d | 5.25d → 0.04d |  | resources Price [153913 SAR]; Unskilled Labor [112 h]; Mason [112 h] → Price [229720 SAR]; Unskilled Labor [112 h]; Mason [112 h] |
| CO-UB-PS-280 | Executing Painting Works for Pump station building | 2026-09-14 → 2026-12-14 (+91d) | 2026-09-30 → 2026-12-20 (+81d) | 14d → 5d | 5.25d → 0.04d |  | resources Price [152238 SAR]; Skilled Labor [224 h]; Unskilled Labor [224 h] → Price [227221 SAR]; Unskilled Labor [224 h]; Skilled Labor [224 h] |
| CO-UB-PS-320 | Doors and windows Fixing &Stair Tiles | 2026-11-03 → 2027-01-04 (+62d) | 2026-11-10 → 2027-01-12 (+63d) |  | 16.25d → 4.04d |  | resources Price [153913 SAR]; Unskilled Labor [56 h]; Carpenter [112 h] → Price [229720 SAR]; Unskilled Labor [56 h]; Carpenter [112 h] |
| 3 | **Electrical work** | 2026-10-01 → 2026-12-20 (+80d) | 2026-12-01 → 2027-01-23 (+53d) |  |  |  |  |
| CO-UB-PS-290 | Lighting system for pump house | 2026-10-01 → 2026-12-20 (+80d) | 2026-10-14 → 2026-12-26 (+73d) | 12d → 5d | 5.25d → 0.04d |  | resources Price [90536.9 SAR]; Unskilled Labor [96 h]; Electrical Technician [192 h] → Price [135130 SAR]; Unskilled Labor [96 h]; Electrical Technician [192 h] |
| CO-UB-PS-300 | Wiring connection for pump house | 2026-10-15 → 2026-12-26 (+72d) | 2026-10-25 → 2026-12-31 (+67d) | 9d → 5d | 5.25d → 0.04d |  | resources Price [36214.8 SAR]; Unskilled Labor [72 h]; Electrical Technician [144 h] → Price [54051.9 SAR]; Unskilled Labor [72 h]; Electrical Technician [144 h] |
| CO-UB-PS-310 | Sockets and switches for pump house | 2026-10-26 → 2026-12-31 (+66d) | 2026-11-02 → 2027-01-04 (+63d) | 7d → 3d | 5.25d → 0.04d |  | resources Price [54322.1 SAR]; Unskilled Labor [56 h]; Electrical Technician [112 h] → Price [81077.8 SAR]; Unskilled Labor [56 h]; Electrical Technician [112 h] |
| CO-UB-PS-330 | Installation for Distribution boards for pump house | 2026-11-03 → 2027-01-04 (+62d) | 2026-11-16 → 2027-01-13 (+58d) | 12d → 8d | 7.25d → 0.04d |  | resources Price [90536.9 SAR]; Unskilled Labor [96 h]; Electrical Technician [192 h] → Price [135130 SAR]; Unskilled Labor [96 h]; Electrical Technician [192 h] |
| CO-UB-PS-370 | Executing Earthing and bonding for the entire system | 2026-11-17 → 2027-01-13 (+57d) | 2026-12-01 → 2027-01-23 (+53d) | 13d → 8d | 7.25d → 0.04d | CO-UB-PS-330 → CO-UB-PS-330, CO-MV-TF-220 | resources Price [90536.9 SAR]; Unskilled Labor [104 h]; Electrical Technician [208 h] → Price [135130 SAR]; Unskilled Labor [104 h]; Electrical Technician [208 h] |
| 4 | **Mechanical work** | 2026-11-03 → 2027-01-04 (+62d) | 2026-12-20 → 2027-01-28 (+39d) |  |  |  |  |
| CO-UB-PS-340 | Executing HVAC System for Pump station building | 2026-11-03 → 2027-01-04 (+62d) | 2026-11-18 → 2027-01-20 (+63d) |  | 18.25d → 2.04d |  | resources Price [108644 SAR]; Unskilled Labor [112 h]; Electrical Technician [224 h] → Price [162156 SAR]; Unskilled Labor [112 h]; Electrical Technician [224 h] |
| CO-UB-PS-350 | Executing Fire Alarm System for Pump station building | 2026-11-03 → 2027-01-04 (+62d) | 2026-11-12 → 2027-01-10 (+59d) | 9d → 5d | 5.25d → 1.04d |  | resources Price [217288 SAR]; Unskilled Labor [72 h]; Electrical Technician [144 h] → Price [324311 SAR]; Unskilled Labor [72 h]; Electrical Technician [144 h] |
| CO-UB-PS-360 | Executing Fire fighting institution works(piping and wire installation) for Pump station building | 2026-11-14 → 2027-01-10 (+57d) | 2026-11-23 → 2027-01-16 (+54d) | 9d → 5d | 5.25d → 1.04d |  | resources Price [271611 SAR]; Unskilled Labor [72 h]; Electrical Technician [144 h] → Price [405389 SAR]; Unskilled Labor [72 h]; Electrical Technician [144 h] |
| CO-UB-PS-380 | Executing Fire fighting finishing works for Pump station building | 2026-11-24 → 2027-01-16 (+53d) | 2026-12-03 → 2027-01-21 (+49d) | 9d → 5d | 5.25d → 1.04d |  | resources Price [108644 SAR]; Unskilled Labor [72 h]; Electrical Technician [144 h] → Price [162156 SAR]; Unskilled Labor [72 h]; Electrical Technician [144 h] |
| CO-UB-PS-390 | Installation of pumps | 2026-12-05 → 2027-01-23 (+49d) | 2026-12-20 → 2027-01-28 (+39d) | 14d → 5d | 5.25d → 0.04d |  | resources Price [380255 SAR]; Unskilled Labor [112 h]; Electrical Technician [224 h] → Price [567545 SAR]; Unskilled Labor [112 h]; Electrical Technician [224 h] |
| 3 | **Lift Station** | 2026-07-04 → 2026-09-10 (+68d) | 2026-12-22 → 2027-01-21 (+30d) |  |  |  |  |
| 1 | **Civil work** | 2026-07-04 → 2026-09-10 (+68d) | 2026-10-01 → 2026-11-28 (+58d) |  |  |  |  |
| 1 | **Sup Structure** | 2026-07-04 → 2026-09-10 (+68d) | 2026-08-17 → 2026-10-14 (+58d) |  |  |  |  |
| CO-UB-LS-220 | Excavation Work for for Lift Station | 2026-07-04 → 2026-09-10 (+68d) | 2026-07-14 → 2026-09-16 (+64d) | 9d → 6d | 3.25d → 6d |  | resources Price; Skilled Labor [72 h]; Unskilled Labor [144 h]; Excavator [72 h] → Price; Unskilled Labor [144 h]; Excavator [72 h]; Skilled Labor [72 h] |
| CO-UB-LS-230 | pouring P.C Conceret for Lift Station | 2026-07-14 → 2026-09-17 (+65d) | 2026-07-20 → 2026-09-22 (+64d) |  | 3.25d → 6d |  | resources Price [28167 SAR]; Unskilled Labor [40 h]; Mason [40 h] → Price [42040.3 SAR]; Unskilled Labor [40 h]; Mason [40 h] |
| CO-UB-LS-240 | Formwork for Foundation for Lift Station | 2026-07-20 → 2026-09-24 (+66d) | 2026-07-28 → 2026-09-29 (+63d) | 7d → 5d | 3.25d → 6d |  | resources Price [39433.8 SAR]; Unskilled Labor [56 h]; Carpenter [112 h] → Price [58856.5 SAR]; Unskilled Labor [56 h]; Carpenter [112 h] |
| CO-UB-LS-250 | Steel fixing for Foundation for Lift Station | 2026-07-28 → 2026-09-30 (+64d) | 2026-08-06 → 2026-10-06 (+61d) | 8d → 6d | 3.25d → 6d |  | resources Price [28167 SAR]; Unskilled Labor [64 h]; Steel Fixer [192 h] → Price [42040.3 SAR]; Unskilled Labor [64 h]; Steel Fixer [192 h] |
| CO-UB-LS-260 | pouring for Foundation for Lift Station | 2026-08-06 → 2026-10-07 (+62d) | 2026-08-08 → 2026-10-07 (+60d) |  | 3.25d → 6d |  | resources Price [33800.4 SAR]; Unskilled Labor [8 h]; Mason [8 h] → Price [50448.4 SAR]; Unskilled Labor [8 h]; Mason [8 h] |
| CO-UB-LS-270 | curing and deshuttering formwork Lift Station | 2026-08-08 → 2026-10-08 (+61d) | 2026-08-10 → 2026-10-10 (+61d) |  | 3.25d → 6d |  | resources Price [5633.41 SAR]; Unskilled Labor [48 h]; Carpenter [32 h] → Price [8408.07 SAR]; Unskilled Labor [48 h]; Carpenter [32 h] |
| CO-UB-LS-280 | Backfilling and compaction work for pump station | 2026-08-10 → 2026-10-11 (+62d) | 2026-08-17 → 2026-10-14 (+58d) | 6d → 4d | 3.25d → 6d |  | resources Price [56334.1 SAR]; Skilled Labor [48 h]; Unskilled Labor [96 h]; Excavator [48 h] → Price [84080.7 SAR]; Unskilled Labor [96 h]; Excavator [48 h]; Skilled Labor [48 h] |
| 2 | **Super structure** | 2026-08-17 → 2026-10-15 (+59d) | 2026-10-01 → 2026-11-28 (+58d) |  |  |  |  |
| CO-UB-LS-290 | Formwork for Wall and columns for Lift Station | 2026-08-17 → 2026-10-15 (+59d) | 2026-08-25 → 2026-10-22 (+58d) |  | 3.25d → 6d |  | resources Price [56334.1 SAR]; Unskilled Labor [168 h]; Carpenter [112 h] → Price [84080.7 SAR]; Unskilled Labor [168 h]; Carpenter [112 h] |
| CO-UB-LS-300 | Steel fixing for Wall columns | 2026-08-25 → 2026-10-24 (+60d) | 2026-09-05 → 2026-11-02 (+58d) |  | 3.25d → 6d |  | resources Price [56334.1 SAR]; Unskilled Labor [72 h]; Steel Fixer [216 h] → Price [84080.7 SAR]; Unskilled Labor [72 h]; Steel Fixer [216 h] |
| CO-UB-LS-310 | pouring for Wall columns | 2026-09-05 → 2026-11-03 (+59d) | 2026-09-06 → 2026-11-03 (+58d) |  | 3.25d → 6d |  | resources Price [33800.4 SAR]; Unskilled Labor [8 h]; Mason [8 h] → Price [50448.4 SAR]; Unskilled Labor [8 h]; Mason [8 h] |
| CO-UB-LS-320 | curing and deshuttering formwork for Wall columns | 2026-09-06 → 2026-11-04 (+59d) | 2026-09-08 → 2026-11-05 (+58d) |  | 3.25d → 6d |  | resources Price [5633.41 SAR]; Unskilled Labor [48 h]; Carpenter [32 h] → Price [8408.07 SAR]; Unskilled Labor [48 h]; Carpenter [32 h] |
| CO-UB-LS-330 | Waterproofing for Walls columns | 2026-09-08 → 2026-11-07 (+60d) | 2026-09-13 → 2026-11-10 (+58d) |  | 3.25d → 6d |  | resources Price [56334.1 SAR]; Unskilled Labor [32 h]; Mason [32 h] → Price [84080.7 SAR]; Unskilled Labor [32 h]; Mason [32 h] |
| CO-UB-LS-340 | Formwork for pump roof | 2026-09-13 → 2026-11-11 (+59d) | 2026-09-19 → 2026-11-16 (+58d) |  | 3.25d → 6d |  | resources Price [56334.1 SAR]; Unskilled Labor [120 h]; Carpenter [80 h] → Price [84080.7 SAR]; Unskilled Labor [120 h]; Carpenter [80 h] |
| CO-UB-LS-350 | Steel fixing for pump roof | 2026-09-19 → 2026-11-17 (+59d) | 2026-09-27 → 2026-11-23 (+57d) |  | 3.25d → 6d |  | resources Price [56334.1 SAR]; Unskilled Labor [48 h]; Steel Fixer [144 h] → Price [84080.7 SAR]; Unskilled Labor [48 h]; Steel Fixer [144 h] |
| CO-UB-LS-360 | pouring for pump roof | 2026-09-27 → 2026-11-24 (+58d) | 2026-09-28 → 2026-11-24 (+57d) |  | 3.25d → 6d |  | resources Price [45067.2 SAR]; Unskilled Labor [8 h]; Mason [8 h] → Price [67264.5 SAR]; Unskilled Labor [8 h]; Mason [8 h] |
| CO-UB-LS-370 | curing and deshuttering formwork for pump roof | 2026-09-28 → 2026-11-25 (+58d) | 2026-10-01 → 2026-11-28 (+58d) |  | 3.25d → 6d |  | resources Price [5633.41 SAR]; Unskilled Labor [72 h]; Carpenter [48 h] → Price [8408.07 SAR]; Unskilled Labor [72 h]; Carpenter [48 h] |
| 2 | **Architectural work** | 2026-10-01 → 2026-11-29 (+59d) | 2026-11-01 → 2026-12-15 (+44d) |  |  |  |  |
| CO-UB-LS-380 | Executing Masonry Works for Pump station building | 2026-10-01 → 2026-11-29 (+59d) | 2026-10-15 → 2026-12-06 (+52d) | 12d → 7d | 3.25d → 6d |  | resources Price [239420 SAR]; Unskilled Labor [192 h]; Mason [192 h] → Price [357343 SAR]; Unskilled Labor [192 h]; Mason [192 h] |
| CO-UB-LS-390 | Executing Plastering Works for Pump station building | 2026-10-15 → 2026-12-07 (+53d) | 2026-11-01 → 2026-12-15 (+44d) | 14d → 8d | 3.25d → 6d |  | resources Price [239420 SAR]; Unskilled Labor [112 h]; Mason [112 h] → Price [357343 SAR]; Unskilled Labor [112 h]; Mason [112 h] |
| 3 | **Electrical work** | 2026-11-01 → 2026-12-16 (+45d) | 2026-12-22 → 2027-01-21 (+30d) |  |  |  |  |
| CO-UB-LS-400 | Lighting system for pump house | 2026-11-01 → 2026-12-16 (+45d) | 2026-11-14 → 2026-12-24 (+40d) | 11d → 8d | 3.25d → 6d |  | resources Price [98584.6 SAR]; Unskilled Labor [88 h]; Electrical Technician [176 h] → Price [147141 SAR]; Unskilled Labor [88 h]; Electrical Technician [176 h] |
| CO-UB-LS-420 | Wiring connection for pump house | 2026-11-14 → 2026-12-26 (+42d) | 2026-11-24 → 2026-12-31 (+37d) | 9d → 6d | 3.25d → 6d |  | resources Price [56334.1 SAR]; Unskilled Labor [72 h]; Electrical Technician [144 h] → Price [84080.7 SAR]; Unskilled Labor [72 h]; Electrical Technician [144 h] |

| ID | Task | Start | Finish | Duration | Total float | Other |
| --- | --- | --- | --- | --- | --- | --- |
| CO-UB-LS-440 | Sockets and switches for pump house | 2026-11-24 → 2027-01-02 (+39d) | 2026-12-03 → 2027-01-07 (+35d) | 8d → 6d | 3.25d → 6d | resources Price [28167 SAR]; Unskilled Labor [64 h]; Electrical Technician [128 h] → Price [42040.3 SAR]; Unskilled Labor [64 h]; Electrical Technician [128 h] |
| CO-UB-LS-460 | Installation for Distribution boards for pump house | 2026-12-03 → 2027-01-09 (+37d) | 2026-12-14 → 2027-01-14 (+31d) | 9d → 6d | 3.25d → 6d | resources Price [70417.6 SAR]; Unskilled Labor [72 h]; Electrical Technician [144 h] → Price [105101 SAR]; Unskilled Labor [72 h]; Electrical Technician [144 h] |
| CO-UB-LS-480 | Executing Earthing and bonding for the entire system | 2026-12-14 → 2027-01-16 (+33d) | 2026-12-22 → 2027-01-21 (+30d) | 7.75d → 6d | 3.25d → 6d | resources Price [28167 SAR]; Unskilled Labor [64 h]; Electrical Technician [128 h] → Price [42040.3 SAR]; Unskilled Labor [64 h]; Electrical Technician [128 h] |
| 4 | **Mechanical work** | 2026-11-01 → 2026-12-16 (+45d) | 2026-12-08 → 2027-01-19 (+42d) |  |  |  |
| CO-UB-LS-410 | Internal pipe installation | 2026-11-01 → 2026-12-16 (+45d) | 2026-11-10 → 2026-12-24 (+44d) |  | 16d → 8d | resources Price [140835 SAR]; Unskilled Labor [64 h]; Plumber [64 h] → Price [210202 SAR]; Unskilled Labor [64 h]; Plumber [64 h] |
| CO-UB-LS-430 | Guide rails & lifting chains installation | 2026-11-10 → 2026-12-26 (+46d) | 2026-11-18 → 2027-01-02 (+45d) |  | 16d → 8d | resources Price [112668 SAR]; Unskilled Labor [56 h]; Plumber [56 h] → Price [168161 SAR]; Unskilled Labor [56 h]; Plumber [56 h] |
| CO-UB-LS-450 | ExeValve installation | 2026-11-18 → 2027-01-03 (+46d) | 2026-11-29 → 2027-01-10 (+42d) | 9d → 7d | 16d → 8d | resources Price [140835 SAR]; Unskilled Labor [72 h]; Plumber [72 h] → Price [210202 SAR]; Unskilled Labor [72 h]; Plumber [72 h] |
| CO-UB-LS-470 | Installation of pumps | 2026-11-29 → 2027-01-11 (+43d) | 2026-12-08 → 2027-01-19 (+42d) |  | 16d → 8d | resources Price [169002 SAR]; Unskilled Labor [64 h]; Plumber [64 h] → Price [252242 SAR]; Unskilled Labor [64 h]; Plumber [64 h] |
| 5 | **Potable Water Tank** | 2026-06-06 → 2026-08-24 (+79d) | 2026-09-12 → 2026-11-09 (+58d) |  |  |  |
| 1 | **Eearth Work** | 2026-06-06 → 2026-08-24 (+79d) | 2026-06-20 → 2026-09-06 (+78d) |  |  |  |
| CO-UB-PWT-100 | Excavation work for tank foundation tank formation level | 2026-06-06 → 2026-08-24 (+79d) | 2026-06-14 → 2026-08-31 (+78d) |  | 9.75d → 13d | resources Glass Fused Bolted (GLS) 1500 m3 Tank with associated accessories & manufacturer recommendation for the foundation; Skilled Labor [56 h]; Unskilled Labor [112 h]; Excavator [56 h] → Unskilled Labor [112 h]; Excavator [56 h]; Skilled Labor [56 h]; Glass Fused Bolted (GLS) 1500 m3 Tank with associated accessories & manufacturer recommendation for the foundation |
| CO-UB-PWT-110 | Soil replacement Up to tank formation level | 2026-06-14 → 2026-09-01 (+79d) | 2026-06-20 → 2026-09-06 (+78d) |  | 9.75d → 13d | resources Glass Fused Bolted (GLS) 1500 m3 Tank with associated accessories & manufacturer recommendation for the foundation [0.01]; Unskilled Labor [80 h]; Excavator [40 h]; Compactor [40 h] → Unskilled Labor [80 h]; Excavator [40 h]; Compactor [40 h]; Glass Fused Bolted (GLS) 1500 m3 Tank with associated accessories & manufacturer recommendation for the foundation [0.02] |
| 2 | **Structural Work** | 2026-06-20 → 2026-09-07 (+79d) | 2026-07-09 → 2026-09-24 (+77d) |  |  |  |
| CO-UB-PWT-120 | Plain Concrete works | 2026-06-20 → 2026-09-07 (+79d) | 2026-06-23 → 2026-09-09 (+78d) |  | 9.75d → 13d | resources Glass Fused Bolted (GLS) 1500 m3 Tank with associated accessories & manufacturer recommendation for the foundation [0.04]; Unskilled Labor [24 h]; Mason [24 h] → Unskilled Labor [24 h]; Mason [24 h]; Glass Fused Bolted (GLS) 1500 m3 Tank with associated accessories & manufacturer recommendation for the foundation [0.06] |
| CO-UB-PWT-130 | Form work for Tank Foundation | 2026-06-23 → 2026-09-10 (+79d) | 2026-06-30 → 2026-09-15 (+77d) | 6d → 5d | 9.75d → 13d | resources Glass Fused Bolted (GLS) 1500 m3 Tank with associated accessories & manufacturer recommendation for the foundation [0.07]; Unskilled Labor [144 h]; Carpenter [96 h] → Unskilled Labor [144 h]; Carpenter [96 h]; Glass Fused Bolted (GLS) 1500 m3 Tank with associated accessories & manufacturer recommendation for the foundation [0.1] |
| CO-UB-PWT-140 | Steel Reinforcement work for Tank Foundation | 2026-06-30 → 2026-09-16 (+78d) | 2026-07-08 → 2026-09-22 (+76d) | 7d → 6d | 9.75d → 13d | resources Glass Fused Bolted (GLS) 1500 m3 Tank with associated accessories & manufacturer recommendation for the foundation [0.06]; Unskilled Labor [56 h]; Steel Fixer [168 h] → Unskilled Labor [56 h]; Steel Fixer [168 h]; Glass Fused Bolted (GLS) 1500 m3 Tank with associated accessories & manufacturer recommendation for the foundation [0.09] |
| CO-UB-PWT-150 | Casting concrete for Tank Foundation | 2026-07-08 → 2026-09-24 (+78d) | 2026-07-09 → 2026-09-24 (+77d) |  | 9.75d → 13d | resources Glass Fused Bolted (GLS) 1500 m3 Tank with associated accessories & manufacturer recommendation for the foundation [0.02]; Unskilled Labor [8 h]; Mason [8 h] → Unskilled Labor [8 h]; Mason [8 h]; Glass Fused Bolted (GLS) 1500 m3 Tank with associated accessories & manufacturer recommendation for the foundation [0.03] |
| 3 | **Tank Shell Erection&Roof Installation** | 2026-07-09 → 2026-09-26 (+79d) | 2026-08-23 → 2026-10-20 (+58d) |  |  |  |
| CO-UB-PWT-160 | Bottom ring installation | 2026-07-09 → 2026-09-26 (+79d) | 2026-07-21 → 2026-10-01 (+72d) | 10d → 6d | 9.75d → 13d | resources Glass Fused Bolted (GLS) 1500 m3 Tank with associated accessories & manufacturer recommendation for the foundation [0.13]; Skilled Labor [160 h]; Unskilled Labor [80 h] → Unskilled Labor [80 h]; Skilled Labor [160 h]; Glass Fused Bolted (GLS) 1500 m3 Tank with associated accessories & manufacturer recommendation for the foundation [0.2] |
| CO-UB-PWT-170 | shell erection | 2026-07-21 → 2026-10-03 (+74d) | 2026-08-06 → 2026-10-11 (+66d) | 14d → 8d | 9.75d → 13d | resources Glass Fused Bolted (GLS) 1500 m3 Tank with associated accessories & manufacturer recommendation for the foundation [0.18]; Skilled Labor [224 h]; Unskilled Labor [112 h] → Unskilled Labor [112 h]; Skilled Labor [224 h]; Glass Fused Bolted (GLS) 1500 m3 Tank with associated accessories & manufacturer recommendation for the foundation [0.27] |
| CO-UB-PWT-180 | Aluminum dome / steel roof installation | 2026-08-06 → 2026-10-12 (+67d) | 2026-08-23 → 2026-10-20 (+58d) | 14d → 8d | 9.75d → 13d | resources Glass Fused Bolted (GLS) 1500 m3 Tank with associated accessories & manufacturer recommendation for the foundation [0.22]; Skilled Labor [224 h]; Unskilled Labor [112 h] → Unskilled Labor [112 h]; Skilled Labor [224 h]; Glass Fused Bolted (GLS) 1500 m3 Tank with associated accessories & manufacturer recommendation for the foundation [0.33] |
| 4 | **Mechanical Work&Accessories** | 2026-08-23 → 2026-10-21 (+59d) | 2026-09-12 → 2026-11-09 (+58d) |  |  |  |
| CO-UB-PWT-190 | Inlet / outlet piping connections | 2026-08-23 → 2026-10-21 (+59d) | 2026-08-30 → 2026-10-27 (+58d) |  | 9.75d → 13d | resources Glass Fused Bolted (GLS) 1500 m3 Tank with associated accessories & manufacturer recommendation for the foundation [0.13]; Unskilled Labor [48 h]; Plumber [48 h] → Unskilled Labor [48 h]; Plumber [48 h]; Glass Fused Bolted (GLS) 1500 m3 Tank with associated accessories & manufacturer recommendation for the foundation [0.2] |
| CO-UB-PWT-200 | installation Valves | 2026-08-30 → 2026-10-28 (+59d) | 2026-09-06 → 2026-11-03 (+58d) |  | 9.75d → 13d | resources Glass Fused Bolted (GLS) 1500 m3 Tank with associated accessories & manufacturer recommendation for the foundation [0.09]; Unskilled Labor [48 h]; Plumber [48 h] → Unskilled Labor [48 h]; Plumber [48 h]; Glass Fused Bolted (GLS) 1500 m3 Tank with associated accessories & manufacturer recommendation for the foundation [0.13] |
| CO-UB-PWT-210 | Ladders, platforms & handrails | 2026-09-06 → 2026-11-04 (+59d) | 2026-09-12 → 2026-11-09 (+58d) |  | 9.75d → 13d | resources Glass Fused Bolted (GLS) 1500 m3 Tank with associated accessories & manufacturer recommendation for the foundation [0.04]; Skilled Labor [80 h]; Unskilled Labor [40 h] → Unskilled Labor [40 h]; Skilled Labor [80 h]; Glass Fused Bolted (GLS) 1500 m3 Tank with associated accessories & manufacturer recommendation for the foundation [0.05] |
| 2 | **IrrigationTank** | 2026-09-12 → 2026-11-10 (+59d) | 2026-12-16 → 2027-01-11 (+26d) |  |  |  |
| 1 | **Eearth Work** | 2026-09-12 → 2026-11-10 (+59d) | 2026-09-27 → 2026-11-22 (+56d) |  |  |  |
| CO-UB-IRT-140 | Excavation work for tank foundation tank formation level | 2026-09-12 → 2026-11-10 (+59d) | 2026-09-20 → 2026-11-16 (+57d) | 7d → 6d | 9.75d → 13d | resources Skilled Labor [56 h]; Unskilled Labor [112 h]; Excavator [56 h] → Unskilled Labor [112 h]; Excavator [56 h]; Skilled Labor [56 h] |
| CO-UB-IRT-150 | Soil replacement Up to tank formation level | 2026-09-20 → 2026-11-17 (+58d) | 2026-09-27 → 2026-11-22 (+56d) |  | 9.75d → 13d | resources Glass Fused Bolted (GLS) 1500 m3 Tank with associated accessories & manufacturer recommendation for the foundation [0.01]; Unskilled Labor [80 h]; Excavator [40 h]; Compactor [40 h] → Unskilled Labor [80 h]; Excavator [40 h]; Compactor [40 h]; Glass Fused Bolted (GLS) 1500 m3 Tank with associated accessories & manufacturer recommendation for the foundation [0.02] |
| 2 | **Structural Work** | 2026-09-27 → 2026-11-23 (+57d) | 2026-10-17 → 2026-12-09 (+53d) |  |  |  |
| CO-UB-IRT-160 | Plain Concrete works | 2026-09-27 → 2026-11-23 (+57d) | 2026-09-30 → 2026-11-25 (+56d) |  | 9.75d → 13d | resources Glass Fused Bolted (GLS) 1500 m3 Tank with associated accessories & manufacturer recommendation for the foundation [0.04]; Unskilled Labor [24 h]; Mason [24 h] → Unskilled Labor [24 h]; Mason [24 h]; Glass Fused Bolted (GLS) 1500 m3 Tank with associated accessories & manufacturer recommendation for the foundation [0.06] |
| CO-UB-IRT-170 | Form work for Tank Foundation | 2026-09-30 → 2026-11-26 (+57d) | 2026-10-07 → 2026-12-02 (+56d) |  | 9.75d → 13d | resources Glass Fused Bolted (GLS) 1500 m3 Tank with associated accessories & manufacturer recommendation for the foundation [0.07]; Unskilled Labor [144 h]; Carpenter [96 h] → Unskilled Labor [144 h]; Carpenter [96 h]; Glass Fused Bolted (GLS) 1500 m3 Tank with associated accessories & manufacturer recommendation for the foundation [0.1] |
| CO-UB-IRT-180 | Steel Reinforcement work for Tank Foundation | 2026-10-07 → 2026-12-03 (+57d) | 2026-10-15 → 2026-12-08 (+54d) | 7d → 5d | 9.75d → 13d | resources Glass Fused Bolted (GLS) 1500 m3 Tank with associated accessories & manufacturer recommendation for the foundation [0.06]; Unskilled Labor [56 h]; Steel Fixer [168 h] → Unskilled Labor [56 h]; Steel Fixer [168 h]; Glass Fused Bolted (GLS) 1500 m3 Tank with associated accessories & manufacturer recommendation for the foundation [0.09] |
| CO-UB-IRT-190 | Casting concrete for Tank Foundation | 2026-10-15 → 2026-12-09 (+55d) | 2026-10-17 → 2026-12-09 (+53d) |  | 9.75d → 13d | resources Glass Fused Bolted (GLS) 1500 m3 Tank with associated accessories & manufacturer recommendation for the foundation [0.02]; Unskilled Labor [8 h]; Mason [8 h] → Unskilled Labor [8 h]; Mason [8 h]; Glass Fused Bolted (GLS) 1500 m3 Tank with associated accessories & manufacturer recommendation for the foundation [0.03] |
| 3 | **Tank Shell Erection&Roof Installation** | 2026-10-17 → 2026-12-10 (+54d) | 2026-11-30 → 2026-12-30 (+30d) |  |  |  |
| CO-UB-IRT-200 | Bottom ring installation | 2026-10-17 → 2026-12-10 (+54d) | 2026-10-28 → 2026-12-16 (+49d) | 10d → 6d | 9.75d → 13d | resources Glass Fused Bolted (GLS) 1500 m3 Tank with associated accessories & manufacturer recommendation for the foundation [0.13]; Skilled Labor [160 h]; Unskilled Labor [80 h] → Unskilled Labor [80 h]; Skilled Labor [160 h]; Glass Fused Bolted (GLS) 1500 m3 Tank with associated accessories & manufacturer recommendation for the foundation [0.2] |
| CO-UB-IRT-210 | shell erection | 2026-10-28 → 2026-12-17 (+50d) | 2026-11-14 → 2026-12-23 (+39d) | 14d → 6d | 9.75d → 13d | resources Glass Fused Bolted (GLS) 1500 m3 Tank with associated accessories & manufacturer recommendation for the foundation [0.18]; Skilled Labor [224 h]; Unskilled Labor [112 h] → Unskilled Labor [112 h]; Skilled Labor [224 h]; Glass Fused Bolted (GLS) 1500 m3 Tank with associated accessories & manufacturer recommendation for the foundation [0.27] |
| CO-UB-IRT-220 | Aluminum dome / steel roof installation | 2026-11-14 → 2026-12-24 (+40d) | 2026-11-30 → 2026-12-30 (+30d) | 14d → 6d | 9.75d → 13d | resources Glass Fused Bolted (GLS) 1500 m3 Tank with associated accessories & manufacturer recommendation for the foundation [0.22]; Skilled Labor [224 h]; Unskilled Labor [112 h] → Unskilled Labor [112 h]; Skilled Labor [224 h]; Glass Fused Bolted (GLS) 1500 m3 Tank with associated accessories & manufacturer recommendation for the foundation [0.33] |
| 4 | **Mechanical Work&Accessories** | 2026-11-30 → 2026-12-31 (+31d) | 2026-12-16 → 2027-01-11 (+26d) |  |  |  |
| CO-UB-IRT-230 | Inlet / outlet piping connections | 2026-11-30 → 2026-12-31 (+31d) | 2026-12-07 → 2027-01-04 (+28d) | 6d → 4d | 9.75d → 13d | resources Glass Fused Bolted (GLS) 1500 m3 Tank with associated accessories & manufacturer recommendation for the foundation [0.13]; Unskilled Labor [48 h]; Plumber [48 h] → Unskilled Labor [48 h]; Plumber [48 h]; Glass Fused Bolted (GLS) 1500 m3 Tank with associated accessories & manufacturer recommendation for the foundation [0.2] |
| CO-UB-IRT-240 | installation Valves | 2026-12-07 → 2027-01-05 (+29d) | 2026-12-14 → 2027-01-09 (+26d) | 6d → 4d | 9.75d → 13d | resources Glass Fused Bolted (GLS) 1500 m3 Tank with associated accessories & manufacturer recommendation for the foundation [0.09]; Unskilled Labor [48 h]; Plumber [48 h] → Unskilled Labor [48 h]; Plumber [48 h]; Glass Fused Bolted (GLS) 1500 m3 Tank with associated accessories & manufacturer recommendation for the foundation [0.13] |
| CO-UB-IRT-250 | Ladders, platforms & handrails | 2026-12-14 → 2027-01-10 (+27d) | 2026-12-16 → 2027-01-11 (+26d) |  | 9.75d → 13d | resources Glass Fused Bolted (GLS) 1500 m3 Tank with associated accessories & manufacturer recommendation for the foundation [0.04]; Skilled Labor [32 h]; Unskilled Labor [16 h] → Unskilled Labor [16 h]; Skilled Labor [32 h]; Glass Fused Bolted (GLS) 1500 m3 Tank with associated accessories & manufacturer recommendation for the foundation [0.05] |
| 1 | **Control Room** | 2026-07-14 → 2026-09-17 (+65d) | 2026-12-23 → 2027-01-21 (+29d) |  |  |  |
| 5 | **Civil Work** | 2026-07-14 → 2026-09-17 (+65d) | 2026-09-16 → 2026-11-05 (+50d) |  |  |  |
| CO-UB-CR-100 | Excavation Work For Control Room Foundation | 2026-07-14 → 2026-09-17 (+65d) | 2026-07-22 → 2026-09-26 (+66d) |  | 19.75d → 24d | resources Price; Skilled Labor [56 h]; Unskilled Labor [112 h]; Excavator [56 h] → Price; Unskilled Labor [112 h]; Excavator [56 h]; Skilled Labor [56 h] |
| CO-UB-CR-110 | Pouring for Plain Concrete | 2026-07-22 → 2026-09-27 (+67d) | 2026-07-28 → 2026-10-01 (+65d) |  | 19.75d → 24d | resources Price [48286.3 SAR]; Unskilled Labor [40 h]; Mason [40 h] → Price [72069.1 SAR]; Unskilled Labor [40 h]; Mason [40 h] |
| CO-UB-CR-120 | Pouring R.C Footing For Control Room | 2026-07-28 → 2026-10-03 (+67d) | 2026-08-22 → 2026-10-18 (+57d) | 21d → 14d | 19.75d → 24d | resources Price [120716 SAR]; Unskilled Labor [168 h]; Mason [168 h] → Price [180173 SAR]; Unskilled Labor [168 h]; Mason [168 h] |
| CO-UB-CR-130 | Pouring R.C Columns For Control Room | 2026-08-22 → 2026-10-19 (+58d) | 2026-09-05 → 2026-10-27 (+52d) | 12d → 8d | 19.75d → 24d | resources Price [144859 SAR]; Unskilled Labor [96 h]; Mason [96 h] → Price [216207 SAR]; Unskilled Labor [96 h]; Mason [96 h] |
| CO-UB-CR-140 | Pouring Beams and Slab For Control Room | 2026-09-05 → 2026-10-28 (+53d) | 2026-09-16 → 2026-11-05 (+50d) | 10d → 8d | 19.75d → 24d | resources Price [169002 SAR]; Unskilled Labor [80 h]; Mason [80 h] → Price [252242 SAR]; Unskilled Labor [80 h]; Mason [80 h] |
| 6 | **Finishing Work** | 2026-09-16 → 2026-11-07 (+52d) | 2026-12-23 → 2027-01-21 (+29d) |  |  |  |
| 1 | **Architictural work** | 2026-09-16 → 2026-11-07 (+52d) | 2026-11-23 → 2026-12-22 (+29d) |  |  |  |
| CO-UB-CR-150 | Brick Work For Control Room | 2026-09-16 → 2026-11-07 (+52d) | 2026-10-11 → 2026-11-16 (+36d) | 20d → 9d | 19.75d → 24d | resources Price [64381.8 SAR]; Unskilled Labor [320 h]; Mason [320 h] → Price [96092.2 SAR]; Unskilled Labor [320 h]; Mason [320 h] |
| CO-UB-CR-160 | Thermal & Moisture Protection Work for Control Room | 2026-10-11 → 2026-11-17 (+37d) | 2026-10-19 → 2026-11-24 (+36d) |  | 19.75d → 24d | resources Price [64381.8 SAR]; Unskilled Labor [56 h]; Mason [56 h] → Price [96092.2 SAR]; Unskilled Labor [56 h]; Mason [56 h] |
| CO-UB-CR-200 | Install For Curtian Wall and Windows and Doors | 2026-10-19 → 2026-11-25 (+37d) | 2026-10-31 → 2026-12-03 (+33d) | 10d → 8d | 19.75d → 24d | resources Price [64381.8 SAR]; Skilled Labor [160 h]; Unskilled Labor [80 h] → Price [96092.2 SAR]; Unskilled Labor [80 h]; Skilled Labor [160 h] |
| CO-UB-CR-240 | External Finshing Work (Walls and Floor) | 2026-10-31 → 2026-12-05 (+35d) | 2026-11-11 → 2026-12-13 (+32d) | 10d → 8d | 19.75d → 24d | resources Price [64381.8 SAR]; Skilled Labor [160 h]; Unskilled Labor [80 h] → Price [96092.2 SAR]; Unskilled Labor [80 h]; Skilled Labor [160 h] |
| CO-UB-CR-250 | Internal Finshing Work (Walls,Floor and Ceiling) | 2026-11-11 → 2026-12-14 (+33d) | 2026-11-23 → 2026-12-22 (+29d) | 10d → 8d | 19.75d → 24d | resources Price [64381.8 SAR]; Skilled Labor [160 h]; Unskilled Labor [80 h] → Price [96092.2 SAR]; Unskilled Labor [80 h]; Skilled Labor [160 h] |
| 3 | **Mechanical Work** | 2026-10-11 → 2026-11-17 (+37d) | 2026-12-05 → 2027-01-03 (+29d) |  |  |  |
| 3 | **HVAC System** | 2026-10-11 → 2026-11-17 (+37d) | 2026-12-05 → 2027-01-03 (+29d) |  |  |  |
| CO-UB-CR-170 | Install of Refrigerant Piping ( fabricated metal ducts with flanges complete with supports, vanes, dampers ) | 2026-10-11 → 2026-11-17 (+37d) | 2026-10-15 → 2026-11-21 (+37d) |  | 38.75d → 37d | resources Price [64381.8 SAR]; Unskilled Labor [32 h]; Electrical Technician [64 h] → Price [96092.2 SAR]; Unskilled Labor [32 h]; Electrical Technician [64 h] |
| CO-UB-CR-260 | Install of Mini split actual capacity 2 Ton and Ducted split actual capacity 4 Ton | 2026-11-23 → 2026-12-23 (+30d) | 2026-12-01 → 2026-12-30 (+29d) |  | 30.75d → 35d | resources Price [64381.8 SAR]; Unskilled Labor [56 h]; Electrical Technician [112 h] → Price [96092.2 SAR]; Unskilled Labor [56 h]; Electrical Technician [112 h] |
| CO-UB-CR-310 | Install of Air Grills 150mm x150mm and Air Diffuser 600mm x 600mm | 2026-12-01 → 2026-12-31 (+30d) | 2026-12-05 → 2027-01-03 (+29d) |  | 30.75d → 35d | resources Price [64381.8 SAR]; Unskilled Labor [24 h]; Electrical Technician [48 h] → Price [96092.2 SAR]; Unskilled Labor [24 h]; Electrical Technician [48 h] |
| 4 | **Fire Fitting System** | 2026-10-15 → 2026-11-22 (+38d) | 2026-11-26 → 2026-12-26 (+30d) |  |  |  |
| CO-UB-CR-180 | Installation & Testing of 2 hours Fire rated system for closing the openings between rooms with help of Rock wool | 2026-10-15 → 2026-11-22 (+38d) | 2026-10-20 → 2026-11-25 (+36d) |  | 38.75d → 37d | resources Price [64381.8 SAR]; Unskilled Labor [32 h]; Electrical Technician [64 h] → Price [96092.2 SAR]; Unskilled Labor [32 h]; Electrical Technician [64 h] |
| CO-UB-CR-270 | Install Fire Extinguishers | 2026-11-23 → 2026-12-23 (+30d) | 2026-11-26 → 2026-12-26 (+30d) |  | 37.75d → 42d | resources Price [64381.8 SAR]; Unskilled Labor [24 h]; Electrical Technician [48 h] → Price [96092.2 SAR]; Unskilled Labor [24 h]; Electrical Technician [48 h] |
| 4 | **Electrical Work** | 2026-10-20 → 2026-11-26 (+37d) | 2026-12-17 → 2027-01-16 (+30d) |  |  |  |
| 1 | **LV Power** | 2026-11-23 → 2026-12-23 (+30d) | 2026-12-10 → 2027-01-09 (+30d) |  |  |  |
| CO-UB-CR-190 | Install of Distribution board For Control Room | 2026-11-23 → 2026-12-23 (+30d) | 2026-11-29 → 2026-12-28 (+29d) |  | 25.75d → 30d | resources Price [29264.4 SAR]; Unskilled Labor [40 h]; Electrical Technician [80 h] → Price [43678.3 SAR]; Unskilled Labor [40 h]; Electrical Technician [80 h] |
| CO-UB-CR-220 | Install of Earting Cable for Control Room | 2026-11-29 → 2026-12-29 (+30d) | 2026-12-05 → 2027-01-03 (+29d) |  | 25.75d → 30d | resources Price [29264.4 SAR]; Unskilled Labor [40 h]; Electrical Technician [80 h] → Price [43678.3 SAR]; Unskilled Labor [40 h]; Electrical Technician [80 h] |
| CO-UB-CR-280 | Install of Socket outlet and LED Lighting | 2026-12-05 → 2027-01-04 (+30d) | 2026-12-10 → 2027-01-09 (+30d) |  | 25.75d → 30d | resources Price [29264.4 SAR]; Unskilled Labor [40 h]; Electrical Technician [80 h] → Price [43678.3 SAR]; Unskilled Labor [40 h]; Electrical Technician [80 h] |
| 3 | **Fire Detection And Alarm System** | 2026-10-20 → 2026-11-26 (+37d) | 2026-12-17 → 2027-01-16 (+30d) |  |  |  |

| ID | Task | Start | Finish | Duration | Total float | Predecessors | Other |
| --- | --- | --- | --- | --- | --- | --- | --- |
| CO-UB-CR-210 | Install of 2C x 1.5 Sqm FR Rated Armored - Cable For Loop Wiring | 2026-10-20 → 2026-11-26 (+37d) | 2026-10-26 → 2026-12-01 (+36d) |  | 38.75d → 37d |  | resources Price [29264.4 SAR]; Unskilled Labor [40 h]; Electrical Technician [80 h] → Price [43678.3 SAR]; Unskilled Labor [40 h]; Electrical Technician [80 h] |
| CO-UB-CR-230 | Install of Transmission Communication cable - Fiber Optics 12Core | 2026-10-26 → 2026-12-02 (+37d) | 2026-11-01 → 2026-12-07 (+36d) |  | 38.75d → 37d |  | resources Price [29264.4 SAR]; Unskilled Labor [40 h]; Electrical Technician [80 h] → Price [43678.3 SAR]; Unskilled Labor [40 h]; Electrical Technician [80 h] |
| CO-UB-CR-290 | Install of power supply system for fire alarm control panel | 2026-11-23 → 2026-12-23 (+30d) | 2026-11-29 → 2026-12-28 (+29d) |  | 19.75d → 24d |  | resources Price [29264.4 SAR]; Unskilled Labor [40 h]; Electrical Technician [80 h] → Price [43678.3 SAR]; Unskilled Labor [40 h]; Electrical Technician [80 h] |
| CO-UB-CR-300 | Install of Fire Alarm Control panel | 2026-11-29 → 2026-12-29 (+30d) | 2026-12-06 → 2027-01-04 (+29d) |  | 19.75d → 24d |  | resources Price [29264.4 SAR]; Unskilled Labor [48 h]; Electrical Technician [96 h] → Price [43678.3 SAR]; Unskilled Labor [48 h]; Electrical Technician [96 h] |
| CO-UB-CR-320 | Installation of the addressable manual call point with operation safety glass breaking | 2026-12-06 → 2027-01-05 (+30d) | 2026-12-09 → 2027-01-07 (+29d) |  | 19.75d → 24d |  | resources Price [29264.4 SAR]; Unskilled Labor [24 h]; Electrical Technician [48 h] → Price [43678.3 SAR]; Unskilled Labor [24 h]; Electrical Technician [48 h] |
| CO-UB-CR-330 | Install of the photoelectric heat & smoke detector | 2026-12-09 → 2027-01-09 (+31d) | 2026-12-13 → 2027-01-11 (+29d) |  | 19.75d → 24d |  | resources Price [29264.4 SAR]; Unskilled Labor [24 h]; Electrical Technician [48 h] → Price [43678.3 SAR]; Unskilled Labor [24 h]; Electrical Technician [48 h] |
| CO-UB-CR-340 | Install of Sounder With Beacon | 2026-12-09 → 2027-01-09 (+31d) | 2026-12-13 → 2027-01-11 (+29d) |  | 19.75d → 24d | CO-UB-CR-330 SS → CO-UB-CR-330 SS, CO-UB-CR-330 FF | resources Price [29264.4 SAR]; Unskilled Labor [24 h]; Electrical Technician [48 h] → Price [43678.3 SAR]; Unskilled Labor [24 h]; Electrical Technician [48 h] |
| CO-UB-CR-350 | Install of Addressable Control module | 2026-12-13 → 2027-01-12 (+30d) | 2026-12-17 → 2027-01-16 (+30d) |  | 19.75d → 24d |  | resources Price [29264.4 SAR]; Unskilled Labor [32 h]; Electrical Technician [64 h] → Price [43678.3 SAR]; Unskilled Labor [32 h]; Electrical Technician [64 h] |
| 2 | **Furnitures work** | 2026-12-17 → 2027-01-17 (+31d) | 2026-12-23 → 2027-01-21 (+29d) |  |  |  |  |
| CO-UB-CR-360 | Office Chairs,Tables and Stand | 2026-12-17 → 2027-01-17 (+31d) | 2026-12-23 → 2027-01-21 (+29d) |  | 19.75d → 24d |  | resources Price [160954 SAR]; Skilled Labor [80 h]; Unskilled Labor [40 h] → Price [240230 SAR]; Unskilled Labor [40 h]; Skilled Labor [80 h] |
| ML | **Softscape and Planting Works** | 2026-08-27 → 2026-11-07 (+72d) | 2026-10-22 → 2026-12-22 (+61d) |  |  |  |  |
| 1 | **Planting Beds Preparation** | 2026-08-27 → 2026-11-07 (+72d) | 2026-09-16 → 2026-12-01 (+76d) |  |  |  |  |
| CO-LS-PL-100 | Excavation of planting beds | 2026-08-27 → 2026-11-07 (+72d) | 2026-09-05 → 2026-11-15 (+71d) |  | 26d → 12.75d |  | resources Price [96790.5 SAR]; Skilled Labor [56 h]; Unskilled Labor [112 h]; Excavator [56 h] → Price [144463 SAR]; Unskilled Labor [112 h]; Excavator [56 h]; Skilled Labor [56 h] |
| CO-LS-PL-110 | Supply & placement of suitable topsoil | 2026-09-05 → 2026-11-15 (+71d) | 2026-09-10 → 2026-11-23 (+74d) | 5d → 7d | 26d → 12.75d |  | resources Price [290372 SAR]; Skilled Labor [80 h]; Unskilled Labor [40 h] → Price [433390 SAR]; Unskilled Labor [40 h]; Skilled Labor [80 h] |
| CO-LS-PL-120 | Soil improvement (fertilizer, compost, additives) | 2026-09-10 → 2026-11-23 (+74d) | 2026-09-16 → 2026-12-01 (+76d) | 5d → 7d | 26d → 12.75d |  | resources Price [290372 SAR]; Skilled Labor [80 h]; Unskilled Labor [40 h] → Price [433390 SAR]; Unskilled Labor [40 h]; Skilled Labor [80 h] |
| 2 | **Supports & Protection** | 2026-09-16 → 2026-12-01 (+76d) | 2026-09-29 → 2026-12-08 (+70d) |  |  |  |  |
| CO-LS-PL-130 | installation of plant supports / stakes | 2026-09-16 → 2026-12-01 (+76d) | 2026-09-22 → 2026-12-05 (+74d) | 5d → 3d | 26d → 12.75d |  | resources Price [290372 SAR]; Skilled Labor [80 h]; Unskilled Labor [40 h] → Price [433390 SAR]; Unskilled Labor [40 h]; Skilled Labor [80 h] |
| CO-LS-PL-140 | Ties and protection materials | 2026-09-22 → 2026-12-05 (+74d) | 2026-09-29 → 2026-12-08 (+70d) | 5d → 3d | 26d → 12.75d |  | resources Price [387162 SAR]; Skilled Labor [80 h]; Unskilled Labor [40 h] → Price [577854 SAR]; Unskilled Labor [40 h]; Skilled Labor [80 h] |
| 3 | **Plant Supply** | 2026-09-29 → 2026-12-08 (+70d) | 2026-10-05 → 2026-12-12 (+68d) |  |  |  |  |
| CO-LS-PL-150 | installation of trees | 2026-09-29 → 2026-12-08 (+70d) | 2026-10-05 → 2026-12-12 (+68d) | 5d → 3d | 26d → 12.75d |  | resources Price [580743 SAR]; Skilled Labor [80 h]; Unskilled Labor [40 h] → Price [866781 SAR]; Unskilled Labor [40 h]; Skilled Labor [80 h] |
| 4 | **Site Furnishings** | 2026-10-05 → 2026-12-12 (+68d) | 2026-10-22 → 2026-12-22 (+61d) |  |  |  |  |
| CO-LS-PL-160 | installation of Seating benches | 2026-10-05 → 2026-12-12 (+68d) | 2026-10-11 → 2026-12-15 (+65d) | 5d → 3d | 26d → 12.75d |  | resources Price [231434 SAR]; Skilled Labor [80 h]; Unskilled Labor [40 h] → Price [345424 SAR]; Unskilled Labor [40 h]; Skilled Labor [80 h] |
| CO-LS-PL-170 | tone boulders placement & fixing Works | 2026-10-11 → 2026-12-15 (+65d) | 2026-10-17 → 2026-12-19 (+63d) | 5d → 3d | 26d → 12.75d |  | was named tone boulders – placement & fixing Works; resources Price [231434 SAR]; Skilled Labor [80 h]; Unskilled Labor [40 h] → Price [345424 SAR]; Unskilled Labor [40 h]; Skilled Labor [80 h] |
| CO-LS-PL-180 | Gravel Works | 2026-10-17 → 2026-12-19 (+63d) | 2026-10-22 → 2026-12-22 (+61d) | 5d → 3d | 26d → 12.75d |  | resources Price [231434 SAR]; Skilled Labor [80 h]; Unskilled Labor [40 h] → Price [345424 SAR]; Unskilled Labor [40 h]; Skilled Labor [80 h] |
| 1 | **Fence and Gaurd Room** | 2026-04-21 → 2026-07-28 (+98d) | 2027-02-22 → 2027-02-23 (+1d) |  |  |  |  |
| 1 | **Gaurd Room Work** | 2026-06-29 → 2026-08-29 (+61d) | 2027-01-03 → 2027-01-20 (+17d) |  |  |  |  |
| 1 | **Civil Work** | 2026-06-29 → 2026-08-29 (+61d) | 2026-09-01 → 2026-10-15 (+44d) |  |  |  |  |
| A1000 | Excavation Work For Gaurd Room Foundation | 2026-06-29 → 2026-08-29 (+61d) | 2026-07-07 → 2026-09-05 (+60d) |  | 10.75d → 25d | MS-CF-MOB, ENG-SH-GR-A-190, PRO-GR-CV-1DL-60, PRO-GR-CV-DL-70 FF → MS-CF-MOB, ENG-SH-GR-A-190, PRO-GR-CV-1DL-60, PRO-GR-CV-DL-70 | resources Skilled Labor [56 h]; Unskilled Labor [112 h]; Excavator [56 h] → Unskilled Labor [112 h]; Excavator [56 h]; Skilled Labor [56 h] |
| A1010 | Pouring for Plain Concrete | 2026-07-07 → 2026-09-06 (+61d) | 2026-07-13 → 2026-09-09 (+58d) | 5d → 4d | 10.75d → 25d |  | resources 100 mm thickness lean concrete under the foundation [100]; Unskilled Labor [160 h]; Carpenter [80 h]; Steel Fixer [80 h] → Unskilled Labor [160 h]; Carpenter [80 h]; Steel Fixer [80 h]; 100 mm thickness lean concrete under the foundation [149.25] |
| A1020 | Pouring R.C Footing For Gaurd Room | 2026-07-13 → 2026-09-10 (+59d) | 2026-08-06 → 2026-09-22 (+47d) | 21d → 11d | 10.75d → 25d |  | resources Foundation [50]; Slab on Grade [20]; Walls; Unskilled Labor [672 h]; Carpenter [336 h]; Steel Fixer [336 h] → Unskilled Labor [672 h]; Carpenter [336 h]; Steel Fixer [336 h]; Foundation [74.63]; Slab on Grade [29.85]; Walls |
| A1030 | Pouring R.C Columns For Gaurd Room | 2026-08-06 → 2026-09-24 (+49d) | 2026-08-20 → 2026-10-05 (+46d) | 12d → 10d | 10.75d → 25d |  | resources Columns [7]; Unskilled Labor [384 h]; Carpenter [192 h]; Steel Fixer [192 h] → Unskilled Labor [384 h]; Carpenter [192 h]; Steel Fixer [192 h]; Columns [10.45] |
| A1040 | Pouring Beams and Slab For Gaurd Room | 2026-08-20 → 2026-10-06 (+47d) | 2026-09-01 → 2026-10-15 (+44d) | 10d → 9d | 10.75d → 25d |  | resources Beams [20]; Slabs [31]; Lightweight Concrete Roof insulation as per Architect's specification [155]; Unskilled Labor [320 h]; Carpenter [160 h]; Steel Fixer [160 h] → Unskilled Labor [320 h]; Carpenter [160 h]; Steel Fixer [160 h]; Beams [29.85]; Slabs [46.27]; Lightweight Concrete Roof insulation as per Architect's specification [231.34] |
| 2 | **Finishing Work** | 2026-09-01 → 2026-10-17 (+46d) | 2027-01-03 → 2027-01-20 (+17d) |  |  |  |  |
| 1 | **Architictural work** | 2026-09-01 → 2026-10-17 (+46d) | 2026-11-15 → 2026-12-08 (+23d) |  |  |  |  |
| A1050 | Brick Work For Gaurd Room | 2026-09-01 → 2026-10-17 (+46d) | 2026-09-26 → 2026-10-26 (+30d) | 20d → 9d | 10.75d → 25d |  | resources Common brickwork. 300mm thick; vertical straight wall complete with accessories.; Insulated brickwork. with expanded polystyrene 200mm thick; vertical straight wall complete with accessories . [102]; Common brickwork. 150mm thick; vertical straight wall complete with accessories. [180]; Skilled Labor [320 h]; Unskilled Labor [160 h] → Unskilled Labor [160 h]; Skilled Labor [320 h]; Common brickwork. 300mm thick; vertical straight wall complete with accessories.; Insulated brickwork. with expanded polystyrene 200mm thick; vertical straight wall complete with accessories . [152.24]; Common brickwork. 150mm thick; vertical straight wall complete with accessories. [268.66] |
| A1060 | Thermal & Moisture Protection Work for Gaurd Room | 2026-09-26 → 2026-10-27 (+31d) | 2026-10-04 → 2026-11-03 (+30d) |  | 16.75d → 31d |  | resources 2 perpendicular layers of cold bitumen coats [155]; 2 layer of 4mm HDPE membrane, 2 perpendicular layers cold bitumen coats [155]; 1 layer EPOXY Paint 300 micron [155]; Membrane fully bonded to prime deck and upstand [155]; Geotextile Filter membrane uv resistance [155]; 85mm thick thermal insulation [155]; 1.5mm thick epdm waterproofing membrane [155]; Skilled Labor [112 h]; Unskilled Labor [56 h] → Unskilled Labor [56 h]; Skilled Labor [112 h]; 2 perpendicular layers of cold bitumen coats [231.34]; 2 layer of 4mm HDPE membrane, 2 perpendicular layers cold bitumen coats [231.34]; 1 layer EPOXY Paint 300 micron [231.34]; Membrane fully bonded to prime deck and upstand [231.34]; Geotextile Filter membrane uv resistance [231.34]; 85mm thick thermal insulation [231.34]; 1.5mm thick epdm waterproofing membrane [231.34] |
| A1070 | Install For Curtian Wall and Windows and Doors | 2026-10-11 → 2026-11-11 (+31d) | 2026-10-22 → 2026-11-19 (+28d) | 10d → 8d | 10.75d → 25d |  | resources CW01 - 4500 mm width x 3700 mm height [1]; CW02 - 4500 mm width x 3700 mm height [1]; CW03 - 4500 mm width x 3700 mm height [1]; CW04 - 4500 mm width x 3700 mm height [1]; CW05 - 7500 mm width x 4250 mm height [1]; CW06 - 7500 mm width x 4250 mm height [1]; W01 - 1000 mm width x 2000 mm height [1]; W02 - 2000 mm width x 2000 mm height [2]; W03 - 2000 mm width x 1000 mm height [3]; D2 - 900 mm x 2200 mm height temper door [7]; D3 - 950 mm x 2000 mm height temper door [2]; Skilled Labor [160 h]; Unskilled Labor [80 h] → Unskilled Labor [80 h]; Skilled Labor [160 h]; CW01 - 4500 mm width x 3700 mm height [1.49]; CW02 - 4500 mm width x 3700 mm height [1.49]; CW03 - 4500 mm width x 3700 mm height [1.49]; CW04 - 4500 mm width x 3700 mm height [1.49]; CW05 - 7500 mm width x 4250 mm height [1.49]; CW06 - 7500 mm width x 4250 mm height [1.49]; W01 - 1000 mm width x 2000 mm height [1.49]; W02 - 2000 mm width x 2000 mm height [2.99]; W03 - 2000 mm width x 1000 mm height [4.48]; D2 - 900 mm x 2200 mm height temper door [10.45]; D3 - 950 mm x 2000 mm height temper door [2.99] |
| A1080 | External Finshing Work (Walls and Floor) | 2026-10-22 → 2026-11-21 (+30d) | 2026-11-03 → 2026-11-29 (+26d) | 10d → 8d | 10.75d → 25d |  | resources Supply and install 300*300mm terrazzo tiles with 150mm high skirting at perimeter with approv [133]; Skilled Labor [160 h]; Unskilled Labor [80 h] → Unskilled Labor [80 h]; Skilled Labor [160 h]; Supply and install 300*300mm terrazzo tiles with 150mm high skirting at perimeter with approv [198.51] |
| A1090 | Internal Finshing Work (Walls,Floor and Ceiling) | 2026-11-03 → 2026-11-30 (+27d) | 2026-11-15 → 2026-12-08 (+23d) | 10d → 8d | 10.75d → 25d |  | resources Supply and install 300*300mm glazed ceramic wall tiles on cement mortar and including rough [95]; Supply and install internal plastering and 2 coats of acrylic paint at walls includin [216]; Supply and install 300*300mm glazed ceramic wall tiles on cement mortar and including rough and smooth p [12]; Supply and install 600*600mm porcelain tiles with approved quality on 30 mm mortar inclu [125]; Supply and install 12.5mm thk, gypsum board suspended ceiling including s [5]; Skilled Labor [160 h]; Unskilled Labor [80 h] → Unskilled Labor [80 h]; Skilled Labor [160 h]; Supply and install 300*300mm glazed ceramic wall tiles on cement mortar and including rough [141.79]; Supply and install internal plastering and 2 coats of acrylic paint at walls includin [322.39]; Supply and install 300*300mm glazed ceramic wall tiles on cement mortar and including rough and smooth p [17.91]; Supply and install 600*600mm porcelain tiles with approved quality on 30 mm mortar inclu [186.57]; Supply and install 12.5mm thk, gypsum board suspended ceiling including s [7.46] |
| 3 | **Mechanical Work** | 2026-09-26 → 2026-10-27 (+31d) | 2026-11-26 → 2026-12-20 (+24d) |  |  |  |  |
| 1 | **Sanitary Drainage & Plumbing System** | 2026-09-26 → 2026-10-27 (+31d) | 2026-10-11 → 2026-11-10 (+30d) |  |  |  |  |
| A1110 | Install Sanitary Piping System (UPVC) | 2026-09-26 → 2026-10-27 (+31d) | 2026-09-30 → 2026-10-31 (+31d) |  | 10.75d → 25d |  | resources Supply and install Hand Wash Basin with Water Tap, angle valve, P-trap connected to 50mm diameter s [3]; Supply and install paper towel dispenser, surface mounted, satin finish stainless steel as per approv [3]; Supply and install mirror, size 460*910mm as per approved sample including frames, backing and all accessories to complete. [3]; Supply and install towel ring , surface mounted, satin finish stainless steel as per approved sample including accessories. [3]; Kitchen sink with single bowl with hot/cold water mixer. [3]; 50mm diameter [37]; 75mm diameter [4]; 80mm diameter [11]; 100mm diameter [2]; 110mm diameter [12]; Floor cleanout, size 75 mm diameter [2]; Floor cleanout, size 110 mm diameter [4]; Skilled Labor [64 h]; Unskilled Labor [32 h] → Unskilled Labor [32 h]; Skilled Labor [64 h]; Supply and install Hand Wash Basin with Water Tap, angle valve, P-trap connected to 50mm diameter s [4.48]; Supply and install paper towel dispenser, surface mounted, satin finish stainless steel as per approv [4.48]; Supply and install mirror, size 460*910mm as per approved sample including frames, backing and all accessories to complete. [4.48]; Supply and install towel ring , surface mounted, satin finish stainless steel as per approved sample including accessories. [4.48]; Kitchen sink with single bowl with hot/cold water mixer. [4.48]; 50mm diameter [55.22]; 75mm diameter [5.97]; 80mm diameter [16.42]; 100mm diameter [2.99]; 110mm diameter [17.91]; Floor cleanout, size 75 mm diameter [2.99]; Floor cleanout, size 110 mm diameter [5.97] |
| A1120 | Install Base mounted flush tank water Western water closet system | 2026-09-30 → 2026-11-01 (+32d) | 2026-10-07 → 2026-11-07 (+31d) |  | 10.75d → 25d |  | resources Supply and install Base mounted flush tank water Western water closet system with lid connected to 110mm soil pipe [2]; Skilled Labor [96 h]; Unskilled Labor [48 h] → Unskilled Labor [48 h]; Skilled Labor [96 h]; Supply and install Base mounted flush tank water Western water closet system with lid connected to 110mm soil pipe [2.99] |
| A1130 | Install 1 meter length 10mm diameter Flexible Hose and Gate Valves and Slow Closing Valve | 2026-10-07 → 2026-11-08 (+32d) | 2026-10-11 → 2026-11-10 (+30d) |  | 10.75d → 25d |  | resources Gate Valves [2]; Slow Closing Valve [2]; 1 meter length 10mm diameter Flexible Hose with insulated handle complete with fork support, index push, vacuum breaker [2]; Skilled Labor [48 h]; Unskilled Labor [24 h] → Unskilled Labor [24 h]; Skilled Labor [48 h]; Gate Valves [2.99]; Slow Closing Valve [2.99]; 1 meter length 10mm diameter Flexible Hose with insulated handle complete with fork support, index push, vacuum breaker [2.99] |
| 2 | **Water Supply System** | 2026-09-26 → 2026-10-27 (+31d) | 2026-11-17 → 2026-12-10 (+23d) |  |  |  |  |
| A1240 | Install GRP water tanks capacity of each 1000 liter | 2026-09-26 → 2026-10-27 (+31d) | 2026-09-29 → 2026-10-29 (+30d) |  | 11.75d → 26d |  | resources GRP water tanks capacity of each 1000 liter complete with all fittings, all valves and concrete pad [3]; Skilled Labor [48 h]; Unskilled Labor [24 h] → Unskilled Labor [24 h]; Skilled Labor [48 h]; GRP water tanks capacity of each 1000 liter complete with all fittings, all valves and concrete pad [4.48] |
| A1140 | Install for Cold Water Pipe complete with joints, angles, reducer etc. | 2026-09-29 → 2026-10-31 (+32d) | 2026-10-05 → 2026-11-04 (+30d) |  | 11.75d → 26d |  | resources 13mm diameter [1]; 15mm diameter [1]; 20mm diameter [1]; 25mm diameter [19]; 32mm diameter [35]; 40mm diameter [12]; 50mm diameter [1]; Skilled Labor [80 h]; Unskilled Labor [40 h] → Unskilled Labor [40 h]; Skilled Labor [80 h]; 13mm diameter [1.49]; 15mm diameter [1.49]; 20mm diameter [1.49]; 25mm diameter [28.36]; 32mm diameter [52.24]; 40mm diameter [17.91]; 50mm diameter [1.49] |
| A1150 | Install for Hot Water Pipe complete with joints, angles, reducer etc. | 2026-10-05 → 2026-11-05 (+31d) | 2026-10-10 → 2026-11-09 (+30d) |  | 11.75d → 26d |  | resources 13mm diameter [1]; 20mm diameter [5]; 25mm diameter [12]; Skilled Labor [64 h]; Unskilled Labor [32 h] → Unskilled Labor [32 h]; Skilled Labor [64 h]; 13mm diameter [1.49]; 20mm diameter [7.46]; 25mm diameter [17.91] |
| A1160 | Install for Isolation Valve,Spray Head,Roof Drain,Floor Drain,Gully teap,Vend on Roof to exhaust air | 2026-10-10 → 2026-11-10 (+31d) | 2026-10-13 → 2026-11-12 (+30d) |  | 36.75d → 45d |  | resources Isolation Valve Size 20 [3]; Isolation Valve Size 25 [3]; Isolation Valve Size 32 [5]; Isolation Valve Size 40 [1]; Isolation Valve Size 50 [1]; 20 mm diameter spray head for cold water supply [3]; Roof drain [3]; Vent on a roof to exhaust air [3]; Floor drain 100x80mm [4]; Gully trap 300x300 mm [3]; Skilled Labor [48 h]; Unskilled Labor [24 h] → Unskilled Labor [24 h]; Skilled Labor [48 h]; Isolation Valve Size 20 [4.48]; Isolation Valve Size 25 [4.48]; Isolation Valve Size 32 [7.46]; Isolation Valve Size 40 [1.49]; Isolation Valve Size 50 [1.49]; 20 mm diameter spray head for cold water supply [4.48]; Roof drain [4.48]; Vent on a roof to exhaust air [4.48]; Floor drain 100x80mm [5.97]; Gully trap 300x300 mm [4.48] |
| A1170 | Install of Inspection chamber, size 800x900x1000 | 2026-10-13 → 2026-11-14 (+32d) | 2026-10-15 → 2026-11-15 (+31d) |  | 36.75d → 45d |  | resources inspection chamber, size 800x900x1000 [3]; Skilled Labor [32 h]; Unskilled Labor [16 h] → Unskilled Labor [16 h]; Skilled Labor [32 h]; inspection chamber, size 800x900x1000 [4.48] |
| A1180 | Install OF Electric Water Heater set with connection and Water meter complete with accessories | 2026-11-15 → 2026-12-09 (+24d) | 2026-11-17 → 2026-12-10 (+23d) |  | 10.75d → 25d |  | resources Supply and install Electric Water Heater set with connection [3]; Water meter complete with accessories. [3]; Skilled Labor [32 h]; Unskilled Labor [16 h] → Unskilled Labor [16 h]; Skilled Labor [32 h]; Supply and install Electric Water Heater set with connection [4.48]; Water meter complete with accessories. [4.48] |
| 3 | **HVAC System** | 2026-09-30 → 2026-11-01 (+32d) | 2026-11-26 → 2026-12-20 (+24d) |  |  |  |  |
| A1200 | Install of Refrigerant Piping ( fabricated metal ducts with flanges complete with supports, vanes, dampers ) | 2026-09-30 → 2026-11-01 (+32d) | 2026-10-05 → 2026-11-04 (+30d) |  | 37.75d → 46d |  | resources Supply, fabricate, install and testing factory fabricated metal ducts with flanges complete with supports, vanes, [40]; Supplying, installation testing & commissioning of external insulation on ducts [40]; Supply, fix, testing and commissioning of exhaust air/fresh air louvers of powder coated extruded aluminium construction. [1]; Providing, fixing, testing and commissioning of powder coated extruded aluminum sections grills and diffusers with dampers. [2]; Unskilled Labor [32 h]; Electrical Technician [64 h] → Unskilled Labor [32 h]; Electrical Technician [64 h]; Supply, fabricate, install and testing factory fabricated metal ducts with flanges complete with supports, vanes, [59.7]; Supplying, installation testing & commissioning of external insulation on ducts [59.7]; Supply, fix, testing and commissioning of exhaust air/fresh air louvers of powder coated extruded aluminium construction. [1.49]; Providing, fixing, testing and commissioning of powder coated extruded aluminum sections grills and diffusers with dampers. [2.99] |
| A1190 | Install of Mini split actual capacity 2 Ton and Ducted split actual capacity 4 Ton | 2026-11-15 → 2026-12-09 (+24d) | 2026-11-23 → 2026-12-16 (+23d) |  | 37.75d → 47d |  | resources Mini split actual capacity 2 Ton [1]; Ducted split actual capacity 4 Ton [2]; Unskilled Labor [56 h]; Electrical Technician [112 h] → Unskilled Labor [56 h]; Electrical Technician [112 h]; Mini split actual capacity 2 Ton [1.49]; Ducted split actual capacity 4 Ton [2.99] |
| A1210 | Install of Air Grills 150mm x150mm and Air Diffuser 600mm x 600mm | 2026-11-23 → 2026-12-17 (+24d) | 2026-11-26 → 2026-12-20 (+24d) |  | 37.75d → 47d |  | resources Air Grills 150mm x150mm [2]; Air Diffuser 600mm x 600mm [6]; Unskilled Labor [24 h]; Electrical Technician [48 h] → Unskilled Labor [24 h]; Electrical Technician [48 h]; Air Grills 150mm x150mm [2.99]; Air Diffuser 600mm x 600mm [8.96] |
| 4 | **Fire Fitting System** | 2026-10-05 → 2026-11-05 (+31d) | 2026-11-22 → 2026-12-15 (+23d) |  |  |  |  |
| A1220 | Installation & Testing of 2 hours Fire rated system for closing the openings between rooms with help of Rock wool | 2026-10-05 → 2026-11-05 (+31d) | 2026-10-12 → 2026-11-11 (+30d) |  | 42.75d → 46d |  | resources Supply, Installation & Testing of 2 hours Fire rated system for closing the openings between roo [1]; Unskilled Labor [48 h]; Electrical Technician [96 h] → Unskilled Labor [48 h]; Electrical Technician [96 h]; Supply, Installation & Testing of 2 hours Fire rated system for closing the openings between roo [1.49] |
| A1230 | Install Fire Extinguishers | 2026-11-15 → 2026-12-09 (+24d) | 2026-11-22 → 2026-12-15 (+23d) |  | 41.75d → 51d |  | resources 4.5 KG CO2 Type Fire Extinguishers [4]; 6 KG ABC Type Fire Extinguishers [4]; Unskilled Labor [48 h]; Electrical Technician [96 h] → Unskilled Labor [48 h]; Electrical Technician [96 h]; 4.5 KG CO2 Type Fire Extinguishers [5.97]; 6 KG ABC Type Fire Extinguishers [5.97] |
| 4 | **Electrical Work** | 2026-10-05 → 2026-11-05 (+31d) | 2026-12-28 → 2027-01-14 (+17d) |  |  |  |  |
| 1 | **LV Power** | 2026-10-05 → 2026-11-05 (+31d) | 2026-11-21 → 2026-12-14 (+23d) |  |  |  |  |
| A1250 | Install of Distribution board For Gaurd Room | 2026-10-05 → 2026-11-05 (+31d) | 2026-10-11 → 2026-11-10 (+30d) |  | 37.75d → 46d |  | resources Guard Room 1 [1]; Guard Room 2 [1]; Guard Room 3 [1]; Unskilled Labor [40 h]; Electrical Technician [80 h] → Unskilled Labor [40 h]; Electrical Technician [80 h]; Guard Room 1 [1.49]; Guard Room 2 [1.49]; Guard Room 3 [1.49] |
| A1270 | Install of Earting Cable for Gaurd Room | 2026-10-11 → 2026-11-11 (+31d) | 2026-10-17 → 2026-11-16 (+30d) |  | 37.75d → 46d |  | resources 4mm2 Cu./FRLSZH Cable [600]; 6mm2 Cu./FRLSZH Cable [110]; Unskilled Labor [40 h]; Electrical Technician [80 h] → Unskilled Labor [40 h]; Electrical Technician [80 h]; 4mm2 Cu./FRLSZH Cable [895.52]; 6mm2 Cu./FRLSZH Cable [164.18] |
| A1260 | Install of Socket outlet and LED Lighting | 2026-11-15 → 2026-12-09 (+24d) | 2026-11-21 → 2026-12-14 (+23d) |  | 42.75d → 52d |  | resources 30A, 2P AC Disconnect Switch [11]; 20A Duplex Receptacle Floor Mounted [12]; Twin Socket outlet [6]; Twin Socket outlet, Weather Proof [5]; Single gang Lighting switch [6]; 2way Single gang Lighting switch [2]; 36W LED linear Pendant lighting [14]; 36W LED Emergency linear Pendant lighting [6]; 13W recess mounted LED down light fitting [8]; 13W recess emergency mounted LED down light fitting with 1.5 Hr Battery [6]; 10.4W LED Exit light with 1.5 Hr Battery [3]; Unskilled Labor [40 h]; Electrical Technician [80 h] → Unskilled Labor [40 h]; Electrical Technician [80 h]; 30A, 2P AC Disconnect Switch [16.42]; 20A Duplex Receptacle Floor Mounted [17.91]; Twin Socket outlet [8.96]; Twin Socket outlet, Weather Proof [7.46]; Single gang Lighting switch [8.96]; 2way Single gang Lighting switch [2.99]; 36W LED linear Pendant lighting [20.9]; 36W LED Emergency linear Pendant lighting [8.96]; 13W recess mounted LED down light fitting [11.94]; 13W recess emergency mounted LED down light fitting with 1.5 Hr Battery [8.96]; 10.4W LED Exit light with 1.5 Hr Battery [4.48] |
| 3 | **Fire Detection And Alarm System** | 2026-10-12 → 2026-11-12 (+31d) | 2026-12-09 → 2027-01-02 (+24d) |  |  |  |  |
| A1340 | Install of 2C x 1.5 Sqm FR Rated Armored - Cable For Loop Wiring | 2026-10-12 → 2026-11-12 (+31d) | 2026-10-18 → 2026-11-17 (+30d) |  | 42.75d → 46d |  | resources 2C x 1.5 Sqm FR Rated Armored - Cable For Loop Wiring [1800]; DACT (Auto - Dailer) for 24x7 Civil Defence [1]; Unskilled Labor [40 h]; Electrical Technician [80 h] → Unskilled Labor [40 h]; Electrical Technician [80 h]; 2C x 1.5 Sqm FR Rated Armored - Cable For Loop Wiring [2686.57]; DACT (Auto - Dailer) for 24x7 Civil Defence [1.49] |
| A1350 | Install of Transmission Communication cable - Fiber Optics 12Core | 2026-10-18 → 2026-11-18 (+31d) | 2026-10-24 → 2026-11-23 (+30d) |  | 42.75d → 46d |  | resources Transmission Communication cable - Fiber Optics 12Core [2500]; Transmission Communication cable - Ethernet Cable [500]; Supply, install to site and installation of power cable [1600]; Fire Fighter’s Telephone Centre [1]; Fireman’s Telephone Jack [2]; Voice Command Center [1]; Unskilled Labor [40 h]; Electrical Technician [80 h] → Unskilled Labor [40 h]; Electrical Technician [80 h]; Transmission Communication cable - Fiber Optics 12Core [3731.34]; Transmission Communication cable - Ethernet Cable [746.27]; Supply, install to site and installation of power cable [2388.06]; Fire Fighter s Telephone Centre [1.49]; Fireman s Telephone Jack [2.99]; Voice Command Center [1.49] |
| A1360 | Install of power supply system for fire alarm control panel | 2026-11-15 → 2026-12-09 (+24d) | 2026-11-21 → 2026-12-14 (+23d) |  | 23.75d → 33d |  | resources Supply, install to site and installation of power supply system for fire alarm control panel [1]; Unskilled Labor [40 h]; Electrical Technician [80 h] → Unskilled Labor [40 h]; Electrical Technician [80 h]; Supply, install to site and installation of power supply system for fire alarm control panel [1.49] |
| A1280 | Install of Fire Alarm Control panel | 2026-11-21 → 2026-12-15 (+24d) | 2026-11-28 → 2026-12-21 (+23d) |  | 23.75d → 33d |  | resources Fire Alarm Control panel with fire alarm zoning with Mimic panel with fire alarm zoning [4]; Main Fire Alarm Control panel with fire alarm zoning with Mimic panel with fire alarm zoning [1]; Unskilled Labor [48 h]; Electrical Technician [96 h] → Unskilled Labor [48 h]; Electrical Technician [96 h]; Fire Alarm Control panel with fire alarm zoning with Mimic panel with fire alarm zoning [5.97]; Main Fire Alarm Control panel with fire alarm zoning with Mimic panel with fire alarm zoning [1.49] |
| A1290 | Installation of the addressable manual call point with operation safety glass breaking | 2026-11-28 → 2026-12-22 (+24d) | 2026-12-01 → 2026-12-24 (+23d) |  | 23.75d → 33d |  | resources Supply and installation of the addressable manual call point with operation safety glass breaking and pushbutton [17]; Unskilled Labor [24 h]; Electrical Technician [48 h] → Unskilled Labor [24 h]; Electrical Technician [48 h]; Supply and installation of the addressable manual call point with operation safety glass breaking and pushbutton [25.37] |
| A1300 | Install of the photoelectric heat & smoke detector | 2026-12-01 → 2026-12-26 (+25d) | 2026-12-05 → 2026-12-28 (+23d) |  | 23.75d → 33d |  | resources Supply and installation of the photoelectric heat & smoke detector with base [41]; Unskilled Labor [24 h]; Electrical Technician [48 h] → Unskilled Labor [24 h]; Electrical Technician [48 h]; Supply and installation of the photoelectric heat & smoke detector with base [61.19] |

| ID | Task | Start | Finish | Duration | Total float | Predecessors | Other |
| --- | --- | --- | --- | --- | --- | --- | --- |
| A1310 | Install of Sounder With Beacon | 2026-12-01 → 2026-12-26 (+25d) | 2026-12-05 → 2026-12-28 (+23d) |  | 23.75d → 33d | A1300 SS → A1300 SS, A1300 FF | resources Sounder With Beacon [20]; Unskilled Labor [24 h]; Electrical Technician [48 h] → Unskilled Labor [24 h]; Electrical Technician [48 h]; Sounder With Beacon [29.85] |
| A1320 | Install of Addressable Control module | 2026-12-05 → 2026-12-29 (+24d) | 2026-12-09 → 2027-01-02 (+24d) |  | 23.75d → 33d |  | resources Addressable Control module for Sounders [20]; Addressable Control module for HVAC System [2]; Addressable Monitor module for HVAC System [2]; Unskilled Labor [32 h]; Electrical Technician [64 h] → Unskilled Labor [32 h]; Electrical Technician [64 h]; Addressable Control module for Sounders [29.85]; Addressable Control module for HVAC System [2.99]; Addressable Monitor module for HVAC System [2.99] |
| 2 | **Security System** | 2026-11-17 → 2026-12-12 (+25d) | 2026-12-28 → 2027-01-14 (+17d) |  |  |  |  |
| A1580 | Install 8 Port Industrial PoE Switch 10/100BaseT (0 deg to +70 deg. Celsius) | 2026-11-17 → 2026-12-12 (+25d) | 2026-11-24 → 2026-12-16 (+22d) | 6d → 5d | 10.75d → 25d |  | resources 8 Port Industrial PoE Switch 10/100BaseT (0 deg to +70 deg. Celsius) [31]; Unskilled Labor [48 h]; Electrical Technician [96 h] → Unskilled Labor [48 h]; Electrical Technician [96 h]; 8 Port Industrial PoE Switch 10/100BaseT (0 deg to +70 deg. Celsius) [46.27] |
| A1590 | Optical Fiber,48 Core Splice Closure | 2026-11-24 → 2026-12-17 (+23d) | 2026-11-28 → 2026-12-20 (+22d) |  | 11.75d → 26d |  | resources 06C Optical Fiber SM [2505]; 48C Optical Fiber SM [7010]; 48 Core Splice Closure [7]; Unskilled Labor [24 h]; Electrical Technician [48 h] → Unskilled Labor [24 h]; Electrical Technician [48 h]; 06C Optical Fiber SM [3738.81]; 48C Optical Fiber SM [10462.7]; 48 Core Splice Closure [10.45] |
| A1650 | Pole/Bollard mounted IP( PoE) and 12U rack dimension | 2026-11-24 → 2026-12-17 (+23d) | 2026-11-29 → 2026-12-21 (+22d) |  | 10.75d → 25d |  | resources Pole/Bollard mounted IP( PoE), Automatic Number Plate Recognition (ANPR, camera, 5MP,IP 66, IR illumin [6]; 12U rack dimension (W x H x L) 600 x 625 x 600 mm [1]; Unskilled Labor [32 h]; Electrical Technician [64 h] → Unskilled Labor [32 h]; Electrical Technician [64 h]; Pole/Bollard mounted IP( PoE), Automatic Number Plate Recognition (ANPR, camera, 5MP,IP 66, IR illumin [8.96]; 12U rack dimension (W x H x L) 600 x 625 x 600 mm [1.49] |
| A1600 | Boom Barrier at Security Guard Room | 2026-11-29 → 2026-12-22 (+23d) | 2026-12-06 → 2026-12-27 (+21d) | 6d → 5d | 10.75d → 25d |  | resources Magnetic Control Access barrier, Automatic Vehicular Barriers to be installed on ground with magnetic access [6]; Boom Barrier at Security Guard Room [6]; Unskilled Labor [48 h]; Electrical Technician [96 h] → Unskilled Labor [48 h]; Electrical Technician [96 h]; Magnetic Control Access barrier, Automatic Vehicular Barriers to be installed on ground with magnetic access [8.96]; Boom Barrier at Security Guard Room [8.96] |
| A1610 | Pedestrian turnstile at Security Guard Room | 2026-12-06 → 2026-12-28 (+22d) | 2026-12-14 → 2027-01-02 (+19d) | 7d → 5d | 10.75d → 25d |  | resources Pedestrian turnstile at Security Guard Room [6]; Unskilled Labor [56 h]; Electrical Technician [112 h] → Unskilled Labor [56 h]; Electrical Technician [112 h]; Pedestrian turnstile at Security Guard Room [8.96] |
| A1620 | Access Control Unit and Access Card Reader | 2026-12-14 → 2027-01-03 (+20d) | 2026-12-19 → 2027-01-06 (+18d) |  | 10.75d → 25d |  | resources Access Control Unit [3]; Access Card Reader [3]; Unskilled Labor [32 h]; Electrical Technician [64 h] → Unskilled Labor [32 h]; Electrical Technician [64 h]; Access Control Unit [4.48]; Access Card Reader [4.48] |
| A1630 | Magnetic Lock and Break Glass and Exit Push button | 2026-12-19 → 2027-01-07 (+19d) | 2026-12-24 → 2027-01-11 (+18d) | 5d → 4d | 10.75d → 25d |  | resources Magnetic Lock [3]; Break Glass [3]; Exit Push button [3]; Unskilled Labor [40 h]; Electrical Technician [80 h] → Unskilled Labor [40 h]; Electrical Technician [80 h]; Magnetic Lock [4.48]; Break Glass [4.48]; Exit Push button [4.48] |
| A1640 | Door Sensor and Biometrics Reader | 2026-12-24 → 2027-01-12 (+19d) | 2026-12-28 → 2027-01-14 (+17d) |  | 10.75d → 25d |  | resources Door Sensor [3]; Biometrics Reader [2]; Unskilled Labor [24 h]; Electrical Technician [48 h] → Unskilled Labor [24 h]; Electrical Technician [48 h]; Door Sensor [4.48]; Biometrics Reader [2.99] |
| 2 | **Furnitures work** | 2026-12-28 → 2027-01-16 (+19d) | 2027-01-03 → 2027-01-20 (+17d) |  |  |  |  |
| A1100 | Office Chairs,Tables and Stand | 2026-12-28 → 2027-01-16 (+19d) | 2027-01-03 → 2027-01-20 (+17d) |  | 10.75d → 25d |  | resources Office Chairs [4]; Office Tables [4]; Guard Stand [2]; Skilled Labor [80 h]; Unskilled Labor [40 h] → Unskilled Labor [40 h]; Skilled Labor [80 h]; Office Chairs [5.97]; Office Tables [5.97]; Guard Stand [2.99] |
| 2 | **Fence Work** | 2026-04-21 → 2026-07-28 (+98d) | 2027-02-22 → 2027-02-23 (+1d) |  |  |  |  |
| 1 | **Northern Fence N01:N03** | 2026-04-21 → 2026-07-28 (+98d) | 2026-12-19 → 2027-01-17 (+29d) |  |  |  |  |
| 1 | **Civil Work** | 2026-04-21 → 2026-07-28 (+98d) | 2026-06-10 → 2026-09-01 (+83d) |  |  |  |  |
| CO-SU-FE-N-CI-100 | Excavation Work For Northern Fence | 2026-04-21 → 2026-07-28 (+98d) | 2026-04-29 → 2026-08-01 (+94d) | 7d → 4d | 0d → -0.15d | ENG-SH-GR-A-200, PRO-FE-CV-DL-80 SS+3d, CO-EW-110 SS+5d, PRO-FE-CV-MF-60 SS → ENG-SH-GR-A-200_R, PRO-FE-CV-DL-80 SS+3d, CO-EW-110_R SS+5d, PRO-FE-CV-MF-60 SS | resources Skilled Labor [56 h]; Unskilled Labor [112 h]; Excavator [56 h] → Unskilled Labor [112 h]; Excavator [56 h]; Skilled Labor [56 h] |
| CO-SU-FE-N-CI-110 | Pouring for Plain Concrete Northern Fence | 2026-04-29 → 2026-08-02 (+95d) | 2026-05-03 → 2026-08-05 (+94d) | 3d → 3.5d | 0d → -0.15d |  | resources 100 mm thickness lean concrete under the foundation [127.27]; Unskilled Labor [96 h]; Carpenter [48 h]; Steel Fixer [48 h] → Unskilled Labor [96 h]; Carpenter [48 h]; Steel Fixer [48 h]; 100 mm thickness lean concrete under the foundation [189.96] |
| CO-SU-FE-N-CI-120 | Pouring R.C Footing For Northern Fence | 2026-05-03 → 2026-08-05 (+94d) | 2026-05-14 → 2026-08-12 (+90d) | 10d → 6d | 0d → -0.15d |  | resources Foundation [660]; Slab on Grade; Unskilled Labor [320 h]; Carpenter [160 h]; Steel Fixer [160 h] → Unskilled Labor [320 h]; Carpenter [160 h]; Steel Fixer [160 h]; Foundation [2477.61]; Slab on Grade |
| CO-SU-FE-N-CI-130 | Pouring R.C Columns For Northern Fence | 2026-05-14 → 2026-08-12 (+90d) | 2026-05-20 → 2026-08-18 (+90d) |  | 0d → -0.15d |  | resources Walls [178.18]; Columns [33.18]; Unskilled Labor [160 h]; Carpenter [80 h]; Steel Fixer [80 h] → Unskilled Labor [160 h]; Carpenter [80 h]; Steel Fixer [80 h]; Walls [564.18]; Columns [49.53] |
| CO-SU-FE-N-CI-140 | Pouring Beams For Northern Fence | 2026-06-06 → 2026-08-29 (+84d) | 2026-06-10 → 2026-09-01 (+83d) |  | 1d → 0.35d |  | resources Beams [24.36]; Unskilled Labor [128 h]; Carpenter [64 h]; Steel Fixer [64 h] → Unskilled Labor [128 h]; Carpenter [64 h]; Steel Fixer [64 h]; Beams [36.36] |
| 5 | **Finishing Work** | 2026-05-20 → 2026-08-18 (+90d) | 2026-12-19 → 2027-01-17 (+29d) |  |  |  |  |
| 3 | **Electrical Work** | 2026-06-06 → 2026-08-29 (+84d) | 2026-12-19 → 2026-12-09 (-10d) |  |  |  |  |
| CO-SU-FE-N-EL-100 | Trench excavation to receive 2 nos 50mm diameter PVC Conduit | 2026-06-06 → 2026-08-29 (+84d) | 2026-06-17 → 2026-09-06 (+81d) | 10d → 8d | 37d → 1d |  | resources Trench excavation to receive 2 nos 50mm diameter PVC Conduit, sand bedding and embedded with sa [318.64]; Unskilled Labor [80 h]; Electrical Technician [160 h] → Unskilled Labor [80 h]; Electrical Technician [160 h]; Trench excavation to receive 2 nos 50mm diameter PVC Conduit, sand bedding and embedded with sa [475.58] |
| CO-SU-FE-N-EL-110 | Trench excavation to receive 3 nos 50mm diameter PVC Conduit | 2026-06-06 → 2026-08-29 (+84d) | 2026-06-17 → 2026-09-06 (+81d) | 10d → 8d | 37d → 1d |  | resources 800mm depth minimum Trench excavation to receive 3 nos 50mm diameter PVC Conduit with spacer, sand bedding an [136.36]; Unskilled Labor [80 h]; Electrical Technician [160 h] → Unskilled Labor [80 h]; Electrical Technician [160 h]; 800mm depth minimum Trench excavation to receive 3 nos 50mm diameter PVC Conduit with spacer, sand bedding an [203.53] |
| CO-SU-FE-N-EL-120 | Fixing of Control cable,CAT6A cable | 2026-06-17 → 2026-09-07 (+82d) | 2026-07-01 → 2026-09-16 (+77d) | 12d → 9d | 37d → 1d |  | resources Control cable [282.73]; CAT6A cable [282.73]; Unskilled Labor [96 h]; Electrical Technician [192 h] → Unskilled Labor [96 h]; Electrical Technician [192 h]; Control cable [421.98]; CAT6A cable [421.98] |
| CO-SU-FE-N-EL-130 | Install 800mm x 800mm x 800mm height concrete handhole | 2026-06-17 → 2026-09-07 (+82d) | 2026-07-01 → 2026-09-16 (+77d) | 12d → 9d | 37d → 1d |  | resources Supply and install 800mm x 800mm x 800mm height concrete handhole with bituminous paint all aroun [1.73]; Unskilled Labor [96 h]; Electrical Technician [192 h] → Unskilled Labor [96 h]; Electrical Technician [192 h]; Supply and install 800mm x 800mm x 800mm height concrete handhole with bituminous paint all aroun [2.58] |
| CO-SU-FE-N-EL-140 | Hot dipped galvanized cable conduits for CAT6A cable and Control Cables embedded to wall | 2026-06-17 → 2026-09-07 (+82d) | 2026-06-30 → 2026-09-15 (+77d) | 11d → 8d | 38d → 2d |  | resources Hot dipped galvanized cable conduits for CAT6A cable and Control Cables embedded to wall [38.18]; 400V, 3PH, 60Hz lighting control panel (LCP-02) [0.09]; Unskilled Labor [88 h]; Electrical Technician [176 h] → Unskilled Labor [88 h]; Electrical Technician [176 h]; Hot dipped galvanized cable conduits for CAT6A cable and Control Cables embedded to wall [56.99]; 400V, 3PH, 60Hz lighting control panel (LCP-02) [0.14] |
| CO-SU-FE-N-EL-150 | Fixing Earthing Work (Earth Pit,Grounding rod,Tinned Copper wire) | 2026-07-01 → 2026-09-17 (+78d) | 2026-07-20 → 2026-09-27 (+69d) | 16d → 8d | 37d → 1d |  | resources Earth Pit [1.55]; Grounding rod 20mmX3m [0.82]; Grounding rod with Pit 20mmX3m [0.36]; Earthing Bar [0.27]; 120mm2 Tinned copper wire [18.18]; Unskilled Labor [128 h]; Electrical Technician [256 h] → Unskilled Labor [128 h]; Electrical Technician [256 h]; Earth Pit [2.31]; Grounding rod 20mmX3m [1.22]; Grounding rod with Pit 20mmX3m [0.54]; Earthing Bar [0.41]; 120mm2 Tinned copper wire [27.14] |
| CO-SU-FE-N-EL-160 | Field Equipment Cabinet enclosed outdoor complete with precast concrete footing, | 2026-07-20 → 2026-09-28 (+70d) | 2026-08-01 → 2026-10-06 (+66d) | 10d → 8d | 37d → 1d |  | resources Field Equipment Cabinet enclosed outdoor complete with precast concrete footing, suitable for parame [1.73]; Unskilled Labor [80 h]; Electrical Technician [160 h] → Unskilled Labor [80 h]; Electrical Technician [160 h]; Field Equipment Cabinet enclosed outdoor complete with precast concrete footing, suitable for parame [2.58] |
| CO-SU-FE-N-EL-170 | Fence Lightining 400V, 3PH, 60Hz lighting control panel (LCP-02) | 2026-07-20 → 2026-09-28 (+70d) | 2026-07-29 → 2026-10-06 (+69d) |  | 39d → 1d |  |  |
| CO-SU-FE-N-EL-180 | Install of direct buried armored cable 4C-16mm2 ,10mm2 | 2026-08-01 → 2026-10-07 (+67d) | 2026-08-11 → 2026-10-17 (+67d) |  | 37d → 1d |  | resources 4C-16mm2 CU/XLPE/PVC direct buried armored cable [118.18]; 4C-10mm2 CU/XLPE/PVC direct buried armored cable [77.27]; Unskilled Labor [72 h]; Electrical Technician [144 h] → Unskilled Labor [72 h]; Electrical Technician [144 h]; 4C-16mm2 CU/XLPE/PVC direct buried armored cable [176.39]; 4C-10mm2 CU/XLPE/PVC direct buried armored cable [115.33] |
| CO-SU-FE-N-EL-190 | Install 16mm2,10mm2 CU/PVC wire | 2026-08-01 → 2026-10-07 (+67d) | 2026-08-11 → 2026-10-17 (+67d) |  | 37d → 1d |  | resources 16mm2 CU/PVC wire [118.18]; 10mm2 CU/PVC wire [77.27]; Unskilled Labor [72 h]; Electrical Technician [144 h] → Unskilled Labor [72 h]; Electrical Technician [144 h]; 16mm2 CU/PVC wire [176.39]; 10mm2 CU/PVC wire [115.33] |
| CO-SU-FE-N-EL-200 | FEC-CCTV ( 4C-16mm2 CU/XLPE/PVC direct buried armored cable,16mm2 CU/PVC wire | 2026-08-01 → 2026-10-07 (+67d) | 2026-08-10 → 2026-10-15 (+66d) |  | 43d → 2d |  | resources 4C-16mm2 CU/XLPE/PVC direct buried armored cable [370.91]; 16mm2 CU/PVC wire [370.91]; Unskilled Labor [64 h]; Electrical Technician [128 h] → Unskilled Labor [64 h]; Electrical Technician [128 h]; 4C-16mm2 CU/XLPE/PVC direct buried armored cable [553.6]; 16mm2 CU/PVC wire [553.6] |
| CO-SU-FE-N-EL-210 | Junction Box for lighting fixture | 2026-08-11 → 2026-10-18 (+68d) | 2026-08-20 → 2026-10-26 (+67d) |  | 37d → 3d |  | resources Junction Box for lighting fixture [12.36]; Unskilled Labor [64 h]; Electrical Technician [128 h] → Unskilled Labor [64 h]; Electrical Technician [128 h]; Junction Box for lighting fixture [18.45] |
| CO-SU-FE-N-EL-220 | IR Intrusion Detection System Quad Beams | 2026-11-30 → 2026-11-22 (-8d) | 2026-12-09 → 2026-11-30 (-9d) |  | 21d → 37d |  | resources IR Intrusion Detection System Quad Beams (Tx & Rx) (SL-350 QDM) [5.45]; Unskilled Labor [64 h]; Electrical Technician [128 h] → Unskilled Labor [64 h]; Electrical Technician [128 h]; IR Intrusion Detection System Quad Beams (Tx & Rx) (SL-350 QDM) [8.14] |
| CO-SU-FE-N-EL-230 | Install of 38W, 230V, 1PH, 60Hz fence, led linear uplight lighting, IP66 | 2026-11-30 → 2026-11-22 (-8d) | 2026-12-10 → 2026-12-01 (-9d) |  | 20d → 36d |  | resources 38W, 230V, 1PH, 60Hz fence, led linear uplight lighting, IP66 [12.36]; Unskilled Labor [72 h]; Electrical Technician [144 h] → Unskilled Labor [72 h]; Electrical Technician [144 h]; 38W, 230V, 1PH, 60Hz fence, led linear uplight lighting, IP66 [18.45] |
| CO-SU-FE-N-EL-240 | Install, fixings, testing and commissioning 80W LED | 2026-12-10 → 2026-12-02 (-8d) | 2026-12-19 → 2026-12-09 (-10d) |  | 20d → 36d |  | resources Supply, Install, fixings, testing and commissioning 80W LED Projector waterproof DJ effect light including c [0.27]; Unskilled Labor [56 h]; Electrical Technician [112 h] → Unskilled Labor [56 h]; Electrical Technician [112 h]; Supply, Install, fixings, testing and commissioning 80W LED Projector waterproof DJ effect light including c [0.41] |
| 4 | **Architictural work** | 2026-05-20 → 2026-08-18 (+90d) | 2026-11-19 → 2027-01-17 (+59d) |  |  |  |  |
| CO-SU-FE-N-AR-100 | Install Brick Work For Northern Fence | 2026-05-20 → 2026-08-18 (+90d) | 2026-06-06 → 2026-08-27 (+82d) | 10d → 8.5d | 1d → 0.35d |  | resources Common brickwork. 300mm thick; vertical straight wall complete with accessories. [797.73]; Insulated brickwork. with expanded polystyrene 200mm thick; vertical straight wall complete with accessories .; Common brickwork. 150mm thick; vertical straight wall complete with accessories.; Two Layers of Bituminous Coating [3560.91]; 20x20 Approved Polysulfide Joint Sealant [37.73]; Skilled Labor [160 h]; Unskilled Labor [80 h] → Unskilled Labor [80 h]; Skilled Labor [160 h]; Common brickwork. 300mm thick; vertical straight wall complete with accessories. [1190.64]; Insulated brickwork. with expanded polystyrene 200mm thick; vertical straight wall complete with accessories .; Common brickwork. 150mm thick; vertical straight wall complete with accessories.; Two Layers of Bituminous Coating [5314.79]; 20x20 Approved Polysulfide Joint Sealant [56.31] |
| CO-SU-FE-N-AR-110 | External plastering to walls and columns | 2026-08-11 → 2026-10-18 (+68d) | 2026-08-19 → 2026-10-25 (+67d) |  | 42d → 1d |  | resources Skilled Labor [112 h]; Unskilled Labor [56 h] → Unskilled Labor [56 h]; Skilled Labor [112 h] |
| CO-SU-FE-N-AR-120 | Install 50mm thick random cut stone cladding | 2026-08-19 → 2026-10-26 (+68d) | 2026-08-27 → 2026-11-02 (+67d) |  | 42d → 1d |  | resources Supply and install 33mm thick Lexan cladding blue complete with necessary framings [101.36]; Supply and install 50mm thick random cut stone cladding complete with 600m [1301.53]; Supply and install External plastering to walls and columns min. 15mm thick with cement mortar of specified grade including [1524.09]; Skilled Labor [112 h]; Unskilled Labor [56 h] → Unskilled Labor [56 h]; Skilled Labor [112 h]; Supply and install 33mm thick Lexan cladding blue complete with necessary framings [151.28]; Supply and install 50mm thick random cut stone cladding complete with 600m [8659.7]; Supply and install External plastering to walls and columns min. 15mm thick with cement mortar of specified grade including [2274.76] |
| CO-SU-FE-N-AR-130 | Install 2 coats of weatherproof paint at walls | 2026-08-27 → 2026-11-03 (+68d) | 2026-09-03 → 2026-11-09 (+67d) |  | 42d → 1d |  | resources Supply and install 2 coats of weatherproof paint at walls including one prime coat and [1524.09]; Skilled Labor [96 h]; Unskilled Labor [48 h] → Unskilled Labor [48 h]; Skilled Labor [96 h]; Supply and install 2 coats of weatherproof paint at walls including one prime coat and [2274.76] |
| CO-SU-FE-N-AR-140 | Install Stone coping 500mm,525mm | 2026-09-03 → 2026-11-10 (+68d) | 2026-09-08 → 2026-11-14 (+67d) |  | 42d → 1d |  | resources Guard room coping 350mm [5.18]; Guard room coping 450mm [2.45]; Stone coping 500mm [232.27]; Stone coping 525mm [111.27]; Skilled Labor [64 h]; Unskilled Labor [32 h] → Unskilled Labor [32 h]; Skilled Labor [64 h]; Guard room coping 350mm [7.73]; Guard room coping 450mm [3.66]; Stone coping 500mm [346.68]; Stone coping 525mm [166.08] |
| CO-SU-FE-N-AR-150 | Install MODON Signage | 2026-11-11 → 2027-01-09 (+59d) | 2026-11-19 → 2027-01-17 (+59d) |  | 42.75d → -0.15d |  | resources Supply and install MODON Signage with Logo Type 1 [2.18]; Supply and install MODON Signage Type 2 [2.18]; Supply and install "Triangle Style" signage [5]; Skilled Labor [112 h]; Unskilled Labor [56 h] → Unskilled Labor [56 h]; Skilled Labor [112 h]; Supply and install MODON Signage with Logo Type 1 [3.26]; Supply and install MODON Signage Type 2 [3.26]; Supply and install "Triangle Style" signage [7.46] |
| 2 | **Western Fence P1 ( W01:W06 )** | 2026-05-20 → 2026-08-18 (+90d) | 2026-12-27 → 2027-01-26 (+30d) |  |  |  |  |
| 1 | **Civil Work** | 2026-05-20 → 2026-08-18 (+90d) | 2026-08-20 → 2026-11-01 (+73d) |  |  |  |  |
| CO-SU-FE-WP1-CI-150 | Excavation Work For Northern Fence | 2026-05-20 → 2026-08-18 (+90d) | 2026-06-06 → 2026-08-27 (+82d) | 10d → 8d | 0d → -0.15d |  | resources Skilled Labor [80 h]; Unskilled Labor [160 h]; Excavator [80 h] → Unskilled Labor [160 h]; Excavator [80 h]; Skilled Labor [80 h] |
| CO-SU-FE-WP1-CI-160 | Pouring for Plain Concrete Northern Fence | 2026-06-06 → 2026-08-27 (+82d) | 2026-06-11 → 2026-09-02 (+83d) |  | 0d → -0.15d |  | resources 100 mm thickness lean concrete under the foundation [254.55]; Unskilled Labor [160 h]; Carpenter [80 h]; Steel Fixer [80 h] → Unskilled Labor [160 h]; Carpenter [80 h]; Steel Fixer [80 h]; 100 mm thickness lean concrete under the foundation [379.92] |
| CO-SU-FE-WP1-CI-170 | Pouring R.C Footing For Northern Fence | 2026-06-11 → 2026-09-02 (+83d) | 2026-06-29 → 2026-09-12 (+75d) | 15d → 8d | 0d → -0.15d |  | resources Foundation [1320]; Slab on Grade; Unskilled Labor [480 h]; Carpenter [240 h]; Steel Fixer [240 h] → Unskilled Labor [480 h]; Carpenter [240 h]; Steel Fixer [240 h]; Foundation [1970.15]; Slab on Grade |
| CO-SU-FE-WP1-CI-180 | Pouring R.C Columns For Northern Fence | 2026-06-29 → 2026-09-12 (+75d) | 2026-07-18 → 2026-10-01 (+75d) |  | 10d → -0.15d |  | resources Walls [356.36]; Columns [66.36]; Unskilled Labor [384 h]; Carpenter [192 h]; Steel Fixer [192 h] → Unskilled Labor [384 h]; Carpenter [192 h]; Steel Fixer [192 h]; Walls [531.89]; Columns [99.05] |
| CO-SU-FE-WP1-CI-190 | Pouring Beams For Northern Fence | 2026-07-29 → 2026-10-12 (+75d) | 2026-08-20 → 2026-11-01 (+73d) | 19d → 17d | 10d → 19.5d |  | resources Beams [48.73]; Unskilled Labor [608 h]; Carpenter [304 h]; Steel Fixer [304 h] → Unskilled Labor [608 h]; Carpenter [304 h]; Steel Fixer [304 h]; Beams [72.73] |
| 5 | **Finishing Work** | 2026-07-18 → 2026-10-01 (+75d) | 2026-12-27 → 2027-01-26 (+30d) |  |  |  |  |
| 3 | **Electrical Work** | 2026-07-29 → 2026-10-12 (+75d) | 2026-12-27 → 2027-01-20 (+24d) |  |  |  |  |
| CO-SU-FE-WP1-EL-260 | Trench excavation to receive 2 nos 50mm diameter PVC Conduit | 2026-07-29 → 2026-10-12 (+75d) | 2026-08-23 → 2026-10-28 (+66d) | 21d → 14d | 35d → 1.5d |  | resources Trench excavation to receive 2 nos 50mm diameter PVC Conduit, sand bedding and embedded with sa [637.27]; Unskilled Labor [144 h]; Electrical Technician [288 h] → Unskilled Labor [144 h]; Electrical Technician [288 h]; Trench excavation to receive 2 nos 50mm diameter PVC Conduit, sand bedding and embedded with sa [951.15] |
| CO-SU-FE-WP1-EL-320 | Trench excavation to receive 3 nos 50mm diameter PVC Conduit | 2026-07-29 → 2026-10-12 (+75d) | 2026-08-23 → 2026-10-28 (+66d) | 21d → 14d | 35d → 1.5d |  | resources 800mm depth minimum Trench excavation to receive 3 nos 50mm diameter PVC Conduit with spacer, sand bedding an [272.73]; Unskilled Labor [152 h]; Electrical Technician [304 h] → Unskilled Labor [152 h]; Electrical Technician [304 h]; 800mm depth minimum Trench excavation to receive 3 nos 50mm diameter PVC Conduit with spacer, sand bedding an [407.06] |
| CO-SU-FE-WP1-EL-300 | Fixing of Control cable,CAT6A cable | 2026-08-23 → 2026-10-28 (+66d) | 2026-09-08 → 2026-11-14 (+67d) |  | 42d → 1.5d |  | resources Control cable [565.45]; CAT6A cable [565.45]; Unskilled Labor [112 h]; Electrical Technician [224 h] → Unskilled Labor [112 h]; Electrical Technician [224 h]; Control cable [843.96]; CAT6A cable [843.96] |
| CO-SU-FE-WP1-EL-310 | Install 800mm x 800mm x 800mm height concrete handhole | 2026-08-23 → 2026-10-28 (+66d) | 2026-09-16 → 2026-11-14 (+59d) | 21d → 14d | 35d → 1.5d |  | resources Supply and install 800mm x 800mm x 800mm height concrete handhole with bituminous paint all aroun [3.45]; Unskilled Labor [128 h]; Electrical Technician [256 h] → Unskilled Labor [128 h]; Electrical Technician [256 h]; Supply and install 800mm x 800mm x 800mm height concrete handhole with bituminous paint all aroun [5.16] |
| CO-SU-FE-WP1-EL-330 | Hot dipped galvanized cable conduits for CAT6A cable and Control Cables embedded to wall | 2026-08-23 → 2026-10-28 (+66d) | 2026-09-08 → 2026-11-14 (+67d) |  | 42d → 1.5d |  | resources Hot dipped galvanized cable conduits for CAT6A cable and Control Cables embedded to wall [76.36]; 400V, 3PH, 60Hz lighting control panel (LCP-02) [0.18]; Unskilled Labor [112 h]; Electrical Technician [224 h] → Unskilled Labor [112 h]; Electrical Technician [224 h]; Hot dipped galvanized cable conduits for CAT6A cable and Control Cables embedded to wall [113.98]; 400V, 3PH, 60Hz lighting control panel (LCP-02) [0.27] |
| CO-SU-FE-WP1-EL-280 | Fixing Earthing Work (Earth Pit,Grounding rod,Tinned Copper wire) | 2026-09-16 → 2026-11-15 (+60d) | 2026-10-04 → 2026-11-26 (+53d) | 14d → 11d | 35d → 1d |  | resources Earth Pit [3.09]; Grounding rod 20mmX3m [1.64]; Grounding rod with Pit 20mmX3m [0.73]; Earthing Bar [0.55]; 120mm2 Tinned copper wire [36.36]; Unskilled Labor [112 h]; Electrical Technician [224 h] → Unskilled Labor [112 h]; Electrical Technician [224 h]; Earth Pit [4.61]; Grounding rod 20mmX3m [2.44]; Grounding rod with Pit 20mmX3m [1.09]; Earthing Bar [0.81]; 120mm2 Tinned copper wire [54.27] |
| CO-SU-FE-WP1-EL-340 | Field Equipment Cabinet enclosed outdoor complete with precast concrete footing, | 2026-10-04 → 2026-11-28 (+55d) | 2026-10-14 → 2026-12-07 (+54d) |  | 35d → 1d |  | resources Field Equipment Cabinet enclosed outdoor complete with precast concrete footing, suitable for parame [3.45]; Unskilled Labor [72 h]; Electrical Technician [144 h] → Unskilled Labor [72 h]; Electrical Technician [144 h]; Field Equipment Cabinet enclosed outdoor complete with precast concrete footing, suitable for parame [5.16] |
| CO-SU-FE-WP1-EL-350 | Fence Lightining 400V, 3PH, 60Hz lighting control panel (LCP-02) | 2026-10-04 → 2026-11-28 (+55d) | 2026-10-14 → 2026-12-07 (+54d) |  | 35d → 1d |  |  |
| CO-SU-FE-WP1-EL-360 | Install of direct buried armored cable 4C-16mm2 ,10mm2 | 2026-10-14 → 2026-12-08 (+55d) | 2026-10-26 → 2026-12-16 (+51d) | 10d → 8d | 35d → 2d |  | resources 4C-16mm2 CU/XLPE/PVC direct buried armored cable [236.36]; 4C-10mm2 CU/XLPE/PVC direct buried armored cable [154.55]; Unskilled Labor [80 h]; Electrical Technician [160 h] → Unskilled Labor [80 h]; Electrical Technician [160 h]; 4C-16mm2 CU/XLPE/PVC direct buried armored cable [352.78]; 4C-10mm2 CU/XLPE/PVC direct buried armored cable [230.66] |
| CO-SU-FE-WP1-EL-370 | Install 16mm2,10mm2 CU/PVC wire | 2026-10-14 → 2026-12-08 (+55d) | 2026-10-26 → 2026-12-16 (+51d) | 10d → 8d | 35d → 2d |  | resources 16mm2 CU/PVC wire [236.36]; 10mm2 CU/PVC wire [154.55]; Unskilled Labor [80 h]; Electrical Technician [160 h] → Unskilled Labor [80 h]; Electrical Technician [160 h]; 16mm2 CU/PVC wire [352.78]; 10mm2 CU/PVC wire [230.66] |
| CO-SU-FE-WP1-EL-390 | FEC-CCTV ( 4C-16mm2 CU/XLPE/PVC direct buried armored cable,16mm2 CU/PVC wire | 2026-10-14 → 2026-12-08 (+55d) | 2026-10-25 → 2026-12-17 (+53d) |  | 36d → 1d |  | resources 4C-16mm2 CU/XLPE/PVC direct buried armored cable [741.82]; 16mm2 CU/PVC wire [741.82]; Unskilled Labor [72 h]; Electrical Technician [144 h] → Unskilled Labor [72 h]; Electrical Technician [144 h]; 4C-16mm2 CU/XLPE/PVC direct buried armored cable [1107.19]; 16mm2 CU/PVC wire [1107.19] |
| CO-SU-FE-WP1-EL-250 | Junction Box for lighting fixture | 2026-10-26 → 2026-12-17 (+52d) | 2026-11-08 → 2026-12-29 (+51d) |  | 44d → 5d |  | resources Junction Box for lighting fixture [24.73]; Unskilled Labor [64 h]; Electrical Technician [128 h] → Unskilled Labor [64 h]; Electrical Technician [128 h]; Junction Box for lighting fixture [36.91] |
| CO-SU-FE-WP1-EL-290 | IR Intrusion Detection System Quad Beams | 2026-12-09 → 2027-01-12 (+34d) | 2026-12-17 → 2027-01-16 (+30d) | 7d → 4d | 21d → 1d |  | resources IR Intrusion Detection System Quad Beams (Tx & Rx) (SL-350 QDM) [10.91]; Unskilled Labor [56 h]; Electrical Technician [112 h] → Unskilled Labor [56 h]; Electrical Technician [112 h]; IR Intrusion Detection System Quad Beams (Tx & Rx) (SL-350 QDM) [16.28] |
| CO-SU-FE-WP1-EL-380 | Install of 38W, 230V, 1PH, 60Hz fence, led linear uplight lighting, IP66 | 2026-12-09 → 2027-01-12 (+34d) | 2026-12-17 → 2027-01-16 (+30d) | 7d → 4d | 21d → 4d |  | resources 38W, 230V, 1PH, 60Hz fence, led linear uplight lighting, IP66 [24.73]; Unskilled Labor [56 h]; Electrical Technician [112 h] → Unskilled Labor [56 h]; Electrical Technician [112 h]; 38W, 230V, 1PH, 60Hz fence, led linear uplight lighting, IP66 [36.91] |
| CO-SU-FE-WP1-EL-270 | Install, fixings, testing and commissioning 80W LED | 2026-12-19 → 2027-01-17 (+29d) | 2026-12-27 → 2027-01-20 (+24d) | 7d → 4d | 20d → 4d |  | resources Supply, Install, fixings, testing and commissioning 80W LED Projector waterproof DJ effect light including c [0.55]; Unskilled Labor [56 h]; Electrical Technician [112 h] → Unskilled Labor [56 h]; Electrical Technician [112 h]; Supply, Install, fixings, testing and commissioning 80W LED Projector waterproof DJ effect light including c [0.81] |
| 4 | **Architictural work** | 2026-07-18 → 2026-10-01 (+75d) | 2026-12-02 → 2027-01-26 (+55d) |  |  |  |  |

| ID | Task | Start | Finish | Duration | Total float | Predecessors | Other |
| --- | --- | --- | --- | --- | --- | --- | --- |
| CO-SU-FE-WP1-AR-160 | Install Brick Work For Northern Fence | 2026-07-18 → 2026-10-01 (+75d) | 2026-07-29 → 2026-10-12 (+75d) | 10d → 9d | 10d → 1.5d |  | resources Common brickwork. 300mm thick; vertical straight wall complete with accessories. [1595.45]; Insulated brickwork. with expanded polystyrene 200mm thick; vertical straight wall complete with accessories .; Common brickwork. 150mm thick; vertical straight wall complete with accessories.; Two Layers of Bituminous Coating [7121.82]; 20x20 Approved Polysulfide Joint Sealant [75.45]; Skilled Labor [160 h]; Unskilled Labor [80 h] → Unskilled Labor [80 h]; Skilled Labor [160 h]; Common brickwork. 300mm thick; vertical straight wall complete with accessories. [2381.28]; Insulated brickwork. with expanded polystyrene 200mm thick; vertical straight wall complete with accessories .; Common brickwork. 150mm thick; vertical straight wall complete with accessories.; Two Layers of Bituminous Coating [10629.6]; 20x20 Approved Polysulfide Joint Sealant [112.62] |
| CO-SU-FE-WP1-AR-170 | External plastering to walls and columns | 2026-10-26 → 2026-12-19 (+54d) | 2026-11-03 → 2026-12-24 (+51d) | 7d → 6d | 35d → 1d |  | resources Skilled Labor [112 h]; Unskilled Labor [56 h] → Unskilled Labor [56 h]; Skilled Labor [112 h] |
| CO-SU-FE-WP1-AR-180 | Install 50mm thick random cut stone cladding | 2026-11-03 → 2026-12-26 (+53d) | 2026-11-11 → 2026-12-30 (+49d) | 7d → 5d | 35d → 1d |  | resources Supply and install 33mm thick Lexan cladding blue complete with necessary framings [202.72]; Supply and install 50mm thick random cut stone cladding complete with 600m [2603.06]; Supply and install External plastering to walls and columns min. 15mm thick with cement mortar of specified grade including [3048.18]; Skilled Labor [112 h]; Unskilled Labor [56 h] → Unskilled Labor [56 h]; Skilled Labor [112 h]; Supply and install 33mm thick Lexan cladding blue complete with necessary framings [302.57]; Supply and install 50mm thick random cut stone cladding complete with 600m [900]; Supply and install External plastering to walls and columns min. 15mm thick with cement mortar of specified grade including [4549.53] |
| CO-SU-FE-WP1-AR-190 | Install 2 coats of weatherproof paint at walls | 2026-11-11 → 2026-12-31 (+50d) | 2026-11-18 → 2027-01-06 (+49d) |  | 35d → 1d |  | resources Supply and install 2 coats of weatherproof paint at walls including one prime coat and [3048.18]; Skilled Labor [96 h]; Unskilled Labor [48 h] → Unskilled Labor [48 h]; Skilled Labor [96 h]; Supply and install 2 coats of weatherproof paint at walls including one prime coat and [4549.53] |
| CO-SU-FE-WP1-AR-200 | Install Stone coping 500mm,525mm | 2026-11-18 → 2027-01-07 (+50d) | 2026-11-23 → 2027-01-11 (+49d) |  | 35d → 1d |  | resources Guard room coping 350mm [10.36]; Guard room coping 450mm [4.91]; Stone coping 500mm [464.55]; Stone coping 525mm [222.55]; Skilled Labor [64 h]; Unskilled Labor [32 h] → Unskilled Labor [32 h]; Skilled Labor [64 h]; Guard room coping 350mm [15.47]; Guard room coping 450mm [7.33]; Stone coping 500mm [693.35]; Stone coping 525mm [332.16] |
| CO-SU-FE-WP1-AR-210 | Install MODON Signage | 2026-11-23 → 2027-01-17 (+55d) | 2026-12-02 → 2027-01-26 (+55d) |  | 39.75d → -0.15d |  | resources Supply and install MODON Signage with Logo Type 1 [4.36]; Supply and install MODON Signage Type 2 [4.36]; Supply and install "Triangle Style" signage [10]; Skilled Labor [96 h]; Unskilled Labor [48 h] → Unskilled Labor [48 h]; Skilled Labor [96 h]; Supply and install MODON Signage with Logo Type 1 [6.51]; Supply and install MODON Signage Type 2 [6.51]; Supply and install "Triangle Style" signage [14.93] |
| 3 | **Western Fence P2 ( W07:W12 )** | 2026-06-11 → 2026-09-16 (+97d) | 2027-01-04 → 2027-02-04 (+31d) |  |  |  |  |
| 1 | **Civil Work** | 2026-06-11 → 2026-09-16 (+97d) | 2026-08-29 → 2026-11-09 (+72d) |  |  |  |  |
| CO-SU-FE-WP2-CI-200 | Excavation Work For Northern Fence | 2026-06-11 → 2026-09-16 (+97d) | 2026-06-17 → 2026-09-22 (+97d) |  | 0d → -0.15d | CO-SU-FE-WP1-CI-170 SS → CO-SU-FE-WP1-CI-170, CO-SU-FE-WP1-CI-180 SS+3.65d | resources Skilled Labor [40 h]; Unskilled Labor [80 h]; Excavator [40 h] → Unskilled Labor [80 h]; Excavator [40 h]; Skilled Labor [40 h] |
| CO-SU-FE-WP2-CI-210 | Pouring for Plain Concrete Northern Fence | 2026-06-17 → 2026-09-22 (+97d) | 2026-06-23 → 2026-09-29 (+98d) |  | 0d → -0.15d |  | resources 100 mm thickness lean concrete under the foundation [254.55]; Unskilled Labor [160 h]; Carpenter [80 h]; Steel Fixer [80 h] → Unskilled Labor [160 h]; Carpenter [80 h]; Steel Fixer [80 h]; 100 mm thickness lean concrete under the foundation [379.92] |
| CO-SU-FE-WP2-CI-220 | Pouring R.C Footing For Northern Fence | 2026-06-23 → 2026-09-29 (+98d) | 2026-07-05 → 2026-10-07 (+94d) | 10d → 7d | 0d → -0.15d |  | resources Foundation [1320]; Slab on Grade; Unskilled Labor [320 h]; Carpenter [160 h]; Steel Fixer [160 h] → Unskilled Labor [320 h]; Carpenter [160 h]; Steel Fixer [160 h]; Foundation [1970.15]; Slab on Grade |
| CO-SU-FE-WP2-CI-230 | Pouring R.C Columns For Northern Fence | 2026-07-05 → 2026-10-07 (+94d) | 2026-07-15 → 2026-10-18 (+95d) |  | 21d → -0.15d |  | resources Walls [356.36]; Columns [66.36]; Unskilled Labor [288 h]; Carpenter [144 h]; Steel Fixer [144 h] → Unskilled Labor [288 h]; Carpenter [144 h]; Steel Fixer [144 h]; Walls [531.89]; Columns [99.05] |
| CO-SU-FE-WP2-CI-240 | Pouring Beams For Northern Fence | 2026-08-20 → 2026-11-01 (+73d) | 2026-08-29 → 2026-11-09 (+72d) |  | 10d → 19.5d |  | resources Beams [48.73]; Unskilled Labor [224 h]; Carpenter [112 h]; Steel Fixer [112 h] → Unskilled Labor [224 h]; Carpenter [112 h]; Steel Fixer [112 h]; Beams [72.73] |
| 5 | **Finishing Work** | 2026-07-15 → 2026-10-18 (+95d) | 2027-01-04 → 2027-02-04 (+31d) |  |  |  |  |
| 3 | **Electrical Work** | 2026-08-08 → 2026-10-27 (+80d) | 2027-01-04 → 2027-02-01 (+28d) |  |  |  |  |
| CO-SU-FE-WP2-EL-410 | Trench excavation to receive 2 nos 50mm diameter PVC Conduit | 2026-08-08 → 2026-10-27 (+80d) | 2026-08-12 → 2026-11-01 (+81d) |  | 42.75d → -0.15d |  | resources Trench excavation to receive 2 nos 50mm diameter PVC Conduit, sand bedding and embedded with sa [637.27]; Unskilled Labor [32 h]; Electrical Technician [64 h] → Unskilled Labor [32 h]; Electrical Technician [64 h]; Trench excavation to receive 2 nos 50mm diameter PVC Conduit, sand bedding and embedded with sa [951.15] |
| CO-SU-FE-WP2-EL-470 | Trench excavation to receive 3 nos 50mm diameter PVC Conduit | 2026-08-08 → 2026-10-27 (+80d) | 2026-08-15 → 2026-11-03 (+80d) |  | 42.75d → -0.15d |  | resources 800mm depth minimum Trench excavation to receive 3 nos 50mm diameter PVC Conduit with spacer, sand bedding an [272.73]; Unskilled Labor [48 h]; Electrical Technician [96 h] → Unskilled Labor [48 h]; Electrical Technician [96 h]; 800mm depth minimum Trench excavation to receive 3 nos 50mm diameter PVC Conduit with spacer, sand bedding an [407.06] |
| CO-SU-FE-WP2-EL-450 | Fixing of Control cable,CAT6A cable | 2026-08-15 → 2026-11-03 (+80d) | 2026-08-23 → 2026-11-11 (+80d) |  | 42.75d → -0.15d |  | resources Control cable [565.45]; CAT6A cable [565.45]; Unskilled Labor [56 h]; Electrical Technician [112 h] → Unskilled Labor [56 h]; Electrical Technician [112 h]; Control cable [843.96]; CAT6A cable [843.96] |
| CO-SU-FE-WP2-EL-460 | Install 800mm x 800mm x 800mm height concrete handhole | 2026-08-15 → 2026-11-03 (+80d) | 2026-08-23 → 2026-11-10 (+79d) | 7d → 6.8d | 42.75d → 0.05d | CO-SU-FE-WP2-EL-410, CO-SU-FE-WP2-EL-470 → CO-SU-FE-WP2-EL-410, CO-SU-FE-WP2-EL-470, CO-SU-FE-WP2-EL-410 FF | resources Supply and install 800mm x 800mm x 800mm height concrete handhole with bituminous paint all aroun [3.45]; Unskilled Labor [56 h]; Electrical Technician [112 h] → Unskilled Labor [56 h]; Electrical Technician [112 h]; Supply and install 800mm x 800mm x 800mm height concrete handhole with bituminous paint all aroun [5.16] |
| CO-SU-FE-WP2-EL-480 | Hot dipped galvanized cable conduits for CAT6A cable and Control Cables embedded to wall | 2026-08-15 → 2026-11-03 (+80d) | 2026-08-23 → 2026-11-10 (+79d) | 7d → 6d | 42.75d → 0.85d |  | resources Hot dipped galvanized cable conduits for CAT6A cable and Control Cables embedded to wall [76.36]; 400V, 3PH, 60Hz lighting control panel (LCP-02) [0.18]; Unskilled Labor [56 h]; Electrical Technician [112 h] → Unskilled Labor [56 h]; Electrical Technician [112 h]; Hot dipped galvanized cable conduits for CAT6A cable and Control Cables embedded to wall [113.98]; 400V, 3PH, 60Hz lighting control panel (LCP-02) [0.27] |
| CO-SU-FE-WP2-EL-430 | Fixing Earthing Work (Earth Pit,Grounding rod,Tinned Copper wire) | 2026-08-23 → 2026-11-11 (+80d) | 2026-08-30 → 2026-11-18 (+80d) |  | 42.75d → -0.15d |  | resources Earth Pit [3.09]; Grounding rod 20mmX3m [1.64]; Grounding rod with Pit 20mmX3m [0.73]; Earthing Bar [0.55]; 120mm2 Tinned copper wire [36.36]; Unskilled Labor [48 h]; Electrical Technician [96 h] → Unskilled Labor [48 h]; Electrical Technician [96 h]; Earth Pit [4.61]; Grounding rod 20mmX3m [2.44]; Grounding rod with Pit 20mmX3m [1.09]; Earthing Bar [0.81]; 120mm2 Tinned copper wire [54.27] |
| CO-SU-FE-WP2-EL-490 | Field Equipment Cabinet enclosed outdoor complete with precast concrete footing, | 2026-08-30 → 2026-11-18 (+80d) | 2026-09-03 → 2026-11-23 (+81d) |  | 42.75d → -0.15d | CO-SU-FE-WP2-EL-430 → CO-SU-FE-WP2-EL-430, CO-SU-FE-WP2-EL-460 | resources Field Equipment Cabinet enclosed outdoor complete with precast concrete footing, suitable for parame [3.45]; Unskilled Labor [32 h]; Electrical Technician [64 h] → Unskilled Labor [32 h]; Electrical Technician [64 h]; Field Equipment Cabinet enclosed outdoor complete with precast concrete footing, suitable for parame [5.16] |
| CO-SU-FE-WP2-EL-510 | Install of direct buried armored cable 4C-16mm2 ,10mm2 | 2026-09-03 → 2026-11-23 (+81d) | 2026-09-12 → 2026-12-01 (+80d) | 7d → 7.5d | 43d → 0.35d | CO-SU-FE-WP2-EL-490, Fence Lightining 400V, 3PH, 60Hz lighting control panel (LCP-02) → CO-SU-FE-WP2-EL-490, CO-SU-FE-WP2-EL-430, CO-SU-FE-WP2-EL-450, CO-SU-FE-WP2-EL-460 | resources 4C-16mm2 CU/XLPE/PVC direct buried armored cable [236.36]; 4C-10mm2 CU/XLPE/PVC direct buried armored cable [154.55]; Unskilled Labor [56 h]; Electrical Technician [112 h] → Unskilled Labor [56 h]; Electrical Technician [112 h]; 4C-16mm2 CU/XLPE/PVC direct buried armored cable [352.78]; 4C-10mm2 CU/XLPE/PVC direct buried armored cable [230.66] |
| CO-SU-FE-WP2-EL-520 | Install 16mm2,10mm2 CU/PVC wire | 2026-09-03 → 2026-11-23 (+81d) | 2026-09-12 → 2026-12-01 (+80d) | 7d → 7.5d | 43d → 0.35d | CO-SU-FE-WP2-EL-490, Fence Lightining 400V, 3PH, 60Hz lighting control panel (LCP-02) → CO-SU-FE-WP2-EL-490, CO-SU-FE-WP2-EL-430, CO-SU-FE-WP2-EL-450 | resources 16mm2 CU/PVC wire [236.36]; 10mm2 CU/PVC wire [154.55]; Unskilled Labor [56 h]; Electrical Technician [112 h] → Unskilled Labor [56 h]; Electrical Technician [112 h]; 16mm2 CU/PVC wire [352.78]; 10mm2 CU/PVC wire [230.66] |
| CO-SU-FE-WP2-EL-540 | FEC-CCTV ( 4C-16mm2 CU/XLPE/PVC direct buried armored cable,16mm2 CU/PVC wire | 2026-09-03 → 2026-11-23 (+81d) | 2026-09-13 → 2026-12-02 (+80d) |  | 42.75d → -0.15d | CO-SU-FE-WP2-EL-490, Fence Lightining 400V, 3PH, 60Hz lighting control panel (LCP-02) → CO-SU-FE-WP2-EL-490, CO-SU-FE-WP2-EL-430, CO-SU-FE-WP2-EL-450 | resources 4C-16mm2 CU/XLPE/PVC direct buried armored cable [741.82]; 16mm2 CU/PVC wire [741.82]; Unskilled Labor [64 h]; Electrical Technician [128 h] → Unskilled Labor [64 h]; Electrical Technician [128 h]; 4C-16mm2 CU/XLPE/PVC direct buried armored cable [1107.19]; 16mm2 CU/PVC wire [1107.19] |
| CO-SU-FE-WP2-EL-400 | Junction Box for lighting fixture | 2026-09-12 → 2026-12-01 (+80d) | 2026-09-15 → 2026-12-05 (+81d) |  | 43d → 14.35d |  | resources Junction Box for lighting fixture [24.73]; Unskilled Labor [24 h]; Electrical Technician [48 h] → Unskilled Labor [24 h]; Electrical Technician [48 h]; Junction Box for lighting fixture [36.91] |
| CO-SU-FE-WP2-EL-440 | IR Intrusion Detection System Quad Beams | 2026-12-17 → 2027-01-17 (+31d) | 2026-12-26 → 2027-01-24 (+29d) |  | 21d → 1d |  | resources IR Intrusion Detection System Quad Beams (Tx & Rx) (SL-350 QDM) [10.91]; Unskilled Labor [56 h]; Electrical Technician [112 h] → Unskilled Labor [56 h]; Electrical Technician [112 h]; IR Intrusion Detection System Quad Beams (Tx & Rx) (SL-350 QDM) [16.28] |
| CO-SU-FE-WP2-EL-530 | Install of 38W, 230V, 1PH, 60Hz fence, led linear uplight lighting, IP66 | 2026-12-17 → 2027-01-17 (+31d) | 2026-12-26 → 2027-01-24 (+29d) |  | 21d → 1d |  | resources 38W, 230V, 1PH, 60Hz fence, led linear uplight lighting, IP66 [24.73]; Unskilled Labor [56 h]; Electrical Technician [112 h] → Unskilled Labor [56 h]; Electrical Technician [112 h]; 38W, 230V, 1PH, 60Hz fence, led linear uplight lighting, IP66 [36.91] |
| CO-SU-FE-WP2-EL-420 | Install, fixings, testing and commissioning 80W LED | 2026-12-27 → 2027-01-25 (+29d) | 2027-01-04 → 2027-02-01 (+28d) |  | 20d → 1d |  | resources Supply, Install, fixings, testing and commissioning 80W LED Projector waterproof DJ effect light including c [0.55]; Unskilled Labor [56 h]; Electrical Technician [112 h] → Unskilled Labor [56 h]; Electrical Technician [112 h]; Supply, Install, fixings, testing and commissioning 80W LED Projector waterproof DJ effect light including c [0.81] |
| 4 | **Architictural work** | 2026-07-15 → 2026-10-18 (+95d) | 2026-12-12 → 2027-02-04 (+54d) |  |  |  |  |
| CO-SU-FE-WP2-AR-220 | Install Brick Work For Northern Fence | 2026-07-15 → 2026-10-18 (+95d) | 2026-08-08 → 2026-10-27 (+80d) | 20d → 8d | 21d → -0.15d |  | resources Common brickwork. 300mm thick; vertical straight wall complete with accessories. [1595.45]; Insulated brickwork. with expanded polystyrene 200mm thick; vertical straight wall complete with accessories .; Common brickwork. 150mm thick; vertical straight wall complete with accessories.; Two Layers of Bituminous Coating [7121.82]; 20x20 Approved Polysulfide Joint Sealant [75.45]; Skilled Labor [320 h]; Unskilled Labor [160 h] → Unskilled Labor [160 h]; Skilled Labor [320 h]; Common brickwork. 300mm thick; vertical straight wall complete with accessories. [2381.28]; Insulated brickwork. with expanded polystyrene 200mm thick; vertical straight wall complete with accessories .; Common brickwork. 150mm thick; vertical straight wall complete with accessories.; Two Layers of Bituminous Coating [10629.6]; 20x20 Approved Polysulfide Joint Sealant [112.62] |
| CO-SU-FE-WP2-AR-230 | External plastering to walls and columns | 2026-09-13 → 2026-12-02 (+80d) | 2026-10-01 → 2026-12-12 (+72d) | 15d → 8d | 42.75d → -0.15d |  | resources Skilled Labor [240 h]; Unskilled Labor [120 h] → Unskilled Labor [120 h]; Skilled Labor [240 h] |
| CO-SU-FE-WP2-AR-240 | Install 50mm thick random cut stone cladding | 2026-10-01 → 2026-12-12 (+72d) | 2026-10-19 → 2026-12-21 (+63d) | 15d → 8d | 42.75d → -0.15d |  | resources Supply and install 33mm thick Lexan cladding blue complete with necessary framings [202.72]; Supply and install 50mm thick random cut stone cladding complete with 600m [2603.06]; Supply and install External plastering to walls and columns min. 15mm thick with cement mortar of specified grade including [3048.18]; Skilled Labor [240 h]; Unskilled Labor [120 h] → Unskilled Labor [120 h]; Skilled Labor [240 h]; Supply and install 33mm thick Lexan cladding blue complete with necessary framings [302.57]; Supply and install 50mm thick random cut stone cladding complete with 600m [5377.61]; Supply and install External plastering to walls and columns min. 15mm thick with cement mortar of specified grade including [4549.53] |
| CO-SU-FE-WP2-AR-250 | Install 2 coats of weatherproof paint at walls | 2026-10-19 → 2026-12-21 (+63d) | 2026-10-31 → 2026-12-30 (+60d) | 10d → 8d | 42.75d → -0.15d |  | resources Supply and install 2 coats of weatherproof paint at walls including one prime coat and [3048.18]; Skilled Labor [160 h]; Unskilled Labor [80 h] → Unskilled Labor [80 h]; Skilled Labor [160 h]; Supply and install 2 coats of weatherproof paint at walls including one prime coat and [4549.53] |
| CO-SU-FE-WP2-AR-260 | Install Stone coping 500mm,525mm | 2026-10-31 → 2026-12-30 (+60d) | 2026-11-11 → 2027-01-09 (+59d) | 10d → 8d | 42.75d → -0.15d |  | resources Guard room coping 350mm [10.36]; Guard room coping 450mm [4.91]; Stone coping 500mm [464.55]; Stone coping 525mm [222.55]; Skilled Labor [160 h]; Unskilled Labor [80 h] → Unskilled Labor [80 h]; Skilled Labor [160 h]; Guard room coping 350mm [15.47]; Guard room coping 450mm [7.33]; Stone coping 500mm [693.35]; Stone coping 525mm [332.16] |
| CO-SU-FE-WP2-AR-270 | Install MODON Signage | 2026-12-02 → 2027-01-26 (+55d) | 2026-12-12 → 2027-02-04 (+54d) |  | 39.75d → -0.15d |  | resources Supply and install MODON Signage with Logo Type 1 [4.36]; Supply and install MODON Signage Type 2 [4.36]; Supply and install "Triangle Style" signage [10]; Skilled Labor [96 h]; Unskilled Labor [48 h] → Unskilled Labor [48 h]; Skilled Labor [96 h]; Supply and install MODON Signage with Logo Type 1 [6.51]; Supply and install MODON Signage Type 2 [6.51]; Supply and install "Triangle Style" signage [14.93] |
| 4 | **Southern Fence S01:S05** | 2026-06-23 → 2026-08-03 (+41d) | 2027-01-12 → 2027-02-15 (+34d) |  |  |  |  |
| 1 | **Civil Work** | 2026-06-23 → 2026-08-03 (+41d) | 2026-09-02 → 2026-09-14 (+12d) |  |  |  |  |
| CO-SU-FE-S-CI-250 | Excavation Work For Northern Fence | 2026-06-23 → 2026-08-03 (+41d) | 2026-07-01 → 2026-08-10 (+40d) |  | 0d → 32d | CO-SU-FE-WP2-CI-220 SS → CO-EW-110_R, ENG-SH-GR-A-200_R, PRO-FE-CV-DL-80, PRO-FE-CV-MF-60 | resources Skilled Labor [56 h]; Unskilled Labor [112 h]; Excavator [56 h] → Unskilled Labor [112 h]; Excavator [56 h]; Skilled Labor [56 h] |
| CO-SU-FE-S-CI-260 | Pouring for Plain Concrete Northern Fence | 2026-07-01 → 2026-08-11 (+41d) | 2026-07-05 → 2026-08-13 (+39d) |  | 0d → 32d |  | resources 100 mm thickness lean concrete under the foundation [212.12]; Unskilled Labor [96 h]; Carpenter [48 h]; Steel Fixer [48 h] → Unskilled Labor [96 h]; Carpenter [48 h]; Steel Fixer [48 h]; 100 mm thickness lean concrete under the foundation [316.6] |
| CO-SU-FE-S-CI-270 | Pouring R.C Footing For Northern Fence | 2026-07-05 → 2026-08-15 (+41d) | 2026-07-16 → 2026-08-23 (+38d) | 10d → 8d | 0d → 32d |  | resources Foundation [1100]; Slab on Grade; Unskilled Labor [320 h]; Carpenter [160 h]; Steel Fixer [160 h] → Unskilled Labor [320 h]; Carpenter [160 h]; Steel Fixer [160 h]; Foundation [1641.79]; Slab on Grade |
| CO-SU-FE-S-CI-280 | Pouring R.C Columns For Northern Fence | 2026-07-16 → 2026-08-24 (+39d) | 2026-07-22 → 2026-09-03 (+43d) | 5d → 10d | 27d → 49d |  | resources Walls [296.97]; Columns [55.3]; Unskilled Labor [160 h]; Carpenter [80 h]; Steel Fixer [80 h] → Unskilled Labor [160 h]; Carpenter [80 h]; Steel Fixer [80 h]; Walls [592.54]; Columns [82.54] |
| CO-SU-FE-S-CI-290 | Pouring Beams For Northern Fence | 2026-08-29 → 2026-09-05 (+7d) | 2026-09-02 → 2026-09-14 (+12d) | 4d → 9d | 10d → 49d | CO-SU-FE-S-CI-280, CO-SU-FE-S-AR-280, CO-SU-FE-WP2-CI-240 → CO-SU-FE-S-CI-280, CO-SU-FE-S-AR-280 SS | resources Beams [40.61]; Unskilled Labor [128 h]; Carpenter [64 h]; Steel Fixer [64 h] → Unskilled Labor [128 h]; Carpenter [64 h]; Steel Fixer [64 h]; Beams [60.61] |
| 5 | **Finishing Work** | 2026-07-22 → 2026-09-05 (+45d) | 2027-01-12 → 2027-02-15 (+34d) |  |  |  |  |
| 3 | **Electrical Work** | 2026-08-09 → 2026-09-05 (+27d) | 2027-01-12 → 2027-02-10 (+29d) |  |  |  |  |
| CO-SU-FE-S-EL-560 | Trench excavation to receive 2 nos 50mm diameter PVC Conduit | 2026-08-09 → 2026-09-05 (+27d) | 2026-08-25 → 2026-09-21 (+27d) | 14d → 15d | 42d → 49d | CO-SU-FE-S-AR-280 → CO-SU-FE-S-AR-280 SS | resources Trench excavation to receive 2 nos 50mm diameter PVC Conduit, sand bedding and embedded with sa [531.06]; Unskilled Labor [32 h]; Electrical Technician [64 h] → Unskilled Labor [32 h]; Electrical Technician [64 h]; Trench excavation to receive 2 nos 50mm diameter PVC Conduit, sand bedding and embedded with sa [792.63] |
| CO-SU-FE-S-EL-620 | Trench excavation to receive 3 nos 50mm diameter PVC Conduit | 2026-08-09 → 2026-09-05 (+27d) | 2026-08-27 → 2026-09-21 (+25d) | 16d → 15d | 42d → 49d |  | resources 800mm depth minimum Trench excavation to receive 3 nos 50mm diameter PVC Conduit with spacer, sand bedding an [227.27]; Unskilled Labor [48 h]; Electrical Technician [96 h] → Unskilled Labor [48 h]; Electrical Technician [96 h]; 800mm depth minimum Trench excavation to receive 3 nos 50mm diameter PVC Conduit with spacer, sand bedding an [339.21] |
| CO-SU-FE-S-EL-600 | Fixing of Control cable,CAT6A cable | 2026-08-27 → 2026-09-22 (+26d) | 2026-09-16 → 2026-10-10 (+24d) | 17d → 15d | 42d → 49d |  | resources Control cable [471.21]; CAT6A cable [471.21]; Unskilled Labor [56 h]; Electrical Technician [112 h] → Unskilled Labor [56 h]; Electrical Technician [112 h]; Control cable [703.3]; CAT6A cable [703.3] |
| CO-SU-FE-S-EL-610 | Install 800mm x 800mm x 800mm height concrete handhole | 2026-08-27 → 2026-09-22 (+26d) | 2026-09-16 → 2026-10-10 (+24d) | 17d → 15d | 42d → 49d |  | resources Supply and install 800mm x 800mm x 800mm height concrete handhole with bituminous paint all aroun [2.88]; Unskilled Labor [56 h]; Electrical Technician [112 h] → Unskilled Labor [56 h]; Electrical Technician [112 h]; Supply and install 800mm x 800mm x 800mm height concrete handhole with bituminous paint all aroun [4.3] |
| CO-SU-FE-S-EL-630 | Hot dipped galvanized cable conduits for CAT6A cable and Control Cables embedded to wall | 2026-08-27 → 2026-09-22 (+26d) | 2026-09-16 → 2026-10-10 (+24d) | 17d → 15d | 42d → 49d |  | resources Hot dipped galvanized cable conduits for CAT6A cable and Control Cables embedded to wall [63.64]; 400V, 3PH, 60Hz lighting control panel (LCP-02) [0.15]; Unskilled Labor [56 h]; Electrical Technician [112 h] → Unskilled Labor [56 h]; Electrical Technician [112 h]; Hot dipped galvanized cable conduits for CAT6A cable and Control Cables embedded to wall [94.98]; 400V, 3PH, 60Hz lighting control panel (LCP-02) [0.23] |
| CO-SU-FE-S-EL-580 | Fixing Earthing Work (Earth Pit,Grounding rod,Tinned Copper wire) | 2026-09-16 → 2026-10-11 (+25d) | 2026-09-24 → 2026-10-17 (+23d) |  | 42d → 49d | CO-SU-FE-S-EL-600, CO-SU-FE-S-EL-610, CO-SU-FE-S-EL-630, CO-SU-FE-WP2-EL-400 → CO-SU-FE-S-EL-600, CO-SU-FE-S-EL-610, CO-SU-FE-S-EL-630 | resources Earth Pit [2.58]; Grounding rod 20mmX3m [1.36]; Grounding rod with Pit 20mmX3m [0.61]; Earthing Bar [0.45]; 120mm2 Tinned copper wire [30.3]; Unskilled Labor [48 h]; Electrical Technician [96 h] → Unskilled Labor [48 h]; Electrical Technician [96 h]; Earth Pit [3.84]; Grounding rod 20mmX3m [2.04]; Grounding rod with Pit 20mmX3m [0.9]; Earthing Bar [0.68]; 120mm2 Tinned copper wire [45.23] |
| CO-SU-FE-S-EL-640 | Field Equipment Cabinet enclosed outdoor complete with precast concrete footing, | 2026-09-24 → 2026-10-13 (+19d) | 2026-09-29 → 2026-10-17 (+18d) |  | 42d → 49d | CO-SU-FE-S-EL-580 → CO-SU-FE-S-EL-580 SS, CO-SU-FE-S-EL-580 FF | resources Field Equipment Cabinet enclosed outdoor complete with precast concrete footing, suitable for parame [2.88]; Unskilled Labor [32 h]; Electrical Technician [64 h] → Unskilled Labor [32 h]; Electrical Technician [64 h]; Field Equipment Cabinet enclosed outdoor complete with precast concrete footing, suitable for parame [4.3] |
| CO-SU-FE-S-EL-650 | Fence Lightining 400V, 3PH, 60Hz lighting control panel (LCP-02) | 2026-09-24 → 2026-10-13 (+19d) | 2026-09-29 → 2026-10-17 (+18d) |  | 42d → 49d | CO-SU-FE-S-EL-580 → CO-SU-FE-S-EL-580 SS, CO-SU-FE-S-EL-580 FF |  |
| CO-SU-FE-S-EL-660 | Install of direct buried armored cable 4C-16mm2 ,10mm2 | 2026-09-29 → 2026-10-13 (+14d) | 2026-10-07 → 2026-10-24 (+17d) | 7d → 10d | 42d → 50d | CO-SU-FE-S-EL-640, CO-SU-FE-S-EL-650 → CO-SU-FE-S-EL-640 SS, CO-SU-FE-S-EL-650 SS | resources 4C-16mm2 CU/XLPE/PVC direct buried armored cable [196.97]; 4C-10mm2 CU/XLPE/PVC direct buried armored cable [128.79]; Unskilled Labor [56 h]; Electrical Technician [112 h] → Unskilled Labor [56 h]; Electrical Technician [112 h]; 4C-16mm2 CU/XLPE/PVC direct buried armored cable [293.98]; 4C-10mm2 CU/XLPE/PVC direct buried armored cable [192.22] |
| CO-SU-FE-S-EL-670 | Install 16mm2,10mm2 CU/PVC wire | 2026-09-29 → 2026-10-18 (+19d) | 2026-10-07 → 2026-10-24 (+17d) | 7d → 6d | 42d → 50d |  | resources 16mm2 CU/PVC wire [196.97]; 10mm2 CU/PVC wire [128.79]; Unskilled Labor [56 h]; Electrical Technician [112 h] → Unskilled Labor [56 h]; Electrical Technician [112 h]; 16mm2 CU/PVC wire [293.98]; 10mm2 CU/PVC wire [192.22] |
| CO-SU-FE-S-EL-690 | FEC-CCTV ( 4C-16mm2 CU/XLPE/PVC direct buried armored cable,16mm2 CU/PVC wire | 2026-09-29 → 2026-10-18 (+19d) | 2026-10-07 → 2026-10-25 (+18d) |  | 43d → 49d |  | resources 4C-16mm2 CU/XLPE/PVC direct buried armored cable [618.18]; 16mm2 CU/PVC wire [618.18]; Unskilled Labor [56 h]; Electrical Technician [112 h] → Unskilled Labor [56 h]; Electrical Technician [112 h]; 4C-16mm2 CU/XLPE/PVC direct buried armored cable [922.66]; 16mm2 CU/PVC wire [922.66] |
| CO-SU-FE-S-EL-550 | Junction Box for lighting fixture | 2026-10-07 → 2026-12-05 (+59d) | 2026-10-15 → 2026-12-13 (+59d) |  | 42d → 14.35d |  | resources Junction Box for lighting fixture [20.61]; Unskilled Labor [24 h]; Electrical Technician [48 h] → Unskilled Labor [24 h]; Electrical Technician [48 h]; Junction Box for lighting fixture [30.76] |
| CO-SU-FE-S-EL-590 | IR Intrusion Detection System Quad Beams | 2026-12-26 → 2027-01-09 (+14d) | 2027-01-03 → 2027-01-16 (+13d) |  | 21d → 15d | CO-SU-FE-S-EL-660, CO-SU-FE-S-EL-670, CO-SU-FE-S-EL-690, CO-SU-FE-S-EL-550, CO-SU-FE-S-AR-310, CO-SU-FE-S-AR-320, CO-SU-FE-S-AR-300, CO-SU-FE-WP2-EL-440 → CO-SU-FE-S-EL-660, CO-SU-FE-S-EL-670, CO-SU-FE-S-EL-690, CO-SU-FE-S-EL-550, CO-SU-FE-S-AR-310, CO-SU-FE-S-AR-320 SS, CO-SU-FE-S-AR-300 | resources IR Intrusion Detection System Quad Beams (Tx & Rx) (SL-350 QDM) [9.09]; Unskilled Labor [56 h]; Electrical Technician [112 h] → Unskilled Labor [56 h]; Electrical Technician [112 h]; IR Intrusion Detection System Quad Beams (Tx & Rx) (SL-350 QDM) [13.57] |
| CO-SU-FE-S-EL-680 | Install of 38W, 230V, 1PH, 60Hz fence, led linear uplight lighting, IP66 | 2026-12-26 → 2027-01-25 (+30d) | 2027-01-03 → 2027-02-01 (+29d) |  | 21d → 1d |  | resources 38W, 230V, 1PH, 60Hz fence, led linear uplight lighting, IP66 [20.61]; Unskilled Labor [56 h]; Electrical Technician [112 h] → Unskilled Labor [56 h]; Electrical Technician [112 h]; 38W, 230V, 1PH, 60Hz fence, led linear uplight lighting, IP66 [30.76] |
| CO-SU-FE-S-EL-570 | Install, fixings, testing and commissioning 80W LED | 2027-01-04 → 2027-02-02 (+29d) | 2027-01-12 → 2027-02-10 (+29d) |  | 20d → 1d |  | resources Supply, Install, fixings, testing and commissioning 80W LED Projector waterproof DJ effect light including c [0.45]; Unskilled Labor [56 h]; Electrical Technician [112 h] → Unskilled Labor [56 h]; Electrical Technician [112 h]; Supply, Install, fixings, testing and commissioning 80W LED Projector waterproof DJ effect light including c [0.68] |
| 4 | **Architictural work** | 2026-07-22 → 2026-09-05 (+45d) | 2026-12-21 → 2027-02-15 (+56d) |  |  |  |  |
| CO-SU-FE-S-AR-280 | Install Brick Work For Northern Fence | 2026-07-22 → 2026-09-05 (+45d) | 2026-08-09 → 2026-09-10 (+32d) | 15d → 6d | 27d → 49d |  | resources Common brickwork. 300mm thick; vertical straight wall complete with accessories. [1329.55]; Insulated brickwork. with expanded polystyrene 200mm thick; vertical straight wall complete with accessories .; Common brickwork. 150mm thick; vertical straight wall complete with accessories.; Two Layers of Bituminous Coating [5934.85]; 20x20 Approved Polysulfide Joint Sealant [62.88]; Skilled Labor [240 h]; Unskilled Labor [120 h] → Unskilled Labor [120 h]; Skilled Labor [240 h]; Common brickwork. 300mm thick; vertical straight wall complete with accessories. [1984.4]; Insulated brickwork. with expanded polystyrene 200mm thick; vertical straight wall complete with accessories .; Common brickwork. 150mm thick; vertical straight wall complete with accessories.; Two Layers of Bituminous Coating [8857.98]; 20x20 Approved Polysulfide Joint Sealant [93.85] |
| CO-SU-FE-S-AR-290 | External plastering to walls and columns | 2026-10-07 → 2026-10-26 (+19d) | 2026-10-24 → 2026-11-01 (+8d) | 14d → 6d | 43d → 49d |  | resources Skilled Labor [224 h]; Unskilled Labor [112 h] → Unskilled Labor [112 h]; Skilled Labor [224 h] |
| CO-SU-FE-S-AR-300 | Install 50mm thick random cut stone cladding | 2026-10-24 → 2026-11-02 (+9d) | 2026-11-09 → 2026-11-08 (-1d) | 14d → 6d | 43d → 49d |  | resources Supply and install 33mm thick Lexan cladding blue complete with necessary framings [168.93]; Supply and install 50mm thick random cut stone cladding complete with 600m [2169.22]; Supply and install External plastering to walls and columns min. 15mm thick with cement mortar of specified grade including [2540.15]; Skilled Labor [224 h]; Unskilled Labor [112 h] → Unskilled Labor [112 h]; Skilled Labor [224 h]; Supply and install 33mm thick Lexan cladding blue complete with necessary framings [252.14]; Supply and install 50mm thick random cut stone cladding complete with 600m [3237.31]; Supply and install External plastering to walls and columns min. 15mm thick with cement mortar of specified grade including [3791.27] |
| CO-SU-FE-S-AR-310 | Install 2 coats of weatherproof paint at walls | 2026-11-09 → 2026-12-30 (+51d) | 2026-11-18 → 2027-01-07 (+50d) |  | 43d → 5d |  | resources Supply and install 2 coats of weatherproof paint at walls including one prime coat and [2540.15]; Skilled Labor [128 h]; Unskilled Labor [64 h] → Unskilled Labor [64 h]; Skilled Labor [128 h]; Supply and install 2 coats of weatherproof paint at walls including one prime coat and [3791.27] |
| CO-SU-FE-S-AR-320 | Install Stone coping 500mm,525mm | 2026-11-18 → 2027-01-09 (+52d) | 2026-11-30 → 2027-01-19 (+50d) |  | 43d → 5d |  | resources Guard room coping 350mm [8.64]; Guard room coping 450mm [4.09]; Stone coping 500mm [387.12]; Stone coping 525mm [185.45]; Skilled Labor [160 h]; Unskilled Labor [80 h] → Unskilled Labor [80 h]; Skilled Labor [160 h]; Guard room coping 350mm [12.89]; Guard room coping 450mm [6.11]; Stone coping 500mm [577.79]; Stone coping 525mm [276.8] |
| CO-SU-FE-S-AR-330 | Install MODON Signage | 2026-12-12 → 2027-02-04 (+54d) | 2026-12-21 → 2027-02-15 (+56d) |  | 39.75d → -0.15d |  | resources Supply and install MODON Signage with Logo Type 1 [3.64]; Supply and install MODON Signage Type 2 [3.64]; Supply and install "Triangle Style" signage [8.33]; Skilled Labor [96 h]; Unskilled Labor [48 h] → Unskilled Labor [48 h]; Skilled Labor [96 h]; Supply and install MODON Signage with Logo Type 1 [5.43]; Supply and install MODON Signage Type 2 [5.43]; Supply and install "Triangle Style" signage [12.44] |
| 5 | **Eastern Fence P1 ( E01:E06 )** | 2026-07-05 → 2026-08-15 (+41d) | 2027-01-20 → 2027-02-20 (+31d) |  |  |  |  |
| 1 | **Civil Work** | 2026-07-05 → 2026-08-15 (+41d) | 2026-10-01 → 2026-10-26 (+25d) |  |  |  |  |
| CO-SU-FE-EP1-CI-300 | Excavation Work For Northern Fence | 2026-07-05 → 2026-08-15 (+41d) | 2026-07-22 → 2026-08-27 (+36d) | 15d → 12d | 0d → 32d |  | resources Skilled Labor [80 h]; Unskilled Labor [160 h]; Excavator [80 h] → Unskilled Labor [160 h]; Excavator [80 h]; Skilled Labor [80 h] |

| ID | Task | Start | Finish | Duration | Total float | Predecessors | Other |
| --- | --- | --- | --- | --- | --- | --- | --- |
| CO-SU-FE-EP1-CI-310 | Pouring for Plain Concrete Northern Fence | 2026-07-22 → 2026-08-29 (+38d) | 2026-08-01 → 2026-09-06 (+36d) |  | 0d → 32d |  | resources 100 mm thickness lean concrete under the foundation [254.55]; Unskilled Labor [160 h]; Carpenter [80 h]; Steel Fixer [80 h] → Unskilled Labor [160 h]; Carpenter [80 h]; Steel Fixer [80 h]; 100 mm thickness lean concrete under the foundation [379.92] |
| CO-SU-FE-EP1-CI-320 | Pouring R.C Footing For Northern Fence | 2026-08-01 → 2026-09-07 (+37d) | 2026-08-24 → 2026-09-20 (+27d) | 20d → 12d | 0d → 32d |  | resources Foundation [1320]; Slab on Grade; Unskilled Labor [480 h]; Carpenter [240 h]; Steel Fixer [240 h] → Unskilled Labor [480 h]; Carpenter [240 h]; Steel Fixer [240 h]; Foundation [1970.15]; Slab on Grade |
| CO-SU-FE-EP1-CI-330 | Pouring R.C Columns For Northern Fence | 2026-08-24 → 2026-09-21 (+28d) | 2026-09-10 → 2026-10-08 (+28d) |  | 18d → 33d |  | resources Walls [356.36]; Columns [66.36]; Unskilled Labor [384 h]; Carpenter [192 h]; Steel Fixer [192 h] → Unskilled Labor [384 h]; Carpenter [192 h]; Steel Fixer [192 h]; Walls [382.09]; Columns [99.05] |
| CO-SU-FE-EP1-CI-340 | Pouring Beams For Northern Fence | 2026-09-22 → 2026-10-19 (+27d) | 2026-10-01 → 2026-10-26 (+25d) |  | 24d → 34d |  | resources Beams [48.73]; Unskilled Labor [224 h]; Carpenter [112 h]; Steel Fixer [112 h] → Unskilled Labor [224 h]; Carpenter [112 h]; Steel Fixer [112 h]; Beams [72.73] |
| 5 | **Finishing Work** | 2026-09-10 → 2026-10-10 (+30d) | 2027-01-20 → 2027-02-20 (+31d) |  |  |  |  |
| 3 | **Electrical Work** | 2026-09-22 → 2026-10-19 (+27d) | 2027-01-20 → 2027-02-16 (+27d) |  |  |  |  |
| CO-SU-FE-EP1-EL-710 | Trench excavation to receive 2 nos 50mm diameter PVC Conduit | 2026-09-22 → 2026-10-19 (+27d) | 2026-09-28 → 2026-10-22 (+24d) |  | 18d → 33d |  | resources Trench excavation to receive 2 nos 50mm diameter PVC Conduit, sand bedding and embedded with sa [637.27]; Unskilled Labor [32 h]; Electrical Technician [64 h] → Unskilled Labor [32 h]; Electrical Technician [64 h]; Trench excavation to receive 2 nos 50mm diameter PVC Conduit, sand bedding and embedded with sa [951.15] |
| CO-SU-FE-EP1-EL-770 | Trench excavation to receive 3 nos 50mm diameter PVC Conduit | 2026-09-22 → 2026-10-19 (+27d) | 2026-09-30 → 2026-10-22 (+22d) | 6d → 4d | 18d → 33d |  | resources 800mm depth minimum Trench excavation to receive 3 nos 50mm diameter PVC Conduit with spacer, sand bedding an [272.73]; Unskilled Labor [48 h]; Electrical Technician [96 h] → Unskilled Labor [48 h]; Electrical Technician [96 h]; 800mm depth minimum Trench excavation to receive 3 nos 50mm diameter PVC Conduit with spacer, sand bedding an [407.06] |
| CO-SU-FE-EP1-EL-750 | Fixing of Control cable,CAT6A cable | 2026-09-30 → 2026-10-24 (+24d) | 2026-10-08 → 2026-10-27 (+19d) | 7d → 4d | 18d → 33d |  | resources Control cable [565.45]; CAT6A cable [565.45]; Unskilled Labor [56 h]; Electrical Technician [112 h] → Unskilled Labor [56 h]; Electrical Technician [112 h]; Control cable [843.96]; CAT6A cable [843.96] |
| CO-SU-FE-EP1-EL-760 | Install 800mm x 800mm x 800mm height concrete handhole | 2026-09-30 → 2026-10-24 (+24d) | 2026-10-08 → 2026-10-27 (+19d) | 7d → 4d | 18d → 33d |  | resources Supply and install 800mm x 800mm x 800mm height concrete handhole with bituminous paint all aroun [3.45]; Unskilled Labor [56 h]; Electrical Technician [112 h] → Unskilled Labor [56 h]; Electrical Technician [112 h]; Supply and install 800mm x 800mm x 800mm height concrete handhole with bituminous paint all aroun [5.16] |
| CO-SU-FE-EP1-EL-780 | Hot dipped galvanized cable conduits for CAT6A cable and Control Cables embedded to wall | 2026-09-30 → 2026-10-24 (+24d) | 2026-10-08 → 2026-10-27 (+19d) | 7d → 4d | 18d → 33d |  | resources Hot dipped galvanized cable conduits for CAT6A cable and Control Cables embedded to wall [76.36]; 400V, 3PH, 60Hz lighting control panel (LCP-02) [0.18]; Unskilled Labor [56 h]; Electrical Technician [112 h] → Unskilled Labor [56 h]; Electrical Technician [112 h]; Hot dipped galvanized cable conduits for CAT6A cable and Control Cables embedded to wall [113.98]; 400V, 3PH, 60Hz lighting control panel (LCP-02) [0.27] |
| CO-SU-FE-EP1-EL-730 | Fixing Earthing Work (Earth Pit,Grounding rod,Tinned Copper wire) | 2026-10-08 → 2026-10-28 (+20d) | 2026-10-15 → 2026-11-03 (+19d) |  | 18d → 33d |  | resources Earth Pit [3.09]; Grounding rod 20mmX3m [1.64]; Grounding rod with Pit 20mmX3m [0.73]; Earthing Bar [0.55]; 120mm2 Tinned copper wire [36.36]; Unskilled Labor [48 h]; Electrical Technician [96 h] → Unskilled Labor [48 h]; Electrical Technician [96 h]; Earth Pit [4.61]; Grounding rod 20mmX3m [2.44]; Grounding rod with Pit 20mmX3m [1.09]; Earthing Bar [0.81]; 120mm2 Tinned copper wire [54.27] |
| CO-SU-FE-EP1-EL-790 | Field Equipment Cabinet enclosed outdoor complete with precast concrete footing, | 2026-10-15 → 2026-11-04 (+20d) | 2026-10-20 → 2026-11-08 (+19d) |  | 18d → 33d |  | resources Field Equipment Cabinet enclosed outdoor complete with precast concrete footing, suitable for parame [3.45]; Unskilled Labor [32 h]; Electrical Technician [64 h] → Unskilled Labor [32 h]; Electrical Technician [64 h]; Field Equipment Cabinet enclosed outdoor complete with precast concrete footing, suitable for parame [5.16] |
| CO-SU-FE-EP1-EL-800 | Fence Lightining 400V, 3PH, 60Hz lighting control panel (LCP-02) | 2026-10-15 → 2026-11-04 (+20d) | 2026-10-20 → 2026-11-08 (+19d) |  | 18d → 33d |  |  |
| CO-SU-FE-EP1-EL-810 | Install of direct buried armored cable 4C-16mm2 ,10mm2 | 2026-10-20 → 2026-11-09 (+20d) | 2026-10-28 → 2026-11-12 (+15d) | 7d → 4d | 27d → 35d |  | resources 4C-16mm2 CU/XLPE/PVC direct buried armored cable [236.36]; 4C-10mm2 CU/XLPE/PVC direct buried armored cable [154.55]; Unskilled Labor [56 h]; Electrical Technician [112 h] → Unskilled Labor [56 h]; Electrical Technician [112 h]; 4C-16mm2 CU/XLPE/PVC direct buried armored cable [352.78]; 4C-10mm2 CU/XLPE/PVC direct buried armored cable [230.66] |
| CO-SU-FE-EP1-EL-820 | Install 16mm2,10mm2 CU/PVC wire | 2026-10-20 → 2026-11-09 (+20d) | 2026-10-28 → 2026-11-12 (+15d) | 7d → 4d | 27d → 35d |  | resources 16mm2 CU/PVC wire [236.36]; 10mm2 CU/PVC wire [154.55]; Unskilled Labor [56 h]; Electrical Technician [112 h] → Unskilled Labor [56 h]; Electrical Technician [112 h]; 16mm2 CU/PVC wire [352.78]; 10mm2 CU/PVC wire [230.66] |
| CO-SU-FE-EP1-EL-840 | FEC-CCTV ( 4C-16mm2 CU/XLPE/PVC direct buried armored cable,16mm2 CU/PVC wire | 2026-10-20 → 2026-11-09 (+20d) | 2026-10-28 → 2026-11-12 (+15d) | 7d → 4d | 18d → 33d |  | resources 4C-16mm2 CU/XLPE/PVC direct buried armored cable [741.82]; 16mm2 CU/PVC wire [741.82]; Unskilled Labor [56 h]; Electrical Technician [112 h] → Unskilled Labor [56 h]; Electrical Technician [112 h]; 4C-16mm2 CU/XLPE/PVC direct buried armored cable [1107.19]; 16mm2 CU/PVC wire [1107.19] |
| CO-SU-FE-EP1-EL-700 | Junction Box for lighting fixture | 2026-10-28 → 2026-12-13 (+46d) | 2026-11-01 → 2026-12-16 (+45d) |  | 31d → 14.35d |  | resources Junction Box for lighting fixture [24.73]; Unskilled Labor [24 h]; Electrical Technician [48 h] → Unskilled Labor [24 h]; Electrical Technician [48 h]; Junction Box for lighting fixture [36.91] |
| CO-SU-FE-EP1-EL-740 | IR Intrusion Detection System Quad Beams | 2027-01-03 → 2027-01-17 (+14d) | 2027-01-11 → 2027-01-20 (+9d) | 7d → 4d | 21d → 18d |  | resources IR Intrusion Detection System Quad Beams (Tx & Rx) (SL-350 QDM) [10.91]; Unskilled Labor [56 h]; Electrical Technician [112 h] → Unskilled Labor [56 h]; Electrical Technician [112 h]; IR Intrusion Detection System Quad Beams (Tx & Rx) (SL-350 QDM) [16.28] |
| CO-SU-FE-EP1-EL-830 | Install of 38W, 230V, 1PH, 60Hz fence, led linear uplight lighting, IP66 | 2027-01-03 → 2027-01-17 (+14d) | 2027-01-11 → 2027-01-20 (+9d) | 7d → 4d | 21d → 18d |  | resources 38W, 230V, 1PH, 60Hz fence, led linear uplight lighting, IP66 [24.73]; Unskilled Labor [56 h]; Electrical Technician [112 h] → Unskilled Labor [56 h]; Electrical Technician [112 h]; 38W, 230V, 1PH, 60Hz fence, led linear uplight lighting, IP66 [36.91] |
| CO-SU-FE-EP1-EL-720 | Install, fixings, testing and commissioning 80W LED | 2027-01-12 → 2027-02-10 (+29d) | 2027-01-20 → 2027-02-16 (+27d) | 7d → 4d | 20d → 1d |  | resources Supply, Install, fixings, testing and commissioning 80W LED Projector waterproof DJ effect light including c [0.55]; Unskilled Labor [56 h]; Electrical Technician [112 h] → Unskilled Labor [56 h]; Electrical Technician [112 h]; Supply, Install, fixings, testing and commissioning 80W LED Projector waterproof DJ effect light including c [0.81] |
| 4 | **Architictural work** | 2026-09-10 → 2026-10-10 (+30d) | 2027-01-03 → 2027-02-20 (+48d) |  |  |  |  |
| CO-SU-FE-EP1-AR-340 | Install Brick Work For Northern Fence | 2026-09-10 → 2026-10-10 (+30d) | 2026-09-22 → 2026-10-18 (+26d) | 10d → 8d | 18d → 33d |  | resources Common brickwork. 300mm thick; vertical straight wall complete with accessories. [1595.45]; Insulated brickwork. with expanded polystyrene 200mm thick; vertical straight wall complete with accessories .; Common brickwork. 150mm thick; vertical straight wall complete with accessories.; Two Layers of Bituminous Coating [7121.82]; 20x20 Approved Polysulfide Joint Sealant [75.45]; Skilled Labor [160 h]; Unskilled Labor [80 h] → Unskilled Labor [80 h]; Skilled Labor [160 h]; Common brickwork. 300mm thick; vertical straight wall complete with accessories. [2381.28]; Insulated brickwork. with expanded polystyrene 200mm thick; vertical straight wall complete with accessories .; Common brickwork. 150mm thick; vertical straight wall complete with accessories.; Two Layers of Bituminous Coating [10629.6]; 20x20 Approved Polysulfide Joint Sealant [112.62] |
| CO-SU-FE-EP1-AR-350 | External plastering to walls and columns | 2026-10-28 → 2026-11-14 (+17d) | 2026-11-09 → 2026-11-22 (+13d) | 10d → 8d | 27d → 35d |  | resources Skilled Labor [112 h]; Unskilled Labor [56 h] → Unskilled Labor [56 h]; Skilled Labor [112 h] |
| CO-SU-FE-EP1-AR-360 | Install 50mm thick random cut stone cladding | 2026-11-09 → 2026-11-23 (+14d) | 2026-11-23 → 2026-12-03 (+10d) | 12d → 10d | 27d → 35d |  | resources Supply and install 33mm thick Lexan cladding blue complete with necessary framings [202.72]; Supply and install 50mm thick random cut stone cladding complete with 600m [2603.06]; Supply and install External plastering to walls and columns min. 15mm thick with cement mortar of specified grade including [3048.18]; Skilled Labor [112 h]; Unskilled Labor [56 h] → Unskilled Labor [56 h]; Skilled Labor [112 h]; Supply and install 33mm thick Lexan cladding blue complete with necessary framings [302.57]; Supply and install 50mm thick random cut stone cladding complete with 600m [1646.27]; Supply and install External plastering to walls and columns min. 15mm thick with cement mortar of specified grade including [4549.53] |
| CO-SU-FE-EP1-AR-370 | Install 2 coats of weatherproof paint at walls | 2026-11-23 → 2026-12-05 (+12d) | 2026-12-09 → 2026-12-15 (+6d) | 14d → 10d | 27d → 35d |  | resources Supply and install 2 coats of weatherproof paint at walls including one prime coat and [3048.18]; Skilled Labor [96 h]; Unskilled Labor [48 h] → Unskilled Labor [48 h]; Skilled Labor [96 h]; Supply and install 2 coats of weatherproof paint at walls including one prime coat and [4549.53] |
| CO-SU-FE-EP1-AR-380 | Install Stone coping 500mm,525mm | 2026-12-09 → 2026-12-16 (+7d) |  | 15d → 10d | 27d → 35d |  | resources Guard room coping 350mm [10.36]; Guard room coping 450mm [4.91]; Stone coping 500mm [464.55]; Stone coping 525mm [222.55]; Skilled Labor [64 h]; Unskilled Labor [32 h] → Unskilled Labor [32 h]; Skilled Labor [64 h]; Guard room coping 350mm [15.47]; Guard room coping 450mm [7.33]; Stone coping 500mm [693.35]; Stone coping 525mm [332.16] |
| CO-SU-FE-EP1-AR-390 | Install MODON Signage | 2026-12-27 → 2027-02-15 (+50d) | 2027-01-03 → 2027-02-20 (+48d) | 6d → 3d | 34.75d → -0.15d |  | resources Supply and install MODON Signage with Logo Type 1 [4.36]; Supply and install MODON Signage Type 2 [4.36]; Supply and install "Triangle Style" signage [10]; Skilled Labor [96 h]; Unskilled Labor [48 h] → Unskilled Labor [48 h]; Skilled Labor [96 h]; Supply and install MODON Signage with Logo Type 1 [6.51]; Supply and install MODON Signage Type 2 [6.51]; Supply and install "Triangle Style" signage [14.93] |
| 6 | **Eastern Fence P2 ( E07:E13 )** | 2026-08-24 → 2026-09-21 (+28d) | 2027-02-22 → 2027-02-23 (+1d) |  |  |  |  |
| 1 | **Civil Work** | 2026-08-24 → 2026-09-21 (+28d) | 2026-12-12 → 2026-12-02 (-10d) |  |  |  |  |
| CO-SU-FE-EP2-CI-350 | Excavation Work For Northern Fence | 2026-08-24 → 2026-09-21 (+28d) | 2026-09-14 → 2026-10-05 (+21d) | 18d → 12d | 0d → 32d |  | resources Skilled Labor [80 h]; Unskilled Labor [160 h]; Excavator [80 h] → Unskilled Labor [160 h]; Excavator [80 h]; Skilled Labor [80 h] |
| CO-SU-FE-EP2-CI-360 | Pouring for Plain Concrete Northern Fence | 2026-09-14 → 2026-10-06 (+22d) | 2026-10-03 → 2026-10-19 (+16d) | 15d → 12d | 0d → 32d |  | resources 100 mm thickness lean concrete under the foundation [296.97]; Unskilled Labor [160 h]; Carpenter [80 h]; Steel Fixer [80 h] → Unskilled Labor [160 h]; Carpenter [80 h]; Steel Fixer [80 h]; 100 mm thickness lean concrete under the foundation [443.24] |
| CO-SU-FE-EP2-CI-370 | Pouring R.C Footing For Northern Fence | 2026-10-03 → 2026-10-20 (+17d) | 2026-10-27 → 2026-11-02 (+6d) | 21d → 12d | 0d → 32d |  | resources Foundation [1540]; Slab on Grade; Unskilled Labor [480 h]; Carpenter [240 h]; Steel Fixer [240 h] → Unskilled Labor [480 h]; Carpenter [240 h]; Steel Fixer [240 h]; Foundation [805.97]; Slab on Grade |
| CO-SU-FE-EP2-CI-380 | Pouring R.C Columns For Northern Fence | 2026-10-27 → 2026-11-03 (+7d) | 2026-11-18 → 2026-11-14 (-4d) | 19d → 10d | 0d → 32d |  | resources Walls [415.76]; Columns [77.42]; Unskilled Labor [384 h]; Carpenter [192 h]; Steel Fixer [192 h] → Unskilled Labor [384 h]; Carpenter [192 h]; Steel Fixer [192 h]; Walls [322.39]; Columns [115.56] |
| CO-SU-FE-EP2-CI-390 | Pouring Beams For Northern Fence | 2026-11-30 → 2026-11-22 (-8d) | 2026-12-12 → 2026-12-02 (-10d) |  | 23d → 42d |  | resources Beams [56.85]; Unskilled Labor [224 h]; Carpenter [112 h]; Steel Fixer [112 h] → Unskilled Labor [224 h]; Carpenter [112 h]; Steel Fixer [112 h]; Beams [84.85] |
| 5 | **Finishing Work** | 2026-11-18 → 2026-11-15 (-3d) | 2027-02-22 → 2027-02-23 (+1d) |  |  |  |  |
| 3 | **Electrical Work** | 2026-11-30 → 2026-11-22 (-8d) | 2027-02-22 → 2027-02-21 (-1d) |  |  |  |  |
| CO-SU-FE-EP2-EL-860 | Trench excavation to receive 2 nos 50mm diameter PVC Conduit | 2026-11-30 → 2026-11-22 (-8d) | 2026-12-05 → 2026-11-25 (-10d) |  | 0d → 32d |  | resources Trench excavation to receive 2 nos 50mm diameter PVC Conduit, sand bedding and embedded with sa [743.48]; Unskilled Labor [32 h]; Electrical Technician [64 h] → Unskilled Labor [32 h]; Electrical Technician [64 h]; Trench excavation to receive 2 nos 50mm diameter PVC Conduit, sand bedding and embedded with sa [1109.68] |
| CO-SU-FE-EP2-EL-920 | Trench excavation to receive 3 nos 50mm diameter PVC Conduit | 2026-11-30 → 2026-11-22 (-8d) | 2026-12-07 → 2026-11-25 (-12d) | 6d → 4d | 0d → 32d |  | resources 800mm depth minimum Trench excavation to receive 3 nos 50mm diameter PVC Conduit with spacer, sand bedding an [318.18]; Unskilled Labor [48 h]; Electrical Technician [96 h] → Unskilled Labor [48 h]; Electrical Technician [96 h]; 800mm depth minimum Trench excavation to receive 3 nos 50mm diameter PVC Conduit with spacer, sand bedding an [474.9] |
| CO-SU-FE-EP2-EL-910 | Install 800mm x 800mm x 800mm height concrete handhole | 2026-12-07 → 2026-11-26 (-11d) | 2026-12-15 → 2026-11-29 (-16d) | 7d → 3d | 0d → 32d |  | resources Supply and install 800mm x 800mm x 800mm height concrete handhole with bituminous paint all aroun [4.03]; Unskilled Labor [56 h]; Electrical Technician [112 h] → Unskilled Labor [56 h]; Electrical Technician [112 h]; Supply and install 800mm x 800mm x 800mm height concrete handhole with bituminous paint all aroun [6.02] |
| CO-SU-FE-EP2-EL-930 | Hot dipped galvanized cable conduits for CAT6A cable and Control Cables embedded to wall | 2026-12-07 → 2026-11-26 (-11d) | 2026-12-15 → 2026-11-29 (-16d) | 7d → 3d | 0d → 32d |  | resources Hot dipped galvanized cable conduits for CAT6A cable and Control Cables embedded to wall [89.09]; 400V, 3PH, 60Hz lighting control panel (LCP-02) [0.21]; Unskilled Labor [56 h]; Electrical Technician [112 h] → Unskilled Labor [56 h]; Electrical Technician [112 h]; Hot dipped galvanized cable conduits for CAT6A cable and Control Cables embedded to wall [132.97]; 400V, 3PH, 60Hz lighting control panel (LCP-02) [0.32] |
| CO-SU-FE-EP2-EL-900 | Fixing of Control cable,CAT6A cable | 2026-12-07 → 2026-12-16 (+9d) | 2026-12-15 → 2026-12-20 (+5d) | 7d → 3d | 0d → 14.35d |  | resources Control cable [659.7]; CAT6A cable [659.7]; Unskilled Labor [56 h]; Electrical Technician [112 h] → Unskilled Labor [56 h]; Electrical Technician [112 h]; Control cable [984.62]; CAT6A cable [984.62] |
| CO-SU-FE-EP2-EL-880 | Fixing Earthing Work (Earth Pit,Grounding rod,Tinned Copper wire) | 2026-12-15 → 2026-12-20 (+5d) | 2026-12-22 → 2026-12-23 (+1d) | 6d → 3d | 0d → 14.35d |  | resources Earth Pit [3.61]; Grounding rod 20mmX3m [1.91]; Grounding rod with Pit 20mmX3m [0.85]; Earthing Bar [0.64]; 120mm2 Tinned copper wire [42.42]; Unskilled Labor [48 h]; Electrical Technician [96 h] → Unskilled Labor [48 h]; Electrical Technician [96 h]; Earth Pit [5.38]; Grounding rod 20mmX3m [2.85]; Grounding rod with Pit 20mmX3m [1.27]; Earthing Bar [0.95]; 120mm2 Tinned copper wire [63.32] |
| CO-SU-FE-EP2-EL-940 | Field Equipment Cabinet enclosed outdoor complete with precast concrete footing, | 2026-12-22 → 2026-12-23 (+1d) | 2026-12-27 → 2026-12-28 (+1d) |  | 0d → 14.35d |  | resources Field Equipment Cabinet enclosed outdoor complete with precast concrete footing, suitable for parame [4.03]; Unskilled Labor [32 h]; Electrical Technician [64 h] → Unskilled Labor [32 h]; Electrical Technician [64 h]; Field Equipment Cabinet enclosed outdoor complete with precast concrete footing, suitable for parame [6.02] |
| CO-SU-FE-EP2-EL-950 | Fence Lightining 400V, 3PH, 60Hz lighting control panel (LCP-02) | 2026-12-22 → 2026-12-23 (+1d) | 2026-12-27 → 2026-12-28 (+1d) |  | 0d → 14.35d |  |  |
| CO-SU-FE-EP2-EL-960 | Install of direct buried armored cable 4C-16mm2 ,10mm2 | 2026-12-27 → 2026-12-28 (+1d) | 2027-01-04 → 2026-12-31 (-4d) | 7d → 3d | 0d → 14.35d |  | resources 4C-16mm2 CU/XLPE/PVC direct buried armored cable [275.76]; 4C-10mm2 CU/XLPE/PVC direct buried armored cable [180.3]; Unskilled Labor [56 h]; Electrical Technician [112 h] → Unskilled Labor [56 h]; Electrical Technician [112 h]; 4C-16mm2 CU/XLPE/PVC direct buried armored cable [411.58]; 4C-10mm2 CU/XLPE/PVC direct buried armored cable [269.11] |
| CO-SU-FE-EP2-EL-970 | Install 16mm2,10mm2 CU/PVC wire | 2026-12-27 → 2026-12-28 (+1d) | 2027-01-04 → 2026-12-31 (-4d) | 7d → 3d | 0d → 14.35d |  | resources 16mm2 CU/PVC wire [275.76]; 10mm2 CU/PVC wire [180.3]; Unskilled Labor [56 h]; Electrical Technician [112 h] → Unskilled Labor [56 h]; Electrical Technician [112 h]; 16mm2 CU/PVC wire [411.58]; 10mm2 CU/PVC wire [269.11] |
| CO-SU-FE-EP2-EL-990 | FEC-CCTV ( 4C-16mm2 CU/XLPE/PVC direct buried armored cable,16mm2 CU/PVC wire | 2026-12-27 → 2026-12-28 (+1d) |  | 7d → 6d | 3d → 14.35d |  | resources 4C-16mm2 CU/XLPE/PVC direct buried armored cable [865.45]; 16mm2 CU/PVC wire [865.45]; Unskilled Labor [56 h]; Electrical Technician [112 h] → Unskilled Labor [56 h]; Electrical Technician [112 h]; 4C-16mm2 CU/XLPE/PVC direct buried armored cable [1291.72]; 16mm2 CU/PVC wire [1291.72] |
| CO-SU-FE-EP2-EL-850 | Junction Box for lighting fixture | 2027-01-04 → 2026-12-31 (-4d) | 2027-01-07 → 2027-01-04 (-3d) |  | 0d → 14.35d |  | resources Junction Box for lighting fixture [28.85]; Unskilled Labor [24 h]; Electrical Technician [48 h] → Unskilled Labor [24 h]; Electrical Technician [48 h]; Junction Box for lighting fixture [43.06] |
| CO-SU-FE-EP2-EL-890 | IR Intrusion Detection System Quad Beams | 2027-02-04 → 2027-01-26 (-9d) | 2027-02-14 → 2027-01-30 (-15d) | 7d → 3d | 0d → 14.35d |  | resources IR Intrusion Detection System Quad Beams (Tx & Rx) (SL-350 QDM) [12.73]; Unskilled Labor [56 h]; Electrical Technician [112 h] → Unskilled Labor [56 h]; Electrical Technician [112 h]; IR Intrusion Detection System Quad Beams (Tx & Rx) (SL-350 QDM) [19] |
| CO-SU-FE-EP2-EL-980 | Install of 38W, 230V, 1PH, 60Hz fence, led linear uplight lighting, IP66 | 2027-02-04 → 2027-01-26 (-9d) | 2027-02-14 → 2027-01-30 (-15d) | 7d → 3d | 0d → 14.35d |  | resources 38W, 230V, 1PH, 60Hz fence, led linear uplight lighting, IP66 [28.85]; Unskilled Labor [56 h]; Electrical Technician [112 h] → Unskilled Labor [56 h]; Electrical Technician [112 h]; 38W, 230V, 1PH, 60Hz fence, led linear uplight lighting, IP66 [43.06] |
| CO-SU-FE-EP2-EL-870 | Install, fixings, testing and commissioning 80W LED | 2027-02-14 → 2027-02-17 (+3d) | 2027-02-22 → 2027-02-21 (-1d) | 5.75d → 3d | 0d → 1d |  | resources Supply, Install, fixings, testing and commissioning 80W LED Projector waterproof DJ effect light including c [0.64]; Unskilled Labor [48 h]; Electrical Technician [96 h] → Unskilled Labor [48 h]; Electrical Technician [96 h]; Supply, Install, fixings, testing and commissioning 80W LED Projector waterproof DJ effect light including c [0.95] |
| 4 | **Architictural work** | 2026-11-18 → 2026-11-15 (-3d) | 2027-02-13 → 2027-02-23 (+10d) |  |  |  |  |
| CO-SU-FE-EP2-AR-400 | Install Brick Work For Northern Fence | 2026-11-18 → 2026-11-15 (-3d) | 2026-11-30 → 2026-11-21 (-9d) | 10d → 6d | 0d → 32d |  | resources Common brickwork. 300mm thick; vertical straight wall complete with accessories. [1861.36]; Insulated brickwork. with expanded polystyrene 200mm thick; vertical straight wall complete with accessories .; Common brickwork. 150mm thick; vertical straight wall complete with accessories.; Two Layers of Bituminous Coating [8308.79]; 20x20 Approved Polysulfide Joint Sealant [88.03]; Skilled Labor [160 h]; Unskilled Labor [80 h] → Unskilled Labor [80 h]; Skilled Labor [160 h]; Common brickwork. 300mm thick; vertical straight wall complete with accessories. [2778.15]; Insulated brickwork. with expanded polystyrene 200mm thick; vertical straight wall complete with accessories .; Common brickwork. 150mm thick; vertical straight wall complete with accessories.; Two Layers of Bituminous Coating [12401.2]; 20x20 Approved Polysulfide Joint Sealant [131.39] |
| CO-SU-FE-EP2-AR-410 | External plastering to walls and columns | 2027-01-07 → 2027-01-04 (-3d) | 2027-01-16 → 2027-01-10 (-6d) | 7d → 5d | 0d → 14.35d |  | resources Skilled Labor [112 h]; Unskilled Labor [56 h] → Unskilled Labor [56 h]; Skilled Labor [112 h] |
| CO-SU-FE-EP2-AR-420 | Install 50mm thick random cut stone cladding | 2027-01-16 → 2027-01-10 (-6d) | 2027-01-24 → 2027-01-16 (-8d) | 7d → 5d | 0d → 14.35d |  | resources Supply and install 33mm thick Lexan cladding blue complete with necessary framings [236.51]; Supply and install 50mm thick random cut stone cladding complete with 600m [3036.91]; Supply and install External plastering to walls and columns min. 15mm thick with cement mortar of specified grade including [3556.21]; Skilled Labor [112 h]; Unskilled Labor [56 h] → Unskilled Labor [56 h]; Skilled Labor [112 h]; Supply and install 33mm thick Lexan cladding blue complete with necessary framings [353]; Supply and install 50mm thick random cut stone cladding complete with 600m [1547.76]; Supply and install External plastering to walls and columns min. 15mm thick with cement mortar of specified grade including [5307.78] |
| CO-SU-FE-EP2-AR-430 | Install 2 coats of weatherproof paint at walls | 2027-01-24 → 2027-01-16 (-8d) | 2027-01-31 → 2027-01-21 (-10d) | 6d → 5d | 0d → 14.35d |  | resources Supply and install 2 coats of weatherproof paint at walls including one prime coat and [3556.21]; Skilled Labor [96 h]; Unskilled Labor [48 h] → Unskilled Labor [48 h]; Skilled Labor [96 h]; Supply and install 2 coats of weatherproof paint at walls including one prime coat and [5307.78] |
| CO-SU-FE-EP2-AR-440 | Install Stone coping 500mm,525mm | 2027-01-31 → 2027-01-21 (-10d) | 2027-02-04 → 2027-01-26 (-9d) |  | 0d → 14.35d | CO-SU-FE-EP2-AR-430 → CO-SU-FE-EP2-AR-430, MS-CF-SW | resources Guard room coping 350mm [12.09]; Guard room coping 450mm [5.73]; Stone coping 500mm [541.97]; Stone coping 525mm [259.64]; Skilled Labor [64 h]; Unskilled Labor [32 h] → Unskilled Labor [32 h]; Skilled Labor [64 h]; Guard room coping 350mm [18.05]; Guard room coping 450mm [8.55]; Stone coping 500mm [808.91]; Stone coping 525mm [387.52] |
| CO-SU-FE-EP2-AR-450 | Install MODON Signage | 2027-02-04 → 2027-02-20 (+16d) | 2027-02-13 → 2027-02-23 (+10d) | 6d → 2d | 6.75d → -0.15d |  | resources Supply and install MODON Signage with Logo Type 1 [5.09]; Supply and install MODON Signage Type 2 [5.09]; Supply and install "Triangle Style" signage [11.67]; Skilled Labor [96 h]; Unskilled Labor [48 h] → Unskilled Labor [48 h]; Skilled Labor [96 h]; Supply and install MODON Signage with Logo Type 1 [7.6]; Supply and install MODON Signage Type 2 [7.6]; Supply and install "Triangle Style" signage [17.41] |
| TC | **Testing and Comissioning** | 2026-11-10 → 2027-01-04 (+55d) | 2027-02-22 → 2027-02-21 (-1d) |  |  |  |  |
| INF | **Infrastructure Networks** | 2026-11-10 → 2027-01-06 (+57d) | 2027-02-22 → 2027-02-21 (-1d) |  |  |  |  |
| PW1 | **Irrigation Network** | 2026-12-27 → 2027-01-28 (+32d) | 2027-01-14 → 2027-02-03 (+20d) |  |  |  |  |
| T/C-IR | Testing and Commissioning of Irrigation Network | 2026-12-27 → 2027-01-28 (+32d) | 2027-01-14 → 2027-02-03 (+20d) | 16d → 5d | 0d → 0.04d | T/C-PW SS, CO-IR-TF-160, CO-TSE-TF-170, CO-LS-PL-180 → T/C-PW SS, CO-IR-TF-160, CO-TSE-TF-170, CO-LS-PL-180, T/C-SW | resources pipe line O.D 32 mm PN 10, in depth 0 to 1.5 m [3350]; pipe line O.D 40 mm PN 10, in depth 0 to 1.5 m [1850]; pipe line O.D 50 mm PN 10, in depth 0 to 1.5 m [250]; Gate valve 50 mm PN16 [7]; Direct Burried Gate valve 40 mm PN16 [12]; Pressure–compensating bubblers 110 Lit/Hr [850]; Flushing Bronze gate valve dia 1.5" inside PVC box [19]; Air release valve 1.5" inside PVC box [19]; Extra flexible pressure compensating on surface inline dripline`s, O.D. is 16.1 mm [12000]; Electrical Solenoid Valve ( 1.5") inside PVC box [12]; Electrical Solenoid Valve ( 2") inside PVC box [7]; Quick coupling valve 1" inside a round valve box 10" size with a manual gate valve, hose swivel and key with all accessories [53]; Advanced Irrigation controller subject to client approval, can connect with Centarl Control system [1]; Decoder cables 12 AWG between valves and controllers, The cables shall be pulled through 32Ø UPVC conduit [3500]; Preparing the irrigation program for the entire system and providing technical services for monitoring and controlling the central irrigation systems [1] → pipe line O.D 32 mm PN 10, in depth 0 to 1.5 m; pipe line O.D 40 mm PN 10, in depth 0 to 1.5 m; pipe line O.D 50 mm PN 10, in depth 0 to 1.5 m; Gate valve 50 mm PN16; Direct Burried Gate valve 40 mm PN16; Pressure compensating bubblers 110 Lit/Hr; Flushing Bronze gate valve dia 1.5" inside PVC box; Air release valve 1.5" inside PVC box; Extra flexible pressure compensating on surface inline dripline`s, O.D. is 16.1 mm; Electrical Solenoid Valve ( 1.5") inside PVC box; Electrical Solenoid Valve ( 2") inside PVC box; Quick coupling valve 1" inside a round valve box 10" size with a manual gate valve, hose swivel and key with all accessories; Advanced Irrigation controller subject to client approval, can connect with Centarl Control system; Decoder cables 12 AWG between valves and controllers, The cables shall be pulled through 32 UPVC conduit; Preparing the irrigation program for the entire system and providing technical services for monitoring and controlling the central irrigation systems; Unskilled Labor [560.11 h]; Electrical Technician [216.03 h]; Plumber [50.61 h]; Carpenter [61.54 h]; Mason [48.96 h]; Steel Fixer [62.55 h]; Skilled Labor [168.82 h] |
| PW11 | **TSE Network** | 2026-12-27 → 2027-01-17 (+21d) | 2027-01-14 → 2027-02-03 (+20d) |  |  |  |  |
| T/C-TSE-10 | Testing and Commissioning of TSE Network | 2026-12-27 → 2027-01-17 (+21d) | 2027-01-14 → 2027-02-03 (+20d) | 16d → 15d | 0.75d → 8.5d |  | resources Depth Between 0m to 1.50m [10]; Depth Between 1.50m to 2.50m [5]; Depth > 2.50m [2]; Depth Between 0m to 1.50m [920]; Depth Between 0m to 1.50m [412.98]; Depth Between 1.50m to 2.50m [45]; Depth > 2.50m [10]; Depth Between 0m to 1.50m [850]; Depth Between 1.50m to 2.50m [260]; Depth > 2.50m [25]; Depth Between 0m to 1.50m [60]; Depth Between 1.50m to 2.50m [40]; Depth > 2.50m [8]; Gate valves dia 50 mm [1]; Gate valves dia 100 mm [14]; Gate valves dia 150 mm [5]; Gate valves dia 200 mm [2]; Air valves with dia 50 mm [1]; Washout valve dia 100 mm [2]; Wash out chamber (2500x 2500mm) [2]; Air valve chamber (1000x 1000 mm) [1]; Flow meter chamber (1500x 3000 mm) [1]; Flow meter dia 150 mm [1]; Glass Fused Bolted (GLS) 1500 m3 Tank with associated accessories & manufacturer recommendation for the foundation [1] → Depth Between 0m to 1.50m; Depth Between 1.50m to 2.50m; Depth > 2.50m; Gate valves dia 50 mm; Gate valves dia 100 mm; Gate valves dia 150 mm; Gate valves dia 200 mm; Air valves with dia 50 mm; Washout valve dia 100 mm; Wash out chamber (2500x 2500mm); Air valve chamber (1000x 1000 mm); Flow meter chamber (1500x 3000 mm); Flow meter dia 150 mm; Glass Fused Bolted (GLS) 1500 m3 Tank with associated accessories & manufacturer recommendation for the foundation; Unskilled Labor [1680.32 h]; Electrical Technician [648.08 h]; Plumber [151.83 h]; Carpenter [184.62 h]; Mason [146.87 h]; Steel Fixer [187.65 h]; Skilled Labor [506.41 h] |
| PW | **Potable Water Network** | 2026-12-27 → 2027-01-28 (+32d) | 2027-01-14 → 2027-02-04 (+21d) |  |  |  |  |
| T/C-PW | Testing and Commissioning of Potable Water Network | 2026-12-27 → 2027-01-28 (+32d) | 2027-01-14 → 2027-02-04 (+21d) | 16d → 6d | 0d → 0.04d | T/C-SW, CO-PW-TF-110, CO-PW-TF-100, CO-PW-TF-120, CO-UB-PS-390, CO-UB-LS-470, CO-UB-LS-480, MS-CF-MV → CO-PW-TF-110, CO-PW-TF-100, CO-PW-TF-120, CO-UB-PS-390, CO-UB-LS-470, CO-UB-LS-480, MS-CF-MV | resources Depth Between 0m to 1.50m [6]; Depth Between 1.50m to 2.50m [6]; Depth > 2.50m [2]; Depth Between 0m to 1.50m [420]; Depth Between 1.50m to 2.50m [280]; Depth > 2.50m [10]; Depth Between 0m to 1.50m [50]; Depth Between 1.50m to 2.50m [10]; Depth > 2.50m [5]; Depth Between 0m to 1.50m [320]; Depth Between 1.50m to 2.50m [1310]; Depth > 2.50m [20]; Gate valves Dia 50 mm [1]; Gate valves Dia 100 mm [12]; Gate valves Dia 150 mm [17]; Gate valves Dia 250 mm [9]; Air valves with Dia 50 mm [1]; Washout valve Dia 100 mm [2]; 3-outlet fire hydrant (2 x 2.5 inch and 1 x 4.5 inch) in the form of a separate dry vacuum cylinder, complete according to drawings. [17]; Wash out chamber (2500x 2500mm) [2]; Air valve chamber (1000x 1000 mm) [1]; Flow meter chamber (1500x 2500 mm) [1]; Flow meter dia 100 mm [1]; Glass Fused Bolted (GLS) 1500 m3 Tank with associated accessories & manufacturer recommendation for the foundation [1] → Depth Between 0m to 1.50m; Depth Between 1.50m to 2.50m; Depth > 2.50m; Gate valves Dia 50 mm; Gate valves Dia 100 mm; Gate valves Dia 150 mm; Gate valves Dia 250 mm; Air valves with Dia 50 mm; Washout valve Dia 100 mm; 3-outlet fire hydrant (2 x 2.5 inch and 1 x 4.5 inch) in the form of a separate dry vacuum cylinder, complete according to drawings.; Wash out chamber (2500x 2500mm); Air valve chamber (1000x 1000 mm); Flow meter chamber (1500x 2500 mm); Flow meter dia 100 mm; Glass Fused Bolted (GLS) 1500 m3 Tank with associated accessories & manufacturer recommendation for the foundation; Unskilled Labor [672.13 h]; Electrical Technician [259.23 h]; Plumber [60.73 h]; Carpenter [73.85 h]; Mason [58.75 h]; Steel Fixer [75.06 h]; Skilled Labor [202.58 h] |
| SW | **Sewage Network** | 2026-11-28 → 2027-01-17 (+50d) | 2026-12-15 → 2027-01-19 (+35d) |  |  |  |  |
| T/C-SW | Testing and Commissioning of Sewage Network | 2026-11-28 → 2027-01-17 (+50d) | 2026-12-15 → 2027-01-19 (+35d) | 15d → 3d | 10d → 0d | T/C-SD, CO-SW-TF-100, CO-SW-TF-210, MS-CF-SW → T/C-SD, CO-SW-TF-100, CO-SW-TF-210, MS-CF-SW, CO-SW-TF-130, CO-SW-TF-110 | resources Depth Between 0m to 1.50m [40]; Depth Between 1.50m to 2.50m [246]; Depth > 2.50m [10]; Depth Between 0m to 1.50m [22]; Depth Between 1.50m to 2.50m [1600]; Depth Between 2.50m to 3.50m [75]; Depth > 3.50m [15]; HDPE Force Main (PE 100, SDR 11, PN 16 bar) DN 160 mm diameter, in trenches depth: 0- 1.5m [25]; HDPE Force Main (PE 100, SDR 11, PN 16 bar) DN 160 mm diameter, in trenches depth: 1.51- 2.5m [40]; Depth: 0 - 1.5m [2]; Depth: 1.51 - 2.5m [35]; Depth: 2.51 - 3.5m [2]; Depth > 3.50m [1] → Depth Between 0m to 1.50m; Depth Between 1.50m to 2.50m; Depth > 2.50m; Depth Between 2.50m to 3.50m; Depth > 3.50m; HDPE Force Main (PE 100, SDR 11, PN 16 bar) DN 160 mm diameter, in trenches depth: 0- 1.5m; HDPE Force Main (PE 100, SDR 11, PN 16 bar) DN 160 mm diameter, in trenches depth: 1.51- 2.5m; Depth: 0 - 1.5m; Depth: 1.51 - 2.5m; Depth: 2.51 - 3.5m; Unskilled Labor [336.06 h]; Electrical Technician [129.62 h]; Plumber [30.37 h]; Carpenter [36.92 h]; Mason [29.37 h]; Steel Fixer [37.53 h]; Skilled Labor [101.29 h] |
| SD | **Storm Drainage Network** | 2026-11-10 → 2027-01-06 (+57d) | 2026-11-28 → 2027-01-16 (+49d) |  |  |  |  |

| ID | Task | Start | Finish | Duration | Total float | Predecessors | Other |
| --- | --- | --- | --- | --- | --- | --- | --- |
| T/C-SD | Testing and Commissioning of Storm Drainage Network | 2026-11-10 → 2027-01-06 (+57d) | 2026-11-28 → 2027-01-16 (+49d) | 15d → 9d | 10d → 0d | CO-SD-ML-TF-100, CO-SD-CB-TF-160, CO-SD-MH-TF-210, CO-SD-PO-110-P2, MS-CF-SD, CO-LS-PL-180 → CO-SD-ML-TF-100, CO-SD-CB-TF-160, CO-SD-MH-TF-210, CO-SD-PO-110-P2, MS-CF-SD, CO-LS-PL-180, CO-SD-CB-TF-130, CO-SD-CB-TF-110, CO-SD-MH-TF-120 | resources Depth Between 0m to 1.50m [95]; Depth Between 1.50m to 2.50m [2819]; Depth > 2.50m [15]; Depth Between 1.50m to 2.50m [548]; Depth Between 2.50m to 3.50m [439]; Depth > 3.50m [15]; Depth Between 2.50m to 3.50m [191]; Depth Between 0m to 1.50m [28]; Depth Between 1.50m to 2.50m [10]; Depth Between 2.50m to 3.50m [94]; Depth > 3.50m [7]; Depth Between 2.50m to 3.50m [121]; Depth Between 3.50m to 4.50m [371]; Depth > 4.50m [15]; Depth Between 3.50m to 4.50m [737]; Depth > 4.50m [25]; MH depth 1.5 - 2.5m [20]; MH depth 2.5 - 3.5m [17]; MH depth > 3.50m [1]; MH depth 2.5 -3.5m [2]; Single Catch Basin 1000mm x 1000mm [197]; Double Catch Basin 1200mm x 2300mm [4] → Depth Between 0m to 1.50m; Depth Between 1.50m to 2.50m; Depth > 2.50m; Depth Between 2.50m to 3.50m; Depth > 3.50m; Depth Between 3.50m to 4.50m; Depth > 4.50m; MH depth 1.5 - 2.5m; MH depth 2.5 - 3.5m; MH depth > 3.50m; MH depth 2.5 -3.5m; Single Catch Basin 1000mm x 1000mm; Double Catch Basin 1200mm x 2300mm; Unskilled Labor [1008.19 h]; Electrical Technician [388.85 h]; Plumber [91.1 h]; Carpenter [110.77 h]; Mason [88.12 h]; Steel Fixer [112.59 h]; Skilled Labor [303.87 h] |
| SL | **Street Lighting Network** | 2027-01-14 → 2027-02-04 (+21d) | 2027-02-03 → 2027-02-11 (+8d) |  |  |  |  |
| T/C-SL | Testing and Commissioning of Street Lighting Network | 2027-01-14 → 2027-02-04 (+21d) | 2027-02-03 → 2027-02-11 (+8d) | 17d → 6d |  | T/C-IR, CO-SL-TF-220, CO-SL-TF-230, CO-SL-TF-200, CO-SL-TF-380, CO-SL-LP-330, MS-CF-SL, T/C-DPO → T/C-IR, CO-SL-TF-220, CO-SL-TF-230, CO-SL-TF-200, CO-SL-TF-380, CO-SL-LP-330, MS-CF-SL, T/C-DPO, T/C-SW | resources Road crossing ducts, 2 ways (2 x 150mm HDPE) [228.69]; Road crossing ducts, 2 ways (2 x 110mm UPVC) [90.85]; Road crossing ducts, 3 ways (3 x 110mm UPVC) [30.19]; 4C-300mm2 CU/XLPE / PVC ARMORED CABLE [70]; 4C-240mm2 CU/XLPE / PVC ARMORED CABLE [40]; 4C-185mm2 CU/XLPE / PVC ARMORED CABLE [40]; 4C-50mm2 CU/XLPE / PVC ARMORED CABLE [150]; 4C-16mm2 CU/XLPE / PVC ARMORED CABLE [3485]; 4C-16MM2 CU/XLPE / PVC CABLE [1395]; 1Cx150sq.mm2,Cu, PVC wire [75]; 1Cx120sq.mm2,Cu, PVC wire [75]; 1Cx95sq.mm,Cu, PVC wire [40]; 1Cx70sq.mm2,Cu, PVC wire [20]; 1Cx25sq.mm2,Cu, PVC wire [75]; 1Cx16sq.mm2,Cu, PVC wire [3485]; 1Cx10sq.mm2,Cu, PVC wire [50]; Supply and installation of KWH meter mounting frame including concrete block for installation of KWH meter [6]; Street Lighting panels LCP (01) [1]; Lighting poles with 1 arm, height of (12) meters, including the power distribution box, cables, and RCC foundation. [39]; Lighting poles with 2 arms, height of (12) meters, including the power distribution box, cables, and RCC foundation. [36]; Street Lighting( LED) Luminaire of Output ? 20,965 lumen complete with control gear and lamp, (129.1) WATT. [111]; Including earthing of lighting poles, masts, feeder pillars, unit substations and LV feeders. [75] → Road crossing ducts, 2 ways (2 x 150mm HDPE); Road crossing ducts, 2 ways (2 x 110mm UPVC); Road crossing ducts, 3 ways (3 x 110mm UPVC); 4C-300mm2 CU/XLPE / PVC ARMORED CABLE; 4C-240mm2 CU/XLPE / PVC ARMORED CABLE; 4C-185mm2 CU/XLPE / PVC ARMORED CABLE; 4C-50mm2 CU/XLPE / PVC ARMORED CABLE; 4C-16mm2 CU/XLPE / PVC ARMORED CABLE; 4C-16MM2 CU/XLPE / PVC CABLE; 1Cx150sq.mm2,Cu, PVC wire; 1Cx120sq.mm2,Cu, PVC wire; 1Cx95sq.mm,Cu, PVC wire; 1Cx70sq.mm2,Cu, PVC wire; 1Cx25sq.mm2,Cu, PVC wire; 1Cx16sq.mm2,Cu, PVC wire; 1Cx10sq.mm2,Cu, PVC wire; Supply and installation of KWH meter mounting frame including concrete block for installation of KWH meter; Street Lighting panels LCP (01); Lighting poles with 1 arm, height of (12) meters, including the power distribution box, cables, and RCC foundation.; Lighting poles with 2 arms, height of (12) meters, including the power distribution box, cables, and RCC foundation.; Street Lighting( LED) Luminaire of Output ? 20,965 lumen complete with control gear and lamp, (129.1) WATT.; Including earthing of lighting poles, masts, feeder pillars, unit substations and LV feeders.; Unskilled Labor [672.13 h]; Electrical Technician [259.23 h]; Plumber [60.73 h]; Carpenter [73.85 h]; Mason [58.75 h]; Steel Fixer [75.06 h]; Skilled Labor [202.58 h] |
| TE | **Telecom Network** | 2027-01-14 → 2027-01-21 (+7d) | 2027-02-03 → 2027-01-24 (-10d) |  |  |  |  |
| T/C-TE | Testing and Commissioning of Telecom Network | 2027-01-14 → 2027-01-21 (+7d) | 2027-02-03 → 2027-01-24 (-10d) | 17d → 3d | 0d → -1d | T/C-SL SS, CO-TE-CTV-TF-110, CO-TE-CTV-TF-120, CO-TE-CTV-TF-130, CO-TE-CTV-TF-140, MS-CF-TE → CO-TE-CTV-TF-110, CO-TE-CTV-TF-120, CO-TE-CTV-TF-130, CO-TE-CTV-TF-140, MS-CF-TE, CO-SL-ES-230, CO-TE-DW-130, T/C-SD, T/C-SW | resources 2-ways ducts, 50mm diameter [516]; 6-ways ducts, 110mm diameter [2082]; 9-ways ducts, 6 x 160mm & 2 x 100mm [3054]; Manhole Type 2 (1600 x 1600 x 2000) [25]; Manhole Type 3 (1200 x 1200 x 2000) [31]; 6 PVC ducts 150x200 mm (60mm diameter) [162]; 6 PVC ducts 600x800 mm (120mm diameter) [282]; 6 PVC ducts 800x800 mm (170mm diameter) [402]; NVR Server with RAID (5, 6 or 10) to record all cameras storage 80TB with all hardware / software / licenses etc. [2]; VMS Server with RAID (5, 6 or 10) complete Hardware / Software with one Color Laser Printer and all associated [2]; Licenses for Cameras, Workstations and Keyboards [1]; Work Station (MMI with two monitors each, for Monitoring for CCTV & ACS) [1]; Keyboard with joystick for CCTV with all accessories as per specification [1]; Pole mounted IP( PoE) Fixed camera, 5MP,IP 66, IR illumination, 3-8mm varifocal, auto iris lens type [44]; Wall mounted IP( PoE) Fixed camera, 5MP,IP 66, IR illumination, 3-8mm varifocal, auto iris lens type [78]; 5MP Dome camera ceiling Mounted IP (PoE) indoor [17]; 5MP PTZ Multi Sensor Camera IP(PoE) 360 Degree View Outdoor with accessories (IP 66) [7]; 8 Port Industrial PoE Switch 10/100BaseT (0 deg to +70 deg. Celsius) [12]; Filed Equipment cabinet (FEC), with fan and ventilation, NEMEX 4X ,door, minimum size (600x600x400mm) [12]; 6 PVC ducts 200x150 mm (60mm diameter) [138]; 2-ways ducts, 50mm diameter [498]; IP Phone Communication server (hot standby) 50 Port equipped, Gateway, Gatekeeper, H.323, SIP, redundant Power etc. [3]; IP Phone Voice gateway [1]; Voice IP Phone [1]; NMS Server for IP phone and NETWORK Elements [1]; NMS Workstation [1]; Firm Ware, software & licenses [1]; Data Cable [1]; Power Cable [1]; Layer 3, 24 Port non-PoE switch10/1000BaseT/LX (-40 deg to +70 deg. Celsius), stack module and associated [2]; Layer 2, 24 Port non-PoE switch10/1000BaseT (-40 deg to +70 deg. Celsiu [6]; Network Management System Server [2]; Network Management System workstation [1]; 42U rack dimension (W x H x L) 800 x 2000 x 1000 mm [2]; 12U rack dimension (W x H x L) 600 x 625 x 600 mm [1]; 06C Optical Fiber SM [1820]; 48C Optical Fiber SM [5800]; 48 Core Splice Closure [7]; Optical fiber patch cord 5m [24]; Data Cable (STP CAT 6A) [10320]; 3C Power Cable armored 1.5mm2 [10320]; 3C Power Cable armored 2.5 mm2 [10320]; UTP CAT6A Patch Cord 1m/3m/5m [23]; Access Control Unit [5]; Access Card Reader [5]; Magnetic Lock [5]; Break Glass [4]; Exit Push button [5]; Door Sensor [5]; Biometrics Reader [8]; Smart Card Printer [1]; Card Issue Work Station [1]; Photographic Camera with stand [1]; Interface modules with CCTV, Fire and other systems [1] → 2-ways ducts, 50mm diameter; 6-ways ducts, 110mm diameter; 9-ways ducts, 6 x 160mm & 2 x 100mm; Manhole Type 2 (1600 x 1600 x 2000); Manhole Type 3 (1200 x 1200 x 2000); 6 PVC ducts 150x200 mm (60mm diameter); 6 PVC ducts 600x800 mm (120mm diameter); 6 PVC ducts 800x800 mm (170mm diameter); NVR Server with RAID (5, 6 or 10) to record all cameras storage 80TB with all hardware / software / licenses etc.; VMS Server with RAID (5, 6 or 10) complete Hardware / Software with one Color Laser Printer and all associated; Licenses for Cameras, Workstations and Keyboards; Work Station (MMI with two monitors each, for Monitoring for CCTV & ACS); Keyboard with joystick for CCTV with all accessories as per specification; Pole mounted IP( PoE) Fixed camera, 5MP,IP 66, IR illumination, 3-8mm varifocal, auto iris lens type; Wall mounted IP( PoE) Fixed camera, 5MP,IP 66, IR illumination, 3-8mm varifocal, auto iris lens type; 5MP Dome camera ceiling Mounted IP (PoE) indoor; 5MP PTZ Multi Sensor Camera IP(PoE) 360 Degree View Outdoor with accessories (IP 66); 8 Port Industrial PoE Switch 10/100BaseT (0 deg to +70 deg. Celsius); Filed Equipment cabinet (FEC), with fan and ventilation, NEMEX 4X ,door, minimum size (600x600x400mm); 6 PVC ducts 200x150 mm (60mm diameter); IP Phone Communication server (hot standby) 50 Port equipped, Gateway, Gatekeeper, H.323, SIP, redundant Power etc.; IP Phone Voice gateway; Voice IP Phone; NMS Server for IP phone and NETWORK Elements; NMS Workstation; Firm Ware, software & licenses; Data Cable; Power Cable; Layer 3, 24 Port non-PoE switch10/1000BaseT/LX (-40 deg to +70 deg. Celsius), stack module and associated; Layer 2, 24 Port non-PoE switch10/1000BaseT (-40 deg to +70 deg. Celsiu; Network Management System Server; Network Management System workstation; 42U rack dimension (W x H x L) 800 x 2000 x 1000 mm; 12U rack dimension (W x H x L) 600 x 625 x 600 mm; 06C Optical Fiber SM; 48C Optical Fiber SM; 48 Core Splice Closure; Optical fiber patch cord 5m; Data Cable (STP CAT 6A); 3C Power Cable armored 1.5mm2; 3C Power Cable armored 2.5 mm2; UTP CAT6A Patch Cord 1m/3m/5m; Access Control Unit; Access Card Reader; Magnetic Lock; Break Glass; Exit Push button; Door Sensor; Biometrics Reader; Smart Card Printer; Card Issue Work Station; Photographic Camera with stand; Interface modules with CCTV, Fire and other systems; Unskilled Labor [336.06 h]; Electrical Technician [129.62 h]; Plumber [30.37 h]; Carpenter [36.92 h]; Mason [29.37 h]; Steel Fixer [37.53 h]; Skilled Labor [101.29 h] |
| MV | **Medium Voltage Network** | 2027-01-14 → 2027-01-21 (+7d) | 2027-02-03 → 2027-02-06 (+3d) |  |  |  |  |
| T/C-MV | Testing and Commissioning of Medium Voltage Network | 2027-01-14 → 2027-01-21 (+7d) | 2027-02-03 → 2027-02-06 (+3d) | 17d → 14d | 0d → -1d |  | resources Excavation for Trench size 40cm wide and 80cm deep (for 1 cable) [200.56]; Excavation for Trench Size 60cm wide and 80cm deep (for 2 cables) [100.1]; Excavation for Trench Size 90cm wide and 80cm deep (for 3 cables) [139.32]; Excavation for Trench Size 180cm wide and 80cm deep (for 6 cables) [61.92]; Excavation for Trench Size 210 cm wide and 80cm deep (for 7 cables) [72.24]; Excavation for Trench Size 240cm wide and 80cm deep (for 8 cables) [441.7]; Duct bank for (33) cables [126]; Duct bank for (21) cables [200]; Duct bank for (15) cables [60.09]; HV Cable Road Crossing [64.15] → Excavation for Trench size 40cm wide and 80cm deep (for 1 cable); Excavation for Trench Size 60cm wide and 80cm deep (for 2 cables); Excavation for Trench Size 90cm wide and 80cm deep (for 3 cables); Excavation for Trench Size 180cm wide and 80cm deep (for 6 cables); Excavation for Trench Size 210 cm wide and 80cm deep (for 7 cables); Excavation for Trench Size 240cm wide and 80cm deep (for 8 cables); Duct bank for (33) cables; Duct bank for (21) cables; Duct bank for (15) cables; HV Cable Road Crossing; Unskilled Labor [1568.3 h]; Electrical Technician [604.88 h]; Plumber [141.7 h]; Carpenter [172.31 h]; Mason [137.07 h]; Steel Fixer [175.14 h]; Skilled Labor [472.69 h] |
| RD | **Road Works** | 2027-02-03 → 2027-02-15 (+12d) | 2027-02-22 → 2027-02-21 (-1d) |  |  |  |  |
| T/C-RD | Testing and Commissioning of Road Works | 2027-02-03 → 2027-02-15 (+12d) | 2027-02-22 → 2027-02-21 (-1d) | 13.75d → 4d | 0d → -1.5d | T/C-MV, T/C-TE, T/C-SL, T/C-SD, CO-RD-B-160, CO-RD-PV-160, CO-RD-PV-170, CO-RD-F-RM-180, CO-RD-F-TS-120, CO-RD-B-130, CO-RD-B-140, CO-RD-PV-140, CO-RD-PV-150, CO-RD-F-RM-170, CO-RD-F-TS-110, CO-RD-B-110, CO-RD-B-120, CO-RD-PV-120, CO-RD-PV-130, CO-RD-F-RM-160 FF, CO-RD-F-TS-100 FF, MS-CF-PW, MS-CF-IR, MS-CF-TSE → T/C-MV, T/C-TE, T/C-SD, CO-RD-B-160, CO-RD-PV-160, CO-RD-PV-170, CO-RD-F-RM-180, CO-RD-F-TS-120, CO-RD-B-130, CO-RD-B-140, CO-RD-PV-140, CO-RD-PV-150, CO-RD-F-RM-170, CO-RD-F-TS-110, CO-RD-B-110, CO-RD-B-120, CO-RD-PV-120, CO-RD-PV-130, CO-RD-F-RM-160 FF, CO-RD-F-TS-100 FF, MS-CF-PW, MS-CF-IR, MS-CF-TSE | resources Excavations (including Roads , Plots and Pond) [502417]; Embankments to the Site and Roads (including Roads , Plots and Pond) [314650]; Subgrade [2963]; Aggregate base course [1482]; Bituminous base course (Grading I - Class A), including Prime Coat (MC1) [494]; Bituminous concrete wearing course, (Grading I - Class A), including tack coat (RC2) [494]; Precast Concrete Curbstone 150X300X900 Type (K1-A) [7267]; Precast Concrete Curbstone 100X200X500 Type (K4) [5638]; Precast Concrete Curbstone 150X300X500 Type (K1-B) [2210]; Precast Concrete Curbstone Type (K1-C) [99]; Flush Kerb Type (D) [188]; 60mm thick [27926]; 80mm thick [38996.8]; Retroreflective Thermoplastic White Traffic lines [965]; Retroreflective Thermoplastic Yellow, Traffic lines [1445]; Traffic signs, ground mounted, Sheet Aluminum, (breakaway) Single post IPE, with all accessories [99]; Precast Concrete Blister Warning Tactile Paver Brown Finish 300*300*60mm [64] → Excavations (including Roads , Plots and Pond); Embankments to the Site and Roads (including Roads , Plots and Pond); Subgrade; Aggregate base course; Bituminous base course (Grading I - Class A), including Prime Coat (MC1); Bituminous concrete wearing course, (Grading I - Class A), including tack coat (RC2); Precast Concrete Curbstone 150X300X900 Type (K1-A); Precast Concrete Curbstone 100X200X500 Type (K4); Precast Concrete Curbstone 150X300X500 Type (K1-B); Precast Concrete Curbstone Type (K1-C); Flush Kerb Type (D); 60mm thick; 80mm thick; Retroreflective Thermoplastic White Traffic lines; Retroreflective Thermoplastic Yellow, Traffic lines; Traffic signs, ground mounted, Sheet Aluminum, (breakaway) Single post IPE, with all accessories; Precast Concrete Blister Warning Tactile Paver Brown Finish 300*300*60mm; Unskilled Labor [448.09 h]; Electrical Technician [172.82 h]; Plumber [40.49 h]; Carpenter [49.23 h]; Mason [39.16 h]; Steel Fixer [50.04 h]; Skilled Labor [135.05 h] |
| 1 | **Utility Buildings** | 2026-11-10 → 2027-01-04 (+55d) | 2027-02-22 → 2027-02-03 (-19d) |  |  |  |  |
| T/C-DPO | Testing and Commissioning of Storm Drainage Ponds | 2026-11-10 → 2027-01-04 (+55d) | 2026-12-15 → 2027-01-04 (+20d) | 30d → 0d |  |  | resources Finished grouted riprap for Pond 300mm as per drawings [3720] → Finished grouted riprap for Pond 300mm as per drawings |
| T/C-CTV | Testing and Commissioning of Guard Room and Fence | 2027-01-03 → 2027-01-23 (+20d) | 2027-02-07 → 2027-01-23 (-15d) | 30d → 0d | 10.75d → 24d |  | resources 100 mm thickness lean concrete under the foundation [1500]; Foundation [7310]; Slab on Grade [20]; Walls [1960]; Beams [288]; Columns [372]; Slabs [31]; Lightweight Concrete Roof insulation as per Architect's specification [155]; Common brickwork. 300mm thick; vertical straight wall complete with accessories. [8775]; Insulated brickwork. with expanded polystyrene 200mm thick; vertical straight wall complete with accessories . [102]; Common brickwork. 150mm thick; vertical straight wall complete with accessories. [180]; Two Layers of Bituminous Coating [39170]; 20x20 Approved Polysulfide Joint Sealant [415]; 2 perpendicular layers of cold bitumen coats [155]; 2 layer of 4mm HDPE membrane, 2 perpendicular layers cold bitumen coats [155]; 1 layer EPOXY Paint 300 micron [155]; Membrane fully bonded to prime deck and upstand [155]; Geotextile Filter membrane uv resistance [155]; 85mm thick thermal insulation [155]; 1.5mm thick epdm waterproofing membrane [155]; CW01 - 4500 mm width x 3700 mm height [1]; CW02 - 4500 mm width x 3700 mm height [1]; CW03 - 4500 mm width x 3700 mm height [1]; CW04 - 4500 mm width x 3700 mm height [1]; CW05 - 7500 mm width x 4250 mm height [1]; CW06 - 7500 mm width x 4250 mm height [1]; W01 - 1000 mm width x 2000 mm height [1]; W02 - 2000 mm width x 2000 mm height [2]; W03 - 2000 mm width x 1000 mm height [3]; D2 - 900 mm x 2200 mm height temper door [7]; D3 - 950 mm x 2000 mm height temper door [2]; Supply and install 33mm thick Lexan cladding blue complete with necessary framings [1114.96]; Supply and install 50mm thick random cut stone cladding complete with 600m [14316.8]; Supply and install External plastering to walls and columns min. 15mm thick with cement mortar of specified grade including [16765]; Supply and install 2 coats of weatherproof paint at walls including one prime coat and [16765]; Supply and install 300*300mm terrazzo tiles with 150mm high skirting at perimeter with approv [133]; Supply and install 300*300mm glazed ceramic wall tiles on cement mortar and including rough [95]; Supply and install internal plastering and 2 coats of acrylic paint at walls includin [216]; Supply and install 300*300mm glazed ceramic wall tiles on cement mortar and including rough and smooth p [12]; Supply and install 600*600mm porcelain tiles with approved quality on 30 mm mortar inclu [125]; Supply and install 12.5mm thk, gypsum board suspended ceiling including s [5]; Guard room coping 350mm [57]; Guard room coping 450mm [27]; Stone coping 500mm [2555]; Stone coping 525mm [1224]; Supply and install MODON Signage with Logo Type 1 [24]; Supply and install MODON Signage Type 2 [24]; Supply and install "Triangle Style" signage [55]; Office Chairs [4]; Office Tables [4]; Guard Stand [2]; Magnetic Control Access barrier, Automatic Vehicular Barriers to be installed on ground with magnetic access [6]; Supply and install Hand Wash Basin with Water Tap, angle valve, P-trap connected to 50mm diameter s [3]; Supply and install paper towel dispenser, surface mounted, satin finish stainless steel as per approv [3]; Supply and install mirror, size 460*910mm as per approved sample including frames, backing and all accessories to complete. [3]; Supply and install towel ring , surface mounted, satin finish stainless steel as per approved sample including accessories. [3]; Kitchen sink with single bowl with hot/cold water mixer. [3]; Supply and install Base mounted flush tank water Western water closet system with lid connected to 110mm soil pipe [2]; Gate Valves [2]; Slow Closing Valve [2]; 1 meter length 10mm diameter Flexible Hose with insulated handle complete with fork support, index push, vacuum breaker [2]; 50mm diameter [37]; 75mm diameter [4]; 80mm diameter [11]; 100mm diameter [2]; 110mm diameter [12]; 13mm diameter [1]; 15mm diameter [1]; 20mm diameter [1]; 25mm diameter [19]; 32mm diameter [35]; 40mm diameter [12]; 50mm diameter [1]; 20mm diameter [5]; 25mm diameter [12]; Isolation Valve Size 20 [3]; Isolation Valve Size 25 [3]; Isolation Valve Size 32 [5]; Isolation Valve Size 40 [1]; Isolation Valve Size 50 [1]; 20 mm diameter spray head for cold water supply [3]; Supply and install Electric Water Heater set with connection [3]; Water meter complete with accessories. [3]; Roof drain [3]; Vent on a roof to exhaust air [3]; Floor drain 100x80mm [4]; Gully trap 300x300 mm [3]; inspection chamber, size 800x900x1000 [3]; Mini split actual capacity 2 Ton [1]; Ducted split actual capacity 4 Ton [2]; Supply, fabricate, install and testing factory fabricated metal ducts with flanges complete with supports, vanes, [40]; Supplying, installation testing & commissioning of external insulation on ducts [40]; Supply, fix, testing and commissioning of exhaust air/fresh air louvers of powder coated extruded aluminium construction. [1]; Providing, fixing, testing and commissioning of powder coated extruded aluminum sections grills and diffusers with dampers. [2]; Air Grills 150mm x150mm [2]; Air Diffuser 600mm x 600mm [6]; Supply, Installation & Testing of 2 hours Fire rated system for closing the openings between roo [1]; 4.5 KG CO2 Type Fire Extinguishers [4]; 6 KG ABC Type Fire Extinguishers [4]; Floor cleanout, size 75 mm diameter [2]; Floor cleanout, size 110 mm diameter [4]; GRP water tanks capacity of each 1000 liter complete with all fittings, all valves and concrete pad [3]; Junction Box for lighting fixture [136]; Trench excavation to receive 2 nos 50mm diameter PVC Conduit, sand bedding and embedded with sa [3505]; Supply, Install, fixings, testing and commissioning 80W LED Projector waterproof DJ effect light including c [3]; Earth Pit [17]; Grounding rod 20mmX3m [9]; Grounding rod with Pit 20mmX3m [4]; Earthing Bar [3]; 120mm2 Tinned copper wire [200]; Guard Room 1 [1]; Guard Room 2 [1]; Guard Room 3 [1]; 30A, 2P AC Disconnect Switch [11]; 20A Duplex Receptacle Floor Mounted [12]; Twin Socket outlet [6]; Twin Socket outlet, Weather Proof [5]; Single gang Lighting switch [6]; 2way Single gang Lighting switch [2]; 36W LED linear Pendant lighting [14]; 36W LED Emergency linear Pendant lighting [6]; 13W recess mounted LED down light fitting [8]; 13W recess emergency mounted LED down light fitting with 1.5 Hr Battery [6]; 10.4W LED Exit light with 1.5 Hr Battery [3]; 4mm2 Cu./FRLSZH Cable [600]; 6mm2 Cu./FRLSZH Cable [110]; IR Intrusion Detection System Quad Beams (Tx & Rx) (SL-350 QDM) [60]; Control cable [3110]; CAT6A cable [3110]; Field Equipment Cabinet enclosed outdoor complete with precast concrete footing, suitable for parame [19]; Supply and install 800mm x 800mm x 800mm height concrete handhole with bituminous paint all aroun [19]; 800mm depth minimum Trench excavation to receive 3 nos 50mm diameter PVC Conduit with spacer, sand bedding an [1500]; Hot dipped galvanized cable conduits for CAT6A cable and Control Cables embedded to wall [420]; 8 Port Industrial PoE Switch 10/100BaseT (0 deg to +70 deg. Celsius) [31]; 06C Optical Fiber SM [2505]; 48C Optical Fiber SM [7010]; 48 Core Splice Closure [7]; Boom Barrier at Security Guard Room [6]; Pedestrian turnstile at Security Guard Room [6]; Access Control Unit [3]; Access Card Reader [3]; Magnetic Lock [3]; Break Glass [3]; Exit Push button [3]; Door Sensor [3]; Biometrics Reader [2]; Pole/Bollard mounted IP( PoE), Automatic Number Plate Recognition (ANPR, camera, 5MP,IP 66, IR illumin [6]; 12U rack dimension (W x H x L) 600 x 625 x 600 mm [1]; 400V, 3PH, 60Hz lighting control panel (LCP-02) [1]; 38W, 230V, 1PH, 60Hz fence, led linear uplight lighting, IP66 [136]; 4C-16mm2 CU/XLPE/PVC direct buried armored cable [1300]; 4C-10mm2 CU/XLPE/PVC direct buried armored cable [850]; 16mm2 CU/PVC wire [1300]; 10mm2 CU/PVC wire [850]; 4C-16mm2 CU/XLPE/PVC direct buried armored cable [4080]; 16mm2 CU/PVC wire [4080]; Fire Alarm Control panel with fire alarm zoning with Mimic panel with fire alarm zoning [4]; Main Fire Alarm Control panel with fire alarm zoning with Mimic panel with fire alarm zoning [1]; Supply and installation of the addressable manual call point with operation safety glass breaking and pushbutton [17]; Supply and installation of the photoelectric heat & smoke detector with base [41]; Sounder With Beacon [20]; Addressable Control module for Sounders [20]; Addressable Control module for HVAC System [2]; Addressable Monitor module for HVAC System [2]; 2C x 1.5 Sqm FR Rated Armored - Cable For Loop Wiring [1800]; DACT (Auto - Dailer) for 24x7 Civil Defence [1]; Transmission Communication cable - Fiber Optics 12Core [2500]; Transmission Communication cable - Ethernet Cable [500]; Supply, install to site and installation of power supply system for fire alarm control panel [1]; Supply, install to site and installation of power cable [1600]; Fire Fighter’s Telephone Centre [1]; Fireman’s Telephone Jack [2]; Voice Command Center [1] → 100 mm thickness lean concrete under the foundation; Foundation; Slab on Grade; Walls; Beams; Columns; Slabs; Lightweight Concrete Roof insulation as per Architect's specification; Common brickwork. 300mm thick; vertical straight wall complete with accessories.; Insulated brickwork. with expanded polystyrene 200mm thick; vertical straight wall complete with accessories .; Common brickwork. 150mm thick; vertical straight wall complete with accessories.; Two Layers of Bituminous Coating; 20x20 Approved Polysulfide Joint Sealant; 2 perpendicular layers of cold bitumen coats; 2 layer of 4mm HDPE membrane, 2 perpendicular layers cold bitumen coats; 1 layer EPOXY Paint 300 micron; Membrane fully bonded to prime deck and upstand; Geotextile Filter membrane uv resistance; 85mm thick thermal insulation; 1.5mm thick epdm waterproofing membrane; CW01 - 4500 mm width x 3700 mm height; CW02 - 4500 mm width x 3700 mm height; CW03 - 4500 mm width x 3700 mm height; CW04 - 4500 mm width x 3700 mm height; CW05 - 7500 mm width x 4250 mm height; CW06 - 7500 mm width x 4250 mm height; W01 - 1000 mm width x 2000 mm height; W02 - 2000 mm width x 2000 mm height; W03 - 2000 mm width x 1000 mm height; D2 - 900 mm x 2200 mm height temper door; D3 - 950 mm x 2000 mm height temper door; Supply and install 33mm thick Lexan cladding blue complete with necessary framings; Supply and install 50mm thick random cut stone cladding complete with 600m; Supply and install External plastering to walls and columns min. 15mm thick with cement mortar of specified grade including; Supply and install 2 coats of weatherproof paint at walls including one prime coat and; Supply and install 300*300mm terrazzo tiles with 150mm high skirting at perimeter with approv; Supply and install 300*300mm glazed ceramic wall tiles on cement mortar and including rough; Supply and install internal plastering and 2 coats of acrylic paint at walls includin; Supply and install 300*300mm glazed ceramic wall tiles on cement mortar and including rough and smooth p; Supply and install 600*600mm porcelain tiles with approved quality on 30 mm mortar inclu; Supply and install 12.5mm thk, gypsum board suspended ceiling including s; Guard room coping 350mm; Guard room coping 450mm; Stone coping 500mm; Stone coping 525mm; Supply and install MODON Signage with Logo Type 1; Supply and install MODON Signage Type 2; Supply and install "Triangle Style" signage; Office Chairs; Office Tables; Guard Stand; Magnetic Control Access barrier, Automatic Vehicular Barriers to be installed on ground with magnetic access; Supply and install Hand Wash Basin with Water Tap, angle valve, P-trap connected to 50mm diameter s; Supply and install paper towel dispenser, surface mounted, satin finish stainless steel as per approv; Supply and install mirror, size 460*910mm as per approved sample including frames, backing and all accessories to complete.; Supply and install towel ring , surface mounted, satin finish stainless steel as per approved sample including accessories.; Kitchen sink with single bowl with hot/cold water mixer.; Supply and install Base mounted flush tank water Western water closet system with lid connected to 110mm soil pipe; Gate Valves; Slow Closing Valve; 1 meter length 10mm diameter Flexible Hose with insulated handle complete with fork support, index push, vacuum breaker; 50mm diameter; 75mm diameter; 80mm diameter; 100mm diameter; 110mm diameter; 13mm diameter; 15mm diameter; 20mm diameter; 25mm diameter; 32mm diameter; 40mm diameter; Isolation Valve Size 20; Isolation Valve Size 25; Isolation Valve Size 32; Isolation Valve Size 40; Isolation Valve Size 50; 20 mm diameter spray head for cold water supply; Supply and install Electric Water Heater set with connection; Water meter complete with accessories.; Roof drain; Vent on a roof to exhaust air; Floor drain 100x80mm; Gully trap 300x300 mm; inspection chamber, size 800x900x1000; Mini split actual capacity 2 Ton; Ducted split actual capacity 4 Ton; Supply, fabricate, install and testing factory fabricated metal ducts with flanges complete with supports, vanes,; Supplying, installation testing & commissioning of external insulation on ducts; Supply, fix, testing and commissioning of exhaust air/fresh air louvers of powder coated extruded aluminium construction.; Providing, fixing, testing and commissioning of powder coated extruded aluminum sections grills and diffusers with dampers.; Air Grills 150mm x150mm; Air Diffuser 600mm x 600mm; Supply, Installation & Testing of 2 hours Fire rated system for closing the openings between roo; 4.5 KG CO2 Type Fire Extinguishers; 6 KG ABC Type Fire Extinguishers; Floor cleanout, size 75 mm diameter; Floor cleanout, size 110 mm diameter; GRP water tanks capacity of each 1000 liter complete with all fittings, all valves and concrete pad; Junction Box for lighting fixture; Trench excavation to receive 2 nos 50mm diameter PVC Conduit, sand bedding and embedded with sa; Supply, Install, fixings, testing and commissioning 80W LED Projector waterproof DJ effect light including c; Earth Pit; Grounding rod 20mmX3m; Grounding rod with Pit 20mmX3m; Earthing Bar; 120mm2 Tinned copper wire; Guard Room 1; Guard Room 2; Guard Room 3; 30A, 2P AC Disconnect Switch; 20A Duplex Receptacle Floor Mounted; Twin Socket outlet; Twin Socket outlet, Weather Proof; Single gang Lighting switch; 2way Single gang Lighting switch; 36W LED linear Pendant lighting; 36W LED Emergency linear Pendant lighting; 13W recess mounted LED down light fitting; 13W recess emergency mounted LED down light fitting with 1.5 Hr Battery; 10.4W LED Exit light with 1.5 Hr Battery; 4mm2 Cu./FRLSZH Cable; 6mm2 Cu./FRLSZH Cable; IR Intrusion Detection System Quad Beams (Tx & Rx) (SL-350 QDM); Control cable; CAT6A cable; Field Equipment Cabinet enclosed outdoor complete with precast concrete footing, suitable for parame; Supply and install 800mm x 800mm x 800mm height concrete handhole with bituminous paint all aroun; 800mm depth minimum Trench excavation to receive 3 nos 50mm diameter PVC Conduit with spacer, sand bedding an; Hot dipped galvanized cable conduits for CAT6A cable and Control Cables embedded to wall; 8 Port Industrial PoE Switch 10/100BaseT (0 deg to +70 deg. Celsius); 06C Optical Fiber SM; 48C Optical Fiber SM; 48 Core Splice Closure; Boom Barrier at Security Guard Room; Pedestrian turnstile at Security Guard Room; Access Control Unit; Access Card Reader; Magnetic Lock; Break Glass; Exit Push button; Door Sensor; Biometrics Reader; Pole/Bollard mounted IP( PoE), Automatic Number Plate Recognition (ANPR, camera, 5MP,IP 66, IR illumin; 12U rack dimension (W x H x L) 600 x 625 x 600 mm; 400V, 3PH, 60Hz lighting control panel (LCP-02); 38W, 230V, 1PH, 60Hz fence, led linear uplight lighting, IP66; 4C-16mm2 CU/XLPE/PVC direct buried armored cable; 4C-10mm2 CU/XLPE/PVC direct buried armored cable; 16mm2 CU/PVC wire; 10mm2 CU/PVC wire; Fire Alarm Control panel with fire alarm zoning with Mimic panel with fire alarm zoning; Main Fire Alarm Control panel with fire alarm zoning with Mimic panel with fire alarm zoning; Supply and installation of the addressable manual call point with operation safety glass breaking and pushbutton; Supply and installation of the photoelectric heat & smoke detector with base; Sounder With Beacon; Addressable Control module for Sounders; Addressable Control module for HVAC System; Addressable Monitor module for HVAC System; 2C x 1.5 Sqm FR Rated Armored - Cable For Loop Wiring; DACT (Auto - Dailer) for 24x7 Civil Defence; Transmission Communication cable - Fiber Optics 12Core; Transmission Communication cable - Ethernet Cable; Supply, install to site and installation of power supply system for fire alarm control panel; Supply, install to site and installation of power cable; Fire Fighter s Telephone Centre; Fireman s Telephone Jack; Voice Command Center |
| T/C-SPS | Testing and Commissioning of Sewage Pump Stations& soft scape and planting work | 2027-01-14 → 2027-02-03 (+20d) | 2027-02-22 → 2027-02-03 (-19d) | 30d → 0d | 0.75d → 12.5d | T/C-TSE-10, CO-UB-PS-390 → T/C-TSE-10, CO-UB-PS-390, CO-UB-PS-380, CO-UB-PS-360, CO-UB-PS-350, CO-UB-PS-340, CO-UB-PS-370, CO-UB-PS-330, CO-UB-PS-310, CO-UB-PS-290, CO-UB-PS-300, CO-UB-PS-320, CO-UB-PS-280, CO-UB-PS-270, CO-UB-PS-260, CO-UB-PS-250, CO-UB-PS-240 | resources Price [1238347 SAR] → Price |
| 1 | **Handing over and close out** | 2026-12-15 → 2027-01-04 (+20d) | 2027-02-22 → 2027-02-24 (+2d) |  |  |  |  |
| 2 | **As-Built** | 2026-12-15 → 2027-01-04 (+20d) | 2027-02-09 → 2027-02-24 (+15d) |  |  |  |  |
| HO-130 | Submission As-Built Drawing For Pond | 2026-12-15 → 2027-01-04 (+20d) | 2026-12-31 → 2027-01-19 (+19d) |  | 42.75d → 26d | T/C-DPO → T/C-DPO, CO-SD-PO-110-P2, CO-SD-PO-110-P1 |  |
| HO-100 | Submission As-Built Drawing For Sewage Network | 2026-12-15 → 2027-01-20 (+36d) | 2026-12-31 → 2027-02-04 (+35d) |  | 42.75d → 12d | T/C-SW → T/C-SW, CO-SW-TF-210, CO-SW-TF-130, CO-SW-TF-110, CO-SW-TF-100 |  |
| HO-160 | Submission As-Built Drawing For Telecom Network | 2027-01-14 → 2027-01-25 (+11d) | 2027-01-28 → 2027-02-07 (+10d) |  | 18.75d → 10d | T/C-TE SS → T/C-TE, CO-TE-CTV-TF-110, CO-TE-CTV-TF-120, CO-TE-CTV-TF-130, CO-TE-CTV-TF-140 |  |
| HO-210 | Submission As-Built Drawing For Pump station | 2027-01-14 → 2027-02-03 (+20d) | 2027-01-28 → 2027-02-04 (+7d) | 12d → 1d | 18.75d → 12.5d | T/C-SPS SS → T/C-SPS, CO-UB-PS-390, CO-UB-PS-380, CO-UB-PS-360, CO-UB-PS-350, CO-UB-PS-370, CO-UB-PS-330, CO-UB-PS-310, CO-UB-PS-300, CO-UB-PS-290, CO-UB-PS-320, CO-UB-PS-280 |  |
| HO-180 | Submission As-Built Drawing For Irrigation Network | 2026-12-27 → 2027-02-03 (+38d) | 2027-01-10 → 2027-02-21 (+42d) |  | 34.75d → 1.04d | T/C-IR SS → T/C-IR, CO-IR-TF-160 |  |
| HO-190 | As-Built Drawing For Potable Water Network | 2026-12-27 → 2027-02-04 (+39d) | 2027-01-10 → 2027-02-22 (+43d) |  | 34.75d → 0.04d | T/C-PW SS → T/C-PW, CO-PW-TF-100, CO-PW-TF-110, CO-PW-TF-120 |  |
| HO-170 | Submission As-Built Drawing For Medium Voltage Network | 2027-01-14 → 2027-02-07 (+24d) | 2027-01-28 → 2027-02-24 (+27d) |  | 18.75d → -1d | T/C-MV SS → T/C-MV, CO-MV-TF-220 |  |
| HO-150 | Submission As-Built Drawing For Street Lighting Network | 2027-01-14 → 2027-02-13 (+30d) | 2027-01-28 → 2027-02-22 (+25d) | 12d → 7d | 18.75d → 0d | T/C-SL SS → T/C-SL, CO-SL-LP-330, CO-SL-TF-200, CO-SL-TF-220, CO-SL-TF-230, CO-SL-TF-380, CO-SL-ES-220, CO-SL-ES-230 |  |
| HO-140 | Submission As-Built Drawing For Roads Network | 2027-02-03 → 2027-02-21 (+18d) | 2027-02-09 → 2027-02-24 (+15d) | 5d → 3d | 8.75d → -1.5d | T/C-RD SS → T/C-RD, CO-RD-B-150, CO-RD-B-160, CO-RD-PV-160, CO-RD-PV-170, CO-RD-F-RM-180, CO-RD-F-TS-120, CO-RD-B-130, CO-RD-B-140, CO-RD-PV-140, CO-RD-PV-150, CO-RD-F-RM-170, CO-RD-F-TS-110, CO-RD-B-110, CO-RD-B-120, CO-RD-PV-120, CO-RD-PV-130, CO-RD-F-RM-160 SS, CO-RD-F-TS-100 SS |  |
| 1 | **De-Mobilization Works** | 2027-02-13 → 2027-02-15 (+2d) |  |  |  |  |  |
| HO-230 | Remove Temporary Car Shades |  |  |  | 0d → 0.5d | T/C-RD SS, T/C-RD FF → T/C-RD SS, T/C-MV, T/C-TE, T/C-SL, T/C-SD, T/C-SW, T/C-PW, T/C-TSE-10, T/C-IR |  |
| 3 | **Handing Over** | 2027-02-13 → 2027-02-21 (+8d) | 2027-02-22 → 2027-02-24 (+2d) |  |  |  |  |
| HO-250 | Review B.O.Q Qty. to ensure compliance with the actual status | 2027-02-13 → 2027-02-21 (+8d) | 2027-02-22 → 2027-02-24 (+2d) | 7d → 3d | 0d → -1.5d | T/C-RD SS, T/C-RD FF → T/C-RD, T/C-RD FF, T/C-MV, T/C-TE, T/C-SL, T/C-SD, T/C-SW, T/C-PW, T/C-TSE-10, T/C-IR |  |

## Version 3 (data date 2026-10-06, saved 2026-10-05, file MOD3-3147-BL0-R0-6UPDATE 06-10-2026.xer)

Note of the change: Renumber project folders 01–23 in order (after removing projects 12 and 25)

Last finish 2027-02-24 → 2027-06-20 (+116d). Complete tasks 117 → 251.

Changed:

| ID | Task | Start | Finish | Complete | Total float | Other |
| --- | --- | --- | --- | --- | --- | --- |
| MS | **Key Milestones** |  | 2027-02-24 → 2027-06-20 (+116d) |  |  |  |
| CM | **Contractual Milestones** |  | 2027-02-24 → 2027-06-20 (+116d) |  |  |  |
| MS-CF-ENG | Completion of Submitting and Approval of Shopdrwing and Material | 2026-07-14 → 2026-10-14 (+92d) | 2026-07-14 → 2026-10-14 (+92d) |  | -1.5d → -70d |  |
| MS-CF-IR | Completion of Construction Works for Irrigation Network | 2027-01-03 → 2027-04-21 (+108d) | 2027-01-03 → 2027-04-21 (+108d) |  | 33d → -50.5d |  |
| MS-CF-SW | Completion of Construction Works for Sewage Network | 2027-01-13 → 2027-04-21 (+98d) | 2027-01-13 → 2027-04-21 (+98d) |  | 2d → -72.5d |  |
| MS-CF-SD | Completion of Construction Works for Storm Drainage Network | 2027-01-03 → 2027-04-24 (+111d) | 2027-01-03 → 2027-04-24 (+111d) |  | 2d → -83.2d |  |
| MS-CF-MV | Completion of Construction Works for Medium Voltage Network | 2027-01-11 → 2027-04-29 (+108d) | 2027-01-11 → 2027-04-29 (+108d) |  | 7d → -76.5d |  |
| MS-CF-TSE | Completion of Construction Works for Treated Sewage Effluent Network | 2027-01-17 → 2027-05-04 (+107d) | 2027-01-17 → 2027-05-04 (+107d) |  | 21.5d → -62d |  |
| MS-CF-TE | Completion of Construction Works for Telecom Network | 2027-01-20 → 2027-05-09 (+109d) | 2027-01-20 → 2027-05-09 (+109d) |  | -1d → -84.5d |  |
| MS-CF-SL | Completion of Construction Works for Street Lighting Network | 2027-01-27 → 2027-05-22 (+115d) | 2027-01-27 → 2027-05-22 (+115d) |  | 6d → -77.5d |  |
| MS-CF-PW | Completion of Construction Works for Potable Water Network | 2027-01-28 → 2027-05-22 (+114d) | 2027-01-28 → 2027-05-22 (+114d) |  | 11.5d → -72d |  |
| MS-CF-RD | Completion of Construction Works for Road Works | 2027-02-16 → 2027-06-07 (+111d) | 2027-02-16 → 2027-06-07 (+111d) |  | 4.5d → -79d |  |
| MS-CF-PF | Project Completion Date | 2027-02-24 → 2027-06-20 (+116d) | 2027-02-24 → 2027-06-20 (+116d) |  | -1.5d → -89.2d |  |
| MOB-80 | Construction Site Access Roads |  |  |  |  | resources Unskilled Labor; Loader [408 h]; Dump Truck [408 h]; Grader [408 h]; Skilled Labor → Unskilled Labor [408 h]; Loader [408 h]; Dump Truck [408 h]; Grader [408 h]; Skilled Labor [408 h] |
| MOB-90 | Site Surveying Work |  |  |  |  | resources Unskilled Labor; Skilled Labor → Unskilled Labor [40 h]; Skilled Labor [40 h] |
| MOB-40 | Construction Project Store |  |  |  |  | resources Unskilled Labor; Loader [160 h]; Grader [160 h]; Skilled Labor → Unskilled Labor [640 h]; Loader [160 h]; Grader [160 h]; Skilled Labor [160 h] |
| MOB-70 | Installation Project Sign Board |  |  |  |  | resources Unskilled Labor; Excavator [80 h]; Skilled Labor → Unskilled Labor [160 h]; Excavator [80 h]; Skilled Labor [80 h] |
| ENG | **Engineering Works** |  | 2026-07-14 → 2026-10-14 (+92d) |  |  |  |
| SD | **Shop Drawings** |  | 2026-07-14 → 2026-07-13 (-1d) |  |  |  |
| INF | **Infrastructure Networks** |  | 2026-07-14 → 2026-07-13 (-1d) |  |  |  |
| ENG-SH-RD-A-110 | Approval Shop Drawings for Roads Typical Sections and Pavement Details | 2026-06-23 A | 2026-07-04 A | 0% → 100% | 7.5d → none | resources Unskilled Labor [50.6 h]; Electrical Technician [19.52 h]; Plumber [4.57 h]; Carpenter [5.56 h]; Mason [4.42 h]; Steel Fixer [5.65 h]; Skilled Labor [15.25 h] → none |
| ENG-SH-HS-S-100 | Submission Shop Drawings for Hardscaping (Curbstone& Interlock) Works | 2026-06-23 A | 2026-06-27 A | 0% → 100% | 0d → none | resources Unskilled Labor [17.71 h]; Electrical Technician [6.83 h]; Plumber [1.6 h]; Carpenter [1.95 h]; Mason [1.55 h]; Steel Fixer [1.98 h]; Skilled Labor [5.34 h] → none |
| ENG-SH-HS-A-110 | Approval Shop Drawings for Hardscaping (Curbstone& Interlock) Works | 2026-06-27 A | 2026-07-01 A | 0% → 100% | 0d → none | resources Unskilled Labor [20.24 h]; Electrical Technician [7.81 h]; Plumber [1.83 h]; Carpenter [2.22 h]; Mason [1.77 h]; Steel Fixer [2.26 h]; Skilled Labor [6.1 h] → none |
| ENG-SH-TSB-S-100 | Submission Shop Drawings for Traffic Signs Boards | 2026-06-27 A | 2026-07-04 A | 0% → 100% | 7d → none | resources Unskilled Labor [30.36 h]; Electrical Technician [11.71 h]; Plumber [2.74 h]; Carpenter [3.34 h]; Mason [2.65 h]; Steel Fixer [3.39 h]; Skilled Labor [9.15 h] → none |
| ENG-SH-MRK-S-110 | Submission Shop Drawings for Pavement Markings | 2026-07-05 A | 2026-07-12 A | 0% → 100% | 0d → none | resources Unskilled Labor [30.36 h]; Electrical Technician [11.71 h]; Plumber [2.74 h]; Carpenter [3.34 h]; Mason [2.65 h]; Steel Fixer [3.39 h]; Skilled Labor [9.15 h] → none |
| ENG-SH-TSB-A-100 | Approval Shop Drawings for Traffic Signs Boards | 2026-06-27 A | 2026-07-05 A | 0% → 100% | 7d → none | resources Unskilled Labor [35.42 h]; Electrical Technician [13.66 h]; Plumber [3.2 h]; Carpenter [3.89 h]; Mason [3.1 h]; Steel Fixer [3.96 h]; Skilled Labor [10.68 h] → none |
| ENG-SH-MRK-A-110 | Approval Shop Drawings for Pavement Markings | 2026-07-05 A | 2026-07-13 A | 0% → 100% | 0d → none | resources Unskilled Labor [35.42 h]; Electrical Technician [13.66 h]; Plumber [3.2 h]; Carpenter [3.89 h]; Mason [3.1 h]; Steel Fixer [3.96 h]; Skilled Labor [10.68 h] → none |
| ENG-SH-SW-ML-A-110 | Approval Shop Drawings for Main Line and Manholes of Sewage Network | 2026-06-23 A | 2026-06-30 A | 0% → 100% | 5.5d → none | resources Unskilled Labor [35.42 h]; Electrical Technician [13.66 h]; Plumber [3.2 h]; Carpenter [3.89 h]; Mason [3.1 h]; Steel Fixer [3.96 h]; Skilled Labor [10.68 h] → none |
| ENG-SH-SD-CB-S-100_R | Submission Shop Drawings for Secondary Line and Catch Basin of Storm Drainage Network(Remaining) | 2026-06-23 A | 2026-06-28 A | 0% → 100% | 0.75d → none | resources Unskilled Labor [22.77 h]; Electrical Technician [8.78 h]; Plumber [2.06 h]; Carpenter [2.5 h]; Mason [1.99 h]; Steel Fixer [2.54 h]; Skilled Labor [6.86 h] → none |
| ENG-SH-SD-CB-A-110 | Approval Shop Drawings for Secondary Line and Catch Basin of Storm Drainage Network | 2026-06-28 A | 2026-07-06 A | 0% → 100% | 6d → none | resources Unskilled Labor [35.42 h]; Electrical Technician [13.66 h]; Plumber [3.2 h]; Carpenter [3.89 h]; Mason [3.1 h]; Steel Fixer [3.96 h]; Skilled Labor [10.68 h] → none |
| ENG-SH-PW-ML-A-110 | Approval Shop Drawings for Main Line and Valve Chambers of Potable Water Network | 2026-06-23 A | 2026-06-30 A | 0% → 100% | 8.5d → none | resources Unskilled Labor [35.42 h]; Electrical Technician [13.66 h]; Plumber [3.2 h]; Carpenter [3.89 h]; Mason [3.1 h]; Steel Fixer [3.96 h]; Skilled Labor [10.68 h] → none |
| ENG-SH-PW-FH-S-100 | Submission Shop Drawings for Fire Hydrant Network | 2026-06-23 A | 2026-06-28 A | 0% → 100% | 5.5d → none | resources Unskilled Labor [25.3 h]; Electrical Technician [9.76 h]; Plumber [2.29 h]; Carpenter [2.78 h]; Mason [2.21 h]; Steel Fixer [2.83 h]; Skilled Labor [7.63 h] → none |
| ENG-SH-PW-FH-A-110 | Approval Shop Drawings for Fire Hydrant Network | 2026-06-29 A | 2026-07-06 A | 0% → 100% | 5.5d → none | resources Unskilled Labor [35.42 h]; Electrical Technician [13.66 h]; Plumber [3.2 h]; Carpenter [3.89 h]; Mason [3.1 h]; Steel Fixer [3.96 h]; Skilled Labor [10.68 h] → none |
| ENG-SH-IR-ML-S-100 | Submission Shop Drawings for Main Line and Valves & Bulbblers and Sprinklers of Irrigation Network | 2026-06-23 A | 2026-06-29 A | 0% → 100% | -1.5d → none | resources Unskilled Labor [30.36 h]; Electrical Technician [11.71 h]; Plumber [2.74 h]; Carpenter [3.34 h]; Mason [2.65 h]; Steel Fixer [3.39 h]; Skilled Labor [9.15 h] → none |
| ENG-SH-IR-ML-A-110 | Approval Shop Drawings for Main Line and Valves & Bulbblers and Sprinklers of Irrigation Network | 2026-06-30 A | 2026-07-07 A | 0% → 100% | 4.5d → none | resources Unskilled Labor [35.42 h]; Electrical Technician [13.66 h]; Plumber [3.2 h]; Carpenter [3.89 h]; Mason [3.1 h]; Steel Fixer [3.96 h]; Skilled Labor [10.68 h] → none |
| ENG-SH-TSE-ML-S-110 | Submission Shop Drawings for Main Line Treated Sewage Effluent Network | 2026-06-23 A | 2026-06-29 A | 0% → 100% | 4.5d → none | resources Unskilled Labor [30.36 h]; Electrical Technician [11.71 h]; Plumber [2.74 h]; Carpenter [3.34 h]; Mason [2.65 h]; Steel Fixer [3.39 h]; Skilled Labor [9.15 h] → none |
| ENG-SH-TSE-ML-A-120 | Approval Shop Drawings for Main Line Treated Sewage Effluent Network | 2026-06-30 A | 2026-07-07 A | 0% → 100% | 4.5d → none | resources Unskilled Labor [35.42 h]; Electrical Technician [13.66 h]; Plumber [3.2 h]; Carpenter [3.89 h]; Mason [3.1 h]; Steel Fixer [3.96 h]; Skilled Labor [10.68 h] → none |
| ENG-SH-MV-A-110 | Approval Shop Drawings for Medium Voltage Network | 2026-06-30 A | 2026-07-07 A | 0% → 100% | 4.5d → none | resources Unskilled Labor [35.42 h]; Electrical Technician [13.66 h]; Plumber [3.2 h]; Carpenter [3.89 h]; Mason [3.1 h]; Steel Fixer [3.96 h]; Skilled Labor [10.68 h] → none |
| ENG-SH-LV-S-110 | Submission Shop Drawings for Low Voltage Network | 2026-06-23 A | 2026-06-29 A | 0% → 100% | -1.5d → none | resources Unskilled Labor [30.36 h]; Electrical Technician [11.71 h]; Plumber [2.74 h]; Carpenter [3.34 h]; Mason [2.65 h]; Steel Fixer [3.39 h]; Skilled Labor [9.15 h] → none |
| ENG-SH-LV-A-120 | Approval Shop Drawings for Low Voltage Network | 2026-06-30 A | 2026-07-07 A | 0% → 100% | 4.5d → none | resources Unskilled Labor [35.42 h]; Electrical Technician [13.66 h]; Plumber [3.2 h]; Carpenter [3.89 h]; Mason [3.1 h]; Steel Fixer [3.96 h]; Skilled Labor [10.68 h] → none |
| ENG-SH-SL-S-100_R | Submission Shop Drawings for Street Lighting Network(Remaining) | 2026-06-23 A | 2026-06-29 A | 0% → 100% | 8.5d → none | resources Unskilled Labor [30.36 h]; Electrical Technician [11.71 h]; Plumber [2.74 h]; Carpenter [3.34 h]; Mason [2.65 h]; Steel Fixer [3.39 h]; Skilled Labor [9.15 h] → none |
| ENG-SH-SL-A-110 | Approval Shop Drawings for Street Lighting Network | 2026-06-25 A | 2026-07-02 A | 0% → 100% | 8.5d → none | resources Unskilled Labor [35.42 h]; Electrical Technician [13.66 h]; Plumber [3.2 h]; Carpenter [3.89 h]; Mason [3.1 h]; Steel Fixer [3.96 h]; Skilled Labor [10.68 h] → none |
| TL | **Telecom Network** | 2026-06-30 → 2026-06-29 (-1d) | 2026-07-14 → 2026-07-07 (-7d) |  |  |  |
| ENG-SH-CTV-S-100 | Submission Shop Drawings for CCTV Complete System | 2026-06-30 A | 2026-07-06 A | 0% → 100% | -1.5d → none | resources Unskilled Labor [30.36 h]; Electrical Technician [11.71 h]; Plumber [2.74 h]; Carpenter [3.34 h]; Mason [2.65 h]; Steel Fixer [3.39 h]; Skilled Labor [9.15 h] → none |
| ENG-SH-MSN-S-110 | Submission Shop Drawings for MSN System | 2026-06-30 A | 2026-07-06 A | 0% → 100% | -1.5d → none | resources Unskilled Labor [30.36 h]; Electrical Technician [11.71 h]; Plumber [2.74 h]; Carpenter [3.34 h]; Mason [2.65 h]; Steel Fixer [3.39 h]; Skilled Labor [9.15 h] → none |
| ENG-SH-TE-S-100 | Submission Shop Drawings for Telecom Network | 2026-06-30 A | 2026-07-06 A | 0% → 100% | -1.5d → none | resources Unskilled Labor [30.36 h]; Electrical Technician [11.71 h]; Plumber [2.74 h]; Carpenter [3.34 h]; Mason [2.65 h]; Steel Fixer [3.39 h]; Skilled Labor [9.15 h] → none |
| 2 | **Approval** | 2026-06-30 → 2026-06-29 (-1d) | 2026-07-14 → 2026-07-07 (-7d) |  |  |  |
| ENG-SH-MSN-A-120 | Approval Shop Drawings for MSN System | 2026-07-07 → 2026-06-29 A (-8d) | 2026-07-14 → 2026-07-06 A (-8d) | 0% → 100% | -1.5d → none | resources Unskilled Labor [35.42 h]; Electrical Technician [13.66 h]; Plumber [3.2 h]; Carpenter [3.89 h]; Mason [3.1 h]; Steel Fixer [3.96 h]; Skilled Labor [10.68 h] → none |
| ENG-SH-CTV-A-110 | Approval Shop Drawings for CCTV Complete System | 2026-06-30 A | 2026-07-07 A | 0% → 100% | 4.5d → none | resources Unskilled Labor [35.42 h]; Electrical Technician [13.66 h]; Plumber [3.2 h]; Carpenter [3.89 h]; Mason [3.1 h]; Steel Fixer [3.96 h]; Skilled Labor [10.68 h] → none |
| ENG-SH-TE-A-110 | Approval Shop Drawings for Telecom Network | 2026-06-30 A | 2026-07-07 A | 0% → 100% | 4.5d → none | resources Unskilled Labor [35.42 h]; Electrical Technician [13.66 h]; Plumber [3.2 h]; Carpenter [3.89 h]; Mason [3.1 h]; Steel Fixer [3.96 h]; Skilled Labor [10.68 h] → none |
| ENG-SH-SPS-S-150_R | Submission Shop Drawings Package for Sewage Pump Stations(Remaining) | 2026-06-24 A | 2026-06-30 A | 0% → 100% | 8.5d → none | resources Unskilled Labor [30.36 h]; Electrical Technician [11.71 h]; Plumber [2.74 h]; Carpenter [3.34 h]; Mason [2.65 h]; Steel Fixer [3.39 h]; Skilled Labor [9.15 h] → none |
| ENG-SH-SPS-A-160 | Approval Shop Drawings Package for Sewage Pump Stations | 2026-06-27 A | 2026-07-02 A | 0% → 100% | 8.5d → none | resources Unskilled Labor [30.36 h]; Electrical Technician [11.71 h]; Plumber [2.74 h]; Carpenter [3.34 h]; Mason [2.65 h]; Steel Fixer [3.39 h]; Skilled Labor [9.15 h] → none |
| ENG-SH-LS-S-160_R | Submission Shop Drawings Package for Lift Stations(Remaining) | 2026-06-24 A | 2026-06-30 A | 0% → 100% | 5.5d → none | resources Unskilled Labor [30.36 h]; Electrical Technician [11.71 h]; Plumber [2.74 h]; Carpenter [3.34 h]; Mason [2.65 h]; Steel Fixer [3.39 h]; Skilled Labor [9.15 h] → none |
| ENG-SH-LS-A-170 | Approval Shop Drawings Package for Lift Stations | 2026-06-27 A | 2026-07-02 A | 0% → 100% | 8.5d → none | resources Unskilled Labor [30.36 h]; Electrical Technician [11.71 h]; Plumber [2.74 h]; Carpenter [3.34 h]; Mason [2.65 h]; Steel Fixer [3.39 h]; Skilled Labor [9.15 h] → none |
| ENG-SH-DPO-S-110 | Submission Shop Drawings Package for Storm Drainage Ponds | 2026-06-28 A | 2026-07-05 A | 0% → 100% | 6d → none | resources Unskilled Labor [30.36 h]; Electrical Technician [11.71 h]; Plumber [2.74 h]; Carpenter [3.34 h]; Mason [2.65 h]; Steel Fixer [3.39 h]; Skilled Labor [9.15 h] → none |
| ENG-SH-DPO-A-120 | Approval Shop Drawings Package for Storm Drainage Ponds | 2026-06-29 A | 2026-07-06 A | 0% → 100% | 6d → none | resources Unskilled Labor [30.36 h]; Electrical Technician [11.71 h]; Plumber [2.74 h]; Carpenter [3.34 h]; Mason [2.65 h]; Steel Fixer [3.39 h]; Skilled Labor [9.15 h] → none |
| ENG-SH-ST-S-170 | Submission Shop Drawings Package for Storage Tank TSE | 2026-06-30 A | 2026-07-06 A | 0% → 100% | 4.5d → none | resources Unskilled Labor [30.36 h]; Electrical Technician [11.71 h]; Plumber [2.74 h]; Carpenter [3.34 h]; Mason [2.65 h]; Steel Fixer [3.39 h]; Skilled Labor [9.15 h] → none |
| ENG-SH-ST-A-180 | Approval Shop Drawings Package for Storage Tank TSE | 2026-07-01 A | 2026-07-07 A | 0% → 100% | 4.5d → none | resources Unskilled Labor [30.36 h]; Electrical Technician [11.71 h]; Plumber [2.74 h]; Carpenter [3.34 h]; Mason [2.65 h]; Steel Fixer [3.39 h]; Skilled Labor [9.15 h] → none |
| ENG-SH-GR-A-190 | Approval Shop Drawings Package for Gaurd Room | 2026-06-23 A | 2026-06-29 A | 0% → 100% | 11.5d → none | resources Unskilled Labor [30.36 h]; Electrical Technician [11.71 h]; Plumber [2.74 h]; Carpenter [3.34 h]; Mason [2.65 h]; Steel Fixer [3.39 h]; Skilled Labor [9.15 h] → none |
| ENG-SH-GR-S-180 | Submission Shop Drawings Package for Gaurd Room | 2026-06-23 A | 2026-06-29 A | 0% → 100% | 11.5d → none | resources Unskilled Labor [30.36 h]; Electrical Technician [11.71 h]; Plumber [2.74 h]; Carpenter [3.34 h]; Mason [2.65 h]; Steel Fixer [3.39 h]; Skilled Labor [9.15 h] → none |
| ENG-SH-GR-S-190_R | Submission Shop Drawings Package for Fence(Remaining) | 2026-06-23 A | 2026-06-27 A | 0% → 100% | 13.3d → none | resources Unskilled Labor [17.61 h]; Electrical Technician [6.79 h]; Plumber [1.59 h]; Carpenter [1.93 h]; Mason [1.54 h]; Steel Fixer [1.97 h]; Skilled Labor [5.31 h] → none |
| ENG-SH-GR-A-200_R | Approval Shop Drawings Package for Fence(Remaining) | 2026-06-23 A | 2026-06-28 A | 0% → 100% | 13.3d → none | resources Unskilled Labor [21.25 h]; Electrical Technician [8.2 h]; Plumber [1.92 h]; Carpenter [2.34 h]; Mason [1.86 h]; Steel Fixer [2.37 h]; Skilled Labor [6.44 h] → none |
| SD11 | **Material Submittals and Approvals** |  | 2026-07-12 → 2026-10-14 (+94d) |  |  |  |
| 2 | **Short Lead Time Items** |  | 2026-07-12 → 2026-10-13 (+93d) |  |  |  |
| ENG-MT-IR-ML-S-140 | Material Submittal for Softscape and Planting Works | 2026-06-27 A | 2026-07-04 A | 0% → 100% | 1d → none | resources Unskilled Labor [30.36 h]; Electrical Technician [11.71 h]; Plumber [2.74 h]; Carpenter [3.34 h]; Mason [2.65 h]; Steel Fixer [3.39 h]; Skilled Labor [9.15 h] → none |
| ENG-MT-IR-ML-S-150 | Material Submittal for Site Furnishings (Seating Bench,Stone Boulders and Gravel) | 2026-06-27 A | 2026-07-04 A | 0% → 100% | 2d → none | resources Unskilled Labor [30.36 h]; Electrical Technician [11.71 h]; Plumber [2.74 h]; Carpenter [3.34 h]; Mason [2.65 h]; Steel Fixer [3.39 h]; Skilled Labor [9.15 h] → none |
| ENG-MT-IR-ML-A-140 | Material Approval for Softscape and Planting Works | 2026-07-04 A | 2026-07-12 A | 0% → 100% | 1d → none | resources Unskilled Labor [35.42 h]; Electrical Technician [13.66 h]; Plumber [3.2 h]; Carpenter [3.89 h]; Mason [3.1 h]; Steel Fixer [3.96 h]; Skilled Labor [10.68 h] → none |
| ENG-MT-IR-ML-A-150 | Material Approval for Site Furnishings (Seating Bench,Stone Boulders and Gravel) | 2026-07-04 A | 2026-07-11 A | 0% → 100% | 2d → none | resources Unskilled Labor [30.36 h]; Electrical Technician [11.71 h]; Plumber [2.74 h]; Carpenter [3.34 h]; Mason [2.65 h]; Steel Fixer [3.39 h]; Skilled Labor [9.15 h] → none |
| ENG-MT-SW-TF-S-100 | Material Submittal for Manhole Covers of Sewage Network | 2026-06-23 A | 2026-06-29 A | 0% → 100% | 2d → none | resources Unskilled Labor [30.36 h]; Electrical Technician [11.71 h]; Plumber [2.74 h]; Carpenter [3.34 h]; Mason [2.65 h]; Steel Fixer [3.39 h]; Skilled Labor [9.15 h] → none |
| ENG-MT-SW-TF-A-100 | Material Approval for Manhole Covers of Sewage Network | 2026-06-30 A | 2026-07-07 A | 0% → 100% | 2d → none | resources Unskilled Labor [35.42 h]; Electrical Technician [13.66 h]; Plumber [3.2 h]; Carpenter [3.89 h]; Mason [3.1 h]; Steel Fixer [3.96 h]; Skilled Labor [10.68 h] → none |

| ID | Task | Start | Finish | Complete | Total float | Predecessors | Other |
| --- | --- | --- | --- | --- | --- | --- | --- |
| ENG-MT-SD-TF-S-100 | Material Submittal for Manhole Covers of Storm Drainage Network | 2026-06-23 A | 2026-06-29 A | 0% → 100% | 4.5d → none |  | resources Unskilled Labor [30.36 h]; Electrical Technician [11.71 h]; Plumber [2.74 h]; Carpenter [3.34 h]; Mason [2.65 h]; Steel Fixer [3.39 h]; Skilled Labor [9.15 h] → none |
| ENG-MT-SD-TF-S-110 | Material Submittal for Catch Basin Covers of Storm Drainage Network | 2026-06-23 A | 2026-06-29 A | 0% → 100% | 4.5d → none |  | resources Unskilled Labor [30.36 h]; Electrical Technician [11.71 h]; Plumber [2.74 h]; Carpenter [3.34 h]; Mason [2.65 h]; Steel Fixer [3.39 h]; Skilled Labor [9.15 h] → none |
| ENG-MT-SD-TF-A-100 | Material Approval for Manhole Covers of Storm Drainage Network | 2026-06-30 A | 2026-07-07 A | 0% → 100% | 4.5d → none |  | resources Unskilled Labor [35.42 h]; Electrical Technician [13.66 h]; Plumber [3.2 h]; Carpenter [3.89 h]; Mason [3.1 h]; Steel Fixer [3.96 h]; Skilled Labor [10.68 h] → none |
| ENG-MT-SD-TF-A-110 | Material Approval for Catch Basin Covers of Storm Drainage Network | 2026-06-30 A | 2026-07-07 A | 0% → 100% | 4.5d → none |  | resources Unskilled Labor [35.42 h]; Electrical Technician [13.66 h]; Plumber [3.2 h]; Carpenter [3.89 h]; Mason [3.1 h]; Steel Fixer [3.96 h]; Skilled Labor [10.68 h] → none |
| ENG-MT-PW-ML-S-110 | Material Submittal for Main Line Valves of Potable Water Network | 2026-06-23 A | 2026-06-29 A | 0% → 100% | 4.5d → none |  | resources Unskilled Labor [30.36 h]; Electrical Technician [11.71 h]; Plumber [2.74 h]; Carpenter [3.34 h]; Mason [2.65 h]; Steel Fixer [3.39 h]; Skilled Labor [9.15 h] → none |
| ENG-MT-PW-FH-S-100 | Material Submittal for Fire Hydrant of Potable Water Network | 2026-06-23 A | 2026-06-29 A | 0% → 100% | 4.5d → none |  | resources Unskilled Labor [30.36 h]; Electrical Technician [11.71 h]; Plumber [2.74 h]; Carpenter [3.34 h]; Mason [2.65 h]; Steel Fixer [3.39 h]; Skilled Labor [9.15 h] → none |
| ENG-MT-PW-TF-S-100 | Material Submittal for Surface Box of Potable Water Network | 2026-06-23 A | 2026-06-29 A | 0% → 100% | 4.5d → none |  | resources Unskilled Labor [30.36 h]; Electrical Technician [11.71 h]; Plumber [2.74 h]; Carpenter [3.34 h]; Mason [2.65 h]; Steel Fixer [3.39 h]; Skilled Labor [9.15 h] → none |
| ENG-MT-PW-ML-A-110 | Material Approval for Valves of Potable Water Network | 2026-06-30 A | 2026-07-07 A | 0% → 100% | 4.5d → none |  | resources Unskilled Labor [35.42 h]; Electrical Technician [13.66 h]; Plumber [3.2 h]; Carpenter [3.89 h]; Mason [3.1 h]; Steel Fixer [3.96 h]; Skilled Labor [10.68 h] → none |
| ENG-MT-PW-FH-A-100 | Material Approval for Fire Hydrants of Potable Water Network | 2026-06-30 A | 2026-07-07 A | 0% → 100% | 4.5d → none |  | resources Unskilled Labor [35.42 h]; Electrical Technician [13.66 h]; Plumber [3.2 h]; Carpenter [3.89 h]; Mason [3.1 h]; Steel Fixer [3.96 h]; Skilled Labor [10.68 h] → none |
| ENG-MT-PW-TF-A-100 | Material Approval for Surface Box of Potable Water Network | 2026-06-30 A | 2026-07-07 A | 0% → 100% | 4.5d → none |  | resources Unskilled Labor [35.42 h]; Electrical Technician [13.66 h]; Plumber [3.2 h]; Carpenter [3.89 h]; Mason [3.1 h]; Steel Fixer [3.96 h]; Skilled Labor [10.68 h] → none |
| ENG-MT-IR-ML-A-110 | Material Approval for Valves of Irrigation Network |  |  |  |  |  | resources Gate valves Dia 50 mm; Gate valves Dia 100 mm; Gate valves Dia 150 mm; Gate valves Dia 250 mm; Air valves with Dia 50 mm; Washout valve Dia 100 mm; 3-outlet fire hydrant (2 x 2.5 inch and 1 x 4.5 inch) in the form of a separate dry vacuum cylinder, complete according to drawings.; Wash out chamber (2500x 2500mm); Air valve chamber (1000x 1000 mm); Flow meter chamber (1500x 2500 mm); Flow meter dia 100 mm; Gate valve 50 mm PN16; Direct Burried Gate valve 40 mm PN16; Pressure compensating bubblers 110 Lit/Hr; Flushing Bronze gate valve dia 1.5" inside PVC box; Air release valve 1.5" inside PVC box; Extra flexible pressure compensating on surface inline dripline`s, O.D. is 16.1 mm; Electrical Solenoid Valve ( 1.5") inside PVC box; Electrical Solenoid Valve ( 2") inside PVC box; Quick coupling valve 1" inside a round valve box 10" size with a manual gate valve, hose swivel and key with all accessories; Advanced Irrigation controller subject to client approval, can connect with Centarl Control system; Decoder cables 12 AWG between valves and controllers, The cables shall be pulled through 32 UPVC conduit; Preparing the irrigation program for the entire system and providing technical services for monitoring and controlling the central irrigation systems → Gate valves Dia 50 mm; Gate valves Dia 100 mm; Gate valves Dia 150 mm; Gate valves Dia 250 mm; Air valves with Dia 50 mm; Washout valve Dia 100 mm; 3-outlet fire hydrant (2 x 2.5 inch and 1 x 4.5 inch) in the form of a separate dry vacuum cylinder, complete according to drawings.; Wash out chamber (2500x 2500mm); Air valve chamber (1000x 1000 mm); Flow meter chamber (1500x 2500 mm); Flow meter dia 100 mm; Gate valve 50 mm PN16; Direct Burried Gate valve 40 mm PN16; Pressure–compensating bubblers 110 Lit/Hr; Flushing Bronze gate valve dia 1.5" inside PVC box; Air release valve 1.5" inside PVC box; Extra flexible pressure compensating on surface inline dripline`s, O.D. is 16.1 mm; Electrical Solenoid Valve ( 1.5") inside PVC box; Electrical Solenoid Valve ( 2") inside PVC box; Quick coupling valve 1" inside a round valve box 10" size with a manual gate valve, hose swivel and key with all accessories; Advanced Irrigation controller subject to client approval, can connect with Centarl Control system; Decoder cables 12 AWG between valves and controllers, The cables shall be pulled through 32Ø UPVC conduit; Preparing the irrigation program for the entire system and providing technical services for monitoring and controlling the central irrigation systems |
| ENG-MT-MV-TF-S-100 | Material Submittal for Termination Kits of Medium Voltage Network | 2026-06-23 A | 2026-06-29 A | 0% → 100% | 4.5d → none |  | resources Unskilled Labor [30.36 h]; Electrical Technician [11.71 h]; Plumber [2.74 h]; Carpenter [3.34 h]; Mason [2.65 h]; Steel Fixer [3.39 h]; Skilled Labor [9.15 h] → none |
| ENG-MT-MV-TF-A-100 | Material Approval for Termination and Joints Kits of Medium Voltage Network | 2026-06-30 A | 2026-07-07 A | 0% → 100% | 4.5d → none |  | resources Unskilled Labor [35.42 h]; Electrical Technician [13.66 h]; Plumber [3.2 h]; Carpenter [3.89 h]; Mason [3.1 h]; Steel Fixer [3.96 h]; Skilled Labor [10.68 h] → none |
| ENG-MT-SL-TF-S-100 | Material Submittal for Fuse Boxes of Street Lighting Network | 2026-06-23 A | 2026-06-29 A | 0% → 100% | 0d → none |  | resources Unskilled Labor [30.36 h]; Electrical Technician [11.71 h]; Plumber [2.74 h]; Carpenter [3.34 h]; Mason [2.65 h]; Steel Fixer [3.39 h]; Skilled Labor [9.15 h] → none |
| ENG-MT-SL-TF-S-110 | Material Submittal for Cable Lugs of Street Lighting Network | 2026-06-23 A | 2026-06-29 A | 0% → 100% | 11.5d → none |  | resources Unskilled Labor [30.36 h]; Electrical Technician [11.71 h]; Plumber [2.74 h]; Carpenter [3.34 h]; Mason [2.65 h]; Steel Fixer [3.39 h]; Skilled Labor [9.15 h] → none |
| ENG-MT-SL-ES-S-100 | Material Submittal for Lighting Earthing of Street Lighting Network | 2026-06-30 A | 2026-07-06 A | 0% → 100% | 11.5d → none |  | resources Unskilled Labor [30.36 h]; Electrical Technician [11.71 h]; Plumber [2.74 h]; Carpenter [3.34 h]; Mason [2.65 h]; Steel Fixer [3.39 h]; Skilled Labor [9.15 h] → none |
| ENG-MT-SL-ES-A-100 | Material Approval for Lighting Earthing of Street Lighting Network | 2026-06-30 A | 2026-06-30 A | 0% → 100% | 11.5d → none |  |  |
| ENG-MT-SL-TF-A-100 | Material Approval for Fuse Boxes of Street Lighting Network | 2026-06-30 A | 2026-07-07 A | 0% → 100% | 0d → none |  | resources Unskilled Labor [35.42 h]; Electrical Technician [13.66 h]; Plumber [3.2 h]; Carpenter [3.89 h]; Mason [3.1 h]; Steel Fixer [3.96 h]; Skilled Labor [10.68 h] → none |
| ENG-MT-SL-TF-A-110 | Material Approval for Cable Lugs of Street Lighting Network | 2026-06-30 A | 2026-07-07 A | 0% → 100% | 11.5d → none |  | resources Unskilled Labor [35.42 h]; Electrical Technician [13.66 h]; Plumber [3.2 h]; Carpenter [3.89 h]; Mason [3.1 h]; Steel Fixer [3.96 h]; Skilled Labor [10.68 h] → none |
| 1 | **Superstructure Works** |  | 2026-06-30 → 2026-10-13 (+105d) |  |  |  |  |
| SL111 | **Storage Tank (TSE)** |  | 2026-06-30 → 2026-10-13 (+105d) |  |  |  |  |
| 1 | **Submission of Material** | 2026-06-23 → 2026-10-06 (+105d) | 2026-06-30 → 2026-10-13 (+105d) |  |  |  |  |
| ENG-MT-TSE-CV-S-130 | Material Submittal for Civil Works for Storage Tank (TSE) | 2026-06-23 → 2026-10-06 (+105d) | 2026-06-30 → 2026-10-13 (+105d) |  | 13.25d → -75.75d |  | resources Unskilled Labor [35.42 h]; Electrical Technician [13.66 h]; Plumber [3.2 h]; Carpenter [3.89 h]; Mason [3.1 h]; Steel Fixer [3.96 h]; Skilled Labor [10.68 h] → none |
| ENG-MT-GR-CV-A-130 | Material Approval for Civil Works for Gaurd Room |  |  |  |  |  | resources Slab on Grade; Slabs; Lightweight Concrete Roof insulation as per Architect's specification; Insulated brickwork. with expanded polystyrene 200mm thick; vertical straight wall complete with accessories .; Common brickwork. 150mm thick; vertical straight wall complete with accessories.; 2 perpendicular layers of cold bitumen coats; 2 layer of 4mm HDPE membrane, 2 perpendicular layers cold bitumen coats; 1 layer EPOXY Paint 300 micron; Membrane fully bonded to prime deck and upstand; Geotextile Filter membrane uv resistance; 85mm thick thermal insulation; 1.5mm thick epdm waterproofing membrane; CW01 - 4500 mm width x 3700 mm height; CW02 - 4500 mm width x 3700 mm height; CW03 - 4500 mm width x 3700 mm height; CW04 - 4500 mm width x 3700 mm height; CW05 - 7500 mm width x 4250 mm height; CW06 - 7500 mm width x 4250 mm height; W01 - 1000 mm width x 2000 mm height; W02 - 2000 mm width x 2000 mm height; W03 - 2000 mm width x 1000 mm height; D2 - 900 mm x 2200 mm height temper door; D3 - 950 mm x 2000 mm height temper door; Supply and install 300*300mm terrazzo tiles with 150mm high skirting at perimeter with approv; Supply and install 300*300mm glazed ceramic wall tiles on cement mortar and including rough; Supply and install internal plastering and 2 coats of acrylic paint at walls includin; Supply and install 300*300mm glazed ceramic wall tiles on cement mortar and including rough and smooth p; Supply and install 600*600mm porcelain tiles with approved quality on 30 mm mortar inclu; Supply and install 12.5mm thk, gypsum board suspended ceiling including s; Office Chairs; Office Tables; Guard Stand; Magnetic Control Access barrier, Automatic Vehicular Barriers to be installed on ground with magnetic access; Supply and install Hand Wash Basin with Water Tap, angle valve, P-trap connected to 50mm diameter s; Supply and install paper towel dispenser, surface mounted, satin finish stainless steel as per approv; Supply and install mirror, size 460*910mm as per approved sample including frames, backing and all accessories to complete.; Supply and install towel ring , surface mounted, satin finish stainless steel as per approved sample including accessories.; Kitchen sink with single bowl with hot/cold water mixer.; Supply and install Base mounted flush tank water Western water closet system with lid connected to 110mm soil pipe; Gate Valves; Slow Closing Valve; 1 meter length 10mm diameter Flexible Hose with insulated handle complete with fork support, index push, vacuum breaker; 50mm diameter; 75mm diameter; 80mm diameter; 100mm diameter; 110mm diameter; 13mm diameter; 15mm diameter; 20mm diameter; 25mm diameter; 32mm diameter; 40mm diameter; Isolation Valve Size 20; Isolation Valve Size 25; Isolation Valve Size 32; Isolation Valve Size 40; Isolation Valve Size 50; 20 mm diameter spray head for cold water supply; Supply and install Electric Water Heater set with connection; Water meter complete with accessories.; Roof drain; Vent on a roof to exhaust air; Floor drain 100x80mm; Gully trap 300x300 mm; inspection chamber, size 800x900x1000; Mini split actual capacity 2 Ton; Ducted split actual capacity 4 Ton; Supply, fabricate, install and testing factory fabricated metal ducts with flanges complete with supports, vanes,; Supplying, installation testing & commissioning of external insulation on ducts; Supply, fix, testing and commissioning of exhaust air/fresh air louvers of powder coated extruded aluminium construction.; Providing, fixing, testing and commissioning of powder coated extruded aluminum sections grills and diffusers with dampers.; Air Grills 150mm x150mm; Air Diffuser 600mm x 600mm; Supply, Installation & Testing of 2 hours Fire rated system for closing the openings between roo; 4.5 KG CO2 Type Fire Extinguishers; 6 KG ABC Type Fire Extinguishers; Floor cleanout, size 75 mm diameter; Floor cleanout, size 110 mm diameter; GRP water tanks capacity of each 1000 liter complete with all fittings, all valves and concrete pad; Guard Room 1; Guard Room 2; Guard Room 3; 30A, 2P AC Disconnect Switch; 20A Duplex Receptacle Floor Mounted; Twin Socket outlet; Twin Socket outlet, Weather Proof; Single gang Lighting switch; 2way Single gang Lighting switch; 36W LED linear Pendant lighting; 36W LED Emergency linear Pendant lighting; 13W recess mounted LED down light fitting; 13W recess emergency mounted LED down light fitting with 1.5 Hr Battery; 10.4W LED Exit light with 1.5 Hr Battery; 4mm2 Cu./FRLSZH Cable; 6mm2 Cu./FRLSZH Cable; 8 Port Industrial PoE Switch 10/100BaseT (0 deg to +70 deg. Celsius); 06C Optical Fiber SM; 48C Optical Fiber SM; 48 Core Splice Closure; Boom Barrier at Security Guard Room; Pedestrian turnstile at Security Guard Room; Access Control Unit; Access Card Reader; Magnetic Lock; Break Glass; Exit Push button; Door Sensor; Biometrics Reader; Pole/Bollard mounted IP( PoE), Automatic Number Plate Recognition (ANPR, camera, 5MP,IP 66, IR illumin; 12U rack dimension (W x H x L) 600 x 625 x 600 mm; Fire Alarm Control panel with fire alarm zoning with Mimic panel with fire alarm zoning; Main Fire Alarm Control panel with fire alarm zoning with Mimic panel with fire alarm zoning; Supply and installation of the addressable manual call point with operation safety glass breaking and pushbutton; Supply and installation of the photoelectric heat & smoke detector with base; Sounder With Beacon; Addressable Control module for Sounders; Addressable Control module for HVAC System; Addressable Monitor module for HVAC System; 2C x 1.5 Sqm FR Rated Armored - Cable For Loop Wiring; DACT (Auto - Dailer) for 24x7 Civil Defence; Transmission Communication cable - Fiber Optics 12Core; Transmission Communication cable - Ethernet Cable; Supply, install to site and installation of power supply system for fire alarm control panel; Supply, install to site and installation of power cable; Fire Fighter s Telephone Centre; Fireman s Telephone Jack; Voice Command Center → Slab on Grade; Slabs; Lightweight Concrete Roof insulation as per Architect's specification; Insulated brickwork. with expanded polystyrene 200mm thick; vertical straight wall complete with accessories .; Common brickwork. 150mm thick; vertical straight wall complete with accessories.; 2 perpendicular layers of cold bitumen coats; 2 layer of 4mm HDPE membrane, 2 perpendicular layers cold bitumen coats; 1 layer EPOXY Paint 300 micron; Membrane fully bonded to prime deck and upstand; Geotextile Filter membrane uv resistance; 85mm thick thermal insulation; 1.5mm thick epdm waterproofing membrane; CW01 - 4500 mm width x 3700 mm height; CW02 - 4500 mm width x 3700 mm height; CW03 - 4500 mm width x 3700 mm height; CW04 - 4500 mm width x 3700 mm height; CW05 - 7500 mm width x 4250 mm height; CW06 - 7500 mm width x 4250 mm height; W01 - 1000 mm width x 2000 mm height; W02 - 2000 mm width x 2000 mm height; W03 - 2000 mm width x 1000 mm height; D2 - 900 mm x 2200 mm height temper door; D3 - 950 mm x 2000 mm height temper door; Supply and install 300*300mm terrazzo tiles with 150mm high skirting at perimeter with approv; Supply and install 300*300mm glazed ceramic wall tiles on cement mortar and including rough; Supply and install internal plastering and 2 coats of acrylic paint at walls includin; Supply and install 300*300mm glazed ceramic wall tiles on cement mortar and including rough and smooth p; Supply and install 600*600mm porcelain tiles with approved quality on 30 mm mortar inclu; Supply and install 12.5mm thk, gypsum board suspended ceiling including s; Office Chairs; Office Tables; Guard Stand; Magnetic Control Access barrier, Automatic Vehicular Barriers to be installed on ground with magnetic access; Supply and install Hand Wash Basin with Water Tap, angle valve, P-trap connected to 50mm diameter s; Supply and install paper towel dispenser, surface mounted, satin finish stainless steel as per approv; Supply and install mirror, size 460*910mm as per approved sample including frames, backing and all accessories to complete.; Supply and install towel ring , surface mounted, satin finish stainless steel as per approved sample including accessories.; Kitchen sink with single bowl with hot/cold water mixer.; Supply and install Base mounted flush tank water Western water closet system with lid connected to 110mm soil pipe; Gate Valves; Slow Closing Valve; 1 meter length 10mm diameter Flexible Hose with insulated handle complete with fork support, index push, vacuum breaker; 50mm diameter; 75mm diameter; 80mm diameter; 100mm diameter; 110mm diameter; 13mm diameter; 15mm diameter; 20mm diameter; 25mm diameter; 32mm diameter; 40mm diameter; Isolation Valve Size 20; Isolation Valve Size 25; Isolation Valve Size 32; Isolation Valve Size 40; Isolation Valve Size 50; 20 mm diameter spray head for cold water supply; Supply and install Electric Water Heater set with connection; Water meter complete with accessories.; Roof drain; Vent on a roof to exhaust air; Floor drain 100x80mm; Gully trap 300x300 mm; inspection chamber, size 800x900x1000; Mini split actual capacity 2 Ton; Ducted split actual capacity 4 Ton; Supply, fabricate, install and testing factory fabricated metal ducts with flanges complete with supports, vanes,; Supplying, installation testing & commissioning of external insulation on ducts; Supply, fix, testing and commissioning of exhaust air/fresh air louvers of powder coated extruded aluminium construction.; Providing, fixing, testing and commissioning of powder coated extruded aluminum sections grills and diffusers with dampers.; Air Grills 150mm x150mm; Air Diffuser 600mm x 600mm; Supply, Installation & Testing of 2 hours Fire rated system for closing the openings between roo; 4.5 KG CO2 Type Fire Extinguishers; 6 KG ABC Type Fire Extinguishers; Floor cleanout, size 75 mm diameter; Floor cleanout, size 110 mm diameter; GRP water tanks capacity of each 1000 liter complete with all fittings, all valves and concrete pad; Guard Room 1; Guard Room 2; Guard Room 3; 30A, 2P AC Disconnect Switch; 20A Duplex Receptacle Floor Mounted; Twin Socket outlet; Twin Socket outlet, Weather Proof; Single gang Lighting switch; 2way Single gang Lighting switch; 36W LED linear Pendant lighting; 36W LED Emergency linear Pendant lighting; 13W recess mounted LED down light fitting; 13W recess emergency mounted LED down light fitting with 1.5 Hr Battery; 10.4W LED Exit light with 1.5 Hr Battery; 4mm2 Cu./FRLSZH Cable; 6mm2 Cu./FRLSZH Cable; 8 Port Industrial PoE Switch 10/100BaseT (0 deg to +70 deg. Celsius); 06C Optical Fiber SM; 48C Optical Fiber SM; 48 Core Splice Closure; Boom Barrier at Security Guard Room; Pedestrian turnstile at Security Guard Room; Access Control Unit; Access Card Reader; Magnetic Lock; Break Glass; Exit Push button; Door Sensor; Biometrics Reader; Pole/Bollard mounted IP( PoE), Automatic Number Plate Recognition (ANPR, camera, 5MP,IP 66, IR illumin; 12U rack dimension (W x H x L) 600 x 625 x 600 mm; Fire Alarm Control panel with fire alarm zoning with Mimic panel with fire alarm zoning; Main Fire Alarm Control panel with fire alarm zoning with Mimic panel with fire alarm zoning; Supply and installation of the addressable manual call point with operation safety glass breaking and pushbutton; Supply and installation of the photoelectric heat & smoke detector with base; Sounder With Beacon; Addressable Control module for Sounders; Addressable Control module for HVAC System; Addressable Monitor module for HVAC System; 2C x 1.5 Sqm FR Rated Armored - Cable For Loop Wiring; DACT (Auto - Dailer) for 24x7 Civil Defence; Transmission Communication cable - Fiber Optics 12Core; Transmission Communication cable - Ethernet Cable; Supply, install to site and installation of power supply system for fire alarm control panel; Supply, install to site and installation of power cable; Fire Fighter’s Telephone Centre; Fireman’s Telephone Jack; Voice Command Center |
| 1 | **Long Lead Time Items** |  | 2026-07-02 → 2026-10-14 (+104d) |  |  |  |  |
| 2 | **Superstructure Works** | 2026-06-24 → 2026-10-06 (+104d) | 2026-07-02 → 2026-10-14 (+104d) |  |  |  |  |
| SL | **Pump Stations** | 2026-06-24 → 2026-10-06 (+104d) | 2026-07-02 → 2026-10-14 (+104d) |  |  |  |  |
| 1 | **Submission of Material** | 2026-06-24 → 2026-10-06 (+104d) | 2026-07-01 → 2026-10-13 (+104d) |  |  |  |  |
| ENG-MT-SPS-MC-S-100 | Material Submittal for Electromechanical Works for Pump Stations | 2026-06-24 → 2026-10-06 (+104d) | 2026-07-01 → 2026-10-13 (+104d) |  | 8.5d → -70d |  | resources Unskilled Labor [35.42 h]; Electrical Technician [13.66 h]; Plumber [3.2 h]; Carpenter [3.89 h]; Mason [3.1 h]; Steel Fixer [3.96 h]; Skilled Labor [10.68 h] → none |
| 2 | **Approval of Material** | 2026-06-24 → 2026-10-06 (+104d) | 2026-07-02 → 2026-10-14 (+104d) |  |  |  |  |
| ENG-MT-SPS-MC-A-110 | Material Approval for Electromechanical Works for Pump Stations | 2026-06-24 → 2026-10-06 (+104d) | 2026-07-02 → 2026-10-14 (+104d) |  | 8.5d → -70d |  | resources Unskilled Labor [40.48 h]; Electrical Technician [15.61 h]; Plumber [3.66 h]; Carpenter [4.45 h]; Mason [3.54 h]; Steel Fixer [4.52 h]; Skilled Labor [12.2 h] → none |
| SL1 | **Storage Tank (TSE)** | 2026-06-24 → 2026-10-06 (+104d) | 2026-07-02 → 2026-10-14 (+104d) |  |  |  |  |
| 1 | **Submission of Material** | 2026-06-24 → 2026-10-06 (+104d) | 2026-07-01 → 2026-10-13 (+104d) |  |  |  |  |
| ENG-MT-TSE-MC-S-110 | Material Submittal for Electromechanical Works for Storage Tank (TSE) | 2026-06-24 → 2026-10-06 (+104d) | 2026-07-01 → 2026-10-13 (+104d) |  | 8.5d → -70d |  | resources Unskilled Labor [35.42 h]; Electrical Technician [13.66 h]; Plumber [3.2 h]; Carpenter [3.89 h]; Mason [3.1 h]; Steel Fixer [3.96 h]; Skilled Labor [10.68 h] → none |
| 2 | **Approval of Material** | 2026-06-24 → 2026-10-06 (+104d) | 2026-07-02 → 2026-10-14 (+104d) |  |  |  |  |
| ENG-MT-TSE-MC-A-120 | Material Approval for Electromechanical Works for Storage Tank (TSE) | 2026-06-24 → 2026-10-06 (+104d) | 2026-07-02 → 2026-10-14 (+104d) |  | 8.5d → -70d |  | resources Unskilled Labor [40.48 h]; Electrical Technician [15.61 h]; Plumber [3.66 h]; Carpenter [4.45 h]; Mason [3.54 h]; Steel Fixer [4.52 h]; Skilled Labor [12.2 h] → none |
| PROC | **Procurement Cycle** |  | 2027-01-28 → 2027-05-03 (+95d) |  |  |  |  |
| NLL | **Short Lead Time Items** |  | 2027-01-28 → 2027-05-03 (+95d) |  |  |  |  |
| INF | **Infrastructure Networks** |  | 2027-01-28 → 2027-05-03 (+95d) |  |  |  |  |
| RD | **Road Works** |  | 2026-12-05 → 2026-10-06 (-60d) |  |  |  |  |
| PRO-RD-PO-100 | Issuance of Purchase Order for Subgrade of Road Works | 2026-06-23 A | 2026-06-30 A | 0% → 100% | 26.75d → none |  | resources Unskilled Labor [18.82 h]; Electrical Technician [7.26 h]; Plumber [1.7 h]; Carpenter [2.07 h]; Mason [1.64 h]; Steel Fixer [2.1 h]; Skilled Labor [5.67 h] → none |
| PRO-RD-PO-110 | Issuance of Purchase Order for Aggregate Base Course of Road Works | 2026-06-23 A | 2026-06-30 A | 0% → 100% | 32.25d → none |  | resources Unskilled Labor [18.82 h]; Electrical Technician [7.26 h]; Plumber [1.7 h]; Carpenter [2.07 h]; Mason [1.64 h]; Steel Fixer [2.1 h]; Skilled Labor [5.67 h] → none |
| PRO-RD-PO-120 | Issuance of Purchase Order for Prime Coat of Road Works | 2026-07-15 A | 2026-07-22 A | 0% → 100% | 28.25d → none | ENG-MT-RD-A-120, PRO-SW-PO-120 → ENG-MT-RD-A-120, ENG-MT-SW-TF-A-100 | resources Unskilled Labor [18.82 h]; Electrical Technician [7.26 h]; Plumber [1.7 h]; Carpenter [2.07 h]; Mason [1.64 h]; Steel Fixer [2.1 h]; Skilled Labor [5.67 h] → none |
| PRO-RD-PO-130 | Issuance of Purchase Order for Bituminous Base & Wearing Courses of Road Works | 2026-07-15 A | 2026-07-22 A | 0% → 100% | 19.25d → none | ENG-MT-RD-A-130, PRO-SW-PO-120 → ENG-MT-RD-A-130, ENG-MT-SW-TF-A-100 | resources Unskilled Labor [18.82 h]; Electrical Technician [7.26 h]; Plumber [1.7 h]; Carpenter [2.07 h]; Mason [1.64 h]; Steel Fixer [2.1 h]; Skilled Labor [5.67 h] → none |
| PRO-RD-PO-140 | Issuance of Purchase Order for Interlock Tiles of Landscaping | 2026-07-23 A | 2026-07-30 A | 0% → 100% | 19.25d → none |  | resources Unskilled Labor [18.82 h]; Electrical Technician [7.26 h]; Plumber [1.7 h]; Carpenter [2.07 h]; Mason [1.64 h]; Steel Fixer [2.1 h]; Skilled Labor [5.67 h] → none |
| PRO-RD-PO-150 | Issuance of Purchase Order for Curbstones of Landscaping | 2026-07-23 A | 2026-07-30 A | 0% → 100% | 32.8d → none |  | resources Unskilled Labor [18.82 h]; Electrical Technician [7.26 h]; Plumber [1.7 h]; Carpenter [2.07 h]; Mason [1.64 h]; Steel Fixer [2.1 h]; Skilled Labor [5.67 h] → none |
| PRO-RD-PO-160 | Issuance of Purchase Order for Traffic Signs Boards of Road Works | 2026-07-05 A | 2026-07-13 A | 0% → 100% | 52.75d → none |  | resources Unskilled Labor [18.82 h]; Electrical Technician [7.26 h]; Plumber [1.7 h]; Carpenter [2.07 h]; Mason [1.64 h]; Steel Fixer [2.1 h]; Skilled Labor [5.67 h] → none |
| PRO-RD-PO-170 | Issuance of Purchase Order for Road Markings of Road Works | 2026-07-13 A | 2026-07-21 A | 0% → 100% | 55.5d → none |  | resources Unskilled Labor [18.82 h]; Electrical Technician [7.26 h]; Plumber [1.7 h]; Carpenter [2.07 h]; Mason [1.64 h]; Steel Fixer [2.1 h]; Skilled Labor [5.67 h] → none |
| MF | **Manufacturing of Material** |  | 2026-11-19 → 2026-08-18 (-93d) |  |  |  |  |
| 1 | **Road Works** |  | 2026-11-19 → 2026-08-18 (-93d) |  |  |  |  |
| PRO-RD-MF-100 | Manufacturing of Subgrade for Road Works | 2026-07-01 A | 2026-10-18 → 2026-08-18 A (-61d) | 0% → 100% | 31.5d → none |  | resources Unskilled Labor [295.73 h]; Electrical Technician [114.06 h]; Plumber [26.72 h]; Carpenter [32.49 h]; Mason [25.85 h]; Steel Fixer [33.02 h]; Skilled Labor [89.13 h] → none |
| PRO-RD-MF-110 | Manufacturing of Aggregate Base Course for Road Works | 2026-07-01 A | 2026-10-28 → 2026-08-18 A (-71d) | 0% → 100% | 38d → none |  | resources Unskilled Labor [322.61 h]; Electrical Technician [124.43 h]; Plumber [29.15 h]; Carpenter [35.44 h]; Mason [28.2 h]; Steel Fixer [36.03 h]; Skilled Labor [97.24 h] → none |
| PRO-RD-MF-120 | Manufacturing of Prime Coat for Road Works | 2026-07-23 A | 2026-11-19 → 2026-08-18 A (-93d) | 0% → 100% | 33d → none |  | resources Unskilled Labor [322.61 h]; Electrical Technician [124.43 h]; Plumber [29.15 h]; Carpenter [35.44 h]; Mason [28.2 h]; Steel Fixer [36.03 h]; Skilled Labor [97.24 h] → none |
| PRO-RD-MF-130 | Manufacturing of Bituminous Base & Wearing Courses for Road Works | 2026-07-23 A | 2026-11-19 → 2026-08-18 A (-93d) | 0% → 100% | 41d → none |  | resources Unskilled Labor [322.61 h]; Electrical Technician [124.43 h]; Plumber [29.15 h]; Carpenter [35.44 h]; Mason [28.2 h]; Steel Fixer [36.03 h]; Skilled Labor [97.24 h] → none |
| 2 | **Pavement Works** |  | 2026-10-28 → 2026-08-18 (-71d) |  |  |  |  |
| PRO-RD-MF-140 | Manufacturing of Interlock Tiles for Landscaping | 2026-07-31 A | 2026-10-28 → 2026-08-18 A (-71d) | 0% → 100% | 53d → none |  | resources Unskilled Labor [241.96 h]; Electrical Technician [93.32 h]; Plumber [21.86 h]; Carpenter [26.58 h]; Mason [21.15 h]; Steel Fixer [27.02 h]; Skilled Labor [72.93 h] → none |
| PRO-RD-MF-150 | Manufacturing of Curbstones for Landscaping | 2026-07-31 A | 2026-10-28 → 2026-08-18 A (-71d) | 0% → 100% | 38.8d → none |  | resources Unskilled Labor [241.96 h]; Electrical Technician [93.32 h]; Plumber [21.86 h]; Carpenter [26.58 h]; Mason [21.15 h]; Steel Fixer [27.02 h]; Skilled Labor [72.93 h] → none |
| 3 | **Traffic Signs Boards and Roads Marking** |  | 2026-11-03 → 2026-08-18 (-77d) |  |  |  |  |
| PRO-RD-MF-160 | Manufacturing of Traffic Signs Boards for Road Works | 2026-07-13 A | 2026-10-21 → 2026-08-18 A (-64d) | 0% → 100% | 61.75d → none |  | resources Unskilled Labor [268.84 h]; Electrical Technician [103.69 h]; Plumber [24.29 h]; Carpenter [29.54 h]; Mason [23.5 h]; Steel Fixer [30.02 h]; Skilled Labor [81.03 h] → none |
| PRO-RD-MF-170 | Manufacturing of Road Markings for Road Works | 2026-07-21 A | 2026-11-03 → 2026-08-18 A (-77d) | 0% → 100% | 66.75d → none |  | resources Unskilled Labor [282.28 h]; Electrical Technician [108.87 h]; Plumber [25.51 h]; Carpenter [31.01 h]; Mason [24.67 h]; Steel Fixer [31.52 h]; Skilled Labor [85.08 h] → none |
| 1DL | **1st Material Delivery & Site Inspection** | 2026-10-19 → 2026-08-02 (-78d) | 2026-12-03 → 2026-09-01 (-93d) |  |  |  |  |
| 1 | **Road Works** | 2026-10-19 → 2026-08-02 (-78d) | 2026-12-03 → 2026-09-01 (-93d) |  |  |  |  |
| PRO-RD-1DL-100 | 1ST Material Delivery for Subgrade of Road Works | 2026-10-19 → 2026-08-02 A (-78d) | 2026-11-01 → 2026-09-01 A (-61d) | 0% → 100% | 27.5d → none |  | resources Unskilled Labor [32.26 h]; Electrical Technician [12.44 h]; Plumber [2.91 h]; Carpenter [3.54 h]; Mason [2.82 h]; Steel Fixer [3.6 h]; Skilled Labor [9.72 h] → none |
| PRO-RD-1DL-110 | 1ST Material Delivery for Aggregate Base Course of Road Works | 2026-10-29 → 2026-08-02 A (-88d) | 2026-11-11 → 2026-09-01 A (-71d) | 0% → 100% | 32d → none |  | resources Unskilled Labor [32.26 h]; Electrical Technician [12.44 h]; Plumber [2.91 h]; Carpenter [3.54 h]; Mason [2.82 h]; Steel Fixer [3.6 h]; Skilled Labor [9.72 h] → none |
| PRO-RD-1DL-120 | 1ST Material Delivery for Prime Coat of Road Works | 2026-11-21 → 2026-08-02 A (-111d) | 2026-12-03 → 2026-09-01 A (-93d) | 0% → 100% | 28d → none |  | resources Unskilled Labor [32.26 h]; Electrical Technician [12.44 h]; Plumber [2.91 h]; Carpenter [3.54 h]; Mason [2.82 h]; Steel Fixer [3.6 h]; Skilled Labor [9.72 h] → none |
| PRO-RD-1DL-130 | 1ST Material Delivery for Bituminous Base & Wearing Courses of Road Works | 2026-11-21 → 2026-08-02 A (-111d) | 2026-12-03 → 2026-09-01 A (-93d) | 0% → 100% | 35d → none |  | resources Unskilled Labor [32.26 h]; Electrical Technician [12.44 h]; Plumber [2.91 h]; Carpenter [3.54 h]; Mason [2.82 h]; Steel Fixer [3.6 h]; Skilled Labor [9.72 h] → none |
| 2 | **Pavement Works** | 2026-10-29 → 2026-08-02 (-88d) | 2026-11-11 → 2026-09-01 (-71d) |  |  |  |  |
| PRO-RD-1DL-140 | 1ST Material Delivery for Interlock Tiles of Landscaping | 2026-10-29 → 2026-08-02 A (-88d) | 2026-11-11 → 2026-09-01 A (-71d) | 0% → 100% | 45d → none |  | resources Unskilled Labor [32.26 h]; Electrical Technician [12.44 h]; Plumber [2.91 h]; Carpenter [3.54 h]; Mason [2.82 h]; Steel Fixer [3.6 h]; Skilled Labor [9.72 h] → none |
| PRO-RD-1DL-150 | 1ST Material Delivery for Curbstones of Landscaping | 2026-10-29 → 2026-08-02 A (-88d) | 2026-11-11 → 2026-09-01 A (-71d) | 0% → 100% | 32.8d → none |  | resources Unskilled Labor [32.26 h]; Electrical Technician [12.44 h]; Plumber [2.91 h]; Carpenter [3.54 h]; Mason [2.82 h]; Steel Fixer [3.6 h]; Skilled Labor [9.72 h] → none |
| 3 | **Traffic Signs Boards and Roads Marking** | 2026-10-21 → 2026-08-02 (-80d) | 2026-11-25 → 2026-09-01 (-85d) |  |  |  |  |

| ID | Task | Start | Finish | Complete | Total float | Predecessors | Other |
| --- | --- | --- | --- | --- | --- | --- | --- |
| PRO-RD-1DL-160 | 1ST Material Delivery for Traffic Signs Boards of Road Works | 2026-10-21 → 2026-08-02 A (-80d) | 2026-11-08 → 2026-09-01 A (-68d) | 0% → 100% | 52.75d → none |  | resources Unskilled Labor [40.33 h]; Electrical Technician [15.55 h]; Plumber [3.64 h]; Carpenter [4.43 h]; Mason [3.52 h]; Steel Fixer [4.5 h]; Skilled Labor [12.15 h] → none |
| PRO-RD-1DL-170 | 1ST Material Delivery for Road Markings of Road Works | 2026-11-08 → 2026-08-02 A (-98d) | 2026-11-25 → 2026-09-01 A (-85d) | 0% → 100% | 52.75d → none |  | resources Unskilled Labor [40.33 h]; Electrical Technician [15.55 h]; Plumber [3.64 h]; Carpenter [4.43 h]; Mason [3.52 h]; Steel Fixer [4.5 h]; Skilled Labor [12.15 h] → none |
| DL | **Material Delivery & Site Inspection** | 2026-11-02 → 2026-08-02 (-92d) | 2026-12-05 → 2026-10-06 (-60d) |  |  |  |  |
| 1 | **Pre-Bituminous Construction** | 2026-11-02 → 2026-08-02 (-92d) | 2026-11-12 → 2026-10-06 (-37d) |  |  |  |  |
| PRO-R25-RD-DL-100 | Material Delivery & Site Inspection for Subgrade of Road Works | 2026-11-02 → 2026-08-02 A (-92d) | 2026-11-02 → 2026-10-06 (-27d) | 0% → 30% | 27.5d → 50.5d |  |  |
| PRO-R25-RD-DL-110 | Material Delivery & Site Inspection for Aggregate Base Course of Road Works | 2026-11-12 → 2026-10-06 (-37d) | 2026-11-12 → 2026-10-06 (-37d) |  | 32d → 64d |  |  |
| 4 | **Bituminous Construction** | 2026-12-05 → 2026-10-06 (-60d) | 2026-12-05 → 2026-10-06 (-60d) |  |  |  |  |
| PRO-R25-RD-DL-160 | Material Delivery & Site Inspection for Prime Coat of Road Works | 2026-12-05 → 2026-10-06 (-60d) | 2026-12-05 → 2026-10-06 (-60d) |  | 28d → 79d |  |  |
| PRO-R25-RD-DL-170 | Material Delivery & Site Inspection for Bituminous Base & Wearing Courses of Road Works | 2026-12-05 → 2026-10-06 (-60d) | 2026-12-05 → 2026-10-06 (-60d) |  | 35d → 86d |  |  |
| 2 | **Pavement Works** | 2026-11-12 → 2026-10-06 (-37d) | 2026-11-12 → 2026-10-06 (-37d) |  |  |  |  |
| PRO-R25-RD-DL-120 | Material Delivery & Site Inspection of Interlock Tiles for Landscaping | 2026-11-12 → 2026-10-06 (-37d) | 2026-11-12 → 2026-10-06 (-37d) |  | 45d → 77d |  |  |
| PRO-R25-RD-DL-130 | Material Delivery & Site Inspection of Curbstones for Landscaping | 2026-11-12 → 2026-10-06 (-37d) | 2026-11-12 → 2026-10-06 (-37d) |  | 32.8d → 64.8d |  |  |
| 3 | **Traffic Signs Boards and Roads Marking** | 2026-11-08 → 2026-10-06 (-33d) | 2026-11-25 → 2026-10-06 (-50d) |  |  |  |  |
| PRO-R25-RD-DL-140 | Material Delivery & Site Inspection of Traffic Signs Boards For Road Works | 2026-11-08 → 2026-10-06 (-33d) | 2026-11-08 → 2026-10-06 (-33d) |  | 74.75d → 103d |  |  |
| PRO-R25-RD-DL-150 | Material Delivery & Site Inspection of Road Markings For Road Works | 2026-11-25 → 2026-10-06 (-50d) | 2026-11-25 → 2026-10-06 (-50d) |  | 52.75d → 96d |  |  |
| IR1 | **Softscape and Planting Works** | 2026-07-11 → 2026-10-06 (+87d) | 2026-11-10 → 2027-02-04 (+86d) |  |  |  |  |
| PO | **Issuance of Purchase Orders** | 2026-07-11 → 2026-10-06 (+87d) | 2026-07-19 → 2026-10-12 (+85d) |  |  |  |  |
| 1 | **Main Line Pipes** | 2026-07-11 → 2026-10-06 (+87d) | 2026-07-19 → 2026-10-12 (+85d) |  |  |  |  |
| PRO-IR-PO-140 | Issuance of Purchase Order for Softscape and Planting Works | 2026-07-12 → 2026-10-06 (+86d) | 2026-07-19 → 2026-10-12 (+85d) |  | 12.75d → -59.75d |  | resources Unskilled Labor [16.13 h]; Electrical Technician [6.22 h]; Plumber [1.46 h]; Carpenter [1.77 h]; Mason [1.41 h]; Steel Fixer [1.8 h]; Skilled Labor [4.86 h] → none |
| PRO-IR-PO-150 | Issuance of Purchase Order for Site Furnishings (Seating Bench,Stone Boulders and Gravel) | 2026-07-11 → 2026-10-06 (+87d) | 2026-07-18 → 2026-10-12 (+86d) |  | 16.75d → -56.75d |  | resources Unskilled Labor [16.13 h]; Electrical Technician [6.22 h]; Plumber [1.46 h]; Carpenter [1.77 h]; Mason [1.41 h]; Steel Fixer [1.8 h]; Skilled Labor [4.86 h] → none |
| MF | **Manufacturing of Material** | 2026-07-18 → 2026-10-13 (+87d) | 2026-10-17 → 2027-01-10 (+85d) |  |  |  |  |
| 1 | **Main Line Pipes** | 2026-07-18 → 2026-10-13 (+87d) | 2026-10-17 → 2027-01-10 (+85d) |  |  |  |  |
| PRO-IR-MF-140 | Manufacturing of Softscape and Planting Works | 2026-07-19 → 2026-10-13 (+86d) | 2026-10-17 → 2027-01-10 (+85d) |  | 14.75d → -71d |  | resources Unskilled Labor [241.96 h]; Electrical Technician [93.32 h]; Plumber [21.86 h]; Carpenter [26.58 h]; Mason [21.15 h]; Steel Fixer [27.02 h]; Skilled Labor [72.93 h] → none |
| PRO-IR-MF-150 | Manufacturing of Valves for Site Furnishings (Seating Bench,Stone Boulders and Gravel) | 2026-07-18 → 2026-10-13 (+87d) | 2026-10-16 → 2027-01-10 (+86d) |  | 18.75d → -68d |  | resources Unskilled Labor [241.96 h]; Electrical Technician [93.32 h]; Plumber [21.86 h]; Carpenter [26.58 h]; Mason [21.15 h]; Steel Fixer [27.02 h]; Skilled Labor [72.93 h] → none |
| 1DL | **1st Material Delivery & Site Inspection** | 2026-10-17 → 2027-01-11 (+86d) | 2026-10-24 → 2027-01-17 (+85d) |  |  |  |  |
| 1 | **Main Line Pipes** | 2026-10-17 → 2027-01-11 (+86d) | 2026-10-24 → 2027-01-17 (+85d) |  |  |  |  |
| PRO-IR-1DL-140 | 1ST Material Delivery for Softscape and Planting Works | 2026-10-17 → 2027-01-11 (+86d) | 2026-10-24 → 2027-01-17 (+85d) |  | 12.75d → -61d |  | resources Unskilled Labor [16.13 h]; Electrical Technician [6.22 h]; Plumber [1.46 h]; Carpenter [1.77 h]; Mason [1.41 h]; Steel Fixer [1.8 h]; Skilled Labor [4.86 h] → none |
| PRO-IR-1DL-150 | 1ST Material Delivery for Site Furnishings (Seating Bench,Stone Boulders and Gravel) | 2026-10-17 → 2027-01-11 (+86d) | 2026-10-22 → 2027-01-17 (+87d) |  | 16d → -58d |  | resources Unskilled Labor [16.13 h]; Electrical Technician [6.22 h]; Plumber [1.46 h]; Carpenter [1.77 h]; Mason [1.41 h]; Steel Fixer [1.8 h]; Skilled Labor [4.86 h] → none |
| DL | **Material Delivery & Site Inspection** | 2026-10-24 → 2027-01-18 (+86d) | 2026-11-10 → 2027-02-04 (+86d) |  |  |  |  |
| 1 | **Main Line Pipes** | 2026-10-24 → 2027-01-18 (+86d) | 2026-11-10 → 2027-02-04 (+86d) |  |  |  |  |
| PRO-R25-IR-DL-140 | Material Delivery & Site Inspection of Softscape and Planting Works | 2026-10-24 → 2027-01-18 (+86d) | 2026-11-07 → 2027-01-31 (+85d) |  | 12.75d → -61d |  | resources Unskilled Labor [32.26 h]; Electrical Technician [12.44 h]; Plumber [2.91 h]; Carpenter [3.54 h]; Mason [2.82 h]; Steel Fixer [3.6 h]; Skilled Labor [9.72 h] → none |
| PRO-R25-IR-DL-150 | Material Delivery & Site Inspection of Site Furnishings (Seating Bench,Stone Boulders and Gravel) | 2026-10-24 → 2027-01-18 (+86d) | 2026-11-10 → 2027-02-04 (+86d) |  | 16d → -58d |  | resources Unskilled Labor [43.01 h]; Electrical Technician [16.59 h]; Plumber [3.89 h]; Carpenter [4.73 h]; Mason [3.76 h]; Steel Fixer [4.8 h]; Skilled Labor [12.96 h] → none |
| SW | **Sewage Network** |  | 2026-12-28 → 2027-04-05 (+98d) |  |  |  |  |
| PO | **Issuance of Purchase Orders** |  | 2026-07-14 → 2026-10-12 (+90d) |  |  |  |  |
| PRO-SW-PO-100 | Issuance of Purchase Order for Main Line Pipes of Sewage Network | 2026-06-23 A | 2026-06-29 A | 0% → 100% | 4.5d → none |  | resources Unskilled Labor [16.13 h]; Electrical Technician [6.22 h]; Plumber [1.46 h]; Carpenter [1.77 h]; Mason [1.41 h]; Steel Fixer [1.8 h]; Skilled Labor [4.86 h] → none |
| PRO-SW-PO-110 | Issuance of Purchase Order for Manhole of Sewage Network | 2026-06-23 A | 2026-06-29 A | 0% → 100% | 11.5d → none |  | resources Unskilled Labor [16.13 h]; Electrical Technician [6.22 h]; Plumber [1.46 h]; Carpenter [1.77 h]; Mason [1.41 h]; Steel Fixer [1.8 h]; Skilled Labor [4.86 h] → none |
| 3 | **Testing and Finishes** | 2026-07-08 → 2026-10-06 (+90d) | 2026-07-14 → 2026-10-12 (+90d) |  |  |  |  |
| PRO-SW-PO-120 | Issuance of Purchase Order for Manhole Covers of Sewage Network | 2026-07-08 → 2026-10-06 (+90d) | 2026-07-14 → 2026-10-12 (+90d) |  | 2d → -74d | ENG-MT-SW-TF-A-100 → ENG-MT-SW-TF-A-100, ENG-MT-RD-A-120, ENG-MT-RD-A-130 | resources Unskilled Labor [16.13 h]; Electrical Technician [6.22 h]; Plumber [1.46 h]; Carpenter [1.77 h]; Mason [1.41 h]; Steel Fixer [1.8 h]; Skilled Labor [4.86 h] → none |
| MF | **Manufacturing of Material** |  | 2026-11-21 → 2027-02-19 (+90d) |  |  |  |  |
| PRO-SW-MF-100 | Manufacturing of Main Line Pipes for Sewage Network | 2026-06-30 A | 2026-07-19 A | 0% → 100% | 5.25d → none |  | resources Unskilled Labor [53.77 h]; Electrical Technician [20.74 h]; Plumber [4.86 h]; Carpenter [5.91 h]; Mason [4.7 h]; Steel Fixer [6 h]; Skilled Labor [16.21 h] → none |
| PRO-SW-MF-110 | Manufacturing of Manholes for Sewage Network | 2026-06-30 A | 2026-08-08 A | 0% → 100% | 13.25d → none |  | resources Unskilled Labor [107.54 h]; Electrical Technician [41.48 h]; Plumber [9.72 h]; Carpenter [11.81 h]; Mason [9.4 h]; Steel Fixer [12.01 h]; Skilled Labor [32.41 h] → none |
| 3 | **Testing and Finishes** | 2026-07-15 → 2026-10-13 (+90d) | 2026-11-21 → 2027-02-19 (+90d) |  |  |  |  |
| PRO-SW-MF-120 | Manufacturing of Manhole Covers for Sewage Network | 2026-07-15 → 2026-10-13 (+90d) | 2026-11-21 → 2027-02-19 (+90d) |  | 2d → -88d | PRO-SW-PO-120 → PRO-SW-PO-120, PRO-RD-PO-120, PRO-RD-PO-130 | resources Unskilled Labor [349.5 h]; Electrical Technician [134.8 h]; Plumber [31.58 h]; Carpenter [38.4 h]; Mason [30.55 h]; Steel Fixer [39.03 h]; Skilled Labor [105.34 h] → none |
| 1DL | **1st Material Delivery & Site Inspection** |  | 2026-11-28 → 2027-02-28 (+92d) |  |  |  |  |
| PRO-SW-1DL-100 | 1ST Material Delivery for Main Line Pipes of Sewage Network | 2026-07-20 A | 2026-07-26 A | 0% → 100% | 4.5d → none |  | resources Unskilled Labor [16.13 h]; Electrical Technician [6.22 h]; Plumber [1.46 h]; Carpenter [1.77 h]; Mason [1.41 h]; Steel Fixer [1.8 h]; Skilled Labor [4.86 h] → none |
| PRO-SW-1DL-110 | 1ST Material Delivery for Manholes of Sewage Network | 2026-08-09 A | 2026-08-15 A | 0% → 100% | 11.5d → none |  | resources Unskilled Labor [16.13 h]; Electrical Technician [6.22 h]; Plumber [1.46 h]; Carpenter [1.77 h]; Mason [1.41 h]; Steel Fixer [1.8 h]; Skilled Labor [4.86 h] → none |
| 3 | **Testing and Finishes** | 2026-11-22 → 2027-02-20 (+90d) | 2026-11-28 → 2027-02-28 (+92d) |  |  |  |  |
| PRO-SW-1DL-120 | 1ST Material Delivery for Manholes Covers of Sewage Network | 2026-11-22 → 2027-02-20 (+90d) | 2026-11-28 → 2027-02-28 (+92d) |  | 2d → -72.5d |  | resources Unskilled Labor [16.13 h]; Electrical Technician [6.22 h]; Plumber [1.46 h]; Carpenter [1.77 h]; Mason [1.41 h]; Steel Fixer [1.8 h]; Skilled Labor [4.86 h] → none |
| DL | **Material Delivery & Site Inspection** |  | 2026-12-28 → 2027-04-05 (+98d) |  |  |  |  |
| 1 | **Main Line Sections** |  | 2026-08-09 → 2026-10-06 (+58d) |  |  |  |  |
| PRO-R25-SW-DL-100 | Material Delivery & Site Inspection of Main Line Pipes for Sewage Network | 2026-07-27 A | 2026-07-27 A | 0% → 100% | 14d → none |  |  |
| PRO-R25-SW-DL-110 | Material Delivery & Site Inspection of Manholes for Sewage Network | 2026-08-09 → 2026-10-06 (+58d) | 2026-08-09 → 2026-10-06 (+58d) |  | 24.5d → -25d |  |  |
| 3 | **Testing and Finishes** | 2026-11-29 → 2027-02-28 (+91d) | 2026-12-28 → 2027-04-05 (+98d) |  |  |  |  |
| PRO-R25-SW-DL-120 | Material Delivery & Site Inspection of Manholes Covers for Sewage Network | 2026-11-29 → 2027-02-28 (+91d) | 2026-12-28 → 2027-04-05 (+98d) |  | 2d → -72.5d |  | resources Unskilled Labor [69.9 h]; Electrical Technician [26.96 h]; Plumber [6.32 h]; Carpenter [7.68 h]; Mason [6.11 h]; Steel Fixer [7.81 h]; Skilled Labor [21.07 h] → none |
| SD | **Storm Drainage Network** | 2026-06-23 → 2026-08-02 (+40d) | 2026-12-10 → 2027-03-17 (+97d) |  |  |  |  |
| MF | **Manufacturing of Material** | 2026-06-30 → 2026-10-09 (+101d) | 2026-10-22 → 2027-01-20 (+90d) |  |  |  |  |
| 1 | **Main Line Sections** | 2026-06-30 → 2026-10-09 (+101d) | 2026-08-08 → 2026-11-22 (+106d) |  |  |  |  |
| PRO-SD-MF-110 | Manufacturing of Materials for Main Line Pipes of Storm Drainage Network | 2026-07-01 → 2026-10-09 (+100d) | 2026-07-09 → 2026-10-16 (+99d) |  | 6d → -84d |  | resources Unskilled Labor [21.51 h]; Electrical Technician [8.3 h]; Plumber [1.94 h]; Carpenter [2.36 h]; Mason [1.88 h]; Steel Fixer [2.4 h]; Skilled Labor [6.48 h] → none |
| PRO-SD-MF-100 | Manufacturing of Materials for Manholes of Storm Drainage Network | 2026-06-30 → 2026-10-13 (+105d) | 2026-08-08 → 2026-11-22 (+106d) |  | 0d → -105.2d |  | resources Unskilled Labor [107.54 h]; Electrical Technician [41.48 h]; Plumber [9.72 h]; Carpenter [11.81 h]; Mason [9.4 h]; Steel Fixer [12.01 h]; Skilled Labor [32.41 h] → none |
| 2 | **Catch Basin Sections** | 2026-06-30 → 2026-10-13 (+105d) | 2026-07-19 → 2026-11-01 (+105d) |  |  |  |  |
| PRO-SD-MF-130 | Manufacturing of Materials for Catch Basins of Storm Drainage Network | 2026-06-30 → 2026-10-13 (+105d) | 2026-07-19 → 2026-11-01 (+105d) |  | 30d → -75d |  | resources Unskilled Labor [53.77 h]; Electrical Technician [20.74 h]; Plumber [4.86 h]; Carpenter [5.91 h]; Mason [4.7 h]; Steel Fixer [6 h]; Skilled Labor [16.21 h] → none |
| PRO-SD-MF-150 | Manufacturing of Materials for Catch Basin Pipes of Storm Drainage Network | 2026-06-30 → 2026-10-13 (+105d) | 2026-07-19 → 2026-11-01 (+105d) |  | 30d → -75d |  | resources Unskilled Labor [53.77 h]; Electrical Technician [20.74 h]; Plumber [4.86 h]; Carpenter [5.91 h]; Mason [4.7 h]; Steel Fixer [6 h]; Skilled Labor [16.21 h] → none |
| 3 | **Testing and Finishes** | 2026-07-15 → 2026-10-13 (+90d) | 2026-10-22 → 2027-01-20 (+90d) |  |  |  |  |
| PRO-SD-MF-120 | Manufacturing of Materials for Manhole Covers of Storm Drainage Network | 2026-07-15 → 2026-10-13 (+90d) | 2026-10-22 → 2027-01-20 (+90d) |  | 31d → -59d |  | resources Unskilled Labor [268.84 h]; Electrical Technician [103.69 h]; Plumber [24.29 h]; Carpenter [29.54 h]; Mason [23.5 h]; Steel Fixer [30.02 h]; Skilled Labor [81.03 h] → none |
| PRO-SD-MF-140 | Manufacturing of Materials for Catch Basin Covers of Storm Drainage Network | 2026-07-15 → 2026-10-13 (+90d) | 2026-10-22 → 2027-01-20 (+90d) |  | 26d → -64d |  | resources Unskilled Labor [268.84 h]; Electrical Technician [103.69 h]; Plumber [24.29 h]; Carpenter [29.54 h]; Mason [23.5 h]; Steel Fixer [30.02 h]; Skilled Labor [81.03 h] → none |
| PO | **Issuance of Purchase Orders** | 2026-06-23 → 2026-10-06 (+105d) | 2026-07-14 → 2026-10-13 (+91d) |  |  |  |  |
| 1 | **Main Line Sections** | 2026-06-23 → 2026-10-06 (+105d) | 2026-07-01 → 2026-10-13 (+104d) |  |  |  |  |
| PRO-SD-PO-100 | Issuance of Purchase Order for Manholes of Storm Drainage Network | 2026-06-23 → 2026-10-06 (+105d) | 2026-06-30 → 2026-10-13 (+105d) |  | 0.05d → -88.95d |  | resources Unskilled Labor [16.67 h]; Electrical Technician [6.43 h]; Plumber [1.51 h]; Carpenter [1.83 h]; Mason [1.46 h]; Steel Fixer [1.86 h]; Skilled Labor [5.02 h] → none |
| PRO-SD-PO-110 | Issuance of Purchase Order for Main Line Pipes of Storm Drainage Network | 2026-06-28 → 2026-10-06 (+100d) | 2026-07-01 → 2026-10-08 (+99d) |  | 0.75d → -83.75d |  | resources Unskilled Labor [8.07 h]; Electrical Technician [3.11 h]; Plumber [0.73 h]; Carpenter [0.89 h]; Mason [0.7 h]; Steel Fixer [0.9 h]; Skilled Labor [2.43 h] → none |
| 2 | **Catch Basin Sections** | 2026-06-23 → 2026-10-06 (+105d) | 2026-06-29 → 2026-10-12 (+105d) |  |  |  |  |

| ID | Task | Start | Finish | Complete | Total float | Predecessors | Other |
| --- | --- | --- | --- | --- | --- | --- | --- |
| PRO-SD-PO-130 | Issuance of Purchase Order for Catch Basins of Storm Drainage Network | 2026-06-23 → 2026-10-06 (+105d) | 2026-06-29 → 2026-10-12 (+105d) |  | 26.25d → -62.75d |  | resources Unskilled Labor [16.13 h]; Electrical Technician [6.22 h]; Plumber [1.46 h]; Carpenter [1.77 h]; Mason [1.41 h]; Steel Fixer [1.8 h]; Skilled Labor [4.86 h] → none |
| PRO-SD-PO-150 | Issuance of Purchase Order for Catch Basin Pipes of Storm Drainage Network | 2026-06-23 → 2026-10-06 (+105d) | 2026-06-29 → 2026-10-12 (+105d) |  | 26.25d → -62.75d |  | resources Unskilled Labor [16.13 h]; Electrical Technician [6.22 h]; Plumber [1.46 h]; Carpenter [1.77 h]; Mason [1.41 h]; Steel Fixer [1.8 h]; Skilled Labor [4.86 h] → none |
| 3 | **Testing and Finishes** | 2026-07-08 → 2026-10-06 (+90d) | 2026-07-14 → 2026-10-12 (+90d) |  |  |  |  |
| PRO-SD-PO-120 | Issuance of Purchase Order for Manhole Covers of Storm Drainage Network | 2026-07-08 → 2026-10-06 (+90d) | 2026-07-14 → 2026-10-12 (+90d) |  | 26.25d → -49.75d |  | resources Unskilled Labor [16.13 h]; Electrical Technician [6.22 h]; Plumber [1.46 h]; Carpenter [1.77 h]; Mason [1.41 h]; Steel Fixer [1.8 h]; Skilled Labor [4.86 h] → none |
| PRO-SD-PO-140 | Issuance of Purchase Order for Catch Basin Covers of Storm Drainage Network | 2026-07-08 → 2026-10-06 (+90d) | 2026-07-14 → 2026-10-12 (+90d) |  | 22.25d → -53.75d |  | resources Unskilled Labor [16.13 h]; Electrical Technician [6.22 h]; Plumber [1.46 h]; Carpenter [1.77 h]; Mason [1.41 h]; Steel Fixer [1.8 h]; Skilled Labor [4.86 h] → none |
| 1DL | **1st Material Delivery & Site Inspection** | 2026-07-09 → 2026-10-17 (+100d) | 2026-10-29 → 2027-01-27 (+90d) |  |  |  |  |
| 1 | **Main Line Sections** | 2026-07-09 → 2026-10-17 (+100d) | 2026-07-16 → 2026-10-22 (+98d) |  |  |  |  |
| PRO-SD-1DL-110 | 1ST Material Delivery for Main Line Pipes of Storm Drainage Network | 2026-07-09 → 2026-10-17 (+100d) | 2026-07-16 → 2026-10-22 (+98d) |  | 5d → -71d |  | resources Unskilled Labor [16.13 h]; Electrical Technician [6.22 h]; Plumber [1.46 h]; Carpenter [1.77 h]; Mason [1.41 h]; Steel Fixer [1.8 h]; Skilled Labor [4.86 h] → none |
| 2 | **Catch Basin Sections** | 2026-07-20 → 2026-11-02 (+105d) | 2026-07-26 → 2026-11-08 (+105d) |  |  |  |  |
| PRO-SD-1DL-120 | 1ST Material Delivery for Catch Basin Pipes of Storm Drainage Network | 2026-07-20 → 2026-11-02 (+105d) | 2026-07-26 → 2026-11-08 (+105d) |  | 26d → -63d |  | resources Unskilled Labor [16.13 h]; Electrical Technician [6.22 h]; Plumber [1.46 h]; Carpenter [1.77 h]; Mason [1.41 h]; Steel Fixer [1.8 h]; Skilled Labor [4.86 h] → none |
| PRO-SD-1DL-130 | 1ST Material Delivery for Catch Basins of Storm Drainage Network | 2026-07-20 → 2026-11-02 (+105d) | 2026-07-26 → 2026-11-08 (+105d) |  | 26d → -63d |  | resources Unskilled Labor [16.13 h]; Electrical Technician [6.22 h]; Plumber [1.46 h]; Carpenter [1.77 h]; Mason [1.41 h]; Steel Fixer [1.8 h]; Skilled Labor [4.86 h] → none |
| 3 | **Testing and Finishes** | 2026-10-24 → 2027-01-21 (+89d) | 2026-10-29 → 2027-01-27 (+90d) |  |  |  |  |
| PRO-SD-1DL-140 | 1ST Material Delivery for Manholes Covers of Storm Drainage Network | 2026-10-24 → 2027-01-21 (+89d) | 2026-10-29 → 2027-01-27 (+90d) |  | 26d → -51d |  | resources Unskilled Labor [16.13 h]; Electrical Technician [6.22 h]; Plumber [1.46 h]; Carpenter [1.77 h]; Mason [1.41 h]; Steel Fixer [1.8 h]; Skilled Labor [4.86 h] → none |
| PRO-SD-1DL-150 | 1ST Material Delivery for Catch Basin Covers of Storm Drainage Network | 2026-10-24 → 2027-01-21 (+89d) | 2026-10-29 → 2027-01-27 (+90d) |  | 22d → -55d |  | resources Unskilled Labor [16.13 h]; Electrical Technician [6.22 h]; Plumber [1.46 h]; Carpenter [1.77 h]; Mason [1.41 h]; Steel Fixer [1.8 h]; Skilled Labor [4.86 h] → none |
| DL | **Material Delivery & Site Inspection** | 2026-07-16 → 2026-08-02 (+17d) | 2026-12-10 → 2027-03-17 (+97d) |  |  |  |  |
| 1 | **Main Line Sections** | 2026-07-16 → 2026-08-02 (+17d) | 2026-08-09 → 2026-11-22 (+105d) |  |  |  |  |
| PRO-R25-SD-DL-100 | Material Delivery & Site Inspection of Manholes of Storm Drainage Network | 2026-08-09 → 2026-08-02 A (-7d) | 2026-08-09 → 2026-11-22 (+105d) | 0% → 40% | 0d → -89.2d | PRO-SD-MF-100 → PRO-SD-MF-100 FF |  |
| PRO-R25-SD-DL-120 | Material Delivery & Site Inspection of Main Line Pipes of Storm Drainage Network | 2026-07-16 → 2026-08-02 A (+17d) | 2026-07-16 → 2026-10-24 (+100d) | 0% → 82% | 5d → -71d | PRO-SD-1DL-110, PRO-SD-MF-110 → PRO-SD-1DL-110 FF, PRO-SD-MF-110 FF |  |
| 2 | **Catch Basin Sections** | 2026-07-27 → 2026-08-02 (+6d) | 2026-07-27 → 2026-11-09 (+105d) |  |  |  |  |
| PRO-R25-SD-DL-110 | Material Delivery & Site Inspection of Catch Basin Pipes for Storm Drainage Network | 2026-07-27 → 2026-08-02 A (+6d) | 2026-07-27 → 2026-11-09 (+105d) | 0% → 40% | 36d → -53d | PRO-SD-1DL-120, PRO-SD-MF-150 SS, PRO-SD-MF-150 FF → PRO-SD-MF-150 FF, PRO-SD-1DL-120 FF |  |
| PRO-R25-SD-DL-130 | Material Delivery & Site Inspection of Catch Basins for Storm Drainage Network | 2026-07-27 → 2026-08-02 A (+6d) | 2026-07-27 → 2026-11-09 (+105d) | 0% → 40% | 36d → -53d | PRO-SD-1DL-130, PRO-SD-MF-130 SS, PRO-SD-MF-130 FF → PRO-SD-MF-130 FF, PRO-SD-1DL-130 FF |  |
| 3 | **Testing and Finishes** | 2026-10-31 → 2027-01-28 (+89d) | 2026-12-10 → 2027-03-17 (+97d) |  |  |  |  |
| PRO-R25-SD-DL-150 | Material Delivery & Site Inspection of Catch Basin Covers for Storm Drainage Network | 2026-10-31 → 2027-01-28 (+89d) | 2026-11-22 → 2027-02-24 (+94d) |  | 22d → -55d |  | resources Unskilled Labor [53.77 h]; Electrical Technician [20.74 h]; Plumber [4.86 h]; Carpenter [5.91 h]; Mason [4.7 h]; Steel Fixer [6 h]; Skilled Labor [16.21 h] → none |
| PRO-R25-SD-DL-140 | Material Delivery & Site Inspection of Manholes Covers for Storm Drainage Network | 2026-11-11 → 2027-02-06 (+87d) | 2026-12-10 → 2027-03-17 (+97d) |  | 16d → -58d |  | resources Unskilled Labor [69.9 h]; Electrical Technician [26.96 h]; Plumber [6.32 h]; Carpenter [7.68 h]; Mason [6.11 h]; Steel Fixer [7.81 h]; Skilled Labor [21.07 h] → none |
| PW | **Potable Water Network** |  | 2026-12-13 → 2027-03-24 (+101d) |  |  |  |  |
| PO | **Issuance of Purchase Orders** |  | 2026-07-19 → 2026-10-17 (+90d) |  |  |  |  |
| 1 | **Main Line Sections** |  | 2026-07-14 → 2026-10-14 (+92d) |  |  |  |  |
| PRO-PW-PO-110 | Issuance of Purchase Order for Valves of Potable Water Network | 2026-07-08 → 2026-10-06 (+90d) | 2026-07-14 → 2026-10-12 (+90d) |  | 19.75d → -56.25d |  | resources Unskilled Labor [16.13 h]; Electrical Technician [6.22 h]; Plumber [1.46 h]; Carpenter [1.77 h]; Mason [1.41 h]; Steel Fixer [1.8 h]; Skilled Labor [4.86 h] → none |
| PRO-PW-PO-100_R | Issuance of Purchase Order for Main Line Pipes of Potable Water Network(Remaining) | 2026-07-01 → 2026-10-10 (+101d) | 2026-07-07 → 2026-10-14 (+99d) |  | 0.75d → -83.75d |  | resources Unskilled Labor [13.44 h]; Electrical Technician [5.18 h]; Plumber [1.21 h]; Carpenter [1.48 h]; Mason [1.17 h]; Steel Fixer [1.5 h]; Skilled Labor [4.05 h] → none |
| 3 | **Fire Hydrant** | 2026-07-08 → 2026-10-06 (+90d) | 2026-07-19 → 2026-10-17 (+90d) |  |  |  |  |
| PRO-PW-PO-120 | Issuance of Purchase Order for Fire Hydrants of Potable Water Network | 2026-07-08 → 2026-10-06 (+90d) | 2026-07-19 → 2026-10-17 (+90d) |  | 34.75d → -41.25d |  | resources Unskilled Labor [26.88 h]; Electrical Technician [10.37 h]; Plumber [2.43 h]; Carpenter [2.95 h]; Mason [2.35 h]; Steel Fixer [3 h]; Skilled Labor [8.1 h] → none |
| 4 | **Testing and Finishes** | 2026-07-08 → 2026-10-06 (+90d) | 2026-07-19 → 2026-10-17 (+90d) |  |  |  |  |
| PRO-PW-PO-130 | Issuance of Purchase Order for Surface Box of Potable Water Network | 2026-07-08 → 2026-10-06 (+90d) | 2026-07-19 → 2026-10-17 (+90d) |  | 30.25d → -45.75d |  | resources Unskilled Labor [26.88 h]; Electrical Technician [10.37 h]; Plumber [2.43 h]; Carpenter [2.95 h]; Mason [2.35 h]; Steel Fixer [3 h]; Skilled Labor [8.1 h] → none |
| MF | **Manufacturing of Material** |  | 2026-11-06 → 2027-02-04 (+90d) |  |  |  |  |
| 1 | **Main Line Sections** |  | 2026-10-12 → 2027-01-19 (+99d) |  |  |  |  |
| PRO-PW-MF-110 | Manufacturing of Valves for Potable Water Network | 2026-07-15 → 2026-10-13 (+90d) | 2026-10-12 → 2027-01-10 (+90d) |  | 22.5d → -67.5d |  | resources Unskilled Labor [241.96 h]; Electrical Technician [93.32 h]; Plumber [21.86 h]; Carpenter [26.58 h]; Mason [21.15 h]; Steel Fixer [27.02 h]; Skilled Labor [72.93 h] → none |
| PRO-PW-MF-100_R | Manufacturing of Main Line Pipes for Potable Water Network(Remaining) | 2026-07-07 → 2026-10-15 (+100d) | 2026-10-11 → 2027-01-19 (+100d) |  | 0.75d → -99d |  | resources Unskilled Labor [259.43 h]; Electrical Technician [100.06 h]; Plumber [23.44 h]; Carpenter [28.5 h]; Mason [22.68 h]; Steel Fixer [28.97 h]; Skilled Labor [78.68 h] → none |
| 3 | **Fire Hydrant** | 2026-07-20 → 2026-10-18 (+90d) | 2026-09-17 → 2026-12-16 (+90d) |  |  |  |  |
| PRO-PW-MF-120 | Manufacturing of Fire Hydrants for Potable Water Network | 2026-07-20 → 2026-10-18 (+90d) | 2026-09-17 → 2026-12-16 (+90d) |  | 40.5d → -49.5d |  | resources Unskilled Labor [161.31 h]; Electrical Technician [62.21 h]; Plumber [14.57 h]; Carpenter [17.72 h]; Mason [14.1 h]; Steel Fixer [18.01 h]; Skilled Labor [48.62 h] → none |
| 4 | **Testing and Finishes** | 2026-07-20 → 2026-10-18 (+90d) | 2026-11-06 → 2027-02-04 (+90d) |  |  |  |  |
| PRO-PW-MF-130 | Manufacturing for Surface Box of Potable Water Network | 2026-07-20 → 2026-10-18 (+90d) | 2026-11-06 → 2027-02-04 (+90d) |  | 35d → -55d |  | resources Unskilled Labor [295.73 h]; Electrical Technician [114.06 h]; Plumber [26.72 h]; Carpenter [32.49 h]; Mason [25.85 h]; Steel Fixer [33.02 h]; Skilled Labor [89.13 h] → none |
| 1DL | **1st Material Delivery & Site Inspection** |  | 2026-11-12 → 2027-02-14 (+94d) |  |  |  |  |
| 1 | **Main Line Sections** |  | 2026-10-19 → 2027-01-17 (+90d) |  |  |  |  |
| PRO-PW-1DL-100_R | 1ST Material Delivery for Main Line Pipes of Potable Water Network(Remaining) | 2026-07-07 → 2026-10-15 (+100d) | 2026-09-28 → 2027-01-05 (+99d) |  | 11.5d → -73d |  | resources Unskilled Labor [189.53 h]; Electrical Technician [73.1 h]; Plumber [17.13 h]; Carpenter [20.82 h]; Mason [16.57 h]; Steel Fixer [21.17 h]; Skilled Labor [57.13 h] → none |
| PRO-PW-1DL-110 | 1ST Material Delivery for Valves of Potable Water Network | 2026-10-13 → 2027-01-11 (+90d) | 2026-10-19 → 2027-01-17 (+90d) |  | 19.5d → -57.5d |  | resources Unskilled Labor [16.13 h]; Electrical Technician [6.22 h]; Plumber [1.46 h]; Carpenter [1.77 h]; Mason [1.41 h]; Steel Fixer [1.8 h]; Skilled Labor [4.86 h] → none |
| 3 | **Fire Hydrant** | 2026-09-19 → 2026-12-17 (+89d) | 2026-09-26 → 2026-12-23 (+88d) |  |  |  |  |
| PRO-PW-1DL-120 | 1ST Material Delivery for Fire Hydrants of Potable Water Network | 2026-09-19 → 2026-12-17 (+89d) | 2026-09-26 → 2026-12-23 (+88d) |  | 33.5d → -42.5d |  | resources Unskilled Labor [16.13 h]; Electrical Technician [6.22 h]; Plumber [1.46 h]; Carpenter [1.77 h]; Mason [1.41 h]; Steel Fixer [1.8 h]; Skilled Labor [4.86 h] → none |
| 4 | **Testing and Finishes** | 2026-11-07 → 2027-02-06 (+91d) | 2026-11-12 → 2027-02-14 (+94d) |  |  |  |  |
| PRO-PW-1DL-130 | 1ST Material Delivery for Finishes of Potable Water Network | 2026-11-07 → 2027-02-06 (+91d) | 2026-11-12 → 2027-02-14 (+94d) |  | 30d → -48d |  | resources Unskilled Labor [16.13 h]; Electrical Technician [6.22 h]; Plumber [1.46 h]; Carpenter [1.77 h]; Mason [1.41 h]; Steel Fixer [1.8 h]; Skilled Labor [4.86 h] → none |
| DL | **Material Delivery & Site Inspection** |  | 2026-12-13 → 2027-03-24 (+101d) |  |  |  |  |
| 1 | **Main Line Sections** |  | 2026-10-20 → 2027-01-18 (+90d) |  |  |  |  |
| PRO-R25-PW-DL-100_R | Material Delivery & Site Inspection of Main Line Pipes for Potable Water Network(Remaining) | 2026-09-29 → 2026-08-02 A (-58d) | 2026-09-29 → 2027-01-05 (+98d) | 0% → 90% | 11.5d → -73d | PRO-PW-1DL-100_R, PRO-R25-PW-DL-100 → PRO-R25-PW-DL-100, PRO-PW-1DL-100_R FF |  |
| PRO-R25-PW-DL-110 | Material Delivery & Site Inspection of Valves for Potable Water Network | 2026-10-20 → 2027-01-18 (+90d) | 2026-10-20 → 2027-01-18 (+90d) |  | 25.5d → -51.5d |  |  |
| 3 | **Fire Hydrant** | 2026-09-27 → 2026-12-24 (+88d) | 2026-09-27 → 2026-12-24 (+88d) |  |  |  |  |
| PRO-R25-PW-DL-120 | Material Delivery & Site Inspection of Fire Hydrants for Potable Water Network | 2026-09-27 → 2026-12-24 (+88d) | 2026-09-27 → 2026-12-24 (+88d) |  | 33.5d → -42.5d |  |  |
| 4 | **Testing and Finishes** | 2026-11-14 → 2027-02-14 (+92d) | 2026-12-13 → 2027-03-24 (+101d) |  |  |  |  |
| PRO-R25-PW-DL-130 | Material Delivery & Site Inspection for Finishes of Potable Water Network | 2026-11-14 → 2027-02-14 (+92d) | 2026-12-13 → 2027-03-24 (+101d) |  | 30d → -48d |  | resources Unskilled Labor [69.9 h]; Electrical Technician [26.96 h]; Plumber [6.32 h]; Carpenter [7.68 h]; Mason [6.11 h]; Steel Fixer [7.81 h]; Skilled Labor [21.07 h] → none |
| IR | **Irrigation Network** |  | 2026-10-27 → 2027-01-25 (+90d) |  |  |  |  |
| PO | **Issuance of Purchase Orders** |  | 2026-07-21 → 2026-10-19 (+90d) |  |  |  |  |
| 1 | **Main Line Pipes** |  | 2026-07-21 → 2026-10-19 (+90d) |  |  |  |  |
| PRO-IR-PO-110 | Issuance of Purchase Order for Valves of Irrigation Network | 2026-07-15 → 2026-10-13 (+90d) | 2026-07-21 → 2026-10-19 (+90d) |  | 21.75d → -54.25d |  | resources Unskilled Labor [16.13 h]; Electrical Technician [6.22 h]; Plumber [1.46 h]; Carpenter [1.77 h]; Mason [1.41 h]; Steel Fixer [1.8 h]; Skilled Labor [4.86 h] → none |
| PRO-IR-PO-100_R | Issuance of Purchase Order for Main Line Pipes of Irrigation Network(Remaining) | 2026-07-07 → 2026-10-15 (+100d) | 2026-07-11 → 2026-10-19 (+100d) |  | 16.45d → -68.05d |  | resources Unskilled Labor [8.87 h]; Electrical Technician [3.42 h]; Plumber [0.8 h]; Carpenter [0.97 h]; Mason [0.78 h]; Steel Fixer [0.99 h]; Skilled Labor [2.67 h] → none |
| MF | **Manufacturing of Material** | 2026-07-11 → 2026-10-19 (+100d) | 2026-10-19 → 2027-01-17 (+90d) |  |  |  |  |
| 1 | **Main Line Pipes** | 2026-07-11 → 2026-10-19 (+100d) | 2026-10-19 → 2027-01-17 (+90d) |  |  |  |  |
| PRO-IR-MF-100 | Manufacturing of Main Line Pipes for Irrigation Network | 2026-07-11 → 2026-10-19 (+100d) | 2026-10-05 → 2027-01-13 (+100d) |  | 18.2d → -81.3d |  | resources Unskilled Labor [231.2 h]; Electrical Technician [89.17 h]; Plumber [20.89 h]; Carpenter [25.4 h]; Mason [20.21 h]; Steel Fixer [25.82 h]; Skilled Labor [69.69 h] → none |
| PRO-IR-MF-110 | Manufacturing of Valves for Irrigation Network | 2026-07-22 → 2026-10-20 (+90d) | 2026-10-19 → 2027-01-17 (+90d) |  | 25.5d → -64.5d |  | resources Unskilled Labor [241.96 h]; Electrical Technician [93.32 h]; Plumber [21.86 h]; Carpenter [26.58 h]; Mason [21.15 h]; Steel Fixer [27.02 h]; Skilled Labor [72.93 h] → none |
| 1DL | **1st Material Delivery & Site Inspection** | 2026-10-05 → 2027-01-13 (+100d) | 2026-10-26 → 2027-01-24 (+90d) |  |  |  |  |
| 1 | **Main Line Pipes** | 2026-10-05 → 2027-01-13 (+100d) | 2026-10-26 → 2027-01-24 (+90d) |  |  |  |  |
| PRO-IR-1DL-100 | 1ST Material Delivery for Main Line Pipes of Irrigation Network | 2026-10-05 → 2027-01-13 (+100d) | 2026-10-11 → 2027-01-19 (+100d) |  | 15.2d → -70.3d |  | resources Unskilled Labor [13.44 h]; Electrical Technician [5.18 h]; Plumber [1.21 h]; Carpenter [1.48 h]; Mason [1.17 h]; Steel Fixer [1.5 h]; Skilled Labor [4.05 h] → none |
| PRO-IR-1DL-110 | 1ST Material Delivery for Valves of Irrigation Network | 2026-10-20 → 2027-01-18 (+90d) | 2026-10-26 → 2027-01-24 (+90d) |  | 21.5d → -55.5d |  | resources Unskilled Labor [16.13 h]; Electrical Technician [6.22 h]; Plumber [1.46 h]; Carpenter [1.77 h]; Mason [1.41 h]; Steel Fixer [1.8 h]; Skilled Labor [4.86 h] → none |

| ID | Task | Start | Finish | Complete | Total float | Other |
| --- | --- | --- | --- | --- | --- | --- |
| DL | **Material Delivery & Site Inspection** | 2026-10-11 → 2027-01-19 (+100d) | 2026-10-27 → 2027-01-25 (+90d) |  |  |  |
| 1 | **Main Line Pipes** | 2026-10-11 → 2027-01-19 (+100d) | 2026-10-27 → 2027-01-25 (+90d) |  |  |  |
| PRO-R25-IR-DL-100 | Material Delivery & Site Inspection of Main Line Pipes for Irrigation Network | 2026-10-11 → 2027-01-19 (+100d) | 2026-10-11 → 2027-01-19 (+100d) |  | 15.2d → -70.3d |  |
| PRO-R25-IR-DL-110 | Material Delivery & Site Inspection of Valves for Irrigation Network | 2026-10-27 → 2027-01-25 (+90d) | 2026-10-27 → 2027-01-25 (+90d) |  | 21.5d → -55.5d | resources Gate valve 50 mm PN16; Direct Burried Gate valve 40 mm PN16; Pressure compensating bubblers 110 Lit/Hr; Flushing Bronze gate valve dia 1.5" inside PVC box; Air release valve 1.5" inside PVC box; Extra flexible pressure compensating on surface inline dripline`s, O.D. is 16.1 mm; Electrical Solenoid Valve ( 1.5") inside PVC box; Electrical Solenoid Valve ( 2") inside PVC box; Quick coupling valve 1" inside a round valve box 10" size with a manual gate valve, hose swivel and key with all accessories; Advanced Irrigation controller subject to client approval, can connect with Centarl Control system; Decoder cables 12 AWG between valves and controllers, The cables shall be pulled through 32 UPVC conduit; Preparing the irrigation program for the entire system and providing technical services for monitoring and controlling the central irrigation systems → Gate valve 50 mm PN16; Direct Burried Gate valve 40 mm PN16; Pressure–compensating bubblers 110 Lit/Hr; Flushing Bronze gate valve dia 1.5" inside PVC box; Air release valve 1.5" inside PVC box; Extra flexible pressure compensating on surface inline dripline`s, O.D. is 16.1 mm; Electrical Solenoid Valve ( 1.5") inside PVC box; Electrical Solenoid Valve ( 2") inside PVC box; Quick coupling valve 1" inside a round valve box 10" size with a manual gate valve, hose swivel and key with all accessories; Advanced Irrigation controller subject to client approval, can connect with Centarl Control system; Decoder cables 12 AWG between valves and controllers, The cables shall be pulled through 32Ø UPVC conduit; Preparing the irrigation program for the entire system and providing technical services for monitoring and controlling the central irrigation systems |
| TSE | **Treated Sewage Effluent (Tse)** |  | 2026-10-10 → 2027-01-18 (+100d) |  |  |  |
| PO | **Issuance of Purchase Orders** | 2026-06-27 → 2026-10-06 (+101d) | 2026-07-04 → 2026-10-12 (+100d) |  |  |  |
| 1 | **Main Line Pipes** | 2026-06-27 → 2026-10-06 (+101d) | 2026-07-04 → 2026-10-12 (+100d) |  |  |  |
| PRO-TSE-PO-120 | Issuance of Purchase Order for Main Line Pipes of Treated Sewage Effluent (Tse) | 2026-06-27 → 2026-10-06 (+101d) | 2026-07-04 → 2026-10-12 (+100d) |  | 19.25d → -66.25d | resources Unskilled Labor [16.13 h]; Electrical Technician [6.22 h]; Plumber [1.46 h]; Carpenter [1.77 h]; Mason [1.41 h]; Steel Fixer [1.8 h]; Skilled Labor [4.86 h] → none |
| PRO-TSE-PO-130 | Issuance of Purchase Order for Valves of Treated Sewage Effluent (Tse) | 2026-06-27 → 2026-10-06 (+101d) | 2026-07-04 → 2026-10-12 (+100d) |  | 38.25d → -47.25d | resources Unskilled Labor [16.13 h]; Electrical Technician [6.22 h]; Plumber [1.46 h]; Carpenter [1.77 h]; Mason [1.41 h]; Steel Fixer [1.8 h]; Skilled Labor [4.86 h] → none |
| MF | **Manufacturing of Material** | 2026-07-04 → 2026-10-13 (+101d) | 2026-10-02 → 2027-01-10 (+100d) |  |  |  |
| 1 | **Main Line Pipes** | 2026-07-04 → 2026-10-13 (+101d) | 2026-10-02 → 2027-01-10 (+100d) |  |  |  |
| PRO-TSE-MF-120 | Manufacturing of Main Line Pipes for Treated Sewage Effluent (Tse) | 2026-07-04 → 2026-10-13 (+101d) | 2026-10-02 → 2027-01-10 (+100d) |  | 22.25d → -78.5d | resources Unskilled Labor [241.96 h]; Electrical Technician [93.32 h]; Plumber [21.86 h]; Carpenter [26.58 h]; Mason [21.15 h]; Steel Fixer [27.02 h]; Skilled Labor [72.93 h] → none |
| PRO-TSE-MF-130 | Manufacturing of Valves for Treated Sewage Effluent (Tse) | 2026-07-04 → 2026-10-13 (+101d) | 2026-10-02 → 2027-01-10 (+100d) |  | 44.25d → -56.5d | resources Unskilled Labor [241.96 h]; Electrical Technician [93.32 h]; Plumber [21.86 h]; Carpenter [26.58 h]; Mason [21.15 h]; Steel Fixer [27.02 h]; Skilled Labor [72.93 h] → none |
| 1DL | **1st Material Delivery & Site Inspection** | 2026-10-03 → 2027-01-11 (+100d) | 2026-10-08 → 2027-01-17 (+101d) |  |  |  |
| 1 | **Main Line Pipes** | 2026-10-03 → 2027-01-11 (+100d) | 2026-10-08 → 2027-01-17 (+101d) |  |  |  |
| PRO-TSE-1DL-120 | 1ST Material Delivery for Main Line Pipes of Treated Sewage Effluent (Tse) | 2026-10-03 → 2027-01-11 (+100d) | 2026-10-08 → 2027-01-17 (+101d) |  | 18.5d → -67.5d | resources Unskilled Labor [16.13 h]; Electrical Technician [6.22 h]; Plumber [1.46 h]; Carpenter [1.77 h]; Mason [1.41 h]; Steel Fixer [1.8 h]; Skilled Labor [4.86 h] → none |
| PRO-TSE-1DL-130 | 1ST Material Delivery for Valves of Treated Sewage Effluent (Tse) | 2026-10-03 → 2027-01-11 (+100d) | 2026-10-08 → 2027-01-17 (+101d) |  | 37.5d → -48.5d | resources Unskilled Labor [16.13 h]; Electrical Technician [6.22 h]; Plumber [1.46 h]; Carpenter [1.77 h]; Mason [1.41 h]; Steel Fixer [1.8 h]; Skilled Labor [4.86 h] → none |
| DL | **Material Delivery & Site Inspection** |  | 2026-10-10 → 2027-01-18 (+100d) |  |  |  |
| 1 | **Main Line Pipes** |  | 2026-10-10 → 2027-01-18 (+100d) |  |  |  |
| PRO-R25-TSE-DL-120_R | Material Delivery & Site Inspection of Main Line Pipes for Treated Sewage Effluent (Tse)(Remaining) | 2026-10-10 → 2026-08-02 A (-69d) | 2026-10-10 → 2027-01-18 (+100d) | 0% → 50% | 18.5d → -67.5d |  |
| PRO-R25-TSE-DL-130 | Material Delivery & Site Inspection of Valves for Treated Sewage Effluent (Tse) | 2026-10-10 → 2027-01-18 (+100d) | 2026-10-10 → 2027-01-18 (+100d) |  | 37.5d → -48.5d |  |
| MV | **Medium Voltage Network** | 2026-06-23 → 2026-10-06 (+105d) | 2026-12-05 → 2027-03-15 (+100d) |  |  |  |
| PO | **Issuance of Purchase Orders** | 2026-06-23 → 2026-10-06 (+105d) | 2026-07-21 → 2026-10-19 (+90d) |  |  |  |
| 1 | **Cabling Works** | 2026-06-23 → 2026-10-06 (+105d) | 2026-07-06 → 2026-10-19 (+105d) |  |  |  |
| PRO-MV-PO-100 | Issuance of Purchase Order for Medium Voltage Cables of Medium Voltage Network | 2026-06-23 → 2026-10-06 (+105d) | 2026-07-06 → 2026-10-19 (+105d) |  | 36.75d → -52.25d | resources Unskilled Labor [32.26 h]; Electrical Technician [12.44 h]; Plumber [2.91 h]; Carpenter [3.54 h]; Mason [2.82 h]; Steel Fixer [3.6 h]; Skilled Labor [9.72 h] → none |
| 3 | **Termination and Testing Works** | 2026-07-08 → 2026-10-06 (+90d) | 2026-07-21 → 2026-10-19 (+90d) |  |  |  |
| PRO-MV-PO-120 | Issuance of Purchase Order for Termination and Joints Kits of Medium Voltage Network | 2026-07-08 → 2026-10-06 (+90d) | 2026-07-21 → 2026-10-19 (+90d) |  | 16.25d → -59.75d | resources Unskilled Labor [32.26 h]; Electrical Technician [12.44 h]; Plumber [2.91 h]; Carpenter [3.54 h]; Mason [2.82 h]; Steel Fixer [3.6 h]; Skilled Labor [9.72 h] → none |
| MF | **Manufacturing of Material** | 2026-07-07 → 2026-10-20 (+105d) | 2026-10-19 → 2027-01-17 (+90d) |  |  |  |
| 1 | **Cabling Works** | 2026-07-07 → 2026-10-20 (+105d) | 2026-09-04 → 2026-12-18 (+105d) |  |  |  |
| PRO-MV-MF-100 | Manufacturing of Medium Voltage Cables for Medium Voltage Network | 2026-07-07 → 2026-10-20 (+105d) | 2026-09-04 → 2026-12-18 (+105d) |  | 42.5d → -62.5d | resources Unskilled Labor [161.31 h]; Electrical Technician [62.21 h]; Plumber [14.57 h]; Carpenter [17.72 h]; Mason [14.1 h]; Steel Fixer [18.01 h]; Skilled Labor [48.62 h] → none |
| 3 | **Termination and Testing Works** | 2026-07-22 → 2026-10-20 (+90d) | 2026-10-19 → 2027-01-17 (+90d) |  |  |  |
| PRO-MV-MF-110 | Manufacturing of Termination and Joints Kits for Medium Voltage Network | 2026-07-22 → 2026-10-20 (+90d) | 2026-10-19 → 2027-01-17 (+90d) |  | 19d → -71d | resources Unskilled Labor [241.96 h]; Electrical Technician [93.32 h]; Plumber [21.86 h]; Carpenter [26.58 h]; Mason [21.15 h]; Steel Fixer [27.02 h]; Skilled Labor [72.93 h] → none |
| 1DL | **1st Material Delivery & Site Inspection** | 2026-09-05 → 2026-12-19 (+105d) | 2026-11-04 → 2027-02-02 (+90d) |  |  |  |
| 1 | **Cabling Works** | 2026-09-05 → 2026-12-19 (+105d) | 2026-09-17 → 2026-12-31 (+105d) |  |  |  |
| PRO-MV-1DL-100 | 1ST Material Delivery for Medium Voltage Cables of Medium Voltage Network | 2026-09-05 → 2026-12-19 (+105d) | 2026-09-17 → 2026-12-31 (+105d) |  | 35.5d → -53.5d | resources Unskilled Labor [32.26 h]; Electrical Technician [12.44 h]; Plumber [2.91 h]; Carpenter [3.54 h]; Mason [2.82 h]; Steel Fixer [3.6 h]; Skilled Labor [9.72 h] → none |
| 3 | **Termination and Testing Works** | 2026-10-20 → 2027-01-18 (+90d) | 2026-11-04 → 2027-02-02 (+90d) |  |  |  |
| PRO-MV-1DL-120 | 1ST Material Delivery for Termination and Joints Kits of Medium Voltage Network | 2026-10-20 → 2027-01-18 (+90d) | 2026-11-04 → 2027-02-02 (+90d) |  | 16d → -61d | resources Unskilled Labor [37.64 h]; Electrical Technician [14.52 h]; Plumber [3.4 h]; Carpenter [4.14 h]; Mason [3.29 h]; Steel Fixer [4.2 h]; Skilled Labor [11.34 h] → none |
| DL | **Material Delivery & Site Inspection** | 2026-09-19 → 2027-01-02 (+105d) | 2026-12-05 → 2027-03-15 (+100d) |  |  |  |
| 1 | **Cabling Works** | 2026-09-19 → 2027-01-02 (+105d) | 2026-09-19 → 2027-01-02 (+105d) |  |  |  |
| PRO-MV-DL-100 | Material Delivery & Site Inspection of Medium Voltage Cables for Medium Voltage Network | 2026-09-19 → 2027-01-02 (+105d) | 2026-09-19 → 2027-01-02 (+105d) |  | 35.5d → -53.5d |  |
| 3 | **Termination and Testing Works** | 2026-11-05 → 2027-02-03 (+90d) | 2026-12-05 → 2027-03-15 (+100d) |  |  |  |
| PRO-MV-DL-110 | Material Delivery & Site Inspection of Termination and Joints Kits for Medium Voltage Network | 2026-11-05 → 2027-02-03 (+90d) | 2026-12-05 → 2027-03-15 (+100d) |  | 16d → -61d | resources Unskilled Labor [69.9 h]; Electrical Technician [26.96 h]; Plumber [6.32 h]; Carpenter [7.68 h]; Mason [6.11 h]; Steel Fixer [7.81 h]; Skilled Labor [21.07 h] → none |
| SL | **Low Voltage and Street Lighting Network** | 2026-06-23 → 2026-10-06 (+105d) | 2027-01-28 → 2027-05-03 (+95d) |  |  |  |
| PO | **Issuance of Purchase Orders** | 2026-06-23 → 2026-10-06 (+105d) | 2026-08-06 → 2026-10-17 (+72d) |  |  |  |
| 1 | **Cabling Works** | 2026-06-23 → 2026-10-06 (+105d) | 2026-06-29 → 2026-10-12 (+105d) |  |  |  |
| PRO-SL-PO-100 | Issuance of Purchase Order for Lighting Cables of Street Lighting Network | 2026-06-23 → 2026-10-06 (+105d) | 2026-06-29 → 2026-10-12 (+105d) |  | 36.75d → -52.25d | resources Unskilled Labor [16.13 h]; Electrical Technician [6.22 h]; Plumber [1.46 h]; Carpenter [1.77 h]; Mason [1.41 h]; Steel Fixer [1.8 h]; Skilled Labor [4.86 h] → none |
| 2 | **Lighting Poles Works** | 2026-06-23 → 2026-10-06 (+105d) | 2026-08-06 → 2026-10-12 (+67d) |  |  |  |
| PRO-SL-PO-110 | Issuance of Purchase Order for Lighting Poles Foundations of Street Lighting Network | 2026-06-23 → 2026-10-06 (+105d) | 2026-06-29 → 2026-10-12 (+105d) |  | 7.75d → -81.25d | resources Unskilled Labor [16.13 h]; Electrical Technician [6.22 h]; Plumber [1.46 h]; Carpenter [1.77 h]; Mason [1.41 h]; Steel Fixer [1.8 h]; Skilled Labor [4.86 h] → none |
| PRO-SL-PO-120 | Issuance of Purchase Order for Lighting Poles of Street Lighting Network | 2026-06-23 → 2026-10-06 (+105d) | 2026-06-29 → 2026-10-12 (+105d) |  | 41.75d → -47.25d | resources Unskilled Labor [16.13 h]; Electrical Technician [6.22 h]; Plumber [1.46 h]; Carpenter [1.77 h]; Mason [1.41 h]; Steel Fixer [1.8 h]; Skilled Labor [4.86 h] → none |
| PRO-SL-PO-140 | Issuance of Purchase Order for Lighting Fixtures of Street Lighting Network | 2026-08-01 → 2026-10-06 (+66d) | 2026-08-06 → 2026-10-12 (+67d) |  | 19.25d → -36.75d | resources Unskilled Labor [16.13 h]; Electrical Technician [6.22 h]; Plumber [1.46 h]; Carpenter [1.77 h]; Mason [1.41 h]; Steel Fixer [1.8 h]; Skilled Labor [4.86 h] → none |
| 3 | **Distribution Panel Board** | 2026-06-23 → 2026-10-06 (+105d) | 2026-07-04 → 2026-10-17 (+105d) |  |  |  |
| PRO-SL-PO-160 | Issuance of Purchase Order for Distrubution Panel Boards of Street Lighting Network | 2026-06-23 → 2026-10-06 (+105d) | 2026-07-04 → 2026-10-17 (+105d) |  | 52.25d → -36.75d | resources Unskilled Labor [26.88 h]; Electrical Technician [10.37 h]; Plumber [2.43 h]; Carpenter [2.95 h]; Mason [2.35 h]; Steel Fixer [3 h]; Skilled Labor [8.1 h] → none |
| 4 | **Earthing System Works** | 2026-07-07 → 2026-10-06 (+91d) | 2026-07-15 → 2026-10-14 (+91d) |  |  |  |
| PRO-SL-PO-150 | Issuance of Purchase Order for Lighting Earthing of Street Lighting Network | 2026-07-07 → 2026-10-06 (+91d) | 2026-07-15 → 2026-10-14 (+91d) |  | 28.25d → -48.75d | resources Unskilled Labor [21.51 h]; Electrical Technician [8.3 h]; Plumber [1.94 h]; Carpenter [2.36 h]; Mason [1.88 h]; Steel Fixer [2.4 h]; Skilled Labor [6.48 h] → none |
| 5 | **Termination and Testing Works** | 2026-07-08 → 2026-10-06 (+90d) | 2026-07-16 → 2026-10-14 (+90d) |  |  |  |
| PRO-SL-PO-130 | Issuance of Purchase Order for Fuse Boxes of Street Lighting Network | 2026-07-08 → 2026-10-06 (+90d) | 2026-07-16 → 2026-10-14 (+90d) |  | 0d → -76d | resources Unskilled Labor [21.51 h]; Electrical Technician [8.3 h]; Plumber [1.94 h]; Carpenter [2.36 h]; Mason [1.88 h]; Steel Fixer [2.4 h]; Skilled Labor [6.48 h] → none |
| PRO-SL-PO-170 | Issuance of Purchase Order for Cable Lugs of Street Lighting Network | 2026-07-08 → 2026-10-06 (+90d) | 2026-07-16 → 2026-10-14 (+90d) |  | 30.25d → -45.75d | resources Unskilled Labor [21.51 h]; Electrical Technician [8.3 h]; Plumber [1.94 h]; Carpenter [2.36 h]; Mason [1.88 h]; Steel Fixer [2.4 h]; Skilled Labor [6.48 h] → none |
| MF | **Manufacturing of Material** | 2026-06-30 → 2026-10-13 (+105d) | 2026-12-12 → 2027-03-16 (+94d) |  |  |  |
| 1 | **Cabling Works** | 2026-06-30 → 2026-10-13 (+105d) | 2026-09-27 → 2027-01-10 (+105d) |  |  |  |
| PRO-SL-MF-100 | Manufacturing of Lighting Cables for Street Lighting Network | 2026-06-30 → 2026-10-13 (+105d) | 2026-09-27 → 2027-01-10 (+105d) |  | 42.5d → -62.5d | resources Unskilled Labor [241.96 h]; Electrical Technician [93.32 h]; Plumber [21.86 h]; Carpenter [26.58 h]; Mason [21.15 h]; Steel Fixer [27.02 h]; Skilled Labor [72.93 h] → none |
| 2 | **Lighting Poles Works** | 2026-06-30 → 2026-10-13 (+105d) | 2026-12-12 → 2027-02-17 (+67d) |  |  |  |
| PRO-SL-MF-110 | Manufacturing of Lighting Poles Foundations for Street Lighting Network | 2026-06-30 → 2026-10-13 (+105d) | 2026-09-27 → 2027-01-10 (+105d) |  | 8.62d → -96.38d | resources Unskilled Labor [241.96 h]; Electrical Technician [93.32 h]; Plumber [21.86 h]; Carpenter [26.58 h]; Mason [21.15 h]; Steel Fixer [27.02 h]; Skilled Labor [72.93 h] → none |
| PRO-SL-MF-120 | Manufacturing of Lighting Poles for Street Lighting Network | 2026-06-30 → 2026-10-13 (+105d) | 2026-09-27 → 2027-01-10 (+105d) |  | 48.5d → -56.5d | resources Unskilled Labor [241.96 h]; Electrical Technician [93.32 h]; Plumber [21.86 h]; Carpenter [26.58 h]; Mason [21.15 h]; Steel Fixer [27.02 h]; Skilled Labor [72.93 h] → none |
| PRO-SL-MF-140 | Manufacturing of Lighting Fixtures for Street Lighting Network | 2026-08-07 → 2026-10-13 (+67d) | 2026-12-12 → 2027-02-17 (+67d) |  | 23d → -44d | resources Unskilled Labor [344.12 h]; Electrical Technician [132.72 h]; Plumber [31.09 h]; Carpenter [37.81 h]; Mason [30.08 h]; Steel Fixer [38.43 h]; Skilled Labor [103.72 h] → none |
| 3 | **Distribution Panel Board** | 2026-07-05 → 2026-10-18 (+105d) | 2026-10-22 → 2027-02-04 (+105d) |  |  |  |
| PRO-SL-MF-160 | Manufacturing of Distrubution Panel Boards for Street Lighting Network | 2026-07-05 → 2026-10-18 (+105d) | 2026-10-22 → 2027-02-04 (+105d) |  | 60d → -45d | resources Unskilled Labor [295.73 h]; Electrical Technician [114.06 h]; Plumber [26.72 h]; Carpenter [32.49 h]; Mason [25.85 h]; Steel Fixer [33.02 h]; Skilled Labor [89.13 h] → none |
| 4 | **Earthing System Works** | 2026-07-16 → 2026-10-15 (+91d) | 2026-12-02 → 2027-03-03 (+91d) |  |  |  |
| PRO-SL-MF-150 | Manufacturing of Lighting Earthing for Street Lighting Network | 2026-07-16 → 2026-10-15 (+91d) | 2026-12-02 → 2027-03-03 (+91d) |  | 33d → -58d | resources Unskilled Labor [376.38 h]; Electrical Technician [145.17 h]; Plumber [34.01 h]; Carpenter [41.35 h]; Mason [32.9 h]; Steel Fixer [42.03 h]; Skilled Labor [113.44 h] → none |
| 5 | **Termination and Testing Works** | 2026-07-17 → 2026-10-15 (+90d) | 2026-12-12 → 2027-03-16 (+94d) |  |  |  |
| PRO-SL-MF-130 | Manufacturing of Fuse Boxes for Street Lighting Network | 2026-07-17 → 2026-10-15 (+90d) | 2026-12-12 → 2027-03-16 (+94d) |  | 0d → -90d | resources Unskilled Labor [400.58 h]; Electrical Technician [154.5 h]; Plumber [36.19 h]; Carpenter [44.01 h]; Mason [35.01 h]; Steel Fixer [44.73 h]; Skilled Labor [120.73 h] → none |

| ID | Task | Start | Finish | Complete | Total float | Predecessors | Other |
| --- | --- | --- | --- | --- | --- | --- | --- |
| PRO-SL-MF-170 | Manufacturing of Cable Lugs for Street Lighting Network | 2026-07-17 → 2026-10-15 (+90d) | 2026-11-03 → 2027-02-01 (+90d) |  | 36d → -54d |  | resources Unskilled Labor [295.73 h]; Electrical Technician [114.06 h]; Plumber [26.72 h]; Carpenter [32.49 h]; Mason [25.85 h]; Steel Fixer [33.02 h]; Skilled Labor [89.13 h] → none |
| 1DL | **1st Material Delivery & Site Inspection** | 2026-09-28 → 2027-01-11 (+105d) | 2026-12-29 → 2027-04-03 (+95d) |  |  |  |  |
| 1 | **Cabling Works** | 2026-09-28 → 2027-01-11 (+105d) | 2026-10-04 → 2027-01-17 (+105d) |  |  |  |  |
| PRO-SL-1DL-100 | 1ST Material Delivery for Lighting Cables of Street Lighting Network | 2026-09-28 → 2027-01-11 (+105d) | 2026-10-04 → 2027-01-17 (+105d) |  | 36.5d → -53.5d |  | resources Unskilled Labor [16.13 h]; Electrical Technician [6.22 h]; Plumber [1.46 h]; Carpenter [1.77 h]; Mason [1.41 h]; Steel Fixer [1.8 h]; Skilled Labor [4.86 h] → none |
| 2 | **Lighting Poles Works** | 2026-09-28 → 2027-01-11 (+105d) | 2026-12-19 → 2027-02-27 (+70d) |  |  |  |  |
| PRO-SL-1DL-110 | 1ST Material Delivery for Lighting Poles Foundations of Street Lighting Network | 2026-09-28 → 2027-01-11 (+105d) | 2026-10-04 → 2027-01-17 (+105d) |  | 7.5d → -82.5d |  | resources Unskilled Labor [16.13 h]; Electrical Technician [6.22 h]; Plumber [1.46 h]; Carpenter [1.77 h]; Mason [1.41 h]; Steel Fixer [1.8 h]; Skilled Labor [4.86 h] → none |
| PRO-SL-1DL-120 | 1ST Material Delivery for Lighting Poles of Street Lighting Network | 2026-09-28 → 2027-01-11 (+105d) | 2026-10-04 → 2027-01-17 (+105d) |  | 41.5d → -48.5d |  | resources Unskilled Labor [16.13 h]; Electrical Technician [6.22 h]; Plumber [1.46 h]; Carpenter [1.77 h]; Mason [1.41 h]; Steel Fixer [1.8 h]; Skilled Labor [4.86 h] → none |
| PRO-SL-1DL-140 | 1ST Material Delivery for Lighting Fixtures of Street Lighting Network | 2026-12-13 → 2027-02-18 (+67d) | 2026-12-19 → 2027-02-27 (+70d) |  | 20d → -35.75d |  | resources Unskilled Labor [16.13 h]; Electrical Technician [6.22 h]; Plumber [1.46 h]; Carpenter [1.77 h]; Mason [1.41 h]; Steel Fixer [1.8 h]; Skilled Labor [4.86 h] → none |
| 3 | **Distribution Panel Board** | 2026-10-24 → 2027-02-06 (+105d) | 2026-10-29 → 2027-02-14 (+108d) |  |  |  |  |
| PRO-SL-1DL-160 | 1ST Material Delivery for Distrubution Panel Boards of Street Lighting Network | 2026-10-24 → 2027-02-06 (+105d) | 2026-10-29 → 2027-02-14 (+108d) |  | 51d → -39d |  | resources Unskilled Labor [16.13 h]; Electrical Technician [6.22 h]; Plumber [1.46 h]; Carpenter [1.77 h]; Mason [1.41 h]; Steel Fixer [1.8 h]; Skilled Labor [4.86 h] → none |
| 5 | **Termination and Testing Works** | 2026-11-03 → 2027-02-02 (+91d) | 2026-12-29 → 2027-04-03 (+95d) |  |  |  |  |
| PRO-SL-1DL-170 | 1ST Material Delivery for Cable Lugs of Street Lighting Network | 2026-11-03 → 2027-02-02 (+91d) | 2026-11-21 → 2027-02-22 (+93d) |  | 31.12d → -46d |  | resources Unskilled Labor [40.33 h]; Electrical Technician [15.55 h]; Plumber [3.64 h]; Carpenter [4.43 h]; Mason [3.52 h]; Steel Fixer [4.5 h]; Skilled Labor [12.15 h] → none |
| PRO-SL-1DL-130 | 1ST Material Delivery for Fuse Boxes of Street Lighting Network | 2026-12-13 → 2027-03-16 (+93d) | 2026-12-29 → 2027-04-03 (+95d) |  | 0d → -71.88d |  | resources Unskilled Labor [40.33 h]; Electrical Technician [15.55 h]; Plumber [3.64 h]; Carpenter [4.43 h]; Mason [3.52 h]; Steel Fixer [4.5 h]; Skilled Labor [12.15 h] → none |
| 4 | **Earthing System Works** | 2026-12-03 → 2027-03-04 (+91d) | 2026-12-09 → 2027-03-15 (+96d) |  |  |  |  |
| PRO-SL-1DL-150 | 1ST Material Delivery for Lighting Earthing of Street Lighting Network | 2026-12-03 → 2027-03-04 (+91d) | 2026-12-09 → 2027-03-15 (+96d) |  | 28d → -45d |  | resources Unskilled Labor [16.13 h]; Electrical Technician [6.22 h]; Plumber [1.46 h]; Carpenter [1.77 h]; Mason [1.41 h]; Steel Fixer [1.8 h]; Skilled Labor [4.86 h] → none |
| DL | **Material Delivery & Site Inspection** | 2026-10-05 → 2027-01-18 (+105d) | 2027-01-28 → 2027-05-03 (+95d) |  |  |  |  |
| 1 | **Cabling Works** | 2026-10-05 → 2027-01-18 (+105d) | 2026-10-05 → 2027-01-18 (+105d) |  |  |  |  |
| PRO-R25-SL-DL-100 | Material Delivery & Site Inspection of Lighting Cables for Street Lighting Network | 2026-10-05 → 2027-01-18 (+105d) | 2026-10-05 → 2027-01-18 (+105d) |  | 36.5d → -53.5d |  |  |
| 2 | **Lighting Poles Works** | 2026-10-05 → 2027-01-18 (+105d) | 2026-12-20 → 2027-02-27 (+69d) |  |  |  |  |
| PRO-R25-SL-DL-110 | Material Delivery & Site Inspection of Lighting Poles Foundations for Street Lighting Network | 2026-10-05 → 2027-01-18 (+105d) | 2026-10-25 → 2027-02-07 (+105d) |  | 7.5d → -82.5d |  | resources Unskilled Labor [48.39 h]; Electrical Technician [18.66 h]; Plumber [4.37 h]; Carpenter [5.32 h]; Mason [4.23 h]; Steel Fixer [5.4 h]; Skilled Labor [14.59 h] → none |
| PRO-R25-SL-DL-120 | Material Delivery & Site Inspection of Lighting Poles for Street Lighting Network | 2026-10-05 → 2027-01-18 (+105d) | 2026-10-05 → 2027-01-18 (+105d) |  | 41.5d → -48.5d |  |  |
| PRO-R25-SL-DL-140 | Material Delivery & Site Inspection of Lighting Fixtures for Street Lighting Network | 2026-12-20 → 2027-02-27 (+69d) | 2026-12-20 → 2027-02-27 (+69d) |  | 20d → -35.75d |  |  |
| 3 | **Distribution Panel Board** | 2026-10-31 → 2027-02-14 (+106d) | 2026-10-31 → 2027-02-14 (+106d) |  |  |  |  |
| PRO-R25-SL-DL-160 | Material Delivery & Site Inspection of Distrubution Panel Boards for Street Lighting Network | 2026-10-31 → 2027-02-14 (+106d) | 2026-10-31 → 2027-02-14 (+106d) |  | 51d → -39d |  |  |
| 4 | **Termination and Testing Works** | 2026-11-21 → 2027-02-23 (+94d) | 2027-01-28 → 2027-05-03 (+95d) |  |  |  |  |
| PRO-R25-SL-DL-170 | Material Delivery & Site Inspection of Cable Lugs for Street Lighting Network | 2026-11-21 → 2027-02-23 (+94d) | 2026-12-21 → 2027-03-31 (+100d) |  | 31.12d → -46d |  | resources Unskilled Labor [69.9 h]; Electrical Technician [26.96 h]; Plumber [6.32 h]; Carpenter [7.68 h]; Mason [6.11 h]; Steel Fixer [7.81 h]; Skilled Labor [21.07 h] → none |
| PRO-R25-SL-DL-130 | Material Delivery & Site Inspection of Fuse Boxes for Street Lighting Network | 2026-12-30 → 2027-04-03 (+94d) | 2027-01-28 → 2027-05-03 (+95d) |  | 0d → -71.88d |  | resources Unskilled Labor [69.9 h]; Electrical Technician [26.96 h]; Plumber [6.32 h]; Carpenter [7.68 h]; Mason [6.11 h]; Steel Fixer [7.81 h]; Skilled Labor [21.07 h] → none |
| 5 | **Earthing System Works** | 2026-12-10 → 2027-03-16 (+96d) | 2026-12-10 → 2027-03-16 (+96d) |  |  |  |  |
| PRO-R25-SL-DL-150 | Material Delivery & Site Inspection of Lighting Earthing for Street Lighting Network | 2026-12-10 → 2027-03-16 (+96d) | 2026-12-10 → 2027-03-16 (+96d) |  | 28d → -45d |  |  |
| TE | **Telecom Network** | 2026-07-07 → 2026-10-06 (+91d) | 2026-10-24 → 2027-01-23 (+91d) |  |  |  |  |
| PO | **Issuance of Purchase Orders** | 2026-07-07 → 2026-10-06 (+91d) | 2026-07-13 → 2026-10-12 (+91d) |  |  |  |  |
| 1 | **Ducts Works** | 2026-07-07 → 2026-10-06 (+91d) | 2026-07-13 → 2026-10-12 (+91d) |  |  |  |  |
| PRO-TE-PO-100 | Issuance of Purchase Order for Ducts forTelecom Network | 2026-07-07 → 2026-10-06 (+91d) | 2026-07-13 → 2026-10-12 (+91d) |  | 48.25d → -28.75d |  | resources Unskilled Labor [16.13 h]; Electrical Technician [6.22 h]; Plumber [1.46 h]; Carpenter [1.77 h]; Mason [1.41 h]; Steel Fixer [1.8 h]; Skilled Labor [4.86 h] → none |
| 3 | **Manholes Works** | 2026-07-07 → 2026-10-06 (+91d) | 2026-07-13 → 2026-10-12 (+91d) |  |  |  |  |
| PRO-TE-PO-110 | Issuance of Purchase Order for Manholes forTelecom Network | 2026-07-07 → 2026-10-06 (+91d) | 2026-07-13 → 2026-10-12 (+91d) |  | 30.25d → -46.75d |  | resources Unskilled Labor [16.13 h]; Electrical Technician [6.22 h]; Plumber [1.46 h]; Carpenter [1.77 h]; Mason [1.41 h]; Steel Fixer [1.8 h]; Skilled Labor [4.86 h] → none |
| 2 | **CCTV System Wroks** | 2026-07-07 → 2026-10-06 (+91d) | 2026-07-13 → 2026-10-12 (+91d) |  |  |  |  |
| PRO-CTV-PO-100 | Issuance of Purchase Order for Civil and Finishes Works of CCTV Complete System | 2026-07-07 → 2026-10-06 (+91d) | 2026-07-13 → 2026-10-12 (+91d) |  | 45d → -32d |  | resources Unskilled Labor [16.13 h]; Electrical Technician [6.22 h]; Plumber [1.46 h]; Carpenter [1.77 h]; Mason [1.41 h]; Steel Fixer [1.8 h]; Skilled Labor [4.86 h] → none |
| MF | **Manufacturing of Material** | 2026-07-14 → 2026-10-13 (+91d) | 2026-10-11 → 2027-01-10 (+91d) |  |  |  |  |
| 1 | **Ducts Works** | 2026-07-14 → 2026-10-13 (+91d) | 2026-09-11 → 2026-12-11 (+91d) |  |  |  |  |
| PRO-TE-MF-100 | Manufacturing of Ducts for Telecom Network | 2026-07-14 → 2026-10-13 (+91d) | 2026-09-11 → 2026-12-11 (+91d) |  | 56d → -35d |  | resources Unskilled Labor [161.31 h]; Electrical Technician [62.21 h]; Plumber [14.57 h]; Carpenter [17.72 h]; Mason [14.1 h]; Steel Fixer [18.01 h]; Skilled Labor [48.62 h] → none |
| 3 | **Manholes Works** | 2026-07-14 → 2026-10-13 (+91d) | 2026-10-11 → 2027-01-10 (+91d) |  |  |  |  |
| PRO-TE-MF-110 | Manufacturing of Manholes for Telecom Network | 2026-07-14 → 2026-10-13 (+91d) | 2026-10-11 → 2027-01-10 (+91d) |  | 35d → -56d |  | resources Unskilled Labor [241.96 h]; Electrical Technician [93.32 h]; Plumber [21.86 h]; Carpenter [26.58 h]; Mason [21.15 h]; Steel Fixer [27.02 h]; Skilled Labor [72.93 h] → none |
| 2 | **CCTV System Wroks** | 2026-07-14 → 2026-10-13 (+91d) | 2026-10-11 → 2027-01-10 (+91d) |  |  |  |  |
| PRO-CTV-MF-100 | Manufacturing of Civil and Finishes Works for CCTV Complete System | 2026-07-14 → 2026-10-13 (+91d) | 2026-10-11 → 2027-01-10 (+91d) |  | 52d → -39d |  | resources Unskilled Labor [241.96 h]; Electrical Technician [93.32 h]; Plumber [21.86 h]; Carpenter [26.58 h]; Mason [21.15 h]; Steel Fixer [27.02 h]; Skilled Labor [72.93 h] → none |
| 1DL | **1st Material Delivery & Site Inspection** | 2026-09-12 → 2026-12-12 (+91d) | 2026-10-22 → 2027-01-21 (+91d) |  |  |  |  |
| 1 | **Ducts Works** | 2026-09-12 → 2026-12-12 (+91d) | 2026-09-17 → 2026-12-17 (+91d) |  |  |  |  |
| PRO-TE-1DL-100 | 1ST Material Delivery for Ducts of Telecom Network | 2026-09-12 → 2026-12-12 (+91d) | 2026-09-17 → 2026-12-17 (+91d) |  | 47d → -30d |  | resources Unskilled Labor [16.13 h]; Electrical Technician [6.22 h]; Plumber [1.46 h]; Carpenter [1.77 h]; Mason [1.41 h]; Steel Fixer [1.8 h]; Skilled Labor [4.86 h] → none |
| 3 | **Manholes Works** | 2026-10-12 → 2027-01-11 (+91d) | 2026-10-18 → 2027-01-17 (+91d) |  |  |  |  |
| PRO-TE-1DL-110 | 1ST Material Delivery for Manholes of Telecom Network | 2026-10-12 → 2027-01-11 (+91d) | 2026-10-18 → 2027-01-17 (+91d) |  | 30d → -48d |  | resources Unskilled Labor [16.13 h]; Electrical Technician [6.22 h]; Plumber [1.46 h]; Carpenter [1.77 h]; Mason [1.41 h]; Steel Fixer [1.8 h]; Skilled Labor [4.86 h] → none |
| 2 | **CCTV System Wroks** | 2026-10-12 → 2027-01-11 (+91d) | 2026-10-22 → 2027-01-21 (+91d) |  |  |  |  |
| PRO-CTV-1DL-100 | 1ST Material Delivery for Civil and Finishes Works of CCTV Complete System | 2026-10-12 → 2027-01-11 (+91d) | 2026-10-22 → 2027-01-21 (+91d) |  | 45d → -33d |  | resources Unskilled Labor [26.88 h]; Electrical Technician [10.37 h]; Plumber [2.43 h]; Carpenter [2.95 h]; Mason [2.35 h]; Steel Fixer [3 h]; Skilled Labor [8.1 h] → none |
| DL | **Material Delivery & Site Inspection** | 2026-09-19 → 2026-12-19 (+91d) | 2026-10-24 → 2027-01-23 (+91d) |  |  |  |  |
| 1 | **Ducts Works** | 2026-09-19 → 2026-12-19 (+91d) | 2026-09-19 → 2026-12-19 (+91d) |  |  |  |  |
| PRO-R25-TE-DL-100 | Material Delivery & Site Inspection for Ducts of Telecom Network | 2026-09-19 → 2026-12-19 (+91d) | 2026-09-19 → 2026-12-19 (+91d) |  | 47d → -30d |  |  |
| 3 | **Manholes Works** | 2026-10-19 → 2027-01-18 (+91d) | 2026-10-19 → 2027-01-18 (+91d) |  |  |  |  |
| PRO-R25-TE-DL-110 | Material Delivery & Site Inspection of Manholes for Telecom Network | 2026-10-19 → 2027-01-18 (+91d) | 2026-10-19 → 2027-01-18 (+91d) |  | 30d → -48d |  |  |
| 2 | **CCTV System Wroks** | 2026-10-24 → 2027-01-23 (+91d) | 2026-10-24 → 2027-01-23 (+91d) |  |  |  |  |
| PRO-R25-CTV-DL-100 | Material Delivery & Site Inspection of for Civil and Finishes Works of CCTV Complete System | 2026-10-24 → 2027-01-23 (+91d) | 2026-10-24 → 2027-01-23 (+91d) |  | 45d → -33d |  |  |
| 1 | **Superstructure Works** |  | 2026-10-11 → 2027-01-04 (+85d) |  |  |  |  |
| 1 | **Issuance of Purchase Orders** |  | 2026-07-13 → 2026-10-26 (+105d) |  |  |  |  |
| SL11 | **Storage Tank (TSE)** | 2026-07-01 → 2026-10-14 (+105d) | 2026-07-13 → 2026-10-26 (+105d) |  |  |  |  |
| PRO-TSE-CV-PO-30 | Issuance of Purchase Order for Civil Works for Storage Tank (TSE) | 2026-07-01 → 2026-10-14 (+105d) | 2026-07-13 → 2026-10-26 (+105d) |  | 13.25d → -75.75d |  | resources Unskilled Labor [29.57 h]; Electrical Technician [11.41 h]; Plumber [2.67 h]; Carpenter [3.25 h]; Mason [2.58 h]; Steel Fixer [3.3 h]; Skilled Labor [8.91 h] → none |
| PRO-DPO-CV-PO-10 | Issuance of Purchase Order for Civil Works for Storm Drainage Ponds | 2026-06-23 A | 2026-07-04 A | 0% → 100% | 14.25d → none |  | resources Unskilled Labor [26.88 h]; Electrical Technician [10.37 h]; Plumber [2.43 h]; Carpenter [2.95 h]; Mason [2.35 h]; Steel Fixer [3 h]; Skilled Labor [8.1 h] → none |
| SL12 | **Gaurd Room** | 2026-06-23 → 2026-10-06 (+105d) | 2026-07-05 → 2026-10-18 (+105d) |  |  |  |  |
| PRO-GR-CV-PO-40 | Issuance of Purchase Order for Civil Works for Gaurd Room | 2026-06-23 → 2026-10-06 (+105d) | 2026-07-05 → 2026-10-18 (+105d) |  | 25.75d → -63.25d |  | resources Unskilled Labor [28.23 h]; Electrical Technician [10.89 h]; Plumber [2.55 h]; Carpenter [3.1 h]; Mason [2.47 h]; Steel Fixer [3.15 h]; Skilled Labor [8.51 h] → none |
| SL121 | **Fence** | 2026-06-23 → 2026-08-15 (+53d) | 2026-07-04 → 2026-08-27 (+54d) |  |  |  |  |
| PRO-FE-CV-PO-50 | Issuance of Purchase Order for Civil Works for Fence | 2026-06-23 → 2026-08-15 A (+53d) | 2026-07-04 → 2026-08-27 A (+54d) | 0% → 100% | -0.85d → none | ENG-MT-FE-CV-A-120 → ENG-MT-FE-CV-A-120 SS | resources Unskilled Labor [26.48 h]; Electrical Technician [10.21 h]; Plumber [2.39 h]; Carpenter [2.91 h]; Mason [2.31 h]; Steel Fixer [2.96 h]; Skilled Labor [7.98 h] → none |
| 2 | **Manufacturing of Material** | 2026-06-23 → 2026-07-05 (+12d) | 2026-10-11 → 2027-01-03 (+84d) |  |  |  |  |
| SL | **Pump Stations** | 2026-06-23 → 2026-10-06 (+105d) | 2026-08-01 → 2026-11-14 (+105d) |  |  |  |  |
| PRO-SPS-CV-MF-10 | Manufacturing of Civil Works for Pump Stations | 2026-06-23 → 2026-10-06 (+105d) | 2026-08-01 → 2026-11-14 (+105d) |  | 28d → -77d |  | resources Unskilled Labor [107.54 h]; Electrical Technician [41.48 h]; Plumber [9.72 h]; Carpenter [11.81 h]; Mason [9.4 h]; Steel Fixer [12.01 h]; Skilled Labor [32.41 h] → none |

| ID | Task | Start | Finish | Complete | Total float | Predecessors | Other |
| --- | --- | --- | --- | --- | --- | --- | --- |
| SL1 | **Lift Station** | 2026-06-23 → 2026-10-06 (+105d) | 2026-08-01 → 2026-11-14 (+105d) |  |  |  |  |
| PRO-LS-CV-MF-30 | Manufacturing of Civil Works for Civil Works for Lift Stations | 2026-06-23 → 2026-10-06 (+105d) | 2026-08-01 → 2026-11-14 (+105d) |  | 45d → -5d |  | resources Unskilled Labor [107.54 h]; Electrical Technician [41.48 h]; Plumber [9.72 h]; Carpenter [11.81 h]; Mason [9.4 h]; Steel Fixer [12.01 h]; Skilled Labor [32.41 h] → none |
| PRO-DPO-CV-MF-10 | Manufacturing of Civil Works for Storm Drainage Ponds | 2026-07-05 A | 2026-09-02 A | 0% → 100% | 16d → none |  | resources Unskilled Labor [161.31 h]; Electrical Technician [62.21 h]; Plumber [14.57 h]; Carpenter [17.72 h]; Mason [14.1 h]; Steel Fixer [18.01 h]; Skilled Labor [48.62 h] → none |
| SL11 | **Storage Tank (TSE)** | 2026-07-14 → 2026-10-27 (+105d) | 2026-08-22 → 2026-12-05 (+105d) |  |  |  |  |
| PRO-TSE-CV-MF-40 | Manufacturing of Civil Works for Civil Works for Storage Tank (TSE) | 2026-07-14 → 2026-10-27 (+105d) | 2026-08-22 → 2026-12-05 (+105d) |  | 15d → -90d |  | resources Unskilled Labor [107.54 h]; Electrical Technician [41.48 h]; Plumber [9.72 h]; Carpenter [11.81 h]; Mason [9.4 h]; Steel Fixer [12.01 h]; Skilled Labor [32.41 h] → none |
| SL12 | **Gaurd Room** | 2026-07-05 → 2026-10-18 (+105d) | 2026-08-14 → 2026-11-27 (+105d) |  |  |  |  |
| PRO-GR-CV-MF-50 | Manufacturing of Civil Works for Civil Works for Gaurd Room | 2026-07-05 → 2026-10-18 (+105d) | 2026-08-14 → 2026-11-27 (+105d) |  | 29.75d → -75.5d |  | resources Unskilled Labor [107.54 h]; Electrical Technician [41.48 h]; Plumber [9.72 h]; Carpenter [11.81 h]; Mason [9.4 h]; Steel Fixer [12.01 h]; Skilled Labor [32.41 h] → none |
| SL121 | **Fence** | 2026-07-04 → 2026-09-05 (+63d) | 2026-07-24 → 2026-09-10 (+48d) |  |  |  |  |
| PRO-FE-CV-MF-60 | Manufacturing of Civil Works for Civil Works for Fence | 2026-07-04 → 2026-09-05 A (+63d) | 2026-07-24 → 2026-09-10 A (+48d) | 0% → 100% | -1d → none | PRO-FE-CV-PO-50 → PRO-FE-CV-PO-50 FF, ENG-SH-GR-A-200_R | resources Unskilled Labor [53.77 h]; Electrical Technician [20.74 h]; Plumber [4.86 h]; Carpenter [5.91 h]; Mason [4.7 h]; Steel Fixer [6 h]; Skilled Labor [16.21 h] → none |
| SL1211 | **Softscape and Planting Works** | 2026-07-13 → 2026-10-06 (+85d) | 2026-10-11 → 2027-01-03 (+84d) |  |  |  |  |
| PRO-FE-CV-MF-70 | Manufacturing of Civil Works for Softscape and Planting Works | 2026-07-13 → 2026-10-06 (+85d) | 2026-10-11 → 2027-01-03 (+84d) |  | 41.75d → -43d |  | resources Unskilled Labor [241.96 h]; Electrical Technician [93.32 h]; Plumber [21.86 h]; Carpenter [26.58 h]; Mason [21.15 h]; Steel Fixer [27.02 h]; Skilled Labor [72.93 h] → none |
| 3 | **1st Material Delivery & Site Inspection** | 2026-08-02 → 2026-08-03 (+1d) | 2026-10-08 → 2026-12-10 (+63d) |  |  |  |  |
| SL | **Pump Stations** | 2026-08-02 → 2026-11-23 (+113d) | 2026-08-03 → 2026-11-24 (+113d) |  |  |  |  |
| PRO-SPS-CV-1DL-10 | 1ST Material Delivery for Civil Works for Pump Stations | 2026-08-02 → 2026-11-23 (+113d) | 2026-08-03 → 2026-11-24 (+113d) |  | 24.04d → -72d | PRO-SPS-CV-MF-10 → PRO-SPS-CV-MF-10, CO-SW-ML-150, ENG-SH-SPS-A-160 | resources Unskilled Labor [5.38 h]; Electrical Technician [2.07 h]; Plumber [0.49 h]; Carpenter [0.59 h]; Mason [0.47 h]; Steel Fixer [0.6 h]; Skilled Labor [1.62 h] → none |
| SL1 | **Lift Station** | 2026-08-02 → 2026-11-25 (+115d) | 2026-08-02 → 2026-11-25 (+115d) |  |  |  |  |
| PRO-LS-CV-1DL-40 | 1ST Material Delivery for Civil Works for Civil Works for Lift Stations | 2026-08-02 → 2026-11-25 (+115d) | 2026-08-02 → 2026-11-25 (+115d) |  | 39d → -13d | PRO-LS-CV-MF-30 → PRO-LS-CV-MF-30, CO-UB-PS-100 | resources Unskilled Labor [2.69 h]; Electrical Technician [1.04 h]; Plumber [0.24 h]; Carpenter [0.3 h]; Mason [0.23 h]; Steel Fixer [0.3 h]; Skilled Labor [0.81 h] → none |
| TE | **Drainage Ponds** | 2026-09-03 → 2026-08-03 (-31d) | 2026-10-08 → 2026-08-22 (-47d) |  |  |  |  |
| PRO-DPO-CV-1DL-10 | 1ST Material Delivery for Civil Works for Drainage Ponds | 2026-09-03 → 2026-08-03 A (-31d) | 2026-10-08 → 2026-08-22 A (-47d) | 0% → 100% | 13d → none |  | resources Unskilled Labor [80.65 h]; Electrical Technician [31.11 h]; Plumber [7.29 h]; Carpenter [8.86 h]; Mason [7.05 h]; Steel Fixer [9.01 h]; Skilled Labor [24.31 h] → none |
| SL11 | **Storage Tank (TSE)** | 2026-08-23 → 2026-12-06 (+105d) | 2026-08-23 → 2026-12-06 (+105d) |  |  |  |  |
| PRO-TSE-CV-1DL-50 | 1ST Material Delivery for Civil Works for Civil Works for Storage Tank (TSE) | 2026-08-23 → 2026-12-06 (+105d) | 2026-08-23 → 2026-12-06 (+105d) |  | 13d → -76d |  | resources Unskilled Labor [2.69 h]; Electrical Technician [1.04 h]; Plumber [0.24 h]; Carpenter [0.3 h]; Mason [0.23 h]; Steel Fixer [0.3 h]; Skilled Labor [0.81 h] → none |
| SL12 | **Gaurd Room** | 2026-08-15 → 2026-11-28 (+105d) | 2026-08-27 → 2026-12-10 (+105d) |  |  |  |  |
| PRO-GR-CV-1DL-60 | 1ST Material Delivery for Civil Works for Civil Works for Gaurd Room | 2026-08-15 → 2026-11-28 (+105d) | 2026-08-27 → 2026-12-10 (+105d) |  | 25d → -64d |  | resources Unskilled Labor [32.26 h]; Electrical Technician [12.44 h]; Plumber [2.91 h]; Carpenter [3.54 h]; Mason [2.82 h]; Steel Fixer [3.6 h]; Skilled Labor [9.72 h] → none |
| 4 | **Material Delivery & Site Inspection** | 2026-07-25 → 2026-08-02 (+8d) | 2026-10-11 → 2027-01-04 (+85d) |  |  |  |  |
| SL | **Pump Stations** | 2026-08-04 → 2026-08-02 (-2d) | 2026-08-04 → 2026-11-25 (+113d) |  |  |  |  |
| PRO-SPS-CV-DL-10 | Material Delivery & Site Inspection for Civil Works for Pump Stations | 2026-08-04 → 2026-08-02 A (-2d) | 2026-08-04 → 2026-11-25 (+113d) | 0% → 20% | 24.04d → -72d | PRO-SPS-CV-MF-10, PRO-SPS-CV-1DL-10 → PRO-SPS-CV-MF-10 FF, PRO-SPS-CV-1DL-10 FF |  |
| SL1 | **Lift Station** | 2026-08-03 → 2026-11-26 (+115d) | 2026-08-03 → 2026-11-26 (+115d) |  |  |  |  |
| PRO-LS-CV-DL-50 | Material Delivery & Site Inspection for Civil Works for Lift Stations | 2026-08-03 → 2026-11-26 (+115d) | 2026-08-03 → 2026-11-26 (+115d) |  | 39d → -13d | PRO-LS-CV-MF-30, PRO-LS-CV-1DL-40 → PRO-LS-CV-MF-30, PRO-LS-CV-1DL-40, CO-UB-PS-100 |  |
| TE | **Storm Drainage Ponds** | 2026-10-10 → 2026-08-02 (-69d) | 2026-10-10 → 2026-09-01 (-39d) |  |  |  |  |
| PRO-DPO-CV-DL-10 | Material Delivery & Site Inspection for Civil Works for Storm Drainage Ponds | 2026-10-10 → 2026-08-02 A (-69d) | 2026-10-10 → 2026-09-01 A (-39d) | 0% → 100% | 28d → none |  |  |
| SL11 | **Storage Tank (TSE)** | 2026-08-23 → 2026-12-06 (+105d) | 2026-08-23 → 2026-12-06 (+105d) |  |  |  |  |
| PRO-TSE-CV-DL-60 | Material Delivery & Site Inspection for Civil Works for Storage Tank (TSE) | 2026-08-23 → 2026-12-06 (+105d) | 2026-08-23 → 2026-12-06 (+105d) |  | 14d → -75d |  |  |
| SL12 | **Gaurd Room** | 2026-08-29 → 2026-12-12 (+105d) | 2026-08-29 → 2026-12-12 (+105d) |  |  |  |  |
| PRO-GR-CV-DL-70 | Material Delivery & Site Inspection for Civil Works for Gaurd Room | 2026-08-29 → 2026-12-12 (+105d) | 2026-08-29 → 2026-12-12 (+105d) |  | 25d → -64d |  | resources Slab on Grade; Slabs; Lightweight Concrete Roof insulation as per Architect's specification; Insulated brickwork. with expanded polystyrene 200mm thick; vertical straight wall complete with accessories .; Common brickwork. 150mm thick; vertical straight wall complete with accessories.; 2 perpendicular layers of cold bitumen coats; 2 layer of 4mm HDPE membrane, 2 perpendicular layers cold bitumen coats; 1 layer EPOXY Paint 300 micron; Membrane fully bonded to prime deck and upstand; Geotextile Filter membrane uv resistance; 85mm thick thermal insulation; 1.5mm thick epdm waterproofing membrane; CW01 - 4500 mm width x 3700 mm height; CW02 - 4500 mm width x 3700 mm height; CW03 - 4500 mm width x 3700 mm height; CW04 - 4500 mm width x 3700 mm height; CW05 - 7500 mm width x 4250 mm height; CW06 - 7500 mm width x 4250 mm height; W01 - 1000 mm width x 2000 mm height; W02 - 2000 mm width x 2000 mm height; W03 - 2000 mm width x 1000 mm height; D2 - 900 mm x 2200 mm height temper door; D3 - 950 mm x 2000 mm height temper door; Supply and install 300*300mm terrazzo tiles with 150mm high skirting at perimeter with approv; Supply and install 300*300mm glazed ceramic wall tiles on cement mortar and including rough; Supply and install internal plastering and 2 coats of acrylic paint at walls includin; Supply and install 300*300mm glazed ceramic wall tiles on cement mortar and including rough and smooth p; Supply and install 600*600mm porcelain tiles with approved quality on 30 mm mortar inclu; Supply and install 12.5mm thk, gypsum board suspended ceiling including s; Office Chairs; Office Tables; Guard Stand; Magnetic Control Access barrier, Automatic Vehicular Barriers to be installed on ground with magnetic access; Supply and install Hand Wash Basin with Water Tap, angle valve, P-trap connected to 50mm diameter s; Supply and install paper towel dispenser, surface mounted, satin finish stainless steel as per approv; Supply and install mirror, size 460*910mm as per approved sample including frames, backing and all accessories to complete.; Supply and install towel ring , surface mounted, satin finish stainless steel as per approved sample including accessories.; Kitchen sink with single bowl with hot/cold water mixer.; Supply and install Base mounted flush tank water Western water closet system with lid connected to 110mm soil pipe; Gate Valves; Slow Closing Valve; 1 meter length 10mm diameter Flexible Hose with insulated handle complete with fork support, index push, vacuum breaker; 50mm diameter; 75mm diameter; 80mm diameter; 100mm diameter; 110mm diameter; 13mm diameter; 15mm diameter; 20mm diameter; 25mm diameter; 32mm diameter; 40mm diameter; Isolation Valve Size 20; Isolation Valve Size 25; Isolation Valve Size 32; Isolation Valve Size 40; Isolation Valve Size 50; 20 mm diameter spray head for cold water supply; Supply and install Electric Water Heater set with connection; Water meter complete with accessories.; Roof drain; Vent on a roof to exhaust air; Floor drain 100x80mm; Gully trap 300x300 mm; inspection chamber, size 800x900x1000; Mini split actual capacity 2 Ton; Ducted split actual capacity 4 Ton; Supply, fabricate, install and testing factory fabricated metal ducts with flanges complete with supports, vanes,; Supplying, installation testing & commissioning of external insulation on ducts; Supply, fix, testing and commissioning of exhaust air/fresh air louvers of powder coated extruded aluminium construction.; Providing, fixing, testing and commissioning of powder coated extruded aluminum sections grills and diffusers with dampers.; Air Grills 150mm x150mm; Air Diffuser 600mm x 600mm; Supply, Installation & Testing of 2 hours Fire rated system for closing the openings between roo; 4.5 KG CO2 Type Fire Extinguishers; 6 KG ABC Type Fire Extinguishers; Floor cleanout, size 75 mm diameter; Floor cleanout, size 110 mm diameter; GRP water tanks capacity of each 1000 liter complete with all fittings, all valves and concrete pad; Guard Room 1; Guard Room 2; Guard Room 3; 30A, 2P AC Disconnect Switch; 20A Duplex Receptacle Floor Mounted; Twin Socket outlet; Twin Socket outlet, Weather Proof; Single gang Lighting switch; 2way Single gang Lighting switch; 36W LED linear Pendant lighting; 36W LED Emergency linear Pendant lighting; 13W recess mounted LED down light fitting; 13W recess emergency mounted LED down light fitting with 1.5 Hr Battery; 10.4W LED Exit light with 1.5 Hr Battery; 4mm2 Cu./FRLSZH Cable; 6mm2 Cu./FRLSZH Cable; 8 Port Industrial PoE Switch 10/100BaseT (0 deg to +70 deg. Celsius); 06C Optical Fiber SM; 48C Optical Fiber SM; 48 Core Splice Closure; Boom Barrier at Security Guard Room; Pedestrian turnstile at Security Guard Room; Access Control Unit; Access Card Reader; Magnetic Lock; Break Glass; Exit Push button; Door Sensor; Biometrics Reader; Pole/Bollard mounted IP( PoE), Automatic Number Plate Recognition (ANPR, camera, 5MP,IP 66, IR illumin; 12U rack dimension (W x H x L) 600 x 625 x 600 mm; Fire Alarm Control panel with fire alarm zoning with Mimic panel with fire alarm zoning; Main Fire Alarm Control panel with fire alarm zoning with Mimic panel with fire alarm zoning; Supply and installation of the addressable manual call point with operation safety glass breaking and pushbutton; Supply and installation of the photoelectric heat & smoke detector with base; Sounder With Beacon; Addressable Control module for Sounders; Addressable Control module for HVAC System; Addressable Monitor module for HVAC System; 2C x 1.5 Sqm FR Rated Armored - Cable For Loop Wiring; DACT (Auto - Dailer) for 24x7 Civil Defence; Transmission Communication cable - Fiber Optics 12Core; Transmission Communication cable - Ethernet Cable; Supply, install to site and installation of power supply system for fire alarm control panel; Supply, install to site and installation of power cable; Fire Fighter s Telephone Centre; Fireman s Telephone Jack; Voice Command Center → Slab on Grade; Slabs; Lightweight Concrete Roof insulation as per Architect's specification; Insulated brickwork. with expanded polystyrene 200mm thick; vertical straight wall complete with accessories .; Common brickwork. 150mm thick; vertical straight wall complete with accessories.; 2 perpendicular layers of cold bitumen coats; 2 layer of 4mm HDPE membrane, 2 perpendicular layers cold bitumen coats; 1 layer EPOXY Paint 300 micron; Membrane fully bonded to prime deck and upstand; Geotextile Filter membrane uv resistance; 85mm thick thermal insulation; 1.5mm thick epdm waterproofing membrane; CW01 - 4500 mm width x 3700 mm height; CW02 - 4500 mm width x 3700 mm height; CW03 - 4500 mm width x 3700 mm height; CW04 - 4500 mm width x 3700 mm height; CW05 - 7500 mm width x 4250 mm height; CW06 - 7500 mm width x 4250 mm height; W01 - 1000 mm width x 2000 mm height; W02 - 2000 mm width x 2000 mm height; W03 - 2000 mm width x 1000 mm height; D2 - 900 mm x 2200 mm height temper door; D3 - 950 mm x 2000 mm height temper door; Supply and install 300*300mm terrazzo tiles with 150mm high skirting at perimeter with approv; Supply and install 300*300mm glazed ceramic wall tiles on cement mortar and including rough; Supply and install internal plastering and 2 coats of acrylic paint at walls includin; Supply and install 300*300mm glazed ceramic wall tiles on cement mortar and including rough and smooth p; Supply and install 600*600mm porcelain tiles with approved quality on 30 mm mortar inclu; Supply and install 12.5mm thk, gypsum board suspended ceiling including s; Office Chairs; Office Tables; Guard Stand; Magnetic Control Access barrier, Automatic Vehicular Barriers to be installed on ground with magnetic access; Supply and install Hand Wash Basin with Water Tap, angle valve, P-trap connected to 50mm diameter s; Supply and install paper towel dispenser, surface mounted, satin finish stainless steel as per approv; Supply and install mirror, size 460*910mm as per approved sample including frames, backing and all accessories to complete.; Supply and install towel ring , surface mounted, satin finish stainless steel as per approved sample including accessories.; Kitchen sink with single bowl with hot/cold water mixer.; Supply and install Base mounted flush tank water Western water closet system with lid connected to 110mm soil pipe; Gate Valves; Slow Closing Valve; 1 meter length 10mm diameter Flexible Hose with insulated handle complete with fork support, index push, vacuum breaker; 50mm diameter; 75mm diameter; 80mm diameter; 100mm diameter; 110mm diameter; 13mm diameter; 15mm diameter; 20mm diameter; 25mm diameter; 32mm diameter; 40mm diameter; Isolation Valve Size 20; Isolation Valve Size 25; Isolation Valve Size 32; Isolation Valve Size 40; Isolation Valve Size 50; 20 mm diameter spray head for cold water supply; Supply and install Electric Water Heater set with connection; Water meter complete with accessories.; Roof drain; Vent on a roof to exhaust air; Floor drain 100x80mm; Gully trap 300x300 mm; inspection chamber, size 800x900x1000; Mini split actual capacity 2 Ton; Ducted split actual capacity 4 Ton; Supply, fabricate, install and testing factory fabricated metal ducts with flanges complete with supports, vanes,; Supplying, installation testing & commissioning of external insulation on ducts; Supply, fix, testing and commissioning of exhaust air/fresh air louvers of powder coated extruded aluminium construction.; Providing, fixing, testing and commissioning of powder coated extruded aluminum sections grills and diffusers with dampers.; Air Grills 150mm x150mm; Air Diffuser 600mm x 600mm; Supply, Installation & Testing of 2 hours Fire rated system for closing the openings between roo; 4.5 KG CO2 Type Fire Extinguishers; 6 KG ABC Type Fire Extinguishers; Floor cleanout, size 75 mm diameter; Floor cleanout, size 110 mm diameter; GRP water tanks capacity of each 1000 liter complete with all fittings, all valves and concrete pad; Guard Room 1; Guard Room 2; Guard Room 3; 30A, 2P AC Disconnect Switch; 20A Duplex Receptacle Floor Mounted; Twin Socket outlet; Twin Socket outlet, Weather Proof; Single gang Lighting switch; 2way Single gang Lighting switch; 36W LED linear Pendant lighting; 36W LED Emergency linear Pendant lighting; 13W recess mounted LED down light fitting; 13W recess emergency mounted LED down light fitting with 1.5 Hr Battery; 10.4W LED Exit light with 1.5 Hr Battery; 4mm2 Cu./FRLSZH Cable; 6mm2 Cu./FRLSZH Cable; 8 Port Industrial PoE Switch 10/100BaseT (0 deg to +70 deg. Celsius); 06C Optical Fiber SM; 48C Optical Fiber SM; 48 Core Splice Closure; Boom Barrier at Security Guard Room; Pedestrian turnstile at Security Guard Room; Access Control Unit; Access Card Reader; Magnetic Lock; Break Glass; Exit Push button; Door Sensor; Biometrics Reader; Pole/Bollard mounted IP( PoE), Automatic Number Plate Recognition (ANPR, camera, 5MP,IP 66, IR illumin; 12U rack dimension (W x H x L) 600 x 625 x 600 mm; Fire Alarm Control panel with fire alarm zoning with Mimic panel with fire alarm zoning; Main Fire Alarm Control panel with fire alarm zoning with Mimic panel with fire alarm zoning; Supply and installation of the addressable manual call point with operation safety glass breaking and pushbutton; Supply and installation of the photoelectric heat & smoke detector with base; Sounder With Beacon; Addressable Control module for Sounders; Addressable Control module for HVAC System; Addressable Monitor module for HVAC System; 2C x 1.5 Sqm FR Rated Armored - Cable For Loop Wiring; DACT (Auto - Dailer) for 24x7 Civil Defence; Transmission Communication cable - Fiber Optics 12Core; Transmission Communication cable - Ethernet Cable; Supply, install to site and installation of power supply system for fire alarm control panel; Supply, install to site and installation of power cable; Fire Fighter’s Telephone Centre; Fireman’s Telephone Jack; Voice Command Center |
| SL121 | **Fence** | 2026-07-25 → 2026-08-02 (+8d) | 2026-07-25 → 2026-10-06 (+73d) |  |  |  |  |
| PRO-FE-CV-DL-80 | Material Delivery & Site Inspection for Civil Works for Fence | 2026-07-25 → 2026-08-02 A (+8d) | 2026-07-25 → 2026-10-06 (+73d) | 0% → 80% | -0.15d → -42d | PRO-FE-CV-MF-60 SS+10d, PRO-FE-CV-MF-60 FF → PRO-FE-CV-MF-60 |  |
| SL1211 | **Softscape and Planting Works** | 2026-10-11 → 2027-01-04 (+85d) | 2026-10-11 → 2027-01-04 (+85d) |  |  |  |  |
| PRO-FE-CV-DL-90 | Material Delivery & Site Inspection for Softscape and Planting Works | 2026-10-11 → 2027-01-04 (+85d) | 2026-10-11 → 2027-01-04 (+85d) |  | 35.75d → -37d |  |  |
| LL | **Long Lead Time Items** | 2026-06-23 → 2026-10-06 (+105d) | 2026-12-23 → 2027-04-17 (+115d) |  |  |  |  |
| 2 | **Infrastructure Networks** | 2026-06-23 → 2026-10-06 (+105d) | 2026-10-31 → 2027-02-15 (+107d) |  |  |  |  |
| 2 | **CCTV System Wroks of Telecom Network** | 2026-06-23 → 2026-10-06 (+105d) | 2026-10-31 → 2027-02-15 (+107d) |  |  |  |  |
| 3 | **Issuance of Purchase Orders** | 2026-06-23 → 2026-10-06 (+105d) | 2026-07-15 → 2026-10-28 (+105d) |  |  |  |  |
| PRO-CTV-LL-PO-10 | Issuance of Purchase Order for Low Current Works of CCTV Complete System with All Accessories | 2026-06-23 → 2026-10-06 (+105d) | 2026-07-15 → 2026-10-28 (+105d) |  | 43d → -46d |  | resources Unskilled Labor [53.77 h]; Electrical Technician [20.74 h]; Plumber [4.86 h]; Carpenter [5.91 h]; Mason [4.7 h]; Steel Fixer [6 h]; Skilled Labor [16.21 h] → none |
| 1 | **Manufacturing of Material** | 2026-07-16 → 2026-10-29 (+105d) | 2026-10-13 → 2027-01-26 (+105d) |  |  |  |  |
| PRO-CTV-LL-MF-10 | Manufacturing of Low Current Works for CCTV Complete System with All Accessories | 2026-07-16 → 2026-10-29 (+105d) | 2026-10-13 → 2027-01-26 (+105d) |  | 50d → -55d |  | resources Unskilled Labor [241.96 h]; Electrical Technician [93.32 h]; Plumber [21.86 h]; Carpenter [26.58 h]; Mason [21.15 h]; Steel Fixer [27.02 h]; Skilled Labor [72.93 h] → none |
| 2 | **Material Shipping/Custom Clearance/Delivery** | 2026-10-13 → 2027-01-27 (+106d) | 2026-10-31 → 2027-02-15 (+107d) |  |  |  |  |
| PRO-CTV-LL-SH/DL-10 | Material Delivery for Low Current Works of CCTV Complete System with All Accessories | 2026-10-13 → 2027-01-27 (+106d) | 2026-10-31 → 2027-02-15 (+107d) |  | 43.12d → -47d |  | resources Unskilled Labor [40.33 h]; Electrical Technician [15.55 h]; Plumber [3.64 h]; Carpenter [4.43 h]; Mason [3.52 h]; Steel Fixer [4.5 h]; Skilled Labor [12.15 h] → none |
| 4 | **Material Site Inspection** | 2026-10-31 → 2027-02-15 (+107d) | 2026-10-31 → 2027-02-15 (+107d) |  |  |  |  |
| PRO-CTV-LL-MSI-10 | Material Site Inspection for Low Current Works of CCTV Complete System with All Accessories | 2026-10-31 → 2027-02-15 (+107d) | 2026-10-31 → 2027-02-15 (+107d) |  | 43.12d → -47d |  |  |
| 1 | **Superstructure Works** | 2026-07-04 → 2026-10-15 (+103d) | 2026-12-23 → 2027-04-17 (+115d) |  |  |  |  |
| SL | **Pump Stations** | 2026-07-04 → 2026-10-15 (+103d) | 2026-12-20 → 2027-04-13 (+114d) |  |  |  |  |
| 1 | **Issuance of Purchase Orders** | 2026-07-04 → 2026-10-15 (+103d) | 2026-08-06 → 2026-11-18 (+104d) |  |  |  |  |
| PRO-SPS-LL-PO-10 | Issuance of Purchase Order for Electromechanical Works for Pump Stations | 2026-07-04 → 2026-10-15 (+103d) | 2026-08-06 → 2026-11-18 (+104d) |  | 31.25d → -56.75d |  | resources Unskilled Labor [80.65 h]; Electrical Technician [31.11 h]; Plumber [7.29 h]; Carpenter [8.86 h]; Mason [7.05 h]; Steel Fixer [9.01 h]; Skilled Labor [24.31 h] → none |
| 2 | **Manufacturing of Material** | 2026-08-07 → 2026-11-19 (+104d) | 2026-10-05 → 2027-01-17 (+104d) |  |  |  |  |
| PRO-SPS-LL-MF-10 | Manufacturing of Electromechanical Works for Pump Stations | 2026-08-07 → 2026-11-19 (+104d) | 2026-10-05 → 2027-01-17 (+104d) |  | 37d → -67d |  | resources Unskilled Labor [161.31 h]; Electrical Technician [62.21 h]; Plumber [14.57 h]; Carpenter [17.72 h]; Mason [14.1 h]; Steel Fixer [18.01 h]; Skilled Labor [48.62 h] → none |
| 3 | **Material Shipping/Custom Clearance/Delivery** | 2026-10-06 → 2027-01-18 (+104d) | 2026-11-09 → 2027-02-25 (+108d) |  |  |  |  |
| PRO-SPS-LL-SH/DL-10 | Material Delivery for Electromechanical Works for Pump Stations | 2026-10-06 → 2027-01-18 (+104d) | 2026-11-09 → 2027-02-25 (+108d) |  | 32d → -57d |  | resources Unskilled Labor [80.65 h]; Electrical Technician [31.11 h]; Plumber [7.29 h]; Carpenter [8.86 h]; Mason [7.05 h]; Steel Fixer [9.01 h]; Skilled Labor [24.31 h] → none |
| 4 | **Material Site Inspection** | 2026-11-10 → 2027-02-25 (+107d) | 2026-12-20 → 2027-04-13 (+114d) |  |  |  |  |
| PRO-SPS-LL-MSI-10 | Material Site Inspection for Electromechanical Works for Pump Stations | 2026-11-10 → 2027-02-25 (+107d) | 2026-12-20 → 2027-04-13 (+114d) |  | 32d → -57d |  | resources Unskilled Labor [94.09 h]; Electrical Technician [36.29 h]; Plumber [8.5 h]; Carpenter [10.34 h]; Mason [8.22 h]; Steel Fixer [10.51 h]; Skilled Labor [28.36 h] → none |
| SL1 | **Lift Stations** | 2026-07-04 → 2026-10-15 (+103d) | 2026-12-23 → 2027-04-17 (+115d) |  |  |  |  |
| 1 | **Issuance of Purchase Orders** | 2026-07-04 → 2026-10-15 (+103d) | 2026-08-06 → 2026-11-18 (+104d) |  |  |  |  |
| PRO-LS-LL-PO-20 | Issuance of Purchase Order for Electromechanical Works for Lift Stations | 2026-07-04 → 2026-10-15 (+103d) | 2026-08-06 → 2026-11-18 (+104d) |  | 18.25d → -69.75d |  | resources Unskilled Labor [80.65 h]; Electrical Technician [31.11 h]; Plumber [7.29 h]; Carpenter [8.86 h]; Mason [7.05 h]; Steel Fixer [9.01 h]; Skilled Labor [24.31 h] → none |
| 2 | **Manufacturing of Material** | 2026-08-07 → 2026-11-19 (+104d) | 2026-10-05 → 2027-01-17 (+104d) |  |  |  |  |
| PRO-LS-LL-MF-20 | Manufacturing of Electromechanical Works for Lift Stations | 2026-08-07 → 2026-11-19 (+104d) | 2026-10-05 → 2027-01-17 (+104d) |  | 22d → -82d |  | resources Unskilled Labor [161.31 h]; Electrical Technician [62.21 h]; Plumber [14.57 h]; Carpenter [17.72 h]; Mason [14.1 h]; Steel Fixer [18.01 h]; Skilled Labor [48.62 h] → none |
| 3 | **Material Shipping/Custom Clearance/Delivery** | 2026-10-06 → 2027-01-18 (+104d) | 2026-11-09 → 2027-02-25 (+108d) |  |  |  |  |
| PRO-LS-LL-SH/DL-20 | Material Delivery for Electromechanical Works for Lift Stations | 2026-10-06 → 2027-01-18 (+104d) | 2026-11-09 → 2027-02-25 (+108d) |  | 19d → -70d |  | resources Unskilled Labor [80.65 h]; Electrical Technician [31.11 h]; Plumber [7.29 h]; Carpenter [8.86 h]; Mason [7.05 h]; Steel Fixer [9.01 h]; Skilled Labor [24.31 h] → none |
| 4 | **Material Site Inspection** | 2026-11-10 → 2027-02-25 (+107d) | 2026-12-23 → 2027-04-17 (+115d) |  |  |  |  |
| PRO-LS-LL-MSI-20 | Material Site Inspection for Electromechanical Works for Lift Stations | 2026-11-10 → 2027-02-25 (+107d) | 2026-12-23 → 2027-04-17 (+115d) |  | 19d → -70d |  | resources Unskilled Labor [102.16 h]; Electrical Technician [39.4 h]; Plumber [9.23 h]; Carpenter [11.22 h]; Mason [8.93 h]; Steel Fixer [11.41 h]; Skilled Labor [30.79 h] → none |
| SL2 | **Storage Tank (TSE)** | 2026-07-04 → 2026-10-15 (+103d) | 2026-12-23 → 2027-04-17 (+115d) |  |  |  |  |
| 1 | **Issuance of Purchase Orders** | 2026-07-04 → 2026-10-15 (+103d) | 2026-08-06 → 2026-11-18 (+104d) |  |  |  |  |
| PRO-TSE-LL-PO-30 | Issuance of Purchase Order for Electromechanical Works for Storage Tank (TSE) | 2026-07-04 → 2026-10-15 (+103d) | 2026-08-06 → 2026-11-18 (+104d) |  | 18.25d → -69.75d |  | resources Unskilled Labor [80.65 h]; Electrical Technician [31.11 h]; Plumber [7.29 h]; Carpenter [8.86 h]; Mason [7.05 h]; Steel Fixer [9.01 h]; Skilled Labor [24.31 h] → none |

| ID | Task | Start | Finish | Complete | Total float | Predecessors | Other |
| --- | --- | --- | --- | --- | --- | --- | --- |
| 2 | **Manufacturing of Material** | 2026-08-07 → 2026-11-19 (+104d) | 2026-10-05 → 2027-01-17 (+104d) |  |  |  |  |
| PRO-TSE-LL-MF-30 | Manufacturing of Electromechanical Works for Storage Tank (TSE) | 2026-08-07 → 2026-11-19 (+104d) | 2026-10-05 → 2027-01-17 (+104d) |  | 22d → -82d |  | resources Unskilled Labor [161.31 h]; Electrical Technician [62.21 h]; Plumber [14.57 h]; Carpenter [17.72 h]; Mason [14.1 h]; Steel Fixer [18.01 h]; Skilled Labor [48.62 h] → none |
| 3 | **Material Shipping/Custom Clearance/Delivery** | 2026-10-06 → 2027-01-18 (+104d) | 2026-11-09 → 2027-02-25 (+108d) |  |  |  |  |
| PRO-TSE-LL-SH/DL-30 | Material Delivery for Electromechanical Works for Storage Tank (TSE) | 2026-10-06 → 2027-01-18 (+104d) | 2026-11-09 → 2027-02-25 (+108d) |  | 19d → -70d |  | resources Unskilled Labor [80.65 h]; Electrical Technician [31.11 h]; Plumber [7.29 h]; Carpenter [8.86 h]; Mason [7.05 h]; Steel Fixer [9.01 h]; Skilled Labor [24.31 h] → none |
| 4 | **Material Site Inspection** | 2026-11-10 → 2027-02-25 (+107d) | 2026-12-23 → 2027-04-17 (+115d) |  |  |  |  |
| PRO-TSE-LL-MSI-30 | Material Site Inspection for Electromechanical Works for Storage Tank (TSE) | 2026-11-10 → 2027-02-25 (+107d) | 2026-12-23 → 2027-04-17 (+115d) |  | 19d → -70d |  | resources Unskilled Labor [102.16 h]; Electrical Technician [39.4 h]; Plumber [9.23 h]; Carpenter [11.22 h]; Mason [8.93 h]; Steel Fixer [11.41 h]; Skilled Labor [30.79 h] → none |
| CON | **Construction Works** |  | 2027-02-23 → 2027-06-07 (+104d) |  |  |  |  |
| INF | **Infrastructure Networks** |  | 2027-02-16 → 2027-06-07 (+111d) |  |  |  |  |
| EW | **Earthworks** |  | 2026-08-02 → 2026-10-24 (+83d) |  |  |  |  |
| EW | **Earthworks** |  | 2026-08-02 → 2026-10-24 (+83d) |  |  |  |  |
| CO-EW-200 | Excavation Works Upto Design Level for Earthworks-P1(Completed) |  |  |  |  |  | resources Unskilled Labor [701.76 h]; Dozer [701.76 h]; Excavator [701.76 h]; Loader [701.76 h]; Dump Truck [1403.52 h]; Excavations (including Roads , Plots and Pond) [128979] → Excavations (including Roads , Plots and Pond) [128979]; Unskilled Labor [701.76 h]; Dozer [701.76 h]; Excavator [701.76 h]; Loader [701.76 h]; Dump Truck [1403.52 h] |
| CO-EW-210 | Excavation Works Upto Design Level for Earthworks-P2(Completed) |  |  |  |  |  | resources Unskilled Labor [336.96 h]; Dozer [336.96 h]; Excavator [336.96 h]; Loader [336.96 h]; Dump Truck [673.92 h]; Excavations (including Roads , Plots and Pond) [58490.3] → Excavations (including Roads , Plots and Pond) [58490.3]; Unskilled Labor [336.96 h]; Dozer [336.96 h]; Excavator [336.96 h]; Loader [336.96 h]; Dump Truck [673.92 h] |
| CO-EW-220 | Excavation Works Upto Design Level for Earthworks-P3(Completed) |  |  |  |  |  | resources Unskilled Labor [622.08 h]; Dozer [622.08 h]; Excavator [622.08 h]; Loader [622.08 h]; Dump Truck [1244.16 h]; Excavations (including Roads , Plots and Pond) [107982] → Excavations (including Roads , Plots and Pond) [107982]; Unskilled Labor [622.08 h]; Dozer [622.08 h]; Excavator [622.08 h]; Loader [622.08 h]; Dump Truck [1244.16 h] |
| CO-EW-110 | Embankments Works Upto Design Level for Earthworks(Completed) |  |  |  |  |  | resources Unskilled Labor [470.4 h]; Dozer [470.4 h]; Excavator [470.4 h]; Loader [470.4 h]; Dump Truck [940.8 h]; Embankments to the Site and Roads (including Roads , Plots and Pond) [98621.6] → Embankments to the Site and Roads (including Roads , Plots and Pond) [98621.6]; Unskilled Labor [470.4 h]; Dozer [470.4 h]; Excavator [470.4 h]; Loader [470.4 h]; Dump Truck [940.8 h] |
| CO-EW-110_R | Embankments Works Upto Design Level for Earthworks(Remaining) | 2026-07-15 → 2026-08-02 A (+18d) | 2026-08-02 → 2026-10-24 (+83d) | 0% → 81% | -1.5d → -72d |  | resources Unskilled Labor [470 h]; Dozer [470 h]; Excavator [270 h]; Loader [470 h]; Dump Truck [870 h]; Embankments to the Site and Roads (including Roads , Plots and Pond) [371005] → Embankments to the Site and Roads (including Roads , Plots and Pond) [371005]; Unskilled Labor [470 h]; Dozer [470 h]; Excavator [270 h]; Loader [470 h]; Dump Truck [870 h] |
| CO-EW-200_R | Excavation Works Upto Design Level for Earthworks-P1(Remaining) | 2026-07-04 → 2026-08-02 A (+29d) | 2026-07-14 → 2026-10-17 (+95d) | 0% → 78% | -1.5d → -72d |  | resources Unskilled Labor [930.24 h]; Dozer [350 h]; Excavator [300 h]; Loader [400 h]; Dump Truck [650 h]; Excavations (including Roads , Plots and Pond) [177897] → Excavations (including Roads , Plots and Pond) [177897]; Unskilled Labor [930.24 h]; Dozer [350 h]; Excavator [300 h]; Loader [400 h]; Dump Truck [650 h] |
| CO-EW-210_R | Excavation Works Upto Design Level for Earthworks-P2(Remaining) | 2026-07-04 → 2026-08-02 A (+29d) | 2026-07-14 → 2026-10-17 (+95d) | 0% → 78% | 3.5d → -72d |  | resources Unskilled Labor [236 h]; Dozer [236 h]; Excavator [236 h]; Loader [236 h]; Dump Truck [430 h]; Excavations (including Roads , Plots and Pond) [91484.9] → Excavations (including Roads , Plots and Pond) [91484.9]; Unskilled Labor [236 h]; Dozer [236 h]; Excavator [236 h]; Loader [236 h]; Dump Truck [430 h] |
| CO-EW-220_R | Excavation Works Upto Design Level for Earthworks-P3(Remaining) | 2026-07-04 → 2026-08-02 A (+29d) | 2026-07-16 → 2026-10-19 (+95d) | 0% → 78% | 8.5d → -72d |  | resources Unskilled Labor [1105.92 h]; Dozer [300 h]; Excavator [222 h]; Loader [322 h]; Dump Truck [650 h]; Excavations (including Roads , Plots and Pond) [191968] → Excavations (including Roads , Plots and Pond) [191968]; Unskilled Labor [1105.92 h]; Dozer [300 h]; Excavator [222 h]; Loader [322 h]; Dump Truck [650 h] |
| SD | **Storm Drainage Network** | 2026-07-15 → 2026-08-02 (+18d) | 2026-11-01 → 2027-02-15 (+106d) |  |  |  |  |
| MH25-MH12 | **FROM MH-25:MH-12** | 2026-07-15 → 2026-08-02 (+18d) | 2026-09-30 → 2027-01-13 (+105d) |  |  |  |  |
| ML | **Main Line Sections** | 2026-07-15 → 2026-08-02 (+18d) | 2026-08-04 → 2026-11-03 (+91d) |  |  |  |  |
| CO-SD-ML-100 | Trench Excavation and Bedding Works for Main Lines of Storm Drainage Network | 2026-07-15 → 2026-08-02 A (+18d) | 2026-07-18 → 2026-10-22 (+96d) | 0% → 3% | 3.5d → -70d | CO-EW-200_R SS+10d, CO-EW-110_R SS, ENG-SH-SD-ML-A-110, ENG-MT-SD-ML-A-110, PRO-SD-1DL-110 SS, CO-EW-220_R SS, CO-EW-210_R → CO-EW-200_R SS+10d, CO-EW-110_R SS, ENG-SH-SD-ML-A-110, ENG-MT-SD-ML-A-110, CO-EW-220_R SS, PRO-SD-1DL-110 FF, CO-EW-210_R SS | resources Unskilled Labor [96 h]; Excavator [96 h]; Skilled Labor [96 h]; Depth Between 0m to 1.50m; Depth Between 0m to 1.50m [19.5]; Depth Between 1.50m to 2.50m [578.53]; Depth > 2.50m [3.08]; Depth Between 1.50m to 2.50m [112.46]; Depth Between 2.50m to 3.50m [90.09]; Depth > 3.50m [3.08]; Depth Between 2.50m to 3.50m [39.2]; Depth Between 0m to 1.50m [5.75]; Depth Between 1.50m to 2.50m [2.05]; Depth Between 2.50m to 3.50m [19.29]; Depth > 3.50m [1.44]; Depth Between 2.50m to 3.50m [24.83]; Depth Between 3.50m to 4.50m [76.14]; Depth > 4.50m [3.08]; Depth Between 3.50m to 4.50m [151.25]; Depth > 4.50m [5.13] → Depth Between 0m to 1.50m; Depth Between 0m to 1.50m [19.5]; Depth Between 1.50m to 2.50m [578.53]; Depth > 2.50m [3.08]; Depth Between 1.50m to 2.50m [112.46]; Depth Between 2.50m to 3.50m [90.09]; Depth > 3.50m [3.08]; Depth Between 2.50m to 3.50m [39.2]; Depth Between 0m to 1.50m [5.75]; Depth Between 1.50m to 2.50m [2.05]; Depth Between 2.50m to 3.50m [19.29]; Depth > 3.50m [1.44]; Depth Between 2.50m to 3.50m [24.83]; Depth Between 3.50m to 4.50m [76.14]; Depth > 4.50m [3.08]; Depth Between 3.50m to 4.50m [151.25]; Depth > 4.50m [5.13]; Unskilled Labor [96 h]; Excavator [96 h]; Skilled Labor [96 h] |
| CO-SD-ML-120 | Pipes Laying Works for Main Lines of Storm Drainage Network | 2026-07-19 → 2026-08-02 A (+14d) | 2026-07-23 → 2026-10-28 (+97d) | 0% → 3% | 3.5d → -71d | CO-SD-ML-100, PRO-R25-SD-DL-120, CO-EW-210_R → CO-SD-ML-100 SS, PRO-R25-SD-DL-120 SS, CO-EW-210_R SS | resources Unskilled Labor [448 h]; Plumber [224 h]; Excavator [224 h]; Skilled Labor [224 h]; Depth Between 0m to 1.50m [35.09]; Depth Between 1.50m to 2.50m [1041.35]; Depth > 2.50m [5.54]; Depth Between 1.50m to 2.50m [202.43]; Depth Between 2.50m to 3.50m [162.17]; Depth > 3.50m [5.54]; Depth Between 2.50m to 3.50m [70.56]; Depth Between 0m to 1.50m [10.34]; Depth Between 1.50m to 2.50m [3.69]; Depth Between 2.50m to 3.50m [34.72]; Depth > 3.50m [2.59]; Depth Between 2.50m to 3.50m [44.7]; Depth Between 3.50m to 4.50m [137.05]; Depth > 4.50m [5.54]; Depth Between 3.50m to 4.50m [272.25]; Depth > 4.50m [9.24] → Depth Between 0m to 1.50m [35.09]; Depth Between 1.50m to 2.50m [1041.35]; Depth > 2.50m [5.54]; Depth Between 1.50m to 2.50m [202.43]; Depth Between 2.50m to 3.50m [162.17]; Depth > 3.50m [5.54]; Depth Between 2.50m to 3.50m [70.56]; Depth Between 0m to 1.50m [10.34]; Depth Between 1.50m to 2.50m [3.69]; Depth Between 2.50m to 3.50m [34.72]; Depth > 3.50m [2.59]; Depth Between 2.50m to 3.50m [44.7]; Depth Between 3.50m to 4.50m [137.05]; Depth > 4.50m [5.54]; Depth Between 3.50m to 4.50m [272.25]; Depth > 4.50m [9.24]; Unskilled Labor [448 h]; Plumber [224 h]; Excavator [224 h]; Skilled Labor [224 h] |
| CO-SD-ML-130 | Trench Backfilling and Compaction Works for Main Lines of Storm Drainage Network | 2026-07-25 → 2026-08-02 A (+8d) | 2026-08-04 → 2026-11-03 (+91d) | 0% → 3% | 3.5d → -71d | CO-SD-ML-120, CO-EW-210_R, CO-EW-220_R, PRO-R25-SD-DL-120 → CO-SD-ML-120 SS, CO-EW-210_R SS, CO-EW-220_R SS, PRO-R25-SD-DL-120 SS | resources Unskilled Labor [224 h]; Excavator [224 h]; JCB [224 h]; Dump Truck [224 h]; Depth Between 0m to 1.50m [15.6]; Depth Between 1.50m to 2.50m [462.82]; Depth > 2.50m [2.46]; Depth Between 1.50m to 2.50m [89.97]; Depth Between 2.50m to 3.50m [72.07]; Depth > 3.50m [2.46]; Depth Between 2.50m to 3.50m [31.36]; Depth Between 0m to 1.50m [4.6]; Depth Between 1.50m to 2.50m [1.64]; Depth Between 2.50m to 3.50m [15.43]; Depth > 3.50m [1.15]; Depth Between 2.50m to 3.50m [19.87]; Depth Between 3.50m to 4.50m [60.91]; Depth > 4.50m [2.46]; Depth Between 3.50m to 4.50m [121]; Depth > 4.50m [4.1] → Depth Between 0m to 1.50m [15.6]; Depth Between 1.50m to 2.50m [462.82]; Depth > 2.50m [2.46]; Depth Between 1.50m to 2.50m [89.97]; Depth Between 2.50m to 3.50m [72.07]; Depth > 3.50m [2.46]; Depth Between 2.50m to 3.50m [31.36]; Depth Between 0m to 1.50m [4.6]; Depth Between 1.50m to 2.50m [1.64]; Depth Between 2.50m to 3.50m [15.43]; Depth > 3.50m [1.15]; Depth Between 2.50m to 3.50m [19.87]; Depth Between 3.50m to 4.50m [60.91]; Depth > 4.50m [2.46]; Depth Between 3.50m to 4.50m [121]; Depth > 4.50m [4.1]; Unskilled Labor [224 h]; Excavator [224 h]; JCB [224 h]; Dump Truck [224 h] |
| MH | **Manholes** | 2026-08-09 → 2026-11-22 (+105d) | 2026-09-06 → 2026-12-21 (+106d) |  |  |  |  |
| CO-SD-MH-180 | Trench Excavation and Bedding Works for Manholes of Storm Drainage Network | 2026-08-09 → 2026-11-22 (+105d) | 2026-08-16 → 2026-11-30 (+106d) |  | 0d → -89.2d |  | resources Unskilled Labor [56 h]; Excavator [56 h]; Skilled Labor [56 h]; MH depth 1.5 - 2.5m [2.46]; MH depth 2.5 - 3.5m [2.01]; MH depth > 3.50m [0.22]; MH depth 2.5 -3.5m [0.22] → MH depth 1.5 - 2.5m [2.46]; MH depth 2.5 - 3.5m [2.01]; MH depth > 3.50m [0.22]; MH depth 2.5 -3.5m [0.22]; Unskilled Labor [56 h]; Excavator [56 h]; Skilled Labor [56 h] |
| CO-SD-MH-190 | Install RC Footing Works for Manholes of Storm Drainage Network | 2026-08-17 → 2026-11-30 (+105d) | 2026-08-24 → 2026-12-08 (+106d) |  | 0d → -89.2d |  | resources Unskilled Labor [112 h]; Plumber [56 h]; Excavator [56 h]; Skilled Labor [56 h]; MH depth 1.5 - 2.5m [4.1]; MH depth 2.5 - 3.5m [3.36]; MH depth > 3.50m [0.37]; MH depth 2.5 -3.5m [0.37] → MH depth 1.5 - 2.5m [4.1]; MH depth 2.5 - 3.5m [3.36]; MH depth > 3.50m [0.37]; MH depth 2.5 -3.5m [0.37]; Unskilled Labor [112 h]; Plumber [56 h]; Excavator [56 h]; Skilled Labor [56 h] |
| CO-SD-MH-200 | Install RC Wall Rings & Slab Works for Manholes of Storm Drainage Network | 2026-08-25 → 2026-12-08 (+105d) | 2026-08-29 → 2026-12-13 (+106d) |  | 0d → -89.2d |  | resources Unskilled Labor [64 h]; Plumber [32 h]; Excavator [32 h]; Mobile Crane [32 h]; MH depth 1.5 - 2.5m [2.46]; MH depth 2.5 - 3.5m [2.01]; MH depth > 3.50m [0.22]; MH depth 2.5 -3.5m [0.22] → MH depth 1.5 - 2.5m [2.46]; MH depth 2.5 - 3.5m [2.01]; MH depth > 3.50m [0.22]; MH depth 2.5 -3.5m [0.22]; Unskilled Labor [64 h]; Plumber [32 h]; Excavator [32 h]; Mobile Crane [32 h] |
| CO-SD-MH-220 | Backfilling Works for Manholes of Storm Drainage Network | 2026-08-30 → 2026-12-13 (+105d) | 2026-09-06 → 2026-12-21 (+106d) |  | 0d → -89.2d | CO-SD-MH-200, CO-SD-ML-130 FF → CO-SD-MH-200, CO-SD-ML-130 FF, ENG-SH-DPO-A-120 | resources Unskilled Labor [56 h]; Excavator [56 h]; JCB [56 h]; Dump Truck [56 h]; MH depth 1.5 - 2.5m [3.28]; MH depth 2.5 - 3.5m [2.69]; MH depth > 3.50m [0.3]; MH depth 2.5 -3.5m [0.3] → MH depth 1.5 - 2.5m [3.28]; MH depth 2.5 - 3.5m [2.69]; MH depth > 3.50m [0.3]; MH depth 2.5 -3.5m [0.3]; Unskilled Labor [56 h]; Excavator [56 h]; JCB [56 h]; Dump Truck [56 h] |
| CB | **Catch Basin Sections** | 2026-08-17 → 2026-11-30 (+105d) | 2026-09-30 → 2027-01-13 (+105d) |  |  |  |  |
| CO-SD-CB-140 | Trench Excavation and Bedding Works for Catch Basins of Storm Drainage Network | 2026-08-17 → 2026-11-30 (+105d) | 2026-08-27 → 2026-12-12 (+107d) |  | 8d → -81.2d |  | resources Unskilled Labor [160 h]; Excavator [160 h]; Skilled Labor [160 h]; Single Catch Basin 1000mm x 1000mm [24.18]; Double Catch Basin 1200mm x 2300mm [0.45] → Single Catch Basin 1000mm x 1000mm [24.18]; Double Catch Basin 1200mm x 2300mm [0.45]; Unskilled Labor [160 h]; Excavator [160 h]; Skilled Labor [160 h] |
| CO-SD-CB-150 | Installation and Pipes Laying Connection Works for Catch Basins of Storm Drainage Network | 2026-09-07 → 2026-12-21 (+105d) | 2026-09-17 → 2027-01-02 (+107d) |  | 0d → -89.2d |  | resources Unskilled Labor [320 h]; Plumber [160 h]; Excavator [160 h]; Skilled Labor [160 h]; Single Catch Basin 1000mm x 1000mm [72.54]; Double Catch Basin 1200mm x 2300mm [1.34] → Single Catch Basin 1000mm x 1000mm [72.54]; Double Catch Basin 1200mm x 2300mm [1.34]; Unskilled Labor [320 h]; Plumber [160 h]; Excavator [160 h]; Skilled Labor [160 h] |
| CO-SD-CB-170 | Trench Backfilling and Compaction Works for Catch Basins of Storm Drainage Network | 2026-09-19 → 2027-01-02 (+105d) | 2026-09-30 → 2027-01-13 (+105d) |  | 0d → -89.2d | CO-SD-CB-150, CO-SD-ML-130 FF, CO-SD-MH-220 → CO-SD-CB-150, CO-SD-ML-130 FF, CO-SD-MH-220, ENG-SH-DPO-A-120 | resources Unskilled Labor [160 h]; Excavator [160 h]; JCB [160 h]; Dump Truck [160 h]; Single Catch Basin 1000mm x 1000mm [32.24]; Double Catch Basin 1200mm x 2300mm [0.6] → Single Catch Basin 1000mm x 1000mm [32.24]; Double Catch Basin 1200mm x 2300mm [0.6]; Unskilled Labor [160 h]; Excavator [160 h]; JCB [160 h]; Dump Truck [160 h] |
| MH25-MH121 | **FROM MH-12:MH-01** | 2026-08-03 → 2026-10-25 (+83d) | 2026-11-01 → 2027-02-15 (+106d) |  |  |  |  |
| ML | **Main Line Sections** | 2026-08-03 → 2026-10-25 (+83d) | 2026-09-28 → 2026-12-19 (+82d) |  |  |  |  |
| CO-SD-ML-140 | Trench Excavation and Bedding Works for Main Lines of Storm Drainage Network | 2026-08-03 → 2026-10-25 (+83d) | 2026-08-18 → 2026-11-09 (+83d) |  | 8d → -71d |  | resources Unskilled Labor [160 h]; Excavator [160 h]; Skilled Labor [160 h]; Depth Between 0m to 1.50m [15.95]; Depth Between 1.50m to 2.50m [473.34]; Depth > 2.50m [2.52]; Depth Between 1.50m to 2.50m [92.01]; Depth Between 2.50m to 3.50m [73.71]; Depth > 3.50m [2.52]; Depth Between 2.50m to 3.50m [32.07]; Depth Between 0m to 1.50m [4.7]; Depth Between 1.50m to 2.50m [1.68]; Depth Between 2.50m to 3.50m [15.78]; Depth > 3.50m [1.18]; Depth Between 2.50m to 3.50m [20.32]; Depth Between 3.50m to 4.50m [62.29]; Depth > 4.50m [2.52]; Depth Between 3.50m to 4.50m [123.75]; Depth > 4.50m [4.2] → Depth Between 0m to 1.50m [15.95]; Depth Between 1.50m to 2.50m [473.34]; Depth > 2.50m [2.52]; Depth Between 1.50m to 2.50m [92.01]; Depth Between 2.50m to 3.50m [73.71]; Depth > 3.50m [2.52]; Depth Between 2.50m to 3.50m [32.07]; Depth Between 0m to 1.50m [4.7]; Depth Between 1.50m to 2.50m [1.68]; Depth Between 2.50m to 3.50m [15.78]; Depth > 3.50m [1.18]; Depth Between 2.50m to 3.50m [20.32]; Depth Between 3.50m to 4.50m [62.29]; Depth > 4.50m [2.52]; Depth Between 3.50m to 4.50m [123.75]; Depth > 4.50m [4.2]; Unskilled Labor [160 h]; Excavator [160 h]; Skilled Labor [160 h] |
| CO-SD-ML-150 | Pipes Laying Works for Main Lines of Storm Drainage Network | 2026-08-19 → 2026-11-10 (+83d) | 2026-09-03 → 2026-11-25 (+83d) |  | 8d → -71d |  | resources Unskilled Labor [336 h]; Plumber [168 h]; Excavator [168 h]; Skilled Labor [168 h]; Depth Between 0m to 1.50m [28.71]; Depth Between 1.50m to 2.50m [852.01]; Depth > 2.50m [4.53]; Depth Between 1.50m to 2.50m [165.63]; Depth Between 2.50m to 3.50m [132.68]; Depth > 3.50m [4.53]; Depth Between 2.50m to 3.50m [57.73]; Depth Between 0m to 1.50m [8.46]; Depth Between 1.50m to 2.50m [3.02]; Depth Between 2.50m to 3.50m [28.41]; Depth > 3.50m [2.12]; Depth Between 2.50m to 3.50m [36.57]; Depth Between 3.50m to 4.50m [112.13]; Depth > 4.50m [4.53]; Depth Between 3.50m to 4.50m [222.75]; Depth > 4.50m [7.56] → Depth Between 0m to 1.50m [28.71]; Depth Between 1.50m to 2.50m [852.01]; Depth > 2.50m [4.53]; Depth Between 1.50m to 2.50m [165.63]; Depth Between 2.50m to 3.50m [132.68]; Depth > 3.50m [4.53]; Depth Between 2.50m to 3.50m [57.73]; Depth Between 0m to 1.50m [8.46]; Depth Between 1.50m to 2.50m [3.02]; Depth Between 2.50m to 3.50m [28.41]; Depth > 3.50m [2.12]; Depth Between 2.50m to 3.50m [36.57]; Depth Between 3.50m to 4.50m [112.13]; Depth > 4.50m [4.53]; Depth Between 3.50m to 4.50m [222.75]; Depth > 4.50m [7.56]; Unskilled Labor [336 h]; Plumber [168 h]; Excavator [168 h]; Skilled Labor [168 h] |
| CO-SD-ML-160 | Trench Backfilling and Compaction Works for Main Lines of Storm Drainage Network | 2026-09-05 → 2026-11-26 (+82d) | 2026-09-28 → 2026-12-19 (+82d) |  | 20d → -59d | CO-SD-ML-150, CO-SD-ML-130 → CO-SD-ML-150, CO-SD-ML-130, ENG-SH-DPO-A-120 | resources Unskilled Labor [160 h]; Excavator [160 h]; JCB [160 h]; Dump Truck [160 h]; Depth Between 0m to 1.50m [12.76]; Depth Between 1.50m to 2.50m [378.67]; Depth > 2.50m [2.01]; Depth Between 1.50m to 2.50m [73.61]; Depth Between 2.50m to 3.50m [58.97]; Depth > 3.50m [2.01]; Depth Between 2.50m to 3.50m [25.66]; Depth Between 0m to 1.50m [3.76]; Depth Between 1.50m to 2.50m [1.34]; Depth Between 2.50m to 3.50m [12.63]; Depth > 3.50m [0.94]; Depth Between 2.50m to 3.50m [16.25]; Depth Between 3.50m to 4.50m [49.84]; Depth > 4.50m [2.01]; Depth Between 3.50m to 4.50m [99]; Depth > 4.50m [3.36] → Depth Between 0m to 1.50m [12.76]; Depth Between 1.50m to 2.50m [378.67]; Depth > 2.50m [2.01]; Depth Between 1.50m to 2.50m [73.61]; Depth Between 2.50m to 3.50m [58.97]; Depth > 3.50m [2.01]; Depth Between 2.50m to 3.50m [25.66]; Depth Between 0m to 1.50m [3.76]; Depth Between 1.50m to 2.50m [1.34]; Depth Between 2.50m to 3.50m [12.63]; Depth > 3.50m [0.94]; Depth Between 2.50m to 3.50m [16.25]; Depth Between 3.50m to 4.50m [49.84]; Depth > 4.50m [2.01]; Depth Between 3.50m to 4.50m [99]; Depth > 4.50m [3.36]; Unskilled Labor [160 h]; Excavator [160 h]; JCB [160 h]; Dump Truck [160 h] |
| MH | **Manholes** | 2026-09-05 → 2026-11-30 (+86d) | 2026-10-12 → 2027-01-06 (+86d) |  |  |  |  |
| CO-SD-MH-230 | Trench Excavation and Bedding Works for Manholes of Storm Drainage Network | 2026-09-05 → 2026-11-30 (+86d) | 2026-09-14 → 2026-12-10 (+87d) |  | 8d → -74.2d |  | resources Unskilled Labor [72 h]; Excavator [72 h]; Skilled Labor [72 h]; MH depth 1.5 - 2.5m [2.01]; MH depth 2.5 - 3.5m [1.79]; MH depth > 3.50m; MH depth 2.5 -3.5m [0.22] → MH depth 1.5 - 2.5m [2.01]; MH depth 2.5 - 3.5m [1.79]; MH depth > 3.50m; MH depth 2.5 -3.5m [0.22]; Unskilled Labor [72 h]; Excavator [72 h]; Skilled Labor [72 h] |
| CO-SD-MH-240 | Install RC Footing Works for Manholes of Storm Drainage Network | 2026-09-15 → 2026-12-10 (+86d) | 2026-09-22 → 2026-12-19 (+88d) |  | 8d → -74.2d |  | resources Unskilled Labor [112 h]; Plumber [56 h]; Excavator [56 h]; Skilled Labor [56 h]; MH depth 1.5 - 2.5m [3.36]; MH depth 2.5 - 3.5m [2.99]; MH depth > 3.50m; MH depth 2.5 -3.5m [0.37] → MH depth 1.5 - 2.5m [3.36]; MH depth 2.5 - 3.5m [2.99]; MH depth > 3.50m; MH depth 2.5 -3.5m [0.37]; Unskilled Labor [112 h]; Plumber [56 h]; Excavator [56 h]; Skilled Labor [56 h] |
| CO-SD-MH-250 | Install RC Wall Rings & Slab Works for Manholes of Storm Drainage Network | 2026-09-24 → 2026-12-19 (+86d) | 2026-10-01 → 2026-12-27 (+87d) |  | 8d → -74.2d |  | resources Unskilled Labor [112 h]; Plumber [56 h]; Excavator [56 h]; Mobile Crane [56 h]; MH depth 1.5 - 2.5m [2.01]; MH depth 2.5 - 3.5m [1.79]; MH depth > 3.50m; MH depth 2.5 -3.5m [0.22] → MH depth 1.5 - 2.5m [2.01]; MH depth 2.5 - 3.5m [1.79]; MH depth > 3.50m; MH depth 2.5 -3.5m [0.22]; Unskilled Labor [112 h]; Plumber [56 h]; Excavator [56 h]; Mobile Crane [56 h] |
| CO-SD-MH-260 | Backfilling Works for Manholes of Storm Drainage Network | 2026-10-03 → 2026-12-27 (+85d) | 2026-10-12 → 2027-01-06 (+86d) |  | 8d → -74.2d | CO-SD-MH-250, CO-SD-ML-160 FF, CO-SD-MH-220 → CO-SD-MH-250, CO-SD-ML-160 FF, CO-SD-MH-220, ENG-SH-DPO-A-120 | resources Unskilled Labor [72 h]; Excavator [72 h]; JCB [72 h]; Dump Truck [72 h]; MH depth 1.5 - 2.5m [2.69]; MH depth 2.5 - 3.5m [2.39]; MH depth > 3.50m; MH depth 2.5 -3.5m [0.3] → MH depth 1.5 - 2.5m [2.69]; MH depth 2.5 - 3.5m [2.39]; MH depth > 3.50m; MH depth 2.5 -3.5m [0.3]; Unskilled Labor [72 h]; Excavator [72 h]; JCB [72 h]; Dump Truck [72 h] |
| CB | **Catch Basin Sections** | 2026-10-01 → 2027-01-13 (+104d) | 2026-11-01 → 2027-02-15 (+106d) |  |  |  |  |
| CO-SD-CB-180 | Trench Excavation and Bedding Works for Catch Basins of Storm Drainage Network | 2026-10-01 → 2027-01-13 (+104d) | 2026-10-11 → 2027-01-24 (+105d) |  | 0d → -89.2d |  | resources Unskilled Labor [144 h]; Excavator [144 h]; Skilled Labor [144 h]; Single Catch Basin 1000mm x 1000mm [19.93]; Double Catch Basin 1200mm x 2300mm [0.45] → Single Catch Basin 1000mm x 1000mm [19.93]; Double Catch Basin 1200mm x 2300mm [0.45]; Unskilled Labor [144 h]; Excavator [144 h]; Skilled Labor [144 h] |
| CO-SD-CB-190 | Installation and Pipes Laying Connection Works for Catch Basins of Storm Drainage Network | 2026-10-12 → 2027-01-24 (+104d) | 2026-10-21 → 2027-02-03 (+105d) |  | 0d → -89.2d | CO-SD-CB-180, CO-SD-CB-150 → CO-SD-CB-180, CO-SD-CB-150, CO-SD-MH-260, CO-SD-ML-160, CO-SD-CB-170, CO-SD-MH-220, CO-SW-ML-130, CO-SW-MH-200, CO-SW-ML-160, CO-SW-MH-250, ENG-SH-DPO-A-120 | resources Unskilled Labor [384 h]; Plumber [192 h]; Excavator [192 h]; Skilled Labor [192 h]; Single Catch Basin 1000mm x 1000mm [59.78]; Double Catch Basin 1200mm x 2300mm [1.34] → Single Catch Basin 1000mm x 1000mm [59.78]; Double Catch Basin 1200mm x 2300mm [1.34]; Unskilled Labor [384 h]; Plumber [192 h]; Excavator [192 h]; Skilled Labor [192 h] |
| CO-SD-CB-200 | Trench Backfilling and Compaction Works for Catch Basins of Storm Drainage Network | 2026-10-22 → 2027-02-03 (+104d) | 2026-11-01 → 2027-02-15 (+106d) |  | 0d → -89.2d | CO-SD-CB-190, CO-SD-ML-160 FF, CO-SD-CB-170, CO-SD-MH-260 → CO-SD-CB-190, CO-SD-ML-160 FF, CO-SD-CB-170, CO-SD-MH-260, CO-SD-PO-100-P1 | resources Unskilled Labor [192 h]; Excavator [192 h]; JCB [192 h]; Dump Truck [192 h]; Single Catch Basin 1000mm x 1000mm [26.57]; Double Catch Basin 1200mm x 2300mm [0.6] → Single Catch Basin 1000mm x 1000mm [26.57]; Double Catch Basin 1200mm x 2300mm [0.6]; Unskilled Labor [192 h]; Excavator [192 h]; JCB [192 h]; Dump Truck [192 h] |
| SW | **Sewage Network** | 2026-08-03 → 2026-10-25 (+83d) | 2026-10-13 → 2027-01-03 (+82d) |  |  |  |  |
| 2 | **FROM MH-18:MH-10** | 2026-08-03 → 2026-10-25 (+83d) | 2026-10-04 → 2026-12-24 (+81d) |  |  |  |  |
| ML | **Main Line Sections** | 2026-08-03 → 2026-10-25 (+83d) | 2026-09-22 → 2026-12-14 (+83d) |  |  |  |  |
| CO-SW-ML-100 | Trench Excavation and Bedding Works for Main Lines of Sewage Network | 2026-08-03 → 2026-10-25 (+83d) | 2026-08-16 → 2026-11-07 (+83d) |  | -1.5d → -72d |  | resources Unskilled Labor [144 h]; Excavator [144 h]; Skilled Labor [144 h]; Depth Between 0m to 1.50m [5.97]; Depth Between 1.50m to 2.50m [36.72]; Depth > 2.50m [1.49]; Depth Between 0m to 1.50m [3.28]; Depth Between 1.50m to 2.50m [238.81]; Depth Between 2.50m to 3.50m [11.19]; Depth > 3.50m [2.24]; HDPE Force Main (PE 100, SDR 11, PN 16 bar) DN 160 mm diameter, in trenches depth: 0- 1.5m [3.73]; HDPE Force Main (PE 100, SDR 11, PN 16 bar) DN 160 mm diameter, in trenches depth: 1.51- 2.5m [5.97] → Depth Between 0m to 1.50m [5.97]; Depth Between 1.50m to 2.50m [36.72]; Depth > 2.50m [1.49]; Depth Between 0m to 1.50m [3.28]; Depth Between 1.50m to 2.50m [238.81]; Depth Between 2.50m to 3.50m [11.19]; Depth > 3.50m [2.24]; HDPE Force Main (PE 100, SDR 11, PN 16 bar) DN 160 mm diameter, in trenches depth: 0- 1.5m [3.73]; HDPE Force Main (PE 100, SDR 11, PN 16 bar) DN 160 mm diameter, in trenches depth: 1.51- 2.5m [5.97]; Unskilled Labor [144 h]; Excavator [144 h]; Skilled Labor [144 h] |
| CO-SW-ML-120 | Pipes Laying Works for Main Lines of Sewage Network | 2026-08-17 → 2026-11-08 (+83d) | 2026-08-30 → 2026-11-21 (+83d) |  | -1.5d → -72d |  | resources Unskilled Labor [288 h]; Plumber [144 h]; Excavator [144 h]; Skilled Labor [144 h]; Depth Between 0m to 1.50m [10.75]; Depth Between 1.50m to 2.50m [66.09]; Depth > 2.50m [2.69]; Depth Between 0m to 1.50m [5.91]; Depth Between 1.50m to 2.50m [429.85]; Depth Between 2.50m to 3.50m [20.15]; Depth > 3.50m [4.03]; HDPE Force Main (PE 100, SDR 11, PN 16 bar) DN 160 mm diameter, in trenches depth: 0- 1.5m [6.72]; HDPE Force Main (PE 100, SDR 11, PN 16 bar) DN 160 mm diameter, in trenches depth: 1.51- 2.5m [10.75] → Depth Between 0m to 1.50m [10.75]; Depth Between 1.50m to 2.50m [66.09]; Depth > 2.50m [2.69]; Depth Between 0m to 1.50m [5.91]; Depth Between 1.50m to 2.50m [429.85]; Depth Between 2.50m to 3.50m [20.15]; Depth > 3.50m [4.03]; HDPE Force Main (PE 100, SDR 11, PN 16 bar) DN 160 mm diameter, in trenches depth: 0- 1.5m [6.72]; HDPE Force Main (PE 100, SDR 11, PN 16 bar) DN 160 mm diameter, in trenches depth: 1.51- 2.5m [10.75]; Unskilled Labor [288 h]; Plumber [144 h]; Excavator [144 h]; Skilled Labor [144 h] |
| CO-SW-ML-130 | Trench Backfilling and Compaction Works for Main Lines of Sewage Network | 2026-08-31 → 2026-11-22 (+83d) | 2026-09-22 → 2026-12-14 (+83d) |  | 1.5d → -69d | CO-SW-ML-120 → CO-SW-ML-120, ENG-SH-DPO-A-120 | resources Unskilled Labor [160 h]; Excavator [160 h]; JCB [160 h]; Dump Truck [160 h]; Depth Between 0m to 1.50m [4.78]; Depth Between 1.50m to 2.50m [29.37]; Depth > 2.50m [1.19]; Depth Between 0m to 1.50m [2.63]; Depth Between 1.50m to 2.50m [191.04]; Depth Between 2.50m to 3.50m [8.96]; Depth > 3.50m [1.79]; HDPE Force Main (PE 100, SDR 11, PN 16 bar) DN 160 mm diameter, in trenches depth: 0- 1.5m [2.99]; HDPE Force Main (PE 100, SDR 11, PN 16 bar) DN 160 mm diameter, in trenches depth: 1.51- 2.5m [4.78] → Depth Between 0m to 1.50m [4.78]; Depth Between 1.50m to 2.50m [29.37]; Depth > 2.50m [1.19]; Depth Between 0m to 1.50m [2.63]; Depth Between 1.50m to 2.50m [191.04]; Depth Between 2.50m to 3.50m [8.96]; Depth > 3.50m [1.79]; HDPE Force Main (PE 100, SDR 11, PN 16 bar) DN 160 mm diameter, in trenches depth: 0- 1.5m [2.99]; HDPE Force Main (PE 100, SDR 11, PN 16 bar) DN 160 mm diameter, in trenches depth: 1.51- 2.5m [4.78]; Unskilled Labor [160 h]; Excavator [160 h]; JCB [160 h]; Dump Truck [160 h] |
| 1 | **Manholes** | 2026-08-31 → 2026-11-22 (+83d) | 2026-10-04 → 2026-12-24 (+81d) |  |  |  |  |
| CO-SW-MH-160 | Excavation Works for Main Line Manholes of Sewage Network | 2026-08-31 → 2026-11-22 (+83d) | 2026-09-07 → 2026-11-29 (+83d) |  | -1.5d → -72d |  | resources Unskilled Labor [56 h]; Excavator [56 h]; Skilled Labor [56 h]; Depth: 0 - 1.5m [0.22]; Depth: 1.51 - 2.5m [3.13]; Depth: 2.51 - 3.5m [0.22]; Depth > 3.50m → Depth: 0 - 1.5m [0.22]; Depth: 1.51 - 2.5m [3.13]; Depth: 2.51 - 3.5m [0.22]; Depth > 3.50m; Unskilled Labor [56 h]; Excavator [56 h]; Skilled Labor [56 h] |
| CO-SW-MH-170 | Installation RC Footing Works for Main Line Manholes of Sewage Network | 2026-09-08 → 2026-11-30 (+83d) | 2026-09-15 → 2026-12-07 (+83d) |  | -0.5d → -71d |  | resources Unskilled Labor [128 h]; Plumber [64 h]; Excavator [64 h]; Mobile Crane [64 h]; Depth: 0 - 1.5m [0.3]; Depth: 1.51 - 2.5m [4.18]; Depth: 2.51 - 3.5m [0.3]; Depth > 3.50m → Depth: 0 - 1.5m [0.3]; Depth: 1.51 - 2.5m [4.18]; Depth: 2.51 - 3.5m [0.3]; Depth > 3.50m; Unskilled Labor [128 h]; Plumber [64 h]; Excavator [64 h]; Mobile Crane [64 h] |
| CO-SW-MH-180 | Install Grp Liner Wall Works for Main Line Manholes of Sewage Network | 2026-09-16 → 2026-12-08 (+83d) | 2026-09-24 → 2026-12-15 (+82d) |  | -0.5d → -71d |  | resources Unskilled Labor [128 h]; Plumber [64 h]; Excavator [64 h]; Mobile Crane [64 h]; Depth: 0 - 1.5m [0.3]; Depth: 1.51 - 2.5m [4.18]; Depth: 2.51 - 3.5m [0.3]; Depth > 3.50m → Depth: 0 - 1.5m [0.3]; Depth: 1.51 - 2.5m [4.18]; Depth: 2.51 - 3.5m [0.3]; Depth > 3.50m; Unskilled Labor [128 h]; Plumber [64 h]; Excavator [64 h]; Mobile Crane [64 h] |
| CO-SW-MH-190 | Pouring Grp Liner Wall Works for Main Line Manholes of Sewage Network | 2026-09-26 → 2026-12-16 (+81d) | 2026-09-29 → 2026-12-20 (+82d) |  | 2.5d → -68d |  | resources Unskilled Labor [64 h]; Mason [32 h]; Skilled Labor [32 h]; Depth: 0 - 1.5m [0.07]; Depth: 1.51 - 2.5m [1.04]; Depth: 2.51 - 3.5m [0.07]; Depth > 3.50m → Depth: 0 - 1.5m [0.07]; Depth: 1.51 - 2.5m [1.04]; Depth: 2.51 - 3.5m [0.07]; Depth > 3.50m; Unskilled Labor [64 h]; Mason [32 h]; Skilled Labor [32 h] |
| CO-SW-MH-200 | Backfilling Works for Main Line Manholes of Sewage Network | 2026-09-30 → 2026-12-21 (+82d) | 2026-10-04 → 2026-12-24 (+81d) |  | 2.5d → -68d | CO-SW-MH-190, CO-SW-ML-130 FF, CO-SW-ML-130 → CO-SW-MH-190, CO-SW-ML-130 FF, CO-SW-ML-130, ENG-SH-DPO-A-120 | resources Unskilled Labor [32 h]; Excavator [32 h]; JCB [32 h]; Dump Truck [32 h]; Depth: 0 - 1.5m [0.3]; Depth: 1.51 - 2.5m [4.18]; Depth: 2.51 - 3.5m [0.3]; Depth > 3.50m → Depth: 0 - 1.5m [0.3]; Depth: 1.51 - 2.5m [4.18]; Depth: 2.51 - 3.5m [0.3]; Depth > 3.50m; Unskilled Labor [32 h]; Excavator [32 h]; JCB [32 h]; Dump Truck [32 h] |
| 1 | **FROM MH-10:MH-01** | 2026-08-17 → 2026-11-08 (+83d) | 2026-10-13 → 2027-01-03 (+82d) |  |  |  |  |
| ML | **Main Line Sections** | 2026-08-17 → 2026-11-08 (+83d) | 2026-09-14 → 2026-12-08 (+85d) |  |  |  |  |
| CO-SW-ML-140 | Trench Excavation and Bedding Works for Main Lines of Sewage Network | 2026-08-17 → 2026-11-08 (+83d) | 2026-08-23 → 2026-11-14 (+83d) |  | 0.04d → -72d |  | resources Unskilled Labor [96 h]; Excavator [96 h]; Skilled Labor [96 h]; Depth Between 0m to 1.50m [8.96]; Depth Between 1.50m to 2.50m [55.07]; Depth > 2.50m [2.24]; Depth Between 0m to 1.50m [4.93]; Depth Between 1.50m to 2.50m [358.21]; Depth Between 2.50m to 3.50m [16.79]; Depth > 3.50m [3.36]; HDPE Force Main (PE 100, SDR 11, PN 16 bar) DN 160 mm diameter, in trenches depth: 0- 1.5m [5.6]; HDPE Force Main (PE 100, SDR 11, PN 16 bar) DN 160 mm diameter, in trenches depth: 1.51- 2.5m [8.96] → Depth Between 0m to 1.50m [8.96]; Depth Between 1.50m to 2.50m [55.07]; Depth > 2.50m [2.24]; Depth Between 0m to 1.50m [4.93]; Depth Between 1.50m to 2.50m [358.21]; Depth Between 2.50m to 3.50m [16.79]; Depth > 3.50m [3.36]; HDPE Force Main (PE 100, SDR 11, PN 16 bar) DN 160 mm diameter, in trenches depth: 0- 1.5m [5.6]; HDPE Force Main (PE 100, SDR 11, PN 16 bar) DN 160 mm diameter, in trenches depth: 1.51- 2.5m [8.96]; Unskilled Labor [96 h]; Excavator [96 h]; Skilled Labor [96 h] |
| CO-SW-ML-150 | Pipes Laying Works for Main Lines of Sewage Network | 2026-08-24 → 2026-11-15 (+83d) | 2026-08-31 → 2026-11-22 (+83d) |  | 0.04d → -72d | CO-SW-ML-140, CO-SW-ML-120 SS → CO-SW-ML-140, CO-SW-ML-120 SS, ENG-SH-SPS-A-160 | resources Unskilled Labor [192 h]; Plumber [96 h]; Excavator [96 h]; Skilled Labor [96 h]; Depth Between 0m to 1.50m [16.12]; Depth Between 1.50m to 2.50m [99.13]; Depth > 2.50m [4.03]; Depth Between 0m to 1.50m [8.87]; Depth Between 1.50m to 2.50m [644.78]; Depth Between 2.50m to 3.50m [30.22]; Depth > 3.50m [6.04]; HDPE Force Main (PE 100, SDR 11, PN 16 bar) DN 160 mm diameter, in trenches depth: 0- 1.5m [10.07]; HDPE Force Main (PE 100, SDR 11, PN 16 bar) DN 160 mm diameter, in trenches depth: 1.51- 2.5m [16.12] → Depth Between 0m to 1.50m [16.12]; Depth Between 1.50m to 2.50m [99.13]; Depth > 2.50m [4.03]; Depth Between 0m to 1.50m [8.87]; Depth Between 1.50m to 2.50m [644.78]; Depth Between 2.50m to 3.50m [30.22]; Depth > 3.50m [6.04]; HDPE Force Main (PE 100, SDR 11, PN 16 bar) DN 160 mm diameter, in trenches depth: 0- 1.5m [10.07]; HDPE Force Main (PE 100, SDR 11, PN 16 bar) DN 160 mm diameter, in trenches depth: 1.51- 2.5m [16.12]; Unskilled Labor [192 h]; Plumber [96 h]; Excavator [96 h]; Skilled Labor [96 h] |
| CO-SW-ML-160 | Trench Backfilling and Compaction Works for Main Lines of Sewage Network | 2026-09-01 → 2026-11-25 (+85d) | 2026-09-14 → 2026-12-08 (+85d) |  | 0.5d → -72d | CO-SW-ML-150, CO-SW-ML-130 SS → CO-SW-ML-150, CO-SW-ML-130 SS, CO-UB-PS-100, ENG-SH-DPO-A-120 | resources Unskilled Labor [96 h]; Excavator [96 h]; JCB [96 h]; Dump Truck [96 h]; Depth Between 0m to 1.50m [7.16]; Depth Between 1.50m to 2.50m [44.06]; Depth > 2.50m [1.79]; Depth Between 0m to 1.50m [3.94]; Depth Between 1.50m to 2.50m [286.57]; Depth Between 2.50m to 3.50m [13.43]; Depth > 3.50m [2.69]; HDPE Force Main (PE 100, SDR 11, PN 16 bar) DN 160 mm diameter, in trenches depth: 0- 1.5m [4.48]; HDPE Force Main (PE 100, SDR 11, PN 16 bar) DN 160 mm diameter, in trenches depth: 1.51- 2.5m [7.16] → Depth Between 0m to 1.50m [7.16]; Depth Between 1.50m to 2.50m [44.06]; Depth > 2.50m [1.79]; Depth Between 0m to 1.50m [3.94]; Depth Between 1.50m to 2.50m [286.57]; Depth Between 2.50m to 3.50m [13.43]; Depth > 3.50m [2.69]; HDPE Force Main (PE 100, SDR 11, PN 16 bar) DN 160 mm diameter, in trenches depth: 0- 1.5m [4.48]; HDPE Force Main (PE 100, SDR 11, PN 16 bar) DN 160 mm diameter, in trenches depth: 1.51- 2.5m [7.16]; Unskilled Labor [96 h]; Excavator [96 h]; JCB [96 h]; Dump Truck [96 h] |
| 1 | **Manholes** | 2026-09-08 → 2026-11-30 (+83d) | 2026-10-13 → 2027-01-03 (+82d) |  |  |  |  |
| CO-SW-MH-210 | Excavation Works for Main Line Manholes of Sewage Network | 2026-09-08 → 2026-11-30 (+83d) | 2026-09-16 → 2026-12-08 (+83d) |  | -1.5d → -72d |  | resources Unskilled Labor [80 h]; Excavator [80 h]; Skilled Labor [80 h]; Depth: 0 - 1.5m [0.22]; Depth: 1.51 - 2.5m [4.7]; Depth: 2.51 - 3.5m [0.22]; Depth > 3.50m [0.22] → Depth: 0 - 1.5m [0.22]; Depth: 1.51 - 2.5m [4.7]; Depth: 2.51 - 3.5m [0.22]; Depth > 3.50m [0.22]; Unskilled Labor [80 h]; Excavator [80 h]; Skilled Labor [80 h] |
| CO-SW-MH-220 | Installation RC Footing Works for Main Line Manholes of Sewage Network | 2026-09-17 → 2026-12-09 (+83d) | 2026-09-26 → 2026-12-16 (+81d) |  | -1.5d → -72d |  | resources Unskilled Labor [208 h]; Plumber [104 h]; Excavator [104 h]; Mobile Crane [104 h]; Depth: 0 - 1.5m [0.3]; Depth: 1.51 - 2.5m [6.27]; Depth: 2.51 - 3.5m [0.3]; Depth > 3.50m [0.3] → Depth: 0 - 1.5m [0.3]; Depth: 1.51 - 2.5m [6.27]; Depth: 2.51 - 3.5m [0.3]; Depth > 3.50m [0.3]; Unskilled Labor [208 h]; Plumber [104 h]; Excavator [104 h]; Mobile Crane [104 h] |
| CO-SW-MH-230 | Install Grp Liner Wall Works for Main Line Manholes of Sewage Network | 2026-09-27 → 2026-12-17 (+81d) | 2026-10-04 → 2026-12-24 (+81d) |  | -1.5d → -72d |  | resources Unskilled Labor [208 h]; Plumber [104 h]; Excavator [104 h]; Mobile Crane [104 h]; Depth: 0 - 1.5m [0.3]; Depth: 1.51 - 2.5m [6.27]; Depth: 2.51 - 3.5m [0.3]; Depth > 3.50m [0.3] → Depth: 0 - 1.5m [0.3]; Depth: 1.51 - 2.5m [6.27]; Depth: 2.51 - 3.5m [0.3]; Depth > 3.50m [0.3]; Unskilled Labor [208 h]; Plumber [104 h]; Excavator [104 h]; Mobile Crane [104 h] |
| CO-SW-MH-240 | Pouring Grp Liner Wall Works for Main Line Manholes of Sewage Network | 2026-10-05 → 2026-12-26 (+82d) | 2026-10-08 → 2026-12-29 (+82d) |  | -1.5d → -72d |  | resources Unskilled Labor [64 h]; Mason [32 h]; Skilled Labor [32 h]; Depth: 0 - 1.5m [0.07]; Depth: 1.51 - 2.5m [1.57]; Depth: 2.51 - 3.5m [0.07]; Depth > 3.50m [0.07] → Depth: 0 - 1.5m [0.07]; Depth: 1.51 - 2.5m [1.57]; Depth: 2.51 - 3.5m [0.07]; Depth > 3.50m [0.07]; Unskilled Labor [64 h]; Mason [32 h]; Skilled Labor [32 h] |
| CO-SW-MH-250 | Backfilling Works for Main Line Manholes of Sewage Network | 2026-10-10 → 2026-12-30 (+81d) | 2026-10-13 → 2027-01-03 (+82d) |  | -1.5d → -72d | CO-SW-MH-240, CO-SW-ML-160, CO-SW-MH-200 → CO-SW-MH-240, CO-SW-ML-160, CO-SW-MH-200, ENG-SH-DPO-A-120 | resources Unskilled Labor [32 h]; Excavator [32 h]; JCB [32 h]; Dump Truck [32 h]; Depth: 0 - 1.5m [0.3]; Depth: 1.51 - 2.5m [6.27]; Depth: 2.51 - 3.5m [0.3]; Depth > 3.50m [0.3] → Depth: 0 - 1.5m [0.3]; Depth: 1.51 - 2.5m [6.27]; Depth: 2.51 - 3.5m [0.3]; Depth > 3.50m [0.3]; Unskilled Labor [32 h]; Excavator [32 h]; JCB [32 h]; Dump Truck [32 h] |

| ID | Task | Start | Finish | Total float | Predecessors | Other |
| --- | --- | --- | --- | --- | --- | --- |
| PW | **Potable Water Network** | 2026-10-14 → 2027-01-19 (+97d) | 2026-12-23 → 2027-04-11 (+109d) |  |  |  |
| ML | **Main Line Sections** | 2026-10-14 → 2027-01-19 (+97d) | 2026-11-10 → 2027-02-18 (+100d) |  |  |  |
| CO-PW-ML-100 | Trench Excavation and Bedding Works for Main Lines of Potable Water Network | 2026-10-14 → 2027-01-19 (+97d) | 2026-10-22 → 2027-01-28 (+98d) | -1.5d → -85d |  | resources Unskilled Labor [192 h]; Excavator [192 h]; Skilled Labor [192 h]; Depth Between 0m to 1.50m [2.24]; Depth Between 1.50m to 2.50m [2.24]; Depth > 2.50m [0.75]; Depth Between 0m to 1.50m [156.72]; Depth Between 1.50m to 2.50m [104.48]; Depth > 2.50m [3.73]; Depth Between 0m to 1.50m [18.66]; Depth Between 1.50m to 2.50m [3.73]; Depth > 2.50m [1.87]; Depth Between 0m to 1.50m [119.4]; Depth Between 1.50m to 2.50m [488.81]; Depth > 2.50m [7.46] → Depth Between 0m to 1.50m [2.24]; Depth Between 1.50m to 2.50m [2.24]; Depth > 2.50m [0.75]; Depth Between 0m to 1.50m [156.72]; Depth Between 1.50m to 2.50m [104.48]; Depth > 2.50m [3.73]; Depth Between 0m to 1.50m [18.66]; Depth Between 1.50m to 2.50m [3.73]; Depth > 2.50m [1.87]; Depth Between 0m to 1.50m [119.4]; Depth Between 1.50m to 2.50m [488.81]; Depth > 2.50m [7.46]; Unskilled Labor [192 h]; Excavator [192 h]; Skilled Labor [192 h] |
| CO-PW-ML-110 | Pipes Laying and accessories for Main Lines of Potable Water Network | 2026-10-24 → 2027-01-28 (+96d) | 2026-11-01 → 2027-02-07 (+98d) | -1.5d → -85d |  | resources Unskilled Labor [384 h]; Plumber [192 h]; Excavator [192 h]; Skilled Labor [192 h]; Depth Between 0m to 1.50m [4.03]; Depth Between 1.50m to 2.50m [4.03]; Depth > 2.50m [1.34]; Depth Between 0m to 1.50m [282.09]; Depth Between 1.50m to 2.50m [188.06]; Depth > 2.50m [6.72]; Depth Between 0m to 1.50m [33.58]; Depth Between 1.50m to 2.50m [6.72]; Depth > 2.50m [3.36]; Depth Between 0m to 1.50m [214.93]; Depth Between 1.50m to 2.50m [879.85]; Depth > 2.50m [13.43] → Depth Between 0m to 1.50m [4.03]; Depth Between 1.50m to 2.50m [4.03]; Depth > 2.50m [1.34]; Depth Between 0m to 1.50m [282.09]; Depth Between 1.50m to 2.50m [188.06]; Depth > 2.50m [6.72]; Depth Between 0m to 1.50m [33.58]; Depth Between 1.50m to 2.50m [6.72]; Depth > 2.50m [3.36]; Depth Between 0m to 1.50m [214.93]; Depth Between 1.50m to 2.50m [879.85]; Depth > 2.50m [13.43]; Unskilled Labor [384 h]; Plumber [192 h]; Excavator [192 h]; Skilled Labor [192 h] |
| CO-PW-ML-130 | Trench Backfilling and Compaction Works for Main Lines of Potable Water Network | 2026-11-02 → 2027-02-07 (+97d) | 2026-11-10 → 2027-02-18 (+100d) | 0.5d → -83d |  | resources Unskilled Labor [192 h]; Excavator [192 h]; JCB [192 h]; Dump Truck [192 h]; Depth Between 0m to 1.50m [1.79]; Depth Between 1.50m to 2.50m [1.79]; Depth > 2.50m [0.6]; Depth Between 0m to 1.50m [125.37]; Depth Between 1.50m to 2.50m [83.58]; Depth > 2.50m [2.99]; Depth Between 0m to 1.50m [14.93]; Depth Between 1.50m to 2.50m [2.99]; Depth > 2.50m [1.49]; Depth Between 0m to 1.50m [95.52]; Depth Between 1.50m to 2.50m [391.04]; Depth > 2.50m [5.97] → Depth Between 0m to 1.50m [1.79]; Depth Between 1.50m to 2.50m [1.79]; Depth > 2.50m [0.6]; Depth Between 0m to 1.50m [125.37]; Depth Between 1.50m to 2.50m [83.58]; Depth > 2.50m [2.99]; Depth Between 0m to 1.50m [14.93]; Depth Between 1.50m to 2.50m [2.99]; Depth > 2.50m [1.49]; Depth Between 0m to 1.50m [95.52]; Depth Between 1.50m to 2.50m [391.04]; Depth > 2.50m [5.97]; Unskilled Labor [192 h]; Excavator [192 h]; JCB [192 h]; Dump Truck [192 h] |
| VC | **Valve Chamber** | 2026-11-11 → 2027-02-20 (+101d) | 2026-11-29 → 2027-03-17 (+108d) |  |  |  |
| CO-PW-VC-170 | Excavation Works for Main Line Valves and Valve Chambers of Potable Water Network | 2026-11-11 → 2027-02-20 (+101d) | 2026-11-12 → 2027-02-22 (+102d) | 0.5d → -83d |  | resources Unskilled Labor [16 h]; Excavator [16 h]; Skilled Labor [16 h]; Wash out chamber (2500x 2500mm) [0.75]; Air valve chamber (1000x 1000 mm) [0.37] → Wash out chamber (2500x 2500mm) [0.75]; Air valve chamber (1000x 1000 mm) [0.37]; Unskilled Labor [16 h]; Excavator [16 h]; Skilled Labor [16 h] |
| CO-PW-VC180 | Installation Works for Valve Chambers of Potable Water Network | 2026-11-14 → 2027-02-22 (+100d) | 2026-11-17 → 2027-02-28 (+103d) | 0.5d → -83d |  | resources Unskilled Labor [64 h]; Plumber [32 h]; Excavator [32 h]; Mobile Crane [32 h]; Wash out chamber (2500x 2500mm) [1.34]; Air valve chamber (1000x 1000 mm) [0.67] → Wash out chamber (2500x 2500mm) [1.34]; Air valve chamber (1000x 1000 mm) [0.67]; Unskilled Labor [64 h]; Plumber [32 h]; Excavator [32 h]; Mobile Crane [32 h] |
| CO-PW-VC-190 | Installation Works for Valves of Potable Water Network | 2026-11-18 → 2027-02-28 (+102d) | 2026-11-25 → 2027-03-14 (+109d) | 0.5d → -83d |  | resources Unskilled Labor [112 h]; Plumber [56 h]; Gate valves Dia 50 mm [1.49]; Gate valves Dia 100 mm [17.91]; Gate valves Dia 150 mm [25.37]; Gate valves Dia 250 mm [13.43]; Air valves with Dia 50 mm [1.49]; Washout valve Dia 100 mm [2.99]; Flow meter chamber (1500x 2500 mm) [1.49]; Flow meter dia 100 mm [1.49] → Gate valves Dia 50 mm [1.49]; Gate valves Dia 100 mm [17.91]; Gate valves Dia 150 mm [25.37]; Gate valves Dia 250 mm [13.43]; Air valves with Dia 50 mm [1.49]; Washout valve Dia 100 mm [2.99]; Flow meter chamber (1500x 2500 mm) [1.49]; Flow meter dia 100 mm [1.49]; Unskilled Labor [112 h]; Plumber [56 h] |
| CO-PW-VC-220 | Backfilling Works for Main Line Valves and Valve Chambers of Potable Water Network | 2026-11-26 → 2027-03-14 (+108d) | 2026-11-29 → 2027-03-17 (+108d) | 0.5d → -83d |  | resources Unskilled Labor [24 h]; Excavator [24 h]; JCB [24 h]; Dump Truck [24 h]; Wash out chamber (2500x 2500mm) [0.6]; Air valve chamber (1000x 1000 mm) [0.3] → Wash out chamber (2500x 2500mm) [0.6]; Air valve chamber (1000x 1000 mm) [0.3]; Unskilled Labor [24 h]; Excavator [24 h]; JCB [24 h]; Dump Truck [24 h] |
| FH | **Fire Hydrant** | 2026-11-30 → 2027-03-17 (+107d) | 2026-12-23 → 2027-04-11 (+109d) |  |  |  |
| CO-PW-FH-140 | Excavation Works for Fire Hydrants of Potable Water Network | 2026-11-30 → 2027-03-17 (+107d) | 2026-12-07 → 2027-03-25 (+108d) | 0.5d → -83d |  | resources Unskilled Labor [56 h]; Excavator [56 h]; Skilled Labor [56 h]; 3-outlet fire hydrant (2 x 2.5 inch and 1 x 4.5 inch) in the form of a separate dry vacuum cylinder, complete according to drawings. [6.34] → 3-outlet fire hydrant (2 x 2.5 inch and 1 x 4.5 inch) in the form of a separate dry vacuum cylinder, complete according to drawings. [6.34]; Unskilled Labor [56 h]; Excavator [56 h]; Skilled Labor [56 h] |
| CO-PW-FH-150 | Installation Works for Fire Hydrant of Potable Water Network | 2026-12-08 → 2027-03-25 (+107d) | 2026-12-15 → 2027-04-03 (+109d) | 0.5d → -83d |  | resources Unskilled Labor [112 h]; Plumber [56 h]; Excavator [56 h]; Skilled Labor [56 h]; 3-outlet fire hydrant (2 x 2.5 inch and 1 x 4.5 inch) in the form of a separate dry vacuum cylinder, complete according to drawings. [11.42] → 3-outlet fire hydrant (2 x 2.5 inch and 1 x 4.5 inch) in the form of a separate dry vacuum cylinder, complete according to drawings. [11.42]; Unskilled Labor [112 h]; Plumber [56 h]; Excavator [56 h]; Skilled Labor [56 h] |
| CO-PW-FH-160 | Trench Backfilling and Compaction Works for Fire Hydrants of Potable Water Network | 2026-12-16 → 2027-04-03 (+108d) | 2026-12-23 → 2027-04-11 (+109d) | 0.5d → -83d |  | resources Unskilled Labor [56 h]; Excavator [56 h]; JCB [56 h]; Dump Truck [56 h]; 3-outlet fire hydrant (2 x 2.5 inch and 1 x 4.5 inch) in the form of a separate dry vacuum cylinder, complete according to drawings. [5.07] → 3-outlet fire hydrant (2 x 2.5 inch and 1 x 4.5 inch) in the form of a separate dry vacuum cylinder, complete according to drawings. [5.07]; Unskilled Labor [56 h]; Excavator [56 h]; JCB [56 h]; Dump Truck [56 h] |
| IR | **Irrigation Network** | 2026-10-24 → 2027-01-28 (+96d) | 2026-12-20 → 2027-04-07 (+108d) |  |  |  |
| ML | **Main Line Pipes** | 2026-10-24 → 2027-01-28 (+96d) | 2026-12-20 → 2027-04-07 (+108d) |  |  |  |
| CO-IR-ML-100 | Trench Excavation and Bedding Works for Main Lines of Irrigation Network | 2026-10-24 → 2027-01-28 (+96d) | 2026-11-03 → 2027-02-09 (+98d) | 5d → -78.5d |  | resources Unskilled Labor [336 h]; Excavator [336 h]; Skilled Labor [336 h]; pipe line O.D 32 mm PN 10, in depth 0 to 1.5 m [1250]; pipe line O.D 40 mm PN 10, in depth 0 to 1.5 m [690.3]; pipe line O.D 50 mm PN 10, in depth 0 to 1.5 m [93.28] → pipe line O.D 32 mm PN 10, in depth 0 to 1.5 m [1250]; pipe line O.D 40 mm PN 10, in depth 0 to 1.5 m [690.3]; pipe line O.D 50 mm PN 10, in depth 0 to 1.5 m [93.28]; Unskilled Labor [336 h]; Excavator [336 h]; Skilled Labor [336 h] |
| CO-IR-ML-110 | Pipes Laying Works for Main Lines of Irrigation Network | 2026-11-04 → 2027-02-10 (+98d) | 2026-11-15 → 2027-02-24 (+101d) | 5d → -78.5d |  | resources Unskilled Labor [672 h]; Plumber [336 h]; Excavator [336 h]; Skilled Labor [336 h]; pipe line O.D 32 mm PN 10, in depth 0 to 1.5 m [2250]; pipe line O.D 40 mm PN 10, in depth 0 to 1.5 m [1242.54]; pipe line O.D 50 mm PN 10, in depth 0 to 1.5 m [167.91] → pipe line O.D 32 mm PN 10, in depth 0 to 1.5 m [2250]; pipe line O.D 40 mm PN 10, in depth 0 to 1.5 m [1242.54]; pipe line O.D 50 mm PN 10, in depth 0 to 1.5 m [167.91]; Unskilled Labor [672 h]; Plumber [336 h]; Excavator [336 h]; Skilled Labor [336 h] |
| CO-IR-ML-120 | Installation Works for Main Line Valves of Irrigation Network | 2026-11-15 → 2027-02-24 (+101d) | 2026-11-25 → 2027-03-13 (+108d) | 5d → -78.5d |  | resources Unskilled Labor [192 h]; Plumber [96 h]; Gate valve 50 mm PN16 [10.45]; Direct Burried Gate valve 40 mm PN16 [17.91]; Flushing Bronze gate valve dia 1.5" inside PVC box [28.36]; Air release valve 1.5" inside PVC box [28.36]; Extra flexible pressure compensating on surface inline dripline`s, O.D. is 16.1 mm [17910.5]; Electrical Solenoid Valve ( 1.5") inside PVC box [17.91]; Electrical Solenoid Valve ( 2") inside PVC box [10.45]; Quick coupling valve 1" inside a round valve box 10" size with a manual gate valve, hose swivel and key with all accessories [79.1]; Advanced Irrigation controller subject to client approval, can connect with Centarl Control system [1.49]; Decoder cables 12 AWG between valves and controllers, The cables shall be pulled through 32 UPVC conduit [5223.88]; Preparing the irrigation program for the entire system and providing technical services for monitoring and controlling the central irrigation systems [1.49] → Gate valve 50 mm PN16 [10.45]; Direct Burried Gate valve 40 mm PN16 [17.91]; Flushing Bronze gate valve dia 1.5" inside PVC box [28.36]; Air release valve 1.5" inside PVC box [28.36]; Extra flexible pressure compensating on surface inline dripline`s, O.D. is 16.1 mm [17910.5]; Electrical Solenoid Valve ( 1.5") inside PVC box [17.91]; Electrical Solenoid Valve ( 2") inside PVC box [10.45]; Quick coupling valve 1" inside a round valve box 10" size with a manual gate valve, hose swivel and key with all accessories [79.1]; Advanced Irrigation controller subject to client approval, can connect with Centarl Control system [1.49]; Decoder cables 12 AWG between valves and controllers, The cables shall be pulled through 32Ø UPVC conduit [5223.88]; Preparing the irrigation program for the entire system and providing technical services for monitoring and controlling the central irrigation systems [1.49]; Unskilled Labor [192 h]; Plumber [96 h] |
| CO-IR-ML-130 | Trench Backfilling and Compaction Works for Main Lines of Irrigation Network | 2026-11-30 → 2027-03-17 (+107d) | 2026-12-09 → 2027-03-28 (+109d) | 1.5d → -82d |  | resources Unskilled Labor [336 h]; Excavator [336 h]; JCB [336 h]; Dump Truck [336 h]; pipe line O.D 32 mm PN 10, in depth 0 to 1.5 m [1000]; pipe line O.D 40 mm PN 10, in depth 0 to 1.5 m [552.24]; pipe line O.D 50 mm PN 10, in depth 0 to 1.5 m [74.63] → pipe line O.D 32 mm PN 10, in depth 0 to 1.5 m [1000]; pipe line O.D 40 mm PN 10, in depth 0 to 1.5 m [552.24]; pipe line O.D 50 mm PN 10, in depth 0 to 1.5 m [74.63]; Unskilled Labor [336 h]; Excavator [336 h]; JCB [336 h]; Dump Truck [336 h] |
| CO-IR-ML-140 | Installation Works for Bulbblers And Sprinklers of Irrigation Network | 2026-12-10 → 2027-03-28 (+108d) | 2026-12-20 → 2027-04-07 (+108d) | 8.5d → -75d |  | resources Unskilled Labor [192 h]; Plumber [96 h]; Pressure compensating bubblers 110 Lit/Hr [1268.66] → Pressure–compensating bubblers 110 Lit/Hr [1268.66]; Unskilled Labor [192 h]; Plumber [96 h] |
| TSE | **Treated Sewage Effluent (Tse)** | 2026-10-24 → 2027-01-28 (+96d) | 2026-12-20 → 2027-04-07 (+108d) |  |  |  |
| ML | **Main Line Pipes** | 2026-10-24 → 2027-01-28 (+96d) | 2026-12-20 → 2027-04-07 (+108d) |  |  |  |
| CO-TSE-ML-150 | Trench Excavation and Bedding Works for Main Lines of Treated Sewage Effluent (Tse) | 2026-10-24 → 2027-01-28 (+96d) | 2026-11-02 → 2027-02-08 (+98d) | 6.5d → -77d |  | resources Unskilled Labor [144 h]; Excavator [144 h]; Skilled Labor [144 h]; Depth Between 0m to 1.50m [3.73]; Depth Between 1.50m to 2.50m [1.87]; Depth > 2.50m [0.75]; Depth Between 0m to 1.50m [343.28]; Depth Between 0m to 1.50m [26.12]; Depth Between 1.50m to 2.50m [16.79]; Depth > 2.50m [3.73]; Depth Between 0m to 1.50m [317.16]; Depth Between 1.50m to 2.50m [97.01]; Depth > 2.50m [9.33]; Depth Between 0m to 1.50m [22.39]; Depth Between 1.50m to 2.50m [14.93]; Depth > 2.50m [2.99] → Depth Between 0m to 1.50m [3.73]; Depth Between 1.50m to 2.50m [1.87]; Depth > 2.50m [0.75]; Depth Between 0m to 1.50m [343.28]; Depth Between 0m to 1.50m [26.12]; Depth Between 1.50m to 2.50m [16.79]; Depth > 2.50m [3.73]; Depth Between 0m to 1.50m [317.16]; Depth Between 1.50m to 2.50m [97.01]; Depth > 2.50m [9.33]; Depth Between 0m to 1.50m [22.39]; Depth Between 1.50m to 2.50m [14.93]; Depth > 2.50m [2.99]; Unskilled Labor [144 h]; Excavator [144 h]; Skilled Labor [144 h] |
| CO-TSE-ML-160 | Pipes Laying Works for Main Lines of Treated Sewage Effluent (Tse) | 2026-11-04 → 2027-02-10 (+98d) | 2026-11-14 → 2027-02-23 (+101d) | 6.5d → -77d |  | resources Unskilled Labor [288 h]; Plumber [144 h]; Excavator [144 h]; Skilled Labor [144 h]; Depth Between 0m to 1.50m [6.72]; Depth Between 1.50m to 2.50m [3.36]; Depth > 2.50m [1.34]; Depth Between 0m to 1.50m [617.91]; Depth Between 0m to 1.50m [47.01]; Depth Between 1.50m to 2.50m [30.22]; Depth > 2.50m [6.72]; Depth Between 0m to 1.50m [570.9]; Depth Between 1.50m to 2.50m [174.63]; Depth > 2.50m [16.79]; Depth Between 0m to 1.50m [40.3]; Depth Between 1.50m to 2.50m [26.87]; Depth > 2.50m [5.37] → Depth Between 0m to 1.50m [6.72]; Depth Between 1.50m to 2.50m [3.36]; Depth > 2.50m [1.34]; Depth Between 0m to 1.50m [617.91]; Depth Between 0m to 1.50m [47.01]; Depth Between 1.50m to 2.50m [30.22]; Depth > 2.50m [6.72]; Depth Between 0m to 1.50m [570.9]; Depth Between 1.50m to 2.50m [174.63]; Depth > 2.50m [16.79]; Depth Between 0m to 1.50m [40.3]; Depth Between 1.50m to 2.50m [26.87]; Depth > 2.50m [5.37]; Unskilled Labor [288 h]; Plumber [144 h]; Excavator [144 h]; Skilled Labor [144 h] |
| CO-TSE-ML-170 | Installation Works for Main Line Valves of Treated Sewage Effluent (Tse) | 2026-11-15 → 2027-02-24 (+101d) | 2026-11-24 → 2027-03-08 (+104d) | 6d → -77.5d |  | resources Unskilled Labor [192 h]; Plumber [96 h]; Gate valves dia 50 mm [1.49]; Gate valves dia 100 mm [20.9]; Gate valves dia 150 mm [7.46]; Gate valves dia 200 mm [2.99]; Air valves with dia 50 mm [1.49]; Washout valve dia 100 mm [2.99]; Flow meter dia 150 mm [1.49] → Gate valves dia 50 mm [1.49]; Gate valves dia 100 mm [20.9]; Gate valves dia 150 mm [7.46]; Gate valves dia 200 mm [2.99]; Air valves with dia 50 mm [1.49]; Washout valve dia 100 mm [2.99]; Flow meter dia 150 mm [1.49]; Unskilled Labor [192 h]; Plumber [96 h] |
| CO-TSE-ML-180 | Trench Backfilling and Compaction Works for Treated Sewage Effluent (Tse) | 2026-11-30 → 2027-03-17 (+107d) | 2026-12-09 → 2027-03-28 (+109d) | 1.5d → -82d |  | resources Unskilled Labor [144 h]; Excavator [144 h]; JCB [144 h]; Dump Truck [144 h]; Depth Between 0m to 1.50m [2.99]; Depth Between 1.50m to 2.50m [1.49]; Depth > 2.50m [0.6]; Depth Between 0m to 1.50m [274.63]; Depth Between 0m to 1.50m [20.9]; Depth Between 1.50m to 2.50m [13.43]; Depth > 2.50m [2.99]; Depth Between 0m to 1.50m [253.73]; Depth Between 1.50m to 2.50m [77.61]; Depth > 2.50m [7.46]; Depth Between 0m to 1.50m [17.91]; Depth Between 1.50m to 2.50m [11.94]; Depth > 2.50m [2.39] → Depth Between 0m to 1.50m [2.99]; Depth Between 1.50m to 2.50m [1.49]; Depth > 2.50m [0.6]; Depth Between 0m to 1.50m [274.63]; Depth Between 0m to 1.50m [20.9]; Depth Between 1.50m to 2.50m [13.43]; Depth > 2.50m [2.99]; Depth Between 0m to 1.50m [253.73]; Depth Between 1.50m to 2.50m [77.61]; Depth > 2.50m [7.46]; Depth Between 0m to 1.50m [17.91]; Depth Between 1.50m to 2.50m [11.94]; Depth > 2.50m [2.39]; Unskilled Labor [144 h]; Excavator [144 h]; JCB [144 h]; Dump Truck [144 h] |
| CO-TSE-ML-190 | Installation Works for Valve and Washout Chambers of Treated Sewage Effluent (Tse) | 2026-12-10 → 2027-03-28 (+108d) | 2026-12-20 → 2027-04-07 (+108d) | 20.5d → -63d |  | resources Unskilled Labor [192 h]; Plumber [96 h]; Excavator [96 h]; Mobile Crane [96 h]; Wash out chamber (2500x 2500mm) [2.99]; Air valve chamber (1000x 1000 mm) [5.23]; Flow meter chamber (1500x 3000 mm) [1.49] → Wash out chamber (2500x 2500mm) [2.99]; Air valve chamber (1000x 1000 mm) [5.23]; Flow meter chamber (1500x 3000 mm) [1.49]; Unskilled Labor [192 h]; Plumber [96 h]; Excavator [96 h]; Mobile Crane [96 h] |
| MV | **Medium Voltage Network** | 2026-11-02 → 2027-02-07 (+97d) | 2026-12-21 → 2027-04-08 (+108d) |  |  |  |
| CW | **Cabling Works** | 2026-11-02 → 2027-02-07 (+97d) | 2026-12-21 → 2027-04-08 (+108d) |  |  |  |
| CO-MV-ML-250 | Trench Excavation and Bedding Works for Medium Voltage Network | 2026-11-02 → 2027-02-07 (+97d) | 2026-11-14 → 2027-02-23 (+101d) | -1.5d → -85d |  | resources Unskilled Labor [168 h]; Excavator [168 h]; JCB [168 h]; Excavation for Trench size 40cm wide and 80cm deep (for 1 cable) [299.34]; Excavation for Trench Size 60cm wide and 80cm deep (for 2 cables) [149.41]; Excavation for Trench Size 90cm wide and 80cm deep (for 3 cables) [207.94]; Excavation for Trench Size 180cm wide and 80cm deep (for 6 cables) [92.42]; Excavation for Trench Size 210 cm wide and 80cm deep (for 7 cables) [107.82]; Excavation for Trench Size 240cm wide and 80cm deep (for 8 cables) [659.25] → Excavation for Trench size 40cm wide and 80cm deep (for 1 cable) [299.34]; Excavation for Trench Size 60cm wide and 80cm deep (for 2 cables) [149.41]; Excavation for Trench Size 90cm wide and 80cm deep (for 3 cables) [207.94]; Excavation for Trench Size 180cm wide and 80cm deep (for 6 cables) [92.42]; Excavation for Trench Size 210 cm wide and 80cm deep (for 7 cables) [107.82]; Excavation for Trench Size 240cm wide and 80cm deep (for 8 cables) [659.25]; Unskilled Labor [168 h]; Excavator [168 h]; JCB [168 h] |
| CO-MV-ML-260 | Cable Laying Works for Medium Voltage Network | 2026-11-15 → 2027-02-23 (+100d) | 2026-12-02 → 2027-03-21 (+109d) | -1.5d → -85d |  | resources Electrical Technician [168 h]; Cable Drum Trailer [168 h]; Boom Truck [168 h]; Pulling Machine [168 h]; Duct bank for (33) cables [131.64]; Duct bank for (21) cables [208.96]; Duct bank for (15) cables [62.78]; HV Cable Road Crossing [67.02] → Duct bank for (33) cables [131.64]; Duct bank for (21) cables [208.96]; Duct bank for (15) cables [62.78]; HV Cable Road Crossing [67.02]; Electrical Technician [168 h]; Cable Drum Trailer [168 h]; Boom Truck [168 h]; Pulling Machine [168 h] |
| CO-MV-ML-270 | Trench Backfilling and Compaction Works for Medium Voltage Network | 2026-12-03 → 2027-03-21 (+108d) | 2026-12-21 → 2027-04-08 (+108d) | -1.5d → -85d |  | resources Unskilled Labor [168 h]; Excavator [168 h]; JCB [168 h]; Dump Truck [168 h]; Duct bank for (33) cables [37.61]; Duct bank for (21) cables [59.7]; Duct bank for (15) cables [17.94]; HV Cable Road Crossing [19.15] → Duct bank for (33) cables [37.61]; Duct bank for (21) cables [59.7]; Duct bank for (15) cables [17.94]; HV Cable Road Crossing [19.15]; Unskilled Labor [168 h]; Excavator [168 h]; JCB [168 h]; Dump Truck [168 h] |
| SL | **Street Lighting Network** | 2026-11-02 → 2027-02-08 (+98d) | 2027-01-18 → 2027-05-06 (+108d) |  |  |  |
| LP | **Lighting Poles Works** | 2026-11-02 → 2027-02-08 (+98d) | 2026-12-12 → 2027-03-30 (+108d) |  |  |  |
| CO-SL-LP-300 | Foundation Excavation Works for Lighting Poles of Street Lighting Network | 2026-11-02 → 2027-02-08 (+98d) | 2026-11-10 → 2027-02-20 (+102d) | 1.5d → -82.5d |  | resources Unskilled Labor [96 h]; Excavator [96 h]; JCB [96 h]; Dump Truck [96 h]; Lighting poles with 1 arm, height of (12) meters, including the power distribution box, cables, and RCC foundation. [5.82]; Lighting poles with 2 arms, height of (12) meters, including the power distribution box, cables, and RCC foundation. [5.37] → Lighting poles with 1 arm, height of (12) meters, including the power distribution box, cables, and RCC foundation. [5.82]; Lighting poles with 2 arms, height of (12) meters, including the power distribution box, cables, and RCC foundation. [5.37]; Unskilled Labor [96 h]; Excavator [96 h]; JCB [96 h]; Dump Truck [96 h] |
| CO-SL-LP-310 | Installation Works for Lighting Poles Foundation of Street Lighting Network | 2026-11-11 → 2027-02-20 (+101d) | 2026-11-19 → 2027-03-03 (+104d) | 1.5d → -82.5d |  | resources Unskilled Labor [96 h]; Boom Truck [96 h]; Skilled Labor [96 h]; Lighting poles with 1 arm, height of (12) meters, including the power distribution box, cables, and RCC foundation. [11.64]; Lighting poles with 2 arms, height of (12) meters, including the power distribution box, cables, and RCC foundation. [10.75] → Lighting poles with 1 arm, height of (12) meters, including the power distribution box, cables, and RCC foundation. [11.64]; Lighting poles with 2 arms, height of (12) meters, including the power distribution box, cables, and RCC foundation. [10.75]; Unskilled Labor [96 h]; Boom Truck [96 h]; Skilled Labor [96 h] |
| CO-SL-LP-320 | Installation Works for Lighting Poles of Street Lighting Network | 2026-11-21 → 2027-03-04 (+103d) | 2026-11-30 → 2027-03-18 (+108d) | 1.5d → -82.5d |  | resources Electrical Technician [112 h]; Boom Truck [112 h]; Skilled Labor [112 h]; Lighting poles with 1 arm, height of (12) meters, including the power distribution box, cables, and RCC foundation. [23.28]; Lighting poles with 2 arms, height of (12) meters, including the power distribution box, cables, and RCC foundation. [21.49] → Lighting poles with 1 arm, height of (12) meters, including the power distribution box, cables, and RCC foundation. [23.28]; Lighting poles with 2 arms, height of (12) meters, including the power distribution box, cables, and RCC foundation. [21.49]; Electrical Technician [112 h]; Boom Truck [112 h]; Skilled Labor [112 h] |
| CO-SL-LP-210 | Backfilling Works for Lighting Poles of Street Lighting Network | 2026-12-01 → 2027-03-20 (+109d) | 2026-12-12 → 2027-03-30 (+108d) | 1.5d → -82.5d |  | resources Unskilled Labor [96 h]; Excavator [96 h]; JCB [96 h]; Dump Truck [96 h]; Lighting poles with 1 arm, height of (12) meters, including the power distribution box, cables, and RCC foundation. [5.82]; Lighting poles with 2 arms, height of (12) meters, including the power distribution box, cables, and RCC foundation. [5.37] → Lighting poles with 1 arm, height of (12) meters, including the power distribution box, cables, and RCC foundation. [5.82]; Lighting poles with 2 arms, height of (12) meters, including the power distribution box, cables, and RCC foundation. [5.37]; Unskilled Labor [96 h]; Excavator [96 h]; JCB [96 h]; Dump Truck [96 h] |
| CW | **Cabling Works** | 2026-11-11 → 2027-02-20 (+101d) | 2026-12-09 → 2027-03-28 (+109d) |  |  |  |
| CO-SL-CL-250 | Trench Excavation and Bedding Works for Street Lighting Network | 2026-11-11 → 2027-02-20 (+101d) | 2026-11-18 → 2027-03-02 (+104d) | 4.5d → -79.5d |  | resources Unskilled Labor [240 h]; Excavator [240 h]; JCB [240 h]; Road crossing ducts, 2 ways (2 x 150mm HDPE) [341.33]; Road crossing ducts, 2 ways (2 x 110mm UPVC) [135.6]; Road crossing ducts, 3 ways (3 x 110mm UPVC) [45.06] → Road crossing ducts, 2 ways (2 x 150mm HDPE) [341.33]; Road crossing ducts, 2 ways (2 x 110mm UPVC) [135.6]; Road crossing ducts, 3 ways (3 x 110mm UPVC) [45.06]; Unskilled Labor [240 h]; Excavator [240 h]; JCB [240 h] |
| CO-SL-CL-260 | Cable Laying Works for Street Lighting Network | 2026-11-19 → 2027-03-02 (+103d) | 2026-11-26 → 2027-03-15 (+109d) | 4.5d → -79.5d |  | resources Electrical Technician [240 h]; Cable Drum Trailer [240 h]; Boom Truck [240 h]; Pulling Machine [240 h]; 4C-300mm2 CU/XLPE / PVC ARMORED CABLE [83.58]; 4C-240mm2 CU/XLPE / PVC ARMORED CABLE [47.76]; 4C-185mm2 CU/XLPE / PVC ARMORED CABLE [47.76]; 4C-50mm2 CU/XLPE / PVC ARMORED CABLE [179.1]; 4C-16mm2 CU/XLPE / PVC ARMORED CABLE [4161.19]; 4C-16MM2 CU/XLPE / PVC CABLE [1665.67]; 1Cx150sq.mm2,Cu, PVC wire [89.55]; 1Cx120sq.mm2,Cu, PVC wire [89.55]; 1Cx95sq.mm,Cu, PVC wire [47.76]; 1Cx70sq.mm2,Cu, PVC wire [23.88]; 1Cx25sq.mm2,Cu, PVC wire [89.55]; 1Cx16sq.mm2,Cu, PVC wire [4161.19]; 1Cx10sq.mm2,Cu, PVC wire [59.7] → 4C-300mm2 CU/XLPE / PVC ARMORED CABLE [83.58]; 4C-240mm2 CU/XLPE / PVC ARMORED CABLE [47.76]; 4C-185mm2 CU/XLPE / PVC ARMORED CABLE [47.76]; 4C-50mm2 CU/XLPE / PVC ARMORED CABLE [179.1]; 4C-16mm2 CU/XLPE / PVC ARMORED CABLE [4161.19]; 4C-16MM2 CU/XLPE / PVC CABLE [1665.67]; 1Cx150sq.mm2,Cu, PVC wire [89.55]; 1Cx120sq.mm2,Cu, PVC wire [89.55]; 1Cx95sq.mm,Cu, PVC wire [47.76]; 1Cx70sq.mm2,Cu, PVC wire [23.88]; 1Cx25sq.mm2,Cu, PVC wire [89.55]; 1Cx16sq.mm2,Cu, PVC wire [4161.19]; 1Cx10sq.mm2,Cu, PVC wire [59.7]; Electrical Technician [240 h]; Cable Drum Trailer [240 h]; Boom Truck [240 h]; Pulling Machine [240 h] |
| CO-SL-CL-270 | Trench Backfilling and Compaction Works for Street Lighting Network | 2026-12-01 → 2027-03-20 (+109d) | 2026-12-09 → 2027-03-28 (+109d) | 1.5d → -82.5d |  | resources Unskilled Labor [240 h]; Excavator [240 h]; JCB [240 h]; Dump Truck [240 h]; 4C-300mm2 CU/XLPE / PVC ARMORED CABLE [20.9]; 4C-240mm2 CU/XLPE / PVC ARMORED CABLE [11.94]; 4C-185mm2 CU/XLPE / PVC ARMORED CABLE [11.94]; 4C-50mm2 CU/XLPE / PVC ARMORED CABLE [44.78]; 4C-16mm2 CU/XLPE / PVC ARMORED CABLE [1040.3]; 4C-16MM2 CU/XLPE / PVC CABLE [416.42]; 1Cx150sq.mm2,Cu, PVC wire [22.39]; 1Cx120sq.mm2,Cu, PVC wire [22.39]; 1Cx95sq.mm,Cu, PVC wire [11.94]; 1Cx70sq.mm2,Cu, PVC wire [5.97]; 1Cx25sq.mm2,Cu, PVC wire [22.39]; 1Cx16sq.mm2,Cu, PVC wire [1040.3]; 1Cx10sq.mm2,Cu, PVC wire [14.93] → 4C-300mm2 CU/XLPE / PVC ARMORED CABLE [20.9]; 4C-240mm2 CU/XLPE / PVC ARMORED CABLE [11.94]; 4C-185mm2 CU/XLPE / PVC ARMORED CABLE [11.94]; 4C-50mm2 CU/XLPE / PVC ARMORED CABLE [44.78]; 4C-16mm2 CU/XLPE / PVC ARMORED CABLE [1040.3]; 4C-16MM2 CU/XLPE / PVC CABLE [416.42]; 1Cx150sq.mm2,Cu, PVC wire [22.39]; 1Cx120sq.mm2,Cu, PVC wire [22.39]; 1Cx95sq.mm,Cu, PVC wire [11.94]; 1Cx70sq.mm2,Cu, PVC wire [5.97]; 1Cx25sq.mm2,Cu, PVC wire [22.39]; 1Cx16sq.mm2,Cu, PVC wire [1040.3]; 1Cx10sq.mm2,Cu, PVC wire [14.93]; Unskilled Labor [240 h]; Excavator [240 h]; JCB [240 h]; Dump Truck [240 h] |
| DPB | **Distrubution Panel Boards** | 2026-12-22 → 2027-04-08 (+107d) | 2027-01-18 → 2027-05-06 (+108d) |  |  |  |
| CO-SL-DB-250 | Foundation Excavation Works For Panel Boards of Street Lighting Network | 2026-12-22 → 2027-04-08 (+107d) | 2026-12-28 → 2027-04-15 (+108d) | 0d → -83.5d |  | resources Unskilled Labor [48 h]; Excavator [48 h]; JCB [48 h]; Dump Truck [48 h]; Street Lighting panels LCP (01) [0.3] → Street Lighting panels LCP (01) [0.3]; Unskilled Labor [48 h]; Excavator [48 h]; JCB [48 h]; Dump Truck [48 h] |
| CO-SL-DB-260 | Installation Works for Panel Board Concrete Foundations of Street Lighting Network | 2026-12-29 → 2027-04-15 (+107d) | 2027-01-04 → 2027-04-22 (+108d) | 0d → -83.5d |  | resources Unskilled Labor [48 h]; Boom Truck [48 h]; Skilled Labor [48 h]; Street Lighting panels LCP (01) [0.3] → Street Lighting panels LCP (01) [0.3]; Unskilled Labor [48 h]; Boom Truck [48 h]; Skilled Labor [48 h] |
| CO-SL-DB-270 | Installation Works for Lighting Panel Boards of Street Lighting Network | 2027-01-05 → 2027-04-22 (+107d) | 2027-01-11 → 2027-04-29 (+108d) | 0d → -83.5d |  | resources Electrical Technician [48 h]; Boom Truck [48 h]; Skilled Labor [48 h]; Street Lighting panels LCP (01) [0.6] → Street Lighting panels LCP (01) [0.6]; Electrical Technician [48 h]; Boom Truck [48 h]; Skilled Labor [48 h] |
| CO-SL-DB-220 | A wall of concrete blocks to install the KWH meter of Street Lighting Network | 2027-01-12 → 2027-04-29 (+107d) | 2027-01-18 → 2027-05-06 (+108d) | 7d → -76.5d |  | resources Unskilled Labor [96 h]; Mason [48 h]; Supply and installation of KWH meter mounting frame including concrete block for installation of KWH meter [8.96] → Supply and installation of KWH meter mounting frame including concrete block for installation of KWH meter [8.96]; Unskilled Labor [96 h]; Mason [48 h] |
| TE | **Telecom Network** | 2026-11-15 → 2027-02-23 (+100d) | 2027-01-02 → 2027-04-20 (+108d) |  |  |  |
| PD | **Ducts Works** | 2026-11-15 → 2027-02-23 (+100d) | 2026-12-14 → 2027-04-01 (+108d) |  |  |  |
| CO-TE-DW-100 | Trench Excavation and Bedding Works for Ducts of Telecom Network | 2026-11-15 → 2027-02-23 (+100d) | 2026-11-18 → 2027-03-01 (+103d) | -1d → -84.5d |  | resources Unskilled Labor [168 h]; Excavator [168 h]; Skilled Labor [168 h]; 2-ways ducts, 50mm diameter [192.54]; 6-ways ducts, 110mm diameter [776.87]; 9-ways ducts, 6 x 160mm & 2 x 100mm [1139.55] → 2-ways ducts, 50mm diameter [192.54]; 6-ways ducts, 110mm diameter [776.87]; 9-ways ducts, 6 x 160mm & 2 x 100mm [1139.55]; Unskilled Labor [168 h]; Excavator [168 h]; Skilled Labor [168 h] |
| CO-TE-DW-110 | Pipes Laying Works for Ducts of Telecom Network | 2026-11-19 → 2027-03-02 (+103d) | 2026-11-23 → 2027-03-08 (+105d) | -1d → -84.5d |  | resources Unskilled Labor [336 h]; Electrical Technician [168 h]; Excavator [168 h]; 2-ways ducts, 50mm diameter [423.58]; 6-ways ducts, 110mm diameter [1709.1]; 9-ways ducts, 6 x 160mm & 2 x 100mm [2507.01] → 2-ways ducts, 50mm diameter [423.58]; 6-ways ducts, 110mm diameter [1709.1]; 9-ways ducts, 6 x 160mm & 2 x 100mm [2507.01]; Unskilled Labor [336 h]; Electrical Technician [168 h]; Excavator [168 h] |
| CO-TE-DW-130 | Trench Backfilling and Compaction Works for Ducts of Telecom Network | 2026-11-24 → 2027-03-08 (+104d) | 2026-12-02 → 2027-03-21 (+109d) | 0d → -83.5d |  | resources Unskilled Labor [168 h]; Excavator [168 h]; JCB [168 h]; Dump Truck [168 h]; 2-ways ducts, 50mm diameter [154.03]; 6-ways ducts, 110mm diameter [621.49]; 9-ways ducts, 6 x 160mm & 2 x 100mm [911.64] → 2-ways ducts, 50mm diameter [154.03]; 6-ways ducts, 110mm diameter [621.49]; 9-ways ducts, 6 x 160mm & 2 x 100mm [911.64]; Unskilled Labor [168 h]; Excavator [168 h]; JCB [168 h]; Dump Truck [168 h] |
| CO-TE-DW-120 | Pouring Road Crossing Concrete Encasement | 2026-12-03 → 2027-03-21 (+108d) | 2026-12-14 → 2027-04-01 (+108d) | 0d → -83.5d |  | resources Unskilled Labor [112 h]; Mason [56 h]; 6 PVC ducts 150x200 mm (60mm diameter) [241.79]; 6 PVC ducts 600x800 mm (120mm diameter) [420.9]; 6 PVC ducts 800x800 mm (170mm diameter) [600] → 6 PVC ducts 150x200 mm (60mm diameter) [241.79]; 6 PVC ducts 600x800 mm (120mm diameter) [420.9]; 6 PVC ducts 800x800 mm (170mm diameter) [600]; Unskilled Labor [112 h]; Mason [56 h] |
| MH | **Manholes Works** | 2026-11-24 → 2027-03-08 (+104d) | 2026-12-15 → 2027-04-03 (+109d) |  |  |  |
| CO-TE-MH-140 | Excavation Works for Manholes of Telecom Network | 2026-11-24 → 2027-03-08 (+104d) | 2026-11-29 → 2027-03-17 (+108d) | -1d → -84.5d |  | resources Unskilled Labor [112 h]; Excavator [112 h]; Skilled Labor [112 h]; Manhole Type 2 (1600 x 1600 x 2000) [9.33]; Manhole Type 3 (1200 x 1200 x 2000) [11.57] → Manhole Type 2 (1600 x 1600 x 2000) [9.33]; Manhole Type 3 (1200 x 1200 x 2000) [11.57]; Unskilled Labor [112 h]; Excavator [112 h]; Skilled Labor [112 h] |
| CO-TE-MH-150 | Installation Works for Manholes of Telecom Network | 2026-11-30 → 2027-03-17 (+107d) | 2026-12-07 → 2027-03-25 (+108d) | -1d → -84.5d |  | resources Unskilled Labor [224 h]; Plumber [112 h]; Excavator [112 h]; Mobile Crane [112 h]; Manhole Type 2 (1600 x 1600 x 2000) [20.52]; Manhole Type 3 (1200 x 1200 x 2000) [25.45] → Manhole Type 2 (1600 x 1600 x 2000) [20.52]; Manhole Type 3 (1200 x 1200 x 2000) [25.45]; Unskilled Labor [224 h]; Plumber [112 h]; Excavator [112 h]; Mobile Crane [112 h] |
| CO-TE-MH-160 | Backfilling Works for Manholes of Telecom Network | 2026-12-08 → 2027-03-25 (+107d) | 2026-12-15 → 2027-04-03 (+109d) | -1d → -84.5d |  | resources Unskilled Labor [112 h]; Excavator [112 h]; JCB [112 h]; Dump Truck [112 h]; Manhole Type 2 (1600 x 1600 x 2000) [7.46]; Manhole Type 3 (1200 x 1200 x 2000) [9.25] → Manhole Type 2 (1600 x 1600 x 2000) [7.46]; Manhole Type 3 (1200 x 1200 x 2000) [9.25]; Unskilled Labor [112 h]; Excavator [112 h]; JCB [112 h]; Dump Truck [112 h] |
| DD | **CCTV System Wroks** | 2026-12-16 → 2027-04-03 (+108d) | 2027-01-02 → 2027-04-20 (+108d) |  |  |  |
| CO-TE-CTV-100 | Digging and Pulling Trenches PVC ducts , Backfilling, Excavations, of Power Cable | 2026-12-16 → 2027-04-03 (+108d) | 2026-12-21 → 2027-04-08 (+108d) | -1d → -84.5d |  | resources Unskilled Labor [56 h]; Electrical Technician [112 h]; Excavator [56 h]; 6 PVC ducts 200x150 mm (60mm diameter) [205.97]; 2-ways ducts, 50mm diameter [743.28] → 6 PVC ducts 200x150 mm (60mm diameter) [205.97]; 2-ways ducts, 50mm diameter [743.28]; Unskilled Labor [56 h]; Electrical Technician [112 h]; Excavator [56 h] |
| CO-TE-CTV-110 | Installation of Network Cable Cat.6A from Network switch to CCTV Camera and ACS Device | 2026-12-22 → 2027-04-08 (+107d) | 2026-12-27 → 2027-04-14 (+108d) | -1d → -84.5d |  | resources Unskilled Labor [56 h]; Electrical Technician [112 h]; NVR Server with RAID (5, 6 or 10) to record all cameras storage 80TB with all hardware / software / licenses etc. [2.99]; VMS Server with RAID (5, 6 or 10) complete Hardware / Software with one Color Laser Printer and all associated [2.99]; Licenses for Cameras, Workstations and Keyboards [1.49]; Work Station (MMI with two monitors each, for Monitoring for CCTV & ACS) [1.49]; Keyboard with joystick for CCTV with all accessories as per specification [1.49]; Pole mounted IP( PoE) Fixed camera, 5MP,IP 66, IR illumination, 3-8mm varifocal, auto iris lens type [65.67]; Wall mounted IP( PoE) Fixed camera, 5MP,IP 66, IR illumination, 3-8mm varifocal, auto iris lens type [116.42]; 5MP Dome camera ceiling Mounted IP (PoE) indoor [25.37]; 5MP PTZ Multi Sensor Camera IP(PoE) 360 Degree View Outdoor with accessories (IP 66) [10.45]; 8 Port Industrial PoE Switch 10/100BaseT (0 deg to +70 deg. Celsius) [17.91]; Filed Equipment cabinet (FEC), with fan and ventilation, NEMEX 4X ,door, minimum size (600x600x400mm) [17.91]; IP Phone Communication server (hot standby) 50 Port equipped, Gateway, Gatekeeper, H.323, SIP, redundant Power etc. [4.48]; IP Phone Voice gateway [1.49]; Voice IP Phone [1.49]; NMS Server for IP phone and NETWORK Elements [1.49]; NMS Workstation [1.49]; Firm Ware, software & licenses [1.49]; Data Cable [1.49]; Power Cable [1.49]; Layer 3, 24 Port non-PoE switch10/1000BaseT/LX (-40 deg to +70 deg. Celsius), stack module and associated [2.99]; Layer 2, 24 Port non-PoE switch10/1000BaseT (-40 deg to +70 deg. Celsiu [8.96]; Network Management System Server [2.99]; Network Management System workstation [1.49]; 42U rack dimension (W x H x L) 800 x 2000 x 1000 mm [2.99]; 12U rack dimension (W x H x L) 600 x 625 x 600 mm [1.49]; 06C Optical Fiber SM [2716.42]; 48C Optical Fiber SM [8656.72]; 48 Core Splice Closure [10.45]; Optical fiber patch cord 5m [35.82]; Data Cable (STP CAT 6A) [15403]; 3C Power Cable armored 1.5mm2 [15403]; 3C Power Cable armored 2.5 mm2 [15403]; UTP CAT6A Patch Cord 1m/3m/5m [34.33] → NVR Server with RAID (5, 6 or 10) to record all cameras storage 80TB with all hardware / software / licenses etc. [2.99]; VMS Server with RAID (5, 6 or 10) complete Hardware / Software with one Color Laser Printer and all associated [2.99]; Licenses for Cameras, Workstations and Keyboards [1.49]; Work Station (MMI with two monitors each, for Monitoring for CCTV & ACS) [1.49]; Keyboard with joystick for CCTV with all accessories as per specification [1.49]; Pole mounted IP( PoE) Fixed camera, 5MP,IP 66, IR illumination, 3-8mm varifocal, auto iris lens type [65.67]; Wall mounted IP( PoE) Fixed camera, 5MP,IP 66, IR illumination, 3-8mm varifocal, auto iris lens type [116.42]; 5MP Dome camera ceiling Mounted IP (PoE) indoor [25.37]; 5MP PTZ Multi Sensor Camera IP(PoE) 360 Degree View Outdoor with accessories (IP 66) [10.45]; 8 Port Industrial PoE Switch 10/100BaseT (0 deg to +70 deg. Celsius) [17.91]; Filed Equipment cabinet (FEC), with fan and ventilation, NEMEX 4X ,door, minimum size (600x600x400mm) [17.91]; IP Phone Communication server (hot standby) 50 Port equipped, Gateway, Gatekeeper, H.323, SIP, redundant Power etc. [4.48]; IP Phone Voice gateway [1.49]; Voice IP Phone [1.49]; NMS Server for IP phone and NETWORK Elements [1.49]; NMS Workstation [1.49]; Firm Ware, software & licenses [1.49]; Data Cable [1.49]; Power Cable [1.49]; Layer 3, 24 Port non-PoE switch10/1000BaseT/LX (-40 deg to +70 deg. Celsius), stack module and associated [2.99]; Layer 2, 24 Port non-PoE switch10/1000BaseT (-40 deg to +70 deg. Celsiu [8.96]; Network Management System Server [2.99]; Network Management System workstation [1.49]; 42U rack dimension (W x H x L) 800 x 2000 x 1000 mm [2.99]; 12U rack dimension (W x H x L) 600 x 625 x 600 mm [1.49]; 06C Optical Fiber SM [2716.42]; 48C Optical Fiber SM [8656.72]; 48 Core Splice Closure [10.45]; Optical fiber patch cord 5m [35.82]; Data Cable (STP CAT 6A) [15403]; 3C Power Cable armored 1.5mm2 [15403]; 3C Power Cable armored 2.5 mm2 [15403]; UTP CAT6A Patch Cord 1m/3m/5m [34.33]; Unskilled Labor [56 h]; Electrical Technician [112 h] |
| CO-TE-CTV-130 | Installation of Access Control System | 2026-12-28 → 2027-04-14 (+107d) | 2027-01-02 → 2027-04-20 (+108d) | -1d → -84.5d |  | resources Unskilled Labor [56 h]; Electrical Technician [112 h]; Access Control Unit [7.46]; Access Card Reader [7.46]; Magnetic Lock [7.46]; Break Glass [5.97]; Exit Push button [7.46]; Door Sensor [7.46]; Biometrics Reader [11.94] → Access Control Unit [7.46]; Access Card Reader [7.46]; Magnetic Lock [7.46]; Break Glass [5.97]; Exit Push button [7.46]; Door Sensor [7.46]; Biometrics Reader [11.94]; Unskilled Labor [56 h]; Electrical Technician [112 h] |
| RD | **Road Works** | 2026-12-06 → 2027-03-23 (+107d) | 2027-02-02 → 2027-05-26 (+113d) |  |  |  |
| 3 | **ST+1000:ST+1531** | 2026-12-06 → 2027-03-23 (+107d) | 2027-01-06 → 2027-04-24 (+108d) |  |  |  |
| RD | **Pre-Bituminous Construction** | 2026-12-06 → 2027-03-23 (+107d) | 2027-01-06 → 2027-04-24 (+108d) |  |  |  |
| CO-RD-PB-140 | Subgrade Layer for Road Works | 2026-12-06 → 2027-03-23 (+107d) | 2026-12-21 → 2027-04-07 (+107d) | -1.5d → -85d |  | resources Loader [56 h]; Dump Truck [56 h]; Water Tanker [56 h]; Compactor [56 h]; Grader [56 h]; Subgrade [2294.03] → Subgrade [2294.03]; Loader [56 h]; Dump Truck [56 h]; Water Tanker [56 h]; Compactor [56 h]; Grader [56 h] |
| CO-RD-PB-150 | Aggregate Base Course Layer for Road Works | 2026-12-21 → 2027-04-08 (+108d) | 2027-01-06 → 2027-04-24 (+108d) | -1.5d → -85d |  | resources Loader [56 h]; Dump Truck [56 h]; Water Tanker [56 h]; Compactor [56 h]; Grader [56 h]; Aggregate base course [774.18] → Aggregate base course [774.18]; Loader [56 h]; Dump Truck [56 h]; Water Tanker [56 h]; Compactor [56 h]; Grader [56 h] |
| 2 | **ST+500:ST+1000** | 2026-12-22 → 2027-04-08 (+107d) | 2027-01-19 → 2027-05-06 (+107d) |  |  |  |
| RD | **Pre-Bituminous Construction** | 2026-12-22 → 2027-04-08 (+107d) | 2027-01-19 → 2027-05-06 (+107d) |  |  |  |
| CO-RD-PB-120 | Subgrade Layer for Road Works | 2026-12-22 → 2027-04-08 (+107d) | 2027-01-03 → 2027-04-21 (+108d) | -0.8d → -84.3d | CO-RD-PB-140, CO-SD-ML-160, CO-SD-MH-260, CO-SD-CB-200, CO-SW-ML-160, CO-SW-MH-250, CO-PW-ML-130, CO-PW-VC-220, CO-PW-FH-160 SS+2d, CO-TSE-ML-180 SS+2d, CO-IR-ML-130 SS+2d, CO-MV-ML-270, CO-SL-LP-210, CO-SL-CL-270, CO-TE-DW-120, CO-TE-MH-160, CO-TE-DW-130, CO-TSE-ML-180 → CO-RD-PB-140, CO-SD-ML-160, CO-SD-MH-260, CO-SD-CB-200, CO-SW-ML-160, CO-SW-MH-250, CO-PW-ML-130, CO-PW-VC-220, CO-PW-FH-160 SS+2d, CO-TSE-ML-180 SS+2d, CO-IR-ML-130 SS+2d, CO-MV-ML-270, CO-SL-LP-210, CO-SL-CL-270, CO-TE-DW-120, CO-TE-MH-160, CO-TE-DW-130, CO-TSE-ML-180, CO-SD-PO-100-P1 | resources Loader [56 h]; Dump Truck [56 h]; Water Tanker [56 h]; Compactor [56 h]; Grader [56 h]; Subgrade [801.49] → Subgrade [801.49]; Loader [56 h]; Dump Truck [56 h]; Water Tanker [56 h]; Compactor [56 h]; Grader [56 h] |

| ID | Task | Start | Finish | Total float | Predecessors | Other |
| --- | --- | --- | --- | --- | --- | --- |
| CO-RD-PB-130 | Aggregate Base Course Layer for Road Works | 2027-01-06 → 2027-04-25 (+109d) | 2027-01-19 → 2027-05-06 (+107d) | -1.5d → -85d |  | resources Loader [56 h]; Dump Truck [56 h]; Water Tanker [56 h]; Compactor [56 h]; Grader [56 h]; Aggregate base course [774.18] → Aggregate base course [774.18]; Loader [56 h]; Dump Truck [56 h]; Water Tanker [56 h]; Compactor [56 h]; Grader [56 h] |
| 1 | **ST+01:ST+500** | 2027-01-03 → 2027-04-21 (+108d) | 2027-02-02 → 2027-05-26 (+113d) |  |  |  |
| RD | **Pre-Bituminous Construction** | 2027-01-03 → 2027-04-21 (+108d) | 2027-02-02 → 2027-05-26 (+113d) |  |  |  |
| CO-RD-PB-100 | Subgrade Layer for Road Works | 2027-01-03 → 2027-04-21 (+108d) | 2027-01-17 → 2027-05-05 (+108d) | -0.8d → -84.3d |  | resources Loader [56 h]; Dump Truck [56 h]; Water Tanker [56 h]; Compactor [56 h]; Grader [56 h]; Subgrade [1326.72] → Subgrade [1326.72]; Loader [56 h]; Dump Truck [56 h]; Water Tanker [56 h]; Compactor [56 h]; Grader [56 h] |
| CO-RD-PB-110 | Aggregate Base Course Layer for Road Works | 2027-01-19 → 2027-05-08 (+109d) | 2027-02-02 → 2027-05-26 (+113d) | -1.5d → -85d |  | resources Loader [56 h]; Dump Truck [56 h]; Water Tanker [56 h]; Compactor [56 h]; Grader [56 h]; Aggregate base course [663.58] → Aggregate base course [663.58]; Loader [56 h]; Dump Truck [56 h]; Water Tanker [56 h]; Compactor [56 h]; Grader [56 h] |
| 3 | **Finishes for Infrastructure Networks** | 2026-10-14 → 2027-01-04 (+82d) | 2027-02-16 → 2027-06-07 (+111d) |  |  |  |
| 11 | **Storm Drainage Network** | 2026-11-02 → 2027-02-15 (+105d) | 2027-01-05 → 2027-05-01 (+116d) |  |  |  |
| TF | **Testing and Finishes** | 2026-11-02 → 2027-02-15 (+105d) | 2027-01-05 → 2027-05-01 (+116d) |  |  |  |
| CO-SD-ML-TF-100 | Testing Work for Pipes of Storm Drainage Network | 2026-11-02 → 2027-02-15 (+105d) | 2026-11-12 → 2027-03-02 (+110d) | 0d → -89.2d |  | resources Unskilled Labor [192 h]; Plumber [192 h]; Water Tanker [192 h]; Depth Between 0m to 1.50m [14.18]; Depth Between 1.50m to 2.50m [420.75]; Depth > 2.50m [2.24]; Depth Between 1.50m to 2.50m [81.79]; Depth Between 2.50m to 3.50m [65.52]; Depth > 3.50m [2.24]; Depth Between 2.50m to 3.50m [28.51]; Depth Between 0m to 1.50m [4.18]; Depth Between 1.50m to 2.50m [1.49]; Depth Between 2.50m to 3.50m [14.03]; Depth > 3.50m [1.04]; Depth Between 2.50m to 3.50m [18.06]; Depth Between 3.50m to 4.50m [55.37]; Depth > 4.50m [2.24]; Depth Between 3.50m to 4.50m [110]; Depth > 4.50m [3.73] → Depth Between 0m to 1.50m [14.18]; Depth Between 1.50m to 2.50m [420.75]; Depth > 2.50m [2.24]; Depth Between 1.50m to 2.50m [81.79]; Depth Between 2.50m to 3.50m [65.52]; Depth > 3.50m [2.24]; Depth Between 2.50m to 3.50m [28.51]; Depth Between 0m to 1.50m [4.18]; Depth Between 1.50m to 2.50m [1.49]; Depth Between 2.50m to 3.50m [14.03]; Depth > 3.50m [1.04]; Depth Between 2.50m to 3.50m [18.06]; Depth Between 3.50m to 4.50m [55.37]; Depth > 4.50m [2.24]; Depth Between 3.50m to 4.50m [110]; Depth > 4.50m [3.73]; Unskilled Labor [192 h]; Plumber [192 h]; Water Tanker [192 h] |
| CO-SD-CB-TF-130 | Catch Basin Internal Finishes (Benching ) for Storm Drainage Network | 2026-11-14 → 2027-03-02 (+108d) | 2026-11-24 → 2027-03-20 (+116d) | 0d → -89.2d |  | resources Unskilled Labor [192 h]; Mason [192 h]; JCB [192 h]; Single Catch Basin 1000mm x 1000mm [14.7]; Double Catch Basin 1200mm x 2300mm [0.3] → Single Catch Basin 1000mm x 1000mm [14.7]; Double Catch Basin 1200mm x 2300mm [0.3]; Unskilled Labor [192 h]; Mason [192 h]; JCB [192 h] |
| CO-SD-CB-TF-160 | Testing Works for Catch Basins of Storm Drainage Network | 2026-11-25 → 2027-03-20 (+115d) | 2026-12-06 → 2027-03-31 (+115d) | 0d → -89.2d | CO-SD-CB-170, CO-SD-ML-TF-100, CO-SD-CB-TF-130, CO-SD-CB-200 → CO-SD-CB-170, CO-SD-ML-TF-100, CO-SD-CB-TF-130, CO-SD-CB-200, CO-SD-PO-100-P1 | resources Unskilled Labor [128 h]; Plumber [128 h]; Water Tanker [128 h]; Single Catch Basin 1000mm x 1000mm [29.4]; Double Catch Basin 1200mm x 2300mm [0.6] → Single Catch Basin 1000mm x 1000mm [29.4]; Double Catch Basin 1200mm x 2300mm [0.6]; Unskilled Labor [128 h]; Plumber [128 h]; Water Tanker [128 h] |
| CO-SD-CB-TF-110 | Install Catch Basin Cover Works for External Finishes of Storm Drainage Network | 2026-12-07 → 2027-03-31 (+114d) | 2026-12-17 → 2027-04-12 (+116d) | 0d → -89.2d |  | resources Unskilled Labor [192 h]; Mason [192 h]; JCB [192 h]; Single Catch Basin 1000mm x 1000mm [14.7]; Double Catch Basin 1200mm x 2300mm [0.3] → Single Catch Basin 1000mm x 1000mm [14.7]; Double Catch Basin 1200mm x 2300mm [0.3]; Unskilled Labor [192 h]; Mason [192 h]; JCB [192 h] |
| CO-SD-MH-TF-120 | Main Manhole Internal Finishes (Benching ) for Storm Drainage Network | 2026-12-19 → 2027-04-12 (+114d) | 2026-12-29 → 2027-04-24 (+116d) | 0d → -89.2d |  | resources Unskilled Labor [96 h]; Mason [96 h]; JCB [96 h]; MH depth 1.5 - 2.5m [4.48]; MH depth 2.5 - 3.5m [3.81]; MH depth > 3.50m [0.22]; MH depth 2.5 -3.5m [0.45] → MH depth 1.5 - 2.5m [4.48]; MH depth 2.5 - 3.5m [3.81]; MH depth > 3.50m [0.22]; MH depth 2.5 -3.5m [0.45]; Unskilled Labor [96 h]; Mason [96 h]; JCB [96 h] |
| CO-SD-MH-TF-210 | Testing Works for Manholes of Storm Drainage Network | 2026-12-30 → 2027-04-24 (+115d) | 2027-01-05 → 2027-05-01 (+116d) | 0d → -89.2d | CO-SD-MH-220, CO-SD-ML-TF-100, CO-SD-MH-TF-120, PRO-R25-SD-DL-140, CO-SD-CB-TF-110, CO-SD-MH-260 → CO-SD-MH-220, CO-SD-ML-TF-100, CO-SD-MH-TF-120, PRO-R25-SD-DL-140, CO-SD-CB-TF-110, CO-SD-MH-260, CO-SD-PO-100-P1 | resources Unskilled Labor [24 h]; Plumber [24 h]; Water Tanker [24 h]; MH depth 1.5 - 2.5m [2.99]; MH depth 2.5 - 3.5m [2.54]; MH depth > 3.50m [0.15]; MH depth 2.5 -3.5m [0.3] → MH depth 1.5 - 2.5m [2.99]; MH depth 2.5 - 3.5m [2.54]; MH depth > 3.50m [0.15]; MH depth 2.5 -3.5m [0.3]; Unskilled Labor [24 h]; Plumber [24 h]; Water Tanker [24 h] |
| 10 | **Sewage Network** | 2026-10-14 → 2027-01-04 (+82d) | 2027-01-13 → 2027-04-21 (+98d) |  |  |  |
| TF | **Testing and Finishes** | 2026-10-14 → 2027-01-04 (+82d) | 2027-01-13 → 2027-04-21 (+98d) |  |  |  |
| CO-SW-TF-100 | Final Testing For Main Line of Sewage Network | 2026-10-14 → 2027-01-04 (+82d) | 2026-10-24 → 2027-01-13 (+81d) | 5.5d → -64.5d |  | resources Unskilled Labor [96 h]; Plumber [96 h]; Water Tanker [96 h]; Depth Between 0m to 1.50m [5.97]; Depth Between 1.50m to 2.50m [36.72]; Depth > 2.50m [1.49]; Depth Between 0m to 1.50m [3.28]; Depth Between 1.50m to 2.50m [238.81]; Depth Between 2.50m to 3.50m [11.19]; Depth > 3.50m [2.24]; HDPE Force Main (PE 100, SDR 11, PN 16 bar) DN 160 mm diameter, in trenches depth: 0- 1.5m [3.73]; HDPE Force Main (PE 100, SDR 11, PN 16 bar) DN 160 mm diameter, in trenches depth: 1.51- 2.5m [5.97] → Depth Between 0m to 1.50m [5.97]; Depth Between 1.50m to 2.50m [36.72]; Depth > 2.50m [1.49]; Depth Between 0m to 1.50m [3.28]; Depth Between 1.50m to 2.50m [238.81]; Depth Between 2.50m to 3.50m [11.19]; Depth > 3.50m [2.24]; HDPE Force Main (PE 100, SDR 11, PN 16 bar) DN 160 mm diameter, in trenches depth: 0- 1.5m [3.73]; HDPE Force Main (PE 100, SDR 11, PN 16 bar) DN 160 mm diameter, in trenches depth: 1.51- 2.5m [5.97]; Unskilled Labor [96 h]; Plumber [96 h]; Water Tanker [96 h] |
| CO-SW-TF-130 | Main Manhole Internal Finishes (Benching + Insulation) of Sewage Network | 2026-10-25 → 2027-01-14 (+81d) | 2026-11-17 → 2027-02-07 (+82d) | 37d → -33d | CO-SW-MH-200, CO-SW-TF-100, CO-SW-MH-250 → CO-SW-MH-200, CO-SW-TF-100, CO-SW-MH-250, CO-SD-PO-100-P1 | resources Unskilled Labor [128 h]; Mason [128 h]; JCB [128 h]; Depth: 0 - 1.5m [0.15]; Depth: 1.51 - 2.5m [2.61]; Depth: 2.51 - 3.5m [0.15]; Depth > 3.50m [0.07] → Depth: 0 - 1.5m [0.15]; Depth: 1.51 - 2.5m [2.61]; Depth: 2.51 - 3.5m [0.15]; Depth > 3.50m [0.07]; Unskilled Labor [128 h]; Mason [128 h]; JCB [128 h] |
| CO-SW-TF-110 | Install Manhole Cover Works for External Finishes of Sewage Network | 2026-12-29 → 2027-04-05 (+97d) | 2027-01-09 → 2027-04-17 (+98d) | 2d → -72.5d |  | resources Unskilled Labor [128 h]; Mason [128 h]; JCB [128 h]; Depth: 0 - 1.5m [0.15]; Depth: 1.51 - 2.5m [2.61]; Depth: 2.51 - 3.5m [0.15]; Depth > 3.50m [0.07] → Depth: 0 - 1.5m [0.15]; Depth: 1.51 - 2.5m [2.61]; Depth: 2.51 - 3.5m [0.15]; Depth > 3.50m [0.07]; Unskilled Labor [128 h]; Mason [128 h]; JCB [128 h] |
| CO-SW-TF-210 | Testing Works for Main Line Manholes of Sewage Network | 2027-01-10 → 2027-04-17 (+97d) | 2027-01-13 → 2027-04-21 (+98d) | 2d → -72.5d |  | resources Unskilled Labor [64 h]; Plumber [64 h]; Water Tanker [64 h]; Depth: 0 - 1.5m [0.3]; Depth: 1.51 - 2.5m [5.22]; Depth: 2.51 - 3.5m [0.3]; Depth > 3.50m [0.15] → Depth: 0 - 1.5m [0.3]; Depth: 1.51 - 2.5m [5.22]; Depth: 2.51 - 3.5m [0.3]; Depth > 3.50m [0.15]; Unskilled Labor [64 h]; Plumber [64 h]; Water Tanker [64 h] |
| 9 | **Potable Water Network** | 2026-12-24 → 2027-04-11 (+108d) | 2027-01-28 → 2027-05-22 (+114d) |  |  |  |
| TF | **Testing and Finishes** | 2026-12-24 → 2027-04-11 (+108d) | 2027-01-28 → 2027-05-22 (+114d) |  |  |  |
| CO-PW-TF-110 | Testing Work for Main Line of Potable Water Network | 2026-12-24 → 2027-04-11 (+108d) | 2027-01-05 → 2027-04-22 (+107d) | 0.5d → -83d |  | resources Unskilled Labor [160 h]; Plumber [160 h]; Water Tanker [160 h]; Depth Between 0m to 1.50m [0.9]; Depth Between 1.50m to 2.50m [0.9]; Depth > 2.50m [0.3]; Depth Between 0m to 1.50m [62.69]; Depth Between 1.50m to 2.50m [41.79]; Depth > 2.50m [1.49]; Depth Between 0m to 1.50m [7.46]; Depth Between 1.50m to 2.50m [1.49]; Depth > 2.50m [0.75]; Depth Between 0m to 1.50m [47.76]; Depth Between 1.50m to 2.50m [195.52]; Depth > 2.50m [2.99] → Depth Between 0m to 1.50m [0.9]; Depth Between 1.50m to 2.50m [0.9]; Depth > 2.50m [0.3]; Depth Between 0m to 1.50m [62.69]; Depth Between 1.50m to 2.50m [41.79]; Depth > 2.50m [1.49]; Depth Between 0m to 1.50m [7.46]; Depth Between 1.50m to 2.50m [1.49]; Depth > 2.50m [0.75]; Depth Between 0m to 1.50m [47.76]; Depth Between 1.50m to 2.50m [195.52]; Depth > 2.50m [2.99]; Unskilled Labor [160 h]; Plumber [160 h]; Water Tanker [160 h] |
| CO-PW-TF-120 | Fire Hydrant Finishies (S.Box + Safety + Marker Post ) of Potable Water Network | 2027-01-05 → 2027-04-24 (+109d) | 2027-01-17 → 2027-05-04 (+107d) | 0.5d → -83d |  | resources Unskilled Labor [80 h]; Plumber [80 h]; 3-outlet fire hydrant (2 x 2.5 inch and 1 x 4.5 inch) in the form of a separate dry vacuum cylinder, complete according to drawings. [2.54] → 3-outlet fire hydrant (2 x 2.5 inch and 1 x 4.5 inch) in the form of a separate dry vacuum cylinder, complete according to drawings. [2.54]; Unskilled Labor [80 h]; Plumber [80 h] |
| CO-PW-TF-100 | Final Finishes works and Covers for Valves and Valve Chambers of Potable Water Network | 2027-01-17 → 2027-05-05 (+108d) | 2027-01-28 → 2027-05-22 (+114d) | 0.5d → -83d |  | resources Unskilled Labor [80 h]; Mason [80 h]; JCB [80 h]; Wash out chamber (2500x 2500mm) [0.3]; Air valve chamber (1000x 1000 mm) [0.15] → Wash out chamber (2500x 2500mm) [0.3]; Air valve chamber (1000x 1000 mm) [0.15]; Unskilled Labor [80 h]; Mason [80 h]; JCB [80 h] |
| 13 | **Irrigation Network** | 2026-12-21 → 2027-04-07 (+107d) | 2027-01-03 → 2027-04-21 (+108d) |  |  |  |
| TF | **Testing and Finishes** | 2026-12-21 → 2027-04-07 (+107d) | 2027-01-03 → 2027-04-21 (+108d) |  |  |  |
| CO-IR-TF-160 | Final Testing (pressure tests) of Irrigation Network | 2026-12-21 → 2027-04-07 (+107d) | 2027-01-03 → 2027-04-21 (+108d) | 8.5d → -75d |  | resources Unskilled Labor [256 h]; Plumber [256 h]; Water Tanker [256 h]; pipe line O.D 32 mm PN 10, in depth 0 to 1.5 m [500]; pipe line O.D 40 mm PN 10, in depth 0 to 1.5 m [276.12]; pipe line O.D 50 mm PN 10, in depth 0 to 1.5 m [37.31] → pipe line O.D 32 mm PN 10, in depth 0 to 1.5 m [500]; pipe line O.D 40 mm PN 10, in depth 0 to 1.5 m [276.12]; pipe line O.D 50 mm PN 10, in depth 0 to 1.5 m [37.31]; Unskilled Labor [256 h]; Plumber [256 h]; Water Tanker [256 h] |
| 1 | **Treated Sewage Effluent (Tse)** | 2027-01-04 → 2027-04-21 (+107d) | 2027-01-17 → 2027-05-04 (+107d) |  |  |  |
| TF | **Testing and Finishes** | 2027-01-04 → 2027-04-21 (+107d) | 2027-01-17 → 2027-05-04 (+107d) |  |  |  |
| CO-TSE-TF-170 | Final Testing (pressure tests) of Treated Sewage Effluent (Tse) | 2027-01-04 → 2027-04-21 (+107d) | 2027-01-17 → 2027-05-04 (+107d) | 8.5d → -75d |  | resources Unskilled Labor [128 h]; Plumber [128 h]; Water Tanker [128 h]; Depth Between 0m to 1.50m [1.49]; Depth Between 1.50m to 2.50m [0.75]; Depth > 2.50m [0.3]; Depth Between 0m to 1.50m [137.31]; Depth Between 0m to 1.50m [10.45]; Depth Between 1.50m to 2.50m [6.72]; Depth > 2.50m [1.49]; Depth Between 0m to 1.50m [126.87]; Depth Between 1.50m to 2.50m [38.81]; Depth > 2.50m [3.73]; Depth Between 0m to 1.50m [8.96]; Depth Between 1.50m to 2.50m [5.97]; Depth > 2.50m [1.19] → Depth Between 0m to 1.50m [1.49]; Depth Between 1.50m to 2.50m [0.75]; Depth > 2.50m [0.3]; Depth Between 0m to 1.50m [137.31]; Depth Between 0m to 1.50m [10.45]; Depth Between 1.50m to 2.50m [6.72]; Depth > 2.50m [1.49]; Depth Between 0m to 1.50m [126.87]; Depth Between 1.50m to 2.50m [38.81]; Depth > 2.50m [3.73]; Depth Between 0m to 1.50m [8.96]; Depth Between 1.50m to 2.50m [5.97]; Depth > 2.50m [1.19]; Unskilled Labor [128 h]; Plumber [128 h]; Water Tanker [128 h] |
| 14 | **Medium Voltage Network** | 2026-12-22 → 2027-04-08 (+107d) | 2027-01-11 → 2027-04-29 (+108d) |  |  |  |
| TT | **Termination and Testing Works** | 2026-12-22 → 2027-04-08 (+107d) | 2027-01-11 → 2027-04-29 (+108d) |  |  |  |
| CO-MV-TF-220 | Termination Works of Medium Voltage Network | 2026-12-22 → 2027-04-08 (+107d) | 2027-01-11 → 2027-04-29 (+108d) | 2d → -81.5d |  | resources Unskilled Labor [144 h]; Electrical Technician [288 h]; Duct bank for (33) cables [18.81]; Duct bank for (21) cables [29.85]; Duct bank for (15) cables [8.97]; HV Cable Road Crossing [9.57] → Duct bank for (33) cables [18.81]; Duct bank for (21) cables [29.85]; Duct bank for (15) cables [8.97]; HV Cable Road Crossing [9.57]; Unskilled Labor [144 h]; Electrical Technician [288 h] |
| 12 | **Street Lighting Network** | 2027-01-12 → 2027-04-29 (+107d) | 2027-02-03 → 2027-05-22 (+108d) |  |  |  |
| TR | **Termination and Testing Works** | 2027-01-12 → 2027-04-29 (+107d) | 2027-02-03 → 2027-05-22 (+108d) |  |  |  |
| CO-SL-LP-330 | Installation Works for Lighting Fixtures With Drop Wire of Street Lighting Network | 2027-01-12 → 2027-04-29 (+107d) | 2027-01-19 → 2027-05-08 (+109d) | 0d → -83.5d |  | resources Unskilled Labor [72 h]; Electrical Technician [144 h]; Street Lighting( LED) Luminaire of Output ? 20,965 lumen complete with control gear and lamp, (129.1) WATT. [165.67] → Street Lighting( LED) Luminaire of Output ? 20,965 lumen complete with control gear and lamp, (129.1) WATT. [165.67]; Unskilled Labor [72 h]; Electrical Technician [144 h] |
| CO-SL-TF-200 | Testing Works for Lighting Poles of Street Lighting Network | 2027-01-30 → 2027-05-08 (+98d) | 2027-02-03 → 2027-05-13 (+99d) | 0d → -75.5d |  | resources Unskilled Labor [80 h]; Electrical Technician [160 h]; Lighting poles with 1 arm, height of (12) meters, including the power distribution box, cables, and RCC foundation. [5.82]; Lighting poles with 2 arms, height of (12) meters, including the power distribution box, cables, and RCC foundation. [5.37] → Lighting poles with 1 arm, height of (12) meters, including the power distribution box, cables, and RCC foundation. [5.82]; Lighting poles with 2 arms, height of (12) meters, including the power distribution box, cables, and RCC foundation. [5.37]; Unskilled Labor [80 h]; Electrical Technician [160 h] |
| CO-SL-TF-220 | Termination Works For Lighting Poles Cables of Street Lighting Network | 2027-01-20 → 2027-05-08 (+108d) | 2027-01-27 → 2027-05-22 (+115d) | 6d → -77.5d |  | resources Unskilled Labor [64 h]; Electrical Technician [128 h]; Lighting poles with 1 arm, height of (12) meters, including the power distribution box, cables, and RCC foundation. [5.82]; Lighting poles with 2 arms, height of (12) meters, including the power distribution box, cables, and RCC foundation. [5.37] → Lighting poles with 1 arm, height of (12) meters, including the power distribution box, cables, and RCC foundation. [5.82]; Lighting poles with 2 arms, height of (12) meters, including the power distribution box, cables, and RCC foundation. [5.37]; Unskilled Labor [64 h]; Electrical Technician [128 h] |
| CO-SL-TF-230 | Termination Works For Panel Board Cables of Street Lighting Network | 2027-01-20 → 2027-05-08 (+108d) | 2027-01-27 → 2027-05-22 (+115d) | 6d → -77.5d |  | resources Unskilled Labor [64 h]; Electrical Technician [128 h]; Street Lighting panels LCP (01) [0.15] → Street Lighting panels LCP (01) [0.15]; Unskilled Labor [64 h]; Electrical Technician [128 h] |
| CO-SL-TF-380 | Testing Works For Panel Board Cables of Street Lighting Network | 2027-01-20 → 2027-05-08 (+108d) | 2027-01-21 → 2027-05-10 (+109d) | 11d → -72.5d |  | resources Unskilled Labor [48 h]; Electrical Technician [96 h]; Street Lighting panels LCP (01) [0.15] → Street Lighting panels LCP (01) [0.15]; Unskilled Labor [48 h]; Electrical Technician [96 h] |
| ES | **Earthing System Works** | 2027-01-12 → 2027-04-29 (+107d) | 2027-01-19 → 2027-05-08 (+109d) |  |  |  |
| CO-SL-ES-220 | Install Earthing System Works for Lighting Poles of Street Lighting Network | 2027-01-12 → 2027-04-29 (+107d) | 2027-01-19 → 2027-05-08 (+109d) | 0d → -83.5d |  | resources Unskilled Labor [96 h]; Electrical Technician [192 h]; Including earthing of lighting poles, masts, feeder pillars, unit substations and LV feeders. [78.36] → Including earthing of lighting poles, masts, feeder pillars, unit substations and LV feeders. [78.36]; Unskilled Labor [96 h]; Electrical Technician [192 h] |
| CO-SL-ES-230 | Install Earthing System Works for Lighting Panel Boards of Street Lighting Network | 2027-01-12 → 2027-04-29 (+107d) | 2027-01-19 → 2027-05-08 (+109d) | 0d → -83.5d |  | resources Unskilled Labor [96 h]; Electrical Technician [192 h]; Including earthing of lighting poles, masts, feeder pillars, unit substations and LV feeders. [33.58] → Including earthing of lighting poles, masts, feeder pillars, unit substations and LV feeders. [33.58]; Unskilled Labor [96 h]; Electrical Technician [192 h] |
| 3 | **Telecom Network** | 2027-01-03 → 2027-04-20 (+107d) | 2027-01-20 → 2027-05-09 (+109d) |  |  |  |
| 1 | **Testing and Finishes** | 2027-01-03 → 2027-04-20 (+107d) | 2027-01-20 → 2027-05-09 (+109d) |  |  |  |
| CO-TE-CTV-TF-110 | Smart Card Printer | 2027-01-03 → 2027-04-20 (+107d) | 2027-01-06 → 2027-04-25 (+109d) | -1d → -84.5d |  | resources Unskilled Labor [32 h]; Electrical Technician [64 h]; Smart Card Printer [1.49] → Smart Card Printer [1.49]; Unskilled Labor [32 h]; Electrical Technician [64 h] |
| CO-TE-CTV-TF-120 | Card Issue Work Station | 2027-01-07 → 2027-04-25 (+108d) | 2027-01-11 → 2027-04-29 (+108d) | -1d → -84.5d |  | resources Unskilled Labor [32 h]; Electrical Technician [64 h]; Card Issue Work Station [1.49] → Card Issue Work Station [1.49]; Unskilled Labor [32 h]; Electrical Technician [64 h] |
| CO-TE-CTV-TF-130 | Photographic Camera with stand | 2027-01-12 → 2027-04-29 (+107d) | 2027-01-16 → 2027-05-04 (+108d) | -1d → -84.5d |  | resources Unskilled Labor [32 h]; Electrical Technician [64 h]; Photographic Camera with stand [1.49] → Photographic Camera with stand [1.49]; Unskilled Labor [32 h]; Electrical Technician [64 h] |
| CO-TE-CTV-TF-140 | Interface modules with CCTV, Fire and other systems | 2027-01-17 → 2027-05-04 (+107d) | 2027-01-20 → 2027-05-09 (+109d) | -1d → -84.5d |  | resources Unskilled Labor [32 h]; Electrical Technician [64 h]; Interface modules with CCTV, Fire and other systems [1.49] → Interface modules with CCTV, Fire and other systems [1.49]; Unskilled Labor [32 h]; Electrical Technician [64 h] |
| 2 | **Road Works** | 2026-12-21 → 2027-04-08 (+108d) | 2027-02-16 → 2027-06-07 (+111d) |  |  |  |
| 3 | **ST+1000:ST+1531** | 2026-12-21 → 2027-04-08 (+108d) | 2027-02-08 → 2027-06-01 (+113d) |  |  |  |
| 1 | **Bituminous Construction** | 2027-01-06 → 2027-04-25 (+109d) | 2027-01-23 → 2027-05-10 (+107d) |  |  |  |
| CO-RD-B-150 | Application of Prime Coat Layer for Road Works | 2027-01-06 → 2027-04-25 (+109d) | 2027-01-14 → 2027-05-02 (+108d) | -0.5d → -84d |  | resources Unskilled Labor [16 h]; MC1 Sprinkler [16 h]; Skilled Labor [16 h]; Bituminous base course (Grading I - Class A), including Prime Coat (MC1) [258.06] → Bituminous base course (Grading I - Class A), including Prime Coat (MC1) [258.06]; Unskilled Labor [16 h]; MC1 Sprinkler [16 h]; Skilled Labor [16 h] |
| CO-RD-B-160 | Bituminous Base Courses Layers for Road Works- | 2027-01-14 → 2027-05-03 (+109d) | 2027-01-23 → 2027-05-10 (+107d) | -0.5d → -84d |  | resources Bob Cat [24 h]; Dump Truck [24 h]; Compactor [24 h]; Asphalt Paver [24 h]; Bituminous concrete wearing course, (Grading I - Class A), including tack coat (RC2) [258.06] → Bituminous concrete wearing course, (Grading I - Class A), including tack coat (RC2) [258.06]; Bob Cat [24 h]; Dump Truck [24 h]; Compactor [24 h]; Asphalt Paver [24 h] |
| LS | **Pavement Works** | 2026-12-21 → 2027-04-08 (+108d) | 2027-01-17 → 2027-05-05 (+108d) |  |  |  |
| CO-RD-PV-160 | Fixing of Curbstone for Sidewalks Pavement | 2026-12-21 → 2027-04-08 (+108d) | 2027-01-04 → 2027-04-22 (+108d) | -0.7d → -84.2d |  | resources Unskilled Labor [160 h]; Mason [160 h]; JCB [160 h]; Compactor [160 h]; Forklift [160 h]; Precast Concrete Curbstone 150X300X900 Type (K1-A) [3796.19]; Precast Concrete Curbstone 100X200X500 Type (K4) [2945.22]; Precast Concrete Curbstone 150X300X500 Type (K1-B) [1154.48]; Precast Concrete Curbstone Type (K1-C) [51.72]; Flush Kerb Type (D) [98.21] → Precast Concrete Curbstone 150X300X900 Type (K1-A) [3796.19]; Precast Concrete Curbstone 100X200X500 Type (K4) [2945.22]; Precast Concrete Curbstone 150X300X500 Type (K1-B) [1154.48]; Precast Concrete Curbstone Type (K1-C) [51.72]; Flush Kerb Type (D) [98.21]; Unskilled Labor [160 h]; Mason [160 h]; JCB [160 h]; Compactor [160 h]; Forklift [160 h] |
| CO-RD-PV-170 | Fixing of Interlock Tiles for Sidewalks Pavement | 2027-01-04 → 2027-04-22 (+108d) | 2027-01-17 → 2027-05-05 (+108d) | -0.7d → -84.2d |  | resources Unskilled Labor [160 h]; Mason [160 h]; JCB [160 h]; Compactor [160 h]; Forklift [160 h]; 60mm thick [14588.2]; 80mm thick [20371.5] → 60mm thick [14588.2]; 80mm thick [20371.5]; Unskilled Labor [160 h]; Mason [160 h]; JCB [160 h]; Compactor [160 h]; Forklift [160 h] |
| TS | **Traffic Signs Boards and Roads Marking** | 2027-01-23 → 2027-05-11 (+108d) | 2027-02-08 → 2027-06-01 (+113d) |  |  |  |
| CO-RD-F-RM-180 | Application of Road Marking Works For Road Works | 2027-01-23 → 2027-05-11 (+108d) | 2027-01-31 → 2027-05-24 (+113d) | 2.5d → -81d |  | resources Road Marking Machine [32 h]; Retroreflective Thermoplastic White Traffic lines [504.1]; Retroreflective Thermoplastic Yellow, Traffic lines [754.85] → Retroreflective Thermoplastic White Traffic lines [504.1]; Retroreflective Thermoplastic Yellow, Traffic lines [754.85]; Road Marking Machine [32 h] |
| CO-RD-F-TS-120 | Installation Works of Traffic Signs Boards For Road Works | 2027-01-31 → 2027-05-25 (+114d) | 2027-02-08 → 2027-06-01 (+113d) | 2.5d → -81d |  | resources Unskilled Labor [64 h]; Skilled Labor [64 h]; Traffic signs, ground mounted, Sheet Aluminum, (breakaway) Single post IPE, with all accessories [51.72]; Precast Concrete Blister Warning Tactile Paver Brown Finish 300*300*60mm [33.43] → Traffic signs, ground mounted, Sheet Aluminum, (breakaway) Single post IPE, with all accessories [51.72]; Precast Concrete Blister Warning Tactile Paver Brown Finish 300*300*60mm [33.43]; Unskilled Labor [64 h]; Skilled Labor [64 h] |
| 1 | **ST+500:ST+1000** | 2027-01-04 → 2027-04-22 (+108d) | 2027-02-14 → 2027-06-06 (+112d) |  |  |  |
| 1 | **Bituminous Construction** | 2027-01-23 → 2027-05-11 (+108d) | 2027-02-01 → 2027-05-25 (+113d) |  |  |  |
| CO-RD-B-130 | Application of Prime Coat Layer for Road Works | 2027-01-23 → 2027-05-11 (+108d) | 2027-01-27 → 2027-05-20 (+113d) | -0.5d → -84d |  | resources Unskilled Labor [16 h]; MC1 Sprinkler [16 h]; Skilled Labor [16 h]; Bituminous base course (Grading I - Class A), including Prime Coat (MC1) [258.06] → Bituminous base course (Grading I - Class A), including Prime Coat (MC1) [258.06]; Unskilled Labor [16 h]; MC1 Sprinkler [16 h]; Skilled Labor [16 h] |
| CO-RD-B-140 | Bituminous Base Courses Layers for Road Works- | 2027-01-27 → 2027-05-22 (+115d) | 2027-02-01 → 2027-05-25 (+113d) | -0.5d → -84d |  | resources Bob Cat [32 h]; Dump Truck [32 h]; Compactor [32 h]; Asphalt Paver [32 h]; Bituminous concrete wearing course, (Grading I - Class A), including tack coat (RC2) [258.06] → Bituminous concrete wearing course, (Grading I - Class A), including tack coat (RC2) [258.06]; Bob Cat [32 h]; Dump Truck [32 h]; Compactor [32 h]; Asphalt Paver [32 h] |
| LS | **Pavement Works** | 2027-01-04 → 2027-04-22 (+108d) | 2027-01-30 → 2027-05-24 (+114d) |  |  |  |
| CO-RD-PV-140 | Fixing of Curbstone for Sidewalks Pavement | 2027-01-04 → 2027-04-22 (+108d) | 2027-01-17 → 2027-05-05 (+108d) | -0.7d → -84.2d |  | resources Unskilled Labor [176 h]; Mason [176 h]; JCB [176 h]; Compactor [176 h]; Forklift [176 h]; Precast Concrete Curbstone 150X300X900 Type (K1-A) [3796.19]; Precast Concrete Curbstone 100X200X500 Type (K4) [2945.22]; Precast Concrete Curbstone 150X300X500 Type (K1-B) [1154.48]; Precast Concrete Curbstone Type (K1-C) [51.72]; Flush Kerb Type (D) [98.21] → Precast Concrete Curbstone 150X300X900 Type (K1-A) [3796.19]; Precast Concrete Curbstone 100X200X500 Type (K4) [2945.22]; Precast Concrete Curbstone 150X300X500 Type (K1-B) [1154.48]; Precast Concrete Curbstone Type (K1-C) [51.72]; Flush Kerb Type (D) [98.21]; Unskilled Labor [176 h]; Mason [176 h]; JCB [176 h]; Compactor [176 h]; Forklift [176 h] |
| CO-RD-PV-150 | Fixing of Interlock Tiles for Sidewalks Pavement | 2027-01-17 → 2027-05-05 (+108d) | 2027-01-30 → 2027-05-24 (+114d) | -0.7d → -84.2d |  | resources Unskilled Labor [176 h]; Mason [176 h]; JCB [176 h]; Compactor [176 h]; Forklift [176 h]; 60mm thick [14588.2]; 80mm thick [20371.5] → 60mm thick [14588.2]; 80mm thick [20371.5]; Unskilled Labor [176 h]; Mason [176 h]; JCB [176 h]; Compactor [176 h]; Forklift [176 h] |
| TS | **Traffic Signs Boards and Roads Marking** | 2027-02-02 → 2027-05-27 (+114d) | 2027-02-14 → 2027-06-06 (+112d) |  |  |  |
| CO-RD-F-RM-170 | Application of Road Marking Works For Road Works | 2027-02-02 → 2027-05-27 (+114d) | 2027-02-08 → 2027-06-01 (+113d) | -1.5d → -85d |  | resources Road Marking Machine [64 h]; Retroreflective Thermoplastic White Traffic lines [504.1]; Retroreflective Thermoplastic Yellow, Traffic lines [754.85] → Retroreflective Thermoplastic White Traffic lines [504.1]; Retroreflective Thermoplastic Yellow, Traffic lines [754.85]; Road Marking Machine [64 h] |

| ID | Task | Start | Finish | Complete | Total float | Predecessors | Other |
| --- | --- | --- | --- | --- | --- | --- | --- |
| CO-RD-F-TS-110 | Installation Works of Traffic Signs Boards For Road Works | 2027-02-08 → 2027-06-02 (+114d) | 2027-02-14 → 2027-06-06 (+112d) |  | -1.5d → -85d |  | resources Unskilled Labor [64 h]; Skilled Labor [64 h]; Traffic signs, ground mounted, Sheet Aluminum, (breakaway) Single post IPE, with all accessories [51.72]; Precast Concrete Blister Warning Tactile Paver Brown Finish 300*300*60mm [33.43] → Traffic signs, ground mounted, Sheet Aluminum, (breakaway) Single post IPE, with all accessories [51.72]; Precast Concrete Blister Warning Tactile Paver Brown Finish 300*300*60mm [33.43]; Unskilled Labor [64 h]; Skilled Labor [64 h] |
| 2 | **ST+01:ST+500** | 2027-01-17 → 2027-05-05 (+108d) | 2027-02-16 → 2027-06-07 (+111d) |  |  |  |  |
| 1 | **Bituminous Construction** | 2027-02-02 → 2027-05-27 (+114d) | 2027-02-14 → 2027-06-06 (+112d) |  |  |  |  |
| CO-RD-B-110 | Application of Prime Coat Layer for Road Works | 2027-02-02 → 2027-05-27 (+114d) | 2027-02-08 → 2027-06-01 (+113d) |  | -1.5d → -85d |  | resources Unskilled Labor [16 h]; MC1 Sprinkler [16 h]; Skilled Labor [16 h]; Bituminous base course (Grading I - Class A), including Prime Coat (MC1) [221.19] → Bituminous base course (Grading I - Class A), including Prime Coat (MC1) [221.19]; Unskilled Labor [16 h]; MC1 Sprinkler [16 h]; Skilled Labor [16 h] |
| CO-RD-B-120 | Bituminous Base Courses Layers for Road Works- | 2027-02-08 → 2027-06-02 (+114d) | 2027-02-14 → 2027-06-06 (+112d) |  | -1.5d → -85d |  | resources Bob Cat [24 h]; Dump Truck [24 h]; Compactor [24 h]; Asphalt Paver [24 h]; Bituminous concrete wearing course, (Grading I - Class A), including tack coat (RC2) [221.19] → Bituminous concrete wearing course, (Grading I - Class A), including tack coat (RC2) [221.19]; Bob Cat [24 h]; Dump Truck [24 h]; Compactor [24 h]; Asphalt Paver [24 h] |
| LS | **Pavement Works** | 2027-01-17 → 2027-05-05 (+108d) | 2027-02-14 → 2027-06-06 (+112d) |  |  |  |  |
| CO-RD-PV-120 | Fixing of Curbstone for Sidewalks Pavement | 2027-01-17 → 2027-05-05 (+108d) | 2027-01-30 → 2027-05-24 (+114d) |  | -0.8d → -84.3d |  | resources Unskilled Labor [160 h]; Mason [160 h]; JCB [160 h]; Compactor [160 h]; Forklift [160 h]; Precast Concrete Curbstone 150X300X900 Type (K1-A) [3253.88]; Precast Concrete Curbstone 100X200X500 Type (K4) [2524.48]; Precast Concrete Curbstone 150X300X500 Type (K1-B) [989.55]; Precast Concrete Curbstone Type (K1-C) [44.33]; Flush Kerb Type (D) [84.18] → Precast Concrete Curbstone 150X300X900 Type (K1-A) [3253.88]; Precast Concrete Curbstone 100X200X500 Type (K4) [2524.48]; Precast Concrete Curbstone 150X300X500 Type (K1-B) [989.55]; Precast Concrete Curbstone Type (K1-C) [44.33]; Flush Kerb Type (D) [84.18]; Unskilled Labor [160 h]; Mason [160 h]; JCB [160 h]; Compactor [160 h]; Forklift [160 h] |
| CO-RD-PV-130 | Fixing of Interlock Tiles for Sidewalks Pavement | 2027-01-30 → 2027-05-24 (+114d) | 2027-02-14 → 2027-06-06 (+112d) |  | -0.8d → -84.3d |  | resources Unskilled Labor [160 h]; Mason [160 h]; JCB [160 h]; Compactor [160 h]; Forklift [160 h]; 60mm thick [12504.2]; 80mm thick [17461.3] → 60mm thick [12504.2]; 80mm thick [17461.3]; Unskilled Labor [160 h]; Mason [160 h]; JCB [160 h]; Compactor [160 h]; Forklift [160 h] |
| TS | **Traffic Signs Boards and Roads Marking** | 2027-02-15 → 2027-06-07 (+112d) | 2027-02-16 → 2027-06-07 (+111d) |  |  |  |  |
| CO-RD-F-RM-160 | Application of Road Marking Works For Road Works | 2027-02-15 → 2027-06-07 (+112d) | 2027-02-16 → 2027-06-07 (+111d) |  | 1.5d → -82d |  | resources Road Marking Machine [48 h]; Retroreflective Thermoplastic White Traffic lines [432.09]; Retroreflective Thermoplastic Yellow, Traffic lines [647.01] → Retroreflective Thermoplastic White Traffic lines [432.09]; Retroreflective Thermoplastic Yellow, Traffic lines [647.01]; Road Marking Machine [48 h] |
| CO-RD-F-TS-100 | Installation Works of Traffic Signs Boards For Road Works | 2027-02-15 → 2027-06-07 (+112d) | 2027-02-16 → 2027-06-07 (+111d) |  | 1.5d → -82d |  | resources Unskilled Labor [48 h]; Skilled Labor [48 h]; Traffic signs, ground mounted, Sheet Aluminum, (breakaway) Single post IPE, with all accessories [44.33]; Precast Concrete Blister Warning Tactile Paver Brown Finish 300*300*60mm [28.66] → Traffic signs, ground mounted, Sheet Aluminum, (breakaway) Single post IPE, with all accessories [44.33]; Precast Concrete Blister Warning Tactile Paver Brown Finish 300*300*60mm [28.66]; Unskilled Labor [48 h]; Skilled Labor [48 h] |
| GEN | **Superstructure Work** |  | 2027-02-23 → 2027-05-20 (+86d) |  |  |  |  |
| 4 | **Utility Buildings** | 2026-08-24 → 2026-08-01 (-23d) | 2027-01-28 → 2027-05-20 (+112d) |  |  |  |  |
| 6 | **Storm Drainage Ponds** | 2026-10-22 → 2026-08-02 (-81d) | 2027-01-03 → 2026-09-01 (-124d) |  |  |  |  |
| CO-SD-PO-100-P1 | Excavation & Filling Works - PART 1 | 2026-10-22 → 2026-08-02 A (-81d) | 2026-11-08 → 2026-09-01 A (-68d) | 0% → 100% | 2d → none | ENG-SH-DPO-A-120, ENG-MT-DPO-CV-A-110, PRO-DPO-CV-1DL-10, PRO-DPO-CV-DL-10 FF, CO-SD-CB-190, CO-SD-MH-260, CO-SD-ML-160, CO-SD-CB-170, CO-SD-MH-220, CO-SD-ML-130, CO-SW-ML-130, CO-SW-MH-200, CO-SW-ML-160, CO-SW-MH-250 → ENG-SH-DPO-A-120, ENG-MT-DPO-CV-A-110, PRO-DPO-CV-1DL-10, PRO-DPO-CV-DL-10 FF, CO-SD-ML-130 SS |  |
| CO-SD-PO-100-P2 | Excavation & Filling Works - PART 2 | 2026-11-28 → 2026-08-02 A (-118d) | 2026-12-15 → 2026-09-01 A (-105d) | 0% → 100% | 2d → none |  |  |
| CO-SD-PO-110-P1 | Finished Grouted Riprap - PART 1 | 2026-11-09 → 2026-08-02 A (-99d) | 2026-11-26 → 2026-09-01 A (-86d) | 0% → 100% | 2d → none |  | resources Unskilled Labor [336 h]; Mason [336 h]; Finished grouted riprap for Pond 300mm as per drawings [3053.73] → Finished grouted riprap for Pond 300mm as per drawings [3053.73]; Unskilled Labor [336 h]; Mason [336 h] |
| CO-SD-PO-110-P2 | Finished Grouted Riprap - PART 2 | 2026-12-16 → 2026-08-02 A (-136d) | 2027-01-03 → 2026-09-01 A (-124d) | 0% → 100% | 2d → none |  | resources Unskilled Labor [336 h]; Mason [336 h]; Finished grouted riprap for Pond 300mm as per drawings [2498.51] → Finished grouted riprap for Pond 300mm as per drawings [2498.51]; Unskilled Labor [336 h]; Mason [336 h] |
| 4 | **Pump Station** | 2026-09-01 → 2026-08-01 (-31d) | 2027-01-28 → 2027-05-20 (+112d) |  |  |  |  |
| 1 | **Civil work** | 2026-09-01 → 2026-08-01 (-31d) | 2026-12-02 → 2026-12-05 (+3d) |  |  |  |  |
| 1 | **Sup Structure** | 2026-09-01 → 2026-08-01 (-31d) | 2026-10-18 → 2026-09-01 (-47d) |  |  |  |  |
| CO-UB-PS-100 | Excavation Work for for Pump station building | 2026-09-01 → 2026-08-01 A (-31d) | 2026-09-09 → 2026-08-08 A (-32d) | 0% → 100% | 0.04d → none | ENG-SH-SPS-A-160, PRO-SPS-CV-1DL-10, PRO-SPS-CV-DL-10 FF, PRO-SPS-CV-DL-10, CO-SW-ML-150 → ENG-SH-SPS-A-160, PRO-SPS-CV-DL-10 SS |  |
| CO-UB-PS-110 | pouring P.C Conceret for Pump station building | 2026-09-10 → 2026-08-02 A (-39d) | 2026-09-13 → 2026-09-01 A (-12d) | 0% → 100% | 0.04d → none |  |  |
| CO-UB-PS-120 | Formwork for Foundation for Pump station building | 2026-09-14 → 2026-08-02 A (-43d) | 2026-09-24 → 2026-09-01 A (-23d) | 0% → 100% | 0.04d → none |  |  |
| CO-UB-PS-130 | Steel fixing for Foundation for Pump station building | 2026-09-26 → 2026-08-02 A (-55d) | 2026-10-05 → 2026-09-01 A (-34d) | 0% → 100% | 0.04d → none |  |  |
| CO-UB-PS-140 | pouring for Foundation for Pump station building | 2026-10-06 → 2026-08-02 A (-65d) | 2026-10-06 → 2026-09-01 A (-35d) | 0% → 100% | 0.04d → none |  |  |
| CO-UB-PS-150 | curing and deshuttering formwork Pump station building | 2026-10-07 → 2026-08-02 A (-66d) | 2026-10-10 → 2026-09-01 A (-39d) | 0% → 100% | 0.04d → none |  |  |
| CO-UB-PS-160 | Backfilling and compaction work for pump station | 2026-10-11 → 2026-08-02 A (-70d) | 2026-10-18 → 2026-09-01 A (-47d) | 0% → 100% | 0.04d → none |  |  |
| 2 | **Super structure** | 2026-10-19 → 2026-09-16 (-33d) | 2026-12-02 → 2026-12-05 (+3d) |  |  |  |  |
| CO-UB-PS-170 | Formwork for Wall and columns for Pump station building | 2026-10-19 → 2026-09-16 A (-33d) | 2026-10-29 → 2026-09-21 A (-38d) | 0% → 100% | 0.04d → none |  |  |
| CO-UB-PS-180 | Steel fixing for Wall columns | 2026-10-29 → 2026-09-16 A (-43d) | 2026-11-07 → 2026-09-21 A (-47d) | 0% → 100% | 0.04d → none |  |  |
| CO-UB-PS-190 | pouring for Wall columns | 2026-11-07 → 2026-09-21 A (-47d) | 2026-11-08 → 2026-09-21 A (-48d) | 0% → 100% | 0.04d → none |  |  |
| CO-UB-PS-200 | curing and deshuttering formwork for Wall columns | 2026-11-08 → 2026-09-23 A (-46d) | 2026-11-10 → 2026-09-23 A (-48d) | 0% → 100% | 0.04d → none |  |  |
| CO-UB-PS-210 | Waterproofing for Walls columns | 2026-11-10 → 2026-09-24 A (-47d) | 2026-11-15 → 2026-09-24 A (-52d) | 0% → 100% | 0.04d → none |  |  |
| CO-UB-PS-220 | Formwork for pump roof | 2026-11-15 → 2026-09-24 A (-52d) | 2026-11-22 → 2026-10-03 A (-50d) | 0% → 100% | 0.04d → none |  |  |
| CO-UB-PS-230 | Steel fixing for pump roof | 2026-11-22 → 2026-09-26 A (-57d) | 2026-11-29 → 2026-12-01 (+2d) | 0% → 90% | 0.04d → -2d |  |  |
| CO-UB-PS-240 | pouring for pump roof | 2026-11-29 → 2026-12-02 (+3d) | 2026-11-30 → 2026-12-02 (+2d) |  | 0.04d → -2d |  |  |
| CO-UB-PS-250 | curing and deshuttering formwork for pump roof | 2026-11-30 → 2026-12-03 (+3d) | 2026-12-02 → 2026-12-05 (+3d) |  | 0.04d → -2d |  |  |
| 2 | **Architectural work** | 2026-12-02 → 2026-12-06 (+4d) | 2027-01-12 → 2027-01-14 (+2d) |  |  |  |  |
| CO-UB-PS-260 | Executing Masonry Works for Pump station building | 2026-12-02 → 2026-12-06 (+4d) | 2026-12-08 → 2026-12-10 (+2d) |  | 0.04d → -2d |  |  |
| CO-UB-PS-270 | Executing Plastering Works for Pump station building | 2026-12-08 → 2026-12-12 (+4d) | 2026-12-14 → 2026-12-16 (+2d) |  | 0.04d → -2d |  |  |
| CO-UB-PS-280 | Executing Painting Works for Pump station building | 2026-12-14 → 2026-12-17 (+3d) | 2026-12-20 → 2026-12-22 (+2d) |  | 0.04d → -2d |  |  |
| CO-UB-PS-320 | Doors and windows Fixing &Stair Tiles | 2027-01-04 → 2027-01-07 (+3d) | 2027-01-12 → 2027-01-14 (+2d) |  | 4.04d → 2d |  |  |
| 3 | **Electrical work** | 2026-12-20 → 2026-12-23 (+3d) | 2027-01-23 → 2027-05-09 (+106d) |  |  |  |  |
| CO-UB-PS-290 | Lighting system for pump house | 2026-12-20 → 2026-12-23 (+3d) | 2026-12-26 → 2026-12-28 (+2d) |  | 0.04d → -2d |  |  |
| CO-UB-PS-300 | Wiring connection for pump house | 2026-12-26 → 2026-12-29 (+3d) | 2026-12-31 → 2027-01-03 (+3d) |  | 0.04d → -2d |  |  |
| CO-UB-PS-310 | Sockets and switches for pump house | 2026-12-31 → 2027-01-04 (+4d) | 2027-01-04 → 2027-01-06 (+2d) |  | 0.04d → -2d |  |  |
| CO-UB-PS-330 | Installation for Distribution boards for pump house | 2027-01-04 → 2027-01-07 (+3d) | 2027-01-13 → 2027-01-16 (+3d) |  | 0.04d → -2d |  |  |
| CO-UB-PS-370 | Executing Earthing and bonding for the entire system | 2027-01-13 → 2027-04-29 (+106d) | 2027-01-23 → 2027-05-09 (+106d) |  | 0.04d → -81.5d |  |  |
| 4 | **Mechanical work** | 2027-01-04 → 2027-01-07 (+3d) | 2027-01-28 → 2027-05-20 (+112d) |  |  |  |  |
| CO-UB-PS-340 | Executing HVAC System for Pump station building | 2027-01-04 → 2027-01-07 (+3d) | 2027-01-20 → 2027-01-23 (+3d) |  | 2.04d → 0d |  |  |
| CO-UB-PS-350 | Executing Fire Alarm System for Pump station building | 2027-01-04 → 2027-01-07 (+3d) | 2027-01-10 → 2027-01-12 (+2d) |  | 1.04d → -1d |  |  |
| CO-UB-PS-360 | Executing Fire fighting institution works(piping and wire installation) for Pump station building | 2027-01-10 → 2027-01-13 (+3d) | 2027-01-16 → 2027-01-18 (+2d) |  | 1.04d → -1d |  |  |
| CO-UB-PS-380 | Executing Fire fighting finishing works for Pump station building | 2027-01-16 → 2027-01-19 (+3d) | 2027-01-21 → 2027-01-24 (+3d) |  | 1.04d → -1d |  |  |
| CO-UB-PS-390 | Installation of pumps | 2027-01-23 → 2027-05-09 (+106d) | 2027-01-28 → 2027-05-20 (+112d) |  | 0.04d → -81.5d |  |  |
| 3 | **Lift Station** | 2026-09-10 → 2026-09-01 (-9d) | 2027-01-21 → 2027-02-16 (+26d) |  |  |  |  |
| 1 | **Civil work** | 2026-09-10 → 2026-09-01 (-9d) | 2026-11-28 → 2026-12-21 (+23d) |  |  |  |  |
| 1 | **Sup Structure** | 2026-09-10 → 2026-09-01 (-9d) | 2026-10-14 → 2026-09-30 (-14d) |  |  |  |  |
| CO-UB-LS-220 | Excavation Work for for Lift Station | 2026-09-10 → 2026-09-01 A (-9d) | 2026-09-16 → 2026-09-08 A (-8d) | 0% → 100% | 6d → none | CO-UB-PS-100, ENG-SH-LS-A-170, PRO-LS-CV-1DL-40, PRO-LS-CV-DL-50 → CO-UB-PS-100, ENG-SH-LS-A-170 |  |
| CO-UB-LS-230 | pouring P.C Conceret for Lift Station | 2026-09-17 → 2026-09-08 A (-9d) | 2026-09-22 → 2026-09-12 A (-10d) | 0% → 100% | 6d → none | CO-UB-LS-220 → CO-UB-LS-220, PRO-FE-CV-MF-60 |  |
| CO-UB-LS-240 | Formwork for Foundation for Lift Station | 2026-09-24 → 2026-09-15 A (-9d) | 2026-09-29 → 2026-09-20 A (-9d) | 0% → 100% | 6d → none |  |  |
| CO-UB-LS-250 | Steel fixing for Foundation for Lift Station | 2026-09-30 → 2026-09-21 A (-9d) | 2026-10-06 → 2026-09-24 A (-12d) | 0% → 100% | 6d → none |  |  |
| CO-UB-LS-260 | pouring for Foundation for Lift Station | 2026-10-07 → 2026-09-26 A (-11d) | 2026-10-07 → 2026-09-26 A (-11d) | 0% → 100% | 6d → none |  |  |
| CO-UB-LS-270 | curing and deshuttering formwork Lift Station | 2026-10-08 → 2026-09-27 A (-11d) | 2026-10-10 → 2026-09-27 A (-13d) | 0% → 100% | 6d → none |  |  |
| CO-UB-LS-280 | Backfilling and compaction work for pump station | 2026-10-11 → 2026-09-28 A (-13d) | 2026-10-14 → 2026-09-30 A (-14d) | 0% → 100% | 6d → none |  |  |
| 2 | **Super structure** | 2026-10-15 → 2026-09-23 (-22d) | 2026-11-28 → 2026-12-21 (+23d) |  |  |  |  |
| CO-UB-LS-290 | Formwork for Wall and columns for Lift Station | 2026-10-15 → 2026-09-23 A (-22d) | 2026-10-22 → 2026-11-25 (+34d) | 0% → 70% | 6d → -14d | CO-UB-LS-280 → CO-UB-LS-280 FF |  |
| CO-UB-LS-300 | Steel fixing for Wall columns | 2026-10-24 → 2026-09-23 A (-31d) | 2026-11-02 → 2026-11-26 (+24d) | 0% → 70% | 6d → -14d | CO-UB-LS-290 → CO-UB-LS-290 FF, CO-UB-LS-290 SS |  |
| CO-UB-LS-310 | pouring for Wall columns | 2026-11-03 → 2026-09-30 A (-34d) | 2026-11-03 → 2026-11-26 (+23d) | 0% → 50% | 6d → -14d | CO-UB-LS-300 → CO-UB-LS-300 FF, CO-UB-LS-300 SS |  |
| CO-UB-LS-320 | curing and deshuttering formwork for Wall columns | 2026-11-04 → 2026-11-28 (+24d) | 2026-11-05 → 2026-11-29 (+24d) |  | 6d → -14d | CO-UB-LS-310 → CO-UB-LS-310, PRO-LS-CV-DL-50 |  |

| ID | Task | Start | Finish | Complete | Total float | Other |
| --- | --- | --- | --- | --- | --- | --- |
| CO-UB-LS-330 | Waterproofing for Walls columns | 2026-11-07 → 2026-11-30 (+23d) | 2026-11-10 → 2026-12-03 (+23d) |  | 6d → -14d |  |
| CO-UB-LS-340 | Formwork for pump roof | 2026-11-11 → 2026-12-05 (+24d) | 2026-11-16 → 2026-12-09 (+23d) |  | 6d → -14d |  |
| CO-UB-LS-350 | Steel fixing for pump roof | 2026-11-17 → 2026-12-10 (+23d) | 2026-11-23 → 2026-12-16 (+23d) |  | 6d → -14d |  |
| CO-UB-LS-360 | pouring for pump roof | 2026-11-24 → 2026-12-17 (+23d) | 2026-11-24 → 2026-12-17 (+23d) |  | 6d → -14d |  |
| CO-UB-LS-370 | curing and deshuttering formwork for pump roof | 2026-11-25 → 2026-12-19 (+24d) | 2026-11-28 → 2026-12-21 (+23d) |  | 6d → -14d |  |
| 2 | **Architectural work** | 2026-11-29 → 2026-12-22 (+23d) | 2026-12-15 → 2027-01-07 (+23d) |  |  |  |
| CO-UB-LS-380 | Executing Masonry Works for Pump station building | 2026-11-29 → 2026-12-22 (+23d) | 2026-12-06 → 2026-12-29 (+23d) |  | 6d → -14d |  |
| CO-UB-LS-390 | Executing Plastering Works for Pump station building | 2026-12-07 → 2026-12-30 (+23d) | 2026-12-15 → 2027-01-07 (+23d) |  | 6d → -14d |  |
| 3 | **Electrical work** | 2026-12-16 → 2027-01-09 (+24d) | 2027-01-21 → 2027-02-16 (+26d) |  |  |  |
| CO-UB-LS-400 | Lighting system for pump house | 2026-12-16 → 2027-01-09 (+24d) | 2026-12-24 → 2027-01-17 (+24d) |  | 6d → -14d |  |
| CO-UB-LS-420 | Wiring connection for pump house | 2026-12-26 → 2027-01-18 (+23d) | 2026-12-31 → 2027-01-24 (+24d) |  | 6d → -14d |  |
| CO-UB-LS-440 | Sockets and switches for pump house | 2027-01-02 → 2027-01-25 (+23d) | 2027-01-07 → 2027-01-31 (+24d) |  | 6d → -14d |  |
| CO-UB-LS-460 | Installation for Distribution boards for pump house | 2027-01-09 → 2027-02-01 (+23d) | 2027-01-14 → 2027-02-07 (+24d) |  | 6d → -14d |  |
| CO-UB-LS-480 | Executing Earthing and bonding for the entire system | 2027-01-16 → 2027-02-08 (+23d) | 2027-01-21 → 2027-02-16 (+26d) |  | 6d → -14d |  |
| 4 | **Mechanical work** | 2026-12-16 → 2027-01-09 (+24d) | 2027-01-19 → 2027-02-14 (+26d) |  |  |  |
| CO-UB-LS-410 | Internal pipe installation | 2026-12-16 → 2027-01-09 (+24d) | 2026-12-24 → 2027-01-17 (+24d) |  | 8d → -12d |  |
| CO-UB-LS-430 | Guide rails & lifting chains installation | 2026-12-26 → 2027-01-18 (+23d) | 2027-01-02 → 2027-01-25 (+23d) |  | 8d → -12d |  |
| CO-UB-LS-450 | ExeValve installation | 2027-01-03 → 2027-01-26 (+23d) | 2027-01-10 → 2027-02-02 (+23d) |  | 8d → -12d |  |
| CO-UB-LS-470 | Installation of pumps | 2027-01-11 → 2027-02-03 (+23d) | 2027-01-19 → 2027-02-14 (+26d) |  | 8d → -12d |  |
| 5 | **Potable Water Tank** | 2026-08-24 → 2026-12-07 (+105d) | 2026-11-09 → 2027-02-25 (+108d) |  |  |  |
| 1 | **Eearth Work** | 2026-08-24 → 2026-12-07 (+105d) | 2026-09-06 → 2026-12-20 (+105d) |  |  |  |
| CO-UB-PWT-100 | Excavation work for tank foundation tank formation level | 2026-08-24 → 2026-12-07 (+105d) | 2026-08-31 → 2026-12-14 (+105d) |  | 13d → -76d | resources Unskilled Labor [112 h]; Excavator [56 h]; Skilled Labor [56 h]; Glass Fused Bolted (GLS) 1500 m3 Tank with associated accessories & manufacturer recommendation for the foundation → Glass Fused Bolted (GLS) 1500 m3 Tank with associated accessories & manufacturer recommendation for the foundation; Unskilled Labor [112 h]; Excavator [56 h]; Skilled Labor [56 h] |
| CO-UB-PWT-110 | Soil replacement Up to tank formation level | 2026-09-01 → 2026-12-15 (+105d) | 2026-09-06 → 2026-12-20 (+105d) |  | 13d → -76d | resources Unskilled Labor [80 h]; Excavator [40 h]; Compactor [40 h]; Glass Fused Bolted (GLS) 1500 m3 Tank with associated accessories & manufacturer recommendation for the foundation [0.02] → Glass Fused Bolted (GLS) 1500 m3 Tank with associated accessories & manufacturer recommendation for the foundation [0.02]; Unskilled Labor [80 h]; Excavator [40 h]; Compactor [40 h] |
| 2 | **Structural Work** | 2026-09-07 → 2026-12-21 (+105d) | 2026-09-24 → 2027-01-06 (+104d) |  |  |  |
| CO-UB-PWT-120 | Plain Concrete works | 2026-09-07 → 2026-12-21 (+105d) | 2026-09-09 → 2026-12-23 (+105d) |  | 13d → -76d | resources Unskilled Labor [24 h]; Mason [24 h]; Glass Fused Bolted (GLS) 1500 m3 Tank with associated accessories & manufacturer recommendation for the foundation [0.06] → Glass Fused Bolted (GLS) 1500 m3 Tank with associated accessories & manufacturer recommendation for the foundation [0.06]; Unskilled Labor [24 h]; Mason [24 h] |
| CO-UB-PWT-130 | Form work for Tank Foundation | 2026-09-10 → 2026-12-24 (+105d) | 2026-09-15 → 2026-12-29 (+105d) |  | 13d → -76d | resources Unskilled Labor [144 h]; Carpenter [96 h]; Glass Fused Bolted (GLS) 1500 m3 Tank with associated accessories & manufacturer recommendation for the foundation [0.1] → Glass Fused Bolted (GLS) 1500 m3 Tank with associated accessories & manufacturer recommendation for the foundation [0.1]; Unskilled Labor [144 h]; Carpenter [96 h] |
| CO-UB-PWT-140 | Steel Reinforcement work for Tank Foundation | 2026-09-16 → 2026-12-30 (+105d) | 2026-09-22 → 2027-01-05 (+105d) |  | 13d → -76d | resources Unskilled Labor [56 h]; Steel Fixer [168 h]; Glass Fused Bolted (GLS) 1500 m3 Tank with associated accessories & manufacturer recommendation for the foundation [0.09] → Glass Fused Bolted (GLS) 1500 m3 Tank with associated accessories & manufacturer recommendation for the foundation [0.09]; Unskilled Labor [56 h]; Steel Fixer [168 h] |
| CO-UB-PWT-150 | Casting concrete for Tank Foundation | 2026-09-24 → 2027-01-06 (+104d) | 2026-09-24 → 2027-01-06 (+104d) |  | 13d → -76d | resources Unskilled Labor [8 h]; Mason [8 h]; Glass Fused Bolted (GLS) 1500 m3 Tank with associated accessories & manufacturer recommendation for the foundation [0.03] → Glass Fused Bolted (GLS) 1500 m3 Tank with associated accessories & manufacturer recommendation for the foundation [0.03]; Unskilled Labor [8 h]; Mason [8 h] |
| 3 | **Tank Shell Erection&Roof Installation** | 2026-09-26 → 2027-01-07 (+103d) | 2026-10-20 → 2027-02-01 (+104d) |  |  |  |
| CO-UB-PWT-160 | Bottom ring installation | 2026-09-26 → 2027-01-07 (+103d) | 2026-10-01 → 2027-01-13 (+104d) |  | 13d → -76d | resources Unskilled Labor [80 h]; Skilled Labor [160 h]; Glass Fused Bolted (GLS) 1500 m3 Tank with associated accessories & manufacturer recommendation for the foundation [0.2] → Glass Fused Bolted (GLS) 1500 m3 Tank with associated accessories & manufacturer recommendation for the foundation [0.2]; Unskilled Labor [80 h]; Skilled Labor [160 h] |
| CO-UB-PWT-170 | shell erection | 2026-10-03 → 2027-01-14 (+103d) | 2026-10-11 → 2027-01-23 (+104d) |  | 13d → -76d | resources Unskilled Labor [112 h]; Skilled Labor [224 h]; Glass Fused Bolted (GLS) 1500 m3 Tank with associated accessories & manufacturer recommendation for the foundation [0.27] → Glass Fused Bolted (GLS) 1500 m3 Tank with associated accessories & manufacturer recommendation for the foundation [0.27]; Unskilled Labor [112 h]; Skilled Labor [224 h] |
| CO-UB-PWT-180 | Aluminum dome / steel roof installation | 2026-10-12 → 2027-01-24 (+104d) | 2026-10-20 → 2027-02-01 (+104d) |  | 13d → -76d | resources Unskilled Labor [112 h]; Skilled Labor [224 h]; Glass Fused Bolted (GLS) 1500 m3 Tank with associated accessories & manufacturer recommendation for the foundation [0.33] → Glass Fused Bolted (GLS) 1500 m3 Tank with associated accessories & manufacturer recommendation for the foundation [0.33]; Unskilled Labor [112 h]; Skilled Labor [224 h] |
| 4 | **Mechanical Work&Accessories** | 2026-10-21 → 2027-02-02 (+104d) | 2026-11-09 → 2027-02-25 (+108d) |  |  |  |
| CO-UB-PWT-190 | Inlet / outlet piping connections | 2026-10-21 → 2027-02-02 (+104d) | 2026-10-27 → 2027-02-09 (+105d) |  | 13d → -76d | resources Unskilled Labor [48 h]; Plumber [48 h]; Glass Fused Bolted (GLS) 1500 m3 Tank with associated accessories & manufacturer recommendation for the foundation [0.2] → Glass Fused Bolted (GLS) 1500 m3 Tank with associated accessories & manufacturer recommendation for the foundation [0.2]; Unskilled Labor [48 h]; Plumber [48 h] |
| CO-UB-PWT-200 | installation Valves | 2026-10-28 → 2027-02-09 (+104d) | 2026-11-03 → 2027-02-18 (+107d) |  | 13d → -76d | resources Unskilled Labor [48 h]; Plumber [48 h]; Glass Fused Bolted (GLS) 1500 m3 Tank with associated accessories & manufacturer recommendation for the foundation [0.13] → Glass Fused Bolted (GLS) 1500 m3 Tank with associated accessories & manufacturer recommendation for the foundation [0.13]; Unskilled Labor [48 h]; Plumber [48 h] |
| CO-UB-PWT-210 | Ladders, platforms & handrails | 2026-11-04 → 2027-02-18 (+106d) | 2026-11-09 → 2027-02-25 (+108d) |  | 13d → -76d | resources Unskilled Labor [40 h]; Skilled Labor [80 h]; Glass Fused Bolted (GLS) 1500 m3 Tank with associated accessories & manufacturer recommendation for the foundation [0.05] → Glass Fused Bolted (GLS) 1500 m3 Tank with associated accessories & manufacturer recommendation for the foundation [0.05]; Unskilled Labor [40 h]; Skilled Labor [80 h] |
| 2 | **IrrigationTank** | 2026-11-10 → 2027-02-25 (+107d) | 2027-01-11 → 2027-05-05 (+114d) |  |  |  |
| 1 | **Eearth Work** | 2026-11-10 → 2027-02-25 (+107d) | 2026-11-22 → 2027-03-16 (+114d) |  |  |  |
| CO-UB-IRT-140 | Excavation work for tank foundation tank formation level | 2026-11-10 → 2027-02-25 (+107d) | 2026-11-16 → 2027-03-07 (+111d) |  | 13d → -76d |  |
| CO-UB-IRT-150 | Soil replacement Up to tank formation level | 2026-11-17 → 2027-03-07 (+110d) | 2026-11-22 → 2027-03-16 (+114d) |  | 13d → -76d | resources Unskilled Labor [80 h]; Excavator [40 h]; Compactor [40 h]; Glass Fused Bolted (GLS) 1500 m3 Tank with associated accessories & manufacturer recommendation for the foundation [0.02] → Glass Fused Bolted (GLS) 1500 m3 Tank with associated accessories & manufacturer recommendation for the foundation [0.02]; Unskilled Labor [80 h]; Excavator [40 h]; Compactor [40 h] |
| 2 | **Structural Work** | 2026-11-23 → 2027-03-17 (+114d) | 2026-12-09 → 2027-04-03 (+115d) |  |  |  |
| CO-UB-IRT-160 | Plain Concrete works | 2026-11-23 → 2027-03-17 (+114d) | 2026-11-25 → 2027-03-20 (+115d) |  | 13d → -76d | resources Unskilled Labor [24 h]; Mason [24 h]; Glass Fused Bolted (GLS) 1500 m3 Tank with associated accessories & manufacturer recommendation for the foundation [0.06] → Glass Fused Bolted (GLS) 1500 m3 Tank with associated accessories & manufacturer recommendation for the foundation [0.06]; Unskilled Labor [24 h]; Mason [24 h] |
| CO-UB-IRT-170 | Form work for Tank Foundation | 2026-11-26 → 2027-03-21 (+115d) | 2026-12-02 → 2027-03-27 (+115d) |  | 13d → -76d | resources Unskilled Labor [144 h]; Carpenter [96 h]; Glass Fused Bolted (GLS) 1500 m3 Tank with associated accessories & manufacturer recommendation for the foundation [0.1] → Glass Fused Bolted (GLS) 1500 m3 Tank with associated accessories & manufacturer recommendation for the foundation [0.1]; Unskilled Labor [144 h]; Carpenter [96 h] |
| CO-UB-IRT-180 | Steel Reinforcement work for Tank Foundation | 2026-12-03 → 2027-03-28 (+115d) | 2026-12-08 → 2027-04-01 (+114d) |  | 13d → -76d | resources Unskilled Labor [56 h]; Steel Fixer [168 h]; Glass Fused Bolted (GLS) 1500 m3 Tank with associated accessories & manufacturer recommendation for the foundation [0.09] → Glass Fused Bolted (GLS) 1500 m3 Tank with associated accessories & manufacturer recommendation for the foundation [0.09]; Unskilled Labor [56 h]; Steel Fixer [168 h] |
| CO-UB-IRT-190 | Casting concrete for Tank Foundation | 2026-12-09 → 2027-04-03 (+115d) | 2026-12-09 → 2027-04-03 (+115d) |  | 13d → -76d | resources Unskilled Labor [8 h]; Mason [8 h]; Glass Fused Bolted (GLS) 1500 m3 Tank with associated accessories & manufacturer recommendation for the foundation [0.03] → Glass Fused Bolted (GLS) 1500 m3 Tank with associated accessories & manufacturer recommendation for the foundation [0.03]; Unskilled Labor [8 h]; Mason [8 h] |
| 3 | **Tank Shell Erection&Roof Installation** | 2026-12-10 → 2027-04-04 (+115d) | 2026-12-30 → 2027-04-24 (+115d) |  |  |  |
| CO-UB-IRT-200 | Bottom ring installation | 2026-12-10 → 2027-04-04 (+115d) | 2026-12-16 → 2027-04-10 (+115d) |  | 13d → -76d | resources Unskilled Labor [80 h]; Skilled Labor [160 h]; Glass Fused Bolted (GLS) 1500 m3 Tank with associated accessories & manufacturer recommendation for the foundation [0.2] → Glass Fused Bolted (GLS) 1500 m3 Tank with associated accessories & manufacturer recommendation for the foundation [0.2]; Unskilled Labor [80 h]; Skilled Labor [160 h] |
| CO-UB-IRT-210 | shell erection | 2026-12-17 → 2027-04-11 (+115d) | 2026-12-23 → 2027-04-17 (+115d) |  | 13d → -76d | resources Unskilled Labor [112 h]; Skilled Labor [224 h]; Glass Fused Bolted (GLS) 1500 m3 Tank with associated accessories & manufacturer recommendation for the foundation [0.27] → Glass Fused Bolted (GLS) 1500 m3 Tank with associated accessories & manufacturer recommendation for the foundation [0.27]; Unskilled Labor [112 h]; Skilled Labor [224 h] |
| CO-UB-IRT-220 | Aluminum dome / steel roof installation | 2026-12-24 → 2027-04-18 (+115d) | 2026-12-30 → 2027-04-24 (+115d) |  | 13d → -76d | resources Unskilled Labor [112 h]; Skilled Labor [224 h]; Glass Fused Bolted (GLS) 1500 m3 Tank with associated accessories & manufacturer recommendation for the foundation [0.33] → Glass Fused Bolted (GLS) 1500 m3 Tank with associated accessories & manufacturer recommendation for the foundation [0.33]; Unskilled Labor [112 h]; Skilled Labor [224 h] |
| 4 | **Mechanical Work&Accessories** | 2026-12-31 → 2027-04-25 (+115d) | 2027-01-11 → 2027-05-05 (+114d) |  |  |  |
| CO-UB-IRT-230 | Inlet / outlet piping connections | 2026-12-31 → 2027-04-25 (+115d) | 2027-01-04 → 2027-04-28 (+114d) |  | 13d → -76d | resources Unskilled Labor [48 h]; Plumber [48 h]; Glass Fused Bolted (GLS) 1500 m3 Tank with associated accessories & manufacturer recommendation for the foundation [0.2] → Glass Fused Bolted (GLS) 1500 m3 Tank with associated accessories & manufacturer recommendation for the foundation [0.2]; Unskilled Labor [48 h]; Plumber [48 h] |
| CO-UB-IRT-240 | installation Valves | 2027-01-05 → 2027-04-29 (+114d) | 2027-01-09 → 2027-05-03 (+114d) |  | 13d → -76d | resources Unskilled Labor [48 h]; Plumber [48 h]; Glass Fused Bolted (GLS) 1500 m3 Tank with associated accessories & manufacturer recommendation for the foundation [0.13] → Glass Fused Bolted (GLS) 1500 m3 Tank with associated accessories & manufacturer recommendation for the foundation [0.13]; Unskilled Labor [48 h]; Plumber [48 h] |
| CO-UB-IRT-250 | Ladders, platforms & handrails | 2027-01-10 → 2027-05-04 (+114d) | 2027-01-11 → 2027-05-05 (+114d) |  | 13d → -76d | resources Unskilled Labor [16 h]; Skilled Labor [32 h]; Glass Fused Bolted (GLS) 1500 m3 Tank with associated accessories & manufacturer recommendation for the foundation [0.05] → Glass Fused Bolted (GLS) 1500 m3 Tank with associated accessories & manufacturer recommendation for the foundation [0.05]; Unskilled Labor [16 h]; Skilled Labor [32 h] |
| 1 | **Control Room** | 2026-09-17 → 2026-08-02 (-46d) | 2027-01-21 → 2027-03-07 (+45d) |  |  |  |
| 5 | **Civil Work** | 2026-09-17 → 2026-08-02 (-46d) | 2026-11-05 → 2026-12-13 (+38d) |  |  |  |
| CO-UB-CR-100 | Excavation Work For Control Room Foundation | 2026-09-17 → 2026-08-02 A (-46d) | 2026-09-26 → 2026-09-05 A (-21d) | 0% → 100% | 24d → none |  |
| CO-UB-CR-110 | Pouring for Plain Concrete | 2026-09-27 → 2026-09-08 A (-19d) | 2026-10-01 → 2026-09-12 A (-19d) | 0% → 100% | 24d → none |  |
| CO-UB-CR-120 | Pouring R.C Footing For Control Room | 2026-10-03 → 2026-09-16 A (-17d) | 2026-10-18 → 2026-09-30 A (-18d) | 0% → 100% | 24d → none |  |
| CO-UB-CR-130 | Pouring R.C Columns For Control Room | 2026-10-19 → 2026-11-25 (+37d) | 2026-10-27 → 2026-12-03 (+37d) |  | 24d → -8d |  |
| CO-UB-CR-140 | Pouring Beams and Slab For Control Room | 2026-10-28 → 2026-12-05 (+38d) | 2026-11-05 → 2026-12-13 (+38d) |  | 24d → -8d |  |
| 6 | **Finishing Work** | 2026-11-07 → 2026-12-14 (+37d) | 2027-01-21 → 2027-03-07 (+45d) |  |  |  |
| 1 | **Architictural work** | 2026-11-07 → 2026-12-14 (+37d) | 2026-12-22 → 2027-01-28 (+37d) |  |  |  |
| CO-UB-CR-150 | Brick Work For Control Room | 2026-11-07 → 2026-12-14 (+37d) | 2026-11-16 → 2026-12-23 (+37d) |  | 24d → -8d |  |
| CO-UB-CR-160 | Thermal & Moisture Protection Work for Control Room | 2026-11-17 → 2026-12-24 (+37d) | 2026-11-24 → 2026-12-31 (+37d) |  | 24d → -8d |  |
| CO-UB-CR-200 | Install For Curtian Wall and Windows and Doors | 2026-11-25 → 2027-01-02 (+38d) | 2026-12-03 → 2027-01-10 (+38d) |  | 24d → -8d |  |
| CO-UB-CR-240 | External Finshing Work (Walls and Floor) | 2026-12-05 → 2027-01-11 (+37d) | 2026-12-13 → 2027-01-19 (+37d) |  | 24d → -8d |  |
| CO-UB-CR-250 | Internal Finshing Work (Walls,Floor and Ceiling) | 2026-12-14 → 2027-01-20 (+37d) | 2026-12-22 → 2027-01-28 (+37d) |  | 24d → -8d |  |
| 3 | **Mechanical Work** | 2026-11-17 → 2026-12-24 (+37d) | 2027-01-03 → 2027-02-10 (+38d) |  |  |  |
| 3 | **HVAC System** | 2026-11-17 → 2026-12-24 (+37d) | 2027-01-03 → 2027-02-10 (+38d) |  |  |  |
| CO-UB-CR-170 | Install of Refrigerant Piping ( fabricated metal ducts with flanges complete with supports, vanes, dampers ) | 2026-11-17 → 2026-12-24 (+37d) | 2026-11-21 → 2026-12-28 (+37d) |  | 37d → 5d |  |

| ID | Task | Start | Finish | Total float | Other |
| --- | --- | --- | --- | --- | --- |
| CO-UB-CR-260 | Install of Mini split actual capacity 2 Ton and Ducted split actual capacity 4 Ton | 2026-12-23 → 2027-01-30 (+38d) | 2026-12-30 → 2027-02-06 (+38d) | 35d → 3d |  |
| CO-UB-CR-310 | Install of Air Grills 150mm x150mm and Air Diffuser 600mm x 600mm | 2026-12-31 → 2027-02-07 (+38d) | 2027-01-03 → 2027-02-10 (+38d) | 35d → 3d |  |
| 4 | **Fire Fitting System** | 2026-11-22 → 2026-12-29 (+37d) | 2026-12-26 → 2027-02-01 (+37d) |  |  |
| CO-UB-CR-180 | Installation & Testing of 2 hours Fire rated system for closing the openings between rooms with help of Rock wool | 2026-11-22 → 2026-12-29 (+37d) | 2026-11-25 → 2027-01-02 (+38d) | 37d → 5d |  |
| CO-UB-CR-270 | Install Fire Extinguishers | 2026-12-23 → 2027-01-30 (+38d) | 2026-12-26 → 2027-02-01 (+37d) | 42d → 10d |  |
| 4 | **Electrical Work** | 2026-11-26 → 2027-01-03 (+38d) | 2027-01-16 → 2027-02-27 (+42d) |  |  |
| 1 | **LV Power** | 2026-12-23 → 2027-01-30 (+38d) | 2027-01-09 → 2027-02-18 (+40d) |  |  |
| CO-UB-CR-190 | Install of Distribution board For Control Room | 2026-12-23 → 2027-01-30 (+38d) | 2026-12-28 → 2027-02-03 (+37d) | 30d → -2d |  |
| CO-UB-CR-220 | Install of Earting Cable for Control Room | 2026-12-29 → 2027-02-04 (+37d) | 2027-01-03 → 2027-02-10 (+38d) | 30d → -2d |  |
| CO-UB-CR-280 | Install of Socket outlet and LED Lighting | 2027-01-04 → 2027-02-10 (+37d) | 2027-01-09 → 2027-02-18 (+40d) | 30d → -2d |  |
| 3 | **Fire Detection And Alarm System** | 2026-11-26 → 2027-01-03 (+38d) | 2027-01-16 → 2027-02-27 (+42d) |  |  |
| CO-UB-CR-210 | Install of 2C x 1.5 Sqm FR Rated Armored - Cable For Loop Wiring | 2026-11-26 → 2027-01-03 (+38d) | 2026-12-01 → 2027-01-07 (+37d) | 37d → 5d |  |
| CO-UB-CR-230 | Install of Transmission Communication cable - Fiber Optics 12Core | 2026-12-02 → 2027-01-09 (+38d) | 2026-12-07 → 2027-01-13 (+37d) | 37d → 5d |  |
| CO-UB-CR-290 | Install of power supply system for fire alarm control panel | 2026-12-23 → 2027-01-30 (+38d) | 2026-12-28 → 2027-02-03 (+37d) | 24d → -8d |  |
| CO-UB-CR-300 | Install of Fire Alarm Control panel | 2026-12-29 → 2027-02-04 (+37d) | 2027-01-04 → 2027-02-11 (+38d) | 24d → -8d |  |
| CO-UB-CR-320 | Installation of the addressable manual call point with operation safety glass breaking | 2027-01-05 → 2027-02-13 (+39d) | 2027-01-07 → 2027-02-16 (+40d) | 24d → -8d |  |
| CO-UB-CR-330 | Install of the photoelectric heat & smoke detector | 2027-01-09 → 2027-02-17 (+39d) | 2027-01-11 → 2027-02-21 (+41d) | 24d → -8d |  |
| CO-UB-CR-340 | Install of Sounder With Beacon | 2027-01-09 → 2027-02-17 (+39d) | 2027-01-11 → 2027-02-21 (+41d) | 24d → -8d |  |
| CO-UB-CR-350 | Install of Addressable Control module | 2027-01-12 → 2027-02-22 (+41d) | 2027-01-16 → 2027-02-27 (+42d) | 24d → -8d |  |
| 2 | **Furnitures work** | 2027-01-17 → 2027-02-28 (+42d) | 2027-01-21 → 2027-03-07 (+45d) |  |  |
| CO-UB-CR-360 | Office Chairs,Tables and Stand | 2027-01-17 → 2027-02-28 (+42d) | 2027-01-21 → 2027-03-07 (+45d) | 24d → -8d |  |
| ML | **Softscape and Planting Works** | 2026-11-07 → 2027-02-01 (+86d) | 2026-12-22 → 2027-03-28 (+96d) |  |  |
| 1 | **Planting Beds Preparation** | 2026-11-07 → 2027-02-01 (+86d) | 2026-12-01 → 2027-03-02 (+91d) |  |  |
| CO-LS-PL-100 | Excavation of planting beds | 2026-11-07 → 2027-02-01 (+86d) | 2026-11-15 → 2027-02-09 (+86d) | 12.75d → -61d |  |
| CO-LS-PL-110 | Supply & placement of suitable topsoil | 2026-11-15 → 2027-02-09 (+86d) | 2026-11-23 → 2027-02-20 (+89d) | 12.75d → -61d |  |
| CO-LS-PL-120 | Soil improvement (fertilizer, compost, additives) | 2026-11-23 → 2027-02-20 (+89d) | 2026-12-01 → 2027-03-02 (+91d) | 12.75d → -61d |  |
| 2 | **Supports & Protection** | 2026-12-01 → 2027-03-02 (+91d) | 2026-12-08 → 2027-03-14 (+96d) |  |  |
| CO-LS-PL-130 | installation of plant supports / stakes | 2026-12-01 → 2027-03-02 (+91d) | 2026-12-05 → 2027-03-07 (+92d) | 12.75d → -61d |  |
| CO-LS-PL-140 | Ties and protection materials | 2026-12-05 → 2027-03-07 (+92d) | 2026-12-08 → 2027-03-14 (+96d) | 12.75d → -61d |  |
| 3 | **Plant Supply** | 2026-12-08 → 2027-03-15 (+97d) | 2026-12-12 → 2027-03-17 (+95d) |  |  |
| CO-LS-PL-150 | installation of trees | 2026-12-08 → 2027-03-15 (+97d) | 2026-12-12 → 2027-03-17 (+95d) | 12.75d → -61d |  |
| 4 | **Site Furnishings** | 2026-12-12 → 2027-03-18 (+96d) | 2026-12-22 → 2027-03-28 (+96d) |  |  |
| CO-LS-PL-160 | installation of Seating benches | 2026-12-12 → 2027-03-18 (+96d) | 2026-12-15 → 2027-03-21 (+96d) | 12.75d → -61d |  |
| CO-LS-PL-170 | tone boulders ï¿½ placement & fixing Works | 2026-12-15 → 2027-03-22 (+97d) | 2026-12-19 → 2027-03-24 (+95d) | 12.75d → -61d | was named tone boulders placement & fixing Works |
| CO-LS-PL-180 | Gravel Works | 2026-12-19 → 2027-03-25 (+96d) | 2026-12-22 → 2027-03-28 (+96d) | 12.75d → -61d |  |
| 1 | **Fence and Gaurd Room** |  | 2027-02-23 → 2027-05-20 (+86d) |  |  |
| 1 | **Gaurd Room Work** | 2026-08-29 → 2026-12-12 (+105d) | 2027-01-20 → 2027-05-20 (+120d) |  |  |
| 1 | **Civil Work** | 2026-08-29 → 2026-12-12 (+105d) | 2026-10-15 → 2027-01-27 (+104d) |  |  |
| A1000 | Excavation Work For Gaurd Room Foundation | 2026-08-29 → 2026-12-12 (+105d) | 2026-09-05 → 2026-12-19 (+105d) | 25d → -64d |  |
| A1010 | Pouring for Plain Concrete | 2026-09-06 → 2026-12-20 (+105d) | 2026-09-09 → 2026-12-23 (+105d) | 25d → -64d | resources Unskilled Labor [160 h]; Carpenter [80 h]; Steel Fixer [80 h]; 100 mm thickness lean concrete under the foundation [149.25] → 100 mm thickness lean concrete under the foundation [149.25]; Unskilled Labor [160 h]; Carpenter [80 h]; Steel Fixer [80 h] |
| A1020 | Pouring R.C Footing For Gaurd Room | 2026-09-10 → 2026-12-24 (+105d) | 2026-09-22 → 2027-01-05 (+105d) | 25d → -64d | resources Unskilled Labor [672 h]; Carpenter [336 h]; Steel Fixer [336 h]; Foundation [74.63]; Slab on Grade [29.85]; Walls → Foundation [74.63]; Slab on Grade [29.85]; Walls; Unskilled Labor [672 h]; Carpenter [336 h]; Steel Fixer [336 h] |
| A1030 | Pouring R.C Columns For Gaurd Room | 2026-09-24 → 2027-01-06 (+104d) | 2026-10-05 → 2027-01-17 (+104d) | 25d → -64d | resources Unskilled Labor [384 h]; Carpenter [192 h]; Steel Fixer [192 h]; Columns [10.45] → Columns [10.45]; Unskilled Labor [384 h]; Carpenter [192 h]; Steel Fixer [192 h] |
| A1040 | Pouring Beams and Slab For Gaurd Room | 2026-10-06 → 2027-01-18 (+104d) | 2026-10-15 → 2027-01-27 (+104d) | 25d → -64d | resources Unskilled Labor [320 h]; Carpenter [160 h]; Steel Fixer [160 h]; Beams [29.85]; Slabs [46.27]; Lightweight Concrete Roof insulation as per Architect's specification [231.34] → Beams [29.85]; Slabs [46.27]; Lightweight Concrete Roof insulation as per Architect's specification [231.34]; Unskilled Labor [320 h]; Carpenter [160 h]; Steel Fixer [160 h] |
| 2 | **Finishing Work** | 2026-10-17 → 2027-01-28 (+103d) | 2027-01-20 → 2027-05-20 (+120d) |  |  |
| 1 | **Architictural work** | 2026-10-17 → 2027-01-28 (+103d) | 2026-12-08 → 2027-04-01 (+114d) |  |  |
| A1050 | Brick Work For Gaurd Room | 2026-10-17 → 2027-01-28 (+103d) | 2026-10-26 → 2027-02-07 (+104d) | 25d → -64d | resources Unskilled Labor [160 h]; Skilled Labor [320 h]; Common brickwork. 300mm thick; vertical straight wall complete with accessories.; Insulated brickwork. with expanded polystyrene 200mm thick; vertical straight wall complete with accessories . [152.24]; Common brickwork. 150mm thick; vertical straight wall complete with accessories. [268.66] → Common brickwork. 300mm thick; vertical straight wall complete with accessories.; Insulated brickwork. with expanded polystyrene 200mm thick; vertical straight wall complete with accessories . [152.24]; Common brickwork. 150mm thick; vertical straight wall complete with accessories. [268.66]; Unskilled Labor [160 h]; Skilled Labor [320 h] |
| A1060 | Thermal & Moisture Protection Work for Gaurd Room | 2026-10-27 → 2027-02-08 (+104d) | 2026-11-03 → 2027-02-18 (+107d) | 31d → -58d | resources Unskilled Labor [56 h]; Skilled Labor [112 h]; 2 perpendicular layers of cold bitumen coats [231.34]; 2 layer of 4mm HDPE membrane, 2 perpendicular layers cold bitumen coats [231.34]; 1 layer EPOXY Paint 300 micron [231.34]; Membrane fully bonded to prime deck and upstand [231.34]; Geotextile Filter membrane uv resistance [231.34]; 85mm thick thermal insulation [231.34]; 1.5mm thick epdm waterproofing membrane [231.34] → 2 perpendicular layers of cold bitumen coats [231.34]; 2 layer of 4mm HDPE membrane, 2 perpendicular layers cold bitumen coats [231.34]; 1 layer EPOXY Paint 300 micron [231.34]; Membrane fully bonded to prime deck and upstand [231.34]; Geotextile Filter membrane uv resistance [231.34]; 85mm thick thermal insulation [231.34]; 1.5mm thick epdm waterproofing membrane [231.34]; Unskilled Labor [56 h]; Skilled Labor [112 h] |
| A1070 | Install For Curtian Wall and Windows and Doors | 2026-11-11 → 2027-02-28 (+109d) | 2026-11-19 → 2027-03-14 (+115d) | 25d → -64d | resources Unskilled Labor [80 h]; Skilled Labor [160 h]; CW01 - 4500 mm width x 3700 mm height [1.49]; CW02 - 4500 mm width x 3700 mm height [1.49]; CW03 - 4500 mm width x 3700 mm height [1.49]; CW04 - 4500 mm width x 3700 mm height [1.49]; CW05 - 7500 mm width x 4250 mm height [1.49]; CW06 - 7500 mm width x 4250 mm height [1.49]; W01 - 1000 mm width x 2000 mm height [1.49]; W02 - 2000 mm width x 2000 mm height [2.99]; W03 - 2000 mm width x 1000 mm height [4.48]; D2 - 900 mm x 2200 mm height temper door [10.45]; D3 - 950 mm x 2000 mm height temper door [2.99] → CW01 - 4500 mm width x 3700 mm height [1.49]; CW02 - 4500 mm width x 3700 mm height [1.49]; CW03 - 4500 mm width x 3700 mm height [1.49]; CW04 - 4500 mm width x 3700 mm height [1.49]; CW05 - 7500 mm width x 4250 mm height [1.49]; CW06 - 7500 mm width x 4250 mm height [1.49]; W01 - 1000 mm width x 2000 mm height [1.49]; W02 - 2000 mm width x 2000 mm height [2.99]; W03 - 2000 mm width x 1000 mm height [4.48]; D2 - 900 mm x 2200 mm height temper door [10.45]; D3 - 950 mm x 2000 mm height temper door [2.99]; Unskilled Labor [80 h]; Skilled Labor [160 h] |
| A1080 | External Finshing Work (Walls and Floor) | 2026-11-21 → 2027-03-15 (+114d) | 2026-11-29 → 2027-03-23 (+114d) | 25d → -64d | resources Unskilled Labor [80 h]; Skilled Labor [160 h]; Supply and install 300*300mm terrazzo tiles with 150mm high skirting at perimeter with approv [198.51] → Supply and install 300*300mm terrazzo tiles with 150mm high skirting at perimeter with approv [198.51]; Unskilled Labor [80 h]; Skilled Labor [160 h] |
| A1090 | Internal Finshing Work (Walls,Floor and Ceiling) | 2026-11-30 → 2027-03-24 (+114d) | 2026-12-08 → 2027-04-01 (+114d) | 25d → -64d | resources Unskilled Labor [80 h]; Skilled Labor [160 h]; Supply and install 300*300mm glazed ceramic wall tiles on cement mortar and including rough [141.79]; Supply and install internal plastering and 2 coats of acrylic paint at walls includin [322.39]; Supply and install 300*300mm glazed ceramic wall tiles on cement mortar and including rough and smooth p [17.91]; Supply and install 600*600mm porcelain tiles with approved quality on 30 mm mortar inclu [186.57]; Supply and install 12.5mm thk, gypsum board suspended ceiling including s [7.46] → Supply and install 300*300mm glazed ceramic wall tiles on cement mortar and including rough [141.79]; Supply and install internal plastering and 2 coats of acrylic paint at walls includin [322.39]; Supply and install 300*300mm glazed ceramic wall tiles on cement mortar and including rough and smooth p [17.91]; Supply and install 600*600mm porcelain tiles with approved quality on 30 mm mortar inclu [186.57]; Supply and install 12.5mm thk, gypsum board suspended ceiling including s [7.46]; Unskilled Labor [80 h]; Skilled Labor [160 h] |
| 3 | **Mechanical Work** | 2026-10-27 → 2027-02-08 (+104d) | 2026-12-20 → 2027-04-13 (+114d) |  |  |
| 1 | **Sanitary Drainage & Plumbing System** | 2026-10-27 → 2027-02-08 (+104d) | 2026-11-10 → 2027-02-27 (+109d) |  |  |
| A1110 | Install Sanitary Piping System (UPVC) | 2026-10-27 → 2027-02-08 (+104d) | 2026-10-31 → 2027-02-14 (+106d) | 25d → -64d | resources Unskilled Labor [32 h]; Skilled Labor [64 h]; Supply and install Hand Wash Basin with Water Tap, angle valve, P-trap connected to 50mm diameter s [4.48]; Supply and install paper towel dispenser, surface mounted, satin finish stainless steel as per approv [4.48]; Supply and install mirror, size 460*910mm as per approved sample including frames, backing and all accessories to complete. [4.48]; Supply and install towel ring , surface mounted, satin finish stainless steel as per approved sample including accessories. [4.48]; Kitchen sink with single bowl with hot/cold water mixer. [4.48]; 50mm diameter [55.22]; 75mm diameter [5.97]; 80mm diameter [16.42]; 100mm diameter [2.99]; 110mm diameter [17.91]; Floor cleanout, size 75 mm diameter [2.99]; Floor cleanout, size 110 mm diameter [5.97] → Supply and install Hand Wash Basin with Water Tap, angle valve, P-trap connected to 50mm diameter s [4.48]; Supply and install paper towel dispenser, surface mounted, satin finish stainless steel as per approv [4.48]; Supply and install mirror, size 460*910mm as per approved sample including frames, backing and all accessories to complete. [4.48]; Supply and install towel ring , surface mounted, satin finish stainless steel as per approved sample including accessories. [4.48]; Kitchen sink with single bowl with hot/cold water mixer. [4.48]; 50mm diameter [55.22]; 75mm diameter [5.97]; 80mm diameter [16.42]; 100mm diameter [2.99]; 110mm diameter [17.91]; Floor cleanout, size 75 mm diameter [2.99]; Floor cleanout, size 110 mm diameter [5.97]; Unskilled Labor [32 h]; Skilled Labor [64 h] |
| A1120 | Install Base mounted flush tank water Western water closet system | 2026-11-01 → 2027-02-14 (+105d) | 2026-11-07 → 2027-02-22 (+107d) | 25d → -64d | resources Unskilled Labor [48 h]; Skilled Labor [96 h]; Supply and install Base mounted flush tank water Western water closet system with lid connected to 110mm soil pipe [2.99] → Supply and install Base mounted flush tank water Western water closet system with lid connected to 110mm soil pipe [2.99]; Unskilled Labor [48 h]; Skilled Labor [96 h] |
| A1130 | Install 1 meter length 10mm diameter Flexible Hose and Gate Valves and Slow Closing Valve | 2026-11-08 → 2027-02-23 (+107d) | 2026-11-10 → 2027-02-27 (+109d) | 25d → -64d | resources Unskilled Labor [24 h]; Skilled Labor [48 h]; Gate Valves [2.99]; Slow Closing Valve [2.99]; 1 meter length 10mm diameter Flexible Hose with insulated handle complete with fork support, index push, vacuum breaker [2.99] → Gate Valves [2.99]; Slow Closing Valve [2.99]; 1 meter length 10mm diameter Flexible Hose with insulated handle complete with fork support, index push, vacuum breaker [2.99]; Unskilled Labor [24 h]; Skilled Labor [48 h] |
| 2 | **Water Supply System** | 2026-10-27 → 2027-02-08 (+104d) | 2026-12-10 → 2027-04-04 (+115d) |  |  |
| A1240 | Install GRP water tanks capacity of each 1000 liter | 2026-10-27 → 2027-02-08 (+104d) | 2026-10-29 → 2027-02-11 (+105d) | 26d → -63d | resources Unskilled Labor [24 h]; Skilled Labor [48 h]; GRP water tanks capacity of each 1000 liter complete with all fittings, all valves and concrete pad [4.48] → GRP water tanks capacity of each 1000 liter complete with all fittings, all valves and concrete pad [4.48]; Unskilled Labor [24 h]; Skilled Labor [48 h] |
| A1140 | Install for Cold Water Pipe complete with joints, angles, reducer etc. | 2026-10-31 → 2027-02-13 (+105d) | 2026-11-04 → 2027-02-20 (+108d) | 26d → -63d | resources Unskilled Labor [40 h]; Skilled Labor [80 h]; 13mm diameter [1.49]; 15mm diameter [1.49]; 20mm diameter [1.49]; 25mm diameter [28.36]; 32mm diameter [52.24]; 40mm diameter [17.91]; 50mm diameter [1.49] → 13mm diameter [1.49]; 15mm diameter [1.49]; 20mm diameter [1.49]; 25mm diameter [28.36]; 32mm diameter [52.24]; 40mm diameter [17.91]; 50mm diameter [1.49]; Unskilled Labor [40 h]; Skilled Labor [80 h] |
| A1150 | Install for Hot Water Pipe complete with joints, angles, reducer etc. | 2026-11-05 → 2027-02-20 (+107d) | 2026-11-09 → 2027-02-25 (+108d) | 26d → -63d | resources Unskilled Labor [32 h]; Skilled Labor [64 h]; 13mm diameter [1.49]; 20mm diameter [7.46]; 25mm diameter [17.91] → 13mm diameter [1.49]; 20mm diameter [7.46]; 25mm diameter [17.91]; Unskilled Labor [32 h]; Skilled Labor [64 h] |
| A1160 | Install for Isolation Valve,Spray Head,Roof Drain,Floor Drain,Gully teap,Vend on Roof to exhaust air | 2026-11-10 → 2027-02-25 (+107d) | 2026-11-12 → 2027-03-02 (+110d) | 45d → -44d | resources Unskilled Labor [24 h]; Skilled Labor [48 h]; Isolation Valve Size 20 [4.48]; Isolation Valve Size 25 [4.48]; Isolation Valve Size 32 [7.46]; Isolation Valve Size 40 [1.49]; Isolation Valve Size 50 [1.49]; 20 mm diameter spray head for cold water supply [4.48]; Roof drain [4.48]; Vent on a roof to exhaust air [4.48]; Floor drain 100x80mm [5.97]; Gully trap 300x300 mm [4.48] → Isolation Valve Size 20 [4.48]; Isolation Valve Size 25 [4.48]; Isolation Valve Size 32 [7.46]; Isolation Valve Size 40 [1.49]; Isolation Valve Size 50 [1.49]; 20 mm diameter spray head for cold water supply [4.48]; Roof drain [4.48]; Vent on a roof to exhaust air [4.48]; Floor drain 100x80mm [5.97]; Gully trap 300x300 mm [4.48]; Unskilled Labor [24 h]; Skilled Labor [48 h] |
| A1170 | Install of Inspection chamber, size 800x900x1000 | 2026-11-14 → 2027-03-02 (+108d) | 2026-11-15 → 2027-03-06 (+111d) | 45d → -44d | resources Unskilled Labor [16 h]; Skilled Labor [32 h]; inspection chamber, size 800x900x1000 [4.48] → inspection chamber, size 800x900x1000 [4.48]; Unskilled Labor [16 h]; Skilled Labor [32 h] |
| A1180 | Install OF Electric Water Heater set with connection and Water meter complete with accessories | 2026-12-09 → 2027-04-03 (+115d) | 2026-12-10 → 2027-04-04 (+115d) | 25d → -64d | resources Unskilled Labor [16 h]; Skilled Labor [32 h]; Supply and install Electric Water Heater set with connection [4.48]; Water meter complete with accessories. [4.48] → Supply and install Electric Water Heater set with connection [4.48]; Water meter complete with accessories. [4.48]; Unskilled Labor [16 h]; Skilled Labor [32 h] |
| 3 | **HVAC System** | 2026-11-01 → 2027-02-14 (+105d) | 2026-12-20 → 2027-04-13 (+114d) |  |  |
| A1200 | Install of Refrigerant Piping ( fabricated metal ducts with flanges complete with supports, vanes, dampers ) | 2026-11-01 → 2027-02-14 (+105d) | 2026-11-04 → 2027-02-20 (+108d) | 46d → -43d | resources Unskilled Labor [32 h]; Electrical Technician [64 h]; Supply, fabricate, install and testing factory fabricated metal ducts with flanges complete with supports, vanes, [59.7]; Supplying, installation testing & commissioning of external insulation on ducts [59.7]; Supply, fix, testing and commissioning of exhaust air/fresh air louvers of powder coated extruded aluminium construction. [1.49]; Providing, fixing, testing and commissioning of powder coated extruded aluminum sections grills and diffusers with dampers. [2.99] → Supply, fabricate, install and testing factory fabricated metal ducts with flanges complete with supports, vanes, [59.7]; Supplying, installation testing & commissioning of external insulation on ducts [59.7]; Supply, fix, testing and commissioning of exhaust air/fresh air louvers of powder coated extruded aluminium construction. [1.49]; Providing, fixing, testing and commissioning of powder coated extruded aluminum sections grills and diffusers with dampers. [2.99]; Unskilled Labor [32 h]; Electrical Technician [64 h] |
| A1190 | Install of Mini split actual capacity 2 Ton and Ducted split actual capacity 4 Ton | 2026-12-09 → 2027-04-03 (+115d) | 2026-12-16 → 2027-04-10 (+115d) | 47d → -42d | resources Unskilled Labor [56 h]; Electrical Technician [112 h]; Mini split actual capacity 2 Ton [1.49]; Ducted split actual capacity 4 Ton [2.99] → Mini split actual capacity 2 Ton [1.49]; Ducted split actual capacity 4 Ton [2.99]; Unskilled Labor [56 h]; Electrical Technician [112 h] |
| A1210 | Install of Air Grills 150mm x150mm and Air Diffuser 600mm x 600mm | 2026-12-17 → 2027-04-11 (+115d) | 2026-12-20 → 2027-04-13 (+114d) | 47d → -42d | resources Unskilled Labor [24 h]; Electrical Technician [48 h]; Air Grills 150mm x150mm [2.99]; Air Diffuser 600mm x 600mm [8.96] → Air Grills 150mm x150mm [2.99]; Air Diffuser 600mm x 600mm [8.96]; Unskilled Labor [24 h]; Electrical Technician [48 h] |
| 4 | **Fire Fitting System** | 2026-11-05 → 2027-02-20 (+107d) | 2026-12-15 → 2027-04-08 (+114d) |  |  |
| A1220 | Installation & Testing of 2 hours Fire rated system for closing the openings between rooms with help of Rock wool | 2026-11-05 → 2027-02-20 (+107d) | 2026-11-11 → 2027-03-01 (+110d) | 46d → -43d | resources Unskilled Labor [48 h]; Electrical Technician [96 h]; Supply, Installation & Testing of 2 hours Fire rated system for closing the openings between roo [1.49] → Supply, Installation & Testing of 2 hours Fire rated system for closing the openings between roo [1.49]; Unskilled Labor [48 h]; Electrical Technician [96 h] |
| A1230 | Install Fire Extinguishers | 2026-12-09 → 2027-04-03 (+115d) | 2026-12-15 → 2027-04-08 (+114d) | 51d → -38d | resources Unskilled Labor [48 h]; Electrical Technician [96 h]; 4.5 KG CO2 Type Fire Extinguishers [5.97]; 6 KG ABC Type Fire Extinguishers [5.97] → 4.5 KG CO2 Type Fire Extinguishers [5.97]; 6 KG ABC Type Fire Extinguishers [5.97]; Unskilled Labor [48 h]; Electrical Technician [96 h] |
| 4 | **Electrical Work** | 2026-11-05 → 2027-02-20 (+107d) | 2027-01-14 → 2027-05-09 (+115d) |  |  |

| ID | Task | Start | Finish | Complete | Total float | Predecessors | Other |
| --- | --- | --- | --- | --- | --- | --- | --- |
| 1 | **LV Power** | 2026-11-05 → 2027-02-20 (+107d) | 2026-12-14 → 2027-04-07 (+114d) |  |  |  |  |
| A1250 | Install of Distribution board For Gaurd Room | 2026-11-05 → 2027-02-20 (+107d) | 2026-11-10 → 2027-02-27 (+109d) |  | 46d → -43d |  | resources Unskilled Labor [40 h]; Electrical Technician [80 h]; Guard Room 1 [1.49]; Guard Room 2 [1.49]; Guard Room 3 [1.49] → Guard Room 1 [1.49]; Guard Room 2 [1.49]; Guard Room 3 [1.49]; Unskilled Labor [40 h]; Electrical Technician [80 h] |
| A1270 | Install of Earting Cable for Gaurd Room | 2026-11-11 → 2027-02-28 (+109d) | 2026-11-16 → 2027-03-07 (+111d) |  | 46d → -43d |  | resources Unskilled Labor [40 h]; Electrical Technician [80 h]; 4mm2 Cu./FRLSZH Cable [895.52]; 6mm2 Cu./FRLSZH Cable [164.18] → 4mm2 Cu./FRLSZH Cable [895.52]; 6mm2 Cu./FRLSZH Cable [164.18]; Unskilled Labor [40 h]; Electrical Technician [80 h] |
| A1260 | Install of Socket outlet and LED Lighting | 2026-12-09 → 2027-04-03 (+115d) | 2026-12-14 → 2027-04-07 (+114d) |  | 52d → -37d |  | resources Unskilled Labor [40 h]; Electrical Technician [80 h]; 30A, 2P AC Disconnect Switch [16.42]; 20A Duplex Receptacle Floor Mounted [17.91]; Twin Socket outlet [8.96]; Twin Socket outlet, Weather Proof [7.46]; Single gang Lighting switch [8.96]; 2way Single gang Lighting switch [2.99]; 36W LED linear Pendant lighting [20.9]; 36W LED Emergency linear Pendant lighting [8.96]; 13W recess mounted LED down light fitting [11.94]; 13W recess emergency mounted LED down light fitting with 1.5 Hr Battery [8.96]; 10.4W LED Exit light with 1.5 Hr Battery [4.48] → 30A, 2P AC Disconnect Switch [16.42]; 20A Duplex Receptacle Floor Mounted [17.91]; Twin Socket outlet [8.96]; Twin Socket outlet, Weather Proof [7.46]; Single gang Lighting switch [8.96]; 2way Single gang Lighting switch [2.99]; 36W LED linear Pendant lighting [20.9]; 36W LED Emergency linear Pendant lighting [8.96]; 13W recess mounted LED down light fitting [11.94]; 13W recess emergency mounted LED down light fitting with 1.5 Hr Battery [8.96]; 10.4W LED Exit light with 1.5 Hr Battery [4.48]; Unskilled Labor [40 h]; Electrical Technician [80 h] |
| 3 | **Fire Detection And Alarm System** | 2026-11-12 → 2027-03-01 (+109d) | 2027-01-02 → 2027-04-26 (+114d) |  |  |  |  |
| A1340 | Install of 2C x 1.5 Sqm FR Rated Armored - Cable For Loop Wiring | 2026-11-12 → 2027-03-01 (+109d) | 2026-11-17 → 2027-03-08 (+111d) |  | 46d → -43d |  | resources Unskilled Labor [40 h]; Electrical Technician [80 h]; 2C x 1.5 Sqm FR Rated Armored - Cable For Loop Wiring [2686.57]; DACT (Auto - Dailer) for 24x7 Civil Defence [1.49] → 2C x 1.5 Sqm FR Rated Armored - Cable For Loop Wiring [2686.57]; DACT (Auto - Dailer) for 24x7 Civil Defence [1.49]; Unskilled Labor [40 h]; Electrical Technician [80 h] |
| A1350 | Install of Transmission Communication cable - Fiber Optics 12Core | 2026-11-18 → 2027-03-13 (+115d) | 2026-11-23 → 2027-03-17 (+114d) |  | 46d → -43d |  | resources Unskilled Labor [40 h]; Electrical Technician [80 h]; Transmission Communication cable - Fiber Optics 12Core [3731.34]; Transmission Communication cable - Ethernet Cable [746.27]; Supply, install to site and installation of power cable [2388.06]; Fire Fighter s Telephone Centre [1.49]; Fireman s Telephone Jack [2.99]; Voice Command Center [1.49] → Transmission Communication cable - Fiber Optics 12Core [3731.34]; Transmission Communication cable - Ethernet Cable [746.27]; Supply, install to site and installation of power cable [2388.06]; Fire Fighter’s Telephone Centre [1.49]; Fireman’s Telephone Jack [2.99]; Voice Command Center [1.49]; Unskilled Labor [40 h]; Electrical Technician [80 h] |
| A1360 | Install of power supply system for fire alarm control panel | 2026-12-09 → 2027-04-03 (+115d) | 2026-12-14 → 2027-04-07 (+114d) |  | 33d → -56d |  | resources Unskilled Labor [40 h]; Electrical Technician [80 h]; Supply, install to site and installation of power supply system for fire alarm control panel [1.49] → Supply, install to site and installation of power supply system for fire alarm control panel [1.49]; Unskilled Labor [40 h]; Electrical Technician [80 h] |
| A1280 | Install of Fire Alarm Control panel | 2026-12-15 → 2027-04-08 (+114d) | 2026-12-21 → 2027-04-14 (+114d) |  | 33d → -56d |  | resources Unskilled Labor [48 h]; Electrical Technician [96 h]; Fire Alarm Control panel with fire alarm zoning with Mimic panel with fire alarm zoning [5.97]; Main Fire Alarm Control panel with fire alarm zoning with Mimic panel with fire alarm zoning [1.49] → Fire Alarm Control panel with fire alarm zoning with Mimic panel with fire alarm zoning [5.97]; Main Fire Alarm Control panel with fire alarm zoning with Mimic panel with fire alarm zoning [1.49]; Unskilled Labor [48 h]; Electrical Technician [96 h] |
| A1290 | Installation of the addressable manual call point with operation safety glass breaking | 2026-12-22 → 2027-04-15 (+114d) | 2026-12-24 → 2027-04-18 (+115d) |  | 33d → -56d |  | resources Unskilled Labor [24 h]; Electrical Technician [48 h]; Supply and installation of the addressable manual call point with operation safety glass breaking and pushbutton [25.37] → Supply and installation of the addressable manual call point with operation safety glass breaking and pushbutton [25.37]; Unskilled Labor [24 h]; Electrical Technician [48 h] |
| A1300 | Install of the photoelectric heat & smoke detector | 2026-12-26 → 2027-04-19 (+114d) | 2026-12-28 → 2027-04-21 (+114d) |  | 33d → -56d |  | resources Unskilled Labor [24 h]; Electrical Technician [48 h]; Supply and installation of the photoelectric heat & smoke detector with base [61.19] → Supply and installation of the photoelectric heat & smoke detector with base [61.19]; Unskilled Labor [24 h]; Electrical Technician [48 h] |
| A1310 | Install of Sounder With Beacon | 2026-12-26 → 2027-04-19 (+114d) | 2026-12-28 → 2027-04-21 (+114d) |  | 33d → -56d |  | resources Unskilled Labor [24 h]; Electrical Technician [48 h]; Sounder With Beacon [29.85] → Sounder With Beacon [29.85]; Unskilled Labor [24 h]; Electrical Technician [48 h] |
| A1320 | Install of Addressable Control module | 2026-12-29 → 2027-04-22 (+114d) | 2027-01-02 → 2027-04-26 (+114d) |  | 33d → -56d |  | resources Unskilled Labor [32 h]; Electrical Technician [64 h]; Addressable Control module for Sounders [29.85]; Addressable Control module for HVAC System [2.99]; Addressable Monitor module for HVAC System [2.99] → Addressable Control module for Sounders [29.85]; Addressable Control module for HVAC System [2.99]; Addressable Monitor module for HVAC System [2.99]; Unskilled Labor [32 h]; Electrical Technician [64 h] |
| 2 | **Security System** | 2026-12-12 → 2027-04-05 (+114d) | 2027-01-14 → 2027-05-09 (+115d) |  |  |  |  |
| A1580 | Install 8 Port Industrial PoE Switch 10/100BaseT (0 deg to +70 deg. Celsius) | 2026-12-12 → 2027-04-05 (+114d) | 2026-12-16 → 2027-04-10 (+115d) |  | 25d → -64d |  | resources Unskilled Labor [48 h]; Electrical Technician [96 h]; 8 Port Industrial PoE Switch 10/100BaseT (0 deg to +70 deg. Celsius) [46.27] → 8 Port Industrial PoE Switch 10/100BaseT (0 deg to +70 deg. Celsius) [46.27]; Unskilled Labor [48 h]; Electrical Technician [96 h] |
| A1590 | Optical Fiber,48 Core Splice Closure | 2026-12-17 → 2027-04-11 (+115d) | 2026-12-20 → 2027-04-13 (+114d) |  | 26d → -63d |  | resources Unskilled Labor [24 h]; Electrical Technician [48 h]; 06C Optical Fiber SM [3738.81]; 48C Optical Fiber SM [10462.7]; 48 Core Splice Closure [10.45] → 06C Optical Fiber SM [3738.81]; 48C Optical Fiber SM [10462.7]; 48 Core Splice Closure [10.45]; Unskilled Labor [24 h]; Electrical Technician [48 h] |
| A1650 | Pole/Bollard mounted IP( PoE) and 12U rack dimension | 2026-12-17 → 2027-04-11 (+115d) | 2026-12-21 → 2027-04-14 (+114d) |  | 25d → -64d |  | resources Unskilled Labor [32 h]; Electrical Technician [64 h]; Pole/Bollard mounted IP( PoE), Automatic Number Plate Recognition (ANPR, camera, 5MP,IP 66, IR illumin [8.96]; 12U rack dimension (W x H x L) 600 x 625 x 600 mm [1.49] → Pole/Bollard mounted IP( PoE), Automatic Number Plate Recognition (ANPR, camera, 5MP,IP 66, IR illumin [8.96]; 12U rack dimension (W x H x L) 600 x 625 x 600 mm [1.49]; Unskilled Labor [32 h]; Electrical Technician [64 h] |
| A1600 | Boom Barrier at Security Guard Room | 2026-12-22 → 2027-04-15 (+114d) | 2026-12-27 → 2027-04-20 (+114d) |  | 25d → -64d |  | resources Unskilled Labor [48 h]; Electrical Technician [96 h]; Magnetic Control Access barrier, Automatic Vehicular Barriers to be installed on ground with magnetic access [8.96]; Boom Barrier at Security Guard Room [8.96] → Magnetic Control Access barrier, Automatic Vehicular Barriers to be installed on ground with magnetic access [8.96]; Boom Barrier at Security Guard Room [8.96]; Unskilled Labor [48 h]; Electrical Technician [96 h] |
| A1610 | Pedestrian turnstile at Security Guard Room | 2026-12-28 → 2027-04-21 (+114d) | 2027-01-02 → 2027-04-26 (+114d) |  | 25d → -64d |  | resources Unskilled Labor [56 h]; Electrical Technician [112 h]; Pedestrian turnstile at Security Guard Room [8.96] → Pedestrian turnstile at Security Guard Room [8.96]; Unskilled Labor [56 h]; Electrical Technician [112 h] |
| A1620 | Access Control Unit and Access Card Reader | 2027-01-03 → 2027-04-27 (+114d) | 2027-01-06 → 2027-05-01 (+115d) |  | 25d → -64d |  | resources Unskilled Labor [32 h]; Electrical Technician [64 h]; Access Control Unit [4.48]; Access Card Reader [4.48] → Access Control Unit [4.48]; Access Card Reader [4.48]; Unskilled Labor [32 h]; Electrical Technician [64 h] |
| A1630 | Magnetic Lock and Break Glass and Exit Push button | 2027-01-07 → 2027-05-02 (+115d) | 2027-01-11 → 2027-05-05 (+114d) |  | 25d → -64d |  | resources Unskilled Labor [40 h]; Electrical Technician [80 h]; Magnetic Lock [4.48]; Break Glass [4.48]; Exit Push button [4.48] → Magnetic Lock [4.48]; Break Glass [4.48]; Exit Push button [4.48]; Unskilled Labor [40 h]; Electrical Technician [80 h] |
| A1640 | Door Sensor and Biometrics Reader | 2027-01-12 → 2027-05-06 (+114d) | 2027-01-14 → 2027-05-09 (+115d) |  | 25d → -64d |  | resources Unskilled Labor [24 h]; Electrical Technician [48 h]; Door Sensor [4.48]; Biometrics Reader [2.99] → Door Sensor [4.48]; Biometrics Reader [2.99]; Unskilled Labor [24 h]; Electrical Technician [48 h] |
| 2 | **Furnitures work** | 2027-01-16 → 2027-05-10 (+114d) | 2027-01-20 → 2027-05-20 (+120d) |  |  |  |  |
| A1100 | Office Chairs,Tables and Stand | 2027-01-16 → 2027-05-10 (+114d) | 2027-01-20 → 2027-05-20 (+120d) |  | 25d → -64d |  | resources Unskilled Labor [40 h]; Skilled Labor [80 h]; Office Chairs [5.97]; Office Tables [5.97]; Guard Stand [2.99] → Office Chairs [5.97]; Office Tables [5.97]; Guard Stand [2.99]; Unskilled Labor [40 h]; Skilled Labor [80 h] |
| 2 | **Fence Work** |  | 2027-02-23 → 2027-05-03 (+69d) |  |  |  |  |
| 1 | **Northern Fence N01:N03** |  | 2027-01-17 → 2027-01-21 (+4d) |  |  |  |  |
| 1 | **Civil Work** |  | 2026-09-01 → 2026-10-22 (+51d) |  |  |  |  |
| CO-SU-FE-N-CI-100 | Excavation Work For Northern Fence | 2026-07-28 A | 2026-08-01 A | 0% → 100% | -0.15d → none | ENG-SH-GR-A-200_R, PRO-FE-CV-DL-80 SS+3d, CO-EW-110_R SS+5d, PRO-FE-CV-MF-60 SS → ENG-SH-GR-A-200_R, PRO-FE-CV-DL-80 SS+3d, CO-EW-110_R SS+5d |  |
| CO-SU-FE-N-CI-110 | Pouring for Plain Concrete Northern Fence | 2026-08-02 A | 2026-08-05 → 2026-10-10 (+66d) | 0% → 95% | -0.15d → -42d |  | resources Unskilled Labor [96 h]; Carpenter [48 h]; Steel Fixer [48 h]; 100 mm thickness lean concrete under the foundation [189.96] → 100 mm thickness lean concrete under the foundation [189.96]; Unskilled Labor [96 h]; Carpenter [48 h]; Steel Fixer [48 h] |
| CO-SU-FE-N-CI-120 | Pouring R.C Footing For Northern Fence | 2026-08-05 → 2026-08-02 A (-3d) | 2026-08-12 → 2026-10-12 (+61d) | 0% → 85% | -0.15d → -42d | CO-SU-FE-N-CI-110 → CO-SU-FE-N-CI-110 SS | resources Unskilled Labor [320 h]; Carpenter [160 h]; Steel Fixer [160 h]; Foundation [2477.61]; Slab on Grade → Foundation [2477.61]; Slab on Grade; Unskilled Labor [320 h]; Carpenter [160 h]; Steel Fixer [160 h] |
| CO-SU-FE-N-CI-130 | Pouring R.C Columns For Northern Fence | 2026-08-12 → 2026-10-13 (+62d) | 2026-08-18 → 2026-10-18 (+61d) |  | -0.15d → -42d | CO-SU-FE-N-CI-120 → CO-SU-FE-N-CI-120, CO-SU-FE-N-CI-100 | resources Unskilled Labor [160 h]; Carpenter [80 h]; Steel Fixer [80 h]; Walls [564.18]; Columns [49.53] → Walls [564.18]; Columns [49.53]; Unskilled Labor [160 h]; Carpenter [80 h]; Steel Fixer [80 h] |
| CO-SU-FE-N-CI-140 | Pouring Beams For Northern Fence | 2026-08-29 → 2026-10-19 (+51d) | 2026-09-01 → 2026-10-22 (+51d) |  | 0.35d → -16d | CO-SU-FE-N-CI-130, CO-SU-FE-N-AR-100 → CO-SU-FE-N-CI-130, CO-SU-FE-N-AR-100, CO-SU-FE-WP1-CI-150 | resources Unskilled Labor [128 h]; Carpenter [64 h]; Steel Fixer [64 h]; Beams [36.36] → Beams [36.36]; Unskilled Labor [128 h]; Carpenter [64 h]; Steel Fixer [64 h] |
| 5 | **Finishing Work** | 2026-08-18 → 2026-09-29 (+42d) | 2027-01-17 → 2027-01-21 (+4d) |  |  |  |  |
| 3 | **Electrical Work** | 2026-08-29 → 2026-10-19 (+51d) | 2026-12-09 → 2027-01-21 (+43d) |  |  |  |  |
| CO-SU-FE-N-EL-100 | Trench excavation to receive 2 nos 50mm diameter PVC Conduit | 2026-08-29 → 2026-10-19 (+51d) | 2026-09-06 → 2026-10-27 (+51d) |  | 1d → -42d |  | resources Unskilled Labor [80 h]; Electrical Technician [160 h]; Trench excavation to receive 2 nos 50mm diameter PVC Conduit, sand bedding and embedded with sa [475.58] → Trench excavation to receive 2 nos 50mm diameter PVC Conduit, sand bedding and embedded with sa [475.58]; Unskilled Labor [80 h]; Electrical Technician [160 h] |
| CO-SU-FE-N-EL-110 | Trench excavation to receive 3 nos 50mm diameter PVC Conduit | 2026-08-29 → 2026-10-19 (+51d) | 2026-09-06 → 2026-10-27 (+51d) |  | 1d → -42d |  | resources Unskilled Labor [80 h]; Electrical Technician [160 h]; 800mm depth minimum Trench excavation to receive 3 nos 50mm diameter PVC Conduit with spacer, sand bedding an [203.53] → 800mm depth minimum Trench excavation to receive 3 nos 50mm diameter PVC Conduit with spacer, sand bedding an [203.53]; Unskilled Labor [80 h]; Electrical Technician [160 h] |
| CO-SU-FE-N-EL-120 | Fixing of Control cable,CAT6A cable | 2026-09-07 → 2026-10-28 (+51d) | 2026-09-16 → 2026-11-07 (+52d) |  | 1d → -42d |  | resources Unskilled Labor [96 h]; Electrical Technician [192 h]; Control cable [421.98]; CAT6A cable [421.98] → Control cable [421.98]; CAT6A cable [421.98]; Unskilled Labor [96 h]; Electrical Technician [192 h] |
| CO-SU-FE-N-EL-130 | Install 800mm x 800mm x 800mm height concrete handhole | 2026-09-07 → 2026-10-28 (+51d) | 2026-09-16 → 2026-11-07 (+52d) |  | 1d → -42d |  | resources Unskilled Labor [96 h]; Electrical Technician [192 h]; Supply and install 800mm x 800mm x 800mm height concrete handhole with bituminous paint all aroun [2.58] → Supply and install 800mm x 800mm x 800mm height concrete handhole with bituminous paint all aroun [2.58]; Unskilled Labor [96 h]; Electrical Technician [192 h] |
| CO-SU-FE-N-EL-140 | Hot dipped galvanized cable conduits for CAT6A cable and Control Cables embedded to wall | 2026-09-07 → 2026-10-28 (+51d) | 2026-09-15 → 2026-11-05 (+51d) |  | 2d → -41d |  | resources Unskilled Labor [88 h]; Electrical Technician [176 h]; Hot dipped galvanized cable conduits for CAT6A cable and Control Cables embedded to wall [56.99]; 400V, 3PH, 60Hz lighting control panel (LCP-02) [0.14] → Hot dipped galvanized cable conduits for CAT6A cable and Control Cables embedded to wall [56.99]; 400V, 3PH, 60Hz lighting control panel (LCP-02) [0.14]; Unskilled Labor [88 h]; Electrical Technician [176 h] |
| CO-SU-FE-N-EL-150 | Fixing Earthing Work (Earth Pit,Grounding rod,Tinned Copper wire) | 2026-09-17 → 2026-11-08 (+52d) | 2026-09-27 → 2026-11-16 (+50d) |  | 1d → -42d |  | resources Unskilled Labor [128 h]; Electrical Technician [256 h]; Earth Pit [2.31]; Grounding rod 20mmX3m [1.22]; Grounding rod with Pit 20mmX3m [0.54]; Earthing Bar [0.41]; 120mm2 Tinned copper wire [27.14] → Earth Pit [2.31]; Grounding rod 20mmX3m [1.22]; Grounding rod with Pit 20mmX3m [0.54]; Earthing Bar [0.41]; 120mm2 Tinned copper wire [27.14]; Unskilled Labor [128 h]; Electrical Technician [256 h] |
| CO-SU-FE-N-EL-160 | Field Equipment Cabinet enclosed outdoor complete with precast concrete footing, | 2026-09-28 → 2026-11-17 (+50d) | 2026-10-06 → 2026-11-25 (+50d) |  | 1d → -42d |  | resources Unskilled Labor [80 h]; Electrical Technician [160 h]; Field Equipment Cabinet enclosed outdoor complete with precast concrete footing, suitable for parame [2.58] → Field Equipment Cabinet enclosed outdoor complete with precast concrete footing, suitable for parame [2.58]; Unskilled Labor [80 h]; Electrical Technician [160 h] |
| CO-SU-FE-N-EL-170 | Fence Lightining 400V, 3PH, 60Hz lighting control panelï¿½ (LCP-02) | 2026-09-28 → 2026-11-17 (+50d) | 2026-10-06 → 2026-11-25 (+50d) |  | 1d → -42d |  | was named Fence Lightining 400V, 3PH, 60Hz lighting control panel (LCP-02) |
| CO-SU-FE-N-EL-180 | Install of direct buried armored cable 4C-16mm2 ,10mm2 | 2026-10-07 → 2026-11-26 (+50d) | 2026-10-17 → 2026-12-06 (+50d) |  | 1d → -42d |  | resources Unskilled Labor [72 h]; Electrical Technician [144 h]; 4C-16mm2 CU/XLPE/PVC direct buried armored cable [176.39]; 4C-10mm2 CU/XLPE/PVC direct buried armored cable [115.33] → 4C-16mm2 CU/XLPE/PVC direct buried armored cable [176.39]; 4C-10mm2 CU/XLPE/PVC direct buried armored cable [115.33]; Unskilled Labor [72 h]; Electrical Technician [144 h] |
| CO-SU-FE-N-EL-190 | Install 16mm2,10mm2 CU/PVC wire | 2026-10-07 → 2026-11-26 (+50d) | 2026-10-17 → 2026-12-06 (+50d) |  | 1d → -42d |  | resources Unskilled Labor [72 h]; Electrical Technician [144 h]; 16mm2 CU/PVC wire [176.39]; 10mm2 CU/PVC wire [115.33] → 16mm2 CU/PVC wire [176.39]; 10mm2 CU/PVC wire [115.33]; Unskilled Labor [72 h]; Electrical Technician [144 h] |
| CO-SU-FE-N-EL-200 | FEC-CCTV ( 4C-16mm2 CU/XLPE/PVC direct buried armored cable,16mm2 CU/PVC wire | 2026-10-07 → 2026-11-26 (+50d) | 2026-10-15 → 2026-12-05 (+51d) |  | 2d → -41d |  | resources Unskilled Labor [64 h]; Electrical Technician [128 h]; 4C-16mm2 CU/XLPE/PVC direct buried armored cable [553.6]; 16mm2 CU/PVC wire [553.6] → 4C-16mm2 CU/XLPE/PVC direct buried armored cable [553.6]; 16mm2 CU/PVC wire [553.6]; Unskilled Labor [64 h]; Electrical Technician [128 h] |
| CO-SU-FE-N-EL-210 | Junction Box for lighting fixture | 2026-10-18 → 2026-12-07 (+50d) | 2026-10-26 → 2026-12-15 (+50d) |  | 3d → -40d |  | resources Unskilled Labor [64 h]; Electrical Technician [128 h]; Junction Box for lighting fixture [18.45] → Junction Box for lighting fixture [18.45]; Unskilled Labor [64 h]; Electrical Technician [128 h] |
| CO-SU-FE-N-EL-220 | IR Intrusion Detection System Quad Beams | 2026-11-22 → 2027-01-04 (+43d) | 2026-11-30 → 2027-01-12 (+43d) |  | 37d → 0d |  | resources Unskilled Labor [64 h]; Electrical Technician [128 h]; IR Intrusion Detection System Quad Beams (Tx & Rx) (SL-350 QDM) [8.14] → IR Intrusion Detection System Quad Beams (Tx & Rx) (SL-350 QDM) [8.14]; Unskilled Labor [64 h]; Electrical Technician [128 h] |
| CO-SU-FE-N-EL-230 | Install of 38W, 230V, 1PH, 60Hz fence, led linear uplight lighting, IP66 | 2026-11-22 → 2027-01-04 (+43d) | 2026-12-01 → 2027-01-13 (+43d) |  | 36d → -1d |  | resources Unskilled Labor [72 h]; Electrical Technician [144 h]; 38W, 230V, 1PH, 60Hz fence, led linear uplight lighting, IP66 [18.45] → 38W, 230V, 1PH, 60Hz fence, led linear uplight lighting, IP66 [18.45]; Unskilled Labor [72 h]; Electrical Technician [144 h] |
| CO-SU-FE-N-EL-240 | Install, fixings, testing and commissioning 80W LED | 2026-12-02 → 2027-01-14 (+43d) | 2026-12-09 → 2027-01-21 (+43d) |  | 36d → -1d |  | resources Unskilled Labor [56 h]; Electrical Technician [112 h]; Supply, Install, fixings, testing and commissioning 80W LED Projector waterproof DJ effect light including c [0.41] → Supply, Install, fixings, testing and commissioning 80W LED Projector waterproof DJ effect light including c [0.41]; Unskilled Labor [56 h]; Electrical Technician [112 h] |
| 4 | **Architictural work** | 2026-08-18 → 2026-09-29 (+42d) | 2027-01-17 → 2027-01-13 (-4d) |  |  |  |  |
| CO-SU-FE-N-AR-100 | Install Brick Work For Northern Fence | 2026-08-18 → 2026-09-29 A (+42d) | 2026-08-27 → 2026-10-18 (+52d) | 0% → 23% | 0.35d → -42d | CO-SU-FE-N-CI-130 → CO-SU-FE-N-CI-130 FF | resources Unskilled Labor [80 h]; Skilled Labor [160 h]; Common brickwork. 300mm thick; vertical straight wall complete with accessories. [1190.64]; Insulated brickwork. with expanded polystyrene 200mm thick; vertical straight wall complete with accessories .; Common brickwork. 150mm thick; vertical straight wall complete with accessories.; Two Layers of Bituminous Coating [5314.79]; 20x20 Approved Polysulfide Joint Sealant [56.31] → Common brickwork. 300mm thick; vertical straight wall complete with accessories. [1190.64]; Insulated brickwork. with expanded polystyrene 200mm thick; vertical straight wall complete with accessories .; Common brickwork. 150mm thick; vertical straight wall complete with accessories.; Two Layers of Bituminous Coating [5314.79]; 20x20 Approved Polysulfide Joint Sealant [56.31]; Unskilled Labor [80 h]; Skilled Labor [160 h] |
| CO-SU-FE-N-AR-110 | External plastering to walls and columns | 2026-10-18 → 2026-12-07 (+50d) | 2026-10-25 → 2026-12-14 (+50d) |  | 1d → -42d |  |  |
| CO-SU-FE-N-AR-120 | Install 50mm thick random cut stone cladding | 2026-10-26 → 2026-12-15 (+50d) | 2026-11-02 → 2026-12-22 (+50d) |  | 1d → -42d |  | resources Unskilled Labor [56 h]; Skilled Labor [112 h]; Supply and install 33mm thick Lexan cladding blue complete with necessary framings [151.28]; Supply and install 50mm thick random cut stone cladding complete with 600m [8659.7]; Supply and install External plastering to walls and columns min. 15mm thick with cement mortar of specified grade including [2274.76] → Supply and install 33mm thick Lexan cladding blue complete with necessary framings [151.28]; Supply and install 50mm thick random cut stone cladding complete with 600m [8659.7]; Supply and install External plastering to walls and columns min. 15mm thick with cement mortar of specified grade including [2274.76]; Unskilled Labor [56 h]; Skilled Labor [112 h] |
| CO-SU-FE-N-AR-130 | Install 2 coats of weatherproof paint at walls | 2026-11-03 → 2026-12-23 (+50d) | 2026-11-09 → 2026-12-29 (+50d) |  | 1d → -42d |  | resources Unskilled Labor [48 h]; Skilled Labor [96 h]; Supply and install 2 coats of weatherproof paint at walls including one prime coat and [2274.76] → Supply and install 2 coats of weatherproof paint at walls including one prime coat and [2274.76]; Unskilled Labor [48 h]; Skilled Labor [96 h] |
| CO-SU-FE-N-AR-140 | Install Stone coping 500mm,525mm | 2026-11-10 → 2026-12-30 (+50d) | 2026-11-14 → 2027-01-03 (+50d) |  | 1d → -42d |  | resources Unskilled Labor [32 h]; Skilled Labor [64 h]; Guard room coping 350mm [7.73]; Guard room coping 450mm [3.66]; Stone coping 500mm [346.68]; Stone coping 525mm [166.08] → Guard room coping 350mm [7.73]; Guard room coping 450mm [3.66]; Stone coping 500mm [346.68]; Stone coping 525mm [166.08]; Unskilled Labor [32 h]; Skilled Labor [64 h] |
| CO-SU-FE-N-AR-150 | Install MODON Signage | 2027-01-09 → 2027-01-06 (-3d) | 2027-01-17 → 2027-01-13 (-4d) |  | -0.15d → 2d |  | resources Unskilled Labor [56 h]; Skilled Labor [112 h]; Supply and install MODON Signage with Logo Type 1 [3.26]; Supply and install MODON Signage Type 2 [3.26]; Supply and install "Triangle Style" signage [7.46] → Supply and install MODON Signage with Logo Type 1 [3.26]; Supply and install MODON Signage Type 2 [3.26]; Supply and install "Triangle Style" signage [7.46]; Unskilled Labor [56 h]; Skilled Labor [112 h] |
| 2 | **Western Fence P1 ( W01:W06 )** | 2026-08-18 → 2026-08-02 (-16d) | 2027-01-26 → 2027-03-22 (+55d) |  |  |  |  |
| 1 | **Civil Work** | 2026-08-18 → 2026-08-02 (-16d) | 2026-11-01 → 2026-11-21 (+20d) |  |  |  |  |
| CO-SU-FE-WP1-CI-160 | Pouring for Plain Concrete Northern Fence | 2026-08-27 → 2026-08-02 A (-25d) | 2026-09-02 → 2026-10-11 (+39d) | 0% → 95% | -0.15d → -9d |  | resources Unskilled Labor [160 h]; Carpenter [80 h]; Steel Fixer [80 h]; 100 mm thickness lean concrete under the foundation [379.92] → 100 mm thickness lean concrete under the foundation [379.92]; Unskilled Labor [160 h]; Carpenter [80 h]; Steel Fixer [80 h] |
| CO-SU-FE-WP1-CI-170 | Pouring R.C Footing For Northern Fence | 2026-09-02 → 2026-08-02 A (-31d) | 2026-09-12 → 2026-10-22 (+40d) | 0% → 85% | -0.15d → -16d | CO-SU-FE-WP1-CI-160, CO-SU-FE-N-CI-140 → CO-SU-FE-WP1-CI-160 SS, CO-SU-FE-N-CI-140 FF | resources Unskilled Labor [480 h]; Carpenter [240 h]; Steel Fixer [240 h]; Foundation [1970.15]; Slab on Grade → Foundation [1970.15]; Slab on Grade; Unskilled Labor [480 h]; Carpenter [240 h]; Steel Fixer [240 h] |
| CO-SU-FE-WP1-CI-150 | Excavation Work For Northern Fence | 2026-08-18 A | 2026-08-27 A | 0% → 100% | -0.15d → none | CO-SU-FE-N-CI-120, CO-SU-FE-N-CI-130, CO-SU-FE-N-CI-130 FF → CO-SU-FE-N-CI-120 SS |  |
| CO-SU-FE-WP1-CI-180 | Pouring R.C Columns For Northern Fence | 2026-09-12 → 2026-09-17 A (+5d) | 2026-10-01 → 2026-11-01 (+31d) | 0% → 30% | -0.15d → -16d | CO-SU-FE-WP1-CI-170 → CO-SU-FE-WP1-CI-170 FF, CO-SU-FE-WP1-CI-150 FF, CO-SU-FE-WP1-CI-170 SS | resources Unskilled Labor [384 h]; Carpenter [192 h]; Steel Fixer [192 h]; Walls [531.89]; Columns [99.05] → Walls [531.89]; Columns [99.05]; Unskilled Labor [384 h]; Carpenter [192 h]; Steel Fixer [192 h] |
| CO-SU-FE-WP1-CI-190 | Pouring Beams For Northern Fence | 2026-10-12 → 2026-11-02 (+21d) | 2026-11-01 → 2026-11-21 (+20d) |  | 19.5d → 2d | CO-SU-FE-WP1-CI-180, CO-SU-FE-WP1-AR-160 → CO-SU-FE-WP1-CI-180, CO-SU-FE-WP1-AR-160, CO-SU-FE-WP2-CI-200 | resources Unskilled Labor [608 h]; Carpenter [304 h]; Steel Fixer [304 h]; Beams [72.73] → Beams [72.73]; Unskilled Labor [608 h]; Carpenter [304 h]; Steel Fixer [304 h] |
| 5 | **Finishing Work** | 2026-10-01 → 2026-09-29 (-2d) | 2027-01-26 → 2027-03-22 (+55d) |  |  |  |  |
| 3 | **Electrical Work** | 2026-10-12 → 2026-11-02 (+21d) | 2027-01-20 → 2027-03-22 (+61d) |  |  |  |  |
| CO-SU-FE-WP1-EL-260 | Trench excavation to receive 2 nos 50mm diameter PVC Conduit | 2026-10-12 → 2026-11-02 (+21d) | 2026-10-28 → 2026-11-17 (+20d) |  | 1.5d → -16d |  | resources Unskilled Labor [144 h]; Electrical Technician [288 h]; Trench excavation to receive 2 nos 50mm diameter PVC Conduit, sand bedding and embedded with sa [951.15] → Trench excavation to receive 2 nos 50mm diameter PVC Conduit, sand bedding and embedded with sa [951.15]; Unskilled Labor [144 h]; Electrical Technician [288 h] |
| CO-SU-FE-WP1-EL-320 | Trench excavation to receive 3 nos 50mm diameter PVC Conduit | 2026-10-12 → 2026-11-02 (+21d) | 2026-10-28 → 2026-11-17 (+20d) |  | 1.5d → -16d |  | resources Unskilled Labor [152 h]; Electrical Technician [304 h]; 800mm depth minimum Trench excavation to receive 3 nos 50mm diameter PVC Conduit with spacer, sand bedding an [407.06] → 800mm depth minimum Trench excavation to receive 3 nos 50mm diameter PVC Conduit with spacer, sand bedding an [407.06]; Unskilled Labor [152 h]; Electrical Technician [304 h] |
| CO-SU-FE-WP1-EL-300 | Fixing of Control cable,CAT6A cable | 2026-10-28 → 2026-11-18 (+21d) | 2026-11-14 → 2026-12-03 (+19d) |  | 1.5d → -16d |  | resources Unskilled Labor [112 h]; Electrical Technician [224 h]; Control cable [843.96]; CAT6A cable [843.96] → Control cable [843.96]; CAT6A cable [843.96]; Unskilled Labor [112 h]; Electrical Technician [224 h] |
| CO-SU-FE-WP1-EL-330 | Hot dipped galvanized cable conduits for CAT6A cable and Control Cables embedded to wall | 2026-10-28 → 2026-11-18 (+21d) | 2026-11-14 → 2026-12-03 (+19d) |  | 1.5d → -16d |  | resources Unskilled Labor [112 h]; Electrical Technician [224 h]; Hot dipped galvanized cable conduits for CAT6A cable and Control Cables embedded to wall [113.98]; 400V, 3PH, 60Hz lighting control panel (LCP-02) [0.27] → Hot dipped galvanized cable conduits for CAT6A cable and Control Cables embedded to wall [113.98]; 400V, 3PH, 60Hz lighting control panel (LCP-02) [0.27]; Unskilled Labor [112 h]; Electrical Technician [224 h] |
| CO-SU-FE-WP1-EL-310 | Install 800mm x 800mm x 800mm height concrete handhole | 2026-10-28 → 2026-12-16 (+49d) | 2026-11-14 → 2026-12-31 (+47d) |  | 1.5d → -40d |  | resources Unskilled Labor [128 h]; Electrical Technician [256 h]; Supply and install 800mm x 800mm x 800mm height concrete handhole with bituminous paint all aroun [5.16] → Supply and install 800mm x 800mm x 800mm height concrete handhole with bituminous paint all aroun [5.16]; Unskilled Labor [128 h]; Electrical Technician [256 h] |

| ID | Task | Start | Finish | Complete | Total float | Predecessors | Other |
| --- | --- | --- | --- | --- | --- | --- | --- |
| CO-SU-FE-WP1-EL-280 | Fixing Earthing Work (Earth Pit,Grounding rod,Tinned Copper wire) | 2026-11-15 → 2027-01-04 (+50d) | 2026-11-26 → 2027-01-16 (+51d) |  | 1d → -42d |  | resources Unskilled Labor [112 h]; Electrical Technician [224 h]; Earth Pit [4.61]; Grounding rod 20mmX3m [2.44]; Grounding rod with Pit 20mmX3m [1.09]; Earthing Bar [0.81]; 120mm2 Tinned copper wire [54.27] → Earth Pit [4.61]; Grounding rod 20mmX3m [2.44]; Grounding rod with Pit 20mmX3m [1.09]; Earthing Bar [0.81]; 120mm2 Tinned copper wire [54.27]; Unskilled Labor [112 h]; Electrical Technician [224 h] |
| CO-SU-FE-WP1-EL-340 | Field Equipment Cabinet enclosed outdoor complete with precast concrete footing, | 2026-11-28 → 2027-01-17 (+50d) | 2026-12-07 → 2027-01-26 (+50d) |  | 1d → -42d |  | resources Unskilled Labor [72 h]; Electrical Technician [144 h]; Field Equipment Cabinet enclosed outdoor complete with precast concrete footing, suitable for parame [5.16] → Field Equipment Cabinet enclosed outdoor complete with precast concrete footing, suitable for parame [5.16]; Unskilled Labor [72 h]; Electrical Technician [144 h] |
| CO-SU-FE-WP1-EL-350 | Fence Lightining 400V, 3PH, 60Hz lighting control panelï¿½ (LCP-02) | 2026-11-28 → 2027-01-17 (+50d) | 2026-12-07 → 2027-01-26 (+50d) |  | 1d → -42d |  | was named Fence Lightining 400V, 3PH, 60Hz lighting control panel (LCP-02) |
| CO-SU-FE-WP1-EL-360 | Install of direct buried armored cable 4C-16mm2 ,10mm2 | 2026-12-08 → 2027-01-27 (+50d) | 2026-12-16 → 2027-02-04 (+50d) |  | 2d → -41d |  | resources Unskilled Labor [80 h]; Electrical Technician [160 h]; 4C-16mm2 CU/XLPE/PVC direct buried armored cable [352.78]; 4C-10mm2 CU/XLPE/PVC direct buried armored cable [230.66] → 4C-16mm2 CU/XLPE/PVC direct buried armored cable [352.78]; 4C-10mm2 CU/XLPE/PVC direct buried armored cable [230.66]; Unskilled Labor [80 h]; Electrical Technician [160 h] |
| CO-SU-FE-WP1-EL-370 | Install 16mm2,10mm2 CU/PVC wire | 2026-12-08 → 2027-01-27 (+50d) | 2026-12-16 → 2027-02-04 (+50d) |  | 2d → -41d |  | resources Unskilled Labor [80 h]; Electrical Technician [160 h]; 16mm2 CU/PVC wire [352.78]; 10mm2 CU/PVC wire [230.66] → 16mm2 CU/PVC wire [352.78]; 10mm2 CU/PVC wire [230.66]; Unskilled Labor [80 h]; Electrical Technician [160 h] |
| CO-SU-FE-WP1-EL-390 | FEC-CCTV ( 4C-16mm2 CU/XLPE/PVC direct buried armored cable,16mm2 CU/PVC wire | 2026-12-08 → 2027-01-27 (+50d) | 2026-12-17 → 2027-02-06 (+51d) |  | 1d → -42d |  | resources Unskilled Labor [72 h]; Electrical Technician [144 h]; 4C-16mm2 CU/XLPE/PVC direct buried armored cable [1107.19]; 16mm2 CU/PVC wire [1107.19] → 4C-16mm2 CU/XLPE/PVC direct buried armored cable [1107.19]; 16mm2 CU/PVC wire [1107.19]; Unskilled Labor [72 h]; Electrical Technician [144 h] |
| CO-SU-FE-WP1-EL-250 | Junction Box for lighting fixture | 2026-12-17 → 2027-02-06 (+51d) | 2026-12-29 → 2027-02-21 (+54d) |  | 5d → -38d |  | resources Unskilled Labor [64 h]; Electrical Technician [128 h]; Junction Box for lighting fixture [36.91] → Junction Box for lighting fixture [36.91]; Unskilled Labor [64 h]; Electrical Technician [128 h] |
| CO-SU-FE-WP1-EL-290 | IR Intrusion Detection System Quad Beams | 2027-01-12 → 2027-03-14 (+61d) | 2027-01-16 → 2027-03-17 (+60d) |  | 1d → -42d |  | resources Unskilled Labor [56 h]; Electrical Technician [112 h]; IR Intrusion Detection System Quad Beams (Tx & Rx) (SL-350 QDM) [16.28] → IR Intrusion Detection System Quad Beams (Tx & Rx) (SL-350 QDM) [16.28]; Unskilled Labor [56 h]; Electrical Technician [112 h] |
| CO-SU-FE-WP1-EL-380 | Install of 38W, 230V, 1PH, 60Hz fence, led linear uplight lighting, IP66 | 2027-01-12 → 2027-03-14 (+61d) | 2027-01-16 → 2027-03-17 (+60d) |  | 4d → -39d |  | resources Unskilled Labor [56 h]; Electrical Technician [112 h]; 38W, 230V, 1PH, 60Hz fence, led linear uplight lighting, IP66 [36.91] → 38W, 230V, 1PH, 60Hz fence, led linear uplight lighting, IP66 [36.91]; Unskilled Labor [56 h]; Electrical Technician [112 h] |
| CO-SU-FE-WP1-EL-270 | Install, fixings, testing and commissioning 80W LED | 2027-01-17 → 2027-03-18 (+60d) | 2027-01-20 → 2027-03-22 (+61d) |  | 4d → -39d |  | resources Unskilled Labor [56 h]; Electrical Technician [112 h]; Supply, Install, fixings, testing and commissioning 80W LED Projector waterproof DJ effect light including c [0.81] → Supply, Install, fixings, testing and commissioning 80W LED Projector waterproof DJ effect light including c [0.81]; Unskilled Labor [56 h]; Electrical Technician [112 h] |
| 4 | **Architictural work** | 2026-10-01 → 2026-09-29 (-2d) | 2027-01-26 → 2027-03-22 (+55d) |  |  |  |  |
| CO-SU-FE-WP1-AR-160 | Install Brick Work For Northern Fence | 2026-10-01 → 2026-09-29 A (-2d) | 2026-10-12 → 2026-11-01 (+20d) | 0% → 23% | 1.5d → -16d | CO-SU-FE-WP1-CI-180 → CO-SU-FE-WP1-CI-180 FF, CO-SU-FE-WP1-CI-180 SS | resources Unskilled Labor [80 h]; Skilled Labor [160 h]; Common brickwork. 300mm thick; vertical straight wall complete with accessories. [2381.28]; Insulated brickwork. with expanded polystyrene 200mm thick; vertical straight wall complete with accessories .; Common brickwork. 150mm thick; vertical straight wall complete with accessories.; Two Layers of Bituminous Coating [10629.6]; 20x20 Approved Polysulfide Joint Sealant [112.62] → Common brickwork. 300mm thick; vertical straight wall complete with accessories. [2381.28]; Insulated brickwork. with expanded polystyrene 200mm thick; vertical straight wall complete with accessories .; Common brickwork. 150mm thick; vertical straight wall complete with accessories.; Two Layers of Bituminous Coating [10629.6]; 20x20 Approved Polysulfide Joint Sealant [112.62]; Unskilled Labor [80 h]; Skilled Labor [160 h] |
| CO-SU-FE-WP1-AR-170 | External plastering to walls and columns | 2026-12-19 → 2027-02-07 (+50d) | 2026-12-24 → 2027-02-15 (+53d) |  | 1d → -42d |  |  |
| CO-SU-FE-WP1-AR-180 | Install 50mm thick random cut stone cladding | 2026-12-26 → 2027-02-15 (+51d) | 2026-12-30 → 2027-02-22 (+54d) |  | 1d → -42d |  | resources Unskilled Labor [56 h]; Skilled Labor [112 h]; Supply and install 33mm thick Lexan cladding blue complete with necessary framings [302.57]; Supply and install 50mm thick random cut stone cladding complete with 600m [900]; Supply and install External plastering to walls and columns min. 15mm thick with cement mortar of specified grade including [4549.53] → Supply and install 33mm thick Lexan cladding blue complete with necessary framings [302.57]; Supply and install 50mm thick random cut stone cladding complete with 600m [900]; Supply and install External plastering to walls and columns min. 15mm thick with cement mortar of specified grade including [4549.53]; Unskilled Labor [56 h]; Skilled Labor [112 h] |
| CO-SU-FE-WP1-AR-190 | Install 2 coats of weatherproof paint at walls | 2026-12-31 → 2027-02-23 (+54d) | 2027-01-06 → 2027-03-03 (+56d) |  | 1d → -42d |  | resources Unskilled Labor [48 h]; Skilled Labor [96 h]; Supply and install 2 coats of weatherproof paint at walls including one prime coat and [4549.53] → Supply and install 2 coats of weatherproof paint at walls including one prime coat and [4549.53]; Unskilled Labor [48 h]; Skilled Labor [96 h] |
| CO-SU-FE-WP1-AR-200 | Install Stone coping 500mm,525mm | 2027-01-07 → 2027-03-04 (+56d) | 2027-01-11 → 2027-03-13 (+61d) |  | 1d → -42d |  | resources Unskilled Labor [32 h]; Skilled Labor [64 h]; Guard room coping 350mm [15.47]; Guard room coping 450mm [7.33]; Stone coping 500mm [693.35]; Stone coping 525mm [332.16] → Guard room coping 350mm [15.47]; Guard room coping 450mm [7.33]; Stone coping 500mm [693.35]; Stone coping 525mm [332.16]; Unskilled Labor [32 h]; Skilled Labor [64 h] |
| CO-SU-FE-WP1-AR-210 | Install MODON Signage | 2027-01-17 → 2027-03-14 (+56d) | 2027-01-26 → 2027-03-22 (+55d) |  | -0.15d → -39d |  | resources Unskilled Labor [48 h]; Skilled Labor [96 h]; Supply and install MODON Signage with Logo Type 1 [6.51]; Supply and install MODON Signage Type 2 [6.51]; Supply and install "Triangle Style" signage [14.93] → Supply and install MODON Signage with Logo Type 1 [6.51]; Supply and install MODON Signage Type 2 [6.51]; Supply and install "Triangle Style" signage [14.93]; Unskilled Labor [48 h]; Skilled Labor [96 h] |
| 3 | **Western Fence P2 ( W07:W12 )** | 2026-09-16 → 2026-08-02 (-45d) | 2027-02-04 → 2027-04-03 (+58d) |  |  |  |  |
| 1 | **Civil Work** | 2026-09-16 → 2026-08-02 (-45d) | 2026-11-09 → 2026-11-29 (+20d) |  |  |  |  |
| CO-SU-FE-WP2-CI-200 | Excavation Work For Northern Fence | 2026-09-16 → 2026-08-02 A (-45d) | 2026-09-22 → 2026-09-01 A (-21d) | 0% → 100% | -0.15d → none | CO-SU-FE-WP1-CI-170, CO-SU-FE-WP1-CI-180 SS+3.65d → CO-SU-FE-WP1-CI-170 SS |  |
| CO-SU-FE-WP2-CI-210 | Pouring for Plain Concrete Northern Fence | 2026-09-22 → 2026-08-02 A (-51d) | 2026-09-29 → 2026-10-19 (+20d) | 0% → 95% | -0.15d → 2d |  | resources Unskilled Labor [160 h]; Carpenter [80 h]; Steel Fixer [80 h]; 100 mm thickness lean concrete under the foundation [379.92] → 100 mm thickness lean concrete under the foundation [379.92]; Unskilled Labor [160 h]; Carpenter [80 h]; Steel Fixer [80 h] |
| CO-SU-FE-WP2-CI-220 | Pouring R.C Footing For Northern Fence | 2026-09-29 → 2026-08-02 A (-58d) | 2026-10-07 → 2026-10-21 (+14d) | 0% → 85% | -0.15d → 2d | CO-SU-FE-WP2-CI-210 → CO-SU-FE-WP2-CI-210 SS | resources Unskilled Labor [320 h]; Carpenter [160 h]; Steel Fixer [160 h]; Foundation [1970.15]; Slab on Grade → Foundation [1970.15]; Slab on Grade; Unskilled Labor [320 h]; Carpenter [160 h]; Steel Fixer [160 h] |
| CO-SU-FE-WP2-CI-230 | Pouring R.C Columns For Northern Fence | 2026-10-07 → 2026-09-19 A (-18d) | 2026-10-18 → 2026-10-24 (+6d) | 0% → 30% | -0.15d → 2d | CO-SU-FE-WP2-CI-220 → CO-SU-FE-WP2-CI-220 FF, CO-SU-FE-WP2-CI-220 SS | resources Unskilled Labor [288 h]; Carpenter [144 h]; Steel Fixer [144 h]; Walls [531.89]; Columns [99.05] → Walls [531.89]; Columns [99.05]; Unskilled Labor [288 h]; Carpenter [144 h]; Steel Fixer [144 h] |
| CO-SU-FE-WP2-CI-240 | Pouring Beams For Northern Fence | 2026-11-01 → 2026-11-22 (+21d) | 2026-11-09 → 2026-11-29 (+20d) |  | 19.5d → 2d |  | resources Unskilled Labor [224 h]; Carpenter [112 h]; Steel Fixer [112 h]; Beams [72.73] → Beams [72.73]; Unskilled Labor [224 h]; Carpenter [112 h]; Steel Fixer [112 h] |
| 5 | **Finishing Work** | 2026-10-18 → 2026-09-29 (-19d) | 2027-02-04 → 2027-04-03 (+58d) |  |  |  |  |
| 3 | **Electrical Work** | 2026-10-27 → 2026-10-25 (-2d) | 2027-02-01 → 2027-04-03 (+61d) |  |  |  |  |
| CO-SU-FE-WP2-EL-410 | Trench excavation to receive 2 nos 50mm diameter PVC Conduit | 2026-10-27 → 2026-10-25 (-2d) | 2026-11-01 → 2026-10-28 (-4d) |  | -0.15d → 2d |  | resources Unskilled Labor [32 h]; Electrical Technician [64 h]; Trench excavation to receive 2 nos 50mm diameter PVC Conduit, sand bedding and embedded with sa [951.15] → Trench excavation to receive 2 nos 50mm diameter PVC Conduit, sand bedding and embedded with sa [951.15]; Unskilled Labor [32 h]; Electrical Technician [64 h] |
| CO-SU-FE-WP2-EL-470 | Trench excavation to receive 3 nos 50mm diameter PVC Conduit | 2026-10-27 → 2026-10-25 (-2d) | 2026-11-03 → 2026-10-31 (-3d) |  | -0.15d → 2d |  | resources Unskilled Labor [48 h]; Electrical Technician [96 h]; 800mm depth minimum Trench excavation to receive 3 nos 50mm diameter PVC Conduit with spacer, sand bedding an [407.06] → 800mm depth minimum Trench excavation to receive 3 nos 50mm diameter PVC Conduit with spacer, sand bedding an [407.06]; Unskilled Labor [48 h]; Electrical Technician [96 h] |
| CO-SU-FE-WP2-EL-450 | Fixing of Control cable,CAT6A cable | 2026-11-03 → 2026-11-01 (-2d) | 2026-11-11 → 2026-11-08 (-3d) |  | -0.15d → 2d |  | resources Unskilled Labor [56 h]; Electrical Technician [112 h]; Control cable [843.96]; CAT6A cable [843.96] → Control cable [843.96]; CAT6A cable [843.96]; Unskilled Labor [56 h]; Electrical Technician [112 h] |
| CO-SU-FE-WP2-EL-460 | Install 800mm x 800mm x 800mm height concrete handhole | 2026-11-03 → 2026-11-01 (-2d) | 2026-11-10 → 2026-11-08 (-2d) |  | 0.05d → 2.2d |  | resources Unskilled Labor [56 h]; Electrical Technician [112 h]; Supply and install 800mm x 800mm x 800mm height concrete handhole with bituminous paint all aroun [5.16] → Supply and install 800mm x 800mm x 800mm height concrete handhole with bituminous paint all aroun [5.16]; Unskilled Labor [56 h]; Electrical Technician [112 h] |
| CO-SU-FE-WP2-EL-480 | Hot dipped galvanized cable conduits for CAT6A cable and Control Cables embedded to wall | 2026-11-03 → 2026-11-01 (-2d) | 2026-11-10 → 2026-11-07 (-3d) |  | 0.85d → 3d |  | resources Unskilled Labor [56 h]; Electrical Technician [112 h]; Hot dipped galvanized cable conduits for CAT6A cable and Control Cables embedded to wall [113.98]; 400V, 3PH, 60Hz lighting control panel (LCP-02) [0.27] → Hot dipped galvanized cable conduits for CAT6A cable and Control Cables embedded to wall [113.98]; 400V, 3PH, 60Hz lighting control panel (LCP-02) [0.27]; Unskilled Labor [56 h]; Electrical Technician [112 h] |
| CO-SU-FE-WP2-EL-430 | Fixing Earthing Work (Earth Pit,Grounding rod,Tinned Copper wire) | 2026-11-11 → 2026-11-09 (-2d) | 2026-11-18 → 2026-11-15 (-3d) |  | -0.15d → 2d |  | resources Unskilled Labor [48 h]; Electrical Technician [96 h]; Earth Pit [4.61]; Grounding rod 20mmX3m [2.44]; Grounding rod with Pit 20mmX3m [1.09]; Earthing Bar [0.81]; 120mm2 Tinned copper wire [54.27] → Earth Pit [4.61]; Grounding rod 20mmX3m [2.44]; Grounding rod with Pit 20mmX3m [1.09]; Earthing Bar [0.81]; 120mm2 Tinned copper wire [54.27]; Unskilled Labor [48 h]; Electrical Technician [96 h] |
| CO-SU-FE-WP2-EL-490 | Field Equipment Cabinet enclosed outdoor complete with precast concrete footing, | 2026-11-18 → 2026-11-16 (-2d) | 2026-11-23 → 2026-11-19 (-4d) |  | -0.15d → 2d |  | resources Unskilled Labor [32 h]; Electrical Technician [64 h]; Field Equipment Cabinet enclosed outdoor complete with precast concrete footing, suitable for parame [5.16] → Field Equipment Cabinet enclosed outdoor complete with precast concrete footing, suitable for parame [5.16]; Unskilled Labor [32 h]; Electrical Technician [64 h] |
| CO-SU-FE-WP2-EL-510 | Install of direct buried armored cable 4C-16mm2 ,10mm2 | 2026-11-23 → 2026-11-21 (-2d) | 2026-12-01 → 2026-11-29 (-2d) |  | 0.35d → 2.5d |  | resources Unskilled Labor [56 h]; Electrical Technician [112 h]; 4C-16mm2 CU/XLPE/PVC direct buried armored cable [352.78]; 4C-10mm2 CU/XLPE/PVC direct buried armored cable [230.66] → 4C-16mm2 CU/XLPE/PVC direct buried armored cable [352.78]; 4C-10mm2 CU/XLPE/PVC direct buried armored cable [230.66]; Unskilled Labor [56 h]; Electrical Technician [112 h] |
| CO-SU-FE-WP2-EL-520 | Install 16mm2,10mm2 CU/PVC wire | 2026-11-23 → 2026-11-21 (-2d) | 2026-12-01 → 2026-11-29 (-2d) |  | 0.35d → 2.5d |  | resources Unskilled Labor [56 h]; Electrical Technician [112 h]; 16mm2 CU/PVC wire [352.78]; 10mm2 CU/PVC wire [230.66] → 16mm2 CU/PVC wire [352.78]; 10mm2 CU/PVC wire [230.66]; Unskilled Labor [56 h]; Electrical Technician [112 h] |
| CO-SU-FE-WP2-EL-540 | FEC-CCTV ( 4C-16mm2 CU/XLPE/PVC direct buried armored cable,16mm2 CU/PVC wire | 2026-11-23 → 2026-11-21 (-2d) | 2026-12-02 → 2026-11-29 (-3d) |  | -0.15d → 2d |  | resources Unskilled Labor [64 h]; Electrical Technician [128 h]; 4C-16mm2 CU/XLPE/PVC direct buried armored cable [1107.19]; 16mm2 CU/PVC wire [1107.19] → 4C-16mm2 CU/XLPE/PVC direct buried armored cable [1107.19]; 16mm2 CU/PVC wire [1107.19]; Unskilled Labor [64 h]; Electrical Technician [128 h] |
| CO-SU-FE-WP2-EL-400 | Junction Box for lighting fixture | 2026-12-01 → 2026-11-29 (-2d) | 2026-12-05 → 2026-12-02 (-3d) |  | 14.35d → 16.5d |  | resources Unskilled Labor [24 h]; Electrical Technician [48 h]; Junction Box for lighting fixture [36.91] → Junction Box for lighting fixture [36.91]; Unskilled Labor [24 h]; Electrical Technician [48 h] |
| CO-SU-FE-WP2-EL-440 | IR Intrusion Detection System Quad Beams | 2027-01-17 → 2027-03-18 (+60d) | 2027-01-24 → 2027-03-25 (+60d) |  | 1d → -42d |  | resources Unskilled Labor [56 h]; Electrical Technician [112 h]; IR Intrusion Detection System Quad Beams (Tx & Rx) (SL-350 QDM) [16.28] → IR Intrusion Detection System Quad Beams (Tx & Rx) (SL-350 QDM) [16.28]; Unskilled Labor [56 h]; Electrical Technician [112 h] |
| CO-SU-FE-WP2-EL-530 | Install of 38W, 230V, 1PH, 60Hz fence, led linear uplight lighting, IP66 | 2027-01-17 → 2027-03-18 (+60d) | 2027-01-24 → 2027-03-25 (+60d) |  | 1d → -42d |  | resources Unskilled Labor [56 h]; Electrical Technician [112 h]; 38W, 230V, 1PH, 60Hz fence, led linear uplight lighting, IP66 [36.91] → 38W, 230V, 1PH, 60Hz fence, led linear uplight lighting, IP66 [36.91]; Unskilled Labor [56 h]; Electrical Technician [112 h] |
| CO-SU-FE-WP2-EL-420 | Install, fixings, testing and commissioning 80W LED | 2027-01-25 → 2027-03-27 (+61d) | 2027-02-01 → 2027-04-03 (+61d) |  | 1d → -42d |  | resources Unskilled Labor [56 h]; Electrical Technician [112 h]; Supply, Install, fixings, testing and commissioning 80W LED Projector waterproof DJ effect light including c [0.81] → Supply, Install, fixings, testing and commissioning 80W LED Projector waterproof DJ effect light including c [0.81]; Unskilled Labor [56 h]; Electrical Technician [112 h] |
| 4 | **Architictural work** | 2026-10-18 → 2026-09-29 (-19d) | 2027-02-04 → 2027-03-31 (+55d) |  |  |  |  |
| CO-SU-FE-WP2-AR-220 | Install Brick Work For Northern Fence | 2026-10-18 → 2026-09-29 A (-19d) | 2026-10-27 → 2026-10-24 (-3d) | 0% → 23% | -0.15d → 2d | CO-SU-FE-WP2-CI-230 → CO-SU-FE-WP2-CI-230 FF, CO-SU-FE-WP2-CI-230 SS | resources Unskilled Labor [160 h]; Skilled Labor [320 h]; Common brickwork. 300mm thick; vertical straight wall complete with accessories. [2381.28]; Insulated brickwork. with expanded polystyrene 200mm thick; vertical straight wall complete with accessories .; Common brickwork. 150mm thick; vertical straight wall complete with accessories.; Two Layers of Bituminous Coating [10629.6]; 20x20 Approved Polysulfide Joint Sealant [112.62] → Common brickwork. 300mm thick; vertical straight wall complete with accessories. [2381.28]; Insulated brickwork. with expanded polystyrene 200mm thick; vertical straight wall complete with accessories .; Common brickwork. 150mm thick; vertical straight wall complete with accessories.; Two Layers of Bituminous Coating [10629.6]; 20x20 Approved Polysulfide Joint Sealant [112.62]; Unskilled Labor [160 h]; Skilled Labor [320 h] |
| CO-SU-FE-WP2-AR-230 | External plastering to walls and columns | 2026-12-02 → 2026-11-30 (-2d) | 2026-12-12 → 2026-12-08 (-4d) |  | -0.15d → 2d |  |  |
| CO-SU-FE-WP2-AR-240 | Install 50mm thick random cut stone cladding | 2026-12-12 → 2026-12-09 (-3d) | 2026-12-21 → 2026-12-17 (-4d) |  | -0.15d → 2d |  | resources Unskilled Labor [120 h]; Skilled Labor [240 h]; Supply and install 33mm thick Lexan cladding blue complete with necessary framings [302.57]; Supply and install 50mm thick random cut stone cladding complete with 600m [5377.61]; Supply and install External plastering to walls and columns min. 15mm thick with cement mortar of specified grade including [4549.53] → Supply and install 33mm thick Lexan cladding blue complete with necessary framings [302.57]; Supply and install 50mm thick random cut stone cladding complete with 600m [5377.61]; Supply and install External plastering to walls and columns min. 15mm thick with cement mortar of specified grade including [4549.53]; Unskilled Labor [120 h]; Skilled Labor [240 h] |
| CO-SU-FE-WP2-AR-250 | Install 2 coats of weatherproof paint at walls | 2026-12-21 → 2026-12-19 (-2d) | 2026-12-30 → 2026-12-27 (-3d) |  | -0.15d → 2d |  | resources Unskilled Labor [80 h]; Skilled Labor [160 h]; Supply and install 2 coats of weatherproof paint at walls including one prime coat and [4549.53] → Supply and install 2 coats of weatherproof paint at walls including one prime coat and [4549.53]; Unskilled Labor [80 h]; Skilled Labor [160 h] |
| CO-SU-FE-WP2-AR-260 | Install Stone coping 500mm,525mm | 2026-12-30 → 2026-12-28 (-2d) | 2027-01-09 → 2027-01-05 (-4d) |  | -0.15d → 2d |  | resources Unskilled Labor [80 h]; Skilled Labor [160 h]; Guard room coping 350mm [15.47]; Guard room coping 450mm [7.33]; Stone coping 500mm [693.35]; Stone coping 525mm [332.16] → Guard room coping 350mm [15.47]; Guard room coping 450mm [7.33]; Stone coping 500mm [693.35]; Stone coping 525mm [332.16]; Unskilled Labor [80 h]; Skilled Labor [160 h] |
| CO-SU-FE-WP2-AR-270 | Install MODON Signage | 2027-01-26 → 2027-03-23 (+56d) | 2027-02-04 → 2027-03-31 (+55d) |  | -0.15d → -39d |  | resources Unskilled Labor [48 h]; Skilled Labor [96 h]; Supply and install MODON Signage with Logo Type 1 [6.51]; Supply and install MODON Signage Type 2 [6.51]; Supply and install "Triangle Style" signage [14.93] → Supply and install MODON Signage with Logo Type 1 [6.51]; Supply and install MODON Signage Type 2 [6.51]; Supply and install "Triangle Style" signage [14.93]; Unskilled Labor [48 h]; Skilled Labor [96 h] |
| 4 | **Southern Fence S01:S05** | 2026-08-03 → 2026-08-01 (-2d) | 2027-02-15 → 2027-04-11 (+55d) |  |  |  |  |
| 1 | **Civil Work** | 2026-08-03 → 2026-08-01 (-2d) | 2026-09-14 → 2026-11-05 (+52d) |  |  |  |  |
| CO-SU-FE-S-CI-250 | Excavation Work For Northern Fence | 2026-08-03 → 2026-08-01 A (-2d) | 2026-08-10 → 2026-08-09 A (-1d) | 0% → 100% | 32d → none | CO-EW-110_R, ENG-SH-GR-A-200_R, PRO-FE-CV-DL-80, PRO-FE-CV-MF-60 → ENG-SH-GR-A-200_R, CO-EW-110_R SS, PRO-FE-CV-DL-80 SS, CO-SU-FE-N-CI-100 |  |
| CO-SU-FE-S-CI-260 | Pouring for Plain Concrete Northern Fence | 2026-08-11 → 2026-08-02 A (-9d) | 2026-08-13 → 2026-10-08 (+56d) | 0% → 95% | 32d → 11d |  | resources Unskilled Labor [96 h]; Carpenter [48 h]; Steel Fixer [48 h]; 100 mm thickness lean concrete under the foundation [316.6] → 100 mm thickness lean concrete under the foundation [316.6]; Unskilled Labor [96 h]; Carpenter [48 h]; Steel Fixer [48 h] |
| CO-SU-FE-S-CI-270 | Pouring R.C Footing For Northern Fence | 2026-08-15 → 2026-08-02 A (-13d) | 2026-08-23 → 2026-10-14 (+52d) | 0% → 85% | 32d → 11d | CO-SU-FE-S-CI-260 → CO-SU-FE-S-CI-260 SS | resources Unskilled Labor [320 h]; Carpenter [160 h]; Steel Fixer [160 h]; Foundation [1641.79]; Slab on Grade → Foundation [1641.79]; Slab on Grade; Unskilled Labor [320 h]; Carpenter [160 h]; Steel Fixer [160 h] |
| CO-SU-FE-S-CI-280 | Pouring R.C Columns For Northern Fence | 2026-08-24 → 2026-10-15 (+52d) | 2026-09-03 → 2026-10-26 (+53d) |  | 49d → 11d |  | resources Unskilled Labor [160 h]; Carpenter [80 h]; Steel Fixer [80 h]; Walls [592.54]; Columns [82.54] → Walls [592.54]; Columns [82.54]; Unskilled Labor [160 h]; Carpenter [80 h]; Steel Fixer [80 h] |
| CO-SU-FE-S-CI-290 | Pouring Beams For Northern Fence | 2026-09-05 → 2026-10-27 (+52d) | 2026-09-14 → 2026-11-05 (+52d) |  | 49d → 20d |  | resources Unskilled Labor [128 h]; Carpenter [64 h]; Steel Fixer [64 h]; Beams [60.61] → Beams [60.61]; Unskilled Labor [128 h]; Carpenter [64 h]; Steel Fixer [64 h] |
| 5 | **Finishing Work** | 2026-09-05 → 2026-09-29 (+24d) | 2027-02-15 → 2027-04-11 (+55d) |  |  |  |  |
| 3 | **Electrical Work** | 2026-09-05 → 2026-10-20 (+45d) | 2027-02-10 → 2027-04-11 (+60d) |  |  |  |  |
| CO-SU-FE-S-EL-560 | Trench excavation to receive 2 nos 50mm diameter PVC Conduit | 2026-09-05 → 2026-10-20 (+45d) | 2026-09-21 → 2026-11-05 (+45d) |  | 49d → 11d |  | resources Unskilled Labor [32 h]; Electrical Technician [64 h]; Trench excavation to receive 2 nos 50mm diameter PVC Conduit, sand bedding and embedded with sa [792.63] → Trench excavation to receive 2 nos 50mm diameter PVC Conduit, sand bedding and embedded with sa [792.63]; Unskilled Labor [32 h]; Electrical Technician [64 h] |
| CO-SU-FE-S-EL-620 | Trench excavation to receive 3 nos 50mm diameter PVC Conduit | 2026-09-05 → 2026-10-20 (+45d) | 2026-09-21 → 2026-11-05 (+45d) |  | 49d → 11d |  | resources Unskilled Labor [48 h]; Electrical Technician [96 h]; 800mm depth minimum Trench excavation to receive 3 nos 50mm diameter PVC Conduit with spacer, sand bedding an [339.21] → 800mm depth minimum Trench excavation to receive 3 nos 50mm diameter PVC Conduit with spacer, sand bedding an [339.21]; Unskilled Labor [48 h]; Electrical Technician [96 h] |
| CO-SU-FE-S-EL-600 | Fixing of Control cable,CAT6A cable | 2026-09-22 → 2026-11-07 (+46d) | 2026-10-10 → 2026-11-23 (+44d) |  | 49d → 11d |  | resources Unskilled Labor [56 h]; Electrical Technician [112 h]; Control cable [703.3]; CAT6A cable [703.3] → Control cable [703.3]; CAT6A cable [703.3]; Unskilled Labor [56 h]; Electrical Technician [112 h] |
| CO-SU-FE-S-EL-610 | Install 800mm x 800mm x 800mm height concrete handhole | 2026-09-22 → 2026-11-07 (+46d) | 2026-10-10 → 2026-11-23 (+44d) |  | 49d → 11d |  | resources Unskilled Labor [56 h]; Electrical Technician [112 h]; Supply and install 800mm x 800mm x 800mm height concrete handhole with bituminous paint all aroun [4.3] → Supply and install 800mm x 800mm x 800mm height concrete handhole with bituminous paint all aroun [4.3]; Unskilled Labor [56 h]; Electrical Technician [112 h] |
| CO-SU-FE-S-EL-630 | Hot dipped galvanized cable conduits for CAT6A cable and Control Cables embedded to wall | 2026-09-22 → 2026-11-07 (+46d) | 2026-10-10 → 2026-11-23 (+44d) |  | 49d → 11d |  | resources Unskilled Labor [56 h]; Electrical Technician [112 h]; Hot dipped galvanized cable conduits for CAT6A cable and Control Cables embedded to wall [94.98]; 400V, 3PH, 60Hz lighting control panel (LCP-02) [0.23] → Hot dipped galvanized cable conduits for CAT6A cable and Control Cables embedded to wall [94.98]; 400V, 3PH, 60Hz lighting control panel (LCP-02) [0.23]; Unskilled Labor [56 h]; Electrical Technician [112 h] |
| CO-SU-FE-S-EL-580 | Fixing Earthing Work (Earth Pit,Grounding rod,Tinned Copper wire) | 2026-10-11 → 2026-11-24 (+44d) | 2026-10-17 → 2026-11-30 (+44d) |  | 49d → 11d |  | resources Unskilled Labor [48 h]; Electrical Technician [96 h]; Earth Pit [3.84]; Grounding rod 20mmX3m [2.04]; Grounding rod with Pit 20mmX3m [0.9]; Earthing Bar [0.68]; 120mm2 Tinned copper wire [45.23] → Earth Pit [3.84]; Grounding rod 20mmX3m [2.04]; Grounding rod with Pit 20mmX3m [0.9]; Earthing Bar [0.68]; 120mm2 Tinned copper wire [45.23]; Unskilled Labor [48 h]; Electrical Technician [96 h] |
| CO-SU-FE-S-EL-640 | Field Equipment Cabinet enclosed outdoor complete with precast concrete footing, | 2026-10-13 → 2026-11-26 (+44d) | 2026-10-17 → 2026-11-30 (+44d) |  | 49d → 11d |  | resources Unskilled Labor [32 h]; Electrical Technician [64 h]; Field Equipment Cabinet enclosed outdoor complete with precast concrete footing, suitable for parame [4.3] → Field Equipment Cabinet enclosed outdoor complete with precast concrete footing, suitable for parame [4.3]; Unskilled Labor [32 h]; Electrical Technician [64 h] |
| CO-SU-FE-S-EL-650 | Fence Lightining 400V, 3PH, 60Hz lighting control panelï¿½ (LCP-02) | 2026-10-13 → 2026-11-26 (+44d) | 2026-10-17 → 2026-11-30 (+44d) |  | 49d → 11d |  | was named Fence Lightining 400V, 3PH, 60Hz lighting control panel (LCP-02) |
| CO-SU-FE-S-EL-660 | Install of direct buried armored cable 4C-16mm2 ,10mm2 | 2026-10-13 → 2026-11-26 (+44d) | 2026-10-24 → 2026-12-07 (+44d) |  | 50d → 12d |  | resources Unskilled Labor [56 h]; Electrical Technician [112 h]; 4C-16mm2 CU/XLPE/PVC direct buried armored cable [293.98]; 4C-10mm2 CU/XLPE/PVC direct buried armored cable [192.22] → 4C-16mm2 CU/XLPE/PVC direct buried armored cable [293.98]; 4C-10mm2 CU/XLPE/PVC direct buried armored cable [192.22]; Unskilled Labor [56 h]; Electrical Technician [112 h] |
| CO-SU-FE-S-EL-670 | Install 16mm2,10mm2 CU/PVC wire | 2026-10-18 → 2026-12-01 (+44d) | 2026-10-24 → 2026-12-07 (+44d) |  | 50d → 12d |  | resources Unskilled Labor [56 h]; Electrical Technician [112 h]; 16mm2 CU/PVC wire [293.98]; 10mm2 CU/PVC wire [192.22] → 16mm2 CU/PVC wire [293.98]; 10mm2 CU/PVC wire [192.22]; Unskilled Labor [56 h]; Electrical Technician [112 h] |
| CO-SU-FE-S-EL-690 | FEC-CCTV ( 4C-16mm2 CU/XLPE/PVC direct buried armored cable,16mm2 CU/PVC wire | 2026-10-18 → 2026-12-01 (+44d) | 2026-10-25 → 2026-12-08 (+44d) |  | 49d → 11d |  | resources Unskilled Labor [56 h]; Electrical Technician [112 h]; 4C-16mm2 CU/XLPE/PVC direct buried armored cable [922.66]; 16mm2 CU/PVC wire [922.66] → 4C-16mm2 CU/XLPE/PVC direct buried armored cable [922.66]; 16mm2 CU/PVC wire [922.66]; Unskilled Labor [56 h]; Electrical Technician [112 h] |
| CO-SU-FE-S-EL-550 | Junction Box for lighting fixture | 2026-12-05 → 2026-12-08 (+3d) | 2026-12-13 → 2026-12-15 (+2d) |  | 14.35d → 12d |  | resources Unskilled Labor [24 h]; Electrical Technician [48 h]; Junction Box for lighting fixture [30.76] → Junction Box for lighting fixture [30.76]; Unskilled Labor [24 h]; Electrical Technician [48 h] |
| CO-SU-FE-S-EL-590 | IR Intrusion Detection System Quad Beams | 2027-01-09 → 2027-03-06 (+56d) | 2027-01-16 → 2027-03-17 (+60d) |  | 15d → -28d |  | resources Unskilled Labor [56 h]; Electrical Technician [112 h]; IR Intrusion Detection System Quad Beams (Tx & Rx) (SL-350 QDM) [13.57] → IR Intrusion Detection System Quad Beams (Tx & Rx) (SL-350 QDM) [13.57]; Unskilled Labor [56 h]; Electrical Technician [112 h] |
| CO-SU-FE-S-EL-680 | Install of 38W, 230V, 1PH, 60Hz fence, led linear uplight lighting, IP66 | 2027-01-25 → 2027-03-27 (+61d) | 2027-02-01 → 2027-04-03 (+61d) |  | 1d → -42d |  | resources Unskilled Labor [56 h]; Electrical Technician [112 h]; 38W, 230V, 1PH, 60Hz fence, led linear uplight lighting, IP66 [30.76] → 38W, 230V, 1PH, 60Hz fence, led linear uplight lighting, IP66 [30.76]; Unskilled Labor [56 h]; Electrical Technician [112 h] |

| ID | Task | Start | Finish | Complete | Total float | Predecessors | Other |
| --- | --- | --- | --- | --- | --- | --- | --- |
| CO-SU-FE-S-EL-570 | Install, fixings, testing and commissioning 80W LED | 2027-02-02 → 2027-04-04 (+61d) | 2027-02-10 → 2027-04-11 (+60d) |  | 1d → -42d |  | resources Unskilled Labor [56 h]; Electrical Technician [112 h]; Supply, Install, fixings, testing and commissioning 80W LED Projector waterproof DJ effect light including c [0.68] → Supply, Install, fixings, testing and commissioning 80W LED Projector waterproof DJ effect light including c [0.68]; Unskilled Labor [56 h]; Electrical Technician [112 h] |
| 4 | **Architictural work** | 2026-09-05 → 2026-09-29 (+24d) | 2027-02-15 → 2027-04-10 (+54d) |  |  |  |  |
| CO-SU-FE-S-AR-280 | Install Brick Work For Northern Fence | 2026-09-05 → 2026-09-29 A (+24d) | 2026-09-10 → 2026-10-26 (+46d) | 0% → 23% | 49d → 11d | CO-SU-FE-S-CI-280 → CO-SU-FE-S-CI-280 FF | resources Unskilled Labor [120 h]; Skilled Labor [240 h]; Common brickwork. 300mm thick; vertical straight wall complete with accessories. [1984.4]; Insulated brickwork. with expanded polystyrene 200mm thick; vertical straight wall complete with accessories .; Common brickwork. 150mm thick; vertical straight wall complete with accessories.; Two Layers of Bituminous Coating [8857.98]; 20x20 Approved Polysulfide Joint Sealant [93.85] → Common brickwork. 300mm thick; vertical straight wall complete with accessories. [1984.4]; Insulated brickwork. with expanded polystyrene 200mm thick; vertical straight wall complete with accessories .; Common brickwork. 150mm thick; vertical straight wall complete with accessories.; Two Layers of Bituminous Coating [8857.98]; 20x20 Approved Polysulfide Joint Sealant [93.85]; Unskilled Labor [120 h]; Skilled Labor [240 h] |
| CO-SU-FE-S-AR-290 | External plastering to walls and columns | 2026-10-26 → 2026-12-09 (+44d) | 2026-11-01 → 2026-12-15 (+44d) |  | 49d → 11d |  |  |
| CO-SU-FE-S-AR-300 | Install 50mm thick random cut stone cladding | 2026-11-02 → 2026-12-16 (+44d) | 2026-11-08 → 2026-12-22 (+44d) |  | 49d → 11d |  | resources Unskilled Labor [112 h]; Skilled Labor [224 h]; Supply and install 33mm thick Lexan cladding blue complete with necessary framings [252.14]; Supply and install 50mm thick random cut stone cladding complete with 600m [3237.31]; Supply and install External plastering to walls and columns min. 15mm thick with cement mortar of specified grade including [3791.27] → Supply and install 33mm thick Lexan cladding blue complete with necessary framings [252.14]; Supply and install 50mm thick random cut stone cladding complete with 600m [3237.31]; Supply and install External plastering to walls and columns min. 15mm thick with cement mortar of specified grade including [3791.27]; Unskilled Labor [112 h]; Skilled Labor [224 h] |
| CO-SU-FE-S-AR-310 | Install 2 coats of weatherproof paint at walls | 2026-12-30 → 2027-02-22 (+54d) | 2027-01-07 → 2027-03-06 (+58d) |  | 5d → -38d |  | resources Unskilled Labor [64 h]; Skilled Labor [128 h]; Supply and install 2 coats of weatherproof paint at walls including one prime coat and [3791.27] → Supply and install 2 coats of weatherproof paint at walls including one prime coat and [3791.27]; Unskilled Labor [64 h]; Skilled Labor [128 h] |
| CO-SU-FE-S-AR-320 | Install Stone coping 500mm,525mm | 2027-01-09 → 2027-03-06 (+56d) | 2027-01-19 → 2027-03-21 (+61d) |  | 5d → -38d |  | resources Unskilled Labor [80 h]; Skilled Labor [160 h]; Guard room coping 350mm [12.89]; Guard room coping 450mm [6.11]; Stone coping 500mm [577.79]; Stone coping 525mm [276.8] → Guard room coping 350mm [12.89]; Guard room coping 450mm [6.11]; Stone coping 500mm [577.79]; Stone coping 525mm [276.8]; Unskilled Labor [80 h]; Skilled Labor [160 h] |
| CO-SU-FE-S-AR-330 | Install MODON Signage | 2027-02-04 → 2027-04-01 (+56d) | 2027-02-15 → 2027-04-10 (+54d) |  | -0.15d → -39d |  | resources Unskilled Labor [48 h]; Skilled Labor [96 h]; Supply and install MODON Signage with Logo Type 1 [5.43]; Supply and install MODON Signage Type 2 [5.43]; Supply and install "Triangle Style" signage [12.44] → Supply and install MODON Signage with Logo Type 1 [5.43]; Supply and install MODON Signage Type 2 [5.43]; Supply and install "Triangle Style" signage [12.44]; Unskilled Labor [48 h]; Skilled Labor [96 h] |
| 5 | **Eastern Fence P1 ( E01:E06 )** | 2026-08-15 → 2026-08-02 (-13d) | 2027-02-20 → 2027-04-15 (+54d) |  |  |  |  |
| 1 | **Civil Work** | 2026-08-15 → 2026-08-02 (-13d) | 2026-10-26 → 2026-11-14 (+19d) |  |  |  |  |
| CO-SU-FE-EP1-CI-310 | Pouring for Plain Concrete Northern Fence | 2026-08-29 → 2026-08-02 A (-27d) | 2026-09-06 → 2026-10-14 (+38d) | 0% → 95% | 32d → 19d |  | resources Unskilled Labor [160 h]; Carpenter [80 h]; Steel Fixer [80 h]; 100 mm thickness lean concrete under the foundation [379.92] → 100 mm thickness lean concrete under the foundation [379.92]; Unskilled Labor [160 h]; Carpenter [80 h]; Steel Fixer [80 h] |
| CO-SU-FE-EP1-CI-320 | Pouring R.C Footing For Northern Fence | 2026-09-07 → 2026-08-02 A (-36d) | 2026-09-20 → 2026-10-19 (+29d) | 0% → 85% | 32d → 19d | CO-SU-FE-EP1-CI-310 → CO-SU-FE-EP1-CI-310 SS | resources Unskilled Labor [480 h]; Carpenter [240 h]; Steel Fixer [240 h]; Foundation [1970.15]; Slab on Grade → Foundation [1970.15]; Slab on Grade; Unskilled Labor [480 h]; Carpenter [240 h]; Steel Fixer [240 h] |
| CO-SU-FE-EP1-CI-300 | Excavation Work For Northern Fence | 2026-08-15 → 2026-08-12 A (-3d) | 2026-08-27 → 2026-08-26 A (-1d) | 0% → 100% | 32d → none |  |  |
| CO-SU-FE-EP1-CI-330 | Pouring R.C Columns For Northern Fence | 2026-09-21 → 2026-10-20 (+29d) | 2026-10-08 → 2026-11-05 (+28d) |  | 33d → 19d |  | resources Unskilled Labor [384 h]; Carpenter [192 h]; Steel Fixer [192 h]; Walls [382.09]; Columns [99.05] → Walls [382.09]; Columns [99.05]; Unskilled Labor [384 h]; Carpenter [192 h]; Steel Fixer [192 h] |
| CO-SU-FE-EP1-CI-340 | Pouring Beams For Northern Fence | 2026-10-19 → 2026-11-07 (+19d) | 2026-10-26 → 2026-11-14 (+19d) |  | 34d → 20d |  | resources Unskilled Labor [224 h]; Carpenter [112 h]; Steel Fixer [112 h]; Beams [72.73] → Beams [72.73]; Unskilled Labor [224 h]; Carpenter [112 h]; Steel Fixer [112 h] |
| 5 | **Finishing Work** | 2026-10-10 → 2026-09-29 (-11d) | 2027-02-20 → 2027-04-15 (+54d) |  |  |  |  |
| 3 | **Electrical Work** | 2026-10-19 → 2026-11-07 (+19d) | 2027-02-16 → 2027-04-15 (+58d) |  |  |  |  |
| CO-SU-FE-EP1-EL-710 | Trench excavation to receive 2 nos 50mm diameter PVC Conduit | 2026-10-19 → 2026-11-07 (+19d) | 2026-10-22 → 2026-11-10 (+19d) |  | 33d → 19d |  | resources Unskilled Labor [32 h]; Electrical Technician [64 h]; Trench excavation to receive 2 nos 50mm diameter PVC Conduit, sand bedding and embedded with sa [951.15] → Trench excavation to receive 2 nos 50mm diameter PVC Conduit, sand bedding and embedded with sa [951.15]; Unskilled Labor [32 h]; Electrical Technician [64 h] |
| CO-SU-FE-EP1-EL-770 | Trench excavation to receive 3 nos 50mm diameter PVC Conduit | 2026-10-19 → 2026-11-07 (+19d) | 2026-10-22 → 2026-11-10 (+19d) |  | 33d → 19d |  | resources Unskilled Labor [48 h]; Electrical Technician [96 h]; 800mm depth minimum Trench excavation to receive 3 nos 50mm diameter PVC Conduit with spacer, sand bedding an [407.06] → 800mm depth minimum Trench excavation to receive 3 nos 50mm diameter PVC Conduit with spacer, sand bedding an [407.06]; Unskilled Labor [48 h]; Electrical Technician [96 h] |
| CO-SU-FE-EP1-EL-750 | Fixing of Control cable,CAT6A cable | 2026-10-24 → 2026-11-11 (+18d) | 2026-10-27 → 2026-11-15 (+19d) |  | 33d → 19d |  | resources Unskilled Labor [56 h]; Electrical Technician [112 h]; Control cable [843.96]; CAT6A cable [843.96] → Control cable [843.96]; CAT6A cable [843.96]; Unskilled Labor [56 h]; Electrical Technician [112 h] |
| CO-SU-FE-EP1-EL-760 | Install 800mm x 800mm x 800mm height concrete handhole | 2026-10-24 → 2026-11-11 (+18d) | 2026-10-27 → 2026-11-15 (+19d) |  | 33d → 19d |  | resources Unskilled Labor [56 h]; Electrical Technician [112 h]; Supply and install 800mm x 800mm x 800mm height concrete handhole with bituminous paint all aroun [5.16] → Supply and install 800mm x 800mm x 800mm height concrete handhole with bituminous paint all aroun [5.16]; Unskilled Labor [56 h]; Electrical Technician [112 h] |
| CO-SU-FE-EP1-EL-780 | Hot dipped galvanized cable conduits for CAT6A cable and Control Cables embedded to wall | 2026-10-24 → 2026-11-11 (+18d) | 2026-10-27 → 2026-11-15 (+19d) |  | 33d → 19d |  | resources Unskilled Labor [56 h]; Electrical Technician [112 h]; Hot dipped galvanized cable conduits for CAT6A cable and Control Cables embedded to wall [113.98]; 400V, 3PH, 60Hz lighting control panel (LCP-02) [0.27] → Hot dipped galvanized cable conduits for CAT6A cable and Control Cables embedded to wall [113.98]; 400V, 3PH, 60Hz lighting control panel (LCP-02) [0.27]; Unskilled Labor [56 h]; Electrical Technician [112 h] |
| CO-SU-FE-EP1-EL-730 | Fixing Earthing Work (Earth Pit,Grounding rod,Tinned Copper wire) | 2026-10-28 → 2026-11-16 (+19d) | 2026-11-03 → 2026-11-22 (+19d) |  | 33d → 19d |  | resources Unskilled Labor [48 h]; Electrical Technician [96 h]; Earth Pit [4.61]; Grounding rod 20mmX3m [2.44]; Grounding rod with Pit 20mmX3m [1.09]; Earthing Bar [0.81]; 120mm2 Tinned copper wire [54.27] → Earth Pit [4.61]; Grounding rod 20mmX3m [2.44]; Grounding rod with Pit 20mmX3m [1.09]; Earthing Bar [0.81]; 120mm2 Tinned copper wire [54.27]; Unskilled Labor [48 h]; Electrical Technician [96 h] |
| CO-SU-FE-EP1-EL-790 | Field Equipment Cabinet enclosed outdoor complete with precast concrete footing, | 2026-11-04 → 2026-11-23 (+19d) | 2026-11-08 → 2026-11-26 (+18d) |  | 33d → 19d |  | resources Unskilled Labor [32 h]; Electrical Technician [64 h]; Field Equipment Cabinet enclosed outdoor complete with precast concrete footing, suitable for parame [5.16] → Field Equipment Cabinet enclosed outdoor complete with precast concrete footing, suitable for parame [5.16]; Unskilled Labor [32 h]; Electrical Technician [64 h] |
| CO-SU-FE-EP1-EL-800 | Fence Lightining 400V, 3PH, 60Hz lighting control panelï¿½ (LCP-02) | 2026-11-04 → 2026-11-23 (+19d) | 2026-11-08 → 2026-11-26 (+18d) |  | 33d → 19d |  | was named Fence Lightining 400V, 3PH, 60Hz lighting control panel (LCP-02) |
| CO-SU-FE-EP1-EL-810 | Install of direct buried armored cable 4C-16mm2 ,10mm2 | 2026-11-09 → 2026-11-28 (+19d) | 2026-11-12 → 2026-12-01 (+19d) |  | 35d → 19d |  | resources Unskilled Labor [56 h]; Electrical Technician [112 h]; 4C-16mm2 CU/XLPE/PVC direct buried armored cable [352.78]; 4C-10mm2 CU/XLPE/PVC direct buried armored cable [230.66] → 4C-16mm2 CU/XLPE/PVC direct buried armored cable [352.78]; 4C-10mm2 CU/XLPE/PVC direct buried armored cable [230.66]; Unskilled Labor [56 h]; Electrical Technician [112 h] |
| CO-SU-FE-EP1-EL-820 | Install 16mm2,10mm2 CU/PVC wire | 2026-11-09 → 2026-11-28 (+19d) | 2026-11-12 → 2026-12-01 (+19d) |  | 35d → 19d |  | resources Unskilled Labor [56 h]; Electrical Technician [112 h]; 16mm2 CU/PVC wire [352.78]; 10mm2 CU/PVC wire [230.66] → 16mm2 CU/PVC wire [352.78]; 10mm2 CU/PVC wire [230.66]; Unskilled Labor [56 h]; Electrical Technician [112 h] |
| CO-SU-FE-EP1-EL-840 | FEC-CCTV ( 4C-16mm2 CU/XLPE/PVC direct buried armored cable,16mm2 CU/PVC wire | 2026-11-09 → 2026-11-28 (+19d) | 2026-11-12 → 2026-12-01 (+19d) |  | 33d → 19d |  | resources Unskilled Labor [56 h]; Electrical Technician [112 h]; 4C-16mm2 CU/XLPE/PVC direct buried armored cable [1107.19]; 16mm2 CU/PVC wire [1107.19] → 4C-16mm2 CU/XLPE/PVC direct buried armored cable [1107.19]; 16mm2 CU/PVC wire [1107.19]; Unskilled Labor [56 h]; Electrical Technician [112 h] |
| CO-SU-FE-EP1-EL-700 | Junction Box for lighting fixture | 2026-12-13 → 2026-12-16 (+3d) | 2026-12-16 → 2026-12-19 (+3d) |  | 14.35d → 12d |  | resources Unskilled Labor [24 h]; Electrical Technician [48 h]; Junction Box for lighting fixture [36.91] → Junction Box for lighting fixture [36.91]; Unskilled Labor [24 h]; Electrical Technician [48 h] |
| CO-SU-FE-EP1-EL-740 | IR Intrusion Detection System Quad Beams | 2027-01-17 → 2027-03-18 (+60d) | 2027-01-20 → 2027-03-22 (+61d) |  | 18d → -25d |  | resources Unskilled Labor [56 h]; Electrical Technician [112 h]; IR Intrusion Detection System Quad Beams (Tx & Rx) (SL-350 QDM) [16.28] → IR Intrusion Detection System Quad Beams (Tx & Rx) (SL-350 QDM) [16.28]; Unskilled Labor [56 h]; Electrical Technician [112 h] |
| CO-SU-FE-EP1-EL-830 | Install of 38W, 230V, 1PH, 60Hz fence, led linear uplight lighting, IP66 | 2027-01-17 → 2027-03-18 (+60d) | 2027-01-20 → 2027-03-22 (+61d) |  | 18d → -25d |  | resources Unskilled Labor [56 h]; Electrical Technician [112 h]; 38W, 230V, 1PH, 60Hz fence, led linear uplight lighting, IP66 [36.91] → 38W, 230V, 1PH, 60Hz fence, led linear uplight lighting, IP66 [36.91]; Unskilled Labor [56 h]; Electrical Technician [112 h] |
| CO-SU-FE-EP1-EL-720 | Install, fixings, testing and commissioning 80W LED | 2027-02-10 → 2027-04-12 (+61d) | 2027-02-16 → 2027-04-15 (+58d) |  | 1d → -42d |  | resources Unskilled Labor [56 h]; Electrical Technician [112 h]; Supply, Install, fixings, testing and commissioning 80W LED Projector waterproof DJ effect light including c [0.81] → Supply, Install, fixings, testing and commissioning 80W LED Projector waterproof DJ effect light including c [0.81]; Unskilled Labor [56 h]; Electrical Technician [112 h] |
| 4 | **Architictural work** | 2026-10-10 → 2026-09-29 (-11d) | 2027-02-20 → 2027-04-13 (+52d) |  |  |  |  |
| CO-SU-FE-EP1-AR-340 | Install Brick Work For Northern Fence | 2026-10-10 → 2026-09-29 A (-11d) | 2026-10-18 → 2026-11-05 (+18d) | 0% → 23% | 33d → 19d | CO-SU-FE-EP1-CI-330 → CO-SU-FE-EP1-CI-330 FF | resources Unskilled Labor [80 h]; Skilled Labor [160 h]; Common brickwork. 300mm thick; vertical straight wall complete with accessories. [2381.28]; Insulated brickwork. with expanded polystyrene 200mm thick; vertical straight wall complete with accessories .; Common brickwork. 150mm thick; vertical straight wall complete with accessories.; Two Layers of Bituminous Coating [10629.6]; 20x20 Approved Polysulfide Joint Sealant [112.62] → Common brickwork. 300mm thick; vertical straight wall complete with accessories. [2381.28]; Insulated brickwork. with expanded polystyrene 200mm thick; vertical straight wall complete with accessories .; Common brickwork. 150mm thick; vertical straight wall complete with accessories.; Two Layers of Bituminous Coating [10629.6]; 20x20 Approved Polysulfide Joint Sealant [112.62]; Unskilled Labor [80 h]; Skilled Labor [160 h] |
| CO-SU-FE-EP1-AR-350 | External plastering to walls and columns | 2026-11-14 → 2026-12-02 (+18d) | 2026-11-22 → 2026-12-10 (+18d) |  | 35d → 19d |  |  |
| CO-SU-FE-EP1-AR-360 | Install 50mm thick random cut stone cladding | 2026-11-23 → 2026-12-12 (+19d) | 2026-12-03 → 2026-12-22 (+19d) |  | 35d → 19d |  | resources Unskilled Labor [56 h]; Skilled Labor [112 h]; Supply and install 33mm thick Lexan cladding blue complete with necessary framings [302.57]; Supply and install 50mm thick random cut stone cladding complete with 600m [1646.27]; Supply and install External plastering to walls and columns min. 15mm thick with cement mortar of specified grade including [4549.53] → Supply and install 33mm thick Lexan cladding blue complete with necessary framings [302.57]; Supply and install 50mm thick random cut stone cladding complete with 600m [1646.27]; Supply and install External plastering to walls and columns min. 15mm thick with cement mortar of specified grade including [4549.53]; Unskilled Labor [56 h]; Skilled Labor [112 h] |
| CO-SU-FE-EP1-AR-370 | Install 2 coats of weatherproof paint at walls | 2026-12-05 → 2026-12-23 (+18d) | 2026-12-15 → 2027-01-03 (+19d) |  | 35d → 19d |  | resources Unskilled Labor [48 h]; Skilled Labor [96 h]; Supply and install 2 coats of weatherproof paint at walls including one prime coat and [4549.53] → Supply and install 2 coats of weatherproof paint at walls including one prime coat and [4549.53]; Unskilled Labor [48 h]; Skilled Labor [96 h] |
| CO-SU-FE-EP1-AR-380 | Install Stone coping 500mm,525mm | 2026-12-16 → 2027-01-04 (+19d) | 2026-12-27 → 2027-01-14 (+18d) |  | 35d → 19d |  | resources Unskilled Labor [32 h]; Skilled Labor [64 h]; Guard room coping 350mm [15.47]; Guard room coping 450mm [7.33]; Stone coping 500mm [693.35]; Stone coping 525mm [332.16] → Guard room coping 350mm [15.47]; Guard room coping 450mm [7.33]; Stone coping 500mm [693.35]; Stone coping 525mm [332.16]; Unskilled Labor [32 h]; Skilled Labor [64 h] |
| CO-SU-FE-EP1-AR-390 | Install MODON Signage | 2027-02-15 → 2027-04-11 (+55d) | 2027-02-20 → 2027-04-13 (+52d) |  | -0.15d → -39d |  | resources Unskilled Labor [48 h]; Skilled Labor [96 h]; Supply and install MODON Signage with Logo Type 1 [6.51]; Supply and install MODON Signage Type 2 [6.51]; Supply and install "Triangle Style" signage [14.93] → Supply and install MODON Signage with Logo Type 1 [6.51]; Supply and install MODON Signage Type 2 [6.51]; Supply and install "Triangle Style" signage [14.93]; Unskilled Labor [48 h]; Skilled Labor [96 h] |
| 6 | **Eastern Fence P2 ( E07:E13 )** | 2026-09-21 → 2026-08-02 (-50d) | 2027-02-23 → 2027-05-03 (+69d) |  |  |  |  |
| 1 | **Civil Work** | 2026-09-21 → 2026-08-02 (-50d) | 2026-12-02 → 2026-12-13 (+11d) |  |  |  |  |
| CO-SU-FE-EP2-CI-350 | Excavation Work For Northern Fence | 2026-09-21 → 2026-08-02 A (-50d) | 2026-10-05 → 2026-09-01 A (-34d) | 0% → 100% | 32d → none | CO-SU-FE-EP1-CI-320 → CO-SU-FE-EP1-CI-320 SS |  |
| CO-SU-FE-EP2-CI-360 | Pouring for Plain Concrete Northern Fence | 2026-10-06 → 2026-08-02 A (-65d) | 2026-10-19 → 2026-11-05 (+17d) | 0% → 95% | 32d → 45d | CO-SU-FE-EP2-CI-350, CO-SU-FE-S-CI-290 → CO-SU-FE-EP2-CI-350, CO-SU-FE-S-CI-290 FF | resources Unskilled Labor [160 h]; Carpenter [80 h]; Steel Fixer [80 h]; 100 mm thickness lean concrete under the foundation [443.24] → 100 mm thickness lean concrete under the foundation [443.24]; Unskilled Labor [160 h]; Carpenter [80 h]; Steel Fixer [80 h] |
| CO-SU-FE-EP2-CI-370 | Pouring R.C Footing For Northern Fence | 2026-10-20 → 2026-08-02 A (-79d) | 2026-11-02 → 2026-11-05 (+3d) | 0% → 85% | 32d → 45d | CO-SU-FE-EP2-CI-360 → CO-SU-FE-EP2-CI-360 SS | resources Unskilled Labor [480 h]; Carpenter [240 h]; Steel Fixer [240 h]; Foundation [805.97]; Slab on Grade → Foundation [805.97]; Slab on Grade; Unskilled Labor [480 h]; Carpenter [240 h]; Steel Fixer [240 h] |
| CO-SU-FE-EP2-CI-380 | Pouring R.C Columns For Northern Fence | 2026-11-03 → 2026-09-15 A (-49d) | 2026-11-14 → 2026-11-05 (-9d) | 0% → 30% | 32d → 45d | CO-SU-FE-EP2-CI-370, CO-SU-FE-EP1-CI-330 → CO-SU-FE-EP2-CI-370 FF, CO-SU-FE-EP2-CI-370 SS, CO-SU-FE-EP1-CI-330 FF | resources Unskilled Labor [384 h]; Carpenter [192 h]; Steel Fixer [192 h]; Walls [322.39]; Columns [115.56] → Walls [322.39]; Columns [115.56]; Unskilled Labor [384 h]; Carpenter [192 h]; Steel Fixer [192 h] |
| CO-SU-FE-EP2-CI-390 | Pouring Beams For Northern Fence | 2026-11-22 → 2026-12-02 (+10d) | 2026-12-02 → 2026-12-13 (+11d) |  | 42d → 33d |  | resources Unskilled Labor [224 h]; Carpenter [112 h]; Steel Fixer [112 h]; Beams [84.85] → Beams [84.85]; Unskilled Labor [224 h]; Carpenter [112 h]; Steel Fixer [112 h] |
| 5 | **Finishing Work** | 2026-11-15 → 2026-09-29 (-47d) | 2027-02-23 → 2027-05-03 (+69d) |  |  |  |  |
| 3 | **Electrical Work** | 2026-11-22 → 2026-12-02 (+10d) | 2027-02-21 → 2027-05-03 (+71d) |  |  |  |  |
| CO-SU-FE-EP2-EL-860 | Trench excavation to receive 2 nos 50mm diameter PVC Conduit | 2026-11-22 → 2026-12-02 (+10d) | 2026-11-25 → 2026-12-06 (+11d) |  | 32d → 23d |  | resources Unskilled Labor [32 h]; Electrical Technician [64 h]; Trench excavation to receive 2 nos 50mm diameter PVC Conduit, sand bedding and embedded with sa [1109.68] → Trench excavation to receive 2 nos 50mm diameter PVC Conduit, sand bedding and embedded with sa [1109.68]; Unskilled Labor [32 h]; Electrical Technician [64 h] |
| CO-SU-FE-EP2-EL-920 | Trench excavation to receive 3 nos 50mm diameter PVC Conduit | 2026-11-22 → 2026-12-02 (+10d) | 2026-11-25 → 2026-12-06 (+11d) |  | 32d → 23d |  | resources Unskilled Labor [48 h]; Electrical Technician [96 h]; 800mm depth minimum Trench excavation to receive 3 nos 50mm diameter PVC Conduit with spacer, sand bedding an [474.9] → 800mm depth minimum Trench excavation to receive 3 nos 50mm diameter PVC Conduit with spacer, sand bedding an [474.9]; Unskilled Labor [48 h]; Electrical Technician [96 h] |
| CO-SU-FE-EP2-EL-910 | Install 800mm x 800mm x 800mm height concrete handhole | 2026-11-26 → 2026-12-07 (+11d) | 2026-11-29 → 2026-12-09 (+10d) |  | 32d → 23d |  | resources Unskilled Labor [56 h]; Electrical Technician [112 h]; Supply and install 800mm x 800mm x 800mm height concrete handhole with bituminous paint all aroun [6.02] → Supply and install 800mm x 800mm x 800mm height concrete handhole with bituminous paint all aroun [6.02]; Unskilled Labor [56 h]; Electrical Technician [112 h] |
| CO-SU-FE-EP2-EL-930 | Hot dipped galvanized cable conduits for CAT6A cable and Control Cables embedded to wall | 2026-11-26 → 2026-12-07 (+11d) | 2026-11-29 → 2026-12-09 (+10d) |  | 32d → 23d |  | resources Unskilled Labor [56 h]; Electrical Technician [112 h]; Hot dipped galvanized cable conduits for CAT6A cable and Control Cables embedded to wall [132.97]; 400V, 3PH, 60Hz lighting control panel (LCP-02) [0.32] → Hot dipped galvanized cable conduits for CAT6A cable and Control Cables embedded to wall [132.97]; 400V, 3PH, 60Hz lighting control panel (LCP-02) [0.32]; Unskilled Labor [56 h]; Electrical Technician [112 h] |
| CO-SU-FE-EP2-EL-900 | Fixing of Control cable,CAT6A cable | 2026-12-16 → 2026-12-20 (+4d) | 2026-12-20 → 2026-12-22 (+2d) |  | 14.35d → 12d |  | resources Unskilled Labor [56 h]; Electrical Technician [112 h]; Control cable [984.62]; CAT6A cable [984.62] → Control cable [984.62]; CAT6A cable [984.62]; Unskilled Labor [56 h]; Electrical Technician [112 h] |
| CO-SU-FE-EP2-EL-880 | Fixing Earthing Work (Earth Pit,Grounding rod,Tinned Copper wire) | 2026-12-20 → 2026-12-23 (+3d) | 2026-12-23 → 2026-12-26 (+3d) |  | 14.35d → 12d |  | resources Unskilled Labor [48 h]; Electrical Technician [96 h]; Earth Pit [5.38]; Grounding rod 20mmX3m [2.85]; Grounding rod with Pit 20mmX3m [1.27]; Earthing Bar [0.95]; 120mm2 Tinned copper wire [63.32] → Earth Pit [5.38]; Grounding rod 20mmX3m [2.85]; Grounding rod with Pit 20mmX3m [1.27]; Earthing Bar [0.95]; 120mm2 Tinned copper wire [63.32]; Unskilled Labor [48 h]; Electrical Technician [96 h] |
| CO-SU-FE-EP2-EL-940 | Field Equipment Cabinet enclosed outdoor complete with precast concrete footing, | 2026-12-23 → 2026-12-27 (+4d) | 2026-12-28 → 2026-12-30 (+2d) |  | 14.35d → 12d |  | resources Unskilled Labor [32 h]; Electrical Technician [64 h]; Field Equipment Cabinet enclosed outdoor complete with precast concrete footing, suitable for parame [6.02] → Field Equipment Cabinet enclosed outdoor complete with precast concrete footing, suitable for parame [6.02]; Unskilled Labor [32 h]; Electrical Technician [64 h] |
| CO-SU-FE-EP2-EL-950 | Fence Lightining 400V, 3PH, 60Hz lighting control panelï¿½ (LCP-02) | 2026-12-23 → 2026-12-27 (+4d) | 2026-12-28 → 2026-12-30 (+2d) |  | 14.35d → 12d |  | was named Fence Lightining 400V, 3PH, 60Hz lighting control panel (LCP-02) |
| CO-SU-FE-EP2-EL-960 | Install of direct buried armored cable 4C-16mm2 ,10mm2 | 2026-12-28 → 2026-12-31 (+3d) | 2026-12-31 → 2027-01-03 (+3d) |  | 14.35d → 12d |  | resources Unskilled Labor [56 h]; Electrical Technician [112 h]; 4C-16mm2 CU/XLPE/PVC direct buried armored cable [411.58]; 4C-10mm2 CU/XLPE/PVC direct buried armored cable [269.11] → 4C-16mm2 CU/XLPE/PVC direct buried armored cable [411.58]; 4C-10mm2 CU/XLPE/PVC direct buried armored cable [269.11]; Unskilled Labor [56 h]; Electrical Technician [112 h] |
| CO-SU-FE-EP2-EL-970 | Install 16mm2,10mm2 CU/PVC wire | 2026-12-28 → 2026-12-31 (+3d) | 2026-12-31 → 2027-01-03 (+3d) |  | 14.35d → 12d |  | resources Unskilled Labor [56 h]; Electrical Technician [112 h]; 16mm2 CU/PVC wire [411.58]; 10mm2 CU/PVC wire [269.11] → 16mm2 CU/PVC wire [411.58]; 10mm2 CU/PVC wire [269.11]; Unskilled Labor [56 h]; Electrical Technician [112 h] |
| CO-SU-FE-EP2-EL-990 | FEC-CCTV ( 4C-16mm2 CU/XLPE/PVC direct buried armored cable,16mm2 CU/PVC wire | 2026-12-28 → 2026-12-31 (+3d) | 2027-01-04 → 2027-01-06 (+2d) |  | 14.35d → 12d |  | resources Unskilled Labor [56 h]; Electrical Technician [112 h]; 4C-16mm2 CU/XLPE/PVC direct buried armored cable [1291.72]; 16mm2 CU/PVC wire [1291.72] → 4C-16mm2 CU/XLPE/PVC direct buried armored cable [1291.72]; 16mm2 CU/PVC wire [1291.72]; Unskilled Labor [56 h]; Electrical Technician [112 h] |
| CO-SU-FE-EP2-EL-850 | Junction Box for lighting fixture | 2026-12-31 → 2027-01-04 (+4d) | 2027-01-04 → 2027-01-06 (+2d) |  | 14.35d → 12d |  | resources Unskilled Labor [24 h]; Electrical Technician [48 h]; Junction Box for lighting fixture [43.06] → Junction Box for lighting fixture [43.06]; Unskilled Labor [24 h]; Electrical Technician [48 h] |
| CO-SU-FE-EP2-EL-890 | IR Intrusion Detection System Quad Beams | 2027-01-26 → 2027-04-26 (+90d) | 2027-01-30 → 2027-04-29 (+89d) |  | 14.35d → -53.5d |  | resources Unskilled Labor [56 h]; Electrical Technician [112 h]; IR Intrusion Detection System Quad Beams (Tx & Rx) (SL-350 QDM) [19] → IR Intrusion Detection System Quad Beams (Tx & Rx) (SL-350 QDM) [19]; Unskilled Labor [56 h]; Electrical Technician [112 h] |
| CO-SU-FE-EP2-EL-980 | Install of 38W, 230V, 1PH, 60Hz fence, led linear uplight lighting, IP66 | 2027-01-26 → 2027-04-26 (+90d) | 2027-01-30 → 2027-04-29 (+89d) |  | 14.35d → -53.5d |  | resources Unskilled Labor [56 h]; Electrical Technician [112 h]; 38W, 230V, 1PH, 60Hz fence, led linear uplight lighting, IP66 [43.06] → 38W, 230V, 1PH, 60Hz fence, led linear uplight lighting, IP66 [43.06]; Unskilled Labor [56 h]; Electrical Technician [112 h] |
| CO-SU-FE-EP2-EL-870 | Install, fixings, testing and commissioning 80W LED | 2027-02-17 → 2027-04-29 (+71d) | 2027-02-21 → 2027-05-03 (+71d) |  | 1d → -53.5d |  | resources Unskilled Labor [48 h]; Electrical Technician [96 h]; Supply, Install, fixings, testing and commissioning 80W LED Projector waterproof DJ effect light including c [0.95] → Supply, Install, fixings, testing and commissioning 80W LED Projector waterproof DJ effect light including c [0.95]; Unskilled Labor [48 h]; Electrical Technician [96 h] |
| 4 | **Architictural work** | 2026-11-15 → 2026-09-29 (-47d) | 2027-02-23 → 2027-04-28 (+64d) |  |  |  |  |
| CO-SU-FE-EP2-AR-400 | Install Brick Work For Northern Fence | 2026-11-15 → 2026-09-29 A (-47d) | 2026-11-21 → 2026-12-01 (+10d) | 0% → 23% | 32d → 23d | CO-SU-FE-EP2-CI-380, CO-SU-FE-EP1-EL-840 → CO-SU-FE-EP2-CI-380 FF, CO-SU-FE-EP2-CI-380 SS, CO-SU-FE-EP1-EL-840 FF | resources Unskilled Labor [80 h]; Skilled Labor [160 h]; Common brickwork. 300mm thick; vertical straight wall complete with accessories. [2778.15]; Insulated brickwork. with expanded polystyrene 200mm thick; vertical straight wall complete with accessories .; Common brickwork. 150mm thick; vertical straight wall complete with accessories.; Two Layers of Bituminous Coating [12401.2]; 20x20 Approved Polysulfide Joint Sealant [131.39] → Common brickwork. 300mm thick; vertical straight wall complete with accessories. [2778.15]; Insulated brickwork. with expanded polystyrene 200mm thick; vertical straight wall complete with accessories .; Common brickwork. 150mm thick; vertical straight wall complete with accessories.; Two Layers of Bituminous Coating [12401.2]; 20x20 Approved Polysulfide Joint Sealant [131.39]; Unskilled Labor [80 h]; Skilled Labor [160 h] |
| CO-SU-FE-EP2-AR-410 | External plastering to walls and columns | 2027-01-04 → 2027-01-07 (+3d) | 2027-01-10 → 2027-01-12 (+2d) |  | 14.35d → 12d |  |  |
| CO-SU-FE-EP2-AR-420 | Install 50mm thick random cut stone cladding | 2027-01-10 → 2027-01-13 (+3d) | 2027-01-16 → 2027-01-18 (+2d) |  | 14.35d → 12d |  | resources Unskilled Labor [56 h]; Skilled Labor [112 h]; Supply and install 33mm thick Lexan cladding blue complete with necessary framings [353]; Supply and install 50mm thick random cut stone cladding complete with 600m [1547.76]; Supply and install External plastering to walls and columns min. 15mm thick with cement mortar of specified grade including [5307.78] → Supply and install 33mm thick Lexan cladding blue complete with necessary framings [353]; Supply and install 50mm thick random cut stone cladding complete with 600m [1547.76]; Supply and install External plastering to walls and columns min. 15mm thick with cement mortar of specified grade including [5307.78]; Unskilled Labor [56 h]; Skilled Labor [112 h] |
| CO-SU-FE-EP2-AR-430 | Install 2 coats of weatherproof paint at walls | 2027-01-16 → 2027-01-19 (+3d) | 2027-01-21 → 2027-01-24 (+3d) |  | 14.35d → 12d |  | resources Unskilled Labor [48 h]; Skilled Labor [96 h]; Supply and install 2 coats of weatherproof paint at walls including one prime coat and [5307.78] → Supply and install 2 coats of weatherproof paint at walls including one prime coat and [5307.78]; Unskilled Labor [48 h]; Skilled Labor [96 h] |
| CO-SU-FE-EP2-AR-440 | Install Stone coping 500mm,525mm | 2027-01-21 → 2027-04-21 (+90d) | 2027-01-26 → 2027-04-26 (+90d) |  | 14.35d → -53.5d |  | resources Unskilled Labor [32 h]; Skilled Labor [64 h]; Guard room coping 350mm [18.05]; Guard room coping 450mm [8.55]; Stone coping 500mm [808.91]; Stone coping 525mm [387.52] → Guard room coping 350mm [18.05]; Guard room coping 450mm [8.55]; Stone coping 500mm [808.91]; Stone coping 525mm [387.52]; Unskilled Labor [32 h]; Skilled Labor [64 h] |
| CO-SU-FE-EP2-AR-450 | Install MODON Signage | 2027-02-20 → 2027-04-26 (+65d) | 2027-02-23 → 2027-04-28 (+64d) |  | -0.15d → -49.5d |  | resources Unskilled Labor [48 h]; Skilled Labor [96 h]; Supply and install MODON Signage with Logo Type 1 [7.6]; Supply and install MODON Signage Type 2 [7.6]; Supply and install "Triangle Style" signage [17.41] → Supply and install MODON Signage with Logo Type 1 [7.6]; Supply and install MODON Signage Type 2 [7.6]; Supply and install "Triangle Style" signage [17.41]; Unskilled Labor [48 h]; Skilled Labor [96 h] |

| ID | Task | Start | Finish | Total float | Other |
| --- | --- | --- | --- | --- | --- |
| TC | **Testing and Comissioning** | 2027-01-04 → 2026-10-24 (-72d) | 2027-02-21 → 2027-06-10 (+109d) |  |  |
| INF | **Infrastructure Networks** | 2027-01-06 → 2027-05-01 (+115d) | 2027-02-21 → 2027-06-10 (+109d) |  |  |
| PW1 | **Irrigation Network** | 2027-01-28 → 2027-05-23 (+115d) | 2027-02-03 → 2027-05-27 (+113d) |  |  |
| T/C-IR | Testing and Commissioning of Irrigation Network | 2027-01-28 → 2027-05-23 (+115d) | 2027-02-03 → 2027-05-27 (+113d) | 0.04d → -83d | resources pipe line O.D 32 mm PN 10, in depth 0 to 1.5 m; pipe line O.D 40 mm PN 10, in depth 0 to 1.5 m; pipe line O.D 50 mm PN 10, in depth 0 to 1.5 m; Gate valve 50 mm PN16; Direct Burried Gate valve 40 mm PN16; Pressure compensating bubblers 110 Lit/Hr; Flushing Bronze gate valve dia 1.5" inside PVC box; Air release valve 1.5" inside PVC box; Extra flexible pressure compensating on surface inline dripline`s, O.D. is 16.1 mm; Electrical Solenoid Valve ( 1.5") inside PVC box; Electrical Solenoid Valve ( 2") inside PVC box; Quick coupling valve 1" inside a round valve box 10" size with a manual gate valve, hose swivel and key with all accessories; Advanced Irrigation controller subject to client approval, can connect with Centarl Control system; Decoder cables 12 AWG between valves and controllers, The cables shall be pulled through 32 UPVC conduit; Preparing the irrigation program for the entire system and providing technical services for monitoring and controlling the central irrigation systems; Unskilled Labor [560.11 h]; Electrical Technician [216.03 h]; Plumber [50.61 h]; Carpenter [61.54 h]; Mason [48.96 h]; Steel Fixer [62.55 h]; Skilled Labor [168.82 h] → pipe line O.D 32 mm PN 10, in depth 0 to 1.5 m; pipe line O.D 40 mm PN 10, in depth 0 to 1.5 m; pipe line O.D 50 mm PN 10, in depth 0 to 1.5 m; Gate valve 50 mm PN16; Direct Burried Gate valve 40 mm PN16; Pressure–compensating bubblers 110 Lit/Hr; Flushing Bronze gate valve dia 1.5" inside PVC box; Air release valve 1.5" inside PVC box; Extra flexible pressure compensating on surface inline dripline`s, O.D. is 16.1 mm; Electrical Solenoid Valve ( 1.5") inside PVC box; Electrical Solenoid Valve ( 2") inside PVC box; Quick coupling valve 1" inside a round valve box 10" size with a manual gate valve, hose swivel and key with all accessories; Advanced Irrigation controller subject to client approval, can connect with Centarl Control system; Decoder cables 12 AWG between valves and controllers, The cables shall be pulled through 32Ø UPVC conduit; Preparing the irrigation program for the entire system and providing technical services for monitoring and controlling the central irrigation systems |
| PW11 | **TSE Network** | 2027-01-17 → 2027-05-11 (+114d) | 2027-02-03 → 2027-06-03 (+120d) |  |  |
| T/C-TSE-10 | Testing and Commissioning of TSE Network | 2027-01-17 → 2027-05-11 (+114d) | 2027-02-03 → 2027-06-03 (+120d) | 8.5d → -80.2d | resources Depth Between 0m to 1.50m; Depth Between 1.50m to 2.50m; Depth > 2.50m; Gate valves dia 50 mm; Gate valves dia 100 mm; Gate valves dia 150 mm; Gate valves dia 200 mm; Air valves with dia 50 mm; Washout valve dia 100 mm; Wash out chamber (2500x 2500mm); Air valve chamber (1000x 1000 mm); Flow meter chamber (1500x 3000 mm); Flow meter dia 150 mm; Glass Fused Bolted (GLS) 1500 m3 Tank with associated accessories & manufacturer recommendation for the foundation; Unskilled Labor [1680.32 h]; Electrical Technician [648.08 h]; Plumber [151.83 h]; Carpenter [184.62 h]; Mason [146.87 h]; Steel Fixer [187.65 h]; Skilled Labor [506.41 h] → Depth Between 0m to 1.50m; Depth Between 1.50m to 2.50m; Depth > 2.50m; Gate valves dia 50 mm; Gate valves dia 100 mm; Gate valves dia 150 mm; Gate valves dia 200 mm; Air valves with dia 50 mm; Washout valve dia 100 mm; Wash out chamber (2500x 2500mm); Air valve chamber (1000x 1000 mm); Flow meter chamber (1500x 3000 mm); Flow meter dia 150 mm; Glass Fused Bolted (GLS) 1500 m3 Tank with associated accessories & manufacturer recommendation for the foundation |
| PW | **Potable Water Network** | 2027-01-28 → 2027-05-23 (+115d) | 2027-02-04 → 2027-05-29 (+114d) |  |  |
| T/C-PW | Testing and Commissioning of Potable Water Network | 2027-01-28 → 2027-05-23 (+115d) | 2027-02-04 → 2027-05-29 (+114d) | 0.04d → -83d | resources Depth Between 0m to 1.50m; Depth Between 1.50m to 2.50m; Depth > 2.50m; Gate valves Dia 50 mm; Gate valves Dia 100 mm; Gate valves Dia 150 mm; Gate valves Dia 250 mm; Air valves with Dia 50 mm; Washout valve Dia 100 mm; 3-outlet fire hydrant (2 x 2.5 inch and 1 x 4.5 inch) in the form of a separate dry vacuum cylinder, complete according to drawings.; Wash out chamber (2500x 2500mm); Air valve chamber (1000x 1000 mm); Flow meter chamber (1500x 2500 mm); Flow meter dia 100 mm; Glass Fused Bolted (GLS) 1500 m3 Tank with associated accessories & manufacturer recommendation for the foundation; Unskilled Labor [672.13 h]; Electrical Technician [259.23 h]; Plumber [60.73 h]; Carpenter [73.85 h]; Mason [58.75 h]; Steel Fixer [75.06 h]; Skilled Labor [202.58 h] → Depth Between 0m to 1.50m; Depth Between 1.50m to 2.50m; Depth > 2.50m; Gate valves Dia 50 mm; Gate valves Dia 100 mm; Gate valves Dia 150 mm; Gate valves Dia 250 mm; Air valves with Dia 50 mm; Washout valve Dia 100 mm; 3-outlet fire hydrant (2 x 2.5 inch and 1 x 4.5 inch) in the form of a separate dry vacuum cylinder, complete according to drawings.; Wash out chamber (2500x 2500mm); Air valve chamber (1000x 1000 mm); Flow meter chamber (1500x 2500 mm); Flow meter dia 100 mm; Glass Fused Bolted (GLS) 1500 m3 Tank with associated accessories & manufacturer recommendation for the foundation |
| SW | **Sewage Network** | 2027-01-17 → 2027-05-11 (+114d) | 2027-01-19 → 2027-05-20 (+121d) |  |  |
| T/C-SW | Testing and Commissioning of Sewage Network | 2027-01-17 → 2027-05-11 (+114d) | 2027-01-19 → 2027-05-20 (+121d) | 0d → -89.2d | resources Depth Between 0m to 1.50m; Depth Between 1.50m to 2.50m; Depth > 2.50m; Depth Between 2.50m to 3.50m; Depth > 3.50m; HDPE Force Main (PE 100, SDR 11, PN 16 bar) DN 160 mm diameter, in trenches depth: 0- 1.5m; HDPE Force Main (PE 100, SDR 11, PN 16 bar) DN 160 mm diameter, in trenches depth: 1.51- 2.5m; Depth: 0 - 1.5m; Depth: 1.51 - 2.5m; Depth: 2.51 - 3.5m; Unskilled Labor [336.06 h]; Electrical Technician [129.62 h]; Plumber [30.37 h]; Carpenter [36.92 h]; Mason [29.37 h]; Steel Fixer [37.53 h]; Skilled Labor [101.29 h] → Depth Between 0m to 1.50m; Depth Between 1.50m to 2.50m; Depth > 2.50m; Depth Between 2.50m to 3.50m; Depth > 3.50m; HDPE Force Main (PE 100, SDR 11, PN 16 bar) DN 160 mm diameter, in trenches depth: 0- 1.5m; HDPE Force Main (PE 100, SDR 11, PN 16 bar) DN 160 mm diameter, in trenches depth: 1.51- 2.5m; Depth: 0 - 1.5m; Depth: 1.51 - 2.5m; Depth: 2.51 - 3.5m |
| SD | **Storm Drainage Network** | 2027-01-06 → 2027-05-01 (+115d) | 2027-01-16 → 2027-05-11 (+115d) |  |  |
| T/C-SD | Testing and Commissioning of Storm Drainage Network | 2027-01-06 → 2027-05-01 (+115d) | 2027-01-16 → 2027-05-11 (+115d) | 0d → -89.2d | resources Depth Between 0m to 1.50m; Depth Between 1.50m to 2.50m; Depth > 2.50m; Depth Between 2.50m to 3.50m; Depth > 3.50m; Depth Between 3.50m to 4.50m; Depth > 4.50m; MH depth 1.5 - 2.5m; MH depth 2.5 - 3.5m; MH depth > 3.50m; MH depth 2.5 -3.5m; Single Catch Basin 1000mm x 1000mm; Double Catch Basin 1200mm x 2300mm; Unskilled Labor [1008.19 h]; Electrical Technician [388.85 h]; Plumber [91.1 h]; Carpenter [110.77 h]; Mason [88.12 h]; Steel Fixer [112.59 h]; Skilled Labor [303.87 h] → Depth Between 0m to 1.50m; Depth Between 1.50m to 2.50m; Depth > 2.50m; Depth Between 2.50m to 3.50m; Depth > 3.50m; Depth Between 3.50m to 4.50m; Depth > 4.50m; MH depth 1.5 - 2.5m; MH depth 2.5 - 3.5m; MH depth > 3.50m; MH depth 2.5 -3.5m; Single Catch Basin 1000mm x 1000mm; Double Catch Basin 1200mm x 2300mm |
| SL | **Street Lighting Network** | 2027-02-04 → 2027-05-29 (+114d) | 2027-02-11 → 2027-06-03 (+112d) |  |  |
| T/C-SL | Testing and Commissioning of Street Lighting Network | 2027-02-04 → 2027-05-29 (+114d) | 2027-02-11 → 2027-06-03 (+112d) | 0d → -83d | resources Road crossing ducts, 2 ways (2 x 150mm HDPE); Road crossing ducts, 2 ways (2 x 110mm UPVC); Road crossing ducts, 3 ways (3 x 110mm UPVC); 4C-300mm2 CU/XLPE / PVC ARMORED CABLE; 4C-240mm2 CU/XLPE / PVC ARMORED CABLE; 4C-185mm2 CU/XLPE / PVC ARMORED CABLE; 4C-50mm2 CU/XLPE / PVC ARMORED CABLE; 4C-16mm2 CU/XLPE / PVC ARMORED CABLE; 4C-16MM2 CU/XLPE / PVC CABLE; 1Cx150sq.mm2,Cu, PVC wire; 1Cx120sq.mm2,Cu, PVC wire; 1Cx95sq.mm,Cu, PVC wire; 1Cx70sq.mm2,Cu, PVC wire; 1Cx25sq.mm2,Cu, PVC wire; 1Cx16sq.mm2,Cu, PVC wire; 1Cx10sq.mm2,Cu, PVC wire; Supply and installation of KWH meter mounting frame including concrete block for installation of KWH meter; Street Lighting panels LCP (01); Lighting poles with 1 arm, height of (12) meters, including the power distribution box, cables, and RCC foundation.; Lighting poles with 2 arms, height of (12) meters, including the power distribution box, cables, and RCC foundation.; Street Lighting( LED) Luminaire of Output ? 20,965 lumen complete with control gear and lamp, (129.1) WATT.; Including earthing of lighting poles, masts, feeder pillars, unit substations and LV feeders.; Unskilled Labor [672.13 h]; Electrical Technician [259.23 h]; Plumber [60.73 h]; Carpenter [73.85 h]; Mason [58.75 h]; Steel Fixer [75.06 h]; Skilled Labor [202.58 h] → Road crossing ducts, 2 ways (2 x 150mm HDPE); Road crossing ducts, 2 ways (2 x 110mm UPVC); Road crossing ducts, 3 ways (3 x 110mm UPVC); 4C-300mm2 CU/XLPE / PVC ARMORED CABLE; 4C-240mm2 CU/XLPE / PVC ARMORED CABLE; 4C-185mm2 CU/XLPE / PVC ARMORED CABLE; 4C-50mm2 CU/XLPE / PVC ARMORED CABLE; 4C-16mm2 CU/XLPE / PVC ARMORED CABLE; 4C-16MM2 CU/XLPE / PVC CABLE; 1Cx150sq.mm2,Cu, PVC wire; 1Cx120sq.mm2,Cu, PVC wire; 1Cx95sq.mm,Cu, PVC wire; 1Cx70sq.mm2,Cu, PVC wire; 1Cx25sq.mm2,Cu, PVC wire; 1Cx16sq.mm2,Cu, PVC wire; 1Cx10sq.mm2,Cu, PVC wire; Supply and installation of KWH meter mounting frame including concrete block for installation of KWH meter; Street Lighting panels LCP (01); Lighting poles with 1 arm, height of (12) meters, including the power distribution box, cables, and RCC foundation.; Lighting poles with 2 arms, height of (12) meters, including the power distribution box, cables, and RCC foundation.; Street Lighting( LED) Luminaire of Output ? 20,965 lumen complete with control gear and lamp, (129.1) WATT.; Including earthing of lighting poles, masts, feeder pillars, unit substations and LV feeders. |
| TE | **Telecom Network** | 2027-01-21 → 2027-05-20 (+119d) | 2027-01-24 → 2027-05-24 (+120d) |  |  |
| T/C-TE | Testing and Commissioning of Telecom Network | 2027-01-21 → 2027-05-20 (+119d) | 2027-01-24 → 2027-05-24 (+120d) | -1d → -89.2d | resources 2-ways ducts, 50mm diameter; 6-ways ducts, 110mm diameter; 9-ways ducts, 6 x 160mm & 2 x 100mm; Manhole Type 2 (1600 x 1600 x 2000); Manhole Type 3 (1200 x 1200 x 2000); 6 PVC ducts 150x200 mm (60mm diameter); 6 PVC ducts 600x800 mm (120mm diameter); 6 PVC ducts 800x800 mm (170mm diameter); NVR Server with RAID (5, 6 or 10) to record all cameras storage 80TB with all hardware / software / licenses etc.; VMS Server with RAID (5, 6 or 10) complete Hardware / Software with one Color Laser Printer and all associated; Licenses for Cameras, Workstations and Keyboards; Work Station (MMI with two monitors each, for Monitoring for CCTV & ACS); Keyboard with joystick for CCTV with all accessories as per specification; Pole mounted IP( PoE) Fixed camera, 5MP,IP 66, IR illumination, 3-8mm varifocal, auto iris lens type; Wall mounted IP( PoE) Fixed camera, 5MP,IP 66, IR illumination, 3-8mm varifocal, auto iris lens type; 5MP Dome camera ceiling Mounted IP (PoE) indoor; 5MP PTZ Multi Sensor Camera IP(PoE) 360 Degree View Outdoor with accessories (IP 66); 8 Port Industrial PoE Switch 10/100BaseT (0 deg to +70 deg. Celsius); Filed Equipment cabinet (FEC), with fan and ventilation, NEMEX 4X ,door, minimum size (600x600x400mm); 6 PVC ducts 200x150 mm (60mm diameter); IP Phone Communication server (hot standby) 50 Port equipped, Gateway, Gatekeeper, H.323, SIP, redundant Power etc.; IP Phone Voice gateway; Voice IP Phone; NMS Server for IP phone and NETWORK Elements; NMS Workstation; Firm Ware, software & licenses; Data Cable; Power Cable; Layer 3, 24 Port non-PoE switch10/1000BaseT/LX (-40 deg to +70 deg. Celsius), stack module and associated; Layer 2, 24 Port non-PoE switch10/1000BaseT (-40 deg to +70 deg. Celsiu; Network Management System Server; Network Management System workstation; 42U rack dimension (W x H x L) 800 x 2000 x 1000 mm; 12U rack dimension (W x H x L) 600 x 625 x 600 mm; 06C Optical Fiber SM; 48C Optical Fiber SM; 48 Core Splice Closure; Optical fiber patch cord 5m; Data Cable (STP CAT 6A); 3C Power Cable armored 1.5mm2; 3C Power Cable armored 2.5 mm2; UTP CAT6A Patch Cord 1m/3m/5m; Access Control Unit; Access Card Reader; Magnetic Lock; Break Glass; Exit Push button; Door Sensor; Biometrics Reader; Smart Card Printer; Card Issue Work Station; Photographic Camera with stand; Interface modules with CCTV, Fire and other systems; Unskilled Labor [336.06 h]; Electrical Technician [129.62 h]; Plumber [30.37 h]; Carpenter [36.92 h]; Mason [29.37 h]; Steel Fixer [37.53 h]; Skilled Labor [101.29 h] → 2-ways ducts, 50mm diameter; 6-ways ducts, 110mm diameter; 9-ways ducts, 6 x 160mm & 2 x 100mm; Manhole Type 2 (1600 x 1600 x 2000); Manhole Type 3 (1200 x 1200 x 2000); 6 PVC ducts 150x200 mm (60mm diameter); 6 PVC ducts 600x800 mm (120mm diameter); 6 PVC ducts 800x800 mm (170mm diameter); NVR Server with RAID (5, 6 or 10) to record all cameras storage 80TB with all hardware / software / licenses etc.; VMS Server with RAID (5, 6 or 10) complete Hardware / Software with one Color Laser Printer and all associated; Licenses for Cameras, Workstations and Keyboards; Work Station (MMI with two monitors each, for Monitoring for CCTV & ACS); Keyboard with joystick for CCTV with all accessories as per specification; Pole mounted IP( PoE) Fixed camera, 5MP,IP 66, IR illumination, 3-8mm varifocal, auto iris lens type; Wall mounted IP( PoE) Fixed camera, 5MP,IP 66, IR illumination, 3-8mm varifocal, auto iris lens type; 5MP Dome camera ceiling Mounted IP (PoE) indoor; 5MP PTZ Multi Sensor Camera IP(PoE) 360 Degree View Outdoor with accessories (IP 66); 8 Port Industrial PoE Switch 10/100BaseT (0 deg to +70 deg. Celsius); Filed Equipment cabinet (FEC), with fan and ventilation, NEMEX 4X ,door, minimum size (600x600x400mm); 6 PVC ducts 200x150 mm (60mm diameter); IP Phone Communication server (hot standby) 50 Port equipped, Gateway, Gatekeeper, H.323, SIP, redundant Power etc.; IP Phone Voice gateway; Voice IP Phone; NMS Server for IP phone and NETWORK Elements; NMS Workstation; Firm Ware, software & licenses; Data Cable; Power Cable; Layer 3, 24 Port non-PoE switch10/1000BaseT/LX (-40 deg to +70 deg. Celsius), stack module and associated; Layer 2, 24 Port non-PoE switch10/1000BaseT (-40 deg to +70 deg. Celsiu; Network Management System Server; Network Management System workstation; 42U rack dimension (W x H x L) 800 x 2000 x 1000 mm; 12U rack dimension (W x H x L) 600 x 625 x 600 mm; 06C Optical Fiber SM; 48C Optical Fiber SM; 48 Core Splice Closure; Optical fiber patch cord 5m; Data Cable (STP CAT 6A); 3C Power Cable armored 1.5mm2; 3C Power Cable armored 2.5 mm2; UTP CAT6A Patch Cord 1m/3m/5m; Access Control Unit; Access Card Reader; Magnetic Lock; Break Glass; Exit Push button; Door Sensor; Biometrics Reader; Smart Card Printer; Card Issue Work Station; Photographic Camera with stand; Interface modules with CCTV, Fire and other systems |
| MV | **Medium Voltage Network** | 2027-01-21 → 2027-05-20 (+119d) | 2027-02-06 → 2027-06-06 (+120d) |  |  |
| T/C-MV | Testing and Commissioning of Medium Voltage Network | 2027-01-21 → 2027-05-20 (+119d) | 2027-02-06 → 2027-06-06 (+120d) | -1d → -89.2d | resources Excavation for Trench size 40cm wide and 80cm deep (for 1 cable); Excavation for Trench Size 60cm wide and 80cm deep (for 2 cables); Excavation for Trench Size 90cm wide and 80cm deep (for 3 cables); Excavation for Trench Size 180cm wide and 80cm deep (for 6 cables); Excavation for Trench Size 210 cm wide and 80cm deep (for 7 cables); Excavation for Trench Size 240cm wide and 80cm deep (for 8 cables); Duct bank for (33) cables; Duct bank for (21) cables; Duct bank for (15) cables; HV Cable Road Crossing; Unskilled Labor [1568.3 h]; Electrical Technician [604.88 h]; Plumber [141.7 h]; Carpenter [172.31 h]; Mason [137.07 h]; Steel Fixer [175.14 h]; Skilled Labor [472.69 h] → Excavation for Trench size 40cm wide and 80cm deep (for 1 cable); Excavation for Trench Size 60cm wide and 80cm deep (for 2 cables); Excavation for Trench Size 90cm wide and 80cm deep (for 3 cables); Excavation for Trench Size 180cm wide and 80cm deep (for 6 cables); Excavation for Trench Size 210 cm wide and 80cm deep (for 7 cables); Excavation for Trench Size 240cm wide and 80cm deep (for 8 cables); Duct bank for (33) cables; Duct bank for (21) cables; Duct bank for (15) cables; HV Cable Road Crossing |
| RD | **Road Works** | 2027-02-15 → 2027-06-07 (+112d) | 2027-02-21 → 2027-06-10 (+109d) |  |  |
| T/C-RD | Testing and Commissioning of Road Works | 2027-02-15 → 2027-06-07 (+112d) | 2027-02-21 → 2027-06-10 (+109d) | -1.5d → -85d | resources Excavations (including Roads , Plots and Pond); Embankments to the Site and Roads (including Roads , Plots and Pond); Subgrade; Aggregate base course; Bituminous base course (Grading I - Class A), including Prime Coat (MC1); Bituminous concrete wearing course, (Grading I - Class A), including tack coat (RC2); Precast Concrete Curbstone 150X300X900 Type (K1-A); Precast Concrete Curbstone 100X200X500 Type (K4); Precast Concrete Curbstone 150X300X500 Type (K1-B); Precast Concrete Curbstone Type (K1-C); Flush Kerb Type (D); 60mm thick; 80mm thick; Retroreflective Thermoplastic White Traffic lines; Retroreflective Thermoplastic Yellow, Traffic lines; Traffic signs, ground mounted, Sheet Aluminum, (breakaway) Single post IPE, with all accessories; Precast Concrete Blister Warning Tactile Paver Brown Finish 300*300*60mm; Unskilled Labor [448.09 h]; Electrical Technician [172.82 h]; Plumber [40.49 h]; Carpenter [49.23 h]; Mason [39.16 h]; Steel Fixer [50.04 h]; Skilled Labor [135.05 h] → Excavations (including Roads , Plots and Pond); Embankments to the Site and Roads (including Roads , Plots and Pond); Subgrade; Aggregate base course; Bituminous base course (Grading I - Class A), including Prime Coat (MC1); Bituminous concrete wearing course, (Grading I - Class A), including tack coat (RC2); Precast Concrete Curbstone 150X300X900 Type (K1-A); Precast Concrete Curbstone 100X200X500 Type (K4); Precast Concrete Curbstone 150X300X500 Type (K1-B); Precast Concrete Curbstone Type (K1-C); Flush Kerb Type (D); 60mm thick; 80mm thick; Retroreflective Thermoplastic White Traffic lines; Retroreflective Thermoplastic Yellow, Traffic lines; Traffic signs, ground mounted, Sheet Aluminum, (breakaway) Single post IPE, with all accessories; Precast Concrete Blister Warning Tactile Paver Brown Finish 300*300*60mm |
| 1 | **Utility Buildings** | 2027-01-04 → 2026-10-24 (-72d) | 2027-02-03 → 2027-06-03 (+120d) |  |  |
| T/C-DPO | Testing and Commissioning of Storm Drainage Ponds | 2027-01-04 → 2026-10-24 (-72d) | 2027-01-04 → 2026-10-24 (-72d) | 26d → 88d |  |
| T/C-CTV | Testing and Commissioning of Guard Room and Fence | 2027-01-23 → 2027-05-22 (+119d) | 2027-01-23 → 2027-05-22 (+119d) | 24d → -64d | resources 100 mm thickness lean concrete under the foundation; Foundation; Slab on Grade; Walls; Beams; Columns; Slabs; Lightweight Concrete Roof insulation as per Architect's specification; Common brickwork. 300mm thick; vertical straight wall complete with accessories.; Insulated brickwork. with expanded polystyrene 200mm thick; vertical straight wall complete with accessories .; Common brickwork. 150mm thick; vertical straight wall complete with accessories.; Two Layers of Bituminous Coating; 20x20 Approved Polysulfide Joint Sealant; 2 perpendicular layers of cold bitumen coats; 2 layer of 4mm HDPE membrane, 2 perpendicular layers cold bitumen coats; 1 layer EPOXY Paint 300 micron; Membrane fully bonded to prime deck and upstand; Geotextile Filter membrane uv resistance; 85mm thick thermal insulation; 1.5mm thick epdm waterproofing membrane; CW01 - 4500 mm width x 3700 mm height; CW02 - 4500 mm width x 3700 mm height; CW03 - 4500 mm width x 3700 mm height; CW04 - 4500 mm width x 3700 mm height; CW05 - 7500 mm width x 4250 mm height; CW06 - 7500 mm width x 4250 mm height; W01 - 1000 mm width x 2000 mm height; W02 - 2000 mm width x 2000 mm height; W03 - 2000 mm width x 1000 mm height; D2 - 900 mm x 2200 mm height temper door; D3 - 950 mm x 2000 mm height temper door; Supply and install 33mm thick Lexan cladding blue complete with necessary framings; Supply and install 50mm thick random cut stone cladding complete with 600m; Supply and install External plastering to walls and columns min. 15mm thick with cement mortar of specified grade including; Supply and install 2 coats of weatherproof paint at walls including one prime coat and; Supply and install 300*300mm terrazzo tiles with 150mm high skirting at perimeter with approv; Supply and install 300*300mm glazed ceramic wall tiles on cement mortar and including rough; Supply and install internal plastering and 2 coats of acrylic paint at walls includin; Supply and install 300*300mm glazed ceramic wall tiles on cement mortar and including rough and smooth p; Supply and install 600*600mm porcelain tiles with approved quality on 30 mm mortar inclu; Supply and install 12.5mm thk, gypsum board suspended ceiling including s; Guard room coping 350mm; Guard room coping 450mm; Stone coping 500mm; Stone coping 525mm; Supply and install MODON Signage with Logo Type 1; Supply and install MODON Signage Type 2; Supply and install "Triangle Style" signage; Office Chairs; Office Tables; Guard Stand; Magnetic Control Access barrier, Automatic Vehicular Barriers to be installed on ground with magnetic access; Supply and install Hand Wash Basin with Water Tap, angle valve, P-trap connected to 50mm diameter s; Supply and install paper towel dispenser, surface mounted, satin finish stainless steel as per approv; Supply and install mirror, size 460*910mm as per approved sample including frames, backing and all accessories to complete.; Supply and install towel ring , surface mounted, satin finish stainless steel as per approved sample including accessories.; Kitchen sink with single bowl with hot/cold water mixer.; Supply and install Base mounted flush tank water Western water closet system with lid connected to 110mm soil pipe; Gate Valves; Slow Closing Valve; 1 meter length 10mm diameter Flexible Hose with insulated handle complete with fork support, index push, vacuum breaker; 50mm diameter; 75mm diameter; 80mm diameter; 100mm diameter; 110mm diameter; 13mm diameter; 15mm diameter; 20mm diameter; 25mm diameter; 32mm diameter; 40mm diameter; Isolation Valve Size 20; Isolation Valve Size 25; Isolation Valve Size 32; Isolation Valve Size 40; Isolation Valve Size 50; 20 mm diameter spray head for cold water supply; Supply and install Electric Water Heater set with connection; Water meter complete with accessories.; Roof drain; Vent on a roof to exhaust air; Floor drain 100x80mm; Gully trap 300x300 mm; inspection chamber, size 800x900x1000; Mini split actual capacity 2 Ton; Ducted split actual capacity 4 Ton; Supply, fabricate, install and testing factory fabricated metal ducts with flanges complete with supports, vanes,; Supplying, installation testing & commissioning of external insulation on ducts; Supply, fix, testing and commissioning of exhaust air/fresh air louvers of powder coated extruded aluminium construction.; Providing, fixing, testing and commissioning of powder coated extruded aluminum sections grills and diffusers with dampers.; Air Grills 150mm x150mm; Air Diffuser 600mm x 600mm; Supply, Installation & Testing of 2 hours Fire rated system for closing the openings between roo; 4.5 KG CO2 Type Fire Extinguishers; 6 KG ABC Type Fire Extinguishers; Floor cleanout, size 75 mm diameter; Floor cleanout, size 110 mm diameter; GRP water tanks capacity of each 1000 liter complete with all fittings, all valves and concrete pad; Junction Box for lighting fixture; Trench excavation to receive 2 nos 50mm diameter PVC Conduit, sand bedding and embedded with sa; Supply, Install, fixings, testing and commissioning 80W LED Projector waterproof DJ effect light including c; Earth Pit; Grounding rod 20mmX3m; Grounding rod with Pit 20mmX3m; Earthing Bar; 120mm2 Tinned copper wire; Guard Room 1; Guard Room 2; Guard Room 3; 30A, 2P AC Disconnect Switch; 20A Duplex Receptacle Floor Mounted; Twin Socket outlet; Twin Socket outlet, Weather Proof; Single gang Lighting switch; 2way Single gang Lighting switch; 36W LED linear Pendant lighting; 36W LED Emergency linear Pendant lighting; 13W recess mounted LED down light fitting; 13W recess emergency mounted LED down light fitting with 1.5 Hr Battery; 10.4W LED Exit light with 1.5 Hr Battery; 4mm2 Cu./FRLSZH Cable; 6mm2 Cu./FRLSZH Cable; IR Intrusion Detection System Quad Beams (Tx & Rx) (SL-350 QDM); Control cable; CAT6A cable; Field Equipment Cabinet enclosed outdoor complete with precast concrete footing, suitable for parame; Supply and install 800mm x 800mm x 800mm height concrete handhole with bituminous paint all aroun; 800mm depth minimum Trench excavation to receive 3 nos 50mm diameter PVC Conduit with spacer, sand bedding an; Hot dipped galvanized cable conduits for CAT6A cable and Control Cables embedded to wall; 8 Port Industrial PoE Switch 10/100BaseT (0 deg to +70 deg. Celsius); 06C Optical Fiber SM; 48C Optical Fiber SM; 48 Core Splice Closure; Boom Barrier at Security Guard Room; Pedestrian turnstile at Security Guard Room; Access Control Unit; Access Card Reader; Magnetic Lock; Break Glass; Exit Push button; Door Sensor; Biometrics Reader; Pole/Bollard mounted IP( PoE), Automatic Number Plate Recognition (ANPR, camera, 5MP,IP 66, IR illumin; 12U rack dimension (W x H x L) 600 x 625 x 600 mm; 400V, 3PH, 60Hz lighting control panel (LCP-02); 38W, 230V, 1PH, 60Hz fence, led linear uplight lighting, IP66; 4C-16mm2 CU/XLPE/PVC direct buried armored cable; 4C-10mm2 CU/XLPE/PVC direct buried armored cable; 16mm2 CU/PVC wire; 10mm2 CU/PVC wire; Fire Alarm Control panel with fire alarm zoning with Mimic panel with fire alarm zoning; Main Fire Alarm Control panel with fire alarm zoning with Mimic panel with fire alarm zoning; Supply and installation of the addressable manual call point with operation safety glass breaking and pushbutton; Supply and installation of the photoelectric heat & smoke detector with base; Sounder With Beacon; Addressable Control module for Sounders; Addressable Control module for HVAC System; Addressable Monitor module for HVAC System; 2C x 1.5 Sqm FR Rated Armored - Cable For Loop Wiring; DACT (Auto - Dailer) for 24x7 Civil Defence; Transmission Communication cable - Fiber Optics 12Core; Transmission Communication cable - Ethernet Cable; Supply, install to site and installation of power supply system for fire alarm control panel; Supply, install to site and installation of power cable; Fire Fighter s Telephone Centre; Fireman s Telephone Jack; Voice Command Center → 100 mm thickness lean concrete under the foundation; Foundation; Slab on Grade; Walls; Beams; Columns; Slabs; Lightweight Concrete Roof insulation as per Architect's specification; Common brickwork. 300mm thick; vertical straight wall complete with accessories.; Insulated brickwork. with expanded polystyrene 200mm thick; vertical straight wall complete with accessories .; Common brickwork. 150mm thick; vertical straight wall complete with accessories.; Two Layers of Bituminous Coating; 20x20 Approved Polysulfide Joint Sealant; 2 perpendicular layers of cold bitumen coats; 2 layer of 4mm HDPE membrane, 2 perpendicular layers cold bitumen coats; 1 layer EPOXY Paint 300 micron; Membrane fully bonded to prime deck and upstand; Geotextile Filter membrane uv resistance; 85mm thick thermal insulation; 1.5mm thick epdm waterproofing membrane; CW01 - 4500 mm width x 3700 mm height; CW02 - 4500 mm width x 3700 mm height; CW03 - 4500 mm width x 3700 mm height; CW04 - 4500 mm width x 3700 mm height; CW05 - 7500 mm width x 4250 mm height; CW06 - 7500 mm width x 4250 mm height; W01 - 1000 mm width x 2000 mm height; W02 - 2000 mm width x 2000 mm height; W03 - 2000 mm width x 1000 mm height; D2 - 900 mm x 2200 mm height temper door; D3 - 950 mm x 2000 mm height temper door; Supply and install 33mm thick Lexan cladding blue complete with necessary framings; Supply and install 50mm thick random cut stone cladding complete with 600m; Supply and install External plastering to walls and columns min. 15mm thick with cement mortar of specified grade including; Supply and install 2 coats of weatherproof paint at walls including one prime coat and; Supply and install 300*300mm terrazzo tiles with 150mm high skirting at perimeter with approv; Supply and install 300*300mm glazed ceramic wall tiles on cement mortar and including rough; Supply and install internal plastering and 2 coats of acrylic paint at walls includin; Supply and install 300*300mm glazed ceramic wall tiles on cement mortar and including rough and smooth p; Supply and install 600*600mm porcelain tiles with approved quality on 30 mm mortar inclu; Supply and install 12.5mm thk, gypsum board suspended ceiling including s; Guard room coping 350mm; Guard room coping 450mm; Stone coping 500mm; Stone coping 525mm; Supply and install MODON Signage with Logo Type 1; Supply and install MODON Signage Type 2; Supply and install "Triangle Style" signage; Office Chairs; Office Tables; Guard Stand; Magnetic Control Access barrier, Automatic Vehicular Barriers to be installed on ground with magnetic access; Supply and install Hand Wash Basin with Water Tap, angle valve, P-trap connected to 50mm diameter s; Supply and install paper towel dispenser, surface mounted, satin finish stainless steel as per approv; Supply and install mirror, size 460*910mm as per approved sample including frames, backing and all accessories to complete.; Supply and install towel ring , surface mounted, satin finish stainless steel as per approved sample including accessories.; Kitchen sink with single bowl with hot/cold water mixer.; Supply and install Base mounted flush tank water Western water closet system with lid connected to 110mm soil pipe; Gate Valves; Slow Closing Valve; 1 meter length 10mm diameter Flexible Hose with insulated handle complete with fork support, index push, vacuum breaker; 50mm diameter; 75mm diameter; 80mm diameter; 100mm diameter; 110mm diameter; 13mm diameter; 15mm diameter; 20mm diameter; 25mm diameter; 32mm diameter; 40mm diameter; Isolation Valve Size 20; Isolation Valve Size 25; Isolation Valve Size 32; Isolation Valve Size 40; Isolation Valve Size 50; 20 mm diameter spray head for cold water supply; Supply and install Electric Water Heater set with connection; Water meter complete with accessories.; Roof drain; Vent on a roof to exhaust air; Floor drain 100x80mm; Gully trap 300x300 mm; inspection chamber, size 800x900x1000; Mini split actual capacity 2 Ton; Ducted split actual capacity 4 Ton; Supply, fabricate, install and testing factory fabricated metal ducts with flanges complete with supports, vanes,; Supplying, installation testing & commissioning of external insulation on ducts; Supply, fix, testing and commissioning of exhaust air/fresh air louvers of powder coated extruded aluminium construction.; Providing, fixing, testing and commissioning of powder coated extruded aluminum sections grills and diffusers with dampers.; Air Grills 150mm x150mm; Air Diffuser 600mm x 600mm; Supply, Installation & Testing of 2 hours Fire rated system for closing the openings between roo; 4.5 KG CO2 Type Fire Extinguishers; 6 KG ABC Type Fire Extinguishers; Floor cleanout, size 75 mm diameter; Floor cleanout, size 110 mm diameter; GRP water tanks capacity of each 1000 liter complete with all fittings, all valves and concrete pad; Junction Box for lighting fixture; Trench excavation to receive 2 nos 50mm diameter PVC Conduit, sand bedding and embedded with sa; Supply, Install, fixings, testing and commissioning 80W LED Projector waterproof DJ effect light including c; Earth Pit; Grounding rod 20mmX3m; Grounding rod with Pit 20mmX3m; Earthing Bar; 120mm2 Tinned copper wire; Guard Room 1; Guard Room 2; Guard Room 3; 30A, 2P AC Disconnect Switch; 20A Duplex Receptacle Floor Mounted; Twin Socket outlet; Twin Socket outlet, Weather Proof; Single gang Lighting switch; 2way Single gang Lighting switch; 36W LED linear Pendant lighting; 36W LED Emergency linear Pendant lighting; 13W recess mounted LED down light fitting; 13W recess emergency mounted LED down light fitting with 1.5 Hr Battery; 10.4W LED Exit light with 1.5 Hr Battery; 4mm2 Cu./FRLSZH Cable; 6mm2 Cu./FRLSZH Cable; IR Intrusion Detection System Quad Beams (Tx & Rx) (SL-350 QDM); Control cable; CAT6A cable; Field Equipment Cabinet enclosed outdoor complete with precast concrete footing, suitable for parame; Supply and install 800mm x 800mm x 800mm height concrete handhole with bituminous paint all aroun; 800mm depth minimum Trench excavation to receive 3 nos 50mm diameter PVC Conduit with spacer, sand bedding an; Hot dipped galvanized cable conduits for CAT6A cable and Control Cables embedded to wall; 8 Port Industrial PoE Switch 10/100BaseT (0 deg to +70 deg. Celsius); 06C Optical Fiber SM; 48C Optical Fiber SM; 48 Core Splice Closure; Boom Barrier at Security Guard Room; Pedestrian turnstile at Security Guard Room; Access Control Unit; Access Card Reader; Magnetic Lock; Break Glass; Exit Push button; Door Sensor; Biometrics Reader; Pole/Bollard mounted IP( PoE), Automatic Number Plate Recognition (ANPR, camera, 5MP,IP 66, IR illumin; 12U rack dimension (W x H x L) 600 x 625 x 600 mm; 400V, 3PH, 60Hz lighting control panel (LCP-02); 38W, 230V, 1PH, 60Hz fence, led linear uplight lighting, IP66; 4C-16mm2 CU/XLPE/PVC direct buried armored cable; 4C-10mm2 CU/XLPE/PVC direct buried armored cable; 16mm2 CU/PVC wire; 10mm2 CU/PVC wire; Fire Alarm Control panel with fire alarm zoning with Mimic panel with fire alarm zoning; Main Fire Alarm Control panel with fire alarm zoning with Mimic panel with fire alarm zoning; Supply and installation of the addressable manual call point with operation safety glass breaking and pushbutton; Supply and installation of the photoelectric heat & smoke detector with base; Sounder With Beacon; Addressable Control module for Sounders; Addressable Control module for HVAC System; Addressable Monitor module for HVAC System; 2C x 1.5 Sqm FR Rated Armored - Cable For Loop Wiring; DACT (Auto - Dailer) for 24x7 Civil Defence; Transmission Communication cable - Fiber Optics 12Core; Transmission Communication cable - Ethernet Cable; Supply, install to site and installation of power supply system for fire alarm control panel; Supply, install to site and installation of power cable; Fire Fighter’s Telephone Centre; Fireman’s Telephone Jack; Voice Command Center |
| T/C-SPS | Testing and Commissioning of Sewage Pump Stations& soft scape and planting work | 2027-02-03 → 2027-06-03 (+120d) | 2027-02-03 → 2027-06-03 (+120d) | 12.5d → -76.2d |  |
| 1 | **Handing over and close out** | 2027-01-04 → 2026-10-24 (-72d) | 2027-02-24 → 2027-06-20 (+116d) |  |  |
| 2 | **As-Built** | 2027-01-04 → 2026-10-24 (-72d) | 2027-02-24 → 2027-06-20 (+116d) |  |  |
| HO-130 | Submission As-Built Drawing For Pond | 2027-01-04 → 2026-10-24 (-72d) | 2027-01-19 → 2026-11-08 (-72d) | 26d → 88d |  |
| HO-100 | Submission As-Built Drawing For Sewage Network | 2027-01-20 → 2027-05-20 (+120d) | 2027-02-04 → 2027-06-06 (+122d) | 12d → -77.2d |  |
| HO-160 | Submission As-Built Drawing For Telecom Network | 2027-01-25 → 2027-05-24 (+119d) | 2027-02-07 → 2027-06-07 (+120d) | 10d → -78.2d |  |
| HO-180 | Submission As-Built Drawing For Irrigation Network | 2027-02-03 → 2027-05-29 (+115d) | 2027-02-21 → 2027-06-10 (+109d) | 1.04d → -82d |  |
| HO-190 | As-Built Drawing For Potable Water Network | 2027-02-04 → 2027-05-30 (+115d) | 2027-02-22 → 2027-06-12 (+110d) | 0.04d → -83d |  |
| HO-210 | Submission As-Built Drawing For Pump station | 2027-02-03 → 2027-06-03 (+120d) | 2027-02-04 → 2027-06-05 (+121d) | 12.5d → -76.2d |  |
| HO-150 | Submission As-Built Drawing For Street Lighting Network | 2027-02-13 → 2027-06-05 (+112d) | 2027-02-22 → 2027-06-12 (+110d) | 0d → -83d |  |
| HO-170 | Submission As-Built Drawing For Medium Voltage Network | 2027-02-07 → 2027-06-06 (+119d) | 2027-02-24 → 2027-06-20 (+116d) | -1d → -89.2d |  |
| HO-140 | Submission As-Built Drawing For Roads Network | 2027-02-21 → 2027-06-12 (+111d) | 2027-02-24 → 2027-06-14 (+110d) | -1.5d → -85d |  |
| 1 | **De-Mobilization Works** | 2027-02-15 → 2027-06-07 (+112d) | 2027-02-22 → 2027-06-12 (+110d) |  |  |
| HO-230 | Remove Temporary Car Shades | 2027-02-15 → 2027-06-07 (+112d) | 2027-02-22 → 2027-06-12 (+110d) | 0.5d → -83d |  |
| 3 | **Handing Over** | 2027-02-21 → 2027-06-12 (+111d) | 2027-02-24 → 2027-06-14 (+110d) |  |  |
| HO-250 | Review B.O.Q Qty. to ensure compliance with the actual status | 2027-02-21 → 2027-06-12 (+111d) | 2027-02-24 → 2027-06-14 (+110d) | -1.5d → -85d |  |

## Version 4 (data date 2026-10-13, saved 2026-10-13, file MOD3-3147-BL0-R0-6UPDATE 13-10-2026.xer)

Note of the change: Renumber project folders 01–23 in order (after removing projects 12 and 25)

Last finish 2027-06-20 → 2027-06-06 (-14d). Complete tasks 251 → 291.

Changed:

| ID | Task | Start | Finish | Complete | Total float | Predecessors |
| --- | --- | --- | --- | --- | --- | --- |
| MS | **Key Milestones** |  | 2027-06-20 → 2027-06-06 (-14d) |  |  |  |
| CM | **Contractual Milestones** |  | 2027-06-20 → 2027-06-06 (-14d) |  |  |  |
| MS-CF-ENG | Completion of Submitting and Approval of Shopdrwing and Material | 2026-10-14 → 2026-08-21 A (-54d) | 2026-10-14 → 2026-08-21 A (-54d) | 0% → 100% | -70d → none |  |
| MS-CF-SD | Completion of Construction Works for Storm Drainage Network | 2027-04-24 → 2027-04-10 (-14d) | 2027-04-24 → 2027-04-10 (-14d) |  | -83.2d → -50d |  |
| MS-CF-IR | Completion of Construction Works for Irrigation Network | 2027-04-21 → 2027-04-12 (-9d) | 2027-04-21 → 2027-04-12 (-9d) |  | -50.5d → -43d |  |
| MS-CF-MV | Completion of Construction Works for Medium Voltage Network | 2027-04-29 → 2027-04-20 (-9d) | 2027-04-29 → 2027-04-20 (-9d) |  | -76.5d → -69d |  |
| MS-CF-TSE | Completion of Construction Works for Treated Sewage Effluent Network | 2027-05-04 → 2027-04-26 (-8d) | 2027-05-04 → 2027-04-26 (-8d) |  | -62d → -54.5d |  |
| MS-CF-TE | Completion of Construction Works for Telecom Network | 2027-05-09 → 2027-04-29 (-10d) | 2027-05-09 → 2027-04-29 (-10d) |  | -84.5d → -66d |  |
| MS-CF-SL | Completion of Construction Works for Street Lighting Network | 2027-05-22 → 2027-05-06 (-16d) | 2027-05-22 → 2027-05-06 (-16d) |  | -77.5d → -70d |  |
| MS-CF-PW | Completion of Construction Works for Potable Water Network | 2027-05-22 → 2027-05-08 (-14d) | 2027-05-22 → 2027-05-08 (-14d) |  | -72d → -64.5d |  |
| MS-CF-RD | Completion of Construction Works for Road Works | 2027-06-07 → 2027-05-30 (-8d) | 2027-06-07 → 2027-05-30 (-8d) |  | -79d → -71.5d |  |
| MS-CF-PF | Project Completion Date | 2027-06-20 → 2027-06-06 (-14d) | 2027-06-20 → 2027-06-06 (-14d) |  | -89.2d → -77.5d |  |
| ENG | **Engineering Works** |  | 2026-10-14 → 2026-10-21 (+7d) |  |  |  |
| SD11 | **Material Submittals and Approvals** |  | 2026-10-14 → 2026-10-21 (+7d) |  |  |  |
| 2 | **Short Lead Time Items** |  | 2026-10-13 → 2026-10-20 (+7d) |  |  |  |
| 1 | **Superstructure Works** |  | 2026-10-13 → 2026-10-20 (+7d) |  |  |  |
| SL111 | **Storage Tank (TSE)** |  | 2026-10-13 → 2026-10-20 (+7d) |  |  |  |
| 1 | **Submission of Material** | 2026-10-06 → 2026-10-13 (+7d) | 2026-10-13 → 2026-10-20 (+7d) |  |  |  |
| ENG-MT-TSE-CV-S-130 | Material Submittal for Civil Works for Storage Tank (TSE) | 2026-10-06 → 2026-10-13 (+7d) | 2026-10-13 → 2026-10-20 (+7d) |  | -75.75d → -9d | ENG-MT-SLS-CV-S-100 → none |
| ENG-MT-TSE-CV-A-140 | Material Approval for Civil Works for Storage Tank (TSE) |  |  |  |  | ENG-MT-SLS-CV-S-100 → none |
| 1 | **Long Lead Time Items** |  | 2026-10-14 → 2026-10-21 (+7d) |  |  |  |
| 2 | **Superstructure Works** | 2026-10-06 → 2026-10-13 (+7d) | 2026-10-14 → 2026-10-21 (+7d) |  |  |  |
| SL | **Pump Stations** | 2026-10-06 → 2026-10-13 (+7d) | 2026-10-14 → 2026-10-21 (+7d) |  |  |  |
| 1 | **Submission of Material** | 2026-10-06 → 2026-10-13 (+7d) | 2026-10-13 → 2026-10-20 (+7d) |  |  |  |
| ENG-MT-SPS-MC-S-100 | Material Submittal for Electromechanical Works for Pump Stations | 2026-10-06 → 2026-10-13 (+7d) | 2026-10-13 → 2026-10-20 (+7d) |  | -70d → -34d |  |
| 2 | **Approval of Material** | 2026-10-06 → 2026-10-13 (+7d) | 2026-10-14 → 2026-10-21 (+7d) |  |  |  |
| ENG-MT-SPS-MC-A-110 | Material Approval for Electromechanical Works for Pump Stations | 2026-10-06 → 2026-10-13 (+7d) | 2026-10-14 → 2026-10-21 (+7d) |  | -70d → -34d |  |
| SL1 | **Storage Tank (TSE)** | 2026-10-06 → 2026-10-13 (+7d) | 2026-10-14 → 2026-10-21 (+7d) |  |  |  |
| 1 | **Submission of Material** | 2026-10-06 → 2026-10-13 (+7d) | 2026-10-13 → 2026-10-20 (+7d) |  |  |  |
| ENG-MT-TSE-MC-S-110 | Material Submittal for Electromechanical Works for Storage Tank (TSE) | 2026-10-06 → 2026-10-13 (+7d) | 2026-10-13 → 2026-10-20 (+7d) |  | -70d → -64d | ENG-MT-SPS-MC-S-100 SS, ENG-MT-SPS-MC-S-100 FF → none |
| 2 | **Approval of Material** | 2026-10-06 → 2026-10-13 (+7d) | 2026-10-14 → 2026-10-21 (+7d) |  |  |  |
| ENG-MT-TSE-MC-A-120 | Material Approval for Electromechanical Works for Storage Tank (TSE) | 2026-10-06 → 2026-10-13 (+7d) | 2026-10-14 → 2026-10-21 (+7d) |  | -70d → -64d |  |
| PROC | **Procurement Cycle** |  | 2027-05-03 → 2027-04-24 (-9d) |  |  |  |
| NLL | **Short Lead Time Items** |  | 2027-05-03 → 2027-04-05 (-28d) |  |  |  |
| INF | **Infrastructure Networks** |  | 2027-05-03 → 2027-04-05 (-28d) |  |  |  |
| RD | **Road Works** |  | 2026-10-06 → 2026-10-13 (+7d) |  |  |  |
| PRO-RD-PO-120 | Issuance of Purchase Order for Prime Coat of Road Works |  |  |  |  | ENG-MT-RD-A-120, ENG-MT-SW-TF-A-100 → ENG-MT-RD-A-120 |
| PRO-RD-PO-130 | Issuance of Purchase Order for Bituminous Base & Wearing Courses of Road Works |  |  |  |  | ENG-MT-RD-A-130, ENG-MT-SW-TF-A-100 → ENG-MT-RD-A-130 |
| DL | **Material Delivery & Site Inspection** |  | 2026-10-06 → 2026-10-13 (+7d) |  |  |  |
| 1 | **Pre-Bituminous Construction** |  | 2026-10-06 → 2026-10-13 (+7d) |  |  |  |
| PRO-R25-RD-DL-100 | Material Delivery & Site Inspection for Subgrade of Road Works |  | 2026-10-06 → 2026-10-13 (+7d) |  | 50.5d → 44.5d |  |
| PRO-R25-RD-DL-110 | Material Delivery & Site Inspection for Aggregate Base Course of Road Works | 2026-10-06 → 2026-10-13 (+7d) | 2026-10-06 → 2026-10-13 (+7d) |  | 64d → 58d |  |
| 4 | **Bituminous Construction** | 2026-10-06 → 2026-10-13 (+7d) | 2026-10-06 → 2026-10-13 (+7d) |  |  |  |
| PRO-R25-RD-DL-160 | Material Delivery & Site Inspection for Prime Coat of Road Works | 2026-10-06 → 2026-10-13 (+7d) | 2026-10-06 → 2026-10-13 (+7d) |  | 79d → 73d |  |
| PRO-R25-RD-DL-170 | Material Delivery & Site Inspection for Bituminous Base & Wearing Courses of Road Works | 2026-10-06 → 2026-10-13 (+7d) | 2026-10-06 → 2026-10-13 (+7d) |  | 86d → 80d |  |
| 2 | **Pavement Works** | 2026-10-06 → 2026-10-13 (+7d) | 2026-10-06 → 2026-10-13 (+7d) |  |  |  |
| PRO-R25-RD-DL-120 | Material Delivery & Site Inspection of Interlock Tiles for Landscaping | 2026-10-06 → 2026-10-13 (+7d) | 2026-10-06 → 2026-10-13 (+7d) |  | 77d → 71d |  |
| PRO-R25-RD-DL-130 | Material Delivery & Site Inspection of Curbstones for Landscaping | 2026-10-06 → 2026-10-13 (+7d) | 2026-10-06 → 2026-10-13 (+7d) |  | 64.8d → 58.8d |  |
| 3 | **Traffic Signs Boards and Roads Marking** | 2026-10-06 → 2026-10-13 (+7d) | 2026-10-06 → 2026-10-13 (+7d) |  |  |  |
| PRO-R25-RD-DL-140 | Material Delivery & Site Inspection of Traffic Signs Boards For Road Works | 2026-10-06 → 2026-10-13 (+7d) | 2026-10-06 → 2026-10-13 (+7d) |  | 103d → 97d |  |
| PRO-R25-RD-DL-150 | Material Delivery & Site Inspection of Road Markings For Road Works | 2026-10-06 → 2026-10-13 (+7d) | 2026-10-06 → 2026-10-13 (+7d) |  | 96d → 90d |  |
| IR1 | **Softscape and Planting Works** | 2026-10-06 → 2026-10-13 (+7d) | 2027-02-04 → 2027-02-14 (+10d) |  |  |  |
| PO | **Issuance of Purchase Orders** | 2026-10-06 → 2026-10-13 (+7d) | 2026-10-12 → 2026-10-19 (+7d) |  |  |  |
| 1 | **Main Line Pipes** | 2026-10-06 → 2026-10-13 (+7d) | 2026-10-12 → 2026-10-19 (+7d) |  |  |  |
| PRO-IR-PO-140 | Issuance of Purchase Order for Softscape and Planting Works | 2026-10-06 → 2026-10-13 (+7d) | 2026-10-12 → 2026-10-19 (+7d) |  | -59.75d → -44.75d |  |
| PRO-IR-PO-150 | Issuance of Purchase Order for Site Furnishings (Seating Bench,Stone Boulders and Gravel) | 2026-10-06 → 2026-10-13 (+7d) | 2026-10-12 → 2026-10-19 (+7d) |  | -56.75d → 6d |  |
| MF | **Manufacturing of Material** | 2026-10-13 → 2026-10-20 (+7d) | 2027-01-10 → 2027-01-17 (+7d) |  |  |  |
| 1 | **Main Line Pipes** | 2026-10-13 → 2026-10-20 (+7d) | 2027-01-10 → 2027-01-17 (+7d) |  |  |  |
| PRO-IR-MF-140 | Manufacturing of Softscape and Planting Works | 2026-10-13 → 2026-10-20 (+7d) | 2027-01-10 → 2027-01-17 (+7d) |  | -71d → -54d |  |
| PRO-IR-MF-150 | Manufacturing of Valves for Site Furnishings (Seating Bench,Stone Boulders and Gravel) | 2026-10-13 → 2026-10-20 (+7d) | 2027-01-10 → 2027-01-17 (+7d) |  | -68d → 7d |  |
| 1DL | **1st Material Delivery & Site Inspection** | 2027-01-11 → 2027-01-18 (+7d) | 2027-01-17 → 2027-01-24 (+7d) |  |  |  |
| 1 | **Main Line Pipes** | 2027-01-11 → 2027-01-18 (+7d) | 2027-01-17 → 2027-01-24 (+7d) |  |  |  |
| PRO-IR-1DL-140 | 1ST Material Delivery for Softscape and Planting Works | 2027-01-11 → 2027-01-18 (+7d) | 2027-01-17 → 2027-01-24 (+7d) |  | -61d → -46d |  |
| PRO-IR-1DL-150 | 1ST Material Delivery for Site Furnishings (Seating Bench,Stone Boulders and Gravel) | 2027-01-11 → 2027-01-18 (+7d) | 2027-01-17 → 2027-01-24 (+7d) |  | -58d → 6d |  |
| DL | **Material Delivery & Site Inspection** | 2027-01-18 → 2027-01-25 (+7d) | 2027-02-04 → 2027-02-14 (+10d) |  |  |  |
| 1 | **Main Line Pipes** | 2027-01-18 → 2027-01-25 (+7d) | 2027-02-04 → 2027-02-14 (+10d) |  |  |  |
| PRO-R25-IR-DL-140 | Material Delivery & Site Inspection of Softscape and Planting Works | 2027-01-18 → 2027-01-25 (+7d) | 2027-01-31 → 2027-02-07 (+7d) |  | -61d → -46d |  |
| PRO-R25-IR-DL-150 | Material Delivery & Site Inspection of Site Furnishings (Seating Bench,Stone Boulders and Gravel) | 2027-01-18 → 2027-01-25 (+7d) | 2027-02-04 → 2027-02-14 (+10d) |  | -58d → 6d |  |
| SW | **Sewage Network** | 2026-06-23 → 2026-03-03 (-112d) |  |  |  |  |
| PO | **Issuance of Purchase Orders** | 2026-06-23 → 2026-03-03 (-112d) | 2026-10-12 → 2026-03-03 (-223d) |  |  |  |

| ID | Task | Start | Finish | Duration | Complete | Total float | Predecessors |
| --- | --- | --- | --- | --- | --- | --- | --- |
| 1 | **Main Line Sections** | 2026-06-23 → 2026-03-03 (-112d) | 2026-06-29 → 2026-03-03 (-118d) |  |  |  |  |
| PRO-SW-PO-100 | Issuance of Purchase Order for Main Line Pipes of Sewage Network | 2026-06-23 A → 2026-03-03 A (-112d) | 2026-06-29 A → 2026-03-03 A (-118d) |  |  |  |  |
| PRO-SW-PO-110 | Issuance of Purchase Order for Manhole of Sewage Network | 2026-06-23 A → 2026-03-03 A (-112d) | 2026-06-29 A → 2026-03-03 A (-118d) |  |  |  |  |
| 3 | **Testing and Finishes** | 2026-10-06 → 2026-03-03 (-217d) | 2026-10-12 → 2026-03-03 (-223d) |  |  |  |  |
| PRO-SW-PO-120 | Issuance of Purchase Order for Manhole Covers of Sewage Network | 2026-10-06 → 2026-03-03 A (-217d) | 2026-10-12 → 2026-03-03 A (-223d) | 6d → 0.75d | 0% → 100% | -74d → none | ENG-MT-SW-TF-A-100, ENG-MT-RD-A-120, ENG-MT-RD-A-130 → ENG-MT-SW-TF-A-100 |
| PRO-SW-MF-120 | Manufacturing of Manhole Covers for Sewage Network |  |  |  |  | -88d → -74d | PRO-SW-PO-120, PRO-RD-PO-120, PRO-RD-PO-130 → PRO-SW-PO-120 |
| 1 | **Main Line Sections** |  | 2026-10-06 → 2026-10-13 (+7d) |  |  |  |  |
| PRO-R25-SW-DL-110 | Material Delivery & Site Inspection of Manholes for Sewage Network | 2026-10-06 → 2026-09-13 A (-23d) | 2026-10-06 → 2026-10-13 (+7d) |  | 0% → 30% | -25d → -30.5d |  |
| SD | **Storm Drainage Network** | 2026-08-02 → 2026-03-03 (-152d) | 2027-03-17 → 2027-03-06 (-11d) |  |  |  |  |
| MF | **Manufacturing of Material** | 2026-10-09 → 2026-05-03 (-159d) |  |  |  |  |  |
| 1 | **Main Line Sections** | 2026-10-09 → 2026-05-03 (-159d) | 2026-11-22 → 2026-05-17 (-189d) |  |  |  |  |
| PRO-SD-MF-100 | Manufacturing of Materials for Manholes of Storm Drainage Network | 2026-10-13 → 2026-05-03 A (-163d) | 2026-11-22 → 2026-05-17 A (-189d) |  | 0% → 100% | -105.2d → none |  |
| PRO-SD-MF-110 | Manufacturing of Materials for Main Line Pipes of Storm Drainage Network | 2026-10-09 → 2026-05-03 A (-159d) | 2026-10-16 → 2026-05-17 A (-152d) |  | 0% → 100% | -84d → none |  |
| 2 | **Catch Basin Sections** | 2026-10-13 → 2026-05-03 (-163d) | 2026-11-01 → 2026-05-17 (-168d) |  |  |  |  |
| PRO-SD-MF-130 | Manufacturing of Materials for Catch Basins of Storm Drainage Network | 2026-10-13 → 2026-05-03 A (-163d) | 2026-11-01 → 2026-05-17 A (-168d) |  | 0% → 100% | -75d → none |  |
| PRO-SD-MF-150 | Manufacturing of Materials for Catch Basin Pipes of Storm Drainage Network | 2026-10-13 → 2026-05-03 A (-163d) | 2026-11-01 → 2026-05-17 A (-168d) |  | 0% → 100% | -75d → none |  |
| PO | **Issuance of Purchase Orders** | 2026-10-06 → 2026-03-03 (-217d) | 2026-10-13 → 2026-03-03 (-224d) |  |  |  |  |
| 1 | **Main Line Sections** | 2026-10-06 → 2026-03-03 (-217d) | 2026-10-13 → 2026-03-03 (-224d) |  |  |  |  |
| PRO-SD-PO-100 | Issuance of Purchase Order for Manholes of Storm Drainage Network | 2026-10-06 → 2026-03-03 A (-217d) | 2026-10-13 → 2026-03-03 A (-224d) |  | 0% → 100% | -88.95d → none |  |
| PRO-SD-PO-110 | Issuance of Purchase Order for Main Line Pipes of Storm Drainage Network | 2026-10-06 → 2026-03-03 A (-217d) | 2026-10-08 → 2026-03-03 A (-219d) |  | 0% → 100% | -83.75d → none |  |
| 2 | **Catch Basin Sections** | 2026-10-06 → 2026-03-03 (-217d) | 2026-10-12 → 2026-03-03 (-223d) |  |  |  |  |
| PRO-SD-PO-130 | Issuance of Purchase Order for Catch Basins of Storm Drainage Network | 2026-10-06 → 2026-03-03 A (-217d) | 2026-10-12 → 2026-03-03 A (-223d) |  | 0% → 100% | -62.75d → none |  |
| PRO-SD-PO-150 | Issuance of Purchase Order for Catch Basin Pipes of Storm Drainage Network | 2026-10-06 → 2026-03-03 A (-217d) | 2026-10-12 → 2026-03-03 A (-223d) |  | 0% → 100% | -62.75d → none |  |
| 3 | **Testing and Finishes** | 2026-10-06 → 2026-03-03 (-217d) | 2026-10-12 → 2026-03-03 (-223d) |  |  |  |  |
| PRO-SD-PO-120 | Issuance of Purchase Order for Manhole Covers of Storm Drainage Network | 2026-10-06 → 2026-03-03 A (-217d) | 2026-10-12 → 2026-03-03 A (-223d) |  | 0% → 100% | -49.75d → none |  |
| PRO-SD-PO-140 | Issuance of Purchase Order for Catch Basin Covers of Storm Drainage Network | 2026-10-06 → 2026-03-03 A (-217d) | 2026-10-12 → 2026-03-03 A (-223d) |  | 0% → 100% | -53.75d → none |  |
| 1DL | **1st Material Delivery & Site Inspection** | 2026-10-17 → 2026-09-13 (-34d) |  |  |  |  |  |
| 1 | **Main Line Sections** | 2026-10-17 → 2026-09-13 (-34d) | 2026-10-22 → 2026-09-27 (-25d) |  |  |  |  |
| PRO-SD-1DL-110 | 1ST Material Delivery for Main Line Pipes of Storm Drainage Network | 2026-10-17 → 2026-09-13 A (-34d) | 2026-10-22 → 2026-09-27 A (-25d) |  | 0% → 100% | -71d → none |  |
| 2 | **Catch Basin Sections** | 2026-11-02 → 2026-09-13 (-50d) | 2026-11-08 → 2026-10-19 (-20d) |  |  |  |  |
| PRO-SD-1DL-120 | 1ST Material Delivery for Catch Basin Pipes of Storm Drainage Network | 2026-11-02 → 2026-09-13 A (-50d) | 2026-11-08 → 2026-10-19 (-20d) |  | 0% → 40% | -63d → -38.5d |  |
| PRO-SD-1DL-130 | 1ST Material Delivery for Catch Basins of Storm Drainage Network | 2026-11-02 → 2026-09-13 A (-50d) | 2026-11-08 → 2026-10-19 (-20d) |  | 0% → 40% | -63d → -38.5d |  |
| DL | **Material Delivery & Site Inspection** |  | 2027-03-17 → 2027-03-06 (-11d) |  |  |  |  |
| 1 | **Main Line Sections** |  | 2026-11-22 → 2026-10-13 (-40d) |  |  |  |  |
| PRO-R25-SD-DL-100 | Material Delivery & Site Inspection of Manholes of Storm Drainage Network |  | 2026-11-22 → 2026-10-13 (-40d) |  |  | -89.2d → -47.5d |  |
| PRO-R25-SD-DL-120 | Material Delivery & Site Inspection of Main Line Pipes of Storm Drainage Network |  | 2026-10-24 → 2026-09-20 A (-34d) |  | 82% → 100% | -71d → none |  |
| 2 | **Catch Basin Sections** |  | 2026-11-09 → 2026-10-20 (-20d) |  |  |  |  |
| PRO-R25-SD-DL-110 | Material Delivery & Site Inspection of Catch Basin Pipes for Storm Drainage Network |  | 2026-11-09 → 2026-10-20 (-20d) |  |  | -53d → -28.5d |  |
| PRO-R25-SD-DL-130 | Material Delivery & Site Inspection of Catch Basins for Storm Drainage Network |  | 2026-11-09 → 2026-10-20 (-20d) |  |  | -53d → -28.5d |  |
| 3 | **Testing and Finishes** |  | 2027-03-17 → 2027-03-06 (-11d) |  |  |  |  |
| PRO-R25-SD-DL-140 | Material Delivery & Site Inspection of Manholes Covers for Storm Drainage Network | 2027-02-06 → 2027-01-28 (-9d) | 2027-03-17 → 2027-03-06 (-11d) |  |  | -58d → -29d | PRO-SD-1DL-140, PRO-SD-MF-120, PRO-R25-IR-DL-150 → PRO-SD-1DL-140, PRO-SD-MF-120 |
| PW | **Potable Water Network** |  | 2027-03-24 → 2027-03-30 (+6d) |  |  |  |  |
| PO | **Issuance of Purchase Orders** |  | 2026-10-17 → 2026-10-24 (+7d) |  |  |  |  |
| 1 | **Main Line Sections** |  | 2026-10-14 → 2026-10-19 (+5d) |  |  |  |  |
| PRO-PW-PO-100_R | Issuance of Purchase Order for Main Line Pipes of Potable Water Network(Remaining) | 2026-10-10 → 2026-04-02 A (-191d) | 2026-10-14 → 2026-06-15 A (-121d) |  | 0% → 100% | -83.75d → none | ENG-MT-PW-ML-A-100 FF, PRO-PW-PO-100, PRO-SD-PO-110 → ENG-MT-PW-ML-A-100 FF, PRO-PW-PO-100 |
| PRO-PW-PO-110 | Issuance of Purchase Order for Valves of Potable Water Network | 2026-10-06 → 2026-10-13 (+7d) | 2026-10-12 → 2026-10-19 (+7d) |  |  | -56.25d → -62.25d |  |
| 3 | **Fire Hydrant** | 2026-10-06 → 2026-10-13 (+7d) | 2026-10-17 → 2026-10-24 (+7d) |  |  |  |  |
| PRO-PW-PO-120 | Issuance of Purchase Order for Fire Hydrants of Potable Water Network | 2026-10-06 → 2026-10-13 (+7d) | 2026-10-17 → 2026-10-24 (+7d) |  |  | -41.25d → -47.25d |  |
| 4 | **Testing and Finishes** | 2026-10-06 → 2026-10-13 (+7d) | 2026-10-17 → 2026-10-24 (+7d) |  |  |  |  |
| PRO-PW-PO-130 | Issuance of Purchase Order for Surface Box of Potable Water Network | 2026-10-06 → 2026-10-13 (+7d) | 2026-10-17 → 2026-10-24 (+7d) |  |  | -45.75d → -51.75d |  |
| MF | **Manufacturing of Material** |  | 2027-02-04 → 2027-02-11 (+7d) |  |  |  |  |
| 1 | **Main Line Sections** |  | 2027-01-19 → 2027-01-17 (-2d) |  |  |  |  |
| PRO-PW-MF-100_R | Manufacturing of Main Line Pipes for Potable Water Network(Remaining) | 2026-10-15 → 2026-07-01 A (-106d) | 2027-01-19 → 2026-07-10 A (-193d) |  | 0% → 100% | -99d → none |  |
| PRO-PW-MF-110 | Manufacturing of Valves for Potable Water Network | 2026-10-13 → 2026-10-20 (+7d) | 2027-01-10 → 2027-01-17 (+7d) |  |  | -67.5d → -74.5d |  |
| 3 | **Fire Hydrant** | 2026-10-18 → 2026-10-25 (+7d) | 2026-12-16 → 2026-12-23 (+7d) |  |  |  |  |
| PRO-PW-MF-120 | Manufacturing of Fire Hydrants for Potable Water Network | 2026-10-18 → 2026-10-25 (+7d) | 2026-12-16 → 2026-12-23 (+7d) |  |  | -49.5d → -56.5d |  |
| 4 | **Testing and Finishes** | 2026-10-18 → 2026-10-25 (+7d) | 2027-02-04 → 2027-02-11 (+7d) |  |  |  |  |
| PRO-PW-MF-130 | Manufacturing for Surface Box of Potable Water Network | 2026-10-18 → 2026-10-25 (+7d) | 2027-02-04 → 2027-02-11 (+7d) |  |  | -55d → -62d |  |
| 1DL | **1st Material Delivery & Site Inspection** |  | 2027-02-14 → 2027-02-21 (+7d) |  |  |  |  |
| 1 | **Main Line Sections** |  | 2027-01-17 → 2027-01-24 (+7d) |  |  |  |  |
| PRO-PW-1DL-100_R | 1ST Material Delivery for Main Line Pipes of Potable Water Network(Remaining) | 2026-10-15 → 2026-07-30 A (-77d) | 2027-01-05 → 2027-01-03 (-2d) |  | 0% → 90% | -73d → -71d |  |
| PRO-PW-1DL-110 | 1ST Material Delivery for Valves of Potable Water Network | 2027-01-11 → 2027-01-18 (+7d) | 2027-01-17 → 2027-01-24 (+7d) |  |  | -57.5d → -63.5d |  |
| 3 | **Fire Hydrant** | 2026-12-17 → 2026-12-24 (+7d) | 2026-12-23 → 2026-12-30 (+7d) |  |  |  |  |
| PRO-PW-1DL-120 | 1ST Material Delivery for Fire Hydrants of Potable Water Network | 2026-12-17 → 2026-12-24 (+7d) | 2026-12-23 → 2026-12-30 (+7d) |  |  | -42.5d → -48.5d |  |
| 4 | **Testing and Finishes** | 2027-02-06 → 2027-02-13 (+7d) | 2027-02-14 → 2027-02-21 (+7d) |  |  |  |  |
| PRO-PW-1DL-130 | 1ST Material Delivery for Finishes of Potable Water Network | 2027-02-06 → 2027-02-13 (+7d) | 2027-02-14 → 2027-02-21 (+7d) |  |  | -48d → -53d |  |
| DL | **Material Delivery & Site Inspection** |  | 2027-03-24 → 2027-03-30 (+6d) |  |  |  |  |
| 1 | **Main Line Sections** |  | 2027-01-18 → 2027-01-25 (+7d) |  |  |  |  |
| PRO-R25-PW-DL-100_R | Material Delivery & Site Inspection of Main Line Pipes for Potable Water Network(Remaining) |  | 2027-01-05 → 2027-01-03 (-2d) |  |  | -73d → -71d |  |
| PRO-R25-PW-DL-110 | Material Delivery & Site Inspection of Valves for Potable Water Network | 2027-01-18 → 2027-01-25 (+7d) | 2027-01-18 → 2027-01-25 (+7d) |  |  | -51.5d → -57.5d |  |

| ID | Task | Start | Finish | Complete | Total float | Predecessors |
| --- | --- | --- | --- | --- | --- | --- |
| 3 | **Fire Hydrant** | 2026-12-24 → 2026-12-31 (+7d) | 2026-12-24 → 2026-12-31 (+7d) |  |  |  |
| PRO-R25-PW-DL-120 | Material Delivery & Site Inspection of Fire Hydrants for Potable Water Network | 2026-12-24 → 2026-12-31 (+7d) | 2026-12-24 → 2026-12-31 (+7d) |  | -42.5d → -48.5d |  |
| 4 | **Testing and Finishes** | 2027-02-14 → 2027-02-22 (+8d) | 2027-03-24 → 2027-03-30 (+6d) |  |  |  |
| PRO-R25-PW-DL-130 | Material Delivery & Site Inspection for Finishes of Potable Water Network | 2027-02-14 → 2027-02-22 (+8d) | 2027-03-24 → 2027-03-30 (+6d) |  | -48d → -53d |  |
| PRO-IR-PO-100_R | Issuance of Purchase Order for Main Line Pipes of Irrigation Network(Remaining) | 2026-10-15 → 2026-01-28 A (-260d) | 2026-10-19 → 2026-06-15 A (-126d) | 0% → 100% | -68.05d → none | ENG-MT-IR-ML-A-100, PRO-IR-PO-100, PRO-PW-PO-100_R → ENG-MT-IR-ML-A-100, PRO-IR-PO-100 |
| PRO-IR-PO-110 | Issuance of Purchase Order for Valves of Irrigation Network |  |  |  |  | ENG-MT-IR-ML-A-110, ENG-SH-HS-S-100, PRO-PW-PO-110 → ENG-MT-IR-ML-A-110 |
| MF | **Manufacturing of Material** | 2026-10-19 → 2026-06-29 (-112d) |  |  |  |  |
| 1 | **Main Line Pipes** | 2026-10-19 → 2026-06-29 (-112d) |  |  |  |  |
| PRO-IR-MF-100 | Manufacturing of Main Line Pipes for Irrigation Network | 2026-10-19 → 2026-06-29 A (-112d) | 2027-01-13 → 2026-07-20 A (-177d) | 0% → 100% | -81.3d → none |  |
| 1DL | **1st Material Delivery & Site Inspection** | 2027-01-13 → 2026-07-22 (-175d) |  |  |  |  |
| 1 | **Main Line Pipes** | 2027-01-13 → 2026-07-22 (-175d) |  |  |  |  |
| PRO-IR-1DL-100 | 1ST Material Delivery for Main Line Pipes of Irrigation Network | 2027-01-13 → 2026-07-22 A (-175d) | 2027-01-19 → 2026-10-13 (-98d) | 0% → 30% | -70.3d → 14d |  |
| DL | **Material Delivery & Site Inspection** | 2027-01-19 → 2026-10-13 (-98d) |  |  |  |  |
| 1 | **Main Line Pipes** | 2027-01-19 → 2026-10-13 (-98d) |  |  |  |  |
| PRO-R25-IR-DL-100 | Material Delivery & Site Inspection of Main Line Pipes for Irrigation Network | 2027-01-19 → 2026-10-13 (-98d) | 2027-01-19 → 2026-10-13 (-98d) |  | -70.3d → 14d |  |
| TSE | **Treated Sewage Effluent (Tse)** | 2026-04-01 → 2026-03-03 (-29d) | 2027-01-18 → 2027-01-25 (+7d) |  |  |  |
| PO | **Issuance of Purchase Orders** | 2026-10-06 → 2026-03-03 (-217d) | 2026-10-12 → 2026-10-19 (+7d) |  |  |  |
| 1 | **Main Line Pipes** | 2026-10-06 → 2026-03-03 (-217d) | 2026-10-12 → 2026-10-19 (+7d) |  |  |  |
| PRO-TSE-PO-120 | Issuance of Purchase Order for Main Line Pipes of Treated Sewage Effluent (Tse) | 2026-10-06 → 2026-03-03 A (-217d) | 2026-10-12 → 2026-03-03 A (-223d) | 0% → 100% | -66.25d → none | ENG-MT-IR-ML-A-120, ENG-SH-HS-S-100 → ENG-MT-IR-ML-A-120 |
| PRO-TSE-PO-130 | Issuance of Purchase Order for Valves of Treated Sewage Effluent (Tse) | 2026-10-06 → 2026-10-13 (+7d) | 2026-10-12 → 2026-10-19 (+7d) |  | -47.25d → -53.25d | ENG-MT-IR-ML-A-130, ENG-SH-HS-S-100 → ENG-MT-IR-ML-A-130 |
| MF | **Manufacturing of Material** | 2026-10-13 → 2026-07-20 (-85d) | 2027-01-10 → 2027-01-17 (+7d) |  |  |  |
| 1 | **Main Line Pipes** | 2026-10-13 → 2026-07-20 (-85d) | 2027-01-10 → 2027-01-17 (+7d) |  |  |  |
| PRO-TSE-MF-120 | Manufacturing of Main Line Pipes for Treated Sewage Effluent (Tse) | 2026-10-13 → 2026-07-20 A (-85d) | 2027-01-10 → 2026-08-03 A (-160d) | 0% → 100% | -78.5d → none |  |
| PRO-TSE-MF-130 | Manufacturing of Valves for Treated Sewage Effluent (Tse) | 2026-10-13 → 2026-10-20 (+7d) | 2027-01-10 → 2027-01-17 (+7d) |  | -56.5d → -63.5d |  |
| 1DL | **1st Material Delivery & Site Inspection** | 2027-01-11 → 2026-10-13 (-90d) | 2027-01-17 → 2027-01-24 (+7d) |  |  |  |
| 1 | **Main Line Pipes** | 2027-01-11 → 2026-10-13 (-90d) | 2027-01-17 → 2027-01-24 (+7d) |  |  |  |
| PRO-TSE-1DL-120 | 1ST Material Delivery for Main Line Pipes of Treated Sewage Effluent (Tse) | 2027-01-11 → 2026-10-13 (-90d) | 2027-01-17 → 2026-10-19 (-90d) |  | -67.5d → 9.5d |  |
| PRO-TSE-1DL-130 | 1ST Material Delivery for Valves of Treated Sewage Effluent (Tse) | 2027-01-11 → 2027-01-18 (+7d) | 2027-01-17 → 2027-01-24 (+7d) |  | -48.5d → -54.5d |  |
| DL | **Material Delivery & Site Inspection** |  | 2027-01-18 → 2027-01-25 (+7d) |  |  |  |
| 1 | **Main Line Pipes** |  | 2027-01-18 → 2027-01-25 (+7d) |  |  |  |
| PRO-R25-TSE-DL-120_R | Material Delivery & Site Inspection of Main Line Pipes for Treated Sewage Effluent (Tse)(Remaining) |  | 2027-01-18 → 2026-10-20 (-90d) |  | -67.5d → 9.5d |  |
| PRO-R25-TSE-DL-130 | Material Delivery & Site Inspection of Valves for Treated Sewage Effluent (Tse) | 2027-01-18 → 2027-01-25 (+7d) | 2027-01-18 → 2027-01-25 (+7d) |  | -48.5d → -54.5d |  |
| MV | **Medium Voltage Network** | 2026-10-06 → 2026-10-13 (+7d) | 2027-03-15 → 2027-03-22 (+7d) |  |  |  |
| PO | **Issuance of Purchase Orders** | 2026-10-06 → 2026-10-13 (+7d) | 2026-10-19 → 2026-10-26 (+7d) |  |  |  |
| 1 | **Cabling Works** | 2026-10-06 → 2026-10-13 (+7d) | 2026-10-19 → 2026-10-26 (+7d) |  |  |  |
| PRO-MV-PO-100 | Issuance of Purchase Order for Medium Voltage Cables of Medium Voltage Network | 2026-10-06 → 2026-10-13 (+7d) | 2026-10-19 → 2026-10-26 (+7d) |  | -52.25d → -58.25d |  |
| 3 | **Termination and Testing Works** | 2026-10-06 → 2026-10-13 (+7d) | 2026-10-19 → 2026-10-26 (+7d) |  |  |  |
| PRO-MV-PO-120 | Issuance of Purchase Order for Termination and Joints Kits of Medium Voltage Network | 2026-10-06 → 2026-10-13 (+7d) | 2026-10-19 → 2026-10-26 (+7d) |  | -59.75d → -65.75d |  |
| MF | **Manufacturing of Material** | 2026-10-20 → 2026-10-27 (+7d) | 2027-01-17 → 2027-01-24 (+7d) |  |  |  |
| 1 | **Cabling Works** | 2026-10-20 → 2026-10-27 (+7d) | 2026-12-18 → 2026-12-25 (+7d) |  |  |  |
| PRO-MV-MF-100 | Manufacturing of Medium Voltage Cables for Medium Voltage Network | 2026-10-20 → 2026-10-27 (+7d) | 2026-12-18 → 2026-12-25 (+7d) |  | -62.5d → -69.5d |  |
| 3 | **Termination and Testing Works** | 2026-10-20 → 2026-10-27 (+7d) | 2027-01-17 → 2027-01-24 (+7d) |  |  |  |
| PRO-MV-MF-110 | Manufacturing of Termination and Joints Kits for Medium Voltage Network | 2026-10-20 → 2026-10-27 (+7d) | 2027-01-17 → 2027-01-24 (+7d) |  | -71d → -78d |  |
| 1DL | **1st Material Delivery & Site Inspection** | 2026-12-19 → 2026-12-26 (+7d) | 2027-02-02 → 2027-02-10 (+8d) |  |  |  |
| 1 | **Cabling Works** | 2026-12-19 → 2026-12-26 (+7d) | 2026-12-31 → 2027-01-07 (+7d) |  |  |  |
| PRO-MV-1DL-100 | 1ST Material Delivery for Medium Voltage Cables of Medium Voltage Network | 2026-12-19 → 2026-12-26 (+7d) | 2026-12-31 → 2027-01-07 (+7d) |  | -53.5d → -59.5d |  |
| 3 | **Termination and Testing Works** | 2027-01-18 → 2027-01-25 (+7d) | 2027-02-02 → 2027-02-10 (+8d) |  |  |  |
| PRO-MV-1DL-120 | 1ST Material Delivery for Termination and Joints Kits of Medium Voltage Network | 2027-01-18 → 2027-01-25 (+7d) | 2027-02-02 → 2027-02-10 (+8d) |  | -61d → -67d |  |
| DL | **Material Delivery & Site Inspection** | 2027-01-02 → 2027-01-09 (+7d) | 2027-03-15 → 2027-03-22 (+7d) |  |  |  |
| 1 | **Cabling Works** | 2027-01-02 → 2027-01-09 (+7d) | 2027-01-02 → 2027-01-09 (+7d) |  |  |  |
| PRO-MV-DL-100 | Material Delivery & Site Inspection of Medium Voltage Cables for Medium Voltage Network | 2027-01-02 → 2027-01-09 (+7d) | 2027-01-02 → 2027-01-09 (+7d) |  | -53.5d → -59.5d |  |
| 3 | **Termination and Testing Works** | 2027-02-03 → 2027-02-10 (+7d) | 2027-03-15 → 2027-03-22 (+7d) |  |  |  |
| PRO-MV-DL-110 | Material Delivery & Site Inspection of Termination and Joints Kits for Medium Voltage Network | 2027-02-03 → 2027-02-10 (+7d) | 2027-03-15 → 2027-03-22 (+7d) |  | -61d → -67d |  |
| SL | **Low Voltage and Street Lighting Network** | 2026-10-06 → 2026-05-13 (-146d) | 2027-05-03 → 2026-11-29 (-155d) |  |  |  |
| PO | **Issuance of Purchase Orders** | 2026-10-06 → 2026-05-13 (-146d) | 2026-10-17 → 2026-05-25 (-145d) |  |  |  |
| 1 | **Cabling Works** | 2026-10-06 → 2026-05-13 (-146d) | 2026-10-12 → 2026-05-25 (-140d) |  |  |  |
| PRO-SL-PO-100 | Issuance of Purchase Order for Lighting Cables of Street Lighting Network | 2026-10-06 → 2026-05-13 A (-146d) | 2026-10-12 → 2026-05-25 A (-140d) | 0% → 100% | -52.25d → none |  |
| 2 | **Lighting Poles Works** | 2026-10-06 → 2026-05-13 (-146d) | 2026-10-12 → 2026-05-25 (-140d) |  |  |  |
| PRO-SL-PO-110 | Issuance of Purchase Order for Lighting Poles Foundations of Street Lighting Network | 2026-10-06 → 2026-05-13 A (-146d) | 2026-10-12 → 2026-05-25 A (-140d) | 0% → 100% | -81.25d → none |  |
| PRO-SL-PO-120 | Issuance of Purchase Order for Lighting Poles of Street Lighting Network | 2026-10-06 → 2026-05-13 A (-146d) | 2026-10-12 → 2026-05-25 A (-140d) | 0% → 100% | -47.25d → none |  |
| PRO-SL-PO-140 | Issuance of Purchase Order for Lighting Fixtures of Street Lighting Network | 2026-10-06 → 2026-05-13 A (-146d) | 2026-10-12 → 2026-05-25 A (-140d) | 0% → 100% | -36.75d → none | ENG-MT-SL-S-120, ENG-MT-SL-A-120, PRO-RD-PO-140 → ENG-MT-SL-S-120, ENG-MT-SL-A-120 |
| 3 | **Distribution Panel Board** | 2026-10-06 → 2026-05-13 (-146d) | 2026-10-17 → 2026-05-25 (-145d) |  |  |  |
| PRO-SL-PO-160 | Issuance of Purchase Order for Distrubution Panel Boards of Street Lighting Network | 2026-10-06 → 2026-05-13 A (-146d) | 2026-10-17 → 2026-05-25 A (-145d) | 0% → 100% | -36.75d → none |  |
| 4 | **Earthing System Works** | 2026-10-06 → 2026-05-13 (-146d) | 2026-10-14 → 2026-05-25 (-142d) |  |  |  |
| PRO-SL-PO-150 | Issuance of Purchase Order for Lighting Earthing of Street Lighting Network | 2026-10-06 → 2026-05-13 A (-146d) | 2026-10-14 → 2026-05-25 A (-142d) | 0% → 100% | -48.75d → none |  |
| 5 | **Termination and Testing Works** | 2026-10-06 → 2026-05-13 (-146d) | 2026-10-14 → 2026-05-25 (-142d) |  |  |  |
| PRO-SL-PO-130 | Issuance of Purchase Order for Fuse Boxes of Street Lighting Network | 2026-10-06 → 2026-05-13 A (-146d) | 2026-10-14 → 2026-05-25 A (-142d) | 0% → 100% | -76d → none |  |
| PRO-SL-PO-170 | Issuance of Purchase Order for Cable Lugs of Street Lighting Network | 2026-10-06 → 2026-05-13 A (-146d) | 2026-10-14 → 2026-05-25 A (-142d) | 0% → 100% | -45.75d → none |  |
| MF | **Manufacturing of Material** | 2026-10-13 → 2026-06-01 (-134d) | 2027-03-16 → 2026-06-17 (-272d) |  |  |  |
| 1 | **Cabling Works** | 2026-10-13 → 2026-06-01 (-134d) | 2027-01-10 → 2026-06-17 (-207d) |  |  |  |

| ID | Task | Start | Finish | Complete | Total float |
| --- | --- | --- | --- | --- | --- |
| PRO-SL-MF-100 | Manufacturing of Lighting Cables for Street Lighting Network | 2026-10-13 → 2026-06-01 A (-134d) | 2027-01-10 → 2026-06-17 A (-207d) | 0% → 100% | -62.5d → none |
| 2 | **Lighting Poles Works** | 2026-10-13 → 2026-06-01 (-134d) | 2027-02-17 → 2026-06-17 (-245d) |  |  |
| PRO-SL-MF-110 | Manufacturing of Lighting Poles Foundations for Street Lighting Network | 2026-10-13 → 2026-06-01 A (-134d) | 2027-01-10 → 2026-06-17 A (-207d) | 0% → 100% | -96.38d → none |
| PRO-SL-MF-120 | Manufacturing of Lighting Poles for Street Lighting Network | 2026-10-13 → 2026-06-01 A (-134d) | 2027-01-10 → 2026-06-17 A (-207d) | 0% → 100% | -56.5d → none |
| PRO-SL-MF-140 | Manufacturing of Lighting Fixtures for Street Lighting Network | 2026-10-13 → 2026-06-01 A (-134d) | 2027-02-17 → 2026-06-17 A (-245d) | 0% → 100% | -44d → none |
| 3 | **Distribution Panel Board** | 2026-10-18 → 2026-06-01 (-139d) | 2027-02-04 → 2026-06-17 (-232d) |  |  |
| PRO-SL-MF-160 | Manufacturing of Distrubution Panel Boards for Street Lighting Network | 2026-10-18 → 2026-06-01 A (-139d) | 2027-02-04 → 2026-06-17 A (-232d) | 0% → 100% | -45d → none |
| 4 | **Earthing System Works** | 2026-10-15 → 2026-06-01 (-136d) | 2027-03-03 → 2026-06-17 (-259d) |  |  |
| PRO-SL-MF-150 | Manufacturing of Lighting Earthing for Street Lighting Network | 2026-10-15 → 2026-06-01 A (-136d) | 2027-03-03 → 2026-06-17 A (-259d) | 0% → 100% | -58d → none |
| 5 | **Termination and Testing Works** | 2026-10-15 → 2026-06-01 (-136d) | 2027-03-16 → 2026-06-17 (-272d) |  |  |
| PRO-SL-MF-130 | Manufacturing of Fuse Boxes for Street Lighting Network | 2026-10-15 → 2026-06-01 A (-136d) | 2027-03-16 → 2026-06-17 A (-272d) | 0% → 100% | -90d → none |
| PRO-SL-MF-170 | Manufacturing of Cable Lugs for Street Lighting Network | 2026-10-15 → 2026-06-01 A (-136d) | 2027-02-01 → 2026-06-17 A (-229d) | 0% → 100% | -54d → none |
| 1DL | **1st Material Delivery & Site Inspection** | 2027-01-11 → 2026-10-13 (-90d) | 2027-04-03 → 2026-10-29 (-156d) |  |  |
| 1 | **Cabling Works** | 2027-01-11 → 2026-10-13 (-90d) | 2027-01-17 → 2026-10-19 (-90d) |  |  |
| PRO-SL-1DL-100 | 1ST Material Delivery for Lighting Cables of Street Lighting Network | 2027-01-11 → 2026-10-13 (-90d) | 2027-01-17 → 2026-10-19 (-90d) |  | -53.5d → 23.5d |
| 2 | **Lighting Poles Works** | 2027-01-11 → 2026-10-13 (-90d) | 2027-02-27 → 2026-10-19 (-131d) |  |  |
| PRO-SL-1DL-110 | 1ST Material Delivery for Lighting Poles Foundations of Street Lighting Network | 2027-01-11 → 2026-10-13 (-90d) | 2027-01-17 → 2026-10-19 (-90d) |  | -82.5d → -5.5d |
| PRO-SL-1DL-120 | 1ST Material Delivery for Lighting Poles of Street Lighting Network | 2027-01-11 → 2026-10-13 (-90d) | 2027-01-17 → 2026-10-19 (-90d) |  | -48.5d → 28.5d |
| PRO-SL-1DL-140 | 1ST Material Delivery for Lighting Fixtures of Street Lighting Network | 2027-02-18 → 2026-10-13 (-128d) | 2027-02-27 → 2026-10-19 (-131d) |  | -35.75d → 78d |
| 3 | **Distribution Panel Board** | 2027-02-06 → 2026-10-13 (-116d) | 2027-02-14 → 2026-10-19 (-118d) |  |  |
| PRO-SL-1DL-160 | 1ST Material Delivery for Distrubution Panel Boards of Street Lighting Network | 2027-02-06 → 2026-10-13 (-116d) | 2027-02-14 → 2026-10-19 (-118d) |  | -39d → 66d |
| 5 | **Termination and Testing Works** | 2027-02-02 → 2026-10-13 (-112d) | 2027-04-03 → 2026-10-29 (-156d) |  |  |
| PRO-SL-1DL-130 | 1ST Material Delivery for Fuse Boxes of Street Lighting Network | 2027-03-16 → 2026-10-13 (-154d) | 2027-04-03 → 2026-10-29 (-156d) |  | -71.88d → 52d |
| PRO-SL-1DL-170 | 1ST Material Delivery for Cable Lugs of Street Lighting Network | 2027-02-02 → 2026-10-13 (-112d) | 2027-02-22 → 2026-10-29 (-116d) |  | -46d → 50d |
| 4 | **Earthing System Works** | 2027-03-04 → 2026-10-13 (-142d) | 2027-03-15 → 2026-10-19 (-147d) |  |  |
| PRO-SL-1DL-150 | 1ST Material Delivery for Lighting Earthing of Street Lighting Network | 2027-03-04 → 2026-10-13 (-142d) | 2027-03-15 → 2026-10-19 (-147d) |  | -45d → 78d |
| DL | **Material Delivery & Site Inspection** | 2027-01-18 → 2026-10-20 (-90d) | 2027-05-03 → 2026-11-29 (-155d) |  |  |
| 1 | **Cabling Works** | 2027-01-18 → 2026-10-20 (-90d) | 2027-01-18 → 2026-10-20 (-90d) |  |  |
| PRO-R25-SL-DL-100 | Material Delivery & Site Inspection of Lighting Cables for Street Lighting Network | 2027-01-18 → 2026-10-20 (-90d) | 2027-01-18 → 2026-10-20 (-90d) |  | -53.5d → 23.5d |
| 2 | **Lighting Poles Works** | 2027-01-18 → 2026-10-20 (-90d) | 2027-02-27 → 2026-11-09 (-110d) |  |  |
| PRO-R25-SL-DL-110 | Material Delivery & Site Inspection of Lighting Poles Foundations for Street Lighting Network | 2027-01-18 → 2026-10-20 (-90d) | 2027-02-07 → 2026-11-09 (-90d) |  | -82.5d → -5.5d |
| PRO-R25-SL-DL-120 | Material Delivery & Site Inspection of Lighting Poles for Street Lighting Network | 2027-01-18 → 2026-10-20 (-90d) | 2027-01-18 → 2026-10-20 (-90d) |  | -48.5d → 28.5d |
| PRO-R25-SL-DL-140 | Material Delivery & Site Inspection of Lighting Fixtures for Street Lighting Network | 2027-02-27 → 2026-10-20 (-130d) | 2027-02-27 → 2026-10-20 (-130d) |  | -35.75d → 78d |
| 3 | **Distribution Panel Board** | 2027-02-14 → 2026-10-20 (-117d) | 2027-02-14 → 2026-10-20 (-117d) |  |  |
| PRO-R25-SL-DL-160 | Material Delivery & Site Inspection of Distrubution Panel Boards for Street Lighting Network | 2027-02-14 → 2026-10-20 (-117d) | 2027-02-14 → 2026-10-20 (-117d) |  | -39d → 66d |
| 4 | **Termination and Testing Works** | 2027-02-23 → 2026-10-31 (-115d) | 2027-05-03 → 2026-11-29 (-155d) |  |  |
| PRO-R25-SL-DL-130 | Material Delivery & Site Inspection of Fuse Boxes for Street Lighting Network | 2027-04-03 → 2026-10-31 (-154d) | 2027-05-03 → 2026-11-29 (-155d) |  | -71.88d → 52d |
| PRO-R25-SL-DL-170 | Material Delivery & Site Inspection of Cable Lugs for Street Lighting Network | 2027-02-23 → 2026-10-31 (-115d) | 2027-03-31 → 2026-11-29 (-122d) |  | -46d → 50d |
| 5 | **Earthing System Works** | 2027-03-16 → 2026-10-20 (-147d) | 2027-03-16 → 2026-10-20 (-147d) |  |  |
| PRO-R25-SL-DL-150 | Material Delivery & Site Inspection of Lighting Earthing for Street Lighting Network | 2027-03-16 → 2026-10-20 (-147d) | 2027-03-16 → 2026-10-20 (-147d) |  | -45d → 78d |
| TE | **Telecom Network** | 2026-10-06 → 2026-10-13 (+7d) | 2027-01-23 → 2027-01-30 (+7d) |  |  |
| PO | **Issuance of Purchase Orders** | 2026-10-06 → 2026-10-13 (+7d) | 2026-10-12 → 2026-10-19 (+7d) |  |  |
| 1 | **Ducts Works** | 2026-10-06 → 2026-10-13 (+7d) | 2026-10-12 → 2026-10-19 (+7d) |  |  |
| PRO-TE-PO-100 | Issuance of Purchase Order for Ducts forTelecom Network | 2026-10-06 → 2026-10-13 (+7d) | 2026-10-12 → 2026-10-19 (+7d) |  | -28.75d → -33.25d |
| 3 | **Manholes Works** | 2026-10-06 → 2026-10-13 (+7d) | 2026-10-12 → 2026-10-19 (+7d) |  |  |
| PRO-TE-PO-110 | Issuance of Purchase Order for Manholes forTelecom Network | 2026-10-06 → 2026-10-13 (+7d) | 2026-10-12 → 2026-10-19 (+7d) |  | -46.75d → -47.55d |
| 2 | **CCTV System Wroks** | 2026-10-06 → 2026-10-13 (+7d) | 2026-10-12 → 2026-10-19 (+7d) |  |  |
| PRO-CTV-PO-100 | Issuance of Purchase Order for Civil and Finishes Works of CCTV Complete System | 2026-10-06 → 2026-10-13 (+7d) | 2026-10-12 → 2026-10-19 (+7d) |  | -32d → -27d |
| MF | **Manufacturing of Material** | 2026-10-13 → 2026-10-20 (+7d) | 2027-01-10 → 2027-01-17 (+7d) |  |  |
| 1 | **Ducts Works** | 2026-10-13 → 2026-10-20 (+7d) | 2026-12-11 → 2026-12-18 (+7d) |  |  |
| PRO-TE-MF-100 | Manufacturing of Ducts for Telecom Network | 2026-10-13 → 2026-10-20 (+7d) | 2026-12-11 → 2026-12-18 (+7d) |  | -35d → -40.5d |
| 3 | **Manholes Works** | 2026-10-13 → 2026-10-20 (+7d) | 2027-01-10 → 2027-01-17 (+7d) |  |  |
| PRO-TE-MF-110 | Manufacturing of Manholes for Telecom Network | 2026-10-13 → 2026-10-20 (+7d) | 2027-01-10 → 2027-01-17 (+7d) |  | -56d → -56.8d |
| 2 | **CCTV System Wroks** | 2026-10-13 → 2026-10-20 (+7d) | 2027-01-10 → 2027-01-17 (+7d) |  |  |
| PRO-CTV-MF-100 | Manufacturing of Civil and Finishes Works for CCTV Complete System | 2026-10-13 → 2026-10-20 (+7d) | 2027-01-10 → 2027-01-17 (+7d) |  | -39d → -33d |
| 1DL | **1st Material Delivery & Site Inspection** | 2026-12-12 → 2026-12-19 (+7d) | 2027-01-21 → 2027-01-28 (+7d) |  |  |
| 1 | **Ducts Works** | 2026-12-12 → 2026-12-19 (+7d) | 2026-12-17 → 2026-12-24 (+7d) |  |  |
| PRO-TE-1DL-100 | 1ST Material Delivery for Ducts of Telecom Network | 2026-12-12 → 2026-12-19 (+7d) | 2026-12-17 → 2026-12-24 (+7d) |  | -30d → -34.5d |
| 3 | **Manholes Works** | 2027-01-11 → 2027-01-18 (+7d) | 2027-01-17 → 2027-01-24 (+7d) |  |  |
| PRO-TE-1DL-110 | 1ST Material Delivery for Manholes of Telecom Network | 2027-01-11 → 2027-01-18 (+7d) | 2027-01-17 → 2027-01-24 (+7d) |  | -48d → -48.8d |
| 2 | **CCTV System Wroks** | 2027-01-11 → 2027-01-18 (+7d) | 2027-01-21 → 2027-01-28 (+7d) |  |  |
| PRO-CTV-1DL-100 | 1ST Material Delivery for Civil and Finishes Works of CCTV Complete System | 2027-01-11 → 2027-01-18 (+7d) | 2027-01-21 → 2027-01-28 (+7d) |  | -33d → -28d |
| DL | **Material Delivery & Site Inspection** | 2026-12-19 → 2026-12-26 (+7d) | 2027-01-23 → 2027-01-30 (+7d) |  |  |
| 1 | **Ducts Works** | 2026-12-19 → 2026-12-26 (+7d) | 2026-12-19 → 2026-12-26 (+7d) |  |  |
| PRO-R25-TE-DL-100 | Material Delivery & Site Inspection for Ducts of Telecom Network | 2026-12-19 → 2026-12-26 (+7d) | 2026-12-19 → 2026-12-26 (+7d) |  | -30d → -34.5d |
| 3 | **Manholes Works** | 2027-01-18 → 2027-01-25 (+7d) | 2027-01-18 → 2027-01-25 (+7d) |  |  |
| PRO-R25-TE-DL-110 | Material Delivery & Site Inspection of Manholes for Telecom Network | 2027-01-18 → 2027-01-25 (+7d) | 2027-01-18 → 2027-01-25 (+7d) |  | -48d → -48.8d |
| 2 | **CCTV System Wroks** | 2027-01-23 → 2027-01-30 (+7d) | 2027-01-23 → 2027-01-30 (+7d) |  |  |
| PRO-R25-CTV-DL-100 | Material Delivery & Site Inspection of for Civil and Finishes Works of CCTV Complete System | 2027-01-23 → 2027-01-30 (+7d) | 2027-01-23 → 2027-01-30 (+7d) |  | -33d → -28d |
| 1 | **Superstructure Works** |  | 2027-01-04 → 2027-01-11 (+7d) |  |  |

| ID | Task | Start | Finish | Complete | Total float | Predecessors |
| --- | --- | --- | --- | --- | --- | --- |
| 1 | **Issuance of Purchase Orders** |  | 2026-10-26 → 2026-11-02 (+7d) |  |  |  |
| SL11 | **Storage Tank (TSE)** | 2026-10-14 → 2026-10-21 (+7d) | 2026-10-26 → 2026-11-02 (+7d) |  |  |  |
| PRO-TSE-CV-PO-30 | Issuance of Purchase Order for Civil Works for Storage Tank (TSE) | 2026-10-14 → 2026-10-21 (+7d) | 2026-10-26 → 2026-11-02 (+7d) |  | -75.75d → -9d |  |
| SL12 | **Gaurd Room** | 2026-10-06 → 2026-10-13 (+7d) | 2026-10-18 → 2026-10-25 (+7d) |  |  |  |
| PRO-GR-CV-PO-40 | Issuance of Purchase Order for Civil Works for Gaurd Room | 2026-10-06 → 2026-10-13 (+7d) | 2026-10-18 → 2026-10-25 (+7d) |  | -63.25d → -69.25d |  |
| 2 | **Manufacturing of Material** |  | 2027-01-03 → 2027-01-10 (+7d) |  |  |  |
| SL | **Pump Stations** | 2026-10-06 → 2026-10-13 (+7d) | 2026-11-14 → 2026-11-21 (+7d) |  |  |  |
| PRO-SPS-CV-MF-10 | Manufacturing of Civil Works for Pump Stations | 2026-10-06 → 2026-10-13 (+7d) | 2026-11-14 → 2026-11-21 (+7d) |  | -77d → -83.75d |  |
| SL1 | **Lift Station** | 2026-10-06 → 2026-10-13 (+7d) | 2026-11-14 → 2026-11-21 (+7d) |  |  |  |
| PRO-LS-CV-MF-30 | Manufacturing of Civil Works for Civil Works for Lift Stations | 2026-10-06 → 2026-10-13 (+7d) | 2026-11-14 → 2026-11-21 (+7d) |  | -5d → -12d |  |
| SL11 | **Storage Tank (TSE)** | 2026-10-27 → 2026-11-03 (+7d) | 2026-12-05 → 2026-12-12 (+7d) |  |  |  |
| PRO-TSE-CV-MF-40 | Manufacturing of Civil Works for Civil Works for Storage Tank (TSE) | 2026-10-27 → 2026-11-03 (+7d) | 2026-12-05 → 2026-12-12 (+7d) |  | -90d → -10d |  |
| SL12 | **Gaurd Room** | 2026-10-18 → 2026-10-25 (+7d) | 2026-11-27 → 2026-12-04 (+7d) |  |  |  |
| PRO-GR-CV-MF-50 | Manufacturing of Civil Works for Civil Works for Gaurd Room | 2026-10-18 → 2026-10-25 (+7d) | 2026-11-27 → 2026-12-04 (+7d) |  | -75.5d → -82.5d |  |
| SL1211 | **Softscape and Planting Works** | 2026-10-06 → 2026-10-13 (+7d) | 2027-01-03 → 2027-01-10 (+7d) |  |  |  |
| PRO-FE-CV-MF-70 | Manufacturing of Civil Works for Softscape and Planting Works | 2026-10-06 → 2026-10-13 (+7d) | 2027-01-03 → 2027-01-10 (+7d) |  | -43d → -26d | ENG-MT-PL-CV-A-160, ENG-SH-MRK-A-110 → ENG-MT-PL-CV-A-160 |
| 3 | **1st Material Delivery & Site Inspection** |  | 2026-12-10 → 2026-12-17 (+7d) |  |  |  |
| SL | **Pump Stations** | 2026-11-23 → 2026-11-22 (-1d) | 2026-11-24 → 2026-11-23 (-1d) |  |  |  |
| PRO-SPS-CV-1DL-10 | 1ST Material Delivery for Civil Works for Pump Stations | 2026-11-23 → 2026-11-22 (-1d) | 2026-11-24 → 2026-11-23 (-1d) |  | -72d → -70.5d | PRO-SPS-CV-MF-10, CO-SW-ML-150, ENG-SH-SPS-A-160 → PRO-SPS-CV-MF-10, ENG-SH-SPS-A-160 |
| SL1 | **Lift Station** | 2026-11-25 → 2026-11-22 (-3d) | 2026-11-25 → 2026-11-22 (-3d) |  |  |  |
| PRO-LS-CV-1DL-40 | 1ST Material Delivery for Civil Works for Civil Works for Lift Stations | 2026-11-25 → 2026-11-22 (-3d) | 2026-11-25 → 2026-11-22 (-3d) |  | -13d → -10d | PRO-LS-CV-MF-30, CO-UB-PS-100 → PRO-LS-CV-MF-30 |
| SL11 | **Storage Tank (TSE)** | 2026-12-06 → 2026-12-13 (+7d) | 2026-12-06 → 2026-12-13 (+7d) |  |  |  |
| PRO-TSE-CV-1DL-50 | 1ST Material Delivery for Civil Works for Civil Works for Storage Tank (TSE) | 2026-12-06 → 2026-12-13 (+7d) | 2026-12-06 → 2026-12-13 (+7d) |  | -76d → -8d |  |
| SL12 | **Gaurd Room** | 2026-11-28 → 2026-12-05 (+7d) | 2026-12-10 → 2026-12-17 (+7d) |  |  |  |
| PRO-GR-CV-1DL-60 | 1ST Material Delivery for Civil Works for Civil Works for Gaurd Room | 2026-11-28 → 2026-12-05 (+7d) | 2026-12-10 → 2026-12-17 (+7d) |  | -64d → -70d |  |
| 4 | **Material Delivery & Site Inspection** |  | 2027-01-04 → 2027-01-11 (+7d) |  |  |  |
| SL | **Pump Stations** |  | 2026-11-25 → 2026-11-24 (-1d) |  |  |  |
| PRO-SPS-CV-DL-10 | Material Delivery & Site Inspection for Civil Works for Pump Stations |  | 2026-11-25 → 2026-11-24 (-1d) |  | -72d → -70.5d |  |
| SL1 | **Lift Station** | 2026-11-26 → 2026-11-23 (-3d) | 2026-11-26 → 2026-11-23 (-3d) |  |  |  |
| PRO-LS-CV-DL-50 | Material Delivery & Site Inspection for Civil Works for Lift Stations | 2026-11-26 → 2026-11-23 (-3d) | 2026-11-26 → 2026-11-23 (-3d) |  | -13d → -10d | PRO-LS-CV-MF-30, PRO-LS-CV-1DL-40, CO-UB-PS-100 → PRO-LS-CV-MF-30, PRO-LS-CV-1DL-40 |
| SL11 | **Storage Tank (TSE)** | 2026-12-06 → 2026-12-13 (+7d) | 2026-12-06 → 2026-12-13 (+7d) |  |  |  |
| PRO-TSE-CV-DL-60 | Material Delivery & Site Inspection for Civil Works for Storage Tank (TSE) | 2026-12-06 → 2026-12-13 (+7d) | 2026-12-06 → 2026-12-13 (+7d) |  | -75d → -7d |  |
| SL12 | **Gaurd Room** | 2026-12-12 → 2026-12-19 (+7d) | 2026-12-12 → 2026-12-19 (+7d) |  |  |  |
| PRO-GR-CV-DL-70 | Material Delivery & Site Inspection for Civil Works for Gaurd Room | 2026-12-12 → 2026-12-19 (+7d) | 2026-12-12 → 2026-12-19 (+7d) |  | -64d → -70d |  |
| SL121 | **Fence** |  | 2026-10-06 → 2026-10-13 (+7d) |  |  |  |
| PRO-FE-CV-DL-80 | Material Delivery & Site Inspection for Civil Works for Fence |  | 2026-10-06 → 2026-10-13 (+7d) |  | -42d → -48d |  |
| SL1211 | **Softscape and Planting Works** | 2027-01-04 → 2027-01-11 (+7d) | 2027-01-04 → 2027-01-11 (+7d) |  |  |  |
| PRO-FE-CV-DL-90 | Material Delivery & Site Inspection for Softscape and Planting Works | 2027-01-04 → 2027-01-11 (+7d) | 2027-01-04 → 2027-01-11 (+7d) |  | -37d → -22d |  |
| LL | **Long Lead Time Items** | 2026-10-06 → 2026-07-22 (-76d) | 2027-04-17 → 2027-04-24 (+7d) |  |  |  |
| 2 | **Infrastructure Networks** | 2026-10-06 → 2026-10-13 (+7d) | 2027-02-15 → 2027-02-24 (+9d) |  |  |  |
| 2 | **CCTV System Wroks of Telecom Network** | 2026-10-06 → 2026-10-13 (+7d) | 2027-02-15 → 2027-02-24 (+9d) |  |  |  |
| 3 | **Issuance of Purchase Orders** | 2026-10-06 → 2026-10-13 (+7d) | 2026-10-28 → 2026-11-04 (+7d) |  |  |  |
| PRO-CTV-LL-PO-10 | Issuance of Purchase Order for Low Current Works of CCTV Complete System with All Accessories | 2026-10-06 → 2026-10-13 (+7d) | 2026-10-28 → 2026-11-04 (+7d) |  | -46d → -41d |  |
| 1 | **Manufacturing of Material** | 2026-10-29 → 2026-11-05 (+7d) | 2027-01-26 → 2027-02-02 (+7d) |  |  |  |
| PRO-CTV-LL-MF-10 | Manufacturing of Low Current Works for CCTV Complete System with All Accessories | 2026-10-29 → 2026-11-05 (+7d) | 2027-01-26 → 2027-02-02 (+7d) |  | -55d → -49d |  |
| 2 | **Material Shipping/Custom Clearance/Delivery** | 2027-01-27 → 2027-02-02 (+6d) | 2027-02-15 → 2027-02-24 (+9d) |  |  |  |
| PRO-CTV-LL-SH/DL-10 | Material Delivery for Low Current Works of CCTV Complete System with All Accessories | 2027-01-27 → 2027-02-02 (+6d) | 2027-02-15 → 2027-02-24 (+9d) |  | -47d → -41.88d |  |
| 4 | **Material Site Inspection** | 2027-02-15 → 2027-02-24 (+9d) | 2027-02-15 → 2027-02-24 (+9d) |  |  |  |
| PRO-CTV-LL-MSI-10 | Material Site Inspection for Low Current Works of CCTV Complete System with All Accessories | 2027-02-15 → 2027-02-24 (+9d) | 2027-02-15 → 2027-02-24 (+9d) |  | -47d → -41.88d |  |
| 1 | **Superstructure Works** | 2026-10-15 → 2026-07-22 (-85d) | 2027-04-17 → 2027-04-24 (+7d) |  |  |  |
| SL | **Pump Stations** | 2026-10-15 → 2026-07-22 (-85d) | 2027-04-13 → 2027-03-16 (-28d) |  |  |  |
| 1 | **Issuance of Purchase Orders** | 2026-10-15 → 2026-07-22 (-85d) | 2026-11-18 → 2026-07-22 (-119d) |  |  |  |
| PRO-SPS-LL-PO-10 | Issuance of Purchase Order for Electromechanical Works for Pump Stations | 2026-10-15 → 2026-07-22 A (-85d) | 2026-11-18 → 2026-07-22 A (-119d) | 0% → 100% | -56.75d → none |  |
| 2 | **Manufacturing of Material** | 2026-11-19 → 2026-08-26 (-85d) | 2027-01-17 → 2026-12-20 (-28d) |  |  |  |
| PRO-SPS-LL-MF-10 | Manufacturing of Electromechanical Works for Pump Stations | 2026-11-19 → 2026-08-26 A (-85d) | 2027-01-17 → 2026-12-20 (-28d) | 0% → 35% | -67d → -39d |  |
| 3 | **Material Shipping/Custom Clearance/Delivery** | 2027-01-18 → 2026-12-21 (-28d) | 2027-02-25 → 2027-01-24 (-32d) |  |  |  |
| PRO-SPS-LL-SH/DL-10 | Material Delivery for Electromechanical Works for Pump Stations | 2027-01-18 → 2026-12-21 (-28d) | 2027-02-25 → 2027-01-24 (-32d) |  | -57d → -33d |  |
| 4 | **Material Site Inspection** | 2027-02-25 → 2027-01-25 (-31d) | 2027-04-13 → 2027-03-16 (-28d) |  |  |  |
| PRO-SPS-LL-MSI-10 | Material Site Inspection for Electromechanical Works for Pump Stations | 2027-02-25 → 2027-01-25 (-31d) | 2027-04-13 → 2027-03-16 (-28d) |  | -57d → -33d |  |
| SL1 | **Lift Stations** | 2026-10-15 → 2026-07-22 (-85d) | 2027-04-17 → 2027-03-20 (-28d) |  |  |  |
| 1 | **Issuance of Purchase Orders** | 2026-10-15 → 2026-07-22 (-85d) | 2026-11-18 → 2026-07-22 (-119d) |  |  |  |
| PRO-LS-LL-PO-20 | Issuance of Purchase Order for Electromechanical Works for Lift Stations | 2026-10-15 → 2026-07-22 A (-85d) | 2026-11-18 → 2026-07-22 A (-119d) | 0% → 100% | -69.75d → none |  |
| 2 | **Manufacturing of Material** | 2026-11-19 → 2026-08-01 (-110d) | 2027-01-17 → 2026-12-20 (-28d) |  |  |  |
| PRO-LS-LL-MF-20 | Manufacturing of Electromechanical Works for Lift Stations | 2026-11-19 → 2026-08-01 A (-110d) | 2027-01-17 → 2026-12-20 (-28d) |  | -82d → -41d |  |
| 3 | **Material Shipping/Custom Clearance/Delivery** | 2027-01-18 → 2026-12-21 (-28d) | 2027-02-25 → 2027-01-24 (-32d) |  |  |  |
| PRO-LS-LL-SH/DL-20 | Material Delivery for Electromechanical Works for Lift Stations | 2027-01-18 → 2026-12-21 (-28d) | 2027-02-25 → 2027-01-24 (-32d) |  | -70d → -35d |  |
| 4 | **Material Site Inspection** | 2027-02-25 → 2027-01-25 (-31d) | 2027-04-17 → 2027-03-20 (-28d) |  |  |  |
| PRO-LS-LL-MSI-20 | Material Site Inspection for Electromechanical Works for Lift Stations | 2027-02-25 → 2027-01-25 (-31d) | 2027-04-17 → 2027-03-20 (-28d) |  | -70d → -35d |  |
| SL2 | **Storage Tank (TSE)** | 2026-10-15 → 2026-10-22 (+7d) | 2027-04-17 → 2027-04-24 (+7d) |  |  |  |
| 1 | **Issuance of Purchase Orders** | 2026-10-15 → 2026-10-22 (+7d) | 2026-11-18 → 2026-11-25 (+7d) |  |  |  |

| ID | Task | Start | Finish | Complete | Total float | Predecessors |
| --- | --- | --- | --- | --- | --- | --- |
| PRO-TSE-LL-PO-30 | Issuance of Purchase Order for Electromechanical Works for Storage Tank (TSE) | 2026-10-15 → 2026-10-22 (+7d) | 2026-11-18 → 2026-11-25 (+7d) |  | -69.75d → -64d |  |
| 2 | **Manufacturing of Material** | 2026-11-19 → 2026-11-26 (+7d) | 2027-01-17 → 2027-01-24 (+7d) |  |  |  |
| PRO-TSE-LL-MF-30 | Manufacturing of Electromechanical Works for Storage Tank (TSE) | 2026-11-19 → 2026-11-26 (+7d) | 2027-01-17 → 2027-01-24 (+7d) |  | -82d → -76d |  |
| 3 | **Material Shipping/Custom Clearance/Delivery** | 2027-01-18 → 2027-01-25 (+7d) | 2027-02-25 → 2027-03-07 (+10d) |  |  |  |
| PRO-TSE-LL-SH/DL-30 | Material Delivery for Electromechanical Works for Storage Tank (TSE) | 2027-01-18 → 2027-01-25 (+7d) | 2027-02-25 → 2027-03-07 (+10d) |  | -70d → -65d |  |
| 4 | **Material Site Inspection** | 2027-02-25 → 2027-03-07 (+10d) | 2027-04-17 → 2027-04-24 (+7d) |  |  |  |
| PRO-TSE-LL-MSI-30 | Material Site Inspection for Electromechanical Works for Storage Tank (TSE) | 2027-02-25 → 2027-03-07 (+10d) | 2027-04-17 → 2027-04-24 (+7d) |  | -70d → -65d |  |
| CON | **Construction Works** |  | 2027-06-07 → 2027-05-30 (-8d) |  |  |  |
| INF | **Infrastructure Networks** |  | 2027-06-07 → 2027-05-30 (-8d) |  |  |  |
| EW | **Earthworks** |  | 2026-10-24 → 2026-10-31 (+7d) |  |  |  |
| EW | **Earthworks** |  | 2026-10-24 → 2026-10-31 (+7d) |  |  |  |
| CO-EW-110_R | Embankments Works Upto Design Level for Earthworks(Remaining) |  | 2026-10-24 → 2026-10-31 (+7d) | 81% → 84% | -72d → -77.5d |  |
| CO-EW-200_R | Excavation Works Upto Design Level for Earthworks-P1(Remaining) |  | 2026-10-17 → 2026-10-24 (+7d) | 78% → 84% | -72d → -77.5d | MS-CF-EBL FF, MS-CF-ENG FF, MS-CS-PS SS, MOB-30, MOB-20, MOB-80, MOB-40, MOB-50, MOB-60 FF+15d, MOB-10, MOB-70, PRE-CON-MDC-10, PRE-CON-MDC-20, PRE-CON-MDC-30, PRE-CON-MDC-40, PRE-CON-MDC-50, PRE-CON-MDC-60, PRE-CON-MDC-70, PRE-CON-MDC-80, CO-EW-200 → MS-CS-PS SS, MOB-30, MOB-20, MOB-80, MOB-40, MOB-50, MOB-60 FF+15d, MOB-10, MOB-70, PRE-CON-MDC-10, PRE-CON-MDC-20, PRE-CON-MDC-30, PRE-CON-MDC-40, PRE-CON-MDC-50, PRE-CON-MDC-60, PRE-CON-MDC-70, PRE-CON-MDC-80, CO-EW-200 |
| CO-EW-210_R | Excavation Works Upto Design Level for Earthworks-P2(Remaining) |  | 2026-10-17 → 2026-10-24 (+7d) | 78% → 80% | -72d → -77.5d | MS-CF-MOB FF, CO-EW-200_R SS, CO-EW-210, ENG-SH-HS-S-100 FS+4.35d, ENG-SH-LS-S-160_R → MS-CF-MOB FF, CO-EW-200_R SS, CO-EW-210 |
| CO-EW-220_R | Excavation Works Upto Design Level for Earthworks-P3(Remaining) |  | 2026-10-19 → 2026-10-26 (+7d) | 78% → 80% | -72d → -77.5d |  |
| SD | **Storm Drainage Network** |  | 2027-02-15 → 2027-01-31 (-15d) |  |  |  |
| MH25-MH12 | **FROM MH-25:MH-12** |  | 2027-01-13 → 2026-12-22 (-22d) |  |  |  |
| ML | **Main Line Sections** |  | 2026-11-03 → 2026-10-24 (-10d) |  |  |  |
| CO-SD-ML-100 | Trench Excavation and Bedding Works for Main Lines of Storm Drainage Network |  | 2026-10-22 → 2026-10-15 (-7d) |  | -70d → -61.5d |  |
| CO-SD-ML-120 | Pipes Laying Works for Main Lines of Storm Drainage Network |  | 2026-10-28 → 2026-10-18 (-10d) |  | -71d → -61.5d |  |
| CO-SD-ML-130 | Trench Backfilling and Compaction Works for Main Lines of Storm Drainage Network |  | 2026-11-03 → 2026-10-24 (-10d) |  | -71d → -61.5d |  |
| MH | **Manholes** | 2026-11-22 → 2026-11-01 (-21d) | 2026-12-21 → 2026-11-29 (-22d) |  |  |  |
| CO-SD-MH-180 | Trench Excavation and Bedding Works for Manholes of Storm Drainage Network | 2026-11-22 → 2026-11-01 (-21d) | 2026-11-30 → 2026-11-08 (-22d) |  | -89.2d → -63.5d |  |
| CO-SD-MH-190 | Install RC Footing Works for Manholes of Storm Drainage Network | 2026-11-30 → 2026-11-09 (-21d) | 2026-12-08 → 2026-11-16 (-22d) |  | -89.2d → -63.5d |  |
| CO-SD-MH-200 | Install RC Wall Rings & Slab Works for Manholes of Storm Drainage Network | 2026-12-08 → 2026-11-17 (-21d) | 2026-12-13 → 2026-11-21 (-22d) |  | -89.2d → -63.5d |  |
| CO-SD-MH-220 | Backfilling Works for Manholes of Storm Drainage Network | 2026-12-13 → 2026-11-22 (-21d) | 2026-12-21 → 2026-11-29 (-22d) |  | -89.2d → -63.5d |  |
| CB | **Catch Basin Sections** | 2026-11-30 → 2026-11-09 (-21d) | 2027-01-13 → 2026-12-22 (-22d) |  |  |  |
| CO-SD-CB-140 | Trench Excavation and Bedding Works for Catch Basins of Storm Drainage Network | 2026-11-30 → 2026-11-09 (-21d) | 2026-12-12 → 2026-11-19 (-23d) |  | -81.2d → -55.5d |  |
| CO-SD-CB-150 | Installation and Pipes Laying Connection Works for Catch Basins of Storm Drainage Network | 2026-12-21 → 2026-11-30 (-21d) | 2027-01-02 → 2026-12-10 (-23d) |  | -89.2d → -63.5d |  |
| CO-SD-CB-170 | Trench Backfilling and Compaction Works for Catch Basins of Storm Drainage Network | 2027-01-02 → 2026-12-12 (-21d) | 2027-01-13 → 2026-12-22 (-22d) |  | -89.2d → -63.5d |  |
| MH25-MH121 | **FROM MH-12:MH-01** | 2026-10-25 → 2026-11-01 (+7d) | 2027-02-15 → 2027-01-31 (-15d) |  |  |  |
| ML | **Main Line Sections** | 2026-10-25 → 2026-11-01 (+7d) | 2026-12-19 → 2026-12-26 (+7d) |  |  |  |
| CO-SD-ML-140 | Trench Excavation and Bedding Works for Main Lines of Storm Drainage Network | 2026-10-25 → 2026-11-01 (+7d) | 2026-11-09 → 2026-11-16 (+7d) |  | -71d → -69.5d |  |
| CO-SD-ML-150 | Pipes Laying Works for Main Lines of Storm Drainage Network | 2026-11-10 → 2026-11-17 (+7d) | 2026-11-25 → 2026-12-02 (+7d) |  | -71d → -69.5d |  |
| CO-SD-ML-160 | Trench Backfilling and Compaction Works for Main Lines of Storm Drainage Network | 2026-11-26 → 2026-12-03 (+7d) | 2026-12-19 → 2026-12-26 (+7d) |  | -59d → -57.5d |  |
| MH | **Manholes** | 2026-11-30 → 2026-12-03 (+3d) | 2027-01-06 → 2027-01-09 (+3d) |  |  |  |
| CO-SD-MH-230 | Trench Excavation and Bedding Works for Manholes of Storm Drainage Network | 2026-11-30 → 2026-12-03 (+3d) | 2026-12-10 → 2026-12-13 (+3d) |  | -74.2d → -69.5d |  |
| CO-SD-MH-240 | Install RC Footing Works for Manholes of Storm Drainage Network | 2026-12-10 → 2026-12-14 (+4d) | 2026-12-19 → 2026-12-21 (+2d) |  | -74.2d → -69.5d |  |
| CO-SD-MH-250 | Install RC Wall Rings & Slab Works for Manholes of Storm Drainage Network | 2026-12-19 → 2026-12-22 (+3d) | 2026-12-27 → 2026-12-29 (+2d) |  | -74.2d → -69.5d |  |
| CO-SD-MH-260 | Backfilling Works for Manholes of Storm Drainage Network | 2026-12-27 → 2026-12-30 (+3d) | 2027-01-06 → 2027-01-09 (+3d) |  | -74.2d → -69.5d |  |
| CB | **Catch Basin Sections** | 2027-01-13 → 2026-12-23 (-21d) | 2027-02-15 → 2027-01-31 (-15d) |  |  |  |
| CO-SD-CB-180 | Trench Excavation and Bedding Works for Catch Basins of Storm Drainage Network | 2027-01-13 → 2026-12-23 (-21d) | 2027-01-24 → 2027-01-02 (-22d) |  | -89.2d → -63.5d |  |
| CO-SD-CB-190 | Installation and Pipes Laying Connection Works for Catch Basins of Storm Drainage Network | 2027-01-24 → 2027-01-11 (-13d) | 2027-02-03 → 2027-01-20 (-14d) |  | -89.2d → -70.5d |  |
| CO-SD-CB-200 | Trench Backfilling and Compaction Works for Catch Basins of Storm Drainage Network | 2027-02-03 → 2027-01-21 (-13d) | 2027-02-15 → 2027-01-31 (-15d) |  | -89.2d → -70.5d |  |
| SW | **Sewage Network** | 2026-10-25 → 2026-11-01 (+7d) | 2027-01-03 → 2027-01-10 (+7d) |  |  |  |
| 2 | **FROM MH-18:MH-10** | 2026-10-25 → 2026-11-01 (+7d) | 2026-12-24 → 2026-12-31 (+7d) |  |  |  |
| ML | **Main Line Sections** | 2026-10-25 → 2026-11-01 (+7d) | 2026-12-14 → 2026-12-21 (+7d) |  |  |  |
| CO-SW-ML-100 | Trench Excavation and Bedding Works for Main Lines of Sewage Network | 2026-10-25 → 2026-11-01 (+7d) | 2026-11-07 → 2026-11-14 (+7d) |  | -72d → -77.5d |  |
| CO-SW-ML-120 | Pipes Laying Works for Main Lines of Sewage Network | 2026-11-08 → 2026-11-15 (+7d) | 2026-11-21 → 2026-11-28 (+7d) |  | -72d → -77.5d |  |
| CO-SW-ML-130 | Trench Backfilling and Compaction Works for Main Lines of Sewage Network | 2026-11-22 → 2026-11-29 (+7d) | 2026-12-14 → 2026-12-21 (+7d) |  | -69d → -74.5d |  |
| 1 | **Manholes** | 2026-11-22 → 2026-11-29 (+7d) | 2026-12-24 → 2026-12-31 (+7d) |  |  |  |
| CO-SW-MH-160 | Excavation Works for Main Line Manholes of Sewage Network | 2026-11-22 → 2026-11-29 (+7d) | 2026-11-29 → 2026-12-06 (+7d) |  | -72d → -77.5d |  |
| CO-SW-MH-170 | Installation RC Footing Works for Main Line Manholes of Sewage Network | 2026-11-30 → 2026-12-07 (+7d) | 2026-12-07 → 2026-12-14 (+7d) |  | -71d → -76.5d |  |
| CO-SW-MH-180 | Install Grp Liner Wall Works for Main Line Manholes of Sewage Network | 2026-12-08 → 2026-12-15 (+7d) | 2026-12-15 → 2026-12-22 (+7d) |  | -71d → -76.5d |  |
| CO-SW-MH-190 | Pouring Grp Liner Wall Works for Main Line Manholes of Sewage Network | 2026-12-16 → 2026-12-23 (+7d) | 2026-12-20 → 2026-12-27 (+7d) |  | -68d → -73.5d |  |
| CO-SW-MH-200 | Backfilling Works for Main Line Manholes of Sewage Network | 2026-12-21 → 2026-12-28 (+7d) | 2026-12-24 → 2026-12-31 (+7d) |  | -68d → -73.5d |  |
| 1 | **FROM MH-10:MH-01** | 2026-11-08 → 2026-11-15 (+7d) | 2027-01-03 → 2027-01-10 (+7d) |  |  |  |
| ML | **Main Line Sections** | 2026-11-08 → 2026-11-15 (+7d) | 2026-12-08 → 2026-12-13 (+5d) |  |  |  |
| CO-SW-ML-140 | Trench Excavation and Bedding Works for Main Lines of Sewage Network | 2026-11-08 → 2026-11-15 (+7d) | 2026-11-14 → 2026-11-21 (+7d) |  | -72d → -75.5d |  |
| CO-SW-ML-150 | Pipes Laying Works for Main Lines of Sewage Network | 2026-11-15 → 2026-11-22 (+7d) | 2026-11-22 → 2026-11-29 (+7d) |  | -72d → -75.5d |  |
| CO-SW-ML-160 | Trench Backfilling and Compaction Works for Main Lines of Sewage Network | 2026-11-25 → 2026-11-30 (+5d) | 2026-12-08 → 2026-12-13 (+5d) |  | -72d → -75.5d |  |
| 1 | **Manholes** | 2026-11-30 → 2026-12-07 (+7d) | 2027-01-03 → 2027-01-10 (+7d) |  |  |  |
| CO-SW-MH-210 | Excavation Works for Main Line Manholes of Sewage Network | 2026-11-30 → 2026-12-07 (+7d) | 2026-12-08 → 2026-12-15 (+7d) |  | -72d → -77.5d |  |
| CO-SW-MH-220 | Installation RC Footing Works for Main Line Manholes of Sewage Network | 2026-12-09 → 2026-12-16 (+7d) | 2026-12-16 → 2026-12-23 (+7d) |  | -72d → -77.5d |  |
| CO-SW-MH-230 | Install Grp Liner Wall Works for Main Line Manholes of Sewage Network | 2026-12-17 → 2026-12-24 (+7d) | 2026-12-24 → 2026-12-31 (+7d) |  | -72d → -77.5d |  |
| CO-SW-MH-240 | Pouring Grp Liner Wall Works for Main Line Manholes of Sewage Network | 2026-12-26 → 2027-01-02 (+7d) | 2026-12-29 → 2027-01-05 (+7d) |  | -72d → -77.5d |  |
| CO-SW-MH-250 | Backfilling Works for Main Line Manholes of Sewage Network | 2026-12-30 → 2027-01-06 (+7d) | 2027-01-03 → 2027-01-10 (+7d) |  | -72d → -77.5d |  |
| PW | **Potable Water Network** | 2027-01-19 → 2027-01-11 (-8d) | 2027-04-11 → 2027-04-01 (-10d) |  |  |  |
| ML | **Main Line Sections** | 2027-01-19 → 2027-01-11 (-8d) | 2027-02-18 → 2027-02-07 (-11d) |  |  |  |
| CO-PW-ML-100 | Trench Excavation and Bedding Works for Main Lines of Potable Water Network | 2027-01-19 → 2027-01-11 (-8d) | 2027-01-28 → 2027-01-19 (-9d) |  | -85d → -77.5d |  |

| ID | Task | Start | Finish | Total float | Predecessors |
| --- | --- | --- | --- | --- | --- |
| CO-PW-ML-110 | Pipes Laying and accessories for Main Lines of Potable Water Network | 2027-01-28 → 2027-01-20 (-8d) | 2027-02-07 → 2027-01-28 (-10d) | -85d → -77.5d |  |
| CO-PW-ML-130 | Trench Backfilling and Compaction Works for Main Lines of Potable Water Network | 2027-02-07 → 2027-01-30 (-8d) | 2027-02-18 → 2027-02-07 (-11d) | -83d → -75.5d |  |
| VC | **Valve Chamber** | 2027-02-20 → 2027-02-08 (-12d) | 2027-03-17 → 2027-03-03 (-14d) |  |  |
| CO-PW-VC-170 | Excavation Works for Main Line Valves and Valve Chambers of Potable Water Network | 2027-02-20 → 2027-02-08 (-12d) | 2027-02-22 → 2027-02-10 (-12d) | -83d → -75.5d |  |
| CO-PW-VC180 | Installation Works for Valve Chambers of Potable Water Network | 2027-02-22 → 2027-02-10 (-12d) | 2027-02-28 → 2027-02-16 (-12d) | -83d → -75.5d |  |
| CO-PW-VC-190 | Installation Works for Valves of Potable Water Network | 2027-02-28 → 2027-02-17 (-11d) | 2027-03-14 → 2027-02-27 (-15d) | -83d → -75.5d |  |
| CO-PW-VC-220 | Backfilling Works for Main Line Valves and Valve Chambers of Potable Water Network | 2027-03-14 → 2027-02-28 (-14d) | 2027-03-17 → 2027-03-03 (-14d) | -83d → -75.5d |  |
| FH | **Fire Hydrant** | 2027-03-17 → 2027-03-04 (-13d) | 2027-04-11 → 2027-04-01 (-10d) |  |  |
| CO-PW-FH-140 | Excavation Works for Fire Hydrants of Potable Water Network | 2027-03-17 → 2027-03-04 (-13d) | 2027-03-25 → 2027-03-16 (-9d) | -83d → -75.5d |  |
| CO-PW-FH-150 | Installation Works for Fire Hydrant of Potable Water Network | 2027-03-25 → 2027-03-17 (-8d) | 2027-04-03 → 2027-03-24 (-10d) | -83d → -75.5d |  |
| CO-PW-FH-160 | Trench Backfilling and Compaction Works for Fire Hydrants of Potable Water Network | 2027-04-03 → 2027-03-25 (-9d) | 2027-04-11 → 2027-04-01 (-10d) | -83d → -75.5d |  |
| IR | **Irrigation Network** | 2027-01-28 → 2027-01-20 (-8d) | 2027-04-07 → 2027-03-29 (-9d) |  |  |
| ML | **Main Line Pipes** | 2027-01-28 → 2027-01-20 (-8d) | 2027-04-07 → 2027-03-29 (-9d) |  |  |
| CO-IR-ML-100 | Trench Excavation and Bedding Works for Main Lines of Irrigation Network | 2027-01-28 → 2027-01-20 (-8d) | 2027-02-09 → 2027-01-31 (-9d) | -78.5d → -71d |  |
| CO-IR-ML-110 | Pipes Laying Works for Main Lines of Irrigation Network | 2027-02-10 → 2027-02-01 (-9d) | 2027-02-24 → 2027-02-13 (-11d) | -78.5d → -71d |  |
| CO-IR-ML-120 | Installation Works for Main Line Valves of Irrigation Network | 2027-02-24 → 2027-02-13 (-11d) | 2027-03-13 → 2027-02-27 (-14d) | -78.5d → -71d |  |
| CO-IR-ML-130 | Trench Backfilling and Compaction Works for Main Lines of Irrigation Network | 2027-03-17 → 2027-03-04 (-13d) | 2027-03-28 → 2027-03-18 (-10d) | -82d → -74.5d |  |
| CO-IR-ML-140 | Installation Works for Bulbblers And Sprinklers of Irrigation Network | 2027-03-28 → 2027-03-20 (-8d) | 2027-04-07 → 2027-03-29 (-9d) | -75d → -67.5d |  |
| TSE | **Treated Sewage Effluent (Tse)** | 2027-01-28 → 2027-01-20 (-8d) | 2027-04-07 → 2027-03-29 (-9d) |  |  |
| ML | **Main Line Pipes** | 2027-01-28 → 2027-01-20 (-8d) | 2027-04-07 → 2027-03-29 (-9d) |  |  |
| CO-TSE-ML-150 | Trench Excavation and Bedding Works for Main Lines of Treated Sewage Effluent (Tse) | 2027-01-28 → 2027-01-20 (-8d) | 2027-02-08 → 2027-01-30 (-9d) | -77d → -69.5d |  |
| CO-TSE-ML-160 | Pipes Laying Works for Main Lines of Treated Sewage Effluent (Tse) | 2027-02-10 → 2027-02-01 (-9d) | 2027-02-23 → 2027-02-11 (-12d) | -77d → -69.5d |  |
| CO-TSE-ML-170 | Installation Works for Main Line Valves of Treated Sewage Effluent (Tse) | 2027-02-24 → 2027-02-13 (-11d) | 2027-03-08 → 2027-02-24 (-12d) | -77.5d → -70d |  |
| CO-TSE-ML-180 | Trench Backfilling and Compaction Works for Treated Sewage Effluent (Tse) | 2027-03-17 → 2027-03-04 (-13d) | 2027-03-28 → 2027-03-18 (-10d) | -82d → -74.5d |  |
| CO-TSE-ML-190 | Installation Works for Valve and Washout Chambers of Treated Sewage Effluent (Tse) | 2027-03-28 → 2027-03-20 (-8d) | 2027-04-07 → 2027-03-29 (-9d) | -63d → -55.5d |  |
| MV | **Medium Voltage Network** | 2027-02-07 → 2027-01-30 (-8d) | 2027-04-08 → 2027-03-30 (-9d) |  |  |
| CW | **Cabling Works** | 2027-02-07 → 2027-01-30 (-8d) | 2027-04-08 → 2027-03-30 (-9d) |  |  |
| CO-MV-ML-250 | Trench Excavation and Bedding Works for Medium Voltage Network | 2027-02-07 → 2027-01-30 (-8d) | 2027-02-23 → 2027-02-11 (-12d) | -85d → -77.5d | ENG-SH-MV-A-110, ENG-MT-MV-ML-A-100, PRO-MV-1DL-100, PRO-MV-DL-100, CO-TSE-ML-150 SS, CO-SW-TF-100, CO-SD-ML-130, CO-SD-MH-220, CO-SD-CB-170, CO-SD-ML-160, CO-SD-MH-260, CO-SD-CB-200 SS, CO-SW-ML-130, CO-SW-MH-200, CO-SW-ML-160, CO-SW-MH-250, CO-PW-ML-110 → ENG-SH-MV-A-110, ENG-MT-MV-ML-A-100, PRO-MV-1DL-100, PRO-MV-DL-100, CO-TSE-ML-150 SS, CO-SD-ML-130, CO-SD-MH-220, CO-SD-CB-170, CO-SD-ML-160, CO-SD-MH-260, CO-SD-CB-200 SS, CO-SW-ML-130, CO-SW-MH-200, CO-SW-ML-160, CO-SW-MH-250, CO-PW-ML-110 |
| CO-MV-ML-260 | Cable Laying Works for Medium Voltage Network | 2027-02-23 → 2027-02-13 (-10d) | 2027-03-21 → 2027-03-08 (-13d) | -85d → -77.5d |  |
| CO-MV-ML-270 | Trench Backfilling and Compaction Works for Medium Voltage Network | 2027-03-21 → 2027-03-13 (-8d) | 2027-04-08 → 2027-03-30 (-9d) | -85d → -77.5d |  |
| SL | **Street Lighting Network** | 2027-02-08 → 2027-01-30 (-9d) | 2027-05-06 → 2027-04-27 (-9d) |  |  |
| LP | **Lighting Poles Works** | 2027-02-08 → 2027-01-30 (-9d) | 2027-03-30 → 2027-03-21 (-9d) |  |  |
| CO-SL-LP-300 | Foundation Excavation Works for Lighting Poles of Street Lighting Network | 2027-02-08 → 2027-01-30 (-9d) | 2027-02-20 → 2027-02-07 (-13d) | -82.5d → -74.5d |  |
| CO-SL-LP-310 | Installation Works for Lighting Poles Foundation of Street Lighting Network | 2027-02-20 → 2027-02-08 (-12d) | 2027-03-03 → 2027-02-20 (-11d) | -82.5d → -74.5d |  |
| CO-SL-LP-320 | Installation Works for Lighting Poles of Street Lighting Network | 2027-03-04 → 2027-02-20 (-12d) | 2027-03-18 → 2027-03-06 (-12d) | -82.5d → -74.5d |  |
| CO-SL-LP-210 | Backfilling Works for Lighting Poles of Street Lighting Network | 2027-03-20 → 2027-03-06 (-14d) | 2027-03-30 → 2027-03-21 (-9d) | -82.5d → -74.5d |  |
| CW | **Cabling Works** | 2027-02-20 → 2027-02-08 (-12d) | 2027-03-28 → 2027-03-18 (-10d) |  |  |
| CO-SL-CL-250 | Trench Excavation and Bedding Works for Street Lighting Network | 2027-02-20 → 2027-02-08 (-12d) | 2027-03-02 → 2027-02-18 (-12d) | -79.5d → -71.5d |  |
| CO-SL-CL-260 | Cable Laying Works for Street Lighting Network | 2027-03-02 → 2027-02-18 (-12d) | 2027-03-15 → 2027-03-01 (-14d) | -79.5d → -71.5d |  |
| CO-SL-CL-270 | Trench Backfilling and Compaction Works for Street Lighting Network | 2027-03-20 → 2027-03-06 (-14d) | 2027-03-28 → 2027-03-18 (-10d) | -82.5d → -74.5d |  |
| DPB | **Distrubution Panel Boards** | 2027-04-08 → 2027-03-31 (-8d) | 2027-05-06 → 2027-04-27 (-9d) |  |  |
| CO-SL-DB-250 | Foundation Excavation Works For Panel Boards of Street Lighting Network | 2027-04-08 → 2027-03-31 (-8d) | 2027-04-15 → 2027-04-06 (-9d) | -83.5d → -70d |  |
| CO-SL-DB-260 | Installation Works for Panel Board Concrete Foundations of Street Lighting Network | 2027-04-15 → 2027-04-07 (-8d) | 2027-04-22 → 2027-04-13 (-9d) | -83.5d → -70d |  |
| CO-SL-DB-270 | Installation Works for Lighting Panel Boards of Street Lighting Network | 2027-04-22 → 2027-04-14 (-8d) | 2027-04-29 → 2027-04-20 (-9d) | -83.5d → -70d |  |
| CO-SL-DB-220 | A wall of concrete blocks to install the KWH meter of Street Lighting Network | 2027-04-29 → 2027-04-21 (-8d) | 2027-05-06 → 2027-04-27 (-9d) | -76.5d → -69d |  |
| TE | **Telecom Network** | 2027-02-23 → 2027-02-13 (-10d) | 2027-04-20 → 2027-04-11 (-9d) |  |  |
| PD | **Ducts Works** | 2027-02-23 → 2027-02-13 (-10d) | 2027-04-01 → 2027-03-23 (-9d) |  |  |
| CO-TE-DW-100 | Trench Excavation and Bedding Works for Ducts of Telecom Network | 2027-02-23 → 2027-02-13 (-10d) | 2027-03-01 → 2027-02-18 (-11d) | -84.5d → -75.5d |  |
| CO-TE-DW-110 | Pipes Laying Works for Ducts of Telecom Network | 2027-03-02 → 2027-02-18 (-12d) | 2027-03-08 → 2027-02-24 (-12d) | -84.5d → -75.5d |  |
| CO-TE-DW-130 | Trench Backfilling and Compaction Works for Ducts of Telecom Network | 2027-03-08 → 2027-02-24 (-12d) | 2027-03-21 → 2027-03-08 (-13d) | -83.5d → -75.5d |  |
| CO-TE-DW-120 | Pouring Road Crossing Concrete Encasement | 2027-03-21 → 2027-03-13 (-8d) | 2027-04-01 → 2027-03-23 (-9d) | -83.5d → -75.5d |  |
| MH | **Manholes Works** | 2027-03-08 → 2027-02-24 (-12d) | 2027-04-03 → 2027-03-24 (-10d) |  |  |
| CO-TE-MH-140 | Excavation Works for Manholes of Telecom Network | 2027-03-08 → 2027-02-24 (-12d) | 2027-03-17 → 2027-03-03 (-14d) | -84.5d → -71.8d |  |
| CO-TE-MH-150 | Installation Works for Manholes of Telecom Network | 2027-03-17 → 2027-03-04 (-13d) | 2027-03-25 → 2027-03-16 (-9d) | -84.5d → -71.8d |  |
| CO-TE-MH-160 | Backfilling Works for Manholes of Telecom Network | 2027-03-25 → 2027-03-17 (-8d) | 2027-04-03 → 2027-03-24 (-10d) | -84.5d → -71.8d |  |
| DD | **CCTV System Wroks** | 2027-04-03 → 2027-03-25 (-9d) | 2027-04-20 → 2027-04-11 (-9d) |  |  |
| CO-TE-CTV-100 | Digging and Pulling Trenches PVC ducts , Backfilling, Excavations, of Power Cable | 2027-04-03 → 2027-03-25 (-9d) | 2027-04-08 → 2027-03-30 (-9d) | -84.5d → -66d |  |
| CO-TE-CTV-110 | Installation of Network Cable Cat.6A from Network switch to CCTV Camera and ACS Device | 2027-04-08 → 2027-03-31 (-8d) | 2027-04-14 → 2027-04-05 (-9d) | -84.5d → -66d |  |
| CO-TE-CTV-130 | Installation of Access Control System | 2027-04-14 → 2027-04-06 (-8d) | 2027-04-20 → 2027-04-11 (-9d) | -84.5d → -66d |  |
| RD | **Road Works** | 2027-03-23 → 2027-03-15 (-8d) | 2027-05-26 → 2027-05-12 (-14d) |  |  |
| 3 | **ST+1000:ST+1531** | 2027-03-23 → 2027-03-15 (-8d) | 2027-04-24 → 2027-04-15 (-9d) |  |  |
| RD | **Pre-Bituminous Construction** | 2027-03-23 → 2027-03-15 (-8d) | 2027-04-24 → 2027-04-15 (-9d) |  |  |
| CO-RD-PB-140 | Subgrade Layer for Road Works | 2027-03-23 → 2027-03-15 (-8d) | 2027-04-07 → 2027-03-30 (-8d) | -85d → -77.5d |  |
| CO-RD-PB-150 | Aggregate Base Course Layer for Road Works | 2027-04-08 → 2027-03-30 (-9d) | 2027-04-24 → 2027-04-15 (-9d) | -85d → -77.5d |  |
| 2 | **ST+500:ST+1000** | 2027-04-08 → 2027-03-31 (-8d) | 2027-05-06 → 2027-04-28 (-8d) |  |  |
| RD | **Pre-Bituminous Construction** | 2027-04-08 → 2027-03-31 (-8d) | 2027-05-06 → 2027-04-28 (-8d) |  |  |
| CO-RD-PB-120 | Subgrade Layer for Road Works | 2027-04-08 → 2027-03-31 (-8d) | 2027-04-21 → 2027-04-12 (-9d) | -84.3d → -76.8d |  |
| CO-RD-PB-130 | Aggregate Base Course Layer for Road Works | 2027-04-25 → 2027-04-15 (-10d) | 2027-05-06 → 2027-04-28 (-8d) | -85d → -77.5d |  |
| 1 | **ST+01:ST+500** | 2027-04-21 → 2027-04-12 (-9d) | 2027-05-26 → 2027-05-12 (-14d) |  |  |
| RD | **Pre-Bituminous Construction** | 2027-04-21 → 2027-04-12 (-9d) | 2027-05-26 → 2027-05-12 (-14d) |  |  |

| ID | Task | Start | Finish | Total float | Predecessors |
| --- | --- | --- | --- | --- | --- |
| CO-RD-PB-100 | Subgrade Layer for Road Works | 2027-04-21 → 2027-04-12 (-9d) | 2027-05-05 → 2027-04-26 (-9d) | -84.3d → -76.8d |  |
| CO-RD-PB-110 | Aggregate Base Course Layer for Road Works | 2027-05-08 → 2027-04-28 (-10d) | 2027-05-26 → 2027-05-12 (-14d) | -85d → -77.5d |  |
| 3 | **Finishes for Infrastructure Networks** | 2027-01-04 → 2027-01-11 (+7d) | 2027-06-07 → 2027-05-30 (-8d) |  |  |
| 11 | **Storm Drainage Network** | 2027-02-15 → 2027-02-01 (-14d) | 2027-05-01 → 2027-04-17 (-14d) |  |  |
| TF | **Testing and Finishes** | 2027-02-15 → 2027-02-01 (-14d) | 2027-05-01 → 2027-04-17 (-14d) |  |  |
| CO-SD-ML-TF-100 | Testing Work for Pipes of Storm Drainage Network | 2027-02-15 → 2027-02-01 (-14d) | 2027-03-02 → 2027-02-14 (-16d) | -89.2d → -56d |  |
| CO-SD-CB-TF-130 | Catch Basin Internal Finishes (Benching ) for Storm Drainage Network | 2027-03-02 → 2027-02-14 (-16d) | 2027-03-20 → 2027-03-01 (-19d) | -89.2d → -56d |  |
| CO-SD-CB-TF-160 | Testing Works for Catch Basins of Storm Drainage Network | 2027-03-20 → 2027-03-01 (-19d) | 2027-03-31 → 2027-03-17 (-14d) | -89.2d → -56d |  |
| CO-SD-CB-TF-110 | Install Catch Basin Cover Works for External Finishes of Storm Drainage Network | 2027-03-31 → 2027-03-18 (-13d) | 2027-04-12 → 2027-03-29 (-14d) | -89.2d → -56d |  |
| CO-SD-MH-TF-120 | Main Manhole Internal Finishes (Benching ) for Storm Drainage Network | 2027-04-12 → 2027-03-30 (-13d) | 2027-04-24 → 2027-04-10 (-14d) | -89.2d → -56d |  |
| CO-SD-MH-TF-210 | Testing Works for Manholes of Storm Drainage Network | 2027-04-24 → 2027-04-11 (-13d) | 2027-05-01 → 2027-04-17 (-14d) | -89.2d → -56d |  |
| 10 | **Sewage Network** | 2027-01-04 → 2027-01-11 (+7d) |  |  |  |
| TF | **Testing and Finishes** | 2027-01-04 → 2027-01-11 (+7d) |  |  |  |
| CO-SW-TF-100 | Final Testing For Main Line of Sewage Network | 2027-01-04 → 2027-01-11 (+7d) | 2027-01-13 → 2027-01-20 (+7d) | -64.5d → -27d |  |
| CO-SW-TF-130 | Main Manhole Internal Finishes (Benching + Insulation) of Sewage Network | 2027-01-14 → 2027-01-21 (+7d) | 2027-02-07 → 2027-02-16 (+9d) | -33d → -27d | CO-SW-MH-200, CO-SW-TF-100, CO-SW-MH-250, CO-SD-PO-100-P1 → CO-SW-MH-200, CO-SW-TF-100, CO-SW-MH-250 |
| 9 | **Potable Water Network** | 2027-04-11 → 2027-04-03 (-8d) | 2027-05-22 → 2027-05-08 (-14d) |  |  |
| TF | **Testing and Finishes** | 2027-04-11 → 2027-04-03 (-8d) | 2027-05-22 → 2027-05-08 (-14d) |  |  |
| CO-PW-TF-110 | Testing Work for Main Line of Potable Water Network | 2027-04-11 → 2027-04-03 (-8d) | 2027-04-22 → 2027-04-14 (-8d) | -83d → -75.5d |  |
| CO-PW-TF-120 | Fire Hydrant Finishies (S.Box + Safety + Marker Post ) of Potable Water Network | 2027-04-24 → 2027-04-14 (-10d) | 2027-05-04 → 2027-04-26 (-8d) | -83d → -75.5d |  |
| CO-PW-TF-100 | Final Finishes works and Covers for Valves and Valve Chambers of Potable Water Network | 2027-05-05 → 2027-04-26 (-9d) | 2027-05-22 → 2027-05-08 (-14d) | -83d → -75.5d |  |
| 13 | **Irrigation Network** | 2027-04-07 → 2027-03-30 (-8d) | 2027-04-21 → 2027-04-12 (-9d) |  |  |
| TF | **Testing and Finishes** | 2027-04-07 → 2027-03-30 (-8d) | 2027-04-21 → 2027-04-12 (-9d) |  |  |
| CO-IR-TF-160 | Final Testing (pressure tests) of Irrigation Network | 2027-04-07 → 2027-03-30 (-8d) | 2027-04-21 → 2027-04-12 (-9d) | -75d → -67.5d |  |
| 1 | **Treated Sewage Effluent (Tse)** | 2027-04-21 → 2027-04-13 (-8d) | 2027-05-04 → 2027-04-26 (-8d) |  |  |
| TF | **Testing and Finishes** | 2027-04-21 → 2027-04-13 (-8d) | 2027-05-04 → 2027-04-26 (-8d) |  |  |
| CO-TSE-TF-170 | Final Testing (pressure tests) of Treated Sewage Effluent (Tse) | 2027-04-21 → 2027-04-13 (-8d) | 2027-05-04 → 2027-04-26 (-8d) | -75d → -67.5d |  |
| 14 | **Medium Voltage Network** | 2027-04-08 → 2027-03-31 (-8d) | 2027-04-29 → 2027-04-20 (-9d) |  |  |
| TT | **Termination and Testing Works** | 2027-04-08 → 2027-03-31 (-8d) | 2027-04-29 → 2027-04-20 (-9d) |  |  |
| CO-MV-TF-220 | Termination Works of Medium Voltage Network | 2027-04-08 → 2027-03-31 (-8d) | 2027-04-29 → 2027-04-20 (-9d) | -81.5d → -74d |  |
| 12 | **Street Lighting Network** | 2027-04-29 → 2027-04-21 (-8d) | 2027-05-22 → 2027-05-06 (-16d) |  |  |
| TR | **Termination and Testing Works** | 2027-04-29 → 2027-04-21 (-8d) | 2027-05-22 → 2027-05-06 (-16d) |  |  |
| CO-SL-LP-330 | Installation Works for Lighting Fixtures With Drop Wire of Street Lighting Network | 2027-04-29 → 2027-04-21 (-8d) | 2027-05-08 → 2027-04-28 (-10d) | -83.5d → -70d |  |
| CO-SL-TF-200 | Testing Works for Lighting Poles of Street Lighting Network | 2027-05-08 → 2027-04-29 (-9d) | 2027-05-13 → 2027-05-04 (-9d) | -75.5d → -68d |  |
| CO-SL-TF-220 | Termination Works For Lighting Poles Cables of Street Lighting Network | 2027-05-08 → 2027-04-29 (-9d) | 2027-05-22 → 2027-05-06 (-16d) | -77.5d → -70d |  |
| CO-SL-TF-230 | Termination Works For Panel Board Cables of Street Lighting Network | 2027-05-08 → 2027-04-29 (-9d) | 2027-05-22 → 2027-05-06 (-16d) | -77.5d → -70d |  |
| CO-SL-TF-380 | Testing Works For Panel Board Cables of Street Lighting Network | 2027-05-08 → 2027-04-29 (-9d) | 2027-05-10 → 2027-05-01 (-9d) | -72.5d → -65d |  |
| ES | **Earthing System Works** | 2027-04-29 → 2027-04-21 (-8d) | 2027-05-08 → 2027-04-28 (-10d) |  |  |
| CO-SL-ES-220 | Install Earthing System Works for Lighting Poles of Street Lighting Network | 2027-04-29 → 2027-04-21 (-8d) | 2027-05-08 → 2027-04-28 (-10d) | -83.5d → -70d |  |
| CO-SL-ES-230 | Install Earthing System Works for Lighting Panel Boards of Street Lighting Network | 2027-04-29 → 2027-04-21 (-8d) | 2027-05-08 → 2027-04-28 (-10d) | -83.5d → -70d |  |
| 3 | **Telecom Network** | 2027-04-20 → 2027-04-12 (-8d) | 2027-05-09 → 2027-04-29 (-10d) |  |  |
| 1 | **Testing and Finishes** | 2027-04-20 → 2027-04-12 (-8d) | 2027-05-09 → 2027-04-29 (-10d) |  |  |
| CO-TE-CTV-TF-110 | Smart Card Printer | 2027-04-20 → 2027-04-12 (-8d) | 2027-04-25 → 2027-04-15 (-10d) | -84.5d → -66d |  |
| CO-TE-CTV-TF-120 | Card Issue Work Station | 2027-04-25 → 2027-04-17 (-8d) | 2027-04-29 → 2027-04-20 (-9d) | -84.5d → -66d |  |
| CO-TE-CTV-TF-130 | Photographic Camera with stand | 2027-04-29 → 2027-04-21 (-8d) | 2027-05-04 → 2027-04-25 (-9d) | -84.5d → -66d |  |
| CO-TE-CTV-TF-140 | Interface modules with CCTV, Fire and other systems | 2027-05-04 → 2027-04-26 (-8d) | 2027-05-09 → 2027-04-29 (-10d) | -84.5d → -66d |  |
| 2 | **Road Works** | 2027-04-08 → 2027-03-30 (-9d) | 2027-06-07 → 2027-05-30 (-8d) |  |  |
| 3 | **ST+1000:ST+1531** | 2027-04-08 → 2027-03-30 (-9d) | 2027-06-01 → 2027-05-24 (-8d) |  |  |
| 1 | **Bituminous Construction** | 2027-04-25 → 2027-04-15 (-10d) | 2027-05-10 → 2027-05-02 (-8d) |  |  |
| CO-RD-B-150 | Application of Prime Coat Layer for Road Works | 2027-04-25 → 2027-04-15 (-10d) | 2027-05-02 → 2027-04-24 (-8d) | -84d → -76.5d |  |
| CO-RD-B-160 | Bituminous Base Courses Layers for Road Works- | 2027-05-03 → 2027-04-24 (-9d) | 2027-05-10 → 2027-05-02 (-8d) | -84d → -76.5d |  |
| LS | **Pavement Works** | 2027-04-08 → 2027-03-30 (-9d) | 2027-05-05 → 2027-04-26 (-9d) |  |  |
| CO-RD-PV-160 | Fixing of Curbstone for Sidewalks Pavement | 2027-04-08 → 2027-03-30 (-9d) | 2027-04-22 → 2027-04-13 (-9d) | -84.2d → -76.7d |  |
| CO-RD-PV-170 | Fixing of Interlock Tiles for Sidewalks Pavement | 2027-04-22 → 2027-04-13 (-9d) | 2027-05-05 → 2027-04-26 (-9d) | -84.2d → -76.7d |  |
| TS | **Traffic Signs Boards and Roads Marking** | 2027-05-11 → 2027-05-02 (-9d) | 2027-06-01 → 2027-05-24 (-8d) |  |  |
| CO-RD-F-RM-180 | Application of Road Marking Works For Road Works | 2027-05-11 → 2027-05-02 (-9d) | 2027-05-24 → 2027-05-10 (-14d) | -81d → -73.5d |  |
| CO-RD-F-TS-120 | Installation Works of Traffic Signs Boards For Road Works | 2027-05-25 → 2027-05-10 (-15d) | 2027-06-01 → 2027-05-24 (-8d) | -81d → -73.5d |  |
| 1 | **ST+500:ST+1000** | 2027-04-22 → 2027-04-13 (-9d) | 2027-06-06 → 2027-05-29 (-8d) |  |  |
| 1 | **Bituminous Construction** | 2027-05-11 → 2027-05-02 (-9d) | 2027-05-25 → 2027-05-11 (-14d) |  |  |
| CO-RD-B-130 | Application of Prime Coat Layer for Road Works | 2027-05-11 → 2027-05-02 (-9d) | 2027-05-20 → 2027-05-06 (-14d) | -84d → -76.5d |  |
| CO-RD-B-140 | Bituminous Base Courses Layers for Road Works- | 2027-05-22 → 2027-05-06 (-16d) | 2027-05-25 → 2027-05-11 (-14d) | -84d → -76.5d |  |
| LS | **Pavement Works** | 2027-04-22 → 2027-04-13 (-9d) | 2027-05-24 → 2027-05-09 (-15d) |  |  |
| CO-RD-PV-140 | Fixing of Curbstone for Sidewalks Pavement | 2027-04-22 → 2027-04-13 (-9d) | 2027-05-05 → 2027-04-26 (-9d) | -84.2d → -76.7d |  |
| CO-RD-PV-150 | Fixing of Interlock Tiles for Sidewalks Pavement | 2027-05-05 → 2027-04-26 (-9d) | 2027-05-24 → 2027-05-09 (-15d) | -84.2d → -76.7d |  |
| TS | **Traffic Signs Boards and Roads Marking** | 2027-05-27 → 2027-05-12 (-15d) | 2027-06-06 → 2027-05-29 (-8d) |  |  |
| CO-RD-F-RM-170 | Application of Road Marking Works For Road Works | 2027-05-27 → 2027-05-12 (-15d) | 2027-06-01 → 2027-05-24 (-8d) | -85d → -77.5d |  |
| CO-RD-F-TS-110 | Installation Works of Traffic Signs Boards For Road Works | 2027-06-02 → 2027-05-24 (-9d) | 2027-06-06 → 2027-05-29 (-8d) | -85d → -77.5d |  |
| 2 | **ST+01:ST+500** | 2027-05-05 → 2027-04-26 (-9d) | 2027-06-07 → 2027-05-30 (-8d) |  |  |
| 1 | **Bituminous Construction** | 2027-05-27 → 2027-05-12 (-15d) | 2027-06-06 → 2027-05-29 (-8d) |  |  |
| CO-RD-B-110 | Application of Prime Coat Layer for Road Works | 2027-05-27 → 2027-05-12 (-15d) | 2027-06-01 → 2027-05-24 (-8d) | -85d → -77.5d |  |
| CO-RD-B-120 | Bituminous Base Courses Layers for Road Works- | 2027-06-02 → 2027-05-24 (-9d) | 2027-06-06 → 2027-05-29 (-8d) | -85d → -77.5d |  |

| ID | Task | Start | Finish | Complete | Total float |
| --- | --- | --- | --- | --- | --- |
| LS | **Pavement Works** | 2027-05-05 → 2027-04-26 (-9d) | 2027-06-06 → 2027-05-27 (-10d) |  |  |
| CO-RD-PV-120 | Fixing of Curbstone for Sidewalks Pavement | 2027-05-05 → 2027-04-26 (-9d) | 2027-05-24 → 2027-05-09 (-15d) |  | -84.3d → -76.8d |
| CO-RD-PV-130 | Fixing of Interlock Tiles for Sidewalks Pavement | 2027-05-24 → 2027-05-09 (-15d) | 2027-06-06 → 2027-05-27 (-10d) |  | -84.3d → -76.8d |
| TS | **Traffic Signs Boards and Roads Marking** | 2027-06-07 → 2027-05-29 (-9d) | 2027-06-07 → 2027-05-30 (-8d) |  |  |
| CO-RD-F-RM-160 | Application of Road Marking Works For Road Works | 2027-06-07 → 2027-05-29 (-9d) | 2027-06-07 → 2027-05-30 (-8d) |  | -82d → -74.5d |
| CO-RD-F-TS-100 | Installation Works of Traffic Signs Boards For Road Works | 2027-06-07 → 2027-05-29 (-9d) | 2027-06-07 → 2027-05-30 (-8d) |  | -82d → -74.5d |
| GEN | **Superstructure Work** |  | 2027-05-20 → 2027-05-27 (+7d) |  |  |
| 4 | **Utility Buildings** |  | 2027-05-20 → 2027-05-05 (-15d) |  |  |
| 4 | **Pump Station** |  | 2027-05-20 → 2027-05-05 (-15d) |  |  |
| 1 | **Civil work** |  | 2026-12-05 → 2026-11-25 (-10d) |  |  |
| 2 | **Super structure** |  | 2026-12-05 → 2026-11-25 (-10d) |  |  |
| CO-UB-PS-230 | Steel fixing for pump roof |  | 2026-12-01 → 2026-10-11 A (-51d) | 90% → 100% | -2d → none |
| CO-UB-PS-240 | pouring for pump roof | 2026-12-02 → 2026-10-12 A (-51d) | 2026-12-02 → 2026-10-12 A (-51d) | 0% → 100% | -2d → none |
| CO-UB-PS-250 | curing and deshuttering formwork for pump roof | 2026-12-03 → 2026-11-24 (-9d) | 2026-12-05 → 2026-11-25 (-10d) |  | -2d → 6d |
| 2 | **Architectural work** | 2026-12-06 → 2026-11-26 (-10d) | 2027-01-14 → 2027-01-05 (-9d) |  |  |
| CO-UB-PS-260 | Executing Masonry Works for Pump station building | 2026-12-06 → 2026-11-26 (-10d) | 2026-12-10 → 2026-12-01 (-9d) |  | -2d → 6d |
| CO-UB-PS-270 | Executing Plastering Works for Pump station building | 2026-12-12 → 2026-12-02 (-10d) | 2026-12-16 → 2026-12-07 (-9d) |  | -2d → 6d |
| CO-UB-PS-280 | Executing Painting Works for Pump station building | 2026-12-17 → 2026-12-08 (-9d) | 2026-12-22 → 2026-12-13 (-9d) |  | -2d → 6d |
| CO-UB-PS-320 | Doors and windows Fixing &Stair Tiles | 2027-01-07 → 2026-12-29 (-9d) | 2027-01-14 → 2027-01-05 (-9d) |  | 2d → 10d |
| 3 | **Electrical work** | 2026-12-23 → 2026-12-14 (-9d) | 2027-05-09 → 2027-04-29 (-10d) |  |  |
| CO-UB-PS-290 | Lighting system for pump house | 2026-12-23 → 2026-12-14 (-9d) | 2026-12-28 → 2026-12-19 (-9d) |  | -2d → 6d |
| CO-UB-PS-300 | Wiring connection for pump house | 2026-12-29 → 2026-12-20 (-9d) | 2027-01-03 → 2026-12-24 (-10d) |  | -2d → 6d |
| CO-UB-PS-310 | Sockets and switches for pump house | 2027-01-04 → 2026-12-26 (-9d) | 2027-01-06 → 2026-12-28 (-9d) |  | -2d → 6d |
| CO-UB-PS-330 | Installation for Distribution boards for pump house | 2027-01-07 → 2026-12-29 (-9d) | 2027-01-16 → 2027-01-06 (-10d) |  | -2d → 6d |
| CO-UB-PS-370 | Executing Earthing and bonding for the entire system | 2027-04-29 → 2027-04-21 (-8d) | 2027-05-09 → 2027-04-29 (-10d) |  | -81.5d → -74d |
| 4 | **Mechanical work** | 2027-01-07 → 2026-12-29 (-9d) | 2027-05-20 → 2027-05-05 (-15d) |  |  |
| CO-UB-PS-340 | Executing HVAC System for Pump station building | 2027-01-07 → 2026-12-29 (-9d) | 2027-01-23 → 2027-01-13 (-10d) |  | 0d → 8d |
| CO-UB-PS-350 | Executing Fire Alarm System for Pump station building | 2027-01-07 → 2026-12-29 (-9d) | 2027-01-12 → 2027-01-03 (-9d) |  | -1d → 7d |
| CO-UB-PS-360 | Executing Fire fighting institution works(piping and wire installation) for Pump station building | 2027-01-13 → 2027-01-04 (-9d) | 2027-01-18 → 2027-01-09 (-9d) |  | -1d → 7d |
| CO-UB-PS-380 | Executing Fire fighting finishing works for Pump station building | 2027-01-19 → 2027-01-10 (-9d) | 2027-01-24 → 2027-01-14 (-10d) |  | -1d → 7d |
| CO-UB-PS-390 | Installation of pumps | 2027-05-09 → 2027-05-01 (-8d) | 2027-05-20 → 2027-05-05 (-15d) |  | -81.5d → -74d |
| 3 | **Lift Station** |  | 2027-02-16 → 2027-02-15 (-1d) |  |  |
| 1 | **Civil work** |  | 2026-12-21 → 2026-12-20 (-1d) |  |  |
| 2 | **Super structure** |  | 2026-12-21 → 2026-12-20 (-1d) |  |  |
| CO-UB-LS-290 | Formwork for Wall and columns for Lift Station |  | 2026-11-25 → 2026-11-24 (-1d) |  | -14d → -13d |
| CO-UB-LS-300 | Steel fixing for Wall columns |  | 2026-11-26 → 2026-11-25 (-1d) |  | -14d → -13d |
| CO-UB-LS-310 | pouring for Wall columns |  | 2026-11-26 → 2026-11-25 (-1d) |  | -14d → -13d |
| CO-UB-LS-320 | curing and deshuttering formwork for Wall columns | 2026-11-28 → 2026-11-26 (-2d) | 2026-11-29 → 2026-11-28 (-1d) |  | -14d → -13d |
| CO-UB-LS-330 | Waterproofing for Walls columns | 2026-11-30 → 2026-11-29 (-1d) | 2026-12-03 → 2026-12-02 (-1d) |  | -14d → -13d |
| CO-UB-LS-340 | Formwork for pump roof | 2026-12-05 → 2026-12-03 (-2d) | 2026-12-09 → 2026-12-08 (-1d) |  | -14d → -13d |
| CO-UB-LS-350 | Steel fixing for pump roof | 2026-12-10 → 2026-12-09 (-1d) | 2026-12-16 → 2026-12-15 (-1d) |  | -14d → -13d |
| CO-UB-LS-360 | pouring for pump roof | 2026-12-17 → 2026-12-16 (-1d) | 2026-12-17 → 2026-12-16 (-1d) |  | -14d → -13d |
| CO-UB-LS-370 | curing and deshuttering formwork for pump roof | 2026-12-19 → 2026-12-17 (-2d) | 2026-12-21 → 2026-12-20 (-1d) |  | -14d → -13d |
| 2 | **Architectural work** | 2026-12-22 → 2026-12-21 (-1d) | 2027-01-07 → 2027-01-06 (-1d) |  |  |
| CO-UB-LS-380 | Executing Masonry Works for Pump station building | 2026-12-22 → 2026-12-21 (-1d) | 2026-12-29 → 2026-12-28 (-1d) |  | -14d → -13d |
| CO-UB-LS-390 | Executing Plastering Works for Pump station building | 2026-12-30 → 2026-12-29 (-1d) | 2027-01-07 → 2027-01-06 (-1d) |  | -14d → -13d |
| 3 | **Electrical work** | 2027-01-09 → 2027-01-07 (-2d) | 2027-02-16 → 2027-02-15 (-1d) |  |  |
| CO-UB-LS-400 | Lighting system for pump house | 2027-01-09 → 2027-01-07 (-2d) | 2027-01-17 → 2027-01-16 (-1d) |  | -14d → -13d |
| CO-UB-LS-420 | Wiring connection for pump house | 2027-01-18 → 2027-01-17 (-1d) | 2027-01-24 → 2027-01-23 (-1d) |  | -14d → -13d |
| CO-UB-LS-440 | Sockets and switches for pump house | 2027-01-25 → 2027-01-24 (-1d) | 2027-01-31 → 2027-01-30 (-1d) |  | -14d → -13d |
| CO-UB-LS-460 | Installation for Distribution boards for pump house | 2027-02-01 → 2027-01-31 (-1d) | 2027-02-07 → 2027-02-06 (-1d) |  | -14d → -13d |
| CO-UB-LS-480 | Executing Earthing and bonding for the entire system | 2027-02-08 → 2027-02-07 (-1d) | 2027-02-16 → 2027-02-15 (-1d) |  | -14d → -13d |
| 4 | **Mechanical work** | 2027-01-09 → 2027-01-07 (-2d) | 2027-02-14 → 2027-02-11 (-3d) |  |  |
| CO-UB-LS-410 | Internal pipe installation | 2027-01-09 → 2027-01-07 (-2d) | 2027-01-17 → 2027-01-16 (-1d) |  | -12d → -11d |
| CO-UB-LS-430 | Guide rails & lifting chains installation | 2027-01-18 → 2027-01-17 (-1d) | 2027-01-25 → 2027-01-24 (-1d) |  | -12d → -11d |
| CO-UB-LS-450 | ExeValve installation | 2027-01-26 → 2027-01-25 (-1d) | 2027-02-02 → 2027-02-01 (-1d) |  | -12d → -11d |
| CO-UB-LS-470 | Installation of pumps | 2027-02-03 → 2027-02-02 (-1d) | 2027-02-14 → 2027-02-11 (-3d) |  | -12d → -11d |
| 5 | **Potable Water Tank** | 2026-12-07 → 2026-12-14 (+7d) | 2027-02-25 → 2027-03-07 (+10d) |  |  |
| 1 | **Eearth Work** | 2026-12-07 → 2026-12-14 (+7d) | 2026-12-20 → 2026-12-27 (+7d) |  |  |
| CO-UB-PWT-100 | Excavation work for tank foundation tank formation level | 2026-12-07 → 2026-12-14 (+7d) | 2026-12-14 → 2026-12-21 (+7d) |  | -76d → -8d |
| CO-UB-PWT-110 | Soil replacement Up to tank formation level | 2026-12-15 → 2026-12-22 (+7d) | 2026-12-20 → 2026-12-27 (+7d) |  | -76d → -8d |
| 2 | **Structural Work** | 2026-12-21 → 2026-12-28 (+7d) | 2027-01-06 → 2027-01-13 (+7d) |  |  |
| CO-UB-PWT-120 | Plain Concrete works | 2026-12-21 → 2026-12-28 (+7d) | 2026-12-23 → 2026-12-30 (+7d) |  | -76d → -8d |
| CO-UB-PWT-130 | Form work for Tank Foundation | 2026-12-24 → 2026-12-31 (+7d) | 2026-12-29 → 2027-01-05 (+7d) |  | -76d → -8d |
| CO-UB-PWT-140 | Steel Reinforcement work for Tank Foundation | 2026-12-30 → 2027-01-06 (+7d) | 2027-01-05 → 2027-01-12 (+7d) |  | -76d → -8d |
| CO-UB-PWT-150 | Casting concrete for Tank Foundation | 2027-01-06 → 2027-01-13 (+7d) | 2027-01-06 → 2027-01-13 (+7d) |  | -76d → -8d |
| 3 | **Tank Shell Erection&Roof Installation** | 2027-01-07 → 2027-01-14 (+7d) | 2027-02-01 → 2027-02-09 (+8d) |  |  |
| CO-UB-PWT-160 | Bottom ring installation | 2027-01-07 → 2027-01-14 (+7d) | 2027-01-13 → 2027-01-20 (+7d) |  | -76d → -8d |
| CO-UB-PWT-170 | shell erection | 2027-01-14 → 2027-01-21 (+7d) | 2027-01-23 → 2027-01-30 (+7d) |  | -76d → -8d |
| CO-UB-PWT-180 | Aluminum dome / steel roof installation | 2027-01-24 → 2027-01-31 (+7d) | 2027-02-01 → 2027-02-09 (+8d) |  | -76d → -8d |

| ID | Task | Start | Finish | Total float | Predecessors |
| --- | --- | --- | --- | --- | --- |
| 4 | **Mechanical Work&Accessories** | 2027-02-02 → 2027-02-09 (+7d) | 2027-02-25 → 2027-03-07 (+10d) |  |  |
| CO-UB-PWT-190 | Inlet / outlet piping connections | 2027-02-02 → 2027-02-09 (+7d) | 2027-02-09 → 2027-02-18 (+9d) | -76d → -8d |  |
| CO-UB-PWT-200 | installation Valves | 2027-02-09 → 2027-02-18 (+9d) | 2027-02-18 → 2027-02-27 (+9d) | -76d → -8d |  |
| CO-UB-PWT-210 | Ladders, platforms & handrails | 2027-02-18 → 2027-02-28 (+10d) | 2027-02-25 → 2027-03-07 (+10d) | -76d → -8d |  |
| 2 | **IrrigationTank** | 2027-02-25 → 2026-10-13 (-135d) | 2027-05-05 → 2026-12-14 (-142d) |  |  |
| 1 | **Eearth Work** | 2027-02-25 → 2026-10-13 (-135d) | 2027-03-16 → 2026-10-25 (-142d) |  |  |
| CO-UB-IRT-140 | Excavation work for tank foundation tank formation level | 2027-02-25 → 2026-10-13 (-135d) | 2027-03-07 → 2026-10-19 (-139d) | -76d → 37d | CO-UB-PWT-100, CO-UB-PWT-210 → none |
| CO-UB-IRT-150 | Soil replacement Up to tank formation level | 2027-03-07 → 2026-10-20 (-138d) | 2027-03-16 → 2026-10-25 (-142d) | -76d → 37d |  |
| 2 | **Structural Work** | 2027-03-17 → 2026-10-26 (-142d) | 2027-04-03 → 2026-11-11 (-143d) |  |  |
| CO-UB-IRT-160 | Plain Concrete works | 2027-03-17 → 2026-10-26 (-142d) | 2027-03-20 → 2026-10-28 (-143d) | -76d → 37d |  |
| CO-UB-IRT-170 | Form work for Tank Foundation | 2027-03-21 → 2026-10-29 (-143d) | 2027-03-27 → 2026-11-04 (-143d) | -76d → 37d |  |
| CO-UB-IRT-180 | Steel Reinforcement work for Tank Foundation | 2027-03-28 → 2026-11-05 (-143d) | 2027-04-01 → 2026-11-10 (-142d) | -76d → 37d |  |
| CO-UB-IRT-190 | Casting concrete for Tank Foundation | 2027-04-03 → 2026-11-11 (-143d) | 2027-04-03 → 2026-11-11 (-143d) | -76d → 37d |  |
| 3 | **Tank Shell Erection&Roof Installation** | 2027-04-04 → 2026-11-12 (-143d) | 2027-04-24 → 2026-12-02 (-143d) |  |  |
| CO-UB-IRT-200 | Bottom ring installation | 2027-04-04 → 2026-11-12 (-143d) | 2027-04-10 → 2026-11-18 (-143d) | -76d → 37d |  |
| CO-UB-IRT-210 | shell erection | 2027-04-11 → 2026-11-19 (-143d) | 2027-04-17 → 2026-11-25 (-143d) | -76d → 37d |  |
| CO-UB-IRT-220 | Aluminum dome / steel roof installation | 2027-04-18 → 2026-11-26 (-143d) | 2027-04-24 → 2026-12-02 (-143d) | -76d → 37d |  |
| 4 | **Mechanical Work&Accessories** | 2027-04-25 → 2026-12-03 (-143d) | 2027-05-05 → 2026-12-14 (-142d) |  |  |
| CO-UB-IRT-230 | Inlet / outlet piping connections | 2027-04-25 → 2026-12-03 (-143d) | 2027-04-28 → 2026-12-07 (-142d) | -76d → 37d |  |
| CO-UB-IRT-240 | installation Valves | 2027-04-29 → 2026-12-08 (-142d) | 2027-05-03 → 2026-12-12 (-142d) | -76d → 37d |  |
| CO-UB-IRT-250 | Ladders, platforms & handrails | 2027-05-04 → 2026-12-13 (-142d) | 2027-05-05 → 2026-12-14 (-142d) | -76d → 37d |  |
| 1 | **Control Room** |  | 2027-03-07 → 2027-03-06 (-1d) |  |  |
| 5 | **Civil Work** |  | 2026-12-13 → 2026-12-12 (-1d) |  |  |
| CO-UB-CR-130 | Pouring R.C Columns For Control Room | 2026-11-25 → 2026-11-24 (-1d) | 2026-12-03 → 2026-12-02 (-1d) | -8d → -7d |  |
| CO-UB-CR-140 | Pouring Beams and Slab For Control Room | 2026-12-05 → 2026-12-03 (-2d) | 2026-12-13 → 2026-12-12 (-1d) | -8d → -7d |  |
| 6 | **Finishing Work** | 2026-12-14 → 2026-12-13 (-1d) | 2027-03-07 → 2027-03-06 (-1d) |  |  |
| 1 | **Architictural work** | 2026-12-14 → 2026-12-13 (-1d) | 2027-01-28 → 2027-01-27 (-1d) |  |  |
| CO-UB-CR-150 | Brick Work For Control Room | 2026-12-14 → 2026-12-13 (-1d) | 2026-12-23 → 2026-12-22 (-1d) | -8d → -7d |  |
| CO-UB-CR-160 | Thermal & Moisture Protection Work for Control Room | 2026-12-24 → 2026-12-23 (-1d) | 2026-12-31 → 2026-12-30 (-1d) | -8d → -7d |  |
| CO-UB-CR-200 | Install For Curtian Wall and Windows and Doors | 2027-01-02 → 2026-12-31 (-2d) | 2027-01-10 → 2027-01-09 (-1d) | -8d → -7d |  |
| CO-UB-CR-240 | External Finshing Work (Walls and Floor) | 2027-01-11 → 2027-01-10 (-1d) | 2027-01-19 → 2027-01-18 (-1d) | -8d → -7d |  |
| CO-UB-CR-250 | Internal Finshing Work (Walls,Floor and Ceiling) | 2027-01-20 → 2027-01-19 (-1d) | 2027-01-28 → 2027-01-27 (-1d) | -8d → -7d |  |
| 3 | **Mechanical Work** | 2026-12-24 → 2026-12-23 (-1d) | 2027-02-10 → 2027-02-09 (-1d) |  |  |
| 3 | **HVAC System** | 2026-12-24 → 2026-12-23 (-1d) | 2027-02-10 → 2027-02-09 (-1d) |  |  |
| CO-UB-CR-170 | Install of Refrigerant Piping ( fabricated metal ducts with flanges complete with supports, vanes, dampers ) | 2026-12-24 → 2026-12-23 (-1d) | 2026-12-28 → 2026-12-27 (-1d) | 5d → 6d |  |
| CO-UB-CR-260 | Install of Mini split actual capacity 2 Ton and Ducted split actual capacity 4 Ton | 2027-01-30 → 2027-01-28 (-2d) | 2027-02-06 → 2027-02-04 (-2d) | 3d → 4d |  |
| CO-UB-CR-310 | Install of Air Grills 150mm x150mm and Air Diffuser 600mm x 600mm | 2027-02-07 → 2027-02-06 (-1d) | 2027-02-10 → 2027-02-09 (-1d) | 3d → 4d |  |
| 4 | **Fire Fitting System** | 2026-12-29 → 2026-12-28 (-1d) | 2027-02-01 → 2027-01-31 (-1d) |  |  |
| CO-UB-CR-180 | Installation & Testing of 2 hours Fire rated system for closing the openings between rooms with help of Rock wool | 2026-12-29 → 2026-12-28 (-1d) | 2027-01-02 → 2026-12-31 (-2d) | 5d → 6d |  |
| CO-UB-CR-270 | Install Fire Extinguishers | 2027-01-30 → 2027-01-28 (-2d) | 2027-02-01 → 2027-01-31 (-1d) | 10d → 11d |  |
| 4 | **Electrical Work** | 2027-01-03 → 2027-01-02 (-1d) | 2027-02-27 → 2027-02-25 (-2d) |  |  |
| 1 | **LV Power** | 2027-01-30 → 2027-01-28 (-2d) | 2027-02-18 → 2027-02-16 (-2d) |  |  |
| CO-UB-CR-190 | Install of Distribution board For Control Room | 2027-01-30 → 2027-01-28 (-2d) | 2027-02-03 → 2027-02-02 (-1d) | -2d → -1d |  |
| CO-UB-CR-220 | Install of Earting Cable for Control Room | 2027-02-04 → 2027-02-03 (-1d) | 2027-02-10 → 2027-02-09 (-1d) | -2d → -1d |  |
| CO-UB-CR-280 | Install of Socket outlet and LED Lighting | 2027-02-10 → 2027-02-09 (-1d) | 2027-02-18 → 2027-02-16 (-2d) | -2d → -1d |  |
| 3 | **Fire Detection And Alarm System** | 2027-01-03 → 2027-01-02 (-1d) | 2027-02-27 → 2027-02-25 (-2d) |  |  |
| CO-UB-CR-210 | Install of 2C x 1.5 Sqm FR Rated Armored - Cable For Loop Wiring | 2027-01-03 → 2027-01-02 (-1d) | 2027-01-07 → 2027-01-06 (-1d) | 5d → 6d |  |
| CO-UB-CR-230 | Install of Transmission Communication cable - Fiber Optics 12Core | 2027-01-09 → 2027-01-07 (-2d) | 2027-01-13 → 2027-01-12 (-1d) | 5d → 6d |  |
| CO-UB-CR-290 | Install of power supply system for fire alarm control panel | 2027-01-30 → 2027-01-28 (-2d) | 2027-02-03 → 2027-02-02 (-1d) | -8d → -7d |  |
| CO-UB-CR-300 | Install of Fire Alarm Control panel | 2027-02-04 → 2027-02-03 (-1d) | 2027-02-11 → 2027-02-10 (-1d) | -8d → -7d |  |
| CO-UB-CR-320 | Installation of the addressable manual call point with operation safety glass breaking | 2027-02-13 → 2027-02-10 (-3d) | 2027-02-16 → 2027-02-15 (-1d) | -8d → -7d |  |
| CO-UB-CR-330 | Install of the photoelectric heat & smoke detector | 2027-02-17 → 2027-02-15 (-2d) | 2027-02-21 → 2027-02-20 (-1d) | -8d → -7d |  |
| CO-UB-CR-340 | Install of Sounder With Beacon | 2027-02-17 → 2027-02-15 (-2d) | 2027-02-21 → 2027-02-20 (-1d) | -8d → -7d |  |
| CO-UB-CR-350 | Install of Addressable Control module | 2027-02-22 → 2027-02-20 (-2d) | 2027-02-27 → 2027-02-25 (-2d) | -8d → -7d |  |
| 2 | **Furnitures work** | 2027-02-28 → 2027-02-25 (-3d) | 2027-03-07 → 2027-03-06 (-1d) |  |  |
| CO-UB-CR-360 | Office Chairs,Tables and Stand | 2027-02-28 → 2027-02-25 (-3d) | 2027-03-07 → 2027-03-06 (-1d) | -8d → -7d |  |
| ML | **Softscape and Planting Works** | 2027-02-01 → 2027-02-08 (+7d) | 2027-03-28 → 2027-04-04 (+7d) |  |  |
| 1 | **Planting Beds Preparation** | 2027-02-01 → 2027-02-08 (+7d) | 2027-03-02 → 2027-03-14 (+12d) |  |  |
| CO-LS-PL-100 | Excavation of planting beds | 2027-02-01 → 2027-02-08 (+7d) | 2027-02-09 → 2027-02-18 (+9d) | -61d → -46d |  |
| CO-LS-PL-110 | Supply & placement of suitable topsoil | 2027-02-09 → 2027-02-18 (+9d) | 2027-02-20 → 2027-03-01 (+9d) | -61d → -46d |  |
| CO-LS-PL-120 | Soil improvement (fertilizer, compost, additives) | 2027-02-20 → 2027-03-01 (+9d) | 2027-03-02 → 2027-03-14 (+12d) | -61d → -46d |  |
| 2 | **Supports & Protection** | 2027-03-02 → 2027-03-15 (+13d) | 2027-03-14 → 2027-03-21 (+7d) |  |  |
| CO-LS-PL-130 | installation of plant supports / stakes | 2027-03-02 → 2027-03-15 (+13d) | 2027-03-07 → 2027-03-17 (+10d) | -61d → -46d |  |
| CO-LS-PL-140 | Ties and protection materials | 2027-03-07 → 2027-03-18 (+11d) | 2027-03-14 → 2027-03-21 (+7d) | -61d → -46d |  |
| 3 | **Plant Supply** | 2027-03-15 → 2027-03-22 (+7d) | 2027-03-17 → 2027-03-24 (+7d) |  |  |
| CO-LS-PL-150 | installation of trees | 2027-03-15 → 2027-03-22 (+7d) | 2027-03-17 → 2027-03-24 (+7d) | -61d → -46d |  |
| 4 | **Site Furnishings** | 2027-03-18 → 2027-03-25 (+7d) | 2027-03-28 → 2027-04-04 (+7d) |  |  |
| CO-LS-PL-160 | installation of Seating benches | 2027-03-18 → 2027-03-25 (+7d) | 2027-03-21 → 2027-03-28 (+7d) | -61d → -46d |  |
| CO-LS-PL-170 | tone boulders ï¿½ placement & fixing Works | 2027-03-22 → 2027-03-29 (+7d) | 2027-03-24 → 2027-03-31 (+7d) | -61d → -46d |  |
| CO-LS-PL-180 | Gravel Works | 2027-03-25 → 2027-04-01 (+7d) | 2027-03-28 → 2027-04-04 (+7d) | -61d → -46d |  |

| ID | Task | Start | Finish | Complete | Total float |
| --- | --- | --- | --- | --- | --- |
| 1 | **Fence and Gaurd Room** |  | 2027-05-20 → 2027-05-27 (+7d) |  |  |
| 1 | **Gaurd Room Work** | 2026-12-12 → 2026-12-19 (+7d) | 2027-05-20 → 2027-05-27 (+7d) |  |  |
| 1 | **Civil Work** | 2026-12-12 → 2026-12-19 (+7d) | 2027-01-27 → 2027-02-03 (+7d) |  |  |
| A1000 | Excavation Work For Gaurd Room Foundation | 2026-12-12 → 2026-12-19 (+7d) | 2026-12-19 → 2026-12-26 (+7d) |  | -64d → -70d |
| A1010 | Pouring for Plain Concrete | 2026-12-20 → 2026-12-27 (+7d) | 2026-12-23 → 2026-12-30 (+7d) |  | -64d → -70d |
| A1020 | Pouring R.C Footing For Gaurd Room | 2026-12-24 → 2026-12-31 (+7d) | 2027-01-05 → 2027-01-12 (+7d) |  | -64d → -70d |
| A1030 | Pouring R.C Columns For Gaurd Room | 2027-01-06 → 2027-01-13 (+7d) | 2027-01-17 → 2027-01-24 (+7d) |  | -64d → -70d |
| A1040 | Pouring Beams and Slab For Gaurd Room | 2027-01-18 → 2027-01-25 (+7d) | 2027-01-27 → 2027-02-03 (+7d) |  | -64d → -70d |
| 2 | **Finishing Work** | 2027-01-28 → 2027-02-04 (+7d) | 2027-05-20 → 2027-05-27 (+7d) |  |  |
| 1 | **Architictural work** | 2027-01-28 → 2027-02-04 (+7d) | 2027-04-01 → 2027-04-08 (+7d) |  |  |
| A1050 | Brick Work For Gaurd Room | 2027-01-28 → 2027-02-04 (+7d) | 2027-02-07 → 2027-02-16 (+9d) |  | -64d → -70d |
| A1060 | Thermal & Moisture Protection Work for Gaurd Room | 2027-02-08 → 2027-02-17 (+9d) | 2027-02-18 → 2027-02-27 (+9d) |  | -58d → -64d |
| A1070 | Install For Curtian Wall and Windows and Doors | 2027-02-28 → 2027-03-13 (+13d) | 2027-03-14 → 2027-03-21 (+7d) |  | -64d → -70d |
| A1080 | External Finshing Work (Walls and Floor) | 2027-03-15 → 2027-03-22 (+7d) | 2027-03-23 → 2027-03-30 (+7d) |  | -64d → -70d |
| A1090 | Internal Finshing Work (Walls,Floor and Ceiling) | 2027-03-24 → 2027-03-31 (+7d) | 2027-04-01 → 2027-04-08 (+7d) |  | -64d → -70d |
| 3 | **Mechanical Work** | 2027-02-08 → 2027-02-17 (+9d) | 2027-04-13 → 2027-04-20 (+7d) |  |  |
| 1 | **Sanitary Drainage & Plumbing System** | 2027-02-08 → 2027-02-17 (+9d) | 2027-02-27 → 2027-03-08 (+9d) |  |  |
| A1110 | Install Sanitary Piping System (UPVC) | 2027-02-08 → 2027-02-17 (+9d) | 2027-02-14 → 2027-02-22 (+8d) |  | -64d → -70d |
| A1120 | Install Base mounted flush tank water Western water closet system | 2027-02-14 → 2027-02-23 (+9d) | 2027-02-22 → 2027-03-03 (+9d) |  | -64d → -70d |
| A1130 | Install 1 meter length 10mm diameter Flexible Hose and Gate Valves and Slow Closing Valve | 2027-02-23 → 2027-03-04 (+9d) | 2027-02-27 → 2027-03-08 (+9d) |  | -64d → -70d |
| 2 | **Water Supply System** | 2027-02-08 → 2027-02-17 (+9d) | 2027-04-04 → 2027-04-11 (+7d) |  |  |
| A1240 | Install GRP water tanks capacity of each 1000 liter | 2027-02-08 → 2027-02-17 (+9d) | 2027-02-11 → 2027-02-21 (+10d) |  | -63d → -69d |
| A1140 | Install for Cold Water Pipe complete with joints, angles, reducer etc. | 2027-02-13 → 2027-02-22 (+9d) | 2027-02-20 → 2027-03-01 (+9d) |  | -63d → -69d |
| A1150 | Install for Hot Water Pipe complete with joints, angles, reducer etc. | 2027-02-20 → 2027-03-01 (+9d) | 2027-02-25 → 2027-03-07 (+10d) |  | -63d → -69d |
| A1160 | Install for Isolation Valve,Spray Head,Roof Drain,Floor Drain,Gully teap,Vend on Roof to exhaust air | 2027-02-25 → 2027-03-07 (+10d) | 2027-03-02 → 2027-03-14 (+12d) |  | -44d → -50d |
| A1170 | Install of Inspection chamber, size 800x900x1000 | 2027-03-02 → 2027-03-15 (+13d) | 2027-03-06 → 2027-03-16 (+10d) |  | -44d → -50d |
| A1180 | Install OF Electric Water Heater set with connection and Water meter complete with accessories | 2027-04-03 → 2027-04-10 (+7d) | 2027-04-04 → 2027-04-11 (+7d) |  | -64d → -70d |
| 3 | **HVAC System** | 2027-02-14 → 2027-02-23 (+9d) | 2027-04-13 → 2027-04-20 (+7d) |  |  |
| A1200 | Install of Refrigerant Piping ( fabricated metal ducts with flanges complete with supports, vanes, dampers ) | 2027-02-14 → 2027-02-23 (+9d) | 2027-02-20 → 2027-03-01 (+9d) |  | -43d → -49d |
| A1190 | Install of Mini split actual capacity 2 Ton and Ducted split actual capacity 4 Ton | 2027-04-03 → 2027-04-10 (+7d) | 2027-04-10 → 2027-04-17 (+7d) |  | -42d → -48d |
| A1210 | Install of Air Grills 150mm x150mm and Air Diffuser 600mm x 600mm | 2027-04-11 → 2027-04-18 (+7d) | 2027-04-13 → 2027-04-20 (+7d) |  | -42d → -48d |
| 4 | **Fire Fitting System** | 2027-02-20 → 2027-03-01 (+9d) | 2027-04-08 → 2027-04-15 (+7d) |  |  |
| A1220 | Installation & Testing of 2 hours Fire rated system for closing the openings between rooms with help of Rock wool | 2027-02-20 → 2027-03-01 (+9d) | 2027-03-01 → 2027-03-13 (+12d) |  | -43d → -49d |
| A1230 | Install Fire Extinguishers | 2027-04-03 → 2027-04-10 (+7d) | 2027-04-08 → 2027-04-15 (+7d) |  | -38d → -44d |
| 4 | **Electrical Work** | 2027-02-20 → 2027-03-01 (+9d) | 2027-05-09 → 2027-05-22 (+13d) |  |  |
| 1 | **LV Power** | 2027-02-20 → 2027-03-01 (+9d) | 2027-04-07 → 2027-04-14 (+7d) |  |  |
| A1250 | Install of Distribution board For Gaurd Room | 2027-02-20 → 2027-03-01 (+9d) | 2027-02-27 → 2027-03-08 (+9d) |  | -43d → -49d |
| A1270 | Install of Earting Cable for Gaurd Room | 2027-02-28 → 2027-03-13 (+13d) | 2027-03-07 → 2027-03-17 (+10d) |  | -43d → -49d |
| A1260 | Install of Socket outlet and LED Lighting | 2027-04-03 → 2027-04-10 (+7d) | 2027-04-07 → 2027-04-14 (+7d) |  | -37d → -43d |
| 3 | **Fire Detection And Alarm System** | 2027-03-01 → 2027-03-14 (+13d) | 2027-04-26 → 2027-05-03 (+7d) |  |  |
| A1340 | Install of 2C x 1.5 Sqm FR Rated Armored - Cable For Loop Wiring | 2027-03-01 → 2027-03-14 (+13d) | 2027-03-08 → 2027-03-18 (+10d) |  | -43d → -49d |
| A1350 | Install of Transmission Communication cable - Fiber Optics 12Core | 2027-03-13 → 2027-03-20 (+7d) | 2027-03-17 → 2027-03-24 (+7d) |  | -43d → -49d |
| A1360 | Install of power supply system for fire alarm control panel | 2027-04-03 → 2027-04-10 (+7d) | 2027-04-07 → 2027-04-14 (+7d) |  | -56d → -62d |
| A1280 | Install of Fire Alarm Control panel | 2027-04-08 → 2027-04-15 (+7d) | 2027-04-14 → 2027-04-21 (+7d) |  | -56d → -62d |
| A1290 | Installation of the addressable manual call point with operation safety glass breaking | 2027-04-15 → 2027-04-22 (+7d) | 2027-04-18 → 2027-04-25 (+7d) |  | -56d → -62d |
| A1300 | Install of the photoelectric heat & smoke detector | 2027-04-19 → 2027-04-26 (+7d) | 2027-04-21 → 2027-04-28 (+7d) |  | -56d → -62d |
| A1310 | Install of Sounder With Beacon | 2027-04-19 → 2027-04-26 (+7d) | 2027-04-21 → 2027-04-28 (+7d) |  | -56d → -62d |
| A1320 | Install of Addressable Control module | 2027-04-22 → 2027-04-29 (+7d) | 2027-04-26 → 2027-05-03 (+7d) |  | -56d → -62d |
| 2 | **Security System** | 2027-04-05 → 2027-04-12 (+7d) | 2027-05-09 → 2027-05-22 (+13d) |  |  |
| A1580 | Install 8 Port Industrial PoE Switch 10/100BaseT (0 deg to +70 deg. Celsius) | 2027-04-05 → 2027-04-12 (+7d) | 2027-04-10 → 2027-04-17 (+7d) |  | -64d → -70d |
| A1590 | Optical Fiber,48 Core Splice Closure | 2027-04-11 → 2027-04-18 (+7d) | 2027-04-13 → 2027-04-20 (+7d) |  | -63d → -69d |
| A1650 | Pole/Bollard mounted IP( PoE) and 12U rack dimension | 2027-04-11 → 2027-04-18 (+7d) | 2027-04-14 → 2027-04-21 (+7d) |  | -64d → -70d |
| A1600 | Boom Barrier at Security Guard Room | 2027-04-15 → 2027-04-22 (+7d) | 2027-04-20 → 2027-04-27 (+7d) |  | -64d → -70d |
| A1610 | Pedestrian turnstile at Security Guard Room | 2027-04-21 → 2027-04-28 (+7d) | 2027-04-26 → 2027-05-03 (+7d) |  | -64d → -70d |
| A1620 | Access Control Unit and Access Card Reader | 2027-04-27 → 2027-05-04 (+7d) | 2027-05-01 → 2027-05-08 (+7d) |  | -64d → -70d |
| A1630 | Magnetic Lock and Break Glass and Exit Push button | 2027-05-02 → 2027-05-09 (+7d) | 2027-05-05 → 2027-05-12 (+7d) |  | -64d → -70d |
| A1640 | Door Sensor and Biometrics Reader | 2027-05-06 → 2027-05-13 (+7d) | 2027-05-09 → 2027-05-22 (+13d) |  | -64d → -70d |
| 2 | **Furnitures work** | 2027-05-10 → 2027-05-23 (+13d) | 2027-05-20 → 2027-05-27 (+7d) |  |  |
| A1100 | Office Chairs,Tables and Stand | 2027-05-10 → 2027-05-23 (+13d) | 2027-05-20 → 2027-05-27 (+7d) |  | -64d → -70d |
| 2 | **Fence Work** |  | 2027-05-03 → 2027-04-26 (-7d) |  |  |
| 1 | **Northern Fence N01:N03** |  | 2027-01-21 → 2027-01-28 (+7d) |  |  |
| 1 | **Civil Work** |  | 2026-10-22 → 2026-10-29 (+7d) |  |  |
| CO-SU-FE-N-CI-110 | Pouring for Plain Concrete Northern Fence |  | 2026-10-10 → 2026-10-17 (+7d) |  | -42d → -48d |
| CO-SU-FE-N-CI-120 | Pouring R.C Footing For Northern Fence |  | 2026-10-12 → 2026-10-19 (+7d) |  | -42d → -48d |
| CO-SU-FE-N-CI-130 | Pouring R.C Columns For Northern Fence | 2026-10-13 → 2026-10-01 A (-12d) | 2026-10-18 → 2026-10-25 (+7d) | 0% → 10% | -42d → -48d |
| CO-SU-FE-N-CI-140 | Pouring Beams For Northern Fence | 2026-10-19 → 2026-10-03 A (-16d) | 2026-10-22 → 2026-10-29 (+7d) | 0% → 20% | -16d → -22d |
| 5 | **Finishing Work** |  | 2027-01-21 → 2027-01-28 (+7d) |  |  |
| 3 | **Electrical Work** | 2026-10-19 → 2026-10-26 (+7d) | 2027-01-21 → 2027-01-28 (+7d) |  |  |
| CO-SU-FE-N-EL-100 | Trench excavation to receive 2 nos 50mm diameter PVC Conduit | 2026-10-19 → 2026-10-26 (+7d) | 2026-10-27 → 2026-11-03 (+7d) |  | -42d → -48d |
| CO-SU-FE-N-EL-110 | Trench excavation to receive 3 nos 50mm diameter PVC Conduit | 2026-10-19 → 2026-10-26 (+7d) | 2026-10-27 → 2026-11-03 (+7d) |  | -42d → -48d |

| ID | Task | Start | Finish | Complete | Total float |
| --- | --- | --- | --- | --- | --- |
| CO-SU-FE-N-EL-120 | Fixing of Control cable,CAT6A cable | 2026-10-28 → 2026-11-04 (+7d) | 2026-11-07 → 2026-11-14 (+7d) |  | -42d → -48d |
| CO-SU-FE-N-EL-130 | Install 800mm x 800mm x 800mm height concrete handhole | 2026-10-28 → 2026-11-04 (+7d) | 2026-11-07 → 2026-11-14 (+7d) |  | -42d → -48d |
| CO-SU-FE-N-EL-140 | Hot dipped galvanized cable conduits for CAT6A cable and Control Cables embedded to wall | 2026-10-28 → 2026-11-04 (+7d) | 2026-11-05 → 2026-11-12 (+7d) |  | -41d → -47d |
| CO-SU-FE-N-EL-150 | Fixing Earthing Work (Earth Pit,Grounding rod,Tinned Copper wire) | 2026-11-08 → 2026-11-15 (+7d) | 2026-11-16 → 2026-11-23 (+7d) |  | -42d → -48d |
| CO-SU-FE-N-EL-160 | Field Equipment Cabinet enclosed outdoor complete with precast concrete footing, | 2026-11-17 → 2026-11-24 (+7d) | 2026-11-25 → 2026-12-02 (+7d) |  | -42d → -48d |
| CO-SU-FE-N-EL-170 | Fence Lightining 400V, 3PH, 60Hz lighting control panelï¿½ (LCP-02) | 2026-11-17 → 2026-11-24 (+7d) | 2026-11-25 → 2026-12-02 (+7d) |  | -42d → -48d |
| CO-SU-FE-N-EL-180 | Install of direct buried armored cable 4C-16mm2 ,10mm2 | 2026-11-26 → 2026-12-03 (+7d) | 2026-12-06 → 2026-12-13 (+7d) |  | -42d → -48d |
| CO-SU-FE-N-EL-190 | Install 16mm2,10mm2 CU/PVC wire | 2026-11-26 → 2026-12-03 (+7d) | 2026-12-06 → 2026-12-13 (+7d) |  | -42d → -48d |
| CO-SU-FE-N-EL-200 | FEC-CCTV ( 4C-16mm2 CU/XLPE/PVC direct buried armored cable,16mm2 CU/PVC wire | 2026-11-26 → 2026-12-03 (+7d) | 2026-12-05 → 2026-12-12 (+7d) |  | -41d → -47d |
| CO-SU-FE-N-EL-210 | Junction Box for lighting fixture | 2026-12-07 → 2026-12-14 (+7d) | 2026-12-15 → 2026-12-22 (+7d) |  | -40d → -46d |
| CO-SU-FE-N-EL-220 | IR Intrusion Detection System Quad Beams | 2027-01-04 → 2027-01-11 (+7d) | 2027-01-12 → 2027-01-19 (+7d) |  | 0d → -6d |
| CO-SU-FE-N-EL-230 | Install of 38W, 230V, 1PH, 60Hz fence, led linear uplight lighting, IP66 | 2027-01-04 → 2027-01-11 (+7d) | 2027-01-13 → 2027-01-20 (+7d) |  | -1d → -7d |
| CO-SU-FE-N-EL-240 | Install, fixings, testing and commissioning 80W LED | 2027-01-14 → 2027-01-21 (+7d) | 2027-01-21 → 2027-01-28 (+7d) |  | -1d → -7d |
| 4 | **Architictural work** |  | 2027-01-13 → 2027-01-20 (+7d) |  |  |
| CO-SU-FE-N-AR-100 | Install Brick Work For Northern Fence |  | 2026-10-18 → 2026-10-25 (+7d) | 23% → 40% | -42d → -48d |
| CO-SU-FE-N-AR-110 | External plastering to walls and columns | 2026-12-07 → 2026-12-14 (+7d) | 2026-12-14 → 2026-12-21 (+7d) |  | -42d → -48d |
| CO-SU-FE-N-AR-120 | Install 50mm thick random cut stone cladding | 2026-12-15 → 2026-12-22 (+7d) | 2026-12-22 → 2026-12-29 (+7d) |  | -42d → -48d |
| CO-SU-FE-N-AR-130 | Install 2 coats of weatherproof paint at walls | 2026-12-23 → 2026-12-30 (+7d) | 2026-12-29 → 2027-01-05 (+7d) |  | -42d → -48d |
| CO-SU-FE-N-AR-140 | Install Stone coping 500mm,525mm | 2026-12-30 → 2027-01-06 (+7d) | 2027-01-03 → 2027-01-10 (+7d) |  | -42d → -48d |
| CO-SU-FE-N-AR-150 | Install MODON Signage | 2027-01-06 → 2027-01-13 (+7d) | 2027-01-13 → 2027-01-20 (+7d) |  | 2d → -4d |
| 2 | **Western Fence P1 ( W01:W06 )** |  | 2027-03-22 → 2027-03-29 (+7d) |  |  |
| 1 | **Civil Work** |  | 2026-11-21 → 2026-11-28 (+7d) |  |  |
| CO-SU-FE-WP1-CI-160 | Pouring for Plain Concrete Northern Fence |  | 2026-10-11 → 2026-10-18 (+7d) |  | -9d → -15d |
| CO-SU-FE-WP1-CI-170 | Pouring R.C Footing For Northern Fence |  | 2026-10-22 → 2026-10-29 (+7d) |  | -16d → -22d |
| CO-SU-FE-WP1-CI-180 | Pouring R.C Columns For Northern Fence |  | 2026-11-01 → 2026-11-08 (+7d) |  | -16d → -22d |
| CO-SU-FE-WP1-CI-190 | Pouring Beams For Northern Fence | 2026-11-02 → 2026-10-05 A (-28d) | 2026-11-21 → 2026-11-28 (+7d) | 0% → 20% | 2d → -4d |
| 5 | **Finishing Work** |  | 2027-03-22 → 2027-03-29 (+7d) |  |  |
| 3 | **Electrical Work** | 2026-11-02 → 2026-11-09 (+7d) | 2027-03-22 → 2027-03-29 (+7d) |  |  |
| CO-SU-FE-WP1-EL-260 | Trench excavation to receive 2 nos 50mm diameter PVC Conduit | 2026-11-02 → 2026-11-09 (+7d) | 2026-11-17 → 2026-11-24 (+7d) |  | -16d → -22d |
| CO-SU-FE-WP1-EL-320 | Trench excavation to receive 3 nos 50mm diameter PVC Conduit | 2026-11-02 → 2026-11-09 (+7d) | 2026-11-17 → 2026-11-24 (+7d) |  | -16d → -22d |
| CO-SU-FE-WP1-EL-300 | Fixing of Control cable,CAT6A cable | 2026-11-18 → 2026-11-25 (+7d) | 2026-12-03 → 2026-12-10 (+7d) |  | -16d → -22d |
| CO-SU-FE-WP1-EL-330 | Hot dipped galvanized cable conduits for CAT6A cable and Control Cables embedded to wall | 2026-11-18 → 2026-11-25 (+7d) | 2026-12-03 → 2026-12-10 (+7d) |  | -16d → -22d |
| CO-SU-FE-WP1-EL-310 | Install 800mm x 800mm x 800mm height concrete handhole | 2026-12-16 → 2026-12-23 (+7d) | 2026-12-31 → 2027-01-07 (+7d) |  | -40d → -46d |
| CO-SU-FE-WP1-EL-280 | Fixing Earthing Work (Earth Pit,Grounding rod,Tinned Copper wire) | 2027-01-04 → 2027-01-11 (+7d) | 2027-01-16 → 2027-01-23 (+7d) |  | -42d → -48d |
| CO-SU-FE-WP1-EL-340 | Field Equipment Cabinet enclosed outdoor complete with precast concrete footing, | 2027-01-17 → 2027-01-24 (+7d) | 2027-01-26 → 2027-02-02 (+7d) |  | -42d → -48d |
| CO-SU-FE-WP1-EL-350 | Fence Lightining 400V, 3PH, 60Hz lighting control panelï¿½ (LCP-02) | 2027-01-17 → 2027-01-24 (+7d) | 2027-01-26 → 2027-02-02 (+7d) |  | -42d → -48d |
| CO-SU-FE-WP1-EL-360 | Install of direct buried armored cable 4C-16mm2 ,10mm2 | 2027-01-27 → 2027-02-03 (+7d) | 2027-02-04 → 2027-02-14 (+10d) |  | -41d → -47d |
| CO-SU-FE-WP1-EL-370 | Install 16mm2,10mm2 CU/PVC wire | 2027-01-27 → 2027-02-03 (+7d) | 2027-02-04 → 2027-02-14 (+10d) |  | -41d → -47d |
| CO-SU-FE-WP1-EL-390 | FEC-CCTV ( 4C-16mm2 CU/XLPE/PVC direct buried armored cable,16mm2 CU/PVC wire | 2027-01-27 → 2027-02-03 (+7d) | 2027-02-06 → 2027-02-15 (+9d) |  | -42d → -48d |
| CO-SU-FE-WP1-EL-250 | Junction Box for lighting fixture | 2027-02-06 → 2027-02-14 (+8d) | 2027-02-21 → 2027-03-02 (+9d) |  | -38d → -44d |
| CO-SU-FE-WP1-EL-290 | IR Intrusion Detection System Quad Beams | 2027-03-14 → 2027-03-21 (+7d) | 2027-03-17 → 2027-03-24 (+7d) |  | -42d → -48d |
| CO-SU-FE-WP1-EL-380 | Install of 38W, 230V, 1PH, 60Hz fence, led linear uplight lighting, IP66 | 2027-03-14 → 2027-03-21 (+7d) | 2027-03-17 → 2027-03-24 (+7d) |  | -39d → -45d |
| CO-SU-FE-WP1-EL-270 | Install, fixings, testing and commissioning 80W LED | 2027-03-18 → 2027-03-25 (+7d) | 2027-03-22 → 2027-03-29 (+7d) |  | -39d → -45d |
| 4 | **Architictural work** |  | 2027-03-22 → 2027-03-29 (+7d) |  |  |
| CO-SU-FE-WP1-AR-160 | Install Brick Work For Northern Fence |  | 2026-11-01 → 2026-11-08 (+7d) | 23% → 40% | -16d → -22d |
| CO-SU-FE-WP1-AR-170 | External plastering to walls and columns | 2027-02-07 → 2027-02-15 (+8d) | 2027-02-15 → 2027-02-24 (+9d) |  | -42d → -48d |
| CO-SU-FE-WP1-AR-180 | Install 50mm thick random cut stone cladding | 2027-02-15 → 2027-02-24 (+9d) | 2027-02-22 → 2027-03-03 (+9d) |  | -42d → -48d |
| CO-SU-FE-WP1-AR-190 | Install 2 coats of weatherproof paint at walls | 2027-02-23 → 2027-03-04 (+9d) | 2027-03-03 → 2027-03-15 (+12d) |  | -42d → -48d |
| CO-SU-FE-WP1-AR-200 | Install Stone coping 500mm,525mm | 2027-03-04 → 2027-03-16 (+12d) | 2027-03-13 → 2027-03-20 (+7d) |  | -42d → -48d |
| CO-SU-FE-WP1-AR-210 | Install MODON Signage | 2027-03-14 → 2027-03-21 (+7d) | 2027-03-22 → 2027-03-29 (+7d) |  | -39d → -45d |
| 3 | **Western Fence P2 ( W07:W12 )** |  | 2027-04-03 → 2027-04-10 (+7d) |  |  |
| 1 | **Civil Work** |  | 2026-11-29 → 2026-12-06 (+7d) |  |  |
| CO-SU-FE-WP2-CI-210 | Pouring for Plain Concrete Northern Fence |  | 2026-10-19 → 2026-10-26 (+7d) |  | 2d → -4d |
| CO-SU-FE-WP2-CI-220 | Pouring R.C Footing For Northern Fence |  | 2026-10-21 → 2026-10-28 (+7d) |  | 2d → -4d |
| CO-SU-FE-WP2-CI-230 | Pouring R.C Columns For Northern Fence |  | 2026-10-24 → 2026-10-31 (+7d) |  | 2d → -4d |
| CO-SU-FE-WP2-CI-240 | Pouring Beams For Northern Fence | 2026-11-22 → 2026-10-11 A (-42d) | 2026-11-29 → 2026-12-06 (+7d) | 0% → 20% | 2d → -4d |
| 5 | **Finishing Work** |  | 2027-04-03 → 2027-04-10 (+7d) |  |  |
| 3 | **Electrical Work** | 2026-10-25 → 2026-11-01 (+7d) | 2027-04-03 → 2027-04-10 (+7d) |  |  |
| CO-SU-FE-WP2-EL-410 | Trench excavation to receive 2 nos 50mm diameter PVC Conduit | 2026-10-25 → 2026-11-01 (+7d) | 2026-10-28 → 2026-11-04 (+7d) |  | 2d → -4d |
| CO-SU-FE-WP2-EL-470 | Trench excavation to receive 3 nos 50mm diameter PVC Conduit | 2026-10-25 → 2026-11-01 (+7d) | 2026-10-31 → 2026-11-07 (+7d) |  | 2d → -4d |
| CO-SU-FE-WP2-EL-450 | Fixing of Control cable,CAT6A cable | 2026-11-01 → 2026-11-08 (+7d) | 2026-11-08 → 2026-11-15 (+7d) |  | 2d → -4d |
| CO-SU-FE-WP2-EL-460 | Install 800mm x 800mm x 800mm height concrete handhole | 2026-11-01 → 2026-11-08 (+7d) | 2026-11-08 → 2026-11-15 (+7d) |  | 2.2d → -3.8d |
| CO-SU-FE-WP2-EL-480 | Hot dipped galvanized cable conduits for CAT6A cable and Control Cables embedded to wall | 2026-11-01 → 2026-11-08 (+7d) | 2026-11-07 → 2026-11-14 (+7d) |  | 3d → -3d |
| CO-SU-FE-WP2-EL-430 | Fixing Earthing Work (Earth Pit,Grounding rod,Tinned Copper wire) | 2026-11-09 → 2026-11-16 (+7d) | 2026-11-15 → 2026-11-22 (+7d) |  | 2d → -4d |
| CO-SU-FE-WP2-EL-490 | Field Equipment Cabinet enclosed outdoor complete with precast concrete footing, | 2026-11-16 → 2026-11-23 (+7d) | 2026-11-19 → 2026-11-26 (+7d) |  | 2d → -4d |
| CO-SU-FE-WP2-EL-510 | Install of direct buried armored cable 4C-16mm2 ,10mm2 | 2026-11-21 → 2026-11-28 (+7d) | 2026-11-29 → 2026-12-06 (+7d) |  | 2.5d → -3.5d |
| CO-SU-FE-WP2-EL-520 | Install 16mm2,10mm2 CU/PVC wire | 2026-11-21 → 2026-11-28 (+7d) | 2026-11-29 → 2026-12-06 (+7d) |  | 2.5d → -3.5d |
| CO-SU-FE-WP2-EL-540 | FEC-CCTV ( 4C-16mm2 CU/XLPE/PVC direct buried armored cable,16mm2 CU/PVC wire | 2026-11-21 → 2026-11-28 (+7d) | 2026-11-29 → 2026-12-06 (+7d) |  | 2d → -4d |
| CO-SU-FE-WP2-EL-400 | Junction Box for lighting fixture | 2026-11-29 → 2026-12-06 (+7d) | 2026-12-02 → 2026-12-09 (+7d) |  | 16.5d → 10.5d |
| CO-SU-FE-WP2-EL-440 | IR Intrusion Detection System Quad Beams | 2027-03-18 → 2027-03-25 (+7d) | 2027-03-25 → 2027-04-01 (+7d) |  | -42d → -48d |

| ID | Task | Start | Finish | Complete | Total float |
| --- | --- | --- | --- | --- | --- |
| CO-SU-FE-WP2-EL-530 | Install of 38W, 230V, 1PH, 60Hz fence, led linear uplight lighting, IP66 | 2027-03-18 → 2027-03-25 (+7d) | 2027-03-25 → 2027-04-01 (+7d) |  | -42d → -48d |
| CO-SU-FE-WP2-EL-420 | Install, fixings, testing and commissioning 80W LED | 2027-03-27 → 2027-04-03 (+7d) | 2027-04-03 → 2027-04-10 (+7d) |  | -42d → -48d |
| 4 | **Architictural work** |  | 2027-03-31 → 2027-04-07 (+7d) |  |  |
| CO-SU-FE-WP2-AR-220 | Install Brick Work For Northern Fence |  | 2026-10-24 → 2026-10-31 (+7d) | 23% → 40% | 2d → -4d |
| CO-SU-FE-WP2-AR-230 | External plastering to walls and columns | 2026-11-30 → 2026-12-07 (+7d) | 2026-12-08 → 2026-12-15 (+7d) |  | 2d → -4d |
| CO-SU-FE-WP2-AR-240 | Install 50mm thick random cut stone cladding | 2026-12-09 → 2026-12-16 (+7d) | 2026-12-17 → 2026-12-24 (+7d) |  | 2d → -4d |
| CO-SU-FE-WP2-AR-250 | Install 2 coats of weatherproof paint at walls | 2026-12-19 → 2026-12-26 (+7d) | 2026-12-27 → 2027-01-03 (+7d) |  | 2d → -4d |
| CO-SU-FE-WP2-AR-260 | Install Stone coping 500mm,525mm | 2026-12-28 → 2027-01-04 (+7d) | 2027-01-05 → 2027-01-12 (+7d) |  | 2d → -4d |
| CO-SU-FE-WP2-AR-270 | Install MODON Signage | 2027-03-23 → 2027-03-30 (+7d) | 2027-03-31 → 2027-04-07 (+7d) |  | -39d → -45d |
| 4 | **Southern Fence S01:S05** |  | 2027-04-11 → 2027-04-18 (+7d) |  |  |
| 1 | **Civil Work** |  | 2026-11-05 → 2026-11-12 (+7d) |  |  |
| CO-SU-FE-S-CI-260 | Pouring for Plain Concrete Northern Fence |  | 2026-10-08 → 2026-10-15 (+7d) |  | 11d → 5d |
| CO-SU-FE-S-CI-270 | Pouring R.C Footing For Northern Fence |  | 2026-10-14 → 2026-10-21 (+7d) |  | 11d → 5d |
| CO-SU-FE-S-CI-280 | Pouring R.C Columns For Northern Fence | 2026-10-15 → 2026-10-05 A (-10d) | 2026-10-26 → 2026-11-02 (+7d) | 0% → 20% | 11d → 5d |
| CO-SU-FE-S-CI-290 | Pouring Beams For Northern Fence | 2026-10-27 → 2026-10-08 A (-19d) | 2026-11-05 → 2026-11-12 (+7d) | 0% → 20% | 20d → 14d |
| 5 | **Finishing Work** |  | 2027-04-11 → 2027-04-18 (+7d) |  |  |
| 3 | **Electrical Work** | 2026-10-20 → 2026-10-27 (+7d) | 2027-04-11 → 2027-04-18 (+7d) |  |  |
| CO-SU-FE-S-EL-560 | Trench excavation to receive 2 nos 50mm diameter PVC Conduit | 2026-10-20 → 2026-10-27 (+7d) | 2026-11-05 → 2026-11-12 (+7d) |  | 11d → 5d |
| CO-SU-FE-S-EL-620 | Trench excavation to receive 3 nos 50mm diameter PVC Conduit | 2026-10-20 → 2026-10-27 (+7d) | 2026-11-05 → 2026-11-12 (+7d) |  | 11d → 5d |
| CO-SU-FE-S-EL-600 | Fixing of Control cable,CAT6A cable | 2026-11-07 → 2026-11-14 (+7d) | 2026-11-23 → 2026-11-30 (+7d) |  | 11d → 5d |
| CO-SU-FE-S-EL-610 | Install 800mm x 800mm x 800mm height concrete handhole | 2026-11-07 → 2026-11-14 (+7d) | 2026-11-23 → 2026-11-30 (+7d) |  | 11d → 5d |
| CO-SU-FE-S-EL-630 | Hot dipped galvanized cable conduits for CAT6A cable and Control Cables embedded to wall | 2026-11-07 → 2026-11-14 (+7d) | 2026-11-23 → 2026-11-30 (+7d) |  | 11d → 5d |
| CO-SU-FE-S-EL-580 | Fixing Earthing Work (Earth Pit,Grounding rod,Tinned Copper wire) | 2026-11-24 → 2026-12-01 (+7d) | 2026-11-30 → 2026-12-07 (+7d) |  | 11d → 5d |
| CO-SU-FE-S-EL-640 | Field Equipment Cabinet enclosed outdoor complete with precast concrete footing, | 2026-11-26 → 2026-12-03 (+7d) | 2026-11-30 → 2026-12-07 (+7d) |  | 11d → 5d |
| CO-SU-FE-S-EL-650 | Fence Lightining 400V, 3PH, 60Hz lighting control panelï¿½ (LCP-02) | 2026-11-26 → 2026-12-03 (+7d) | 2026-11-30 → 2026-12-07 (+7d) |  | 11d → 5d |
| CO-SU-FE-S-EL-660 | Install of direct buried armored cable 4C-16mm2 ,10mm2 | 2026-11-26 → 2026-12-03 (+7d) | 2026-12-07 → 2026-12-14 (+7d) |  | 12d → 6d |
| CO-SU-FE-S-EL-670 | Install 16mm2,10mm2 CU/PVC wire | 2026-12-01 → 2026-12-08 (+7d) | 2026-12-07 → 2026-12-14 (+7d) |  | 12d → 6d |
| CO-SU-FE-S-EL-690 | FEC-CCTV ( 4C-16mm2 CU/XLPE/PVC direct buried armored cable,16mm2 CU/PVC wire | 2026-12-01 → 2026-12-08 (+7d) | 2026-12-08 → 2026-12-15 (+7d) |  | 11d → 5d |
| CO-SU-FE-S-EL-550 | Junction Box for lighting fixture | 2026-12-08 → 2026-12-15 (+7d) | 2026-12-15 → 2026-12-22 (+7d) |  | 12d → 6d |
| CO-SU-FE-S-EL-590 | IR Intrusion Detection System Quad Beams | 2027-03-06 → 2027-03-17 (+11d) | 2027-03-17 → 2027-03-24 (+7d) |  | -28d → -34d |
| CO-SU-FE-S-EL-680 | Install of 38W, 230V, 1PH, 60Hz fence, led linear uplight lighting, IP66 | 2027-03-27 → 2027-04-03 (+7d) | 2027-04-03 → 2027-04-10 (+7d) |  | -42d → -48d |
| CO-SU-FE-S-EL-570 | Install, fixings, testing and commissioning 80W LED | 2027-04-04 → 2027-04-11 (+7d) | 2027-04-11 → 2027-04-18 (+7d) |  | -42d → -48d |
| 4 | **Architictural work** |  | 2027-04-10 → 2027-04-17 (+7d) |  |  |
| CO-SU-FE-S-AR-280 | Install Brick Work For Northern Fence |  | 2026-10-26 → 2026-11-02 (+7d) | 23% → 40% | 11d → 5d |
| CO-SU-FE-S-AR-290 | External plastering to walls and columns | 2026-12-09 → 2026-12-16 (+7d) | 2026-12-15 → 2026-12-22 (+7d) |  | 11d → 5d |
| CO-SU-FE-S-AR-300 | Install 50mm thick random cut stone cladding | 2026-12-16 → 2026-12-23 (+7d) | 2026-12-22 → 2026-12-29 (+7d) |  | 11d → 5d |
| CO-SU-FE-S-AR-310 | Install 2 coats of weatherproof paint at walls | 2027-02-22 → 2027-03-02 (+8d) | 2027-03-06 → 2027-03-16 (+10d) |  | -38d → -44d |
| CO-SU-FE-S-AR-320 | Install Stone coping 500mm,525mm | 2027-03-06 → 2027-03-17 (+11d) | 2027-03-21 → 2027-03-28 (+7d) |  | -38d → -44d |
| CO-SU-FE-S-AR-330 | Install MODON Signage | 2027-04-01 → 2027-04-08 (+7d) | 2027-04-10 → 2027-04-17 (+7d) |  | -39d → -45d |
| 5 | **Eastern Fence P1 ( E01:E06 )** |  | 2027-04-15 → 2027-04-22 (+7d) |  |  |
| 1 | **Civil Work** |  | 2026-11-14 → 2026-11-21 (+7d) |  |  |
| CO-SU-FE-EP1-CI-310 | Pouring for Plain Concrete Northern Fence |  | 2026-10-14 → 2026-10-21 (+7d) |  | 19d → 13d |
| CO-SU-FE-EP1-CI-320 | Pouring R.C Footing For Northern Fence |  | 2026-10-19 → 2026-10-26 (+7d) |  | 19d → 13d |
| CO-SU-FE-EP1-CI-330 | Pouring R.C Columns For Northern Fence | 2026-10-20 → 2026-10-06 A (-14d) | 2026-11-05 → 2026-11-12 (+7d) | 0% → 20% | 19d → 13d |
| CO-SU-FE-EP1-CI-340 | Pouring Beams For Northern Fence | 2026-11-07 → 2026-10-08 A (-30d) | 2026-11-14 → 2026-11-21 (+7d) | 0% → 20% | 20d → 14d |
| 5 | **Finishing Work** |  | 2027-04-15 → 2027-04-22 (+7d) |  |  |
| 3 | **Electrical Work** | 2026-11-07 → 2026-11-14 (+7d) | 2027-04-15 → 2027-04-22 (+7d) |  |  |
| CO-SU-FE-EP1-EL-710 | Trench excavation to receive 2 nos 50mm diameter PVC Conduit | 2026-11-07 → 2026-11-14 (+7d) | 2026-11-10 → 2026-11-17 (+7d) |  | 19d → 13d |
| CO-SU-FE-EP1-EL-770 | Trench excavation to receive 3 nos 50mm diameter PVC Conduit | 2026-11-07 → 2026-11-14 (+7d) | 2026-11-10 → 2026-11-17 (+7d) |  | 19d → 13d |
| CO-SU-FE-EP1-EL-750 | Fixing of Control cable,CAT6A cable | 2026-11-11 → 2026-11-18 (+7d) | 2026-11-15 → 2026-11-22 (+7d) |  | 19d → 13d |
| CO-SU-FE-EP1-EL-760 | Install 800mm x 800mm x 800mm height concrete handhole | 2026-11-11 → 2026-11-18 (+7d) | 2026-11-15 → 2026-11-22 (+7d) |  | 19d → 13d |
| CO-SU-FE-EP1-EL-780 | Hot dipped galvanized cable conduits for CAT6A cable and Control Cables embedded to wall | 2026-11-11 → 2026-11-18 (+7d) | 2026-11-15 → 2026-11-22 (+7d) |  | 19d → 13d |
| CO-SU-FE-EP1-EL-730 | Fixing Earthing Work (Earth Pit,Grounding rod,Tinned Copper wire) | 2026-11-16 → 2026-11-23 (+7d) | 2026-11-22 → 2026-11-29 (+7d) |  | 19d → 13d |
| CO-SU-FE-EP1-EL-790 | Field Equipment Cabinet enclosed outdoor complete with precast concrete footing, | 2026-11-23 → 2026-11-30 (+7d) | 2026-11-26 → 2026-12-03 (+7d) |  | 19d → 13d |
| CO-SU-FE-EP1-EL-800 | Fence Lightining 400V, 3PH, 60Hz lighting control panelï¿½ (LCP-02) | 2026-11-23 → 2026-11-30 (+7d) | 2026-11-26 → 2026-12-03 (+7d) |  | 19d → 13d |
| CO-SU-FE-EP1-EL-810 | Install of direct buried armored cable 4C-16mm2 ,10mm2 | 2026-11-28 → 2026-12-05 (+7d) | 2026-12-01 → 2026-12-08 (+7d) |  | 19d → 13d |
| CO-SU-FE-EP1-EL-820 | Install 16mm2,10mm2 CU/PVC wire | 2026-11-28 → 2026-12-05 (+7d) | 2026-12-01 → 2026-12-08 (+7d) |  | 19d → 13d |
| CO-SU-FE-EP1-EL-840 | FEC-CCTV ( 4C-16mm2 CU/XLPE/PVC direct buried armored cable,16mm2 CU/PVC wire | 2026-11-28 → 2026-12-05 (+7d) | 2026-12-01 → 2026-12-08 (+7d) |  | 19d → 13d |
| CO-SU-FE-EP1-EL-700 | Junction Box for lighting fixture | 2026-12-16 → 2026-12-23 (+7d) | 2026-12-19 → 2026-12-26 (+7d) |  | 12d → 6d |
| CO-SU-FE-EP1-EL-740 | IR Intrusion Detection System Quad Beams | 2027-03-18 → 2027-03-25 (+7d) | 2027-03-22 → 2027-03-29 (+7d) |  | -25d → -31d |
| CO-SU-FE-EP1-EL-830 | Install of 38W, 230V, 1PH, 60Hz fence, led linear uplight lighting, IP66 | 2027-03-18 → 2027-03-25 (+7d) | 2027-03-22 → 2027-03-29 (+7d) |  | -25d → -31d |
| CO-SU-FE-EP1-EL-720 | Install, fixings, testing and commissioning 80W LED | 2027-04-12 → 2027-04-19 (+7d) | 2027-04-15 → 2027-04-22 (+7d) |  | -42d → -48d |
| 4 | **Architictural work** |  | 2027-04-13 → 2027-04-20 (+7d) |  |  |
| CO-SU-FE-EP1-AR-340 | Install Brick Work For Northern Fence |  | 2026-11-05 → 2026-11-12 (+7d) | 23% → 40% | 19d → 13d |
| CO-SU-FE-EP1-AR-350 | External plastering to walls and columns | 2026-12-02 → 2026-12-09 (+7d) | 2026-12-10 → 2026-12-17 (+7d) |  | 19d → 13d |
| CO-SU-FE-EP1-AR-360 | Install 50mm thick random cut stone cladding | 2026-12-12 → 2026-12-19 (+7d) | 2026-12-22 → 2026-12-29 (+7d) |  | 19d → 13d |
| CO-SU-FE-EP1-AR-370 | Install 2 coats of weatherproof paint at walls | 2026-12-23 → 2026-12-30 (+7d) | 2027-01-03 → 2027-01-10 (+7d) |  | 19d → 13d |
| CO-SU-FE-EP1-AR-380 | Install Stone coping 500mm,525mm | 2027-01-04 → 2027-01-11 (+7d) | 2027-01-14 → 2027-01-21 (+7d) |  | 19d → 13d |
| CO-SU-FE-EP1-AR-390 | Install MODON Signage | 2027-04-11 → 2027-04-18 (+7d) | 2027-04-13 → 2027-04-20 (+7d) |  | -39d → -45d |
| 6 | **Eastern Fence P2 ( E07:E13 )** |  | 2027-05-03 → 2027-04-26 (-7d) |  |  |

| ID | Task | Start | Finish | Complete | Total float | Predecessors |
| --- | --- | --- | --- | --- | --- | --- |
| 1 | **Civil Work** |  | 2026-12-13 → 2026-12-20 (+7d) |  |  |  |
| CO-SU-FE-EP2-CI-360 | Pouring for Plain Concrete Northern Fence |  | 2026-11-05 → 2026-11-12 (+7d) |  | 45d → 39d |  |
| CO-SU-FE-EP2-CI-370 | Pouring R.C Footing For Northern Fence |  | 2026-11-05 → 2026-11-12 (+7d) |  | 45d → 39d |  |
| CO-SU-FE-EP2-CI-380 | Pouring R.C Columns For Northern Fence |  | 2026-11-05 → 2026-11-12 (+7d) |  | 45d → 39d |  |
| CO-SU-FE-EP2-CI-390 | Pouring Beams For Northern Fence | 2026-12-02 → 2026-10-01 A (-62d) | 2026-12-13 → 2026-12-20 (+7d) |  | 33d → 27d |  |
| 5 | **Finishing Work** |  | 2027-05-03 → 2027-04-26 (-7d) |  |  |  |
| 3 | **Electrical Work** | 2026-12-02 → 2026-12-09 (+7d) | 2027-05-03 → 2027-04-26 (-7d) |  |  |  |
| CO-SU-FE-EP2-EL-860 | Trench excavation to receive 2 nos 50mm diameter PVC Conduit | 2026-12-02 → 2026-12-09 (+7d) | 2026-12-06 → 2026-12-13 (+7d) |  | 23d → 17d |  |
| CO-SU-FE-EP2-EL-920 | Trench excavation to receive 3 nos 50mm diameter PVC Conduit | 2026-12-02 → 2026-12-09 (+7d) | 2026-12-06 → 2026-12-13 (+7d) |  | 23d → 17d |  |
| CO-SU-FE-EP2-EL-910 | Install 800mm x 800mm x 800mm height concrete handhole | 2026-12-07 → 2026-12-14 (+7d) | 2026-12-09 → 2026-12-16 (+7d) |  | 23d → 17d |  |
| CO-SU-FE-EP2-EL-930 | Hot dipped galvanized cable conduits for CAT6A cable and Control Cables embedded to wall | 2026-12-07 → 2026-12-14 (+7d) | 2026-12-09 → 2026-12-16 (+7d) |  | 23d → 17d |  |
| CO-SU-FE-EP2-EL-900 | Fixing of Control cable,CAT6A cable | 2026-12-20 → 2026-12-27 (+7d) | 2026-12-22 → 2026-12-29 (+7d) |  | 12d → 6d |  |
| CO-SU-FE-EP2-EL-880 | Fixing Earthing Work (Earth Pit,Grounding rod,Tinned Copper wire) | 2026-12-23 → 2026-12-30 (+7d) | 2026-12-26 → 2027-01-02 (+7d) |  | 12d → 6d |  |
| CO-SU-FE-EP2-EL-940 | Field Equipment Cabinet enclosed outdoor complete with precast concrete footing, | 2026-12-27 → 2027-01-03 (+7d) | 2026-12-30 → 2027-01-06 (+7d) |  | 12d → 6d |  |
| CO-SU-FE-EP2-EL-950 | Fence Lightining 400V, 3PH, 60Hz lighting control panelï¿½ (LCP-02) | 2026-12-27 → 2027-01-03 (+7d) | 2026-12-30 → 2027-01-06 (+7d) |  | 12d → 6d |  |
| CO-SU-FE-EP2-EL-960 | Install of direct buried armored cable 4C-16mm2 ,10mm2 | 2026-12-31 → 2027-01-07 (+7d) | 2027-01-03 → 2027-01-10 (+7d) |  | 12d → 6d |  |
| CO-SU-FE-EP2-EL-970 | Install 16mm2,10mm2 CU/PVC wire | 2026-12-31 → 2027-01-07 (+7d) | 2027-01-03 → 2027-01-10 (+7d) |  | 12d → 6d |  |
| CO-SU-FE-EP2-EL-990 | FEC-CCTV ( 4C-16mm2 CU/XLPE/PVC direct buried armored cable,16mm2 CU/PVC wire | 2026-12-31 → 2027-01-07 (+7d) | 2027-01-06 → 2027-01-13 (+7d) |  | 12d → 6d |  |
| CO-SU-FE-EP2-EL-850 | Junction Box for lighting fixture | 2027-01-04 → 2027-01-11 (+7d) | 2027-01-06 → 2027-01-13 (+7d) |  | 12d → 6d |  |
| CO-SU-FE-EP2-EL-890 | IR Intrusion Detection System Quad Beams | 2027-04-26 → 2027-03-30 (-27d) | 2027-04-29 → 2027-04-01 (-28d) |  | -53.5d → -30d |  |
| CO-SU-FE-EP2-EL-980 | Install of 38W, 230V, 1PH, 60Hz fence, led linear uplight lighting, IP66 | 2027-04-26 → 2027-03-30 (-27d) | 2027-04-29 → 2027-04-01 (-28d) |  | -53.5d → -30d |  |
| CO-SU-FE-EP2-EL-870 | Install, fixings, testing and commissioning 80W LED | 2027-04-29 → 2027-04-24 (-5d) | 2027-05-03 → 2027-04-26 (-7d) |  | -53.5d → -48d |  |
| 4 | **Architictural work** |  | 2027-04-28 → 2027-04-22 (-6d) |  |  |  |
| CO-SU-FE-EP2-AR-400 | Install Brick Work For Northern Fence |  | 2026-12-01 → 2026-12-08 (+7d) | 23% → 40% | 23d → 17d |  |
| CO-SU-FE-EP2-AR-410 | External plastering to walls and columns | 2027-01-07 → 2027-01-14 (+7d) | 2027-01-12 → 2027-01-19 (+7d) |  | 12d → 6d |  |
| CO-SU-FE-EP2-AR-420 | Install 50mm thick random cut stone cladding | 2027-01-13 → 2027-01-20 (+7d) | 2027-01-18 → 2027-01-25 (+7d) |  | 12d → 6d |  |
| CO-SU-FE-EP2-AR-430 | Install 2 coats of weatherproof paint at walls | 2027-01-19 → 2027-01-26 (+7d) | 2027-01-24 → 2027-01-31 (+7d) |  | 12d → 6d |  |
| CO-SU-FE-EP2-AR-440 | Install Stone coping 500mm,525mm | 2027-04-21 → 2027-02-01 (-79d) | 2027-04-26 → 2027-02-04 (-81d) |  | -53.5d → 6d | CO-SU-FE-EP2-AR-430, MS-CF-SW → CO-SU-FE-EP2-AR-430 |
| CO-SU-FE-EP2-AR-450 | Install MODON Signage | 2027-04-26 → 2027-04-21 (-5d) | 2027-04-28 → 2027-04-22 (-6d) |  | -49.5d → -45d |  |
| TC | **Testing and Comissioning** | 2026-10-24 → 2026-10-13 (-11d) | 2027-06-10 → 2027-06-02 (-8d) |  |  |  |
| INF | **Infrastructure Networks** | 2027-05-01 → 2027-04-18 (-13d) | 2027-06-10 → 2027-06-02 (-8d) |  |  |  |
| PW1 | **Irrigation Network** | 2027-05-23 → 2027-04-26 (-27d) | 2027-05-27 → 2027-05-02 (-25d) |  |  |  |
| T/C-IR | Testing and Commissioning of Irrigation Network | 2027-05-23 → 2027-04-26 (-27d) | 2027-05-27 → 2027-05-02 (-25d) |  | -83d → -64.5d | T/C-PW SS, CO-IR-TF-160, CO-TSE-TF-170, CO-LS-PL-180, T/C-SW → CO-IR-TF-160, CO-TSE-TF-170, CO-LS-PL-180 |
| PW11 | **TSE Network** | 2027-05-11 → 2027-04-26 (-15d) | 2027-06-03 → 2027-05-13 (-21d) |  |  |  |
| T/C-TSE-10 | Testing and Commissioning of TSE Network | 2027-05-11 → 2027-04-26 (-15d) | 2027-06-03 → 2027-05-13 (-21d) |  | -80.2d → -67.5d | CO-TSE-TF-170, T/C-SD, CO-UB-IRT-250 → CO-TSE-TF-170, CO-UB-IRT-250 |
| PW | **Potable Water Network** | 2027-05-23 → 2027-05-08 (-15d) | 2027-05-29 → 2027-05-20 (-9d) |  |  |  |
| T/C-PW | Testing and Commissioning of Potable Water Network | 2027-05-23 → 2027-05-08 (-15d) | 2027-05-29 → 2027-05-20 (-9d) |  | -83d → -75.5d |  |
| SW | **Sewage Network** | 2027-05-11 → 2027-04-21 (-20d) | 2027-05-20 → 2027-04-25 (-25d) |  |  |  |
| T/C-SW | Testing and Commissioning of Sewage Network | 2027-05-11 → 2027-04-21 (-20d) | 2027-05-20 → 2027-04-25 (-25d) |  | -89.2d → -60.5d | T/C-SD, CO-SW-TF-100, CO-SW-TF-210, MS-CF-SW, CO-SW-TF-130, CO-SW-TF-110 → CO-SW-TF-100, CO-SW-TF-210, MS-CF-SW, CO-SW-TF-130, CO-SW-TF-110 |
| SD | **Storm Drainage Network** | 2027-05-01 → 2027-04-18 (-13d) | 2027-05-11 → 2027-04-27 (-14d) |  |  |  |
| T/C-SD | Testing and Commissioning of Storm Drainage Network | 2027-05-01 → 2027-04-18 (-13d) | 2027-05-11 → 2027-04-27 (-14d) |  | -89.2d → -56d |  |
| SL | **Street Lighting Network** | 2027-05-29 → 2027-05-08 (-21d) | 2027-06-03 → 2027-05-13 (-21d) |  |  |  |
| T/C-SL | Testing and Commissioning of Street Lighting Network | 2027-05-29 → 2027-05-08 (-21d) | 2027-06-03 → 2027-05-13 (-21d) |  | -83d → -70d | T/C-IR, CO-SL-TF-220, CO-SL-TF-230, CO-SL-TF-200, CO-SL-TF-380, CO-SL-LP-330, MS-CF-SL, T/C-DPO, T/C-SW → CO-SL-TF-220, CO-SL-TF-230, CO-SL-TF-200, CO-SL-TF-380, CO-SL-LP-330, MS-CF-SL |
| TE | **Telecom Network** | 2027-05-20 → 2027-05-01 (-19d) | 2027-05-24 → 2027-05-03 (-21d) |  |  |  |
| T/C-TE | Testing and Commissioning of Telecom Network | 2027-05-20 → 2027-05-01 (-19d) | 2027-05-24 → 2027-05-03 (-21d) |  | -89.2d → -66d | CO-TE-CTV-TF-110, CO-TE-CTV-TF-120, CO-TE-CTV-TF-130, CO-TE-CTV-TF-140, MS-CF-TE, CO-SL-ES-230, CO-TE-DW-130, T/C-SD, T/C-SW → CO-TE-CTV-TF-110, CO-TE-CTV-TF-120, CO-TE-CTV-TF-130, CO-TE-CTV-TF-140, MS-CF-TE, CO-SL-ES-230, CO-TE-DW-130 |
| MV | **Medium Voltage Network** | 2027-05-20 → 2027-04-21 (-29d) | 2027-06-06 → 2027-05-06 (-31d) |  |  |  |
| T/C-MV | Testing and Commissioning of Medium Voltage Network | 2027-05-20 → 2027-04-21 (-29d) | 2027-06-06 → 2027-05-06 (-31d) |  | -89.2d → -69d | T/C-TE SS, CO-MV-TF-220, MS-CF-MV → CO-MV-TF-220, MS-CF-MV |
| RD | **Road Works** | 2027-06-07 → 2027-05-29 (-9d) | 2027-06-10 → 2027-06-02 (-8d) |  |  |  |
| T/C-RD | Testing and Commissioning of Road Works | 2027-06-07 → 2027-05-29 (-9d) | 2027-06-10 → 2027-06-02 (-8d) |  | -85d → -77.5d |  |
| 1 | **Utility Buildings** | 2026-10-24 → 2026-10-13 (-11d) | 2027-06-03 → 2027-05-29 (-5d) |  |  |  |
| T/C-DPO | Testing and Commissioning of Storm Drainage Ponds | 2026-10-24 → 2026-10-13 (-11d) | 2026-10-24 → 2026-10-13 (-11d) |  | 88d → 97d |  |
| T/C-SPS | Testing and Commissioning of Sewage Pump Stations& soft scape and planting work | 2027-06-03 → 2027-05-06 (-28d) | 2027-06-03 → 2027-05-06 (-28d) |  | -76.2d → -57d | T/C-TSE-10, CO-UB-PS-390, CO-UB-PS-380, CO-UB-PS-360, CO-UB-PS-350, CO-UB-PS-340, CO-UB-PS-370, CO-UB-PS-330, CO-UB-PS-310, CO-UB-PS-290, CO-UB-PS-300, CO-UB-PS-320, CO-UB-PS-280, CO-UB-PS-270, CO-UB-PS-260, CO-UB-PS-250, CO-UB-PS-240 → CO-UB-PS-390, CO-UB-PS-380, CO-UB-PS-360, CO-UB-PS-350, CO-UB-PS-340, CO-UB-PS-370, CO-UB-PS-330, CO-UB-PS-310, CO-UB-PS-290, CO-UB-PS-300, CO-UB-PS-320, CO-UB-PS-280, CO-UB-PS-270, CO-UB-PS-260, CO-UB-PS-250, CO-UB-PS-240 |
| T/C-CTV | Testing and Commissioning of Guard Room and Fence | 2027-05-22 → 2027-05-29 (+7d) | 2027-05-22 → 2027-05-29 (+7d) |  | -64d → -70d |  |
| 1 | **Handing over and close out** | 2026-10-24 → 2026-10-13 (-11d) | 2027-06-20 → 2027-06-06 (-14d) |  |  |  |
| 2 | **As-Built** | 2026-10-24 → 2026-10-13 (-11d) | 2027-06-20 → 2027-06-06 (-14d) |  |  |  |
| HO-130 | Submission As-Built Drawing For Pond | 2026-10-24 → 2026-10-13 (-11d) | 2026-11-08 → 2026-10-28 (-11d) |  | 88d → 97d |  |
| HO-100 | Submission As-Built Drawing For Sewage Network | 2027-05-20 → 2027-04-25 (-25d) | 2027-06-06 → 2027-05-11 (-26d) |  | -77.2d → -60.5d |  |
| HO-180 | Submission As-Built Drawing For Irrigation Network | 2027-05-29 → 2027-05-02 (-27d) | 2027-06-10 → 2027-05-22 (-19d) |  | -82d → -64.5d |  |
| HO-160 | Submission As-Built Drawing For Telecom Network | 2027-05-24 → 2027-05-04 (-20d) | 2027-06-07 → 2027-05-23 (-15d) |  | -78.2d → -66d |  |
| HO-210 | Submission As-Built Drawing For Pump station | 2027-06-03 → 2027-05-06 (-28d) | 2027-06-05 → 2027-05-06 (-30d) |  | -76.2d → -57d |  |
| HO-170 | Submission As-Built Drawing For Medium Voltage Network | 2027-06-06 → 2027-05-08 (-29d) | 2027-06-20 → 2027-05-26 (-25d) |  | -89.2d → -69d |  |
| HO-150 | Submission As-Built Drawing For Street Lighting Network | 2027-06-05 → 2027-05-20 (-16d) | 2027-06-12 → 2027-05-27 (-16d) |  | -83d → -70d |  |
| HO-190 | As-Built Drawing For Potable Water Network | 2027-05-30 → 2027-05-20 (-10d) | 2027-06-12 → 2027-06-03 (-9d) |  | -83d → -75.5d |  |
| HO-140 | Submission As-Built Drawing For Roads Network | 2027-06-12 → 2027-06-02 (-10d) | 2027-06-14 → 2027-06-06 (-8d) |  | -85d → -77.5d |  |
| 1 | **De-Mobilization Works** | 2027-06-07 → 2027-05-29 (-9d) | 2027-06-12 → 2027-06-03 (-9d) |  |  |  |
| HO-230 | Remove Temporary Car Shades | 2027-06-07 → 2027-05-29 (-9d) | 2027-06-12 → 2027-06-03 (-9d) |  | -83d → -75.5d |  |
| 3 | **Handing Over** | 2027-06-12 → 2027-06-02 (-10d) | 2027-06-14 → 2027-06-06 (-8d) |  |  |  |
| HO-250 | Review B.O.Q Qty. to ensure compliance with the actual status | 2027-06-12 → 2027-06-02 (-10d) | 2027-06-14 → 2027-06-06 (-8d) |  | -85d → -77.5d |  |
