# Development of the Technology City in Dammam-Project UPDATE 13-10-2026

How a schedule from Primavera P6 changed from version to version. A marks actual dates.

## Version 4 (data date 2026-10-13, saved 2026-10-13, file MOD3-3147-BL0-R0-6UPDATE 13-10-2026.xer)

Note of the change: Renumber project folders 01–23 in order (after removing projects 12 and 25)

| ID | WBS | Task | Duration | Start | Finish | Predecessors | Complete | Total float |
| --- | --- | --- | --- | --- | --- | --- | --- | --- |
|  | MS | **Key Milestones** |  | 2025-12-23 | 2027-06-06 |  |  |  |
|  | CM | **Contractual Milestones** |  | 2025-12-23 | 2027-06-06 |  |  |  |
| MS-CS-PS |  | Project Commencement Date ( Site Handover ) | 0d | 2025-12-23 A | 2025-12-23 A |  | 100% |  |
| MS-CF-EBL |  | Completion of Execution Plan and Baseline Schedule | 0d | 2026-01-18 A | 2026-01-18 A | PRE-CON-MDC-20 FF, PRE-CON-MDC-10 FF, PRE-CON-MDC-20 | 100% |  |
| MS-CF-MOB |  | Completion of Mobilization and Site Preperation Works | 0d | 2026-01-18 A | 2026-01-18 A | MOB-30 FF, MOB-20 FF, MOB-80 FF, MOB-40 FF, MOB-50 FF, MOB-60 FF, MOB-10 FF, MOB-70 FF, PRE-CON-MDC-10 FF, PRE-CON-MDC-20 FF, PRE-CON-MDC-30 FF, PRE-CON-MDC-40 FF, PRE-CON-MDC-50 FF, PRE-CON-MDC-60 FF, PRE-CON-MDC-70 FF, PRE-CON-MDC-80 FF, MOB-30 | 100% |  |
| MS-CF-ENG |  | Completion of Submitting and Approval of Shopdrwing and Material | 0d | 2026-08-21 A | 2026-08-21 A | PRE-CON-MDC-30 FF, PRE-CON-MDC-40 FF, PRE-CON-MDC-50 FF, PRE-CON-MDC-60 FF, PRE-CON-MDC-70 FF, PRE-CON-MDC-80 FF, ENG-SH-RD-A-110 FF, ENG-SH-HS-A-110 FF, ENG-SH-TSB-A-100 FF, ENG-SH-MRK-A-110 FF, ENG-SH-SW-ML-A-110 FF, ENG-SH-SD-ML-A-110 FF, ENG-SH-SD-CB-A-110 FF, ENG-SH-PW-ML-A-110 FF, ENG-SH-PW-FH-A-110 FF, ENG-SH-IR-ML-A-110 FF, ENG-SH-TSE-ML-A-120 FF, ENG-SH-MV-A-110 FF, ENG-SH-LV-A-120 FF, ENG-SH-SL-A-110 FF, ENG-SH-MSN-A-120 FF, ENG-SH-TE-A-110 FF, ENG-SH-CTV-A-110 FF, ENG-SH-SPS-A-160 FF, ENG-SH-LS-A-170 FF, ENG-SH-DPO-A-120 FF, ENG-SH-ST-A-180 FF, ENG-SH-GR-A-190 FF, ENG-SH-GR-A-200_R FF, ENG-MT-RD-A-100 FF, ENG-MT-RD-A-110 FF, ENG-MT-RD-A-120 FF, ENG-MT-RD-A-130 FF, ENG-MT-RD-A-140 FF, ENG-MT-RD-A-150 FF, ENG-MT-TS-A-100 FF, ENG-MT-TS-A-110 FF, ENG-MT-IR-ML-A-140 FF, ENG-MT-IR-ML-A-150 FF, ENG-MT-SW-ML-A-100 FF, ENG-MT-SW-ML-A-110 FF, ENG-MT-SW-TF-A-100 FF, ENG-MT-SD-ML-A-100 FF, ENG-MT-SD-ML-A-110 FF, ENG-MT-SD-CB-A-100 FF, ENG-MT-SD-CB-A-110 FF, ENG-MT-SD-TF-A-100 FF, ENG-MT-SD-TF-A-110 FF, ENG-MT-PW-ML-A-100 FF, ENG-MT-PW-ML-A-110 FF, ENG-MT-PW-FH-A-100 FF, ENG-MT-PW-TF-A-100 FF, ENG-MT-IR-ML-A-100 FF, ENG-MT-IR-ML-A-110 FF, ENG-MT-IR-ML-A-120 FF, ENG-MT-IR-ML-A-130 FF, ENG-MT-MV-ML-A-100 FF, ENG-MT-MV-TF-A-100 FF, ENG-MT-SL-ML-A-100 FF, ENG-MT-SL-A-100 FF, ENG-MT-SL-A-110 FF, ENG-MT-SL-A-120 FF, ENG-MT-SL-DB-A-100 FF, ENG-MT-SL-TF-A-100 FF, ENG-MT-SL-ES-A-100 FF, ENG-MT-TE-A-100 FF, ENG-MT-TE-A-110 FF, ENG-MT-CTV-A-100 FF, ENG-MT-PS-CV-A-150 FF, ENG-MT-SLS-CV-A-110 FF, ENG-MT-DPO-CV-A-110 FF, ENG-MT-TSE-CV-A-140 FF, ENG-MT-GR-CV-A-130 FF, ENG-MT-FE-CV-A-120 FF, ENG-MT-PL-CV-A-160 FF, ENG-MT-CTV-A-110 FF, ENG-MT-SPS-MC-A-110 FF, ENG-MT-TSE-MC-A-120 FF, PRE-CON-MDC-30 | 100% |  |
| MS-CF-SD |  | Completion of Construction Works for Storm Drainage Network | 0d | 2027-04-10 | 2027-04-10 | CO-SD-ML-TF-100 FF, CO-SD-MH-TF-120 FF, CO-SD-CB-TF-160 FF, CO-SD-CB-TF-130 FF, CO-SD-CB-TF-110 FF, CO-SD-PO-110-P2 FF, CO-SD-PO-110-P1 FF, CO-SD-ML-TF-100 |  | -50d |
| MS-CF-IR |  | Completion of Construction Works for Irrigation Network | 0d | 2027-04-12 | 2027-04-12 | CO-IR-TF-160 FF, CO-IR-TF-160 |  | -43d |
| MS-CF-MV |  | Completion of Construction Works for Medium Voltage Network | 0d | 2027-04-20 | 2027-04-20 | CO-MV-TF-220 FF, CO-MV-TF-220 |  | -69d |
| MS-CF-SW |  | Completion of Construction Works for Sewage Network | 0d | 2027-04-21 | 2027-04-21 | CO-SW-TF-110 FF, CO-SW-TF-210 FF, CO-SW-TF-110 |  | -60.5d |
| MS-CF-TSE |  | Completion of Construction Works for Treated Sewage Effluent Network | 0d | 2027-04-26 | 2027-04-26 | CO-TSE-TF-170 FF, CO-TSE-TF-170 |  | -54.5d |
| MS-CF-TE |  | Completion of Construction Works for Telecom Network | 0d | 2027-04-29 | 2027-04-29 | CO-TE-CTV-TF-140 FF, CO-TE-CTV-TF-140 |  | -66d |
| MS-CF-SL |  | Completion of Construction Works for Street Lighting Network | 0d | 2027-05-06 | 2027-05-06 | CO-SL-TF-230 FF, CO-SL-TF-220 FF, CO-SL-TF-230 |  | -70d |
| MS-CF-PW |  | Completion of Construction Works for Potable Water Network | 0d | 2027-05-08 | 2027-05-08 | CO-PW-TF-120 FF, CO-UB-IRT-250 FF, CO-PW-TF-100 FF, CO-PW-TF-120 |  | -64.5d |
| MS-CF-RD |  | Completion of Construction Works for Road Works | 0d | 2027-05-30 | 2027-05-30 | CO-RD-F-TS-120 FF, CO-RD-F-TS-110 FF, CO-RD-F-TS-100 FF, CO-RD-F-TS-120 |  | -71.5d |
| MS-CF-PF |  | Project Completion Date | 0d | 2027-06-06 | 2027-06-06 | A1100 FF, CO-SD-PO-110-P2 FF, MS-CF-PW FF, MS-CF-IR FF, MS-CF-SW FF, MS-CF-SD FF, MS-CF-TSE FF, MS-CF-MV FF, MS-CF-SL FF, MS-CF-TE FF, MS-CF-RD FF, MS-CF-EBL FF, MS-CF-ENG FF, CO-SU-FE-EP2-EL-870 FF, CO-SU-FE-EP2-AR-450 FF, T/C-CTV FF, HO-130 FF, HO-100 FF, HO-180 FF, HO-190 FF, HO-150 FF, HO-160 FF, HO-170 FF, HO-210 FF, HO-140 FF, HO-230 FF, HO-250 FF, CO-LS-PL-180 FF, T/C-IR FF, T/C-RD FF, T/C-SD FF, T/C-DPO FF, CO-SD-ML-130 FF, CO-SD-MH-220 FF, CO-SD-CB-170 FF, CO-SD-ML-160 FF, CO-SD-MH-260 FF, CO-SD-CB-200 FF, CO-SD-CB-TF-110 FF, CO-SD-CB-TF-130 FF, CO-SD-CB-TF-160 FF, CO-SD-MH-TF-120 FF, CO-SD-MH-TF-210 FF, CO-SD-ML-TF-100 FF, T/C-TSE-10 FF, T/C-TE FF, T/C-MV FF, T/C-SL FF, T/C-SW FF, T/C-PW FF, A1100 |  | -77.5d |
|  | MOB | **Preliminaries and Mobilization Works** |  | 2025-12-23 | 2026-01-26 |  |  |  |
|  | MOB | **Mobilization Works** |  | 2025-12-23 | 2026-01-26 |  |  |  |
| MOB-20 |  | Project Site Layout Plan Approval | 6.25d | 2025-12-23 A | 2025-12-29 A | MS-CS-PS SS, MOB-30 SS | 100% |  |
| MOB-30 |  | Supply & Install of Project Supervision Offices | 29d | 2025-12-23 A | 2026-01-26 A | MS-CS-PS SS | 100% |  |
| MOB-80 |  | Construction Site Access Roads | 29d | 2025-12-23 A | 2026-01-26 A | MOB-20 SS, MS-CS-PS SS | 100% |  |
| MOB-90 |  | Site Surveying Work | 30d | 2025-12-23 A | 2026-01-26 A | MS-CS-PS SS | 100% |  |
| MOB-10 |  | Clear and Grub for Offices and Access Roads | 23d | 2025-12-31 A | 2026-01-26 A | MOB-60 SS, MS-CS-PS SS | 100% |  |
| MOB-40 |  | Construction Project Store | 23d | 2025-12-31 A | 2026-01-26 A | MOB-30 SS+7d, MS-CS-PS SS | 100% |  |
| MOB-50 |  | Mobilization of Major Manpower | 23.25d | 2025-12-31 A | 2026-01-26 A | MOB-40 SS+10d, MS-CS-PS SS | 100% |  |
| MOB-60 |  | Mobilization of Major Equipments | 23.25d | 2025-12-31 A | 2026-01-26 A | MOB-50 SS, MS-CS-PS SS | 100% |  |
| MOB-70 |  | Installation Project Sign Board | 12.75d | 2026-01-12 A | 2026-01-26 A | MOB-10 SS+10d, MS-CS-PS SS | 100% |  |
|  | 1 | **Project Main Documents From The Contractor** |  | 2025-12-23 | 2026-01-18 |  |  |  |
| PRE-CON-MDC-10 |  | Submission Project Execution Plan | 23.25d | 2025-12-23 A | 2026-01-18 A | MS-CS-PS SS | 100% |  |
| PRE-CON-MDC-20 |  | Submission Project Baseline Schedule | 23.25d | 2025-12-23 A | 2026-01-18 A | MS-CS-PS SS | 100% |  |
| PRE-CON-MDC-30 |  | Submission Project Health & Safety Plan | 23.25d | 2025-12-23 A | 2026-01-18 A | MS-CS-PS SS | 100% |  |
| PRE-CON-MDC-40 |  | Submission Project Quality Control Plan | 23.25d | 2025-12-23 A | 2026-01-18 A | MS-CS-PS SS | 100% |  |
| PRE-CON-MDC-50 |  | Submission Project Surveying Report | 23.25d | 2025-12-23 A | 2026-01-18 A | MS-CS-PS SS, MOB-90 SS, MOB-90 FF | 100% |  |
| PRE-CON-MDC-60 |  | Submission Project Geotechnical Soil Report | 23.25d | 2025-12-23 A | 2026-01-18 A | MS-CS-PS SS | 100% |  |
| PRE-CON-MDC-70 |  | Submission Project Environmental Plan | 23.25d | 2025-12-23 A | 2026-01-18 A | MS-CS-PS SS | 100% |  |
| PRE-CON-MDC-80 |  | Submission Project Organization Chart and Communications Plan | 23.25d | 2025-12-23 A | 2026-01-18 A | MS-CS-PS SS | 100% |  |
|  | ENG | **Engineering Works** |  | 2026-01-06 | 2026-10-21 |  |  |  |
|  | SD | **Shop Drawings** |  | 2026-01-17 | 2026-07-13 |  |  |  |
|  | INF | **Infrastructure Networks** |  | 2026-01-17 | 2026-07-13 |  |  |  |
|  | RD | **Road Works** |  | 2026-01-17 | 2026-07-13 |  |  |  |
|  | 1 | **Road Pavement Works** |  | 2026-01-17 | 2026-07-04 |  |  |  |
|  | 1 | **Submittal** |  | 2026-01-17 | 2026-01-19 |  |  |  |
| ENG-SH-RD-S-100 |  | Submission Shop Drawings for Plan and Profile of Road Works | 3.25d | 2026-01-17 A | 2026-01-19 A | MS-CS-PS SS+7d | 100% |  |
| ENG-SH-RD-S-110 |  | Submission Shop Drawings for Roads Typical Sections and Pavement Details | 3.25d | 2026-01-17 A | 2026-01-19 A | MS-CS-PS SS+7d | 100% |  |
|  | 2 | **Approval** |  | 2026-01-19 | 2026-07-04 |  |  |  |
| ENG-SH-RD-A-100 |  | Approval Shop Drawings for Plan and Profile of Road Works | 13.25d | 2026-01-19 A | 2026-02-02 A | ENG-SH-RD-S-100 | 100% |  |
| ENG-SH-RD-A-110 |  | Approval Shop Drawings for Roads Typical Sections and Pavement Details | 10d | 2026-06-23 A | 2026-07-04 A | ENG-SH-RD-S-110 | 100% |  |
|  | 10 | **Pavement Works** |  | 2026-06-23 | 2026-07-01 |  |  |  |
|  | 1 | **Submittal** |  | 2026-06-23 | 2026-06-27 |  |  |  |
| ENG-SH-HS-S-100 |  | Submission Shop Drawings for Hardscaping (Curbstone& Interlock) Works | 3.5d | 2026-06-23 A | 2026-06-27 A | MS-CS-PS SS, ENG-SH-RD-S-100 SS | 100% |  |
|  | 2 | **Approval** |  | 2026-06-27 | 2026-07-01 |  |  |  |
| ENG-SH-HS-A-110 |  | Approval Shop Drawings for Hardscaping (Curbstone& Interlock) Works | 4d | 2026-06-27 A | 2026-07-01 A | ENG-SH-HS-S-100 | 100% |  |
|  | 11 | **Traffic Sign Boards and Road Marking** |  | 2026-06-27 | 2026-07-13 |  |  |  |
|  | 1 | **Submittal** |  | 2026-06-27 | 2026-07-12 |  |  |  |
| ENG-SH-TSB-S-100 |  | Submission Shop Drawings for Traffic Signs Boards | 6d | 2026-06-27 A | 2026-07-04 A | MS-CS-PS SS, ENG-SH-HS-A-110 SS | 100% |  |
| ENG-SH-MRK-S-110 |  | Submission Shop Drawings for Pavement Markings | 6d | 2026-07-05 A | 2026-07-12 A | MS-CS-PS SS, ENG-SH-HS-A-110 SS+7d | 100% |  |
|  | 2 | **Approval** |  | 2026-06-27 | 2026-07-13 |  |  |  |
| ENG-SH-TSB-A-100 |  | Approval Shop Drawings for Traffic Signs Boards | 7d | 2026-06-27 A | 2026-07-05 A | ENG-SH-TSB-S-100 SS, ENG-SH-TSB-S-100 FF | 100% |  |
| ENG-SH-MRK-A-110 |  | Approval Shop Drawings for Pavement Markings | 7d | 2026-07-05 A | 2026-07-13 A | ENG-SH-MRK-S-110 SS, ENG-SH-MRK-S-110 FF | 100% |  |
|  | SW | **Sewage Network** |  | 2026-01-17 | 2026-06-30 |  |  |  |
|  | 1 | **Main Line Sections** |  | 2026-01-17 | 2026-06-30 |  |  |  |
|  | 1 | **Submittal** |  | 2026-01-17 | 2026-01-18 |  |  |  |
| ENG-SH-SW-ML-S-100 |  | Submission Shop Drawings for Main Line and Manholes of Sewage Network | 2.25d | 2026-01-17 A | 2026-01-18 A | MS-CS-PS SS, ENG-SH-RD-S-100, ENG-SH-RD-S-110 SS | 100% |  |
|  | 2 | **Approval** |  | 2026-06-23 | 2026-06-30 |  |  |  |
| ENG-SH-SW-ML-A-110 |  | Approval Shop Drawings for Main Line and Manholes of Sewage Network | 7d | 2026-06-23 A | 2026-06-30 A | ENG-SH-SW-ML-S-100 | 100% |  |
|  | ST | **Storm Drainage Network** |  | 2026-01-17 | 2026-07-06 |  |  |  |
|  | 1 | **Main Line Sections** |  | 2026-01-17 | 2026-05-31 |  |  |  |
|  | 1 | **Submittal** |  | 2026-01-17 | 2026-01-18 |  |  |  |
| ENG-SH-SD-ML-S-100 |  | Submission Shop Drawings for Main Line and Manholes of Storm Drainage Network | 2.25d | 2026-01-17 A | 2026-01-18 A | MS-CS-PS SS, ENG-SH-SW-ML-S-100 SS | 100% |  |
|  | 2 | **Approval** |  | 2026-05-16 | 2026-05-31 |  |  |  |

| ID | WBS | Task | Duration | Start | Finish | Predecessors | Complete |
| --- | --- | --- | --- | --- | --- | --- | --- |
| ENG-SH-SD-ML-A-110 |  | Approval Shop Drawings for Main Line and Manholes of Storm Drainage Network | 7d | 2026-05-16 A | 2026-05-31 A | ENG-SH-SD-ML-S-100 | 100% |
|  | 2 | **Catch Basin Sections** |  | 2026-01-17 | 2026-07-06 |  |  |
|  | 1 | **Submittal** |  | 2026-01-17 | 2026-06-28 |  |  |
| ENG-SH-SD-CB-S-100 |  | Submission Shop Drawings for Secondary Line and Catch Basin of Storm Drainage Network(Completed) | 115.25d | 2026-01-17 A | 2026-06-15 A | MS-CS-PS SS, ENG-SH-SD-ML-S-100 SS | 100% |
| ENG-SH-SD-CB-S-100_R |  | Submission Shop Drawings for Secondary Line and Catch Basin of Storm Drainage Network(Remaining) | 4.5d | 2026-06-23 A | 2026-06-28 A | MS-CS-PS SS, ENG-SH-SD-ML-S-100 SS, ENG-SH-SD-CB-S-100 | 100% |
|  | 2 | **Approval** |  | 2026-06-28 | 2026-07-06 |  |  |
| ENG-SH-SD-CB-A-110 |  | Approval Shop Drawings for Secondary Line and Catch Basin of Storm Drainage Network | 7d | 2026-06-28 A | 2026-07-06 A | ENG-SH-SD-CB-S-100_R | 100% |
|  | PW | **Potable Water Network** |  | 2026-01-18 | 2026-07-06 |  |  |
|  | 1 | **Main Line Sections** |  | 2026-01-18 | 2026-06-30 |  |  |
|  | 1 | **Submittal** |  | 2026-01-18 | 2026-01-21 |  |  |
| ENG-SH-PW-ML-S-100 |  | Submission Shop Drawings for Main Line and Valve Chambers of Potable Water Network | 4.25d | 2026-01-18 A | 2026-01-21 A | MS-CS-PS SS, ENG-SH-SD-ML-S-100 SS | 100% |
|  | 2 | **Approval** |  | 2026-06-23 | 2026-06-30 |  |  |
| ENG-SH-PW-ML-A-110 |  | Approval Shop Drawings for Main Line and Valve Chambers of Potable Water Network | 7d | 2026-06-23 A | 2026-06-30 A | ENG-SH-PW-ML-S-100 | 100% |
|  | 2 | **Fire Hydrant** |  | 2026-06-23 | 2026-07-06 |  |  |
|  | 1 | **Submittal** |  | 2026-06-23 | 2026-06-28 |  |  |
| ENG-SH-PW-FH-S-100 |  | Submission Shop Drawings for Fire Hydrant Network | 5d | 2026-06-23 A | 2026-06-28 A | MS-CS-PS SS, ENG-SH-PW-ML-S-100 SS | 100% |
|  | 2 | **Approval** |  | 2026-06-29 | 2026-07-06 |  |  |
| ENG-SH-PW-FH-A-110 |  | Approval Shop Drawings for Fire Hydrant Network | 7d | 2026-06-29 A | 2026-07-06 A | ENG-SH-PW-FH-S-100 | 100% |
|  | IR | **Irrigation Network** |  | 2026-06-23 | 2026-07-07 |  |  |
|  | 1 | **Main Line Sections** |  | 2026-06-23 | 2026-07-07 |  |  |
|  | 1 | **Submittal** |  | 2026-06-23 | 2026-06-29 |  |  |
| ENG-SH-IR-ML-S-100 |  | Submission Shop Drawings for Main Line and Valves & Bulbblers and Sprinklers of Irrigation Network | 6d | 2026-06-23 A | 2026-06-29 A | MS-CS-PS SS, ENG-SH-PW-ML-S-100 SS | 100% |
|  | 2 | **Approval** |  | 2026-06-30 | 2026-07-07 |  |  |
| ENG-SH-IR-ML-A-110 |  | Approval Shop Drawings for Main Line and Valves & Bulbblers and Sprinklers of Irrigation Network | 7d | 2026-06-30 A | 2026-07-07 A | ENG-SH-IR-ML-S-100 | 100% |
|  | TSE | **Treated Sewage Effluent Network** |  | 2026-06-23 | 2026-07-07 |  |  |
|  | 1 | **Main Line Sections** |  | 2026-06-23 | 2026-07-07 |  |  |
|  | 1 | **Submittal** |  | 2026-06-23 | 2026-06-29 |  |  |
| ENG-SH-TSE-ML-S-110 |  | Submission Shop Drawings for Main Line Treated Sewage Effluent Network | 6d | 2026-06-23 A | 2026-06-29 A | MS-CS-PS SS, ENG-SH-IR-ML-S-100 SS | 100% |
|  | 2 | **Approval** |  | 2026-06-30 | 2026-07-07 |  |  |
| ENG-SH-TSE-ML-A-120 |  | Approval Shop Drawings for Main Line Treated Sewage Effluent Network | 7d | 2026-06-30 A | 2026-07-07 A | ENG-SH-TSE-ML-S-110 | 100% |
|  | MV | **Medium Voltage Network** |  | 2026-01-17 | 2026-07-07 |  |  |
|  | 1 | **Submittal** |  | 2026-01-17 | 2026-01-22 |  |  |
| ENG-SH-MV-S-100 |  | Submission Shop Drawings for Medium Voltage Network | 6.25d | 2026-01-17 A | 2026-01-22 A | MS-CS-PS SS, MS-CS-PS | 100% |
|  | 2 | **Approval** |  | 2026-06-30 | 2026-07-07 |  |  |
| ENG-SH-MV-A-110 |  | Approval Shop Drawings for Medium Voltage Network | 7d | 2026-06-30 A | 2026-07-07 A | ENG-SH-MV-S-100, ENG-SH-IR-ML-S-100 | 100% |
|  | LV | **Low Voltage Network** |  | 2026-06-23 | 2026-07-07 |  |  |
|  | 1 | **Submittal** |  | 2026-06-23 | 2026-06-29 |  |  |
| ENG-SH-LV-S-110 |  | Submission Shop Drawings for Low Voltage Network | 6d | 2026-06-23 A | 2026-06-29 A | MS-CS-PS SS, ENG-SH-IR-ML-S-100 SS | 100% |
|  | 2 | **Approval** |  | 2026-06-30 | 2026-07-07 |  |  |
| ENG-SH-LV-A-120 |  | Approval Shop Drawings for Low Voltage Network | 7d | 2026-06-30 A | 2026-07-07 A | ENG-SH-LV-S-110 | 100% |
|  | SL | **Street Lighting Network** |  | 2026-01-17 | 2026-07-02 |  |  |
|  | 1 | **Submittal** |  | 2026-01-17 | 2026-06-29 |  |  |
| ENG-SH-SL-S-100 |  | Submission Shop Drawings for Street Lighting Network(Completed) | 115.25d | 2026-01-17 A | 2026-06-15 A | MS-CS-PS SS, ENG-SH-MV-S-100 SS+4d | 100% |
| ENG-SH-SL-S-100_R |  | Submission Shop Drawings for Street Lighting Network(Remaining) | 6d | 2026-06-23 A | 2026-06-29 A | MS-CS-PS SS, ENG-SH-MV-S-100 SS+4d, ENG-SH-SL-S-100 | 100% |
|  | 2 | **Approval** |  | 2026-06-25 | 2026-07-02 |  |  |
| ENG-SH-SL-A-110 |  | Approval Shop Drawings for Street Lighting Network | 7d | 2026-06-25 A | 2026-07-02 A | ENG-SH-SL-S-100_R SS+2d, ENG-SH-SL-S-100_R FF | 100% |
|  | TL | **Telecom Network** |  | 2026-06-29 | 2026-07-07 |  |  |
|  | 1 | **Submittal** |  | 2026-06-30 | 2026-07-06 |  |  |
| ENG-SH-CTV-S-100 |  | Submission Shop Drawings for CCTV Complete System | 6d | 2026-06-30 A | 2026-07-06 A | MS-CS-PS SS, ENG-SH-TE-S-100 SS, ENG-SH-TE-S-100 FF | 100% |
| ENG-SH-MSN-S-110 |  | Submission Shop Drawings for MSN System | 6d | 2026-06-30 A | 2026-07-06 A | MS-CS-PS SS, ENG-SH-CTV-S-100 SS | 100% |
| ENG-SH-TE-S-100 |  | Submission Shop Drawings for Telecom Network | 6d | 2026-06-30 A | 2026-07-06 A | MS-CS-PS SS, ENG-SH-LV-S-110 | 100% |
|  | 2 | **Approval** |  | 2026-06-29 | 2026-07-07 |  |  |
| ENG-SH-MSN-A-120 |  | Approval Shop Drawings for MSN System | 7d | 2026-06-29 A | 2026-07-06 A | ENG-SH-MSN-S-110 FF, ENG-SH-MSN-S-110 | 100% |
| ENG-SH-CTV-A-110 |  | Approval Shop Drawings for CCTV Complete System | 7d | 2026-06-30 A | 2026-07-07 A | ENG-SH-CTV-S-100 SS | 100% |
| ENG-SH-TE-A-110 |  | Approval Shop Drawings for Telecom Network | 7d | 2026-06-30 A | 2026-07-07 A | ENG-SH-TE-S-100 SS, ENG-SH-TE-S-100 FF | 100% |
|  | 1 | **Superstructure Works** |  | 2026-01-17 | 2026-07-07 |  |  |
|  | PS | **Pump Stations** |  | 2026-01-17 | 2026-07-02 |  |  |
|  | 1 | **Submittal** |  | 2026-01-17 | 2026-06-30 |  |  |
| ENG-SH-SPS-S-150 |  | Submission Shop Drawings Package for Sewage Pump Stations(Completed) | 115.25d | 2026-01-17 A | 2026-06-15 A | MS-CS-PS SS | 100% |
| ENG-SH-SPS-S-150_R |  | Submission Shop Drawings Package for Sewage Pump Stations(Remaining) | 6d | 2026-06-24 A | 2026-06-30 A | ENG-SH-PW-ML-A-110 FF, MS-CS-PS SS, ENG-SH-SPS-S-150 | 100% |
|  | 2 | **Approval** |  | 2026-06-27 | 2026-07-02 |  |  |
| ENG-SH-SPS-A-160 |  | Approval Shop Drawings Package for Sewage Pump Stations | 6d | 2026-06-27 A | 2026-07-02 A | ENG-SH-SPS-S-150_R SS+2d, ENG-SH-SPS-S-150_R FF | 100% |
|  | LS | **Lift Station** |  | 2026-01-17 | 2026-07-02 |  |  |
|  | 1 | **Submittal** |  | 2026-01-17 | 2026-06-30 |  |  |
| ENG-SH-LS-S-160 |  | Submission Shop Drawings Package for Lift Stations(Completed) | 115.25d | 2026-01-17 A | 2026-06-15 A | MS-CS-PS SS | 100% |
| ENG-SH-LS-S-160_R |  | Submission Shop Drawings Package for Lift Stations(Remaining) | 6d | 2026-06-24 A | 2026-06-30 A | ENG-SH-SW-ML-A-110 FF, MS-CS-PS SS, ENG-SH-LS-S-160 | 100% |
|  | 2 | **Approval** |  | 2026-06-27 | 2026-07-02 |  |  |
| ENG-SH-LS-A-170 |  | Approval Shop Drawings Package for Lift Stations | 6d | 2026-06-27 A | 2026-07-02 A | ENG-SH-LS-S-160_R SS+2d | 100% |
|  | PO | **Storm Drainage Ponds** |  | 2026-06-28 | 2026-07-06 |  |  |
|  | 1 | **Submittal** |  | 2026-06-28 | 2026-07-05 |  |  |

| ID | WBS | Task | Duration | Start | Finish | Predecessors | Complete |
| --- | --- | --- | --- | --- | --- | --- | --- |
| ENG-SH-DPO-S-110 |  | Submission Shop Drawings Package for Storm Drainage Ponds | 6d | 2026-06-28 A | 2026-07-05 A | MS-CS-PS SS, ENG-SH-SD-ML-A-110 SS, ENG-SH-SD-CB-A-110 SS | 100% |
|  | 2 | **Approval** |  | 2026-06-29 | 2026-07-06 |  |  |
| ENG-SH-DPO-A-120 |  | Approval Shop Drawings Package for Storm Drainage Ponds | 6d | 2026-06-29 A | 2026-07-06 A | ENG-SH-DPO-S-110 SS+1d, ENG-SH-DPO-S-110 FF | 100% |
|  | ST | **Storage Tank (TSE)** |  | 2026-06-30 | 2026-07-07 |  |  |
|  | 1 | **Submittal** |  | 2026-06-30 | 2026-07-06 |  |  |
| ENG-SH-ST-S-170 |  | Submission Shop Drawings Package for Storage Tank TSE | 6d | 2026-06-30 A | 2026-07-06 A | MS-CS-PS SS, ENG-SH-TSE-ML-A-120 SS | 100% |
|  | 2 | **Approval** |  | 2026-07-01 | 2026-07-07 |  |  |
| ENG-SH-ST-A-180 |  | Approval Shop Drawings Package for Storage Tank TSE | 6d | 2026-07-01 A | 2026-07-07 A | ENG-SH-ST-S-170 SS+1d, ENG-SH-ST-S-170 FF | 100% |
|  | GR | **Gaurd Room** |  | 2026-06-23 | 2026-06-29 |  |  |
| ENG-SH-GR-A-190 |  | Approval Shop Drawings Package for Gaurd Room | 6d | 2026-06-23 A | 2026-06-29 A | ENG-SH-GR-S-180 SS, ENG-SH-GR-S-180 FF | 100% |
|  | 1 | **Submittal** |  | 2026-06-23 | 2026-06-29 |  |  |
| ENG-SH-GR-S-180 |  | Submission Shop Drawings Package for Gaurd Room | 6d | 2026-06-23 A | 2026-06-29 A | MS-CS-PS SS, ENG-SH-RD-A-100 SS+7d | 100% |
|  | 2 | **Approval** |  |  |  |  |  |
|  | FE | **Fence** |  | 2026-01-29 | 2026-06-28 |  |  |
|  | 1 | **Submittal** |  | 2026-01-29 | 2026-06-27 |  |  |
| ENG-SH-GR-S-190 |  | Submission Shop Drawings Package for Fence(Completed) | 104.25d | 2026-01-29 A | 2026-06-15 A | MS-CS-PS SS, ENG-SH-RD-A-100 SS | 100% |
| ENG-SH-GR-S-190_R |  | Submission Shop Drawings Package for Fence(Remaining) | 3.48d | 2026-06-23 A | 2026-06-27 A | MS-CS-PS SS, ENG-SH-RD-A-100 SS, ENG-SH-GR-S-190 | 100% |
|  | 2 | **Approval** |  | 2026-01-29 | 2026-06-28 |  |  |
| ENG-SH-GR-A-200 |  | Approval Shop Drawings Package for Fence(Completed) | 104.25d | 2026-01-29 A | 2026-06-15 A | ENG-SH-GR-S-190 SS | 100% |
| ENG-SH-GR-A-200_R |  | Approval Shop Drawings Package for Fence(Remaining) | 4.2d | 2026-06-23 A | 2026-06-28 A | ENG-SH-GR-S-190_R SS, ENG-SH-GR-A-200, ENG-SH-GR-S-190_R FF | 100% |
|  | SD11 | **Material Submittals and Approvals** |  | 2026-01-06 | 2026-10-21 |  |  |
|  | 2 | **Short Lead Time Items** |  | 2026-01-06 | 2026-10-20 |  |  |
|  | INF | **Infrastructure Networks** |  | 2026-01-06 | 2026-07-12 |  |  |
|  | 10 | **Road Works** |  | 2026-01-10 | 2026-03-11 |  |  |
|  | MS | **Submission of Material** |  | 2026-01-10 | 2026-03-07 |  |  |
|  | 1 | **Roads Works** |  | 2026-01-10 | 2026-01-19 |  |  |
| ENG-MT-RD-S-100 |  | Material Submittal for Subgrade of Road Works | 9.25d | 2026-01-10 A | 2026-01-19 A | ENG-SH-RD-S-100 | 100% |
| ENG-MT-RD-S-110 |  | Material Submittal for Aggregate Base Course of Road Works | 9.25d | 2026-01-10 A | 2026-01-19 A | ENG-SH-RD-S-100 | 100% |
| ENG-MT-RD-S-120 |  | Material Submittal for Prime Coat of Road Works | 9.25d | 2026-01-10 A | 2026-01-19 A | ENG-SH-RD-S-100 | 100% |
| ENG-MT-RD-S-130 |  | Material Submittal for Bituminous Base & Wearing Courses of Road Works | 9.25d | 2026-01-10 A | 2026-01-19 A | ENG-SH-RD-S-100 | 100% |
|  | 10 | **Pavement Works** |  | 2026-01-11 | 2026-01-19 |  |  |
| ENG-MT-RD-S-140 |  | Material Submittal for Interlock Tiles of Landscaping | 8.25d | 2026-01-11 A | 2026-01-19 A | ENG-MT-RD-S-130 SS | 100% |
| ENG-MT-RD-S-150 |  | Material Submittal for Curbstones of Landscaping | 8.25d | 2026-01-11 A | 2026-01-19 A | ENG-MT-RD-S-130 SS | 100% |
|  | 11 | **Traffic Signs Boards and Roads Marking** |  | 2026-02-26 | 2026-03-07 |  |  |
| ENG-MT-TS-S-100 |  | Material Submittal for Traffic Signs Boards of Road Works | 1.25d | 2026-02-26 A | 2026-02-28 A | MS-CS-PS | 100% |
| ENG-MT-TS-S-110 |  | Material Submittal for Road Markings of Road Works | 6d | 2026-03-01 A | 2026-03-07 A | ENG-SH-RD-A-100 | 100% |
|  | NA | **Approval of Material** |  | 2026-01-18 | 2026-03-11 |  |  |
|  | 1 | **Road Works** |  | 2026-01-18 | 2026-01-20 |  |  |
| ENG-MT-RD-A-100 |  | Material Approval for Subgrade of Road Works | 0d | 2026-01-18 A | 2026-01-20 A | ENG-MT-RD-S-100 | 100% |
| ENG-MT-RD-A-110 |  | Material Approval for Aggregate Base Course of Road Works | 0d | 2026-01-18 A | 2026-01-20 A | ENG-MT-RD-S-110 | 100% |
| ENG-MT-RD-A-120 |  | Material Approval for Prime Coat of Road Works | 0d | 2026-01-18 A | 2026-01-20 A | ENG-MT-RD-S-120 | 100% |
| ENG-MT-RD-A-130 |  | Material Approval for Bituminous Base & Wearing Courses of Road Works | 0d | 2026-01-18 A | 2026-01-20 A | ENG-MT-RD-S-130 | 100% |
|  | 2 | **Pavement Works** |  | 2026-01-18 | 2026-01-20 |  |  |
| ENG-MT-RD-A-140 |  | Material Approval of Interlock Tiles for Landscaping | 0d | 2026-01-18 A | 2026-01-20 A | ENG-MT-RD-S-140 | 100% |
| ENG-MT-RD-A-150 |  | Material Approval of Curbstones for Landscaping | 0d | 2026-01-18 A | 2026-01-20 A | ENG-MT-RD-S-150 | 100% |
|  | 3 | **Traffic Signs Boards and Roads Marking** |  | 2026-02-28 | 2026-03-11 |  |  |
| ENG-MT-TS-A-100 |  | Material Approval for Traffic Signs Boards of Road Works | 0d | 2026-02-28 A | 2026-03-02 A | ENG-MT-TS-S-100, MS-CS-PS | 100% |
| ENG-MT-TS-A-110 |  | Material Approval for Road Markings of Road Works | 0d | 2026-03-08 A | 2026-03-11 A | MS-CS-PS | 100% |
|  | 6 | **Softscape and Planting Works** |  | 2026-06-27 | 2026-07-12 |  |  |
|  | 1 | **Submission of Material** |  | 2026-06-27 | 2026-07-04 |  |  |
| ENG-MT-IR-ML-S-140 |  | Material Submittal for Softscape and Planting Works | 6d | 2026-06-27 A | 2026-07-04 A | ENG-SH-HS-A-110 SS | 100% |
| ENG-MT-IR-ML-S-150 |  | Material Submittal for Site Furnishings (Seating Bench,Stone Boulders and Gravel) | 6d | 2026-06-27 A | 2026-07-04 A | ENG-SH-HS-A-110 SS | 100% |
|  | 2 | **Approval of Material** |  | 2026-07-04 | 2026-07-12 |  |  |
| ENG-MT-IR-ML-A-140 |  | Material Approval for Softscape and Planting Works | 7d | 2026-07-04 A | 2026-07-12 A | ENG-MT-IR-ML-S-140, ENG-SH-HS-A-110 SS | 100% |
| ENG-MT-IR-ML-A-150 |  | Material Approval for Site Furnishings (Seating Bench,Stone Boulders and Gravel) | 6d | 2026-07-04 A | 2026-07-11 A | ENG-MT-IR-ML-S-150, ENG-SH-HS-A-110 SS | 100% |
|  | 2 | **Sewage Network** |  | 2026-01-11 | 2026-07-07 |  |  |
|  | MS | **Submission of Material** |  | 2026-01-11 | 2026-06-29 |  |  |
|  | 1 | **Main Line Sections** |  | 2026-01-11 | 2026-01-26 |  |  |
| ENG-MT-SW-ML-S-110 |  | Material Submittal for Main Line Pipes of Sewage Network | 14.25d | 2026-01-11 A | 2026-01-26 A | ENG-MT-RD-S-150 SS | 100% |
| ENG-MT-SW-ML-S-100 |  | Material Submittal for Manholes of Sewage Network | 5.25d | 2026-01-20 A | 2026-01-25 A | ENG-MT-RD-S-150 SS | 100% |
|  | 3 | **Testing and Finishes** |  | 2026-06-23 | 2026-06-29 |  |  |
| ENG-MT-SW-TF-S-100 |  | Material Submittal for Manhole Covers of Sewage Network | 6d | 2026-06-23 A | 2026-06-29 A | ENG-MT-RD-S-150 SS | 100% |
|  | MA | **Approval of Material** |  | 2026-01-21 | 2026-07-07 |  |  |
|  | 1 | **Main Line Sections** |  | 2026-01-21 | 2026-01-26 |  |  |
| ENG-MT-SW-ML-A-100 |  | Material Approval for Manholes of Sewage Network | 0d | 2026-01-21 A | 2026-01-26 A | ENG-MT-SW-ML-S-100 | 100% |
| ENG-MT-SW-ML-A-110 |  | Material Approval for Main Line Pipes of Sewage Network | 0d | 2026-01-22 A | 2026-01-25 A | ENG-MT-SW-ML-S-110 | 100% |
|  | 3 | **Testing and Finishes** |  | 2026-06-30 | 2026-07-07 |  |  |
| ENG-MT-SW-TF-A-100 |  | Material Approval for Manhole Covers of Sewage Network | 7d | 2026-06-30 A | 2026-07-07 A | ENG-MT-SW-TF-S-100 | 100% |
|  | 9 | **Storm Drainage Network** |  | 2026-01-06 | 2026-07-07 |  |  |
|  | MS | **Submission of Material** |  | 2026-01-06 | 2026-06-29 |  |  |

| ID | WBS | Task | Duration | Start | Finish | Predecessors | Complete |
| --- | --- | --- | --- | --- | --- | --- | --- |
|  | 1 | **Main Line Sections** |  | 2026-01-06 | 2026-01-13 |  |  |
| ENG-MT-SD-ML-S-100 |  | Material Submittal for Manholes of Storm Drainage Network | 7.25d | 2026-01-06 A | 2026-01-13 A | ENG-SH-SD-ML-S-100 SS, ENG-SH-SD-ML-A-110 | 100% |
| ENG-MT-SD-ML-S-110 |  | Material Submittal for Main Line Pipes of Storm Drainage Network | 7.25d | 2026-01-06 A | 2026-01-13 A | ENG-SH-SD-ML-S-100 SS | 100% |
|  | 2 | **Catch Basin Sections** |  | 2026-01-06 | 2026-01-13 |  |  |
| ENG-MT-SD-CB-S-100 |  | Material Submittal for Catch Basins of Storm Drainage Network | 7.25d | 2026-01-06 A | 2026-01-13 A | ENG-SH-SD-ML-S-100 SS | 100% |
| ENG-MT-SD-CB-S-110 |  | Material Submittal for Catch Basin Pipes of Storm Drainage Network | 7.25d | 2026-01-06 A | 2026-01-13 A | ENG-SH-SD-ML-S-100 SS | 100% |
|  | 3 | **Testing and Finishes** |  | 2026-06-23 | 2026-06-29 |  |  |
| ENG-MT-SD-TF-S-100 |  | Material Submittal for Manhole Covers of Storm Drainage Network | 6d | 2026-06-23 A | 2026-06-29 A | ENG-SH-SD-ML-S-100 SS | 100% |
| ENG-MT-SD-TF-S-110 |  | Material Submittal for Catch Basin Covers of Storm Drainage Network | 6d | 2026-06-23 A | 2026-06-29 A | ENG-SH-SD-ML-S-100 SS | 100% |
|  | MA | **Approval of Material** |  | 2026-01-15 | 2026-07-07 |  |  |
|  | 1 | **Main Line Sections** |  | 2026-01-15 | 2026-01-19 |  |  |
| ENG-MT-SD-ML-A-100 |  | Material Approval for Manholes of Storm Drainage Network | 0d | 2026-01-15 A | 2026-01-19 A | ENG-MT-SD-ML-S-100 | 100% |
| ENG-MT-SD-ML-A-110 |  | Material Approval for Main Line Pipes of Storm Drainage Network | 0d | 2026-01-15 A | 2026-01-19 A | ENG-MT-SD-ML-S-110 | 100% |
|  | 2 | **Catch Basin Sections** |  | 2026-01-15 | 2026-01-19 |  |  |
| ENG-MT-SD-CB-A-100 |  | Material Approval for Catch Basins of Storm Drainage Network | 0d | 2026-01-15 A | 2026-01-19 A | ENG-MT-SD-CB-S-100 | 100% |
| ENG-MT-SD-CB-A-110 |  | Material Approval for Catch Basin Pipes of Storm Drainage Network | 0d | 2026-01-15 A | 2026-01-19 A | ENG-MT-SD-CB-S-110 | 100% |
|  | 3 | **Testing and Finishes** |  | 2026-06-30 | 2026-07-07 |  |  |
| ENG-MT-SD-TF-A-100 |  | Material Approval for Manhole Covers of Storm Drainage Network | 7d | 2026-06-30 A | 2026-07-07 A | ENG-MT-SD-TF-S-100 | 100% |
| ENG-MT-SD-TF-A-110 |  | Material Approval for Catch Basin Covers of Storm Drainage Network | 7d | 2026-06-30 A | 2026-07-07 A | ENG-MT-SD-TF-S-110 | 100% |
|  | 3 | **Potable Water Network** |  | 2026-01-24 | 2026-07-07 |  |  |
|  | MS | **Submission of Material** |  | 2026-01-24 | 2026-06-29 |  |  |
|  | 1 | **Main Line Sections** |  | 2026-01-24 | 2026-06-29 |  |  |
| ENG-MT-PW-ML-S-100 |  | Material Submittal for Main Line Pipes of Potable Water Network | 6d | 2026-01-24 A | 2026-01-25 A | ENG-SH-PW-ML-S-100 SS | 100% |
| ENG-MT-PW-ML-S-110 |  | Material Submittal for Main Line Valves of Potable Water Network | 6d | 2026-06-23 A | 2026-06-29 A | ENG-SH-PW-ML-S-100 SS | 100% |
|  | 3 | **Fire Hydrant** |  | 2026-06-23 | 2026-06-29 |  |  |
| ENG-MT-PW-FH-S-100 |  | Material Submittal for Fire Hydrant of Potable Water Network | 6d | 2026-06-23 A | 2026-06-29 A | ENG-SH-PW-ML-S-100 SS | 100% |
|  | 4 | **Testing and Finishes** |  | 2026-06-23 | 2026-06-29 |  |  |
| ENG-MT-PW-TF-S-100 |  | Material Submittal for Surface Box of Potable Water Network | 6d | 2026-06-23 A | 2026-06-29 A | ENG-SH-PW-ML-S-100 SS | 100% |
|  | MA | **Approval of Material** |  | 2026-01-25 | 2026-07-07 |  |  |
|  | 1 | **Main Line Sections** |  | 2026-01-25 | 2026-07-07 |  |  |
| ENG-MT-PW-ML-A-100 |  | Material Approval for Main Line Pipes of Potable Water Network | 7d | 2026-01-25 A | 2026-01-27 A | ENG-MT-PW-ML-S-100 | 100% |
| ENG-MT-PW-ML-A-110 |  | Material Approval for Valves of Potable Water Network | 7d | 2026-06-30 A | 2026-07-07 A | ENG-MT-PW-ML-S-110 | 100% |
|  | 3 | **Fire Hydrant** |  | 2026-06-30 | 2026-07-07 |  |  |
| ENG-MT-PW-FH-A-100 |  | Material Approval for Fire Hydrants of Potable Water Network | 7d | 2026-06-30 A | 2026-07-07 A | ENG-MT-PW-FH-S-100 | 100% |
|  | 4 | **Testing and Finishes** |  | 2026-06-30 | 2026-07-07 |  |  |
| ENG-MT-PW-TF-A-100 |  | Material Approval for Surface Box of Potable Water Network | 7d | 2026-06-30 A | 2026-07-07 A | ENG-MT-PW-TF-S-100 | 100% |
|  | 4 | **Irrigation Network** |  | 2026-01-06 | 2026-01-27 |  |  |
|  | MS | **Submission of Material** |  | 2026-01-06 | 2026-01-27 |  |  |
|  | 1 | **Main Line Pipes** |  | 2026-01-06 | 2026-01-27 |  |  |
| ENG-MT-IR-ML-S-100 |  | Material Submittal for Main Line Pipes of Irrigation Network | 19.25d | 2026-01-06 A | 2026-01-27 A | MS-CS-PS | 100% |
| ENG-MT-IR-ML-S-110 |  | Material Submittal for Main Line Valves of Irrigation Network | 19.25d | 2026-01-06 A | 2026-01-27 A | MS-CS-PS | 100% |
|  | MA | **Approval of Material** |  | 2026-01-18 | 2026-01-26 |  |  |
|  | 1 | **Main Line Pipes** |  | 2026-01-18 | 2026-01-26 |  |  |
| ENG-MT-IR-ML-A-100 |  | Material Approval for Main Line Pipes of Irrigation Network | 0d | 2026-01-18 A | 2026-01-24 A | ENG-MT-IR-ML-S-100 | 100% |
| ENG-MT-IR-ML-A-110 |  | Material Approval for Valves of Irrigation Network | 0d | 2026-01-24 A | 2026-01-26 A | ENG-MT-IR-ML-S-110 | 100% |
|  | 1 | **Treated Sewage Effluent (Tse)** |  | 2026-01-17 | 2026-02-16 |  |  |
|  | MS | **Submission of Material** |  | 2026-01-17 | 2026-02-04 |  |  |
|  | 1 | **Main Line Pipes** |  | 2026-01-17 | 2026-02-04 |  |  |
| ENG-MT-IR-ML-S-120 |  | Material Submittal for Main Line Pipes of Irrigation Network | 9.25d | 2026-01-17 A | 2026-01-26 A | MS-CS-PS | 100% |
| ENG-MT-IR-ML-S-130 |  | Material Submittal for Main Line Valves of Irrigation Network | 2.25d | 2026-02-03 A | 2026-02-04 A | MS-CS-PS | 100% |
|  | MA | **Approval of Material** |  | 2026-01-29 | 2026-02-16 |  |  |
|  | 1 | **Main Line Pipes** |  | 2026-01-29 | 2026-02-16 |  |  |
| ENG-MT-IR-ML-A-120 |  | Material Approval for Main Line Pipes of Irrigation Network | 0d | 2026-01-29 A | 2026-02-16 A | ENG-MT-IR-ML-S-120 | 100% |
| ENG-MT-IR-ML-A-130 |  | Material Approval for Valves of Irrigation Network | 0d | 2026-02-04 A | 2026-02-09 A | ENG-MT-IR-ML-S-130 | 100% |
|  | 5 | **Medium Voltage Network** |  | 2026-01-06 | 2026-07-07 |  |  |
|  | MS | **Submission of Material** |  | 2026-01-06 | 2026-06-29 |  |  |
|  | 1 | **Cabling Works** |  | 2026-01-06 | 2026-01-13 |  |  |
| ENG-MT-MV-ML-S-100 |  | Material Submittal for Medium Voltage Cables of Medium Voltage Network | 7.25d | 2026-01-06 A | 2026-01-13 A | ENG-SH-MV-S-100 SS | 100% |
|  | 3 | **Termination and Testing Works** |  | 2026-06-23 | 2026-06-29 |  |  |
| ENG-MT-MV-TF-S-100 |  | Material Submittal for Termination Kits of Medium Voltage Network | 6d | 2026-06-23 A | 2026-06-29 A | ENG-SH-MV-S-100 SS | 100% |
|  | MA | **Approval of Material** |  | 2026-01-14 | 2026-07-07 |  |  |
|  | 1 | **Cabling Works** |  | 2026-01-14 | 2026-01-20 |  |  |
| ENG-MT-MV-ML-A-100 |  | Material Approval for Medium Voltage Cables of Medium Voltage Network | 0d | 2026-01-14 A | 2026-01-20 A | ENG-MT-MV-ML-S-100, ENG-SH-MV-S-100 SS | 100% |
|  | 3 | **Termination and Testing Works** |  | 2026-06-30 | 2026-07-07 |  |  |
| ENG-MT-MV-TF-A-100 |  | Material Approval for Termination and Joints Kits of Medium Voltage Network | 7d | 2026-06-30 A | 2026-07-07 A | ENG-MT-MV-TF-S-100, ENG-SH-MV-S-100 | 100% |
|  | 7 | **Street Lighting Network** |  | 2026-01-06 | 2026-07-07 |  |  |
|  | MS | **Submission of Material** |  | 2026-01-06 | 2026-07-06 |  |  |
|  | 1 | **Cabling Works** |  | 2026-02-01 | 2026-02-08 |  |  |
| ENG-MT-SL-ML-S-100 |  | Material Submittal for Lighting Cables of Street Lighting Network | 6d | 2026-02-01 A | 2026-02-08 A | ENG-MT-MV-ML-S-100 SS | 100% |
|  | 2 | **Lighting Poles Works** |  | 2026-01-06 | 2026-01-19 |  |  |

| ID | WBS | Task | Duration | Start | Finish | Predecessors | Complete | Total float |
| --- | --- | --- | --- | --- | --- | --- | --- | --- |
| ENG-MT-SL-S-100 |  | Material Submittal for Lighting Poles Concrete Foundations of Street Lighting Network | 7.25d | 2026-01-06 A | 2026-01-13 A | ENG-MT-MV-ML-S-100 SS | 100% |  |
| ENG-MT-SL-S-110 |  | Material Submittal for Lighting Poles of Street Lighting Network | 7.25d | 2026-01-06 A | 2026-01-13 A | ENG-MT-MV-ML-S-100 SS | 100% |  |
| ENG-MT-SL-S-120 |  | Material Submittal for Lighting Fixtures of Street Lighting Network | 6d | 2026-01-15 A | 2026-01-19 A | ENG-MT-MV-ML-S-100 SS | 100% |  |
|  | 3 | **Distribution Panel Board** |  | 2026-02-18 | 2026-02-19 |  |  |  |
| ENG-MT-SL-DB-S-100 |  | Material Submittal for Lighting Distrubution Panel Boards of Street Lighting Network | 1.25d | 2026-02-18 A | 2026-02-19 A | ENG-MT-MV-ML-S-100 SS | 100% |  |
|  | 5 | **Termination and Testing Works** |  | 2026-06-23 | 2026-06-29 |  |  |  |
| ENG-MT-SL-TF-S-100 |  | Material Submittal for Fuse Boxes of Street Lighting Network | 6d | 2026-06-23 A | 2026-06-29 A | ENG-MT-MV-ML-S-100 SS | 100% |  |
| ENG-MT-SL-TF-S-110 |  | Material Submittal for Cable Lugs of Street Lighting Network | 6d | 2026-06-23 A | 2026-06-29 A | ENG-MT-MV-ML-S-100 SS | 100% |  |
|  | 4 | **Earthing System Works** |  | 2026-06-30 | 2026-07-06 |  |  |  |
| ENG-MT-SL-ES-S-100 |  | Material Submittal for Lighting Earthing of Street Lighting Network | 6d | 2026-06-30 A | 2026-07-06 A | ENG-MT-MV-ML-S-100 SS, ENG-MT-SL-TF-S-110, ENG-MT-SL-TF-A-110 SS | 100% |  |
|  | MA | **Approval of Material** |  | 2026-01-14 | 2026-07-07 |  |  |  |
|  | 1 | **Cabling Works** |  | 2026-02-04 | 2026-02-09 |  |  |  |
| ENG-MT-SL-ML-A-100 |  | Material Approval for Lighting Cables of Street Lighting Network | 0d | 2026-02-04 A | 2026-02-09 A | ENG-MT-MV-ML-S-100 | 100% |  |
|  | 2 | **Lighting Poles Works** |  | 2026-01-14 | 2026-01-25 |  |  |  |
| ENG-MT-SL-A-100 |  | Material Approval for Lighting Poles Concrete Foundations of Street Lighting Network | 10.25d | 2026-01-14 A | 2026-01-25 A | ENG-MT-SL-S-100 | 100% |  |
| ENG-MT-SL-A-110 |  | Material Approval for Lighting Poles of Street Lighting Network | 0d | 2026-01-14 A | 2026-01-25 A | ENG-MT-SL-S-110 | 100% |  |
| ENG-MT-SL-A-120 |  | Material Approval for Lighting Fixtures of Street Lighting Network | 0d | 2026-01-22 A | 2026-01-25 A | ENG-MT-MV-ML-S-100 | 100% |  |
|  | 3 | **Distribution Panel Board** |  | 2026-02-21 | 2026-03-23 |  |  |  |
| ENG-MT-SL-DB-A-100 |  | Material Approval for Distrubution Panel Boards of Street Lighting Network | 0d | 2026-02-21 A | 2026-03-23 A | ENG-MT-SL-DB-S-100 | 100% |  |
|  | 4 | **Earthing System Works** |  | 2026-06-30 | 2026-06-30 |  |  |  |
| ENG-MT-SL-ES-A-100 |  | Material Approval for Lighting Earthing of Street Lighting Network | 0d | 2026-06-30 A | 2026-06-30 A | ENG-MT-SL-ES-S-100 SS | 100% |  |
|  | 5 | **Termination and Testing Works** |  | 2026-06-30 | 2026-07-07 |  |  |  |
| ENG-MT-SL-TF-A-100 |  | Material Approval for Fuse Boxes of Street Lighting Network | 7d | 2026-06-30 A | 2026-07-07 A | ENG-MT-SL-TF-S-100 | 100% |  |
| ENG-MT-SL-TF-A-110 |  | Material Approval for Cable Lugs of Street Lighting Network | 7d | 2026-06-30 A | 2026-07-07 A | ENG-MT-SL-TF-S-110 | 100% |  |
|  | 8 | **Telecom Network** |  | 2026-01-17 | 2026-01-26 |  |  |  |
|  | MS | **Submission of Material** |  | 2026-01-17 | 2026-01-26 |  |  |  |
|  | 1 | **Ducts Works** |  | 2026-01-17 | 2026-01-26 |  |  |  |
| ENG-MT-TE-S-100 |  | Material Submittal for Ducts of Telecom Network | 9.25d | 2026-01-17 A | 2026-01-26 A | MS-CS-PS | 100% |  |
|  | 3 | **Manholes Works** |  | 2026-01-17 | 2026-01-26 |  |  |  |
| ENG-MT-TE-S-110 |  | Material Submittal for Manholes of Telecom Network | 9.25d | 2026-01-17 A | 2026-01-26 A | MS-CS-PS | 100% |  |
|  | 2 | **CCTV System Wroks** |  | 2026-01-17 | 2026-01-26 |  |  |  |
| ENG-MT-CTV-S-100 |  | Material Submittal for Civil and Finishes Works of CCTV Complete System | 9.25d | 2026-01-17 A | 2026-01-26 A | MS-CS-PS | 100% |  |
|  | MA | **Approval of Material** |  | 2026-01-17 | 2026-01-26 |  |  |  |
|  | 1 | **Ducts Works** |  | 2026-01-17 | 2026-01-26 |  |  |  |
| ENG-MT-TE-A-100 |  | Material Approval for Ducts of Telecom Network | 0d | 2026-01-17 A | 2026-01-26 A | ENG-MT-TE-S-100 SS, MS-CS-PS, ENG-MT-TE-S-100 FF | 100% |  |
|  | 3 | **Manholes Works** |  | 2026-01-17 | 2026-01-26 |  |  |  |
| ENG-MT-TE-A-110 |  | Material Approval for Manholes of Telecom Network | 0d | 2026-01-17 A | 2026-01-26 A | ENG-MT-TE-S-110 SS, MS-CS-PS, ENG-MT-TE-S-110 FF | 100% |  |
|  | 2 | **CCTV System Wroks** |  | 2026-01-17 | 2026-01-26 |  |  |  |
| ENG-MT-CTV-A-100 |  | Material Approval for Civil and Finishes Works of CCTV Complete System | 0d | 2026-01-17 A | 2026-01-26 A | ENG-MT-CTV-S-100 SS, MS-CS-PS, ENG-MT-CTV-S-100 FF | 100% |  |
|  | 1 | **Superstructure Works** |  | 2026-01-15 | 2026-10-20 |  |  |  |
|  | SL1111 | **Pump Stations** |  | 2026-01-17 | 2026-01-28 |  |  |  |
|  | 1 | **Submission of Material** |  | 2026-01-17 | 2026-01-26 |  |  |  |
| ENG-MT-PS-CV-S-140 |  | Material Submittal for Civil Works for Sewage Pump Stations | 9.25d | 2026-01-17 A | 2026-01-26 A | MS-CS-PS SS | 100% |  |
|  | 2 | **Approval of Material** |  | 2026-01-18 | 2026-01-28 |  |  |  |
| ENG-MT-PS-CV-A-150 |  | Material Approval for Civil Works for Sewage Pump Stations | 0d | 2026-01-18 A | 2026-01-28 A | ENG-MT-PS-CV-S-140 | 100% |  |
|  | SL | **Lift Station** |  | 2026-01-17 | 2026-01-28 |  |  |  |
|  | 1 | **Submission of Material** |  | 2026-01-17 | 2026-01-27 |  |  |  |
| ENG-MT-SLS-CV-S-100 |  | Material Submittal for Civil Works for Lift Stations | 10.25d | 2026-01-17 A | 2026-01-27 A | MS-CS-PS SS | 100% |  |
|  | 2 | **Approval of Material** |  | 2026-01-17 | 2026-01-28 |  |  |  |
| ENG-MT-SLS-CV-A-110 |  | Material Approval for Civil Works for Sewage Lift Stations | 0d | 2026-01-17 A | 2026-01-28 A | ENG-MT-SLS-CV-S-100 | 100% |  |
|  | TE | **Storm Drainage Ponds** |  | 2026-02-08 | 2026-02-17 |  |  |  |
|  | 1 | **Submission of Material** |  | 2026-02-08 | 2026-02-10 |  |  |  |
| ENG-MT-DPO-CV-S-100 |  | Material Submittal for Civil Works for Storm Drainage Ponds | 3.25d | 2026-02-08 A | 2026-02-10 A | ENG-MT-PS-CV-A-150 SS | 100% |  |
|  | 2 | **Approval of Material** |  | 2026-02-10 | 2026-02-17 |  |  |  |
| ENG-MT-DPO-CV-A-110 |  | Material Approval for Civil Works for Storm Drainage Ponds | 0d | 2026-02-10 A | 2026-02-17 A | ENG-MT-DPO-CV-S-100 | 100% |  |
|  | SL111 | **Storage Tank (TSE)** |  | 2026-02-04 | 2026-10-20 |  |  |  |
|  | 1 | **Submission of Material** |  | 2026-10-13 | 2026-10-20 |  |  |  |
| ENG-MT-TSE-CV-S-130 |  | Material Submittal for Civil Works for Storage Tank (TSE) | 7d | 2026-10-13 | 2026-10-20 |  |  | -9d |
|  | 2 | **Approval of Material** |  | 2026-02-04 | 2026-02-09 |  |  |  |
| ENG-MT-TSE-CV-A-140 |  | Material Approval for Civil Works for Storage Tank (TSE) | 0d | 2026-02-04 A | 2026-02-09 A |  | 100% |  |
|  | SL11 | **Gaurd Room** |  | 2026-02-09 | 2026-02-17 |  |  |  |
|  | 1 | **Submission of Material** |  | 2026-02-09 | 2026-02-10 |  |  |  |
| ENG-MT-GR-CV-S-120 |  | Material Submittal for Civil Works for Gaurd Room | 2.25d | 2026-02-09 A | 2026-02-10 A | MS-CS-PS SS | 100% |  |
|  | 2 | **Approval of Material** |  | 2026-02-10 | 2026-02-17 |  |  |  |
| ENG-MT-GR-CV-A-130 |  | Material Approval for Civil Works for Gaurd Room | 0d | 2026-02-10 A | 2026-02-17 A | ENG-MT-GR-CV-S-120 | 100% |  |
|  | SL1 | **Fence** |  | 2026-01-15 | 2026-03-03 |  |  |  |
|  | 1 | **Submission of Material** |  | 2026-01-15 | 2026-02-28 |  |  |  |
| ENG-MT-FE-CV-S-110 |  | Material Submittal for Civil Works for Fence | 35.12d | 2026-01-15 A | 2026-02-28 A | MS-CS-PS SS | 100% |  |
|  | 2 | **Approval of Material** |  | 2026-01-22 | 2026-03-03 |  |  |  |
| ENG-MT-FE-CV-A-120 |  | Material Approval for Civil Works for Fence | 0d | 2026-01-22 A | 2026-03-03 A | ENG-MT-FE-CV-S-110 | 100% |  |

| ID | WBS | Task | Duration | Start | Finish | Predecessors | Complete | Total float |
| --- | --- | --- | --- | --- | --- | --- | --- | --- |
|  | SL12 | **Softscape and Planting Works** |  | 2026-02-28 | 2026-03-08 |  |  |  |
|  | 1 | **Submission of Material** |  | 2026-02-28 | 2026-03-01 |  |  |  |
| ENG-MT-PL-CV-S-150 |  | Material Submittal for Softscape and Planting Works | 1.25d | 2026-02-28 A | 2026-03-01 A | MS-CS-PS | 100% |  |
|  | 2 | **Approval of Material** |  | 2026-03-01 | 2026-03-08 |  |  |  |
| ENG-MT-PL-CV-A-160 |  | Material Approval for Softscape and Planting Works | 0d | 2026-03-01 A | 2026-03-08 A | ENG-MT-PL-CV-S-150 SS, ENG-MT-PL-CV-S-150 FF | 100% |  |
|  | 1 | **Long Lead Time Items** |  | 2026-01-15 | 2026-10-21 |  |  |  |
|  | 1 | **Infrastructure Networks** |  | 2026-01-15 | 2026-01-22 |  |  |  |
|  | 2 | **CCTV System Wroks of Telecom Network** |  | 2026-01-15 | 2026-01-22 |  |  |  |
|  | 1 | **Submission of Material** |  | 2026-01-15 | 2026-01-18 |  |  |  |
| ENG-MT-CTV-S-110 |  | Material Submittal for Low Current Works of CCTV Complete System with All Accessories | 3.25d | 2026-01-15 A | 2026-01-18 A | ENG-SH-RD-S-100 | 100% |  |
|  | 2 | **Approval of Material** |  | 2026-01-18 | 2026-01-22 |  |  |  |
| ENG-MT-CTV-A-110 |  | Material Approval for Low Current Works of CCTV Complete System with All Accessories | 0d | 2026-01-18 A | 2026-01-22 A | ENG-MT-CTV-S-110 SS, ENG-MT-CTV-S-110 FF | 100% |  |
|  | 2 | **Superstructure Works** |  | 2026-10-13 | 2026-10-21 |  |  |  |
|  | SL | **Pump Stations** |  | 2026-10-13 | 2026-10-21 |  |  |  |
|  | 1 | **Submission of Material** |  | 2026-10-13 | 2026-10-20 |  |  |  |
| ENG-MT-SPS-MC-S-100 |  | Material Submittal for Electromechanical Works for Pump Stations | 7d | 2026-10-13 | 2026-10-20 | ENG-SH-SPS-S-150_R SS, ENG-SH-SPS-S-150_R FF |  | -34d |
|  | 2 | **Approval of Material** |  | 2026-10-13 | 2026-10-21 |  |  |  |
| ENG-MT-SPS-MC-A-110 |  | Material Approval for Electromechanical Works for Pump Stations | 8d | 2026-10-13 | 2026-10-21 | ENG-MT-SPS-MC-S-100 SS, ENG-MT-SPS-MC-S-100 FF |  | -34d |
|  | SL1 | **Storage Tank (TSE)** |  | 2026-10-13 | 2026-10-21 |  |  |  |
|  | 1 | **Submission of Material** |  | 2026-10-13 | 2026-10-20 |  |  |  |
| ENG-MT-TSE-MC-S-110 |  | Material Submittal for Electromechanical Works for Storage Tank (TSE) | 7d | 2026-10-13 | 2026-10-20 |  |  | -64d |
|  | 2 | **Approval of Material** |  | 2026-10-13 | 2026-10-21 |  |  |  |
| ENG-MT-TSE-MC-A-120 |  | Material Approval for Electromechanical Works for Storage Tank (TSE) | 8d | 2026-10-13 | 2026-10-21 | ENG-MT-TSE-MC-S-110 SS, ENG-MT-TSE-MC-S-110 FF |  | -64d |
|  | PROC | **Procurement Cycle** |  | 2026-01-28 | 2027-04-24 |  |  |  |
|  | NLL | **Short Lead Time Items** |  | 2026-01-28 | 2027-04-05 |  |  |  |
|  | INF | **Infrastructure Networks** |  | 2026-01-28 | 2027-04-05 |  |  |  |
|  | RD | **Road Works** |  | 2026-06-23 | 2026-10-13 |  |  |  |
|  | PO | **Issuance of Purchase Orders** |  | 2026-06-23 | 2026-07-30 |  |  |  |
|  | 1 | **Road Works** |  | 2026-06-23 | 2026-07-22 |  |  |  |
| PRO-RD-PO-100 |  | Issuance of Purchase Order for Subgrade of Road Works | 7d | 2026-06-23 A | 2026-06-30 A | ENG-MT-RD-A-100 | 100% |  |
| PRO-RD-PO-110 |  | Issuance of Purchase Order for Aggregate Base Course of Road Works | 7d | 2026-06-23 A | 2026-06-30 A | ENG-MT-RD-A-110 | 100% |  |
| PRO-RD-PO-120 |  | Issuance of Purchase Order for Prime Coat of Road Works | 7d | 2026-07-15 A | 2026-07-22 A | ENG-MT-RD-A-120 | 100% |  |
| PRO-RD-PO-130 |  | Issuance of Purchase Order for Bituminous Base & Wearing Courses of Road Works | 7d | 2026-07-15 A | 2026-07-22 A | ENG-MT-RD-A-130 | 100% |  |
|  | 2 | **Pavement Works** |  | 2026-07-23 | 2026-07-30 |  |  |  |
| PRO-RD-PO-140 |  | Issuance of Purchase Order for Interlock Tiles of Landscaping | 7d | 2026-07-23 A | 2026-07-30 A | ENG-MT-RD-A-140, PRO-RD-PO-130 | 100% |  |
| PRO-RD-PO-150 |  | Issuance of Purchase Order for Curbstones of Landscaping | 7d | 2026-07-23 A | 2026-07-30 A | ENG-MT-RD-A-150, PRO-RD-PO-130 | 100% |  |
|  | 3 | **Traffic Signs Boards and Roads Marking** |  | 2026-07-05 | 2026-07-21 |  |  |  |
| PRO-RD-PO-160 |  | Issuance of Purchase Order for Traffic Signs Boards of Road Works | 7d | 2026-07-05 A | 2026-07-13 A | ENG-MT-TS-A-100, ENG-SH-TSB-A-100 | 100% |  |
| PRO-RD-PO-170 |  | Issuance of Purchase Order for Road Markings of Road Works | 7d | 2026-07-13 A | 2026-07-21 A | ENG-MT-TS-A-110, ENG-MT-TS-S-110, ENG-SH-MRK-A-110 | 100% |  |
|  | MF | **Manufacturing of Material** |  | 2026-07-01 | 2026-08-18 |  |  |  |
|  | 1 | **Road Works** |  | 2026-07-01 | 2026-08-18 |  |  |  |
| PRO-RD-MF-100 |  | Manufacturing of Subgrade for Road Works | 110d | 2026-07-01 A | 2026-08-18 A | PRO-RD-PO-100 | 100% |  |
| PRO-RD-MF-110 |  | Manufacturing of Aggregate Base Course for Road Works | 120d | 2026-07-01 A | 2026-08-18 A | PRO-RD-PO-110 | 100% |  |
| PRO-RD-MF-120 |  | Manufacturing of Prime Coat for Road Works | 120d | 2026-07-23 A | 2026-08-18 A | PRO-RD-PO-120 | 100% |  |
| PRO-RD-MF-130 |  | Manufacturing of Bituminous Base & Wearing Courses for Road Works | 120d | 2026-07-23 A | 2026-08-18 A | PRO-RD-PO-130 | 100% |  |
|  | 2 | **Pavement Works** |  | 2026-07-31 | 2026-08-18 |  |  |  |
| PRO-RD-MF-140 |  | Manufacturing of Interlock Tiles for Landscaping | 90d | 2026-07-31 A | 2026-08-18 A | PRO-RD-PO-140 | 100% |  |
| PRO-RD-MF-150 |  | Manufacturing of Curbstones for Landscaping | 90d | 2026-07-31 A | 2026-08-18 A | PRO-RD-PO-150 | 100% |  |
|  | 3 | **Traffic Signs Boards and Roads Marking** |  | 2026-07-13 | 2026-08-18 |  |  |  |
| PRO-RD-MF-160 |  | Manufacturing of Traffic Signs Boards for Road Works | 100d | 2026-07-13 A | 2026-08-18 A | PRO-RD-PO-160 | 100% |  |
| PRO-RD-MF-170 |  | Manufacturing of Road Markings for Road Works | 105d | 2026-07-21 A | 2026-08-18 A | PRO-RD-PO-170 | 100% |  |
|  | 1DL | **1st Material Delivery & Site Inspection** |  | 2026-08-02 | 2026-09-01 |  |  |  |
|  | 1 | **Road Works** |  | 2026-08-02 | 2026-09-01 |  |  |  |
| PRO-RD-1DL-100 |  | 1ST Material Delivery for Subgrade of Road Works | 12d | 2026-08-02 A | 2026-09-01 A | PRO-RD-MF-100 | 100% |  |
| PRO-RD-1DL-110 |  | 1ST Material Delivery for Aggregate Base Course of Road Works | 12d | 2026-08-02 A | 2026-09-01 A | PRO-RD-MF-110 | 100% |  |
| PRO-RD-1DL-120 |  | 1ST Material Delivery for Prime Coat of Road Works | 12d | 2026-08-02 A | 2026-09-01 A | PRO-RD-MF-120 | 100% |  |
| PRO-RD-1DL-130 |  | 1ST Material Delivery for Bituminous Base & Wearing Courses of Road Works | 12d | 2026-08-02 A | 2026-09-01 A | PRO-RD-MF-130 | 100% |  |
|  | 2 | **Pavement Works** |  | 2026-08-02 | 2026-09-01 |  |  |  |
| PRO-RD-1DL-140 |  | 1ST Material Delivery for Interlock Tiles of Landscaping | 12d | 2026-08-02 A | 2026-09-01 A | PRO-RD-MF-140 | 100% |  |
| PRO-RD-1DL-150 |  | 1ST Material Delivery for Curbstones of Landscaping | 12d | 2026-08-02 A | 2026-09-01 A | PRO-RD-MF-150 | 100% |  |
|  | 3 | **Traffic Signs Boards and Roads Marking** |  | 2026-08-02 | 2026-09-01 |  |  |  |
| PRO-RD-1DL-160 |  | 1ST Material Delivery for Traffic Signs Boards of Road Works | 15d | 2026-08-02 A | 2026-09-01 A | PRO-RD-MF-160 | 100% |  |
| PRO-RD-1DL-170 |  | 1ST Material Delivery for Road Markings of Road Works | 15d | 2026-08-02 A | 2026-09-01 A | PRO-RD-MF-170, PRO-RD-1DL-160 | 100% |  |
|  | DL | **Material Delivery & Site Inspection** |  | 2026-08-02 | 2026-10-13 |  |  |  |
|  | 1 | **Pre-Bituminous Construction** |  | 2026-08-02 | 2026-10-13 |  |  |  |
| PRO-R25-RD-DL-100 |  | Material Delivery & Site Inspection for Subgrade of Road Works | 0d | 2026-08-02 A | 2026-10-13 | PRO-RD-MF-100, PRO-RD-1DL-100 | 30% | 44.5d |
| PRO-R25-RD-DL-110 |  | Material Delivery & Site Inspection for Aggregate Base Course of Road Works | 0d | 2026-10-13 | 2026-10-13 | PRO-RD-MF-110 SS, PRO-RD-MF-110, PRO-RD-1DL-110 |  | 58d |
|  | 4 | **Bituminous Construction** |  | 2026-10-13 | 2026-10-13 |  |  |  |
| PRO-R25-RD-DL-160 |  | Material Delivery & Site Inspection for Prime Coat of Road Works | 0d | 2026-10-13 | 2026-10-13 | PRO-RD-MF-120, PRO-RD-MF-120 FF, PRO-RD-1DL-120 |  | 73d |
| PRO-R25-RD-DL-170 |  | Material Delivery & Site Inspection for Bituminous Base & Wearing Courses of Road Works | 0d | 2026-10-13 | 2026-10-13 | PRO-RD-MF-130, PRO-RD-1DL-130 |  | 80d |

| ID | WBS | Task | Duration | Start | Finish | Predecessors | Complete | Total float |
| --- | --- | --- | --- | --- | --- | --- | --- | --- |
|  | 2 | **Pavement Works** |  | 2026-10-13 | 2026-10-13 |  |  |  |
| PRO-R25-RD-DL-120 |  | Material Delivery & Site Inspection of Interlock Tiles for Landscaping | 0d | 2026-10-13 | 2026-10-13 | PRO-RD-MF-140 SS, PRO-RD-MF-140, PRO-RD-1DL-140 |  | 71d |
| PRO-R25-RD-DL-130 |  | Material Delivery & Site Inspection of Curbstones for Landscaping | 0d | 2026-10-13 | 2026-10-13 | PRO-RD-MF-150, PRO-RD-1DL-150 |  | 58.8d |
|  | 3 | **Traffic Signs Boards and Roads Marking** |  | 2026-10-13 | 2026-10-13 |  |  |  |
| PRO-R25-RD-DL-140 |  | Material Delivery & Site Inspection of Traffic Signs Boards For Road Works | 0d | 2026-10-13 | 2026-10-13 | PRO-RD-MF-160, PRO-RD-1DL-160 |  | 97d |
| PRO-R25-RD-DL-150 |  | Material Delivery & Site Inspection of Road Markings For Road Works | 0d | 2026-10-13 | 2026-10-13 | PRO-RD-MF-170, PRO-RD-1DL-170 |  | 90d |
|  | IR1 | **Softscape and Planting Works** |  | 2026-10-13 | 2027-02-14 |  |  |  |
|  | PO | **Issuance of Purchase Orders** |  | 2026-10-13 | 2026-10-19 |  |  |  |
|  | 1 | **Main Line Pipes** |  | 2026-10-13 | 2026-10-19 |  |  |  |
| PRO-IR-PO-140 |  | Issuance of Purchase Order for Softscape and Planting Works | 6d | 2026-10-13 | 2026-10-19 | ENG-MT-IR-ML-A-140 |  | -44.75d |
| PRO-IR-PO-150 |  | Issuance of Purchase Order for Site Furnishings (Seating Bench,Stone Boulders and Gravel) | 6d | 2026-10-13 | 2026-10-19 | ENG-MT-IR-ML-A-150 |  | 6d |
|  | MF | **Manufacturing of Material** |  | 2026-10-20 | 2027-01-17 |  |  |  |
|  | 1 | **Main Line Pipes** |  | 2026-10-20 | 2027-01-17 |  |  |  |
| PRO-IR-MF-140 |  | Manufacturing of Softscape and Planting Works | 90d | 2026-10-20 | 2027-01-17 | PRO-IR-PO-140 |  | -54d |
| PRO-IR-MF-150 |  | Manufacturing of Valves for Site Furnishings (Seating Bench,Stone Boulders and Gravel) | 90d | 2026-10-20 | 2027-01-17 | PRO-IR-PO-150 |  | 7d |
|  | 1DL | **1st Material Delivery & Site Inspection** |  | 2027-01-18 | 2027-01-24 |  |  |  |
|  | 1 | **Main Line Pipes** |  | 2027-01-18 | 2027-01-24 |  |  |  |
| PRO-IR-1DL-140 |  | 1ST Material Delivery for Softscape and Planting Works | 6d | 2027-01-18 | 2027-01-24 | PRO-IR-MF-140 |  | -46d |
| PRO-IR-1DL-150 |  | 1ST Material Delivery for Site Furnishings (Seating Bench,Stone Boulders and Gravel) | 6d | 2027-01-18 | 2027-01-24 | PRO-IR-MF-150 |  | 6d |
|  | DL | **Material Delivery & Site Inspection** |  | 2027-01-25 | 2027-02-14 |  |  |  |
|  | 1 | **Main Line Pipes** |  | 2027-01-25 | 2027-02-14 |  |  |  |
| PRO-R25-IR-DL-140 |  | Material Delivery & Site Inspection of Softscape and Planting Works | 12d | 2027-01-25 | 2027-02-07 | PRO-IR-1DL-140 |  | -46d |
| PRO-R25-IR-DL-150 |  | Material Delivery & Site Inspection of Site Furnishings (Seating Bench,Stone Boulders and Gravel) | 16d | 2027-01-25 | 2027-02-14 | PRO-IR-1DL-150 |  | 6d |
|  | SW | **Sewage Network** |  | 2026-03-03 | 2027-04-05 |  |  |  |
|  | PO | **Issuance of Purchase Orders** |  | 2026-03-03 | 2026-03-03 |  |  |  |
|  | 1 | **Main Line Sections** |  | 2026-03-03 | 2026-03-03 |  |  |  |
| PRO-SW-PO-100 |  | Issuance of Purchase Order for Main Line Pipes of Sewage Network | 6d | 2026-03-03 A | 2026-03-03 A | ENG-MT-SW-ML-A-110 | 100% |  |
| PRO-SW-PO-110 |  | Issuance of Purchase Order for Manhole of Sewage Network | 6d | 2026-03-03 A | 2026-03-03 A | ENG-MT-SW-ML-A-100 | 100% |  |
|  | 3 | **Testing and Finishes** |  | 2026-03-03 | 2026-03-03 |  |  |  |
| PRO-SW-PO-120 |  | Issuance of Purchase Order for Manhole Covers of Sewage Network | 0.75d | 2026-03-03 A | 2026-03-03 A | ENG-MT-SW-TF-A-100 | 100% |  |
|  | MF | **Manufacturing of Material** |  | 2026-06-30 | 2027-02-19 |  |  |  |
|  | 1 | **Main Line Sections** |  | 2026-06-30 | 2026-08-08 |  |  |  |
| PRO-SW-MF-100 |  | Manufacturing of Main Line Pipes for Sewage Network | 20d | 2026-06-30 A | 2026-07-19 A | PRO-SW-PO-100 | 100% |  |
| PRO-SW-MF-110 |  | Manufacturing of Manholes for Sewage Network | 40d | 2026-06-30 A | 2026-08-08 A | PRO-SW-PO-110 | 100% |  |
|  | 3 | **Testing and Finishes** |  | 2026-10-13 | 2027-02-19 |  |  |  |
| PRO-SW-MF-120 |  | Manufacturing of Manhole Covers for Sewage Network | 130d | 2026-10-13 | 2027-02-19 | PRO-SW-PO-120 |  | -74d |
|  | 1DL | **1st Material Delivery & Site Inspection** |  | 2026-07-20 | 2027-02-28 |  |  |  |
|  | 1 | **Main Line Sections** |  | 2026-07-20 | 2026-08-15 |  |  |  |
| PRO-SW-1DL-100 |  | 1ST Material Delivery for Main Line Pipes of Sewage Network | 6d | 2026-07-20 A | 2026-07-26 A | PRO-SW-MF-100 | 100% |  |
| PRO-SW-1DL-110 |  | 1ST Material Delivery for Manholes of Sewage Network | 6d | 2026-08-09 A | 2026-08-15 A | PRO-SW-MF-110 | 100% |  |
|  | 3 | **Testing and Finishes** |  | 2027-02-20 | 2027-02-28 |  |  |  |
| PRO-SW-1DL-120 |  | 1ST Material Delivery for Manholes Covers of Sewage Network | 6d | 2027-02-20 | 2027-02-28 | PRO-SW-MF-120 |  | -60.5d |
|  | DL | **Material Delivery & Site Inspection** |  | 2026-07-27 | 2027-04-05 |  |  |  |
|  | 1 | **Main Line Sections** |  | 2026-07-27 | 2026-10-13 |  |  |  |
| PRO-R25-SW-DL-100 |  | Material Delivery & Site Inspection of Main Line Pipes for Sewage Network | 0d | 2026-07-27 A | 2026-07-27 A | PRO-SW-1DL-100, PRO-SW-MF-100 SS, PRO-SW-MF-100 FF | 100% |  |
| PRO-R25-SW-DL-110 |  | Material Delivery & Site Inspection of Manholes for Sewage Network | 0d | 2026-09-13 A | 2026-10-13 | PRO-SW-1DL-110 SS, PRO-SW-MF-110 SS, PRO-SW-MF-110 FF | 30% | -30.5d |
|  | 3 | **Testing and Finishes** |  | 2027-02-28 | 2027-04-05 |  |  |  |
| PRO-R25-SW-DL-120 |  | Material Delivery & Site Inspection of Manholes Covers for Sewage Network | 26d | 2027-02-28 | 2027-04-05 | PRO-SW-1DL-120, PRO-SW-MF-120 SS, PRO-SW-MF-120 FF |  | -60.5d |
|  | SD | **Storm Drainage Network** |  | 2026-03-03 | 2027-03-06 |  |  |  |
|  | MF | **Manufacturing of Material** |  | 2026-05-03 | 2027-01-20 |  |  |  |
|  | 1 | **Main Line Sections** |  | 2026-05-03 | 2026-05-17 |  |  |  |
| PRO-SD-MF-100 |  | Manufacturing of Materials for Manholes of Storm Drainage Network | 40d | 2026-05-03 A | 2026-05-17 A | PRO-SD-PO-100 | 100% |  |
| PRO-SD-MF-110 |  | Manufacturing of Materials for Main Line Pipes of Storm Drainage Network | 8d | 2026-05-03 A | 2026-05-17 A | PRO-SD-PO-110 | 100% |  |
|  | 2 | **Catch Basin Sections** |  | 2026-05-03 | 2026-05-17 |  |  |  |
| PRO-SD-MF-130 |  | Manufacturing of Materials for Catch Basins of Storm Drainage Network | 20d | 2026-05-03 A | 2026-05-17 A | PRO-SD-PO-130 | 100% |  |
| PRO-SD-MF-150 |  | Manufacturing of Materials for Catch Basin Pipes of Storm Drainage Network | 20d | 2026-05-03 A | 2026-05-17 A | PRO-SD-PO-150 | 100% |  |
|  | 3 | **Testing and Finishes** |  | 2026-10-13 | 2027-01-20 |  |  |  |
| PRO-SD-MF-120 |  | Manufacturing of Materials for Manhole Covers of Storm Drainage Network | 100d | 2026-10-13 | 2027-01-20 | PRO-SD-PO-120 |  | -33d |
| PRO-SD-MF-140 |  | Manufacturing of Materials for Catch Basin Covers of Storm Drainage Network | 100d | 2026-10-13 | 2027-01-20 | PRO-SD-PO-140 |  | -38d |
|  | PO | **Issuance of Purchase Orders** |  | 2026-03-03 | 2026-03-03 |  |  |  |
|  | 1 | **Main Line Sections** |  | 2026-03-03 | 2026-03-03 |  |  |  |
| PRO-SD-PO-100 |  | Issuance of Purchase Order for Manholes of Storm Drainage Network | 6.2d | 2026-03-03 A | 2026-03-03 A | ENG-MT-SD-ML-A-100 | 100% |  |
| PRO-SD-PO-110 |  | Issuance of Purchase Order for Main Line Pipes of Storm Drainage Network | 3d | 2026-03-03 A | 2026-03-03 A | ENG-MT-SD-ML-A-110, MS-CS-PS SS, ENG-SH-SD-CB-S-100_R | 100% |  |
|  | 2 | **Catch Basin Sections** |  | 2026-03-03 | 2026-03-03 |  |  |  |
| PRO-SD-PO-130 |  | Issuance of Purchase Order for Catch Basins of Storm Drainage Network | 6d | 2026-03-03 A | 2026-03-03 A | ENG-MT-SD-CB-A-100 | 100% |  |
| PRO-SD-PO-150 |  | Issuance of Purchase Order for Catch Basin Pipes of Storm Drainage Network | 6d | 2026-03-03 A | 2026-03-03 A | ENG-MT-SD-CB-A-110 | 100% |  |
|  | 3 | **Testing and Finishes** |  | 2026-03-03 | 2026-03-03 |  |  |  |
| PRO-SD-PO-120 |  | Issuance of Purchase Order for Manhole Covers of Storm Drainage Network | 6d | 2026-03-03 A | 2026-03-03 A | ENG-MT-SD-TF-A-100 | 100% |  |
| PRO-SD-PO-140 |  | Issuance of Purchase Order for Catch Basin Covers of Storm Drainage Network | 6d | 2026-03-03 A | 2026-03-03 A | ENG-MT-SD-TF-A-110 | 100% |  |
|  | 1DL | **1st Material Delivery & Site Inspection** |  | 2026-09-13 | 2027-01-27 |  |  |  |

| ID | WBS | Task | Duration | Start | Finish | Predecessors | Complete | Total float |
| --- | --- | --- | --- | --- | --- | --- | --- | --- |
|  | 1 | **Main Line Sections** |  | 2026-09-13 | 2026-09-27 |  |  |  |
| PRO-SD-1DL-110 |  | 1ST Material Delivery for Main Line Pipes of Storm Drainage Network | 6d | 2026-09-13 A | 2026-09-27 A | PRO-SD-MF-110 | 100% |  |
|  | 2 | **Catch Basin Sections** |  | 2026-09-13 | 2026-10-19 |  |  |  |
| PRO-SD-1DL-120 |  | 1ST Material Delivery for Catch Basin Pipes of Storm Drainage Network | 6d | 2026-09-13 A | 2026-10-19 | PRO-SD-MF-150 | 40% | -38.5d |
| PRO-SD-1DL-130 |  | 1ST Material Delivery for Catch Basins of Storm Drainage Network | 6d | 2026-09-13 A | 2026-10-19 | PRO-SD-MF-130 | 40% | -38.5d |
|  | 3 | **Testing and Finishes** |  | 2027-01-21 | 2027-01-27 |  |  |  |
| PRO-SD-1DL-140 |  | 1ST Material Delivery for Manholes Covers of Storm Drainage Network | 6d | 2027-01-21 | 2027-01-27 | PRO-SD-MF-120 |  | -29d |
| PRO-SD-1DL-150 |  | 1ST Material Delivery for Catch Basin Covers of Storm Drainage Network | 6d | 2027-01-21 | 2027-01-27 | PRO-SD-MF-140 |  | -33d |
|  | DL | **Material Delivery & Site Inspection** |  | 2026-08-02 | 2027-03-06 |  |  |  |
|  | 1 | **Main Line Sections** |  | 2026-08-02 | 2026-10-13 |  |  |  |
| PRO-R25-SD-DL-100 |  | Material Delivery & Site Inspection of Manholes of Storm Drainage Network | 0d | 2026-08-02 A | 2026-10-13 | PRO-SD-MF-100 FF | 40% | -47.5d |
| PRO-R25-SD-DL-120 |  | Material Delivery & Site Inspection of Main Line Pipes of Storm Drainage Network | 0d | 2026-08-02 A | 2026-09-20 A | PRO-SD-1DL-110 FF, PRO-SD-MF-110 FF | 100% |  |
|  | 2 | **Catch Basin Sections** |  | 2026-08-02 | 2026-10-20 |  |  |  |
| PRO-R25-SD-DL-110 |  | Material Delivery & Site Inspection of Catch Basin Pipes for Storm Drainage Network | 0d | 2026-08-02 A | 2026-10-20 | PRO-SD-MF-150 FF, PRO-SD-1DL-120 FF | 40% | -28.5d |
| PRO-R25-SD-DL-130 |  | Material Delivery & Site Inspection of Catch Basins for Storm Drainage Network | 0d | 2026-08-02 A | 2026-10-20 | PRO-SD-MF-130 FF, PRO-SD-1DL-130 FF | 40% | -28.5d |
|  | 3 | **Testing and Finishes** |  | 2027-01-28 | 2027-03-06 |  |  |  |
| PRO-R25-SD-DL-140 |  | Material Delivery & Site Inspection of Manholes Covers for Storm Drainage Network | 26d | 2027-01-28 | 2027-03-06 | PRO-SD-1DL-140, PRO-SD-MF-120 |  | -29d |
| PRO-R25-SD-DL-150 |  | Material Delivery & Site Inspection of Catch Basin Covers for Storm Drainage Network | 20d | 2027-01-28 | 2027-02-24 | PRO-SD-1DL-150, PRO-SD-MF-140 |  | -33d |
|  | PW | **Potable Water Network** |  | 2026-04-01 | 2027-03-30 |  |  |  |
|  | PO | **Issuance of Purchase Orders** |  | 2026-04-02 | 2026-10-24 |  |  |  |
|  | 1 | **Main Line Sections** |  | 2026-04-02 | 2026-10-19 |  |  |  |
| PRO-PW-PO-100 |  | Issuance of Purchase Order for Main Line Pipes of Potable Water Network(Completed) | 60.5d | 2026-04-02 A | 2026-06-15 A | ENG-MT-PW-ML-A-100 | 100% |  |
| PRO-PW-PO-100_R |  | Issuance of Purchase Order for Main Line Pipes of Potable Water Network(Remaining) | 5d | 2026-04-02 A | 2026-06-15 A | ENG-MT-PW-ML-A-100 FF, PRO-PW-PO-100 | 100% |  |
| PRO-PW-PO-110 |  | Issuance of Purchase Order for Valves of Potable Water Network | 6d | 2026-10-13 | 2026-10-19 | ENG-MT-PW-ML-A-110 |  | -62.25d |
|  | 3 | **Fire Hydrant** |  | 2026-10-13 | 2026-10-24 |  |  |  |
| PRO-PW-PO-120 |  | Issuance of Purchase Order for Fire Hydrants of Potable Water Network | 10d | 2026-10-13 | 2026-10-24 | ENG-MT-PW-FH-A-100 |  | -47.25d |
|  | 4 | **Testing and Finishes** |  | 2026-10-13 | 2026-10-24 |  |  |  |
| PRO-PW-PO-130 |  | Issuance of Purchase Order for Surface Box of Potable Water Network | 10d | 2026-10-13 | 2026-10-24 | ENG-MT-PW-TF-A-100 |  | -51.75d |
|  | MF | **Manufacturing of Material** |  | 2026-04-04 | 2027-02-11 |  |  |  |
|  | 1 | **Main Line Sections** |  | 2026-04-04 | 2027-01-17 |  |  |  |
| PRO-PW-MF-100 |  | Manufacturing of Main Line Pipes for Potable Water Network(Completed) | 30d | 2026-04-04 A | 2026-06-15 A | PRO-PW-PO-100 SS | 100% |  |
| PRO-PW-MF-100_R |  | Manufacturing of Main Line Pipes for Potable Water Network(Remaining) | 96.5d | 2026-07-01 A | 2026-07-10 A | PRO-PW-PO-100_R, PRO-PW-MF-100 | 100% |  |
| PRO-PW-MF-110 |  | Manufacturing of Valves for Potable Water Network | 90d | 2026-10-20 | 2027-01-17 | PRO-PW-PO-110, PRO-R25-PW-DL-120 FF |  | -74.5d |
|  | 3 | **Fire Hydrant** |  | 2026-10-25 | 2026-12-23 |  |  |  |
| PRO-PW-MF-120 |  | Manufacturing of Fire Hydrants for Potable Water Network | 60d | 2026-10-25 | 2026-12-23 | PRO-PW-PO-120 |  | -56.5d |
|  | 4 | **Testing and Finishes** |  | 2026-10-25 | 2027-02-11 |  |  |  |
| PRO-PW-MF-130 |  | Manufacturing for Surface Box of Potable Water Network | 110d | 2026-10-25 | 2027-02-11 | PRO-PW-PO-130 |  | -62d |
|  | 1DL | **1st Material Delivery & Site Inspection** |  | 2026-04-05 | 2027-02-21 |  |  |  |
|  | 1 | **Main Line Sections** |  | 2026-04-05 | 2027-01-24 |  |  |  |
| PRO-PW-1DL-100 |  | 1ST Material Delivery for Main Line Pipes of Potable Water Network(Completed) | 58.5d | 2026-04-05 A | 2026-06-15 A | PRO-PW-MF-100 SS | 100% |  |
| PRO-PW-1DL-100_R |  | 1ST Material Delivery for Main Line Pipes of Potable Water Network(Remaining) | 70.5d | 2026-07-30 A | 2027-01-03 | PRO-PW-MF-100_R SS, PRO-PW-1DL-100 | 90% | -71d |
| PRO-PW-1DL-110 |  | 1ST Material Delivery for Valves of Potable Water Network | 6d | 2027-01-18 | 2027-01-24 | PRO-PW-MF-110 |  | -63.5d |
|  | 3 | **Fire Hydrant** |  | 2026-12-24 | 2026-12-30 |  |  |  |
| PRO-PW-1DL-120 |  | 1ST Material Delivery for Fire Hydrants of Potable Water Network | 6d | 2026-12-24 | 2026-12-30 | PRO-PW-MF-120 |  | -48.5d |
|  | 4 | **Testing and Finishes** |  | 2027-02-13 | 2027-02-21 |  |  |  |
| PRO-PW-1DL-130 |  | 1ST Material Delivery for Finishes of Potable Water Network | 6d | 2027-02-13 | 2027-02-21 | PRO-PW-MF-130 |  | -53d |
|  | DL | **Material Delivery & Site Inspection** |  | 2026-04-01 | 2027-03-30 |  |  |  |
|  | 1 | **Main Line Sections** |  | 2026-04-01 | 2027-01-25 |  |  |  |
| PRO-R25-PW-DL-100 |  | Material Delivery & Site Inspection of Main Line Pipes for Potable Water Network(Completed) | 0d | 2026-04-01 A | 2026-06-15 A | PRO-PW-1DL-100 SS | 100% |  |
| PRO-R25-PW-DL-100_R |  | Material Delivery & Site Inspection of Main Line Pipes for Potable Water Network(Remaining) | 0d | 2026-08-02 A | 2027-01-03 | PRO-R25-PW-DL-100, PRO-PW-1DL-100_R FF | 90% | -71d |
| PRO-R25-PW-DL-110 |  | Material Delivery & Site Inspection of Valves for Potable Water Network | 0d | 2027-01-25 | 2027-01-25 | PRO-PW-1DL-110 |  | -57.5d |
|  | 3 | **Fire Hydrant** |  | 2026-12-31 | 2026-12-31 |  |  |  |
| PRO-R25-PW-DL-120 |  | Material Delivery & Site Inspection of Fire Hydrants for Potable Water Network | 0d | 2026-12-31 | 2026-12-31 | PRO-PW-1DL-120 |  | -48.5d |
|  | 4 | **Testing and Finishes** |  | 2027-02-22 | 2027-03-30 |  |  |  |
| PRO-R25-PW-DL-130 |  | Material Delivery & Site Inspection for Finishes of Potable Water Network | 26d | 2027-02-22 | 2027-03-30 | PRO-PW-1DL-130 |  | -53d |
|  | IR | **Irrigation Network** |  | 2026-01-28 | 2027-01-25 |  |  |  |
|  | PO | **Issuance of Purchase Orders** |  | 2026-01-28 | 2026-10-19 |  |  |  |
|  | 1 | **Main Line Pipes** |  | 2026-01-28 | 2026-10-19 |  |  |  |
| PRO-IR-PO-100 |  | Issuance of Purchase Order for Main Line Pipes of Irrigation Network(Completed) | 105.25d | 2026-01-28 A | 2026-06-15 A | ENG-MT-IR-ML-A-100 | 100% |  |
| PRO-IR-PO-100_R |  | Issuance of Purchase Order for Main Line Pipes of Irrigation Network(Remaining) | 3.3d | 2026-01-28 A | 2026-06-15 A | ENG-MT-IR-ML-A-100, PRO-IR-PO-100 | 100% |  |
| PRO-IR-PO-110 |  | Issuance of Purchase Order for Valves of Irrigation Network | 6d | 2026-10-13 | 2026-10-19 | ENG-MT-IR-ML-A-110 |  | -54.25d |
|  | MF | **Manufacturing of Material** |  | 2026-06-29 | 2027-01-17 |  |  |  |
|  | 1 | **Main Line Pipes** |  | 2026-06-29 | 2027-01-17 |  |  |  |
| PRO-IR-MF-100 |  | Manufacturing of Main Line Pipes for Irrigation Network | 86d | 2026-06-29 A | 2026-07-20 A | PRO-IR-PO-100_R | 100% |  |
| PRO-IR-MF-110 |  | Manufacturing of Valves for Irrigation Network | 90d | 2026-10-20 | 2027-01-17 | PRO-IR-PO-110 |  | -64.5d |
|  | 1DL | **1st Material Delivery & Site Inspection** |  | 2026-07-22 | 2027-01-24 |  |  |  |
|  | 1 | **Main Line Pipes** |  | 2026-07-22 | 2027-01-24 |  |  |  |
| PRO-IR-1DL-100 |  | 1ST Material Delivery for Main Line Pipes of Irrigation Network | 5d | 2026-07-22 A | 2026-10-13 | PRO-IR-MF-100 | 30% | 14d |
| PRO-IR-1DL-110 |  | 1ST Material Delivery for Valves of Irrigation Network | 6d | 2027-01-18 | 2027-01-24 | PRO-IR-MF-110 |  | -55.5d |
|  | DL | **Material Delivery & Site Inspection** |  | 2026-10-13 | 2027-01-25 |  |  |  |

| ID | WBS | Task | Duration | Start | Finish | Predecessors | Complete | Total float |
| --- | --- | --- | --- | --- | --- | --- | --- | --- |
|  | 1 | **Main Line Pipes** |  | 2026-10-13 | 2027-01-25 |  |  |  |
| PRO-R25-IR-DL-100 |  | Material Delivery & Site Inspection of Main Line Pipes for Irrigation Network | 0d | 2026-10-13 | 2026-10-13 | PRO-IR-1DL-100, PRO-IR-MF-100 SS, PRO-IR-MF-100 FF |  | 14d |
| PRO-R25-IR-DL-110 |  | Material Delivery & Site Inspection of Valves for Irrigation Network | 0d | 2027-01-25 | 2027-01-25 | PRO-IR-1DL-110, PRO-IR-MF-110 |  | -55.5d |
|  | TSE | **Treated Sewage Effluent (Tse)** |  | 2026-03-03 | 2027-01-25 |  |  |  |
|  | PO | **Issuance of Purchase Orders** |  | 2026-03-03 | 2026-10-19 |  |  |  |
|  | 1 | **Main Line Pipes** |  | 2026-03-03 | 2026-10-19 |  |  |  |
| PRO-TSE-PO-120 |  | Issuance of Purchase Order for Main Line Pipes of Treated Sewage Effluent (Tse) | 6d | 2026-03-03 A | 2026-03-03 A | ENG-MT-IR-ML-A-120 | 100% |  |
| PRO-TSE-PO-130 |  | Issuance of Purchase Order for Valves of Treated Sewage Effluent (Tse) | 6d | 2026-10-13 | 2026-10-19 | ENG-MT-IR-ML-A-130 |  | -53.25d |
|  | MF | **Manufacturing of Material** |  | 2026-07-20 | 2027-01-17 |  |  |  |
|  | 1 | **Main Line Pipes** |  | 2026-07-20 | 2027-01-17 |  |  |  |
| PRO-TSE-MF-120 |  | Manufacturing of Main Line Pipes for Treated Sewage Effluent (Tse) | 90d | 2026-07-20 A | 2026-08-03 A | PRO-TSE-PO-120 | 100% |  |
| PRO-TSE-MF-130 |  | Manufacturing of Valves for Treated Sewage Effluent (Tse) | 90d | 2026-10-20 | 2027-01-17 | PRO-TSE-PO-130 |  | -63.5d |
|  | 1DL | **1st Material Delivery & Site Inspection** |  | 2026-10-13 | 2027-01-24 |  |  |  |
|  | 1 | **Main Line Pipes** |  | 2026-10-13 | 2027-01-24 |  |  |  |
| PRO-TSE-1DL-120 |  | 1ST Material Delivery for Main Line Pipes of Treated Sewage Effluent (Tse) | 6d | 2026-10-13 | 2026-10-19 | PRO-TSE-MF-120 |  | 9.5d |
| PRO-TSE-1DL-130 |  | 1ST Material Delivery for Valves of Treated Sewage Effluent (Tse) | 6d | 2027-01-18 | 2027-01-24 | PRO-TSE-MF-130 |  | -54.5d |
|  | DL | **Material Delivery & Site Inspection** |  | 2026-04-01 | 2027-01-25 |  |  |  |
|  | 1 | **Main Line Pipes** |  | 2026-04-01 | 2027-01-25 |  |  |  |
| PRO-R25-TSE-DL-120 |  | Material Delivery & Site Inspection of Main Line Pipes for Treated Sewage Effluent (Tse)(Completed) | 0d | 2026-04-01 A | 2026-06-15 A | PRO-IR-PO-100 | 100% |  |
| PRO-R25-TSE-DL-120_R |  | Material Delivery & Site Inspection of Main Line Pipes for Treated Sewage Effluent (Tse)(Remaining) | 0d | 2026-08-02 A | 2026-10-20 | PRO-TSE-MF-120 FF, PRO-TSE-1DL-120 FF, PRO-R25-TSE-DL-120 | 50% | 9.5d |
| PRO-R25-TSE-DL-130 |  | Material Delivery & Site Inspection of Valves for Treated Sewage Effluent (Tse) | 0d | 2027-01-25 | 2027-01-25 | PRO-TSE-MF-130, PRO-TSE-1DL-130 |  | -54.5d |
|  | MV | **Medium Voltage Network** |  | 2026-10-13 | 2027-03-22 |  |  |  |
|  | PO | **Issuance of Purchase Orders** |  | 2026-10-13 | 2026-10-26 |  |  |  |
|  | 1 | **Cabling Works** |  | 2026-10-13 | 2026-10-26 |  |  |  |
| PRO-MV-PO-100 |  | Issuance of Purchase Order for Medium Voltage Cables of Medium Voltage Network | 12d | 2026-10-13 | 2026-10-26 | ENG-MT-MV-ML-A-100 |  | -58.25d |
|  | 3 | **Termination and Testing Works** |  | 2026-10-13 | 2026-10-26 |  |  |  |
| PRO-MV-PO-120 |  | Issuance of Purchase Order for Termination and Joints Kits of Medium Voltage Network | 12d | 2026-10-13 | 2026-10-26 | ENG-MT-MV-TF-A-100 |  | -65.75d |
|  | MF | **Manufacturing of Material** |  | 2026-10-27 | 2027-01-24 |  |  |  |
|  | 1 | **Cabling Works** |  | 2026-10-27 | 2026-12-25 |  |  |  |
| PRO-MV-MF-100 |  | Manufacturing of Medium Voltage Cables for Medium Voltage Network | 60d | 2026-10-27 | 2026-12-25 | PRO-MV-PO-100 |  | -69.5d |
|  | 3 | **Termination and Testing Works** |  | 2026-10-27 | 2027-01-24 |  |  |  |
| PRO-MV-MF-110 |  | Manufacturing of Termination and Joints Kits for Medium Voltage Network | 90d | 2026-10-27 | 2027-01-24 | PRO-MV-PO-120 |  | -78d |
|  | 1DL | **1st Material Delivery & Site Inspection** |  | 2026-12-26 | 2027-02-10 |  |  |  |
|  | 1 | **Cabling Works** |  | 2026-12-26 | 2027-01-07 |  |  |  |
| PRO-MV-1DL-100 |  | 1ST Material Delivery for Medium Voltage Cables of Medium Voltage Network | 12d | 2026-12-26 | 2027-01-07 | PRO-MV-MF-100 |  | -59.5d |
|  | 3 | **Termination and Testing Works** |  | 2027-01-25 | 2027-02-10 |  |  |  |
| PRO-MV-1DL-120 |  | 1ST Material Delivery for Termination and Joints Kits of Medium Voltage Network | 14d | 2027-01-25 | 2027-02-10 | PRO-MV-MF-110 |  | -67d |
|  | DL | **Material Delivery & Site Inspection** |  | 2027-01-09 | 2027-03-22 |  |  |  |
|  | 1 | **Cabling Works** |  | 2027-01-09 | 2027-01-09 |  |  |  |
| PRO-MV-DL-100 |  | Material Delivery & Site Inspection of Medium Voltage Cables for Medium Voltage Network | 0d | 2027-01-09 | 2027-01-09 | PRO-MV-1DL-100, PRO-MV-MF-100 SS, PRO-MV-MF-100 FF |  | -59.5d |
|  | 3 | **Termination and Testing Works** |  | 2027-02-10 | 2027-03-22 |  |  |  |
| PRO-MV-DL-110 |  | Material Delivery & Site Inspection of Termination and Joints Kits for Medium Voltage Network | 26d | 2027-02-10 | 2027-03-22 | PRO-MV-1DL-120, PRO-MV-MF-110 SS, PRO-MV-MF-110 FF |  | -67d |
|  | SL | **Low Voltage and Street Lighting Network** |  | 2026-05-13 | 2026-11-29 |  |  |  |
|  | PO | **Issuance of Purchase Orders** |  | 2026-05-13 | 2026-05-25 |  |  |  |
|  | 1 | **Cabling Works** |  | 2026-05-13 | 2026-05-25 |  |  |  |
| PRO-SL-PO-100 |  | Issuance of Purchase Order for Lighting Cables of Street Lighting Network | 6d | 2026-05-13 A | 2026-05-25 A | ENG-MT-SL-ML-A-100, ENG-MT-SL-ML-S-100 | 100% |  |
|  | 2 | **Lighting Poles Works** |  | 2026-05-13 | 2026-05-25 |  |  |  |
| PRO-SL-PO-110 |  | Issuance of Purchase Order for Lighting Poles Foundations of Street Lighting Network | 6d | 2026-05-13 A | 2026-05-25 A | ENG-MT-SL-S-100, ENG-MT-SL-A-100 | 100% |  |
| PRO-SL-PO-120 |  | Issuance of Purchase Order for Lighting Poles of Street Lighting Network | 6d | 2026-05-13 A | 2026-05-25 A | ENG-MT-SL-S-110, ENG-MT-SL-A-110 | 100% |  |
| PRO-SL-PO-140 |  | Issuance of Purchase Order for Lighting Fixtures of Street Lighting Network | 6d | 2026-05-13 A | 2026-05-25 A | ENG-MT-SL-S-120, ENG-MT-SL-A-120 | 100% |  |
|  | 3 | **Distribution Panel Board** |  | 2026-05-13 | 2026-05-25 |  |  |  |
| PRO-SL-PO-160 |  | Issuance of Purchase Order for Distrubution Panel Boards of Street Lighting Network | 10d | 2026-05-13 A | 2026-05-25 A | ENG-MT-SL-DB-S-100, ENG-MT-SL-DB-A-100 | 100% |  |
|  | 4 | **Earthing System Works** |  | 2026-05-13 | 2026-05-25 |  |  |  |
| PRO-SL-PO-150 |  | Issuance of Purchase Order for Lighting Earthing of Street Lighting Network | 8d | 2026-05-13 A | 2026-05-25 A | ENG-MT-SL-ES-S-100, ENG-MT-SL-ES-A-100 | 100% |  |
|  | 5 | **Termination and Testing Works** |  | 2026-05-13 | 2026-05-25 |  |  |  |
| PRO-SL-PO-130 |  | Issuance of Purchase Order for Fuse Boxes of Street Lighting Network | 8d | 2026-05-13 A | 2026-05-25 A | ENG-MT-SL-TF-S-100, ENG-MT-SL-TF-A-100 | 100% |  |
| PRO-SL-PO-170 |  | Issuance of Purchase Order for Cable Lugs of Street Lighting Network | 8d | 2026-05-13 A | 2026-05-25 A | ENG-MT-SL-TF-S-110, ENG-MT-SL-TF-A-110 | 100% |  |
|  | MF | **Manufacturing of Material** |  | 2026-06-01 | 2026-06-17 |  |  |  |
|  | 1 | **Cabling Works** |  | 2026-06-01 | 2026-06-17 |  |  |  |
| PRO-SL-MF-100 |  | Manufacturing of Lighting Cables for Street Lighting Network | 90d | 2026-06-01 A | 2026-06-17 A | PRO-SL-PO-100 | 100% |  |
|  | 2 | **Lighting Poles Works** |  | 2026-06-01 | 2026-06-17 |  |  |  |
| PRO-SL-MF-110 |  | Manufacturing of Lighting Poles Foundations for Street Lighting Network | 90d | 2026-06-01 A | 2026-06-17 A | PRO-SL-PO-110 | 100% |  |
| PRO-SL-MF-120 |  | Manufacturing of Lighting Poles for Street Lighting Network | 90d | 2026-06-01 A | 2026-06-17 A | PRO-SL-PO-120 | 100% |  |
| PRO-SL-MF-140 |  | Manufacturing of Lighting Fixtures for Street Lighting Network | 128d | 2026-06-01 A | 2026-06-17 A | PRO-SL-PO-140 | 100% |  |
|  | 3 | **Distribution Panel Board** |  | 2026-06-01 | 2026-06-17 |  |  |  |
| PRO-SL-MF-160 |  | Manufacturing of Distrubution Panel Boards for Street Lighting Network | 110d | 2026-06-01 A | 2026-06-17 A | PRO-SL-PO-160 | 100% |  |
|  | 4 | **Earthing System Works** |  | 2026-06-01 | 2026-06-17 |  |  |  |
| PRO-SL-MF-150 |  | Manufacturing of Lighting Earthing for Street Lighting Network | 140d | 2026-06-01 A | 2026-06-17 A | PRO-SL-PO-150 | 100% |  |
|  | 5 | **Termination and Testing Works** |  | 2026-06-01 | 2026-06-17 |  |  |  |
| PRO-SL-MF-130 |  | Manufacturing of Fuse Boxes for Street Lighting Network | 149d | 2026-06-01 A | 2026-06-17 A | PRO-SL-PO-130 | 100% |  |

| ID | WBS | Task | Duration | Start | Finish | Predecessors | Complete | Total float |
| --- | --- | --- | --- | --- | --- | --- | --- | --- |
| PRO-SL-MF-170 |  | Manufacturing of Cable Lugs for Street Lighting Network | 110d | 2026-06-01 A | 2026-06-17 A | PRO-SL-PO-170 | 100% |  |
|  | 1DL | **1st Material Delivery & Site Inspection** |  | 2026-10-13 | 2026-10-29 |  |  |  |
|  | 1 | **Cabling Works** |  | 2026-10-13 | 2026-10-19 |  |  |  |
| PRO-SL-1DL-100 |  | 1ST Material Delivery for Lighting Cables of Street Lighting Network | 6d | 2026-10-13 | 2026-10-19 | PRO-SL-MF-100 |  | 23.5d |
|  | 2 | **Lighting Poles Works** |  | 2026-10-13 | 2026-10-19 |  |  |  |
| PRO-SL-1DL-110 |  | 1ST Material Delivery for Lighting Poles Foundations of Street Lighting Network | 6d | 2026-10-13 | 2026-10-19 | PRO-SL-MF-110 |  | -5.5d |
| PRO-SL-1DL-120 |  | 1ST Material Delivery for Lighting Poles of Street Lighting Network | 6d | 2026-10-13 | 2026-10-19 | PRO-SL-MF-120 |  | 28.5d |
| PRO-SL-1DL-140 |  | 1ST Material Delivery for Lighting Fixtures of Street Lighting Network | 6d | 2026-10-13 | 2026-10-19 | PRO-SL-MF-140 |  | 78d |
|  | 3 | **Distribution Panel Board** |  | 2026-10-13 | 2026-10-19 |  |  |  |
| PRO-SL-1DL-160 |  | 1ST Material Delivery for Distrubution Panel Boards of Street Lighting Network | 6d | 2026-10-13 | 2026-10-19 | PRO-SL-MF-160 |  | 66d |
|  | 5 | **Termination and Testing Works** |  | 2026-10-13 | 2026-10-29 |  |  |  |
| PRO-SL-1DL-130 |  | 1ST Material Delivery for Fuse Boxes of Street Lighting Network | 15d | 2026-10-13 | 2026-10-29 | PRO-SL-MF-130 |  | 52d |
| PRO-SL-1DL-170 |  | 1ST Material Delivery for Cable Lugs of Street Lighting Network | 15d | 2026-10-13 | 2026-10-29 | PRO-SL-MF-170 |  | 50d |
|  | 4 | **Earthing System Works** |  | 2026-10-13 | 2026-10-19 |  |  |  |
| PRO-SL-1DL-150 |  | 1ST Material Delivery for Lighting Earthing of Street Lighting Network | 6d | 2026-10-13 | 2026-10-19 | PRO-SL-MF-150 |  | 78d |
|  | DL | **Material Delivery & Site Inspection** |  | 2026-10-20 | 2026-11-29 |  |  |  |
|  | 1 | **Cabling Works** |  | 2026-10-20 | 2026-10-20 |  |  |  |
| PRO-R25-SL-DL-100 |  | Material Delivery & Site Inspection of Lighting Cables for Street Lighting Network | 0d | 2026-10-20 | 2026-10-20 | PRO-SL-MF-100 SS, PRO-SL-MF-100 FF, PRO-SL-1DL-100 |  | 23.5d |
|  | 2 | **Lighting Poles Works** |  | 2026-10-20 | 2026-11-09 |  |  |  |
| PRO-R25-SL-DL-110 |  | Material Delivery & Site Inspection of Lighting Poles Foundations for Street Lighting Network | 18d | 2026-10-20 | 2026-11-09 | PRO-SL-MF-110 SS, PRO-SL-MF-110 FF, PRO-SL-1DL-110 |  | -5.5d |
| PRO-R25-SL-DL-120 |  | Material Delivery & Site Inspection of Lighting Poles for Street Lighting Network | 0d | 2026-10-20 | 2026-10-20 | PRO-SL-1DL-120, PRO-SL-MF-120 |  | 28.5d |
| PRO-R25-SL-DL-140 |  | Material Delivery & Site Inspection of Lighting Fixtures for Street Lighting Network | 0d | 2026-10-20 | 2026-10-20 | PRO-SL-MF-140, PRO-SL-1DL-140 |  | 78d |
|  | 3 | **Distribution Panel Board** |  | 2026-10-20 | 2026-10-20 |  |  |  |
| PRO-R25-SL-DL-160 |  | Material Delivery & Site Inspection of Distrubution Panel Boards for Street Lighting Network | 0d | 2026-10-20 | 2026-10-20 | PRO-SL-MF-160, PRO-SL-1DL-160 |  | 66d |
|  | 4 | **Termination and Testing Works** |  | 2026-10-31 | 2026-11-29 |  |  |  |
| PRO-R25-SL-DL-130 |  | Material Delivery & Site Inspection of Fuse Boxes for Street Lighting Network | 26d | 2026-10-31 | 2026-11-29 | PRO-SL-MF-130, PRO-SL-1DL-130 |  | 52d |
| PRO-R25-SL-DL-170 |  | Material Delivery & Site Inspection of Cable Lugs for Street Lighting Network | 26d | 2026-10-31 | 2026-11-29 | PRO-SL-MF-170, PRO-SL-1DL-170 |  | 50d |
|  | 5 | **Earthing System Works** |  | 2026-10-20 | 2026-10-20 |  |  |  |
| PRO-R25-SL-DL-150 |  | Material Delivery & Site Inspection of Lighting Earthing for Street Lighting Network | 0d | 2026-10-20 | 2026-10-20 | PRO-SL-MF-150, PRO-SL-1DL-150 |  | 78d |
|  | TE | **Telecom Network** |  | 2026-10-13 | 2027-01-30 |  |  |  |
|  | PO | **Issuance of Purchase Orders** |  | 2026-10-13 | 2026-10-19 |  |  |  |
|  | 1 | **Ducts Works** |  | 2026-10-13 | 2026-10-19 |  |  |  |
| PRO-TE-PO-100 |  | Issuance of Purchase Order for Ducts forTelecom Network | 6d | 2026-10-13 | 2026-10-19 | ENG-MT-TE-A-100, ENG-SH-CTV-S-100 |  | -33.25d |
|  | 3 | **Manholes Works** |  | 2026-10-13 | 2026-10-19 |  |  |  |
| PRO-TE-PO-110 |  | Issuance of Purchase Order for Manholes forTelecom Network | 6d | 2026-10-13 | 2026-10-19 | ENG-MT-TE-A-110, ENG-SH-CTV-S-100 |  | -47.55d |
|  | 2 | **CCTV System Wroks** |  | 2026-10-13 | 2026-10-19 |  |  |  |
| PRO-CTV-PO-100 |  | Issuance of Purchase Order for Civil and Finishes Works of CCTV Complete System | 6d | 2026-10-13 | 2026-10-19 | ENG-MT-CTV-A-100, ENG-SH-CTV-S-100 |  | -27d |
|  | MF | **Manufacturing of Material** |  | 2026-10-20 | 2027-01-17 |  |  |  |
|  | 1 | **Ducts Works** |  | 2026-10-20 | 2026-12-18 |  |  |  |
| PRO-TE-MF-100 |  | Manufacturing of Ducts for Telecom Network | 60d | 2026-10-20 | 2026-12-18 | PRO-TE-PO-100 |  | -40.5d |
|  | 3 | **Manholes Works** |  | 2026-10-20 | 2027-01-17 |  |  |  |
| PRO-TE-MF-110 |  | Manufacturing of Manholes for Telecom Network | 90d | 2026-10-20 | 2027-01-17 | PRO-TE-PO-110 |  | -56.8d |
|  | 2 | **CCTV System Wroks** |  | 2026-10-20 | 2027-01-17 |  |  |  |
| PRO-CTV-MF-100 |  | Manufacturing of Civil and Finishes Works for CCTV Complete System | 90d | 2026-10-20 | 2027-01-17 | PRO-CTV-PO-100 |  | -33d |
|  | 1DL | **1st Material Delivery & Site Inspection** |  | 2026-12-19 | 2027-01-28 |  |  |  |
|  | 1 | **Ducts Works** |  | 2026-12-19 | 2026-12-24 |  |  |  |
| PRO-TE-1DL-100 |  | 1ST Material Delivery for Ducts of Telecom Network | 6d | 2026-12-19 | 2026-12-24 | PRO-TE-MF-100 |  | -34.5d |
|  | 3 | **Manholes Works** |  | 2027-01-18 | 2027-01-24 |  |  |  |
| PRO-TE-1DL-110 |  | 1ST Material Delivery for Manholes of Telecom Network | 6d | 2027-01-18 | 2027-01-24 | PRO-TE-MF-110 |  | -48.8d |
|  | 2 | **CCTV System Wroks** |  | 2027-01-18 | 2027-01-28 |  |  |  |
| PRO-CTV-1DL-100 |  | 1ST Material Delivery for Civil and Finishes Works of CCTV Complete System | 10d | 2027-01-18 | 2027-01-28 | PRO-CTV-MF-100 |  | -28d |
|  | DL | **Material Delivery & Site Inspection** |  | 2026-12-26 | 2027-01-30 |  |  |  |
|  | 1 | **Ducts Works** |  | 2026-12-26 | 2026-12-26 |  |  |  |
| PRO-R25-TE-DL-100 |  | Material Delivery & Site Inspection for Ducts of Telecom Network | 0d | 2026-12-26 | 2026-12-26 | PRO-TE-MF-100 SS+13d, PRO-TE-MF-100 FF, PRO-TE-1DL-100 |  | -34.5d |
|  | 3 | **Manholes Works** |  | 2027-01-25 | 2027-01-25 |  |  |  |
| PRO-R25-TE-DL-110 |  | Material Delivery & Site Inspection of Manholes for Telecom Network | 0d | 2027-01-25 | 2027-01-25 | PRO-TE-MF-110 SS+15d, PRO-TE-MF-110 FF, PRO-TE-1DL-110 |  | -48.8d |
|  | 2 | **CCTV System Wroks** |  | 2027-01-30 | 2027-01-30 |  |  |  |
| PRO-R25-CTV-DL-100 |  | Material Delivery & Site Inspection of for Civil and Finishes Works of CCTV Complete System | 0d | 2027-01-30 | 2027-01-30 | PRO-CTV-MF-100, PRO-CTV-1DL-100, PRO-CTV-1DL-100 FF |  | -28d |
|  | 1 | **Superstructure Works** |  | 2026-01-29 | 2027-01-11 |  |  |  |
|  | 1 | **Issuance of Purchase Orders** |  | 2026-01-29 | 2026-11-02 |  |  |  |
|  | SL | **Pump Stations** |  | 2026-01-29 | 2026-02-01 |  |  |  |
| PRO-SPS-CV-PO-10 |  | Issuance of Purchase Order for Civil Works for Pump Stations | 3.25d | 2026-01-29 A | 2026-02-01 A | ENG-MT-PS-CV-A-150 | 100% |  |
|  | SL1 | **Lift Station** |  | 2026-01-29 | 2026-02-01 |  |  |  |
| PRO-LS-CV-PO-20 |  | Issuance of Purchase Order for Civil Works for Lift Stations | 3.25d | 2026-01-29 A | 2026-02-01 A | ENG-MT-SLS-CV-A-110 | 100% |  |
|  | SL11 | **Storage Tank (TSE)** |  | 2026-10-21 | 2026-11-02 |  |  |  |
| PRO-TSE-CV-PO-30 |  | Issuance of Purchase Order for Civil Works for Storage Tank (TSE) | 11d | 2026-10-21 | 2026-11-02 | ENG-MT-TSE-CV-A-140, ENG-MT-TSE-CV-S-130 |  | -9d |
|  | TE | **Storm Drainage Ponds** |  | 2026-06-23 | 2026-07-04 |  |  |  |
| PRO-DPO-CV-PO-10 |  | Issuance of Purchase Order for Civil Works for Storm Drainage Ponds | 10d | 2026-06-23 A | 2026-07-04 A | ENG-MT-DPO-CV-A-110 | 100% |  |
|  | SL12 | **Gaurd Room** |  | 2026-10-13 | 2026-10-25 |  |  |  |
| PRO-GR-CV-PO-40 |  | Issuance of Purchase Order for Civil Works for Gaurd Room | 10.5d | 2026-10-13 | 2026-10-25 | ENG-MT-GR-CV-A-130 |  | -69.25d |

| ID | WBS | Task | Duration | Start | Finish | Predecessors | Complete | Total float |
| --- | --- | --- | --- | --- | --- | --- | --- | --- |
|  | SL121 | **Fence** |  | 2026-08-15 | 2026-08-27 |  |  |  |
| PRO-FE-CV-PO-50 |  | Issuance of Purchase Order for Civil Works for Fence | 9.85d | 2026-08-15 A | 2026-08-27 A | ENG-MT-FE-CV-A-120 SS | 100% |  |
|  | 2 | **Manufacturing of Material** |  | 2026-07-05 | 2027-01-10 |  |  |  |
|  | SL | **Pump Stations** |  | 2026-10-13 | 2026-11-21 |  |  |  |
| PRO-SPS-CV-MF-10 |  | Manufacturing of Civil Works for Pump Stations | 40d | 2026-10-13 | 2026-11-21 | PRO-SPS-CV-PO-10 |  | -83.75d |
|  | SL1 | **Lift Station** |  | 2026-10-13 | 2026-11-21 |  |  |  |
| PRO-LS-CV-MF-30 |  | Manufacturing of Civil Works for Civil Works for Lift Stations | 40d | 2026-10-13 | 2026-11-21 | PRO-LS-CV-PO-20 |  | -12d |
|  | TE | **Storm Drainage Ponds** |  | 2026-07-05 | 2026-09-02 |  |  |  |
| PRO-DPO-CV-MF-10 |  | Manufacturing of Civil Works for Storm Drainage Ponds | 60d | 2026-07-05 A | 2026-09-02 A | PRO-DPO-CV-PO-10 | 100% |  |
|  | SL11 | **Storage Tank (TSE)** |  | 2026-11-03 | 2026-12-12 |  |  |  |
| PRO-TSE-CV-MF-40 |  | Manufacturing of Civil Works for Civil Works for Storage Tank (TSE) | 40d | 2026-11-03 | 2026-12-12 | PRO-TSE-CV-PO-30 |  | -10d |
|  | SL12 | **Gaurd Room** |  | 2026-10-25 | 2026-12-04 |  |  |  |
| PRO-GR-CV-MF-50 |  | Manufacturing of Civil Works for Civil Works for Gaurd Room | 40d | 2026-10-25 | 2026-12-04 | PRO-GR-CV-PO-40 |  | -82.5d |
|  | SL121 | **Fence** |  | 2026-09-05 | 2026-09-10 |  |  |  |
| PRO-FE-CV-MF-60 |  | Manufacturing of Civil Works for Civil Works for Fence | 20d | 2026-09-05 A | 2026-09-10 A | PRO-FE-CV-PO-50 FF, ENG-SH-GR-A-200_R | 100% |  |
|  | SL1211 | **Softscape and Planting Works** |  | 2026-10-13 | 2027-01-10 |  |  |  |
| PRO-FE-CV-MF-70 |  | Manufacturing of Civil Works for Softscape and Planting Works | 90d | 2026-10-13 | 2027-01-10 | ENG-MT-PL-CV-A-160 |  | -26d |
|  | 3 | **1st Material Delivery & Site Inspection** |  | 2026-08-03 | 2026-12-17 |  |  |  |
|  | SL | **Pump Stations** |  | 2026-11-22 | 2026-11-23 |  |  |  |
| PRO-SPS-CV-1DL-10 |  | 1ST Material Delivery for Civil Works for Pump Stations | 2d | 2026-11-22 | 2026-11-23 | PRO-SPS-CV-MF-10, ENG-SH-SPS-A-160 |  | -70.5d |
|  | SL1 | **Lift Station** |  | 2026-11-22 | 2026-11-22 |  |  |  |
| PRO-LS-CV-1DL-40 |  | 1ST Material Delivery for Civil Works for Civil Works for Lift Stations | 1d | 2026-11-22 | 2026-11-22 | PRO-LS-CV-MF-30 |  | -10d |
|  | TE | **Drainage Ponds** |  | 2026-08-03 | 2026-08-22 |  |  |  |
| PRO-DPO-CV-1DL-10 |  | 1ST Material Delivery for Civil Works for Drainage Ponds | 30d | 2026-08-03 A | 2026-08-22 A | PRO-DPO-CV-MF-10 | 100% |  |
|  | SL11 | **Storage Tank (TSE)** |  | 2026-12-13 | 2026-12-13 |  |  |  |
| PRO-TSE-CV-1DL-50 |  | 1ST Material Delivery for Civil Works for Civil Works for Storage Tank (TSE) | 1d | 2026-12-13 | 2026-12-13 | PRO-TSE-CV-MF-40 |  | -8d |
|  | SL12 | **Gaurd Room** |  | 2026-12-05 | 2026-12-17 |  |  |  |
| PRO-GR-CV-1DL-60 |  | 1ST Material Delivery for Civil Works for Civil Works for Gaurd Room | 12d | 2026-12-05 | 2026-12-17 | PRO-GR-CV-MF-50 |  | -70d |
|  | SL121 | **Fence** |  |  |  |  |  |  |
|  | 4 | **Material Delivery & Site Inspection** |  | 2026-08-02 | 2027-01-11 |  |  |  |
|  | SL | **Pump Stations** |  | 2026-08-02 | 2026-11-24 |  |  |  |
| PRO-SPS-CV-DL-10 |  | Material Delivery & Site Inspection for Civil Works for Pump Stations | 0d | 2026-08-02 A | 2026-11-24 | PRO-SPS-CV-MF-10 FF, PRO-SPS-CV-1DL-10 FF | 20% | -70.5d |
|  | SL1 | **Lift Station** |  | 2026-11-23 | 2026-11-23 |  |  |  |
| PRO-LS-CV-DL-50 |  | Material Delivery & Site Inspection for Civil Works for Lift Stations | 0d | 2026-11-23 | 2026-11-23 | PRO-LS-CV-MF-30, PRO-LS-CV-1DL-40 |  | -10d |
|  | TE | **Storm Drainage Ponds** |  | 2026-08-02 | 2026-09-01 |  |  |  |
| PRO-DPO-CV-DL-10 |  | Material Delivery & Site Inspection for Civil Works for Storm Drainage Ponds | 0d | 2026-08-02 A | 2026-09-01 A | PRO-DPO-CV-MF-10, PRO-DPO-CV-MF-10 SS, PRO-DPO-CV-1DL-10 | 100% |  |
|  | SL11 | **Storage Tank (TSE)** |  | 2026-12-13 | 2026-12-13 |  |  |  |
| PRO-TSE-CV-DL-60 |  | Material Delivery & Site Inspection for Civil Works for Storage Tank (TSE) | 0d | 2026-12-13 | 2026-12-13 | PRO-TSE-CV-MF-40 |  | -7d |
|  | SL12 | **Gaurd Room** |  | 2026-12-19 | 2026-12-19 |  |  |  |
| PRO-GR-CV-DL-70 |  | Material Delivery & Site Inspection for Civil Works for Gaurd Room | 0d | 2026-12-19 | 2026-12-19 | PRO-GR-CV-MF-50 SS+2d, PRO-GR-CV-MF-50 FF, PRO-GR-CV-1DL-60 |  | -70d |
|  | SL121 | **Fence** |  | 2026-08-02 | 2026-10-13 |  |  |  |
| PRO-FE-CV-DL-80 |  | Material Delivery & Site Inspection for Civil Works for Fence | 0d | 2026-08-02 A | 2026-10-13 | PRO-FE-CV-MF-60 | 80% | -48d |
|  | SL1211 | **Softscape and Planting Works** |  | 2027-01-11 | 2027-01-11 |  |  |  |
| PRO-FE-CV-DL-90 |  | Material Delivery & Site Inspection for Softscape and Planting Works | 0d | 2027-01-11 | 2027-01-11 | PRO-FE-CV-MF-70 |  | -22d |
|  | LL | **Long Lead Time Items** |  | 2026-07-22 | 2027-04-24 |  |  |  |
|  | 2 | **Infrastructure Networks** |  | 2026-10-13 | 2027-02-24 |  |  |  |
|  | 2 | **CCTV System Wroks of Telecom Network** |  | 2026-10-13 | 2027-02-24 |  |  |  |
|  | 3 | **Issuance of Purchase Orders** |  | 2026-10-13 | 2026-11-04 |  |  |  |
| PRO-CTV-LL-PO-10 |  | Issuance of Purchase Order for Low Current Works of CCTV Complete System with All Accessories | 20d | 2026-10-13 | 2026-11-04 | ENG-MT-CTV-A-110 |  | -41d |
|  | 1 | **Manufacturing of Material** |  | 2026-11-05 | 2027-02-02 |  |  |  |
| PRO-CTV-LL-MF-10 |  | Manufacturing of Low Current Works for CCTV Complete System with All Accessories | 90d | 2026-11-05 | 2027-02-02 | PRO-CTV-LL-PO-10 |  | -49d |
|  | 2 | **Material Shipping/Custom Clearance/Delivery** |  | 2027-02-02 | 2027-02-24 |  |  |  |
| PRO-CTV-LL-SH/DL-10 |  | Material Delivery for Low Current Works of CCTV Complete System with All Accessories | 15d | 2027-02-02 | 2027-02-24 | PRO-CTV-LL-MF-10 |  | -41.88d |
|  | 4 | **Material Site Inspection** |  | 2027-02-24 | 2027-02-24 |  |  |  |
| PRO-CTV-LL-MSI-10 |  | Material Site Inspection for Low Current Works of CCTV Complete System with All Accessories | 0d | 2027-02-24 | 2027-02-24 | PRO-CTV-LL-SH/DL-10 |  | -41.88d |
|  | 1 | **Superstructure Works** |  | 2026-07-22 | 2027-04-24 |  |  |  |
|  | SL | **Pump Stations** |  | 2026-07-22 | 2027-03-16 |  |  |  |
|  | 1 | **Issuance of Purchase Orders** |  | 2026-07-22 | 2026-07-22 |  |  |  |
| PRO-SPS-LL-PO-10 |  | Issuance of Purchase Order for Electromechanical Works for Pump Stations | 30d | 2026-07-22 A | 2026-07-22 A | ENG-MT-SPS-MC-A-110 | 100% |  |
|  | 2 | **Manufacturing of Material** |  | 2026-08-26 | 2026-12-20 |  |  |  |
| PRO-SPS-LL-MF-10 |  | Manufacturing of Electromechanical Works for Pump Stations | 60d | 2026-08-26 A | 2026-12-20 | PRO-SPS-LL-PO-10 | 35% | -39d |
|  | 3 | **Material Shipping/Custom Clearance/Delivery** |  | 2026-12-21 | 2027-01-24 |  |  |  |
| PRO-SPS-LL-SH/DL-10 |  | Material Delivery for Electromechanical Works for Pump Stations | 30d | 2026-12-21 | 2027-01-24 | PRO-SPS-LL-MF-10 |  | -33d |
|  | 4 | **Material Site Inspection** |  | 2027-01-25 | 2027-03-16 |  |  |  |
| PRO-SPS-LL-MSI-10 |  | Material Site Inspection for Electromechanical Works for Pump Stations | 35d | 2027-01-25 | 2027-03-16 | PRO-SPS-LL-SH/DL-10 |  | -33d |
|  | SL1 | **Lift Stations** |  | 2026-07-22 | 2027-03-20 |  |  |  |
|  | 1 | **Issuance of Purchase Orders** |  | 2026-07-22 | 2026-07-22 |  |  |  |
| PRO-LS-LL-PO-20 |  | Issuance of Purchase Order for Electromechanical Works for Lift Stations | 30d | 2026-07-22 A | 2026-07-22 A | ENG-MT-SPS-MC-A-110 | 100% |  |
|  | 2 | **Manufacturing of Material** |  | 2026-08-01 | 2026-12-20 |  |  |  |
| PRO-LS-LL-MF-20 |  | Manufacturing of Electromechanical Works for Lift Stations | 60d | 2026-08-01 A | 2026-12-20 | PRO-LS-LL-PO-20 |  | -41d |

| ID | WBS | Task | Duration | Start | Finish | Predecessors | Complete | Total float |
| --- | --- | --- | --- | --- | --- | --- | --- | --- |
|  | 3 | **Material Shipping/Custom Clearance/Delivery** |  | 2026-12-21 | 2027-01-24 |  |  |  |
| PRO-LS-LL-SH/DL-20 |  | Material Delivery for Electromechanical Works for Lift Stations | 30d | 2026-12-21 | 2027-01-24 | PRO-LS-LL-MF-20 |  | -35d |
|  | 4 | **Material Site Inspection** |  | 2027-01-25 | 2027-03-20 |  |  |  |
| PRO-LS-LL-MSI-20 |  | Material Site Inspection for Electromechanical Works for Lift Stations | 38d | 2027-01-25 | 2027-03-20 | PRO-LS-LL-SH/DL-20 |  | -35d |
|  | SL2 | **Storage Tank (TSE)** |  | 2026-10-22 | 2027-04-24 |  |  |  |
|  | 1 | **Issuance of Purchase Orders** |  | 2026-10-22 | 2026-11-25 |  |  |  |
| PRO-TSE-LL-PO-30 |  | Issuance of Purchase Order for Electromechanical Works for Storage Tank (TSE) | 30d | 2026-10-22 | 2026-11-25 | ENG-MT-TSE-MC-A-120 |  | -64d |
|  | 2 | **Manufacturing of Material** |  | 2026-11-26 | 2027-01-24 |  |  |  |
| PRO-TSE-LL-MF-30 |  | Manufacturing of Electromechanical Works for Storage Tank (TSE) | 60d | 2026-11-26 | 2027-01-24 | PRO-TSE-LL-PO-30 |  | -76d |
|  | 3 | **Material Shipping/Custom Clearance/Delivery** |  | 2027-01-25 | 2027-03-07 |  |  |  |
| PRO-TSE-LL-SH/DL-30 |  | Material Delivery for Electromechanical Works for Storage Tank (TSE) | 30d | 2027-01-25 | 2027-03-07 | PRO-TSE-LL-MF-30 |  | -65d |
|  | 4 | **Material Site Inspection** |  | 2027-03-07 | 2027-04-24 |  |  |  |
| PRO-TSE-LL-MSI-30 |  | Material Site Inspection for Electromechanical Works for Storage Tank (TSE) | 38d | 2027-03-07 | 2027-04-24 | PRO-TSE-LL-SH/DL-30 |  | -65d |
|  | CON | **Construction Works** |  | 2026-03-07 | 2027-05-30 |  |  |  |
|  | INF | **Infrastructure Networks** |  | 2026-03-07 | 2027-05-30 |  |  |  |
|  | EW | **Earthworks** |  | 2026-03-07 | 2026-10-31 |  |  |  |
|  | EW | **Earthworks** |  | 2026-03-07 | 2026-10-31 |  |  |  |
| CO-EW-200 |  | Excavation Works Upto Design Level for Earthworks-P1(Completed) | 77d | 2026-03-07 A | 2026-06-15 A | MS-CS-PS SS, MOB-30, MOB-20, MOB-80, MOB-40, MOB-50, MOB-60 FF+15d, MOB-10, MOB-70, PRE-CON-MDC-10, PRE-CON-MDC-20, PRE-CON-MDC-30, PRE-CON-MDC-40, PRE-CON-MDC-50, PRE-CON-MDC-60, PRE-CON-MDC-70, PRE-CON-MDC-80 | 100% |  |
| CO-EW-210 |  | Excavation Works Upto Design Level for Earthworks-P2(Completed) | 59.25d | 2026-04-02 A | 2026-06-15 A | CO-EW-200 SS | 100% |  |
| CO-EW-220 |  | Excavation Works Upto Design Level for Earthworks-P3(Completed) | 59.25d | 2026-04-02 A | 2026-06-15 A | CO-EW-210 SS | 100% |  |
| CO-EW-110 |  | Embankments Works Upto Design Level for Earthworks(Completed) | 38d | 2026-04-28 A | 2026-06-15 A | CO-EW-200 SS+10d, CO-EW-220 SS, CO-EW-220 FF | 100% |  |
| CO-EW-110_R |  | Embankments Works Upto Design Level for Earthworks(Remaining) | 16d | 2026-08-02 A | 2026-10-31 | CO-EW-200_R SS+10d, CO-EW-220_R SS, CO-EW-220_R FF, CO-EW-110 | 84% | -77.5d |
| CO-EW-200_R |  | Excavation Works Upto Design Level for Earthworks-P1(Remaining) | 10d | 2026-08-02 A | 2026-10-24 | MS-CS-PS SS, MOB-30, MOB-20, MOB-80, MOB-40, MOB-50, MOB-60 FF+15d, MOB-10, MOB-70, PRE-CON-MDC-10, PRE-CON-MDC-20, PRE-CON-MDC-30, PRE-CON-MDC-40, PRE-CON-MDC-50, PRE-CON-MDC-60, PRE-CON-MDC-70, PRE-CON-MDC-80, CO-EW-200 | 84% | -77.5d |
| CO-EW-210_R |  | Excavation Works Upto Design Level for Earthworks-P2(Remaining) | 10d | 2026-08-02 A | 2026-10-24 | MS-CF-MOB FF, CO-EW-200_R SS, CO-EW-210 | 80% | -77.5d |
| CO-EW-220_R |  | Excavation Works Upto Design Level for Earthworks-P3(Remaining) | 11.52d | 2026-08-02 A | 2026-10-26 | CO-EW-210_R SS, CO-EW-220 | 80% | -77.5d |
|  | SD | **Storm Drainage Network** |  | 2026-08-02 | 2027-01-31 |  |  |  |
|  | MH25-MH12 | **FROM MH-25:MH-12** |  | 2026-08-02 | 2026-12-22 |  |  |  |
|  | ML | **Main Line Sections** |  | 2026-08-02 | 2026-10-24 |  |  |  |
| CO-SD-ML-100 |  | Trench Excavation and Bedding Works for Main Lines of Storm Drainage Network | 3d | 2026-08-02 A | 2026-10-15 | CO-EW-200_R SS+10d, CO-EW-110_R SS, ENG-SH-SD-ML-A-110, ENG-MT-SD-ML-A-110, CO-EW-220_R SS, PRO-SD-1DL-110 FF, CO-EW-210_R SS | 3% | -61.5d |
| CO-SD-ML-120 |  | Pipes Laying Works for Main Lines of Storm Drainage Network | 5d | 2026-08-02 A | 2026-10-18 | CO-SD-ML-100 SS, PRO-R25-SD-DL-120 SS, CO-EW-210_R SS | 3% | -61.5d |
| CO-SD-ML-130 |  | Trench Backfilling and Compaction Works for Main Lines of Storm Drainage Network | 10d | 2026-08-02 A | 2026-10-24 | CO-SD-ML-120 SS, CO-EW-210_R SS, CO-EW-220_R SS, PRO-R25-SD-DL-120 SS | 3% | -61.5d |
|  | MH | **Manholes** |  | 2026-11-01 | 2026-11-29 |  |  |  |
| CO-SD-MH-180 |  | Trench Excavation and Bedding Works for Manholes of Storm Drainage Network | 7d | 2026-11-01 | 2026-11-08 | CO-SD-ML-120, ENG-MT-SD-ML-A-100, PRO-R25-SD-DL-100 SS, PRO-SD-MF-100, CO-EW-210_R, CO-EW-220_R, CO-EW-110_R |  | -63.5d |
| CO-SD-MH-190 |  | Install RC Footing Works for Manholes of Storm Drainage Network | 7d | 2026-11-09 | 2026-11-16 | CO-SD-MH-180, PRO-R25-SD-DL-100 |  | -63.5d |
| CO-SD-MH-200 |  | Install RC Wall Rings & Slab Works for Manholes of Storm Drainage Network | 4d | 2026-11-17 | 2026-11-21 | CO-SD-MH-190, PRO-R25-SD-DL-100 |  | -63.5d |
| CO-SD-MH-220 |  | Backfilling Works for Manholes of Storm Drainage Network | 7d | 2026-11-22 | 2026-11-29 | CO-SD-MH-200, CO-SD-ML-130 FF, ENG-SH-DPO-A-120 |  | -63.5d |
|  | CB | **Catch Basin Sections** |  | 2026-11-09 | 2026-12-22 |  |  |  |
| CO-SD-CB-140 |  | Trench Excavation and Bedding Works for Catch Basins of Storm Drainage Network | 10d | 2026-11-09 | 2026-11-19 | CO-SD-MH-180, ENG-MT-SD-CB-A-110, PRO-SD-1DL-120, PRO-SD-1DL-130, PRO-R25-SD-DL-100 |  | -55.5d |
| CO-SD-CB-150 |  | Installation and Pipes Laying Connection Works for Catch Basins of Storm Drainage Network | 10d | 2026-11-30 | 2026-12-10 | CO-SD-CB-140, PRO-R25-SD-DL-110, PRO-R25-SD-DL-130, CO-SD-MH-220 |  | -63.5d |
| CO-SD-CB-170 |  | Trench Backfilling and Compaction Works for Catch Basins of Storm Drainage Network | 10d | 2026-12-12 | 2026-12-22 | CO-SD-CB-150, CO-SD-ML-130 FF, CO-SD-MH-220, ENG-SH-DPO-A-120 |  | -63.5d |
|  | MH25-MH121 | **FROM MH-12:MH-01** |  | 2026-11-01 | 2027-01-31 |  |  |  |
|  | ML | **Main Line Sections** |  | 2026-11-01 | 2026-12-26 |  |  |  |
| CO-SD-ML-140 |  | Trench Excavation and Bedding Works for Main Lines of Storm Drainage Network | 14d | 2026-11-01 | 2026-11-16 | CO-SD-ML-100, PRO-R25-SW-DL-100, CO-SD-ML-120 SS, CO-EW-220_R, CO-EW-110_R |  | -69.5d |
| CO-SD-ML-150 |  | Pipes Laying Works for Main Lines of Storm Drainage Network | 14d | 2026-11-17 | 2026-12-02 | CO-SD-ML-140, CO-SD-ML-120 |  | -69.5d |
| CO-SD-ML-160 |  | Trench Backfilling and Compaction Works for Main Lines of Storm Drainage Network | 20d | 2026-12-03 | 2026-12-26 | CO-SD-ML-150, CO-SD-ML-130, ENG-SH-DPO-A-120 |  | -57.5d |
|  | MH | **Manholes** |  | 2026-12-03 | 2027-01-09 |  |  |  |
| CO-SD-MH-230 |  | Trench Excavation and Bedding Works for Manholes of Storm Drainage Network | 9d | 2026-12-03 | 2026-12-13 | CO-SD-ML-150, CO-SD-MH-180, PRO-R25-SD-DL-100 |  | -69.5d |
| CO-SD-MH-240 |  | Install RC Footing Works for Manholes of Storm Drainage Network | 7d | 2026-12-14 | 2026-12-21 | CO-SD-MH-230, CO-SD-MH-190, PRO-R25-SD-DL-100 |  | -69.5d |
| CO-SD-MH-250 |  | Install RC Wall Rings & Slab Works for Manholes of Storm Drainage Network | 7d | 2026-12-22 | 2026-12-29 | CO-SD-MH-240, CO-SD-MH-200 |  | -69.5d |
| CO-SD-MH-260 |  | Backfilling Works for Manholes of Storm Drainage Network | 9d | 2026-12-30 | 2027-01-09 | CO-SD-MH-250, CO-SD-ML-160 FF, CO-SD-MH-220, ENG-SH-DPO-A-120 |  | -69.5d |
|  | CB | **Catch Basin Sections** |  | 2026-12-23 | 2027-01-31 |  |  |  |
| CO-SD-CB-180 |  | Trench Excavation and Bedding Works for Catch Basins of Storm Drainage Network | 9d | 2026-12-23 | 2027-01-02 | CO-SD-MH-230, CO-SD-CB-140, CO-SD-CB-170 |  | -63.5d |
| CO-SD-CB-190 |  | Installation and Pipes Laying Connection Works for Catch Basins of Storm Drainage Network | 9d | 2027-01-11 | 2027-01-20 | CO-SD-CB-180, CO-SD-CB-150, CO-SD-MH-260, CO-SD-ML-160, CO-SD-CB-170, CO-SD-MH-220, CO-SW-ML-130, CO-SW-MH-200, CO-SW-ML-160, CO-SW-MH-250, ENG-SH-DPO-A-120 |  | -70.5d |
| CO-SD-CB-200 |  | Trench Backfilling and Compaction Works for Catch Basins of Storm Drainage Network | 9d | 2027-01-21 | 2027-01-31 | CO-SD-CB-190, CO-SD-ML-160 FF, CO-SD-CB-170, CO-SD-MH-260, CO-SD-PO-100-P1 |  | -70.5d |
|  | SW | **Sewage Network** |  | 2026-11-01 | 2027-01-10 |  |  |  |
|  | 2 | **FROM MH-18:MH-10** |  | 2026-11-01 | 2026-12-31 |  |  |  |
|  | ML | **Main Line Sections** |  | 2026-11-01 | 2026-12-21 |  |  |  |
| CO-SW-ML-100 |  | Trench Excavation and Bedding Works for Main Lines of Sewage Network | 12d | 2026-11-01 | 2026-11-14 | ENG-SH-SW-ML-A-110, ENG-MT-SW-ML-A-110, PRO-SW-1DL-100, CO-SD-ML-130 SS+3d, CO-EW-220_R, CO-EW-110_R |  | -77.5d |
| CO-SW-ML-120 |  | Pipes Laying Works for Main Lines of Sewage Network | 12d | 2026-11-15 | 2026-11-28 | CO-SW-ML-100 |  | -77.5d |
| CO-SW-ML-130 |  | Trench Backfilling and Compaction Works for Main Lines of Sewage Network | 20d | 2026-11-29 | 2026-12-21 | CO-SW-ML-120, ENG-SH-DPO-A-120 |  | -74.5d |
|  | 1 | **Manholes** |  | 2026-11-29 | 2026-12-31 |  |  |  |
| CO-SW-MH-160 |  | Excavation Works for Main Line Manholes of Sewage Network | 7d | 2026-11-29 | 2026-12-06 | CO-SW-ML-120, ENG-MT-SW-ML-A-100, PRO-SW-1DL-110 |  | -77.5d |
| CO-SW-MH-170 |  | Installation RC Footing Works for Main Line Manholes of Sewage Network | 7d | 2026-12-07 | 2026-12-14 | CO-SW-MH-160, CO-SW-ML-120 FF |  | -76.5d |
| CO-SW-MH-180 |  | Install Grp Liner Wall Works for Main Line Manholes of Sewage Network | 7d | 2026-12-15 | 2026-12-22 | CO-SW-MH-170 |  | -76.5d |
| CO-SW-MH-190 |  | Pouring Grp Liner Wall Works for Main Line Manholes of Sewage Network | 4d | 2026-12-23 | 2026-12-27 | CO-SW-MH-180 |  | -73.5d |
| CO-SW-MH-200 |  | Backfilling Works for Main Line Manholes of Sewage Network | 4d | 2026-12-28 | 2026-12-31 | CO-SW-MH-190, CO-SW-ML-130 FF, CO-SW-ML-130, ENG-SH-DPO-A-120 |  | -73.5d |
|  | 1 | **FROM MH-10:MH-01** |  | 2026-11-15 | 2027-01-10 |  |  |  |
|  | ML | **Main Line Sections** |  | 2026-11-15 | 2026-12-13 |  |  |  |
| CO-SW-ML-140 |  | Trench Excavation and Bedding Works for Main Lines of Sewage Network | 6d | 2026-11-15 | 2026-11-21 | CO-SW-ML-100, PRO-R25-SW-DL-100 SS |  | -75.5d |
| CO-SW-ML-150 |  | Pipes Laying Works for Main Lines of Sewage Network | 7d | 2026-11-22 | 2026-11-29 | CO-SW-ML-140, CO-SW-ML-120 SS, ENG-SH-SPS-A-160 |  | -75.5d |

| ID | WBS | Task | Duration | Start | Finish | Predecessors | Total float |
| --- | --- | --- | --- | --- | --- | --- | --- |
| CO-SW-ML-160 |  | Trench Backfilling and Compaction Works for Main Lines of Sewage Network | 12d | 2026-11-30 | 2026-12-13 | CO-SW-ML-150, CO-SW-ML-130 SS, CO-UB-PS-100, ENG-SH-DPO-A-120 | -75.5d |
|  | 1 | **Manholes** |  | 2026-12-07 | 2027-01-10 |  |  |
| CO-SW-MH-210 |  | Excavation Works for Main Line Manholes of Sewage Network | 8d | 2026-12-07 | 2026-12-15 | CO-SW-ML-150, CO-SW-MH-160, PRO-R25-SW-DL-110 | -77.5d |
| CO-SW-MH-220 |  | Installation RC Footing Works for Main Line Manholes of Sewage Network | 7d | 2026-12-16 | 2026-12-23 | CO-SW-MH-210, CO-SW-MH-170, CO-SW-ML-160 | -77.5d |
| CO-SW-MH-230 |  | Install Grp Liner Wall Works for Main Line Manholes of Sewage Network | 7d | 2026-12-24 | 2026-12-31 | CO-SW-MH-220, CO-SW-MH-180 | -77.5d |
| CO-SW-MH-240 |  | Pouring Grp Liner Wall Works for Main Line Manholes of Sewage Network | 4d | 2027-01-02 | 2027-01-05 | CO-SW-MH-230, CO-SW-MH-190 | -77.5d |
| CO-SW-MH-250 |  | Backfilling Works for Main Line Manholes of Sewage Network | 4d | 2027-01-06 | 2027-01-10 | CO-SW-MH-240, CO-SW-ML-160, CO-SW-MH-200, ENG-SH-DPO-A-120 | -77.5d |
|  | PW | **Potable Water Network** |  | 2027-01-11 | 2027-04-01 |  |  |
|  | ML | **Main Line Sections** |  | 2027-01-11 | 2027-02-07 |  |  |
| CO-PW-ML-100 |  | Trench Excavation and Bedding Works for Main Lines of Potable Water Network | 8d | 2027-01-11 | 2027-01-19 | ENG-SH-PW-ML-A-110, ENG-MT-PW-ML-A-100, PRO-PW-1DL-100_R, PRO-R25-PW-DL-100_R, CO-SW-ML-130, CO-SW-MH-250, PRO-PW-MF-100_R, CO-SW-MH-250 FF | -77.5d |
| CO-PW-ML-110 |  | Pipes Laying and accessories for Main Lines of Potable Water Network | 8d | 2027-01-20 | 2027-01-28 | CO-PW-ML-100 | -77.5d |
| CO-PW-ML-130 |  | Trench Backfilling and Compaction Works for Main Lines of Potable Water Network | 8d | 2027-01-30 | 2027-02-07 | CO-PW-ML-110 | -75.5d |
|  | VC | **Valve Chamber** |  | 2027-02-08 | 2027-03-03 |  |  |
| CO-PW-VC-170 |  | Excavation Works for Main Line Valves and Valve Chambers of Potable Water Network | 2d | 2027-02-08 | 2027-02-10 | CO-PW-ML-110, ENG-MT-PW-ML-A-110, PRO-PW-1DL-110, CO-PW-ML-130 | -75.5d |
| CO-PW-VC180 |  | Installation Works for Valve Chambers of Potable Water Network | 4d | 2027-02-10 | 2027-02-16 | CO-PW-VC-170 | -75.5d |
| CO-PW-VC-190 |  | Installation Works for Valves of Potable Water Network | 7d | 2027-02-17 | 2027-02-27 | CO-PW-VC180, PRO-PW-1DL-110, PRO-R25-PW-DL-110 | -75.5d |
| CO-PW-VC-220 |  | Backfilling Works for Main Line Valves and Valve Chambers of Potable Water Network | 3d | 2027-02-28 | 2027-03-03 | CO-PW-VC-190, CO-PW-ML-130 FF | -75.5d |
|  | FH | **Fire Hydrant** |  | 2027-03-04 | 2027-04-01 |  |  |
| CO-PW-FH-140 |  | Excavation Works for Fire Hydrants of Potable Water Network | 7d | 2027-03-04 | 2027-03-16 | CO-PW-VC-170, ENG-SH-PW-FH-A-110, ENG-MT-PW-FH-A-100, PRO-PW-1DL-120, CO-PW-ML-130, CO-PW-VC180, CO-PW-VC-220, PRO-R25-PW-DL-120 | -75.5d |
| CO-PW-FH-150 |  | Installation Works for Fire Hydrant of Potable Water Network | 7d | 2027-03-17 | 2027-03-24 | CO-PW-FH-140 | -75.5d |
| CO-PW-FH-160 |  | Trench Backfilling and Compaction Works for Fire Hydrants of Potable Water Network | 7d | 2027-03-25 | 2027-04-01 | CO-PW-FH-150, CO-PW-VC-220 FF | -75.5d |
|  | IR | **Irrigation Network** |  | 2027-01-20 | 2027-03-29 |  |  |
|  | ML | **Main Line Pipes** |  | 2027-01-20 | 2027-03-29 |  |  |
| CO-IR-ML-100 |  | Trench Excavation and Bedding Works for Main Lines of Irrigation Network | 10d | 2027-01-20 | 2027-01-31 | ENG-SH-IR-ML-A-110, ENG-MT-IR-ML-A-100, PRO-IR-1DL-100, PRO-R25-IR-DL-100, CO-PW-ML-100, ENG-SH-HS-S-100 | -71d |
| CO-IR-ML-110 |  | Pipes Laying Works for Main Lines of Irrigation Network | 9.5d | 2027-02-01 | 2027-02-13 | CO-IR-ML-100, PRO-IR-1DL-100, CO-PW-ML-110 | -71d |
| CO-IR-ML-120 |  | Installation Works for Main Line Valves of Irrigation Network | 9d | 2027-02-13 | 2027-02-27 | CO-IR-ML-110, ENG-MT-IR-ML-A-110, PRO-IR-1DL-110, PRO-R25-IR-DL-110 SS, CO-SW-MH-250, CO-PW-ML-130, PRO-R25-IR-DL-110 FF | -71d |
| CO-IR-ML-130 |  | Trench Backfilling and Compaction Works for Main Lines of Irrigation Network | 9d | 2027-03-04 | 2027-03-18 | CO-IR-ML-120, CO-PW-FH-140 SS, CO-PW-FH-140 FF | -74.5d |
| CO-IR-ML-140 |  | Installation Works for Bulbblers And Sprinklers of Irrigation Network | 9d | 2027-03-20 | 2027-03-29 | CO-IR-ML-130 | -67.5d |
|  | TSE | **Treated Sewage Effluent (Tse)** |  | 2027-01-20 | 2027-03-29 |  |  |
|  | ML | **Main Line Pipes** |  | 2027-01-20 | 2027-03-29 |  |  |
| CO-TSE-ML-150 |  | Trench Excavation and Bedding Works for Main Lines of Treated Sewage Effluent (Tse) | 9d | 2027-01-20 | 2027-01-30 | ENG-SH-TSE-ML-A-120, ENG-MT-IR-ML-A-120, PRO-TSE-1DL-120, PRO-R25-TSE-DL-120_R, CO-IR-ML-100 SS, CO-PW-ML-100 | -69.5d |
| CO-TSE-ML-160 |  | Pipes Laying Works for Main Lines of Treated Sewage Effluent (Tse) | 9d | 2027-02-01 | 2027-02-11 | CO-TSE-ML-150, PRO-TSE-1DL-120, CO-IR-ML-110 SS | -69.5d |
| CO-TSE-ML-170 |  | Installation Works for Main Line Valves of Treated Sewage Effluent (Tse) | 8d | 2027-02-13 | 2027-02-24 | CO-TSE-ML-160, ENG-MT-IR-ML-A-130, PRO-TSE-1DL-130, PRO-R25-TSE-DL-130, CO-IR-ML-120 SS | -70d |
| CO-TSE-ML-180 |  | Trench Backfilling and Compaction Works for Treated Sewage Effluent (Tse) | 9d | 2027-03-04 | 2027-03-18 | CO-TSE-ML-170, CO-IR-ML-130 SS | -74.5d |
| CO-TSE-ML-190 |  | Installation Works for Valve and Washout Chambers of Treated Sewage Effluent (Tse) | 9d | 2027-03-20 | 2027-03-29 | CO-TSE-ML-180, CO-IR-ML-140 SS | -55.5d |
|  | MV | **Medium Voltage Network** |  | 2027-01-30 | 2027-03-30 |  |  |
|  | CW | **Cabling Works** |  | 2027-01-30 | 2027-03-30 |  |  |
| CO-MV-ML-250 |  | Trench Excavation and Bedding Works for Medium Voltage Network | 11d | 2027-01-30 | 2027-02-11 | ENG-SH-MV-A-110, ENG-MT-MV-ML-A-100, PRO-MV-1DL-100, PRO-MV-DL-100, CO-TSE-ML-150 SS, CO-SD-ML-130, CO-SD-MH-220, CO-SD-CB-170, CO-SD-ML-160, CO-SD-MH-260, CO-SD-CB-200 SS, CO-SW-ML-130, CO-SW-MH-200, CO-SW-ML-160, CO-SW-MH-250, CO-PW-ML-110 | -77.5d |
| CO-MV-ML-260 |  | Cable Laying Works for Medium Voltage Network | 16d | 2027-02-13 | 2027-03-08 | CO-MV-ML-250 | -77.5d |
| CO-MV-ML-270 |  | Trench Backfilling and Compaction Works for Medium Voltage Network | 16d | 2027-03-13 | 2027-03-30 | CO-MV-ML-260 | -77.5d |
|  | SL | **Street Lighting Network** |  | 2027-01-30 | 2027-04-27 |  |  |
|  | LP | **Lighting Poles Works** |  | 2027-01-30 | 2027-03-21 |  |  |
| CO-SL-LP-300 |  | Foundation Excavation Works for Lighting Poles of Street Lighting Network | 8d | 2027-01-30 | 2027-02-07 | ENG-SH-LV-A-120, ENG-SH-SL-A-110, ENG-MT-SL-A-100, PRO-R25-SL-DL-110, CO-MV-ML-250 SS, CO-SD-CB-200 SS+2d, CO-SD-MH-260, CO-SD-ML-160, CO-SW-ML-130, CO-SW-MH-200, CO-SW-ML-160, CO-SW-MH-250 | -74.5d |
| CO-SL-LP-310 |  | Installation Works for Lighting Poles Foundation of Street Lighting Network | 8d | 2027-02-08 | 2027-02-20 | CO-SL-LP-300 | -74.5d |
| CO-SL-LP-320 |  | Installation Works for Lighting Poles of Street Lighting Network | 9d | 2027-02-20 | 2027-03-06 | CO-SL-LP-310, ENG-MT-SL-A-110, PRO-R25-SL-DL-120 | -74.5d |
| CO-SL-LP-210 |  | Backfilling Works for Lighting Poles of Street Lighting Network | 10d | 2027-03-06 | 2027-03-21 | CO-SL-LP-320 | -74.5d |
|  | CW | **Cabling Works** |  | 2027-02-08 | 2027-03-18 |  |  |
| CO-SL-CL-250 |  | Trench Excavation and Bedding Works for Street Lighting Network | 7d | 2027-02-08 | 2027-02-18 | CO-SL-LP-310 SS, ENG-SH-LV-A-120, ENG-SH-SL-A-110, ENG-MT-SL-ML-A-100, PRO-SL-1DL-100, PRO-R25-SL-DL-100, CO-SL-LP-300 | -71.5d |
| CO-SL-CL-260 |  | Cable Laying Works for Street Lighting Network | 7d | 2027-02-18 | 2027-03-01 | CO-SL-CL-250, CO-SL-LP-300 | -71.5d |
| CO-SL-CL-270 |  | Trench Backfilling and Compaction Works for Street Lighting Network | 8d | 2027-03-06 | 2027-03-18 | CO-SL-CL-260, CO-SL-LP-210 SS | -74.5d |
|  | DPB | **Distrubution Panel Boards** |  | 2027-03-31 | 2027-04-27 |  |  |
| CO-SL-DB-250 |  | Foundation Excavation Works For Panel Boards of Street Lighting Network | 6d | 2027-03-31 | 2027-04-06 | CO-SL-LP-210, CO-SL-CL-270, ENG-MT-SL-DB-A-100, CO-MV-ML-270, CO-TSE-ML-180 | -70d |
| CO-SL-DB-260 |  | Installation Works for Panel Board Concrete Foundations of Street Lighting Network | 6d | 2027-04-07 | 2027-04-13 | CO-SL-DB-250, PRO-R25-SL-DL-160 | -70d |
| CO-SL-DB-270 |  | Installation Works for Lighting Panel Boards of Street Lighting Network | 6d | 2027-04-14 | 2027-04-20 | CO-SL-DB-260 | -70d |
| CO-SL-DB-220 |  | A wall of concrete blocks to install the KWH meter of Street Lighting Network | 6d | 2027-04-21 | 2027-04-27 | CO-SL-DB-270 | -69d |
|  | TE | **Telecom Network** |  | 2027-02-13 | 2027-04-11 |  |  |
|  | PD | **Ducts Works** |  | 2027-02-13 | 2027-03-23 |  |  |
| CO-TE-DW-100 |  | Trench Excavation and Bedding Works for Ducts of Telecom Network | 4d | 2027-02-13 | 2027-02-18 | ENG-SH-TE-A-110, ENG-MT-TE-A-100, PRO-TE-1DL-100, PRO-R25-TE-DL-100, CO-MV-ML-250 | -75.5d |
| CO-TE-DW-110 |  | Pipes Laying Works for Ducts of Telecom Network | 4d | 2027-02-18 | 2027-02-24 | CO-TE-DW-100 | -75.5d |
| CO-TE-DW-130 |  | Trench Backfilling and Compaction Works for Ducts of Telecom Network | 8d | 2027-02-24 | 2027-03-08 | CO-TE-DW-110 | -75.5d |
| CO-TE-DW-120 |  | Pouring Road Crossing Concrete Encasement | 10d | 2027-03-13 | 2027-03-23 | CO-TE-DW-130 | -75.5d |
|  | MH | **Manholes Works** |  | 2027-02-24 | 2027-03-24 |  |  |
| CO-TE-MH-140 |  | Excavation Works for Manholes of Telecom Network | 5d | 2027-02-24 | 2027-03-03 | CO-TE-DW-110, ENG-SH-TE-A-110, ENG-MT-TE-A-110, PRO-TE-1DL-110, PRO-R25-TE-DL-110 | -71.8d |
| CO-TE-MH-150 |  | Installation Works for Manholes of Telecom Network | 7d | 2027-03-04 | 2027-03-16 | CO-TE-MH-140 | -71.8d |
| CO-TE-MH-160 |  | Backfilling Works for Manholes of Telecom Network | 7d | 2027-03-17 | 2027-03-24 | CO-TE-MH-150, CO-TE-DW-120 FF | -71.8d |
|  | DD | **CCTV System Wroks** |  | 2027-03-25 | 2027-04-11 |  |  |
| CO-TE-CTV-100 |  | Digging and Pulling Trenches PVC ducts , Backfilling, Excavations, of Power Cable | 5d | 2027-03-25 | 2027-03-30 | CO-TE-MH-160, CO-TE-DW-120, ENG-SH-MSN-A-120, ENG-SH-CTV-A-110, ENG-MT-CTV-A-100, PRO-CTV-1DL-100, PRO-R25-CTV-DL-100, PRO-CTV-LL-MSI-10 FF | -66d |
| CO-TE-CTV-110 |  | Installation of Network Cable Cat.6A from Network switch to CCTV Camera and ACS Device | 5d | 2027-03-31 | 2027-04-05 | CO-TE-CTV-100 | -66d |
| CO-TE-CTV-130 |  | Installation of Access Control System | 5d | 2027-04-06 | 2027-04-11 | CO-TE-CTV-110 | -66d |
|  | RD | **Road Works** |  | 2027-03-15 | 2027-05-12 |  |  |

| ID | WBS | Task | Duration | Start | Finish | Predecessors | Total float |
| --- | --- | --- | --- | --- | --- | --- | --- |
|  | 3 | **ST+1000:ST+1531** |  | 2027-03-15 | 2027-04-15 |  |  |
|  | RD | **Pre-Bituminous Construction** |  | 2027-03-15 | 2027-04-15 |  |  |
| CO-RD-PB-140 |  | Subgrade Layer for Road Works | 13.5d | 2027-03-15 | 2027-03-30 | CO-EW-200_R, CO-EW-110_R, CO-SD-ML-130, CO-SD-MH-220, CO-SD-CB-170, CO-SW-ML-130, CO-SW-MH-200, CO-PW-ML-130, CO-PW-VC-220, CO-IR-ML-130 SS, CO-TSE-ML-180 SS+2d, CO-MV-ML-270 SS+2d, CO-SL-LP-210 SS+1d, CO-SL-CL-270 SS+1d, CO-TE-DW-120 SS, PRO-R25-RD-DL-100, CO-EW-220_R, CO-MV-ML-260, CO-TE-DW-130 | -77.5d |
| CO-RD-PB-150 |  | Aggregate Base Course Layer for Road Works | 14d | 2027-03-30 | 2027-04-15 | CO-RD-PB-140, PRO-R25-RD-DL-110, CO-TSE-ML-180 | -77.5d |
|  | 2 | **ST+500:ST+1000** |  | 2027-03-31 | 2027-04-28 |  |  |
|  | RD | **Pre-Bituminous Construction** |  | 2027-03-31 | 2027-04-28 |  |  |
| CO-RD-PB-120 |  | Subgrade Layer for Road Works | 10.8d | 2027-03-31 | 2027-04-12 | CO-RD-PB-140, CO-SD-ML-160, CO-SD-MH-260, CO-SD-CB-200, CO-SW-ML-160, CO-SW-MH-250, CO-PW-ML-130, CO-PW-VC-220, CO-PW-FH-160 SS+2d, CO-TSE-ML-180 SS+2d, CO-IR-ML-130 SS+2d, CO-MV-ML-270, CO-SL-LP-210, CO-SL-CL-270, CO-TE-DW-120, CO-TE-MH-160, CO-TE-DW-130, CO-TSE-ML-180, CO-SD-PO-100-P1 | -76.8d |
| CO-RD-PB-130 |  | Aggregate Base Course Layer for Road Works | 11d | 2027-04-15 | 2027-04-28 | CO-RD-PB-120, CO-RD-PB-150 | -77.5d |
|  | 1 | **ST+01:ST+500** |  | 2027-04-12 | 2027-05-12 |  |  |
|  | RD | **Pre-Bituminous Construction** |  | 2027-04-12 | 2027-05-12 |  |  |
| CO-RD-PB-100 |  | Subgrade Layer for Road Works | 12d | 2027-04-12 | 2027-04-26 | CO-RD-PB-120, CO-TE-DW-130, CO-TE-MH-160, CO-SL-CL-270, CO-MV-ML-270, CO-TSE-ML-180, CO-IR-ML-130, CO-PW-FH-160 | -76.8d |
| CO-RD-PB-110 |  | Aggregate Base Course Layer for Road Works | 12d | 2027-04-28 | 2027-05-12 | CO-RD-PB-100, CO-RD-PB-130 | -77.5d |
|  | 3 | **Finishes for Infrastructure Networks** |  | 2027-01-11 | 2027-05-30 |  |  |
|  | 11 | **Storm Drainage Network** |  | 2027-02-01 | 2027-04-17 |  |  |
|  | TF | **Testing and Finishes** |  | 2027-02-01 | 2027-04-17 |  |  |
| CO-SD-ML-TF-100 |  | Testing Work for Pipes of Storm Drainage Network | 10d | 2027-02-01 | 2027-02-14 | CO-SD-ML-130, CO-SD-CB-200, CO-SD-MH-220, CO-SD-CB-170, CO-SD-ML-160, CO-SD-MH-260 | -56d |
| CO-SD-CB-TF-130 |  | Catch Basin Internal Finishes (Benching ) for Storm Drainage Network | 10d | 2027-02-14 | 2027-03-01 | CO-SD-CB-170, CO-SD-CB-200, CO-SD-ML-TF-100 | -56d |
| CO-SD-CB-TF-160 |  | Testing Works for Catch Basins of Storm Drainage Network | 10d | 2027-03-01 | 2027-03-17 | CO-SD-CB-170, CO-SD-ML-TF-100, CO-SD-CB-TF-130, CO-SD-CB-200, CO-SD-PO-100-P1 | -56d |
| CO-SD-CB-TF-110 |  | Install Catch Basin Cover Works for External Finishes of Storm Drainage Network | 10d | 2027-03-18 | 2027-03-29 | CO-SD-CB-TF-130, PRO-SD-1DL-150, PRO-R25-SD-DL-150 FF, CO-SD-CB-TF-160 | -56d |
| CO-SD-MH-TF-120 |  | Main Manhole Internal Finishes (Benching ) for Storm Drainage Network | 10d | 2027-03-30 | 2027-04-10 | CO-SD-MH-220, PRO-SD-1DL-140, CO-SD-CB-200, CO-SD-CB-TF-160, CO-SD-CB-TF-110 | -56d |
| CO-SD-MH-TF-210 |  | Testing Works for Manholes of Storm Drainage Network | 6d | 2027-04-11 | 2027-04-17 | CO-SD-MH-220, CO-SD-ML-TF-100, CO-SD-MH-TF-120, PRO-R25-SD-DL-140, CO-SD-CB-TF-110, CO-SD-MH-260, CO-SD-PO-100-P1 | -56d |
|  | 10 | **Sewage Network** |  | 2027-01-11 | 2027-04-21 |  |  |
|  | TF | **Testing and Finishes** |  | 2027-01-11 | 2027-04-21 |  |  |
| CO-SW-TF-100 |  | Final Testing For Main Line of Sewage Network | 9d | 2027-01-11 | 2027-01-20 | CO-SW-ML-130, CO-SW-MH-250, CO-SW-MH-200, CO-SW-ML-160 | -27d |
| CO-SW-TF-130 |  | Main Manhole Internal Finishes (Benching + Insulation) of Sewage Network | 21d | 2027-01-21 | 2027-02-16 | CO-SW-MH-200, CO-SW-TF-100, CO-SW-MH-250 | -27d |
| CO-SW-TF-110 |  | Install Manhole Cover Works for External Finishes of Sewage Network | 10d | 2027-04-05 | 2027-04-17 | CO-SW-TF-130, PRO-SW-1DL-120, PRO-R25-SW-DL-120 | -60.5d |
| CO-SW-TF-210 |  | Testing Works for Main Line Manholes of Sewage Network | 4d | 2027-04-17 | 2027-04-21 | CO-SW-TF-130, CO-SW-TF-110 | -60.5d |
|  | 9 | **Potable Water Network** |  | 2027-04-03 | 2027-05-08 |  |  |
|  | TF | **Testing and Finishes** |  | 2027-04-03 | 2027-05-08 |  |  |
| CO-PW-TF-110 |  | Testing Work for Main Line of Potable Water Network | 10.5d | 2027-04-03 | 2027-04-14 | CO-PW-ML-130, CO-PW-FH-160, CO-PW-VC180, CO-PW-FH-160 FF | -75.5d |
| CO-PW-TF-120 |  | Fire Hydrant Finishies (S.Box + Safety + Marker Post ) of Potable Water Network | 10d | 2027-04-14 | 2027-04-26 | CO-PW-FH-160, ENG-MT-PW-TF-A-100, CO-PW-TF-110 | -75.5d |
| CO-PW-TF-100 |  | Final Finishes works and Covers for Valves and Valve Chambers of Potable Water Network | 10d | 2027-04-26 | 2027-05-08 | CO-PW-VC-220, ENG-MT-PW-TF-A-100, PRO-PW-1DL-130, PRO-R25-PW-DL-130, CO-PW-TF-110, CO-PW-TF-120 | -75.5d |
|  | 13 | **Irrigation Network** |  | 2027-03-30 | 2027-04-12 |  |  |
|  | TF | **Testing and Finishes** |  | 2027-03-30 | 2027-04-12 |  |  |
| CO-IR-TF-160 |  | Final Testing (pressure tests) of Irrigation Network | 12d | 2027-03-30 | 2027-04-12 | CO-IR-ML-140, CO-IR-ML-130 | -67.5d |
|  | 1 | **Treated Sewage Effluent (Tse)** |  | 2027-04-13 | 2027-04-26 |  |  |
|  | TF | **Testing and Finishes** |  | 2027-04-13 | 2027-04-26 |  |  |
| CO-TSE-TF-170 |  | Final Testing (pressure tests) of Treated Sewage Effluent (Tse) | 11.5d | 2027-04-13 | 2027-04-26 | CO-TSE-ML-190, CO-IR-TF-160, CO-TSE-ML-180 | -67.5d |
|  | 14 | **Medium Voltage Network** |  | 2027-03-31 | 2027-04-20 |  |  |
|  | TT | **Termination and Testing Works** |  | 2027-03-31 | 2027-04-20 |  |  |
| CO-MV-TF-220 |  | Termination Works of Medium Voltage Network | 18d | 2027-03-31 | 2027-04-20 | CO-MV-ML-270, ENG-MT-MV-TF-A-100, PRO-MV-DL-110 | -74d |
|  | 12 | **Street Lighting Network** |  | 2027-04-21 | 2027-05-06 |  |  |
|  | TR | **Termination and Testing Works** |  | 2027-04-21 | 2027-05-06 |  |  |
| CO-SL-LP-330 |  | Installation Works for Lighting Fixtures With Drop Wire of Street Lighting Network | 7d | 2027-04-21 | 2027-04-28 | CO-SL-DB-270, CO-SL-LP-210, ENG-MT-SL-A-120, PRO-R25-SL-DL-140 | -70d |
| CO-SL-TF-200 |  | Testing Works for Lighting Poles of Street Lighting Network | 5d | 2027-04-29 | 2027-05-04 | CO-SL-DB-270, CO-SL-LP-330, CO-SL-ES-230, PRO-R25-SL-DL-130 | -68d |
| CO-SL-TF-220 |  | Termination Works For Lighting Poles Cables of Street Lighting Network | 7d | 2027-04-29 | 2027-05-06 | CO-SL-DB-270, CO-SL-LP-330, CO-SL-ES-230 | -70d |
| CO-SL-TF-230 |  | Termination Works For Panel Board Cables of Street Lighting Network | 7d | 2027-04-29 | 2027-05-06 | CO-SL-DB-270, CO-SL-LP-330, CO-SL-ES-230, PRO-R25-SL-DL-170, CO-SL-DB-220, PRO-SPS-LL-MSI-10 | -70d |
| CO-SL-TF-380 |  | Testing Works For Panel Board Cables of Street Lighting Network | 2d | 2027-04-29 | 2027-05-01 | CO-SL-DB-270, CO-SL-LP-330, CO-SL-ES-230 | -65d |
|  | ES | **Earthing System Works** |  | 2027-04-21 | 2027-04-28 |  |  |
| CO-SL-ES-220 |  | Install Earthing System Works for Lighting Poles of Street Lighting Network | 7d | 2027-04-21 | 2027-04-28 | CO-SL-LP-330 SS, ENG-MT-SL-ES-A-100, PRO-R25-SL-DL-150 | -70d |
| CO-SL-ES-230 |  | Install Earthing System Works for Lighting Panel Boards of Street Lighting Network | 7d | 2027-04-21 | 2027-04-28 | CO-SL-ES-220 SS | -70d |
|  | 3 | **Telecom Network** |  | 2027-04-12 | 2027-04-29 |  |  |
|  | 1 | **Testing and Finishes** |  | 2027-04-12 | 2027-04-29 |  |  |
| CO-TE-CTV-TF-110 |  | Smart Card Printer | 4d | 2027-04-12 | 2027-04-15 | CO-TE-CTV-130 | -66d |
| CO-TE-CTV-TF-120 |  | Card Issue Work Station | 4d | 2027-04-17 | 2027-04-20 | CO-TE-CTV-TF-110 | -66d |
| CO-TE-CTV-TF-130 |  | Photographic Camera with stand | 4d | 2027-04-21 | 2027-04-25 | CO-TE-CTV-TF-120 | -66d |
| CO-TE-CTV-TF-140 |  | Interface modules with CCTV, Fire and other systems | 4d | 2027-04-26 | 2027-04-29 | CO-TE-CTV-TF-130, PRO-LS-LL-MSI-20, PRO-TSE-LL-MSI-30 | -66d |
|  | 2 | **Road Works** |  | 2027-03-30 | 2027-05-30 |  |  |
|  | 3 | **ST+1000:ST+1531** |  | 2027-03-30 | 2027-05-24 |  |  |
|  | 1 | **Bituminous Construction** |  | 2027-04-15 | 2027-05-02 |  |  |
| CO-RD-B-150 |  | Application of Prime Coat Layer for Road Works | 7d | 2027-04-15 | 2027-04-24 | CO-RD-PV-160, PRO-R25-RD-DL-160, CO-RD-PB-150 | -76.5d |
| CO-RD-B-160 |  | Bituminous Base Courses Layers for Road Works- | 7d | 2027-04-24 | 2027-05-02 | CO-RD-B-150, PRO-R25-RD-DL-170, CO-RD-PV-160 | -76.5d |
|  | LS | **Pavement Works** |  | 2027-03-30 | 2027-04-26 |  |  |
| CO-RD-PV-160 |  | Fixing of Curbstone for Sidewalks Pavement | 12.2d | 2027-03-30 | 2027-04-13 | CO-RD-PB-140, PRO-R25-RD-DL-130 | -76.7d |
| CO-RD-PV-170 |  | Fixing of Interlock Tiles for Sidewalks Pavement | 11d | 2027-04-13 | 2027-04-26 | CO-RD-PV-160, PRO-R25-RD-DL-120 | -76.7d |
|  | TS | **Traffic Signs Boards and Roads Marking** |  | 2027-05-02 | 2027-05-24 |  |  |
| CO-RD-F-RM-180 |  | Application of Road Marking Works For Road Works | 7d | 2027-05-02 | 2027-05-10 | CO-RD-B-160, CO-RD-PV-170, PRO-R25-RD-DL-150 | -73.5d |
| CO-RD-F-TS-120 |  | Installation Works of Traffic Signs Boards For Road Works | 7d | 2027-05-10 | 2027-05-24 | CO-RD-F-RM-180, PRO-R25-RD-DL-140 | -73.5d |
|  | 1 | **ST+500:ST+1000** |  | 2027-04-13 | 2027-05-29 |  |  |
|  | 1 | **Bituminous Construction** |  | 2027-05-02 | 2027-05-11 |  |  |

| ID | WBS | Task | Duration | Start | Finish | Predecessors | Complete | Total float |
| --- | --- | --- | --- | --- | --- | --- | --- | --- |
| CO-RD-B-130 |  | Application of Prime Coat Layer for Road Works | 4d | 2027-05-02 | 2027-05-06 | CO-RD-PV-140, CO-RD-PB-130, CO-RD-B-150, CO-RD-B-160 |  | -76.5d |
| CO-RD-B-140 |  | Bituminous Base Courses Layers for Road Works- | 4d | 2027-05-06 | 2027-05-11 | CO-RD-B-130 |  | -76.5d |
|  | LS | **Pavement Works** |  | 2027-04-13 | 2027-05-09 |  |  |  |
| CO-RD-PV-140 |  | Fixing of Curbstone for Sidewalks Pavement | 11d | 2027-04-13 | 2027-04-26 | CO-RD-PB-120, CO-RD-PV-160 |  | -76.7d |
| CO-RD-PV-150 |  | Fixing of Interlock Tiles for Sidewalks Pavement | 11d | 2027-04-26 | 2027-05-09 | CO-RD-PV-140, CO-RD-PV-170 |  | -76.7d |
|  | TS | **Traffic Signs Boards and Roads Marking** |  | 2027-05-12 | 2027-05-29 |  |  |  |
| CO-RD-F-RM-170 |  | Application of Road Marking Works For Road Works | 5d | 2027-05-12 | 2027-05-24 | CO-RD-B-140, CO-RD-PV-150, CO-RD-PB-110, CO-RD-PB-130 |  | -77.5d |
| CO-RD-F-TS-110 |  | Installation Works of Traffic Signs Boards For Road Works | 4d | 2027-05-24 | 2027-05-29 | CO-RD-F-RM-170 |  | -77.5d |
|  | 2 | **ST+01:ST+500** |  | 2027-04-26 | 2027-05-30 |  |  |  |
|  | 1 | **Bituminous Construction** |  | 2027-05-12 | 2027-05-29 |  |  |  |
| CO-RD-B-110 |  | Application of Prime Coat Layer for Road Works | 5d | 2027-05-12 | 2027-05-24 | CO-RD-PV-120, CO-RD-PB-110, CO-RD-B-130 |  | -77.5d |
| CO-RD-B-120 |  | Bituminous Base Courses Layers for Road Works- | 4d | 2027-05-24 | 2027-05-29 | CO-RD-B-110 |  | -77.5d |
|  | LS | **Pavement Works** |  | 2027-04-26 | 2027-05-27 |  |  |  |
| CO-RD-PV-120 |  | Fixing of Curbstone for Sidewalks Pavement | 11d | 2027-04-26 | 2027-05-09 | CO-RD-PB-100, CO-RD-PB-100 FF, CO-RD-PV-140 |  | -76.8d |
| CO-RD-PV-130 |  | Fixing of Interlock Tiles for Sidewalks Pavement | 11d | 2027-05-09 | 2027-05-27 | CO-RD-PV-120, CO-RD-PV-150 |  | -76.8d |
|  | TS | **Traffic Signs Boards and Roads Marking** |  | 2027-05-29 | 2027-05-30 |  |  |  |
| CO-RD-F-RM-160 |  | Application of Road Marking Works For Road Works | 1d | 2027-05-29 | 2027-05-30 | CO-RD-B-120, CO-RD-PV-130 |  | -74.5d |
| CO-RD-F-TS-100 |  | Installation Works of Traffic Signs Boards For Road Works | 1d | 2027-05-29 | 2027-05-30 | CO-RD-F-RM-160 SS |  | -74.5d |
|  | GEN | **Superstructure Work** |  | 2026-07-28 | 2027-05-27 |  |  |  |
|  | 4 | **Utility Buildings** |  | 2026-08-01 | 2027-05-05 |  |  |  |
|  | 6 | **Storm Drainage Ponds** |  | 2026-08-02 | 2026-09-01 |  |  |  |
| CO-SD-PO-100-P1 |  | Excavation & Filling Works - PART 1 | 15d | 2026-08-02 A | 2026-09-01 A | ENG-SH-DPO-A-120, ENG-MT-DPO-CV-A-110, PRO-DPO-CV-1DL-10, PRO-DPO-CV-DL-10 FF, CO-SD-ML-130 SS | 100% |  |
| CO-SD-PO-100-P2 |  | Excavation & Filling Works - PART 2 | 16d | 2026-08-02 A | 2026-09-01 A | CO-SD-PO-100-P1, CO-SD-PO-110-P1 | 100% |  |
| CO-SD-PO-110-P1 |  | Finished Grouted Riprap - PART 1 | 16d | 2026-08-02 A | 2026-09-01 A | CO-SD-PO-100-P1 | 100% |  |
| CO-SD-PO-110-P2 |  | Finished Grouted Riprap - PART 2 | 16d | 2026-08-02 A | 2026-09-01 A | CO-SD-PO-100-P2, CO-SD-PO-110-P1 | 100% |  |
|  | 4 | **Pump Station** |  | 2026-08-01 | 2027-05-05 |  |  |  |
|  | 1 | **Civil work** |  | 2026-08-01 | 2026-11-25 |  |  |  |
|  | 1 | **Sup Structure** |  | 2026-08-01 | 2026-09-01 |  |  |  |
| CO-UB-PS-100 |  | Excavation Work for for Pump station building | 8d | 2026-08-01 A | 2026-08-08 A | ENG-SH-SPS-A-160, PRO-SPS-CV-DL-10 SS | 100% |  |
| CO-UB-PS-110 |  | pouring P.C Conceret for Pump station building | 3d | 2026-08-02 A | 2026-09-01 A | CO-UB-PS-100 | 100% |  |
| CO-UB-PS-120 |  | Formwork for Foundation for Pump station building | 9d | 2026-08-02 A | 2026-09-01 A | CO-UB-PS-110 | 100% |  |
| CO-UB-PS-130 |  | Steel fixing for Foundation for Pump station building | 9d | 2026-08-02 A | 2026-09-01 A | CO-UB-PS-120 | 100% |  |
| CO-UB-PS-140 |  | pouring for Foundation for Pump station building | 1d | 2026-08-02 A | 2026-09-01 A | CO-UB-PS-130 | 100% |  |
| CO-UB-PS-150 |  | curing and deshuttering formwork Pump station building | 3d | 2026-08-02 A | 2026-09-01 A | CO-UB-PS-140 | 100% |  |
| CO-UB-PS-160 |  | Backfilling and compaction work for pump station | 7d | 2026-08-02 A | 2026-09-01 A | CO-UB-PS-150 | 100% |  |
|  | 2 | **Super structure** |  | 2026-09-16 | 2026-11-25 |  |  |  |
| CO-UB-PS-170 |  | Formwork for Wall and columns for Pump station building | 9.21d | 2026-09-16 A | 2026-09-21 A | CO-UB-PS-160 | 100% |  |
| CO-UB-PS-180 |  | Steel fixing for Wall columns | 7d | 2026-09-16 A | 2026-09-21 A | CO-UB-PS-170 | 100% |  |
| CO-UB-PS-190 |  | pouring for Wall columns | 1d | 2026-09-21 A | 2026-09-21 A | CO-UB-PS-180 | 100% |  |
| CO-UB-PS-200 |  | curing and deshuttering formwork for Wall columns | 2d | 2026-09-23 A | 2026-09-23 A | CO-UB-PS-190 | 100% |  |
| CO-UB-PS-210 |  | Waterproofing for Walls columns | 4.75d | 2026-09-24 A | 2026-09-24 A | CO-UB-PS-200 | 100% |  |
| CO-UB-PS-220 |  | Formwork for pump roof | 6d | 2026-09-24 A | 2026-10-03 A | CO-UB-PS-210 | 100% |  |
| CO-UB-PS-230 |  | Steel fixing for pump roof | 6d | 2026-09-26 A | 2026-10-11 A | CO-UB-PS-220 | 100% |  |
| CO-UB-PS-240 |  | pouring for pump roof | 1d | 2026-10-12 A | 2026-10-12 A | CO-UB-PS-230 | 100% |  |
| CO-UB-PS-250 |  | curing and deshuttering formwork for pump roof | 2d | 2026-11-24 | 2026-11-25 | CO-UB-PS-240 |  | 6d |
|  | 2 | **Architectural work** |  | 2026-11-26 | 2027-01-05 |  |  |  |
| CO-UB-PS-260 |  | Executing Masonry Works for Pump station building | 5d | 2026-11-26 | 2026-12-01 | CO-UB-PS-250 |  | 6d |
| CO-UB-PS-270 |  | Executing Plastering Works for Pump station building | 5d | 2026-12-02 | 2026-12-07 | CO-UB-PS-260 |  | 6d |
| CO-UB-PS-280 |  | Executing Painting Works for Pump station building | 5d | 2026-12-08 | 2026-12-13 | CO-UB-PS-270 |  | 6d |
| CO-UB-PS-320 |  | Doors and windows Fixing &Stair Tiles | 7d | 2026-12-29 | 2027-01-05 | CO-UB-PS-280, CO-UB-PS-310 |  | 10d |
|  | 3 | **Electrical work** |  | 2026-12-14 | 2027-04-29 |  |  |  |
| CO-UB-PS-290 |  | Lighting system for pump house | 5d | 2026-12-14 | 2026-12-19 | CO-UB-PS-280 |  | 6d |
| CO-UB-PS-300 |  | Wiring connection for pump house | 5d | 2026-12-20 | 2026-12-24 | CO-UB-PS-290 |  | 6d |
| CO-UB-PS-310 |  | Sockets and switches for pump house | 3d | 2026-12-26 | 2026-12-28 | CO-UB-PS-300 |  | 6d |
| CO-UB-PS-330 |  | Installation for Distribution boards for pump house | 8d | 2026-12-29 | 2027-01-06 | CO-UB-PS-310 |  | 6d |
| CO-UB-PS-370 |  | Executing Earthing and bonding for the entire system | 8d | 2027-04-21 | 2027-04-29 | CO-UB-PS-330, CO-MV-TF-220 |  | -74d |
|  | 4 | **Mechanical work** |  | 2026-12-29 | 2027-05-05 |  |  |  |
| CO-UB-PS-340 |  | Executing HVAC System for Pump station building | 14d | 2026-12-29 | 2027-01-13 | CO-UB-PS-270, CO-UB-PS-310 |  | 8d |
| CO-UB-PS-350 |  | Executing Fire Alarm System for Pump station building | 5d | 2026-12-29 | 2027-01-03 | CO-UB-PS-270, CO-UB-PS-310 |  | 7d |
| CO-UB-PS-360 |  | Executing Fire fighting institution works(piping and wire installation) for Pump station building | 5d | 2027-01-04 | 2027-01-09 | CO-UB-PS-350 |  | 7d |
| CO-UB-PS-380 |  | Executing Fire fighting finishing works for Pump station building | 5d | 2027-01-10 | 2027-01-14 | CO-UB-PS-360, CO-UB-PS-320 |  | 7d |
| CO-UB-PS-390 |  | Installation of pumps | 5d | 2027-05-01 | 2027-05-05 | CO-UB-PS-380, CO-UB-PS-370, CO-UB-PS-340 |  | -74d |
|  | 3 | **Lift Station** |  | 2026-09-01 | 2027-02-15 |  |  |  |
|  | 1 | **Civil work** |  | 2026-09-01 | 2026-12-20 |  |  |  |
|  | 1 | **Sup Structure** |  | 2026-09-01 | 2026-09-30 |  |  |  |
| CO-UB-LS-220 |  | Excavation Work for for Lift Station | 6d | 2026-09-01 A | 2026-09-08 A | CO-UB-PS-100, ENG-SH-LS-A-170 | 100% |  |
| CO-UB-LS-230 |  | pouring P.C Conceret for Lift Station | 5d | 2026-09-08 A | 2026-09-12 A | CO-UB-LS-220, PRO-FE-CV-MF-60 | 100% |  |
| CO-UB-LS-240 |  | Formwork for Foundation for Lift Station | 5d | 2026-09-15 A | 2026-09-20 A | CO-UB-LS-230 | 100% |  |
| CO-UB-LS-250 |  | Steel fixing for Foundation for Lift Station | 6d | 2026-09-21 A | 2026-09-24 A | CO-UB-LS-240 | 100% |  |
| CO-UB-LS-260 |  | pouring for Foundation for Lift Station | 1d | 2026-09-26 A | 2026-09-26 A | CO-UB-LS-250 | 100% |  |

| ID | WBS | Task | Duration | Start | Finish | Predecessors | Complete | Total float |
| --- | --- | --- | --- | --- | --- | --- | --- | --- |
| CO-UB-LS-270 |  | curing and deshuttering formwork Lift Station | 2d | 2026-09-27 A | 2026-09-27 A | CO-UB-LS-260 | 100% |  |
| CO-UB-LS-280 |  | Backfilling and compaction work for pump station | 4d | 2026-09-28 A | 2026-09-30 A | CO-UB-LS-270 | 100% |  |
|  | 2 | **Super structure** |  | 2026-09-23 | 2026-12-20 |  |  |  |
| CO-UB-LS-290 |  | Formwork for Wall and columns for Lift Station | 7d | 2026-09-23 A | 2026-11-24 | CO-UB-LS-280 FF | 70% | -13d |
| CO-UB-LS-300 |  | Steel fixing for Wall columns | 9d | 2026-09-23 A | 2026-11-25 | CO-UB-LS-290 FF, CO-UB-LS-290 SS | 70% | -13d |
| CO-UB-LS-310 |  | pouring for Wall columns | 1d | 2026-09-30 A | 2026-11-25 | CO-UB-LS-300 FF, CO-UB-LS-300 SS | 50% | -13d |
| CO-UB-LS-320 |  | curing and deshuttering formwork for Wall columns | 2d | 2026-11-26 | 2026-11-28 | CO-UB-LS-310, PRO-LS-CV-DL-50 |  | -13d |
| CO-UB-LS-330 |  | Waterproofing for Walls columns | 4d | 2026-11-29 | 2026-12-02 | CO-UB-LS-320 |  | -13d |
| CO-UB-LS-340 |  | Formwork for pump roof | 5d | 2026-12-03 | 2026-12-08 | CO-UB-LS-330 |  | -13d |
| CO-UB-LS-350 |  | Steel fixing for pump roof | 6d | 2026-12-09 | 2026-12-15 | CO-UB-LS-340 |  | -13d |
| CO-UB-LS-360 |  | pouring for pump roof | 1d | 2026-12-16 | 2026-12-16 | CO-UB-LS-350 |  | -13d |
| CO-UB-LS-370 |  | curing and deshuttering formwork for pump roof | 3d | 2026-12-17 | 2026-12-20 | CO-UB-LS-360 |  | -13d |
|  | 2 | **Architectural work** |  | 2026-12-21 | 2027-01-06 |  |  |  |
| CO-UB-LS-380 |  | Executing Masonry Works for Pump station building | 7d | 2026-12-21 | 2026-12-28 | CO-UB-LS-370 |  | -13d |
| CO-UB-LS-390 |  | Executing Plastering Works for Pump station building | 8d | 2026-12-29 | 2027-01-06 | CO-UB-LS-380 |  | -13d |
|  | 3 | **Electrical work** |  | 2027-01-07 | 2027-02-15 |  |  |  |
| CO-UB-LS-400 |  | Lighting system for pump house | 8d | 2027-01-07 | 2027-01-16 | CO-UB-LS-390 |  | -13d |
| CO-UB-LS-420 |  | Wiring connection for pump house | 6d | 2027-01-17 | 2027-01-23 | CO-UB-LS-400 |  | -13d |
| CO-UB-LS-440 |  | Sockets and switches for pump house | 6d | 2027-01-24 | 2027-01-30 | CO-UB-LS-420 |  | -13d |
| CO-UB-LS-460 |  | Installation for Distribution boards for pump house | 6d | 2027-01-31 | 2027-02-06 | CO-UB-LS-440 |  | -13d |
| CO-UB-LS-480 |  | Executing Earthing and bonding for the entire system | 6d | 2027-02-07 | 2027-02-15 | CO-UB-LS-460 |  | -13d |
|  | 4 | **Mechanical work** |  | 2027-01-07 | 2027-02-11 |  |  |  |
| CO-UB-LS-410 |  | Internal pipe installation | 8d | 2027-01-07 | 2027-01-16 | CO-UB-LS-390 |  | -11d |
| CO-UB-LS-430 |  | Guide rails & lifting chains installation | 7d | 2027-01-17 | 2027-01-24 | CO-UB-LS-410 |  | -11d |
| CO-UB-LS-450 |  | ExeValve installation | 7d | 2027-01-25 | 2027-02-01 | CO-UB-LS-430 |  | -11d |
| CO-UB-LS-470 |  | Installation of pumps | 8d | 2027-02-02 | 2027-02-11 | CO-UB-LS-450 |  | -11d |
|  | 5 | **Potable Water Tank** |  | 2026-12-14 | 2027-03-07 |  |  |  |
|  | 1 | **Eearth Work** |  | 2026-12-14 | 2026-12-27 |  |  |  |
| CO-UB-PWT-100 |  | Excavation work for tank foundation tank formation level | 7d | 2026-12-14 | 2026-12-21 | ENG-SH-ST-A-180, PRO-TSE-CV-1DL-50, PRO-TSE-CV-DL-60 |  | -8d |
| CO-UB-PWT-110 |  | Soil replacement Up to tank formation level | 5d | 2026-12-22 | 2026-12-27 | CO-UB-PWT-100 |  | -8d |
|  | 2 | **Structural Work** |  | 2026-12-28 | 2027-01-13 |  |  |  |
| CO-UB-PWT-120 |  | Plain Concrete works | 3d | 2026-12-28 | 2026-12-30 | CO-UB-PWT-110 |  | -8d |
| CO-UB-PWT-130 |  | Form work for Tank Foundation | 5d | 2026-12-31 | 2027-01-05 | CO-UB-PWT-120 |  | -8d |
| CO-UB-PWT-140 |  | Steel Reinforcement work for Tank Foundation | 6d | 2027-01-06 | 2027-01-12 | CO-UB-PWT-130 |  | -8d |
| CO-UB-PWT-150 |  | Casting concrete for Tank Foundation | 1d | 2027-01-13 | 2027-01-13 | CO-UB-PWT-140 |  | -8d |
|  | 3 | **Tank Shell Erection&Roof Installation** |  | 2027-01-14 | 2027-02-09 |  |  |  |
| CO-UB-PWT-160 |  | Bottom ring installation | 6d | 2027-01-14 | 2027-01-20 | CO-UB-PWT-150 |  | -8d |
| CO-UB-PWT-170 |  | shell erection | 8d | 2027-01-21 | 2027-01-30 | CO-UB-PWT-160 |  | -8d |
| CO-UB-PWT-180 |  | Aluminum dome / steel roof installation | 8d | 2027-01-31 | 2027-02-09 | CO-UB-PWT-170 |  | -8d |
|  | 4 | **Mechanical Work&Accessories** |  | 2027-02-09 | 2027-03-07 |  |  |  |
| CO-UB-PWT-190 |  | Inlet / outlet piping connections | 6d | 2027-02-09 | 2027-02-18 | CO-UB-PWT-180 |  | -8d |
| CO-UB-PWT-200 |  | installation Valves | 6d | 2027-02-18 | 2027-02-27 | CO-UB-PWT-190 |  | -8d |
| CO-UB-PWT-210 |  | Ladders, platforms & handrails | 5d | 2027-02-28 | 2027-03-07 | CO-UB-PWT-200 |  | -8d |
|  | 2 | **IrrigationTank** |  | 2026-10-13 | 2026-12-14 |  |  |  |
|  | 1 | **Eearth Work** |  | 2026-10-13 | 2026-10-25 |  |  |  |
| CO-UB-IRT-140 |  | Excavation work for tank foundation tank formation level | 6d | 2026-10-13 | 2026-10-19 |  |  | 37d |
| CO-UB-IRT-150 |  | Soil replacement Up to tank formation level | 5d | 2026-10-20 | 2026-10-25 | CO-UB-IRT-140 |  | 37d |
|  | 2 | **Structural Work** |  | 2026-10-26 | 2026-11-11 |  |  |  |
| CO-UB-IRT-160 |  | Plain Concrete works | 3d | 2026-10-26 | 2026-10-28 | CO-UB-IRT-150 |  | 37d |
| CO-UB-IRT-170 |  | Form work for Tank Foundation | 6d | 2026-10-29 | 2026-11-04 | CO-UB-IRT-160 |  | 37d |
| CO-UB-IRT-180 |  | Steel Reinforcement work for Tank Foundation | 5d | 2026-11-05 | 2026-11-10 | CO-UB-IRT-170 |  | 37d |
| CO-UB-IRT-190 |  | Casting concrete for Tank Foundation | 1d | 2026-11-11 | 2026-11-11 | CO-UB-IRT-180 |  | 37d |
|  | 3 | **Tank Shell Erection&Roof Installation** |  | 2026-11-12 | 2026-12-02 |  |  |  |
| CO-UB-IRT-200 |  | Bottom ring installation | 6d | 2026-11-12 | 2026-11-18 | CO-UB-IRT-190 |  | 37d |
| CO-UB-IRT-210 |  | shell erection | 6d | 2026-11-19 | 2026-11-25 | CO-UB-IRT-200 |  | 37d |
| CO-UB-IRT-220 |  | Aluminum dome / steel roof installation | 6d | 2026-11-26 | 2026-12-02 | CO-UB-IRT-210 |  | 37d |
|  | 4 | **Mechanical Work&Accessories** |  | 2026-12-03 | 2026-12-14 |  |  |  |
| CO-UB-IRT-230 |  | Inlet / outlet piping connections | 4d | 2026-12-03 | 2026-12-07 | CO-UB-IRT-220 |  | 37d |
| CO-UB-IRT-240 |  | installation Valves | 4d | 2026-12-08 | 2026-12-12 | CO-UB-IRT-230 |  | 37d |
| CO-UB-IRT-250 |  | Ladders, platforms & handrails | 2d | 2026-12-13 | 2026-12-14 | CO-UB-IRT-240 |  | 37d |
|  | 1 | **Control Room** |  | 2026-08-02 | 2027-03-06 |  |  |  |
|  | 5 | **Civil Work** |  | 2026-08-02 | 2026-12-12 |  |  |  |
| CO-UB-CR-100 |  | Excavation Work For Control Room Foundation | 7d | 2026-08-02 A | 2026-09-05 A | CO-UB-LS-220 | 100% |  |
| CO-UB-CR-110 |  | Pouring for Plain Concrete | 5d | 2026-09-08 A | 2026-09-12 A | CO-UB-CR-100 | 100% |  |
| CO-UB-CR-120 |  | Pouring R.C Footing For Control Room | 14d | 2026-09-16 A | 2026-09-30 A | CO-UB-CR-110 | 100% |  |
| CO-UB-CR-130 |  | Pouring R.C Columns For Control Room | 8d | 2026-11-24 | 2026-12-02 | CO-UB-CR-120 |  | -7d |
| CO-UB-CR-140 |  | Pouring Beams and Slab For Control Room | 8d | 2026-12-03 | 2026-12-12 | CO-UB-CR-130 |  | -7d |
|  | 6 | **Finishing Work** |  | 2026-12-13 | 2027-03-06 |  |  |  |
|  | 1 | **Architictural work** |  | 2026-12-13 | 2027-01-27 |  |  |  |
| CO-UB-CR-150 |  | Brick Work For Control Room | 9d | 2026-12-13 | 2026-12-22 | CO-UB-CR-140 |  | -7d |

| ID | WBS | Task | Duration | Start | Finish | Predecessors | Total float |
| --- | --- | --- | --- | --- | --- | --- | --- |
| CO-UB-CR-160 |  | Thermal & Moisture Protection Work for Control Room | 7d | 2026-12-23 | 2026-12-30 | CO-UB-CR-150 | -7d |
| CO-UB-CR-200 |  | Install For Curtian Wall and Windows and Doors | 8d | 2026-12-31 | 2027-01-09 | CO-UB-CR-160 | -7d |
| CO-UB-CR-240 |  | External Finshing Work (Walls and Floor) | 8d | 2027-01-10 | 2027-01-18 | CO-UB-CR-200 | -7d |
| CO-UB-CR-250 |  | Internal Finshing Work (Walls,Floor and Ceiling) | 8d | 2027-01-19 | 2027-01-27 | CO-UB-CR-240 | -7d |
|  | 3 | **Mechanical Work** |  | 2026-12-23 | 2027-02-09 |  |  |
|  | 3 | **HVAC System** |  | 2026-12-23 | 2027-02-09 |  |  |
| CO-UB-CR-170 |  | Install of Refrigerant Piping ( fabricated metal ducts with flanges complete with supports, vanes, dampers ) | 4d | 2026-12-23 | 2026-12-27 | CO-UB-CR-150 | 6d |
| CO-UB-CR-260 |  | Install of Mini split actual capacity 2 Ton and Ducted split actual capacity 4 Ton | 7d | 2027-01-28 | 2027-02-04 | CO-UB-CR-250, CO-UB-CR-170 | 4d |
| CO-UB-CR-310 |  | Install of Air Grills 150mm x150mm and Air Diffuser 600mm x 600mm | 3d | 2027-02-06 | 2027-02-09 | CO-UB-CR-260, CO-UB-CR-170 | 4d |
|  | 4 | **Fire Fitting System** |  | 2026-12-28 | 2027-01-31 |  |  |
| CO-UB-CR-180 |  | Installation & Testing of 2 hours Fire rated system for closing the openings between rooms with help of Rock wool | 4d | 2026-12-28 | 2026-12-31 | CO-UB-CR-170 | 6d |
| CO-UB-CR-270 |  | Install Fire Extinguishers | 3d | 2027-01-28 | 2027-01-31 | CO-UB-CR-180, CO-UB-CR-250 | 11d |
|  | 4 | **Electrical Work** |  | 2027-01-02 | 2027-02-25 |  |  |
|  | 1 | **LV Power** |  | 2027-01-28 | 2027-02-16 |  |  |
| CO-UB-CR-190 |  | Install of Distribution board For Control Room | 5d | 2027-01-28 | 2027-02-02 | CO-UB-CR-170, CO-UB-CR-150, CO-UB-CR-250 | -1d |
| CO-UB-CR-220 |  | Install of Earting Cable for Control Room | 5d | 2027-02-03 | 2027-02-09 | CO-UB-CR-190 | -1d |
| CO-UB-CR-280 |  | Install of Socket outlet and LED Lighting | 5d | 2027-02-09 | 2027-02-16 | CO-UB-CR-190, CO-UB-CR-250, CO-UB-CR-220 | -1d |
|  | 3 | **Fire Detection And Alarm System** |  | 2027-01-02 | 2027-02-25 |  |  |
| CO-UB-CR-210 |  | Install of 2C x 1.5 Sqm FR Rated Armored - Cable For Loop Wiring | 5d | 2027-01-02 | 2027-01-06 | CO-UB-CR-170, CO-UB-CR-180 | 6d |
| CO-UB-CR-230 |  | Install of Transmission Communication cable - Fiber Optics 12Core | 5d | 2027-01-07 | 2027-01-12 | CO-UB-CR-210 | 6d |
| CO-UB-CR-290 |  | Install of power supply system for fire alarm control panel | 5d | 2027-01-28 | 2027-02-02 | CO-UB-CR-230, CO-UB-CR-250 | -7d |
| CO-UB-CR-300 |  | Install of Fire Alarm Control panel | 6d | 2027-02-03 | 2027-02-10 | CO-UB-CR-250 FF, CO-UB-CR-210, CO-UB-CR-230, CO-UB-CR-290 | -7d |
| CO-UB-CR-320 |  | Installation of the addressable manual call point with operation safety glass breaking | 3d | 2027-02-10 | 2027-02-15 | CO-UB-CR-300, CO-UB-CR-250 | -7d |
| CO-UB-CR-330 |  | Install of the photoelectric heat & smoke detector | 3d | 2027-02-15 | 2027-02-20 | CO-UB-CR-320 | -7d |
| CO-UB-CR-340 |  | Install of Sounder With Beacon | 3d | 2027-02-15 | 2027-02-20 | CO-UB-CR-330 SS, CO-UB-CR-330 FF | -7d |
| CO-UB-CR-350 |  | Install of Addressable Control module | 4d | 2027-02-20 | 2027-02-25 | CO-UB-CR-340 | -7d |
|  | 2 | **Furnitures work** |  | 2027-02-25 | 2027-03-06 |  |  |
| CO-UB-CR-360 |  | Office Chairs,Tables and Stand | 5d | 2027-02-25 | 2027-03-06 | CO-UB-CR-350, CO-UB-CR-280, CO-UB-CR-270, CO-UB-CR-310 | -7d |
|  | ML | **Softscape and Planting Works** |  | 2027-02-08 | 2027-04-04 |  |  |
|  | 1 | **Planting Beds Preparation** |  | 2027-02-08 | 2027-03-14 |  |  |
| CO-LS-PL-100 |  | Excavation of planting beds | 7d | 2027-02-08 | 2027-02-18 | PRO-FE-CV-DL-90, PRO-R25-IR-DL-140 | -46d |
| CO-LS-PL-110 |  | Supply & placement of suitable topsoil | 7d | 2027-02-18 | 2027-03-01 | CO-LS-PL-100 | -46d |
| CO-LS-PL-120 |  | Soil improvement (fertilizer, compost, additives) | 7d | 2027-03-01 | 2027-03-14 | CO-LS-PL-110 | -46d |
|  | 2 | **Supports & Protection** |  | 2027-03-15 | 2027-03-21 |  |  |
| CO-LS-PL-130 |  | installation of plant supports / stakes | 3d | 2027-03-15 | 2027-03-17 | CO-LS-PL-120 | -46d |
| CO-LS-PL-140 |  | Ties and protection materials | 3d | 2027-03-18 | 2027-03-21 | CO-LS-PL-130 | -46d |
|  | 3 | **Plant Supply** |  | 2027-03-22 | 2027-03-24 |  |  |
| CO-LS-PL-150 |  | installation of trees | 3d | 2027-03-22 | 2027-03-24 | CO-LS-PL-140 | -46d |
|  | 4 | **Site Furnishings** |  | 2027-03-25 | 2027-04-04 |  |  |
| CO-LS-PL-160 |  | installation of Seating benches | 3d | 2027-03-25 | 2027-03-28 | CO-LS-PL-150 | -46d |
| CO-LS-PL-170 |  | tone boulders ï¿½ placement & fixing Works | 3d | 2027-03-29 | 2027-03-31 | CO-LS-PL-160 | -46d |
| CO-LS-PL-180 |  | Gravel Works | 3d | 2027-04-01 | 2027-04-04 | CO-LS-PL-170 | -46d |
|  | 1 | **Fence and Gaurd Room** |  | 2026-07-28 | 2027-05-27 |  |  |
|  | 1 | **Gaurd Room Work** |  | 2026-12-19 | 2027-05-27 |  |  |
|  | 1 | **Civil Work** |  | 2026-12-19 | 2027-02-03 |  |  |
| A1000 |  | Excavation Work For Gaurd Room Foundation | 7d | 2026-12-19 | 2026-12-26 | MS-CF-MOB, ENG-SH-GR-A-190, PRO-GR-CV-1DL-60, PRO-GR-CV-DL-70 | -70d |
| A1010 |  | Pouring for Plain Concrete | 4d | 2026-12-27 | 2026-12-30 | A1000 | -70d |
| A1020 |  | Pouring R.C Footing For Gaurd Room | 11d | 2026-12-31 | 2027-01-12 | A1010 | -70d |
| A1030 |  | Pouring R.C Columns For Gaurd Room | 10d | 2027-01-13 | 2027-01-24 | A1020 | -70d |
| A1040 |  | Pouring Beams and Slab For Gaurd Room | 9d | 2027-01-25 | 2027-02-03 | A1030 | -70d |
|  | 2 | **Finishing Work** |  | 2027-02-04 | 2027-05-27 |  |  |
|  | 1 | **Architictural work** |  | 2027-02-04 | 2027-04-08 |  |  |
| A1050 |  | Brick Work For Gaurd Room | 9d | 2027-02-04 | 2027-02-16 | A1040 | -70d |
| A1060 |  | Thermal & Moisture Protection Work for Gaurd Room | 7d | 2027-02-17 | 2027-02-27 | A1050 | -64d |
| A1070 |  | Install For Curtian Wall and Windows and Doors | 8d | 2027-03-13 | 2027-03-21 | A1060, A1130, A1150 | -70d |
| A1080 |  | External Finshing Work (Walls and Floor) | 8d | 2027-03-22 | 2027-03-30 | A1070 | -70d |
| A1090 |  | Internal Finshing Work (Walls,Floor and Ceiling) | 8d | 2027-03-31 | 2027-04-08 | A1080 | -70d |
|  | 3 | **Mechanical Work** |  | 2027-02-17 | 2027-04-20 |  |  |
|  | 1 | **Sanitary Drainage & Plumbing System** |  | 2027-02-17 | 2027-03-08 |  |  |
| A1110 |  | Install Sanitary Piping System (UPVC) | 4d | 2027-02-17 | 2027-02-22 | A1050 | -70d |
| A1120 |  | Install Base mounted flush tank water Western water closet system | 6d | 2027-02-23 | 2027-03-03 | A1110 | -70d |
| A1130 |  | Install 1 meter length 10mm diameter Flexible Hose and Gate Valves and Slow Closing Valve | 3d | 2027-03-04 | 2027-03-08 | A1120 | -70d |
|  | 2 | **Water Supply System** |  | 2027-02-17 | 2027-04-11 |  |  |
| A1240 |  | Install GRP water tanks capacity of each 1000 liter | 3d | 2027-02-17 | 2027-02-21 | A1050 | -69d |
| A1140 |  | Install for Cold Water Pipe complete with joints, angles, reducer etc. | 5d | 2027-02-22 | 2027-03-01 | A1240 | -69d |
| A1150 |  | Install for Hot Water Pipe complete with joints, angles, reducer etc. | 4d | 2027-03-01 | 2027-03-07 | A1140 | -69d |
| A1160 |  | Install for Isolation Valve,Spray Head,Roof Drain,Floor Drain,Gully teap,Vend on Roof to exhaust air | 3d | 2027-03-07 | 2027-03-14 | A1150 | -50d |
| A1170 |  | Install of Inspection chamber, size 800x900x1000 | 2d | 2027-03-15 | 2027-03-16 | A1160 | -50d |
| A1180 |  | Install OF Electric Water Heater set with connection and Water meter complete with accessories | 2d | 2027-04-10 | 2027-04-11 | A1170, A1090 | -70d |
|  | 3 | **HVAC System** |  | 2027-02-23 | 2027-04-20 |  |  |

| ID | WBS | Task | Duration | Start | Finish | Predecessors | Complete | Total float |
| --- | --- | --- | --- | --- | --- | --- | --- | --- |
| A1200 |  | Install of Refrigerant Piping ( fabricated metal ducts with flanges complete with supports, vanes, dampers ) | 4d | 2027-02-23 | 2027-03-01 | A1050, A1110 |  | -49d |
| A1190 |  | Install of Mini split actual capacity 2 Ton and Ducted split actual capacity 4 Ton | 7d | 2027-04-10 | 2027-04-17 | A1090, A1200 |  | -48d |
| A1210 |  | Install of Air Grills 150mm x150mm and Air Diffuser 600mm x 600mm | 3d | 2027-04-18 | 2027-04-20 | A1190, A1200 |  | -48d |
|  | 4 | **Fire Fitting System** |  | 2027-03-01 | 2027-04-15 |  |  |  |
| A1220 |  | Installation & Testing of 2 hours Fire rated system for closing the openings between rooms with help of Rock wool | 6d | 2027-03-01 | 2027-03-13 | A1200 |  | -49d |
| A1230 |  | Install Fire Extinguishers | 6d | 2027-04-10 | 2027-04-15 | A1220, A1090 |  | -44d |
|  | 4 | **Electrical Work** |  | 2027-03-01 | 2027-05-22 |  |  |  |
|  | 1 | **LV Power** |  | 2027-03-01 | 2027-04-14 |  |  |  |
| A1250 |  | Install of Distribution board For Gaurd Room | 5d | 2027-03-01 | 2027-03-08 | A1200, A1050 |  | -49d |
| A1270 |  | Install of Earting Cable for Gaurd Room | 5d | 2027-03-13 | 2027-03-17 | A1250 |  | -49d |
| A1260 |  | Install of Socket outlet and LED Lighting | 5d | 2027-04-10 | 2027-04-14 | A1250, A1090, A1270 |  | -43d |
|  | 3 | **Fire Detection And Alarm System** |  | 2027-03-14 | 2027-05-03 |  |  |  |
| A1340 |  | Install of 2C x 1.5 Sqm FR Rated Armored - Cable For Loop Wiring | 5d | 2027-03-14 | 2027-03-18 | A1200, A1220 |  | -49d |
| A1350 |  | Install of Transmission Communication cable - Fiber Optics 12Core | 5d | 2027-03-20 | 2027-03-24 | A1340 |  | -49d |
| A1360 |  | Install of power supply system for fire alarm control panel | 5d | 2027-04-10 | 2027-04-14 | A1350, A1090 |  | -62d |
| A1280 |  | Install of Fire Alarm Control panel | 6d | 2027-04-15 | 2027-04-21 | A1090 FF, A1340, A1350, A1360 |  | -62d |
| A1290 |  | Installation of the addressable manual call point with operation safety glass breaking | 3d | 2027-04-22 | 2027-04-25 | A1280, A1090 |  | -62d |
| A1300 |  | Install of the photoelectric heat & smoke detector | 3d | 2027-04-26 | 2027-04-28 | A1290 |  | -62d |
| A1310 |  | Install of Sounder With Beacon | 3d | 2027-04-26 | 2027-04-28 | A1300 SS, A1300 FF |  | -62d |
| A1320 |  | Install of Addressable Control module | 4d | 2027-04-29 | 2027-05-03 | A1310 |  | -62d |
|  | 2 | **Security System** |  | 2027-04-12 | 2027-05-22 |  |  |  |
| A1580 |  | Install 8 Port Industrial PoE Switch 10/100BaseT (0 deg to +70 deg. Celsius) | 5d | 2027-04-12 | 2027-04-17 | A1250, A1090, A1180, A1270 |  | -70d |
| A1590 |  | Optical Fiber,48 Core Splice Closure | 3d | 2027-04-18 | 2027-04-20 | A1580 |  | -69d |
| A1650 |  | Pole/Bollard mounted IP( PoE) and 12U rack dimension | 4d | 2027-04-18 | 2027-04-21 | A1580 |  | -70d |
| A1600 |  | Boom Barrier at Security Guard Room | 5d | 2027-04-22 | 2027-04-27 | A1590, A1650 |  | -70d |
| A1610 |  | Pedestrian turnstile at Security Guard Room | 5d | 2027-04-28 | 2027-05-03 | A1600 |  | -70d |
| A1620 |  | Access Control Unit and Access Card Reader | 4d | 2027-05-04 | 2027-05-08 | A1610 |  | -70d |
| A1630 |  | Magnetic Lock and Break Glass and Exit Push button | 4d | 2027-05-09 | 2027-05-12 | A1620 |  | -70d |
| A1640 |  | Door Sensor and Biometrics Reader | 3d | 2027-05-13 | 2027-05-22 | A1630, A1320 |  | -70d |
|  | 2 | **Furnitures work** |  | 2027-05-23 | 2027-05-27 |  |  |  |
| A1100 |  | Office Chairs,Tables and Stand | 5d | 2027-05-23 | 2027-05-27 | A1640, A1320, A1260, A1230, A1210, A1180 |  | -70d |
|  | 2 | **Fence Work** |  | 2026-07-28 | 2027-04-26 |  |  |  |
|  | 1 | **Northern Fence N01:N03** |  | 2026-07-28 | 2027-01-28 |  |  |  |
|  | 1 | **Civil Work** |  | 2026-07-28 | 2026-10-29 |  |  |  |
| CO-SU-FE-N-CI-100 |  | Excavation Work For Northern Fence | 4d | 2026-07-28 A | 2026-08-01 A | ENG-SH-GR-A-200_R, PRO-FE-CV-DL-80 SS+3d, CO-EW-110_R SS+5d | 100% |  |
| CO-SU-FE-N-CI-110 |  | Pouring for Plain Concrete Northern Fence | 3.5d | 2026-08-02 A | 2026-10-17 | CO-SU-FE-N-CI-100 | 95% | -48d |
| CO-SU-FE-N-CI-120 |  | Pouring R.C Footing For Northern Fence | 6d | 2026-08-02 A | 2026-10-19 | CO-SU-FE-N-CI-110 SS | 85% | -48d |
| CO-SU-FE-N-CI-130 |  | Pouring R.C Columns For Northern Fence | 5d | 2026-10-01 A | 2026-10-25 | CO-SU-FE-N-CI-120, CO-SU-FE-N-CI-100 | 10% | -48d |
| CO-SU-FE-N-CI-140 |  | Pouring Beams For Northern Fence | 4d | 2026-10-03 A | 2026-10-29 | CO-SU-FE-N-CI-130, CO-SU-FE-N-AR-100, CO-SU-FE-WP1-CI-150 | 20% | -22d |
|  | 5 | **Finishing Work** |  | 2026-09-29 | 2027-01-28 |  |  |  |
|  | 3 | **Electrical Work** |  | 2026-10-26 | 2027-01-28 |  |  |  |
| CO-SU-FE-N-EL-100 |  | Trench excavation to receive 2 nos 50mm diameter PVC Conduit | 8d | 2026-10-26 | 2026-11-03 | CO-SU-FE-N-AR-100 |  | -48d |
| CO-SU-FE-N-EL-110 |  | Trench excavation to receive 3 nos 50mm diameter PVC Conduit | 8d | 2026-10-26 | 2026-11-03 | CO-SU-FE-N-EL-100 SS |  | -48d |
| CO-SU-FE-N-EL-120 |  | Fixing of Control cable,CAT6A cable | 9d | 2026-11-04 | 2026-11-14 | CO-SU-FE-N-EL-100, CO-SU-FE-N-EL-110 |  | -48d |
| CO-SU-FE-N-EL-130 |  | Install 800mm x 800mm x 800mm height concrete handhole | 9d | 2026-11-04 | 2026-11-14 | CO-SU-FE-N-EL-100, CO-SU-FE-N-EL-110 |  | -48d |
| CO-SU-FE-N-EL-140 |  | Hot dipped galvanized cable conduits for CAT6A cable and Control Cables embedded to wall | 8d | 2026-11-04 | 2026-11-12 | CO-SU-FE-N-EL-100, CO-SU-FE-N-EL-110 |  | -47d |
| CO-SU-FE-N-EL-150 |  | Fixing Earthing Work (Earth Pit,Grounding rod,Tinned Copper wire) | 8d | 2026-11-15 | 2026-11-23 | CO-SU-FE-N-EL-120, CO-SU-FE-N-EL-130, CO-SU-FE-N-EL-140 |  | -48d |
| CO-SU-FE-N-EL-160 |  | Field Equipment Cabinet enclosed outdoor complete with precast concrete footing, | 8d | 2026-11-24 | 2026-12-02 | CO-SU-FE-N-EL-150 |  | -48d |
| CO-SU-FE-N-EL-170 |  | Fence Lightining 400V, 3PH, 60Hz lighting control panelï¿½ (LCP-02) | 8d | 2026-11-24 | 2026-12-02 | CO-SU-FE-N-EL-150 |  | -48d |
| CO-SU-FE-N-EL-180 |  | Install of direct buried armored cable 4C-16mm2 ,10mm2 | 9d | 2026-12-03 | 2026-12-13 | CO-SU-FE-N-EL-160, CO-SU-FE-N-EL-170 |  | -48d |
| CO-SU-FE-N-EL-190 |  | Install 16mm2,10mm2 CU/PVC wire | 9d | 2026-12-03 | 2026-12-13 | CO-SU-FE-N-EL-160, CO-SU-FE-N-EL-170 |  | -48d |
| CO-SU-FE-N-EL-200 |  | FEC-CCTV ( 4C-16mm2 CU/XLPE/PVC direct buried armored cable,16mm2 CU/PVC wire | 8d | 2026-12-03 | 2026-12-12 | CO-SU-FE-N-EL-160, CO-SU-FE-N-EL-170 |  | -47d |
| CO-SU-FE-N-EL-210 |  | Junction Box for lighting fixture | 8d | 2026-12-14 | 2026-12-22 | CO-SU-FE-N-EL-180, CO-SU-FE-N-EL-190 |  | -46d |
| CO-SU-FE-N-EL-220 |  | IR Intrusion Detection System Quad Beams | 8d | 2027-01-11 | 2027-01-19 | CO-SU-FE-N-EL-180, CO-SU-FE-N-EL-190, CO-SU-FE-N-EL-200, CO-SU-FE-N-EL-210, CO-SU-FE-N-AR-130, CO-SU-FE-N-AR-140, CO-SU-FE-N-AR-120, CO-SU-FE-EP2-AR-400 |  | -6d |
| CO-SU-FE-N-EL-230 |  | Install of 38W, 230V, 1PH, 60Hz fence, led linear uplight lighting, IP66 | 9d | 2027-01-11 | 2027-01-20 | CO-SU-FE-N-EL-190, CO-SU-FE-N-EL-200, CO-SU-FE-N-EL-210, CO-SU-FE-N-AR-120, CO-SU-FE-N-AR-130, CO-SU-FE-N-AR-140, CO-SU-FE-EP2-AR-400 |  | -7d |
| CO-SU-FE-N-EL-240 |  | Install, fixings, testing and commissioning 80W LED | 7d | 2027-01-21 | 2027-01-28 | CO-SU-FE-N-EL-220, CO-SU-FE-N-EL-230 |  | -7d |
|  | 4 | **Architictural work** |  | 2026-09-29 | 2027-01-20 |  |  |  |
| CO-SU-FE-N-AR-100 |  | Install Brick Work For Northern Fence | 8.5d | 2026-09-29 A | 2026-10-25 | CO-SU-FE-N-CI-130 FF | 40% | -48d |
| CO-SU-FE-N-AR-110 |  | External plastering to walls and columns | 7d | 2026-12-14 | 2026-12-21 | CO-SU-FE-N-AR-100, CO-SU-FE-N-CI-140, CO-SU-FE-N-EL-200, CO-SU-FE-N-EL-190, CO-SU-FE-N-EL-180 |  | -48d |
| CO-SU-FE-N-AR-120 |  | Install 50mm thick random cut stone cladding | 7d | 2026-12-22 | 2026-12-29 | CO-SU-FE-N-AR-110 |  | -48d |
| CO-SU-FE-N-AR-130 |  | Install 2 coats of weatherproof paint at walls | 6d | 2026-12-30 | 2027-01-05 | CO-SU-FE-N-AR-120 |  | -48d |
| CO-SU-FE-N-AR-140 |  | Install Stone coping 500mm,525mm | 4d | 2027-01-06 | 2027-01-10 | CO-SU-FE-N-AR-130 |  | -48d |
| CO-SU-FE-N-AR-150 |  | Install MODON Signage | 7d | 2027-01-13 | 2027-01-20 | CO-SU-FE-N-AR-140, CO-SU-FE-WP2-AR-260 |  | -4d |
|  | 2 | **Western Fence P1 ( W01:W06 )** |  | 2026-08-02 | 2027-03-29 |  |  |  |
|  | 1 | **Civil Work** |  | 2026-08-02 | 2026-11-28 |  |  |  |
| CO-SU-FE-WP1-CI-160 |  | Pouring for Plain Concrete Northern Fence | 5d | 2026-08-02 A | 2026-10-18 | CO-SU-FE-WP1-CI-150 | 95% | -15d |
| CO-SU-FE-WP1-CI-170 |  | Pouring R.C Footing For Northern Fence | 8d | 2026-08-02 A | 2026-10-29 | CO-SU-FE-WP1-CI-160 SS, CO-SU-FE-N-CI-140 FF | 85% | -22d |
| CO-SU-FE-WP1-CI-150 |  | Excavation Work For Northern Fence | 8d | 2026-08-18 A | 2026-08-27 A | CO-SU-FE-N-CI-120 SS | 100% |  |
| CO-SU-FE-WP1-CI-180 |  | Pouring R.C Columns For Northern Fence | 16d | 2026-09-17 A | 2026-11-08 | CO-SU-FE-WP1-CI-170 FF, CO-SU-FE-WP1-CI-150 FF, CO-SU-FE-WP1-CI-170 SS | 30% | -22d |
| CO-SU-FE-WP1-CI-190 |  | Pouring Beams For Northern Fence | 17d | 2026-10-05 A | 2026-11-28 | CO-SU-FE-WP1-CI-180, CO-SU-FE-WP1-AR-160, CO-SU-FE-WP2-CI-200 | 20% | -4d |

| ID | WBS | Task | Duration | Start | Finish | Predecessors | Complete | Total float |
| --- | --- | --- | --- | --- | --- | --- | --- | --- |
|  | 5 | **Finishing Work** |  | 2026-09-29 | 2027-03-29 |  |  |  |
|  | 3 | **Electrical Work** |  | 2026-11-09 | 2027-03-29 |  |  |  |
| CO-SU-FE-WP1-EL-260 |  | Trench excavation to receive 2 nos 50mm diameter PVC Conduit | 14d | 2026-11-09 | 2026-11-24 | CO-SU-FE-WP1-AR-160, CO-SU-FE-N-EL-100 |  | -22d |
| CO-SU-FE-WP1-EL-320 |  | Trench excavation to receive 3 nos 50mm diameter PVC Conduit | 14d | 2026-11-09 | 2026-11-24 | CO-SU-FE-WP1-EL-260 SS, CO-SU-FE-N-EL-110 |  | -22d |
| CO-SU-FE-WP1-EL-300 |  | Fixing of Control cable,CAT6A cable | 14d | 2026-11-25 | 2026-12-10 | CO-SU-FE-WP1-EL-260, CO-SU-FE-WP1-EL-320, CO-SU-FE-N-EL-120 |  | -22d |
| CO-SU-FE-WP1-EL-330 |  | Hot dipped galvanized cable conduits for CAT6A cable and Control Cables embedded to wall | 14d | 2026-11-25 | 2026-12-10 | CO-SU-FE-WP1-EL-260, CO-SU-FE-WP1-EL-320, CO-SU-FE-N-EL-140 |  | -22d |
| CO-SU-FE-WP1-EL-310 |  | Install 800mm x 800mm x 800mm height concrete handhole | 14d | 2026-12-23 | 2027-01-07 | CO-SU-FE-WP1-EL-260, CO-SU-FE-WP1-EL-320, CO-SU-FE-N-EL-130, CO-SU-FE-N-EL-210 |  | -46d |
| CO-SU-FE-WP1-EL-280 |  | Fixing Earthing Work (Earth Pit,Grounding rod,Tinned Copper wire) | 11d | 2027-01-11 | 2027-01-23 | CO-SU-FE-WP1-EL-300, CO-SU-FE-WP1-EL-310, CO-SU-FE-WP1-EL-330, CO-SU-FE-N-EL-150, CO-SU-FE-N-AR-140, CO-SU-FE-N-EL-210 |  | -48d |
| CO-SU-FE-WP1-EL-340 |  | Field Equipment Cabinet enclosed outdoor complete with precast concrete footing, | 9d | 2027-01-24 | 2027-02-02 | CO-SU-FE-WP1-EL-280, CO-SU-FE-N-EL-160 |  | -48d |
| CO-SU-FE-WP1-EL-350 |  | Fence Lightining 400V, 3PH, 60Hz lighting control panelï¿½ (LCP-02) | 9d | 2027-01-24 | 2027-02-02 | CO-SU-FE-WP1-EL-280, CO-SU-FE-N-EL-170 |  | -48d |
| CO-SU-FE-WP1-EL-360 |  | Install of direct buried armored cable 4C-16mm2 ,10mm2 | 8d | 2027-02-03 | 2027-02-14 | CO-SU-FE-WP1-EL-340, CO-SU-FE-WP1-EL-350, CO-SU-FE-N-EL-180 |  | -47d |
| CO-SU-FE-WP1-EL-370 |  | Install 16mm2,10mm2 CU/PVC wire | 8d | 2027-02-03 | 2027-02-14 | CO-SU-FE-WP1-EL-340, CO-SU-FE-WP1-EL-350, CO-SU-FE-N-EL-190 |  | -47d |
| CO-SU-FE-WP1-EL-390 |  | FEC-CCTV ( 4C-16mm2 CU/XLPE/PVC direct buried armored cable,16mm2 CU/PVC wire | 9d | 2027-02-03 | 2027-02-15 | CO-SU-FE-WP1-EL-340, CO-SU-FE-WP1-EL-350, CO-SU-FE-N-EL-200 |  | -48d |
| CO-SU-FE-WP1-EL-250 |  | Junction Box for lighting fixture | 11d | 2027-02-14 | 2027-03-02 | CO-SU-FE-WP1-EL-360, CO-SU-FE-WP1-EL-370, CO-SU-FE-N-EL-210 |  | -44d |
| CO-SU-FE-WP1-EL-290 |  | IR Intrusion Detection System Quad Beams | 4d | 2027-03-21 | 2027-03-24 | CO-SU-FE-WP1-EL-360, CO-SU-FE-WP1-EL-370, CO-SU-FE-WP1-EL-390, CO-SU-FE-WP1-EL-250, CO-SU-FE-WP1-AR-190, CO-SU-FE-WP1-AR-200, CO-SU-FE-WP1-AR-180, CO-SU-FE-N-EL-220 |  | -48d |
| CO-SU-FE-WP1-EL-380 |  | Install of 38W, 230V, 1PH, 60Hz fence, led linear uplight lighting, IP66 | 4d | 2027-03-21 | 2027-03-24 | CO-SU-FE-WP1-EL-370, CO-SU-FE-WP1-EL-390, CO-SU-FE-WP1-EL-250, CO-SU-FE-WP1-AR-180, CO-SU-FE-WP1-AR-190, CO-SU-FE-WP1-AR-200, CO-SU-FE-N-EL-220 |  | -45d |
| CO-SU-FE-WP1-EL-270 |  | Install, fixings, testing and commissioning 80W LED | 4d | 2027-03-25 | 2027-03-29 | CO-SU-FE-WP1-EL-290, CO-SU-FE-WP1-EL-380, CO-SU-FE-N-EL-240 |  | -45d |
|  | 4 | **Architictural work** |  | 2026-09-29 | 2027-03-29 |  |  |  |
| CO-SU-FE-WP1-AR-160 |  | Install Brick Work For Northern Fence | 9d | 2026-09-29 A | 2026-11-08 | CO-SU-FE-WP1-CI-180 FF, CO-SU-FE-WP1-CI-180 SS | 40% | -22d |
| CO-SU-FE-WP1-AR-170 |  | External plastering to walls and columns | 6d | 2027-02-15 | 2027-02-24 | CO-SU-FE-WP1-AR-160, CO-SU-FE-WP1-CI-190, CO-SU-FE-WP1-EL-390, CO-SU-FE-WP1-EL-370, CO-SU-FE-WP1-EL-360 |  | -48d |
| CO-SU-FE-WP1-AR-180 |  | Install 50mm thick random cut stone cladding | 5d | 2027-02-24 | 2027-03-03 | CO-SU-FE-WP1-AR-170 |  | -48d |
| CO-SU-FE-WP1-AR-190 |  | Install 2 coats of weatherproof paint at walls | 6d | 2027-03-04 | 2027-03-15 | CO-SU-FE-WP1-AR-180 |  | -48d |
| CO-SU-FE-WP1-AR-200 |  | Install Stone coping 500mm,525mm | 4d | 2027-03-16 | 2027-03-20 | CO-SU-FE-WP1-AR-190 |  | -48d |
| CO-SU-FE-WP1-AR-210 |  | Install MODON Signage | 8d | 2027-03-21 | 2027-03-29 | CO-SU-FE-WP1-AR-200, CO-SU-FE-N-AR-150 |  | -45d |
|  | 3 | **Western Fence P2 ( W07:W12 )** |  | 2026-08-02 | 2027-04-10 |  |  |  |
|  | 1 | **Civil Work** |  | 2026-08-02 | 2026-12-06 |  |  |  |
| CO-SU-FE-WP2-CI-200 |  | Excavation Work For Northern Fence | 5d | 2026-08-02 A | 2026-09-01 A | CO-SU-FE-WP1-CI-170 SS | 100% |  |
| CO-SU-FE-WP2-CI-210 |  | Pouring for Plain Concrete Northern Fence | 5d | 2026-08-02 A | 2026-10-26 | CO-SU-FE-WP2-CI-200 | 95% | -4d |
| CO-SU-FE-WP2-CI-220 |  | Pouring R.C Footing For Northern Fence | 7d | 2026-08-02 A | 2026-10-28 | CO-SU-FE-WP2-CI-210 SS | 85% | -4d |
| CO-SU-FE-WP2-CI-230 |  | Pouring R.C Columns For Northern Fence | 9d | 2026-09-19 A | 2026-10-31 | CO-SU-FE-WP2-CI-220 FF, CO-SU-FE-WP2-CI-220 SS | 30% | -4d |
| CO-SU-FE-WP2-CI-240 |  | Pouring Beams For Northern Fence | 7d | 2026-10-11 A | 2026-12-06 | CO-SU-FE-WP2-CI-230, CO-SU-FE-WP2-AR-220, CO-SU-FE-WP1-CI-190 | 20% | -4d |
|  | 5 | **Finishing Work** |  | 2026-09-29 | 2027-04-10 |  |  |  |
|  | 3 | **Electrical Work** |  | 2026-11-01 | 2027-04-10 |  |  |  |
| CO-SU-FE-WP2-EL-410 |  | Trench excavation to receive 2 nos 50mm diameter PVC Conduit | 4d | 2026-11-01 | 2026-11-04 | CO-SU-FE-WP2-AR-220 |  | -4d |
| CO-SU-FE-WP2-EL-470 |  | Trench excavation to receive 3 nos 50mm diameter PVC Conduit | 6d | 2026-11-01 | 2026-11-07 | CO-SU-FE-WP2-EL-410 SS |  | -4d |
| CO-SU-FE-WP2-EL-450 |  | Fixing of Control cable,CAT6A cable | 7d | 2026-11-08 | 2026-11-15 | CO-SU-FE-WP2-EL-410, CO-SU-FE-WP2-EL-470 |  | -4d |
| CO-SU-FE-WP2-EL-460 |  | Install 800mm x 800mm x 800mm height concrete handhole | 6.8d | 2026-11-08 | 2026-11-15 | CO-SU-FE-WP2-EL-410, CO-SU-FE-WP2-EL-470, CO-SU-FE-WP2-EL-410 FF |  | -3.8d |
| CO-SU-FE-WP2-EL-480 |  | Hot dipped galvanized cable conduits for CAT6A cable and Control Cables embedded to wall | 6d | 2026-11-08 | 2026-11-14 | CO-SU-FE-WP2-EL-410, CO-SU-FE-WP2-EL-470 |  | -3d |
| CO-SU-FE-WP2-EL-430 |  | Fixing Earthing Work (Earth Pit,Grounding rod,Tinned Copper wire) | 6d | 2026-11-16 | 2026-11-22 | CO-SU-FE-WP2-EL-450, CO-SU-FE-WP2-EL-460, CO-SU-FE-WP2-EL-480 |  | -4d |
| CO-SU-FE-WP2-EL-490 |  | Field Equipment Cabinet enclosed outdoor complete with precast concrete footing, | 4d | 2026-11-23 | 2026-11-26 | CO-SU-FE-WP2-EL-430, CO-SU-FE-WP2-EL-460 |  | -4d |
| CO-SU-FE-WP2-EL-510 |  | Install of direct buried armored cable 4C-16mm2 ,10mm2 | 7.5d | 2026-11-28 | 2026-12-06 | CO-SU-FE-WP2-EL-490, CO-SU-FE-WP2-EL-430, CO-SU-FE-WP2-EL-450, CO-SU-FE-WP2-EL-460 |  | -3.5d |
| CO-SU-FE-WP2-EL-520 |  | Install 16mm2,10mm2 CU/PVC wire | 7.5d | 2026-11-28 | 2026-12-06 | CO-SU-FE-WP2-EL-490, CO-SU-FE-WP2-EL-430, CO-SU-FE-WP2-EL-450 |  | -3.5d |
| CO-SU-FE-WP2-EL-540 |  | FEC-CCTV ( 4C-16mm2 CU/XLPE/PVC direct buried armored cable,16mm2 CU/PVC wire | 8d | 2026-11-28 | 2026-12-06 | CO-SU-FE-WP2-EL-490, CO-SU-FE-WP2-EL-430, CO-SU-FE-WP2-EL-450 |  | -4d |
| CO-SU-FE-WP2-EL-400 |  | Junction Box for lighting fixture | 3d | 2026-12-06 | 2026-12-09 | CO-SU-FE-WP2-EL-510, CO-SU-FE-WP2-EL-520 |  | 10.5d |
| CO-SU-FE-WP2-EL-440 |  | IR Intrusion Detection System Quad Beams | 7d | 2027-03-25 | 2027-04-01 | CO-SU-FE-WP2-EL-510, CO-SU-FE-WP2-EL-520, CO-SU-FE-WP2-EL-540, CO-SU-FE-WP2-EL-400, CO-SU-FE-WP2-AR-250, CO-SU-FE-WP2-AR-260, CO-SU-FE-WP2-AR-240, CO-SU-FE-WP1-EL-290 |  | -48d |
| CO-SU-FE-WP2-EL-530 |  | Install of 38W, 230V, 1PH, 60Hz fence, led linear uplight lighting, IP66 | 7d | 2027-03-25 | 2027-04-01 | CO-SU-FE-WP2-EL-520, CO-SU-FE-WP2-EL-540, CO-SU-FE-WP2-EL-400, CO-SU-FE-WP2-AR-240, CO-SU-FE-WP2-AR-250, CO-SU-FE-WP2-AR-260, CO-SU-FE-WP1-EL-290 |  | -48d |
| CO-SU-FE-WP2-EL-420 |  | Install, fixings, testing and commissioning 80W LED | 7d | 2027-04-03 | 2027-04-10 | CO-SU-FE-WP2-EL-440, CO-SU-FE-WP2-EL-530, CO-SU-FE-WP1-EL-270 |  | -48d |
|  | 4 | **Architictural work** |  | 2026-09-29 | 2027-04-07 |  |  |  |
| CO-SU-FE-WP2-AR-220 |  | Install Brick Work For Northern Fence | 8d | 2026-09-29 A | 2026-10-31 | CO-SU-FE-WP2-CI-230 FF, CO-SU-FE-WP2-CI-230 SS | 40% | -4d |
| CO-SU-FE-WP2-AR-230 |  | External plastering to walls and columns | 8d | 2026-12-07 | 2026-12-15 | CO-SU-FE-WP2-AR-220, CO-SU-FE-WP2-CI-240, CO-SU-FE-WP2-EL-540, CO-SU-FE-WP2-EL-520, CO-SU-FE-WP2-EL-510 |  | -4d |
| CO-SU-FE-WP2-AR-240 |  | Install 50mm thick random cut stone cladding | 8d | 2026-12-16 | 2026-12-24 | CO-SU-FE-WP2-AR-230 |  | -4d |
| CO-SU-FE-WP2-AR-250 |  | Install 2 coats of weatherproof paint at walls | 8d | 2026-12-26 | 2027-01-03 | CO-SU-FE-WP2-AR-240 |  | -4d |
| CO-SU-FE-WP2-AR-260 |  | Install Stone coping 500mm,525mm | 8d | 2027-01-04 | 2027-01-12 | CO-SU-FE-WP2-AR-250 |  | -4d |
| CO-SU-FE-WP2-AR-270 |  | Install MODON Signage | 8d | 2027-03-30 | 2027-04-07 | CO-SU-FE-WP2-AR-260, CO-SU-FE-WP1-AR-210 |  | -45d |
|  | 4 | **Southern Fence S01:S05** |  | 2026-08-01 | 2027-04-18 |  |  |  |
|  | 1 | **Civil Work** |  | 2026-08-01 | 2026-11-12 |  |  |  |
| CO-SU-FE-S-CI-250 |  | Excavation Work For Northern Fence | 7d | 2026-08-01 A | 2026-08-09 A | ENG-SH-GR-A-200_R, CO-EW-110_R SS, PRO-FE-CV-DL-80 SS, CO-SU-FE-N-CI-100 | 100% |  |
| CO-SU-FE-S-CI-260 |  | Pouring for Plain Concrete Northern Fence | 3d | 2026-08-02 A | 2026-10-15 | CO-SU-FE-S-CI-250 | 95% | 5d |
| CO-SU-FE-S-CI-270 |  | Pouring R.C Footing For Northern Fence | 8d | 2026-08-02 A | 2026-10-21 | CO-SU-FE-S-CI-260 SS | 85% | 5d |
| CO-SU-FE-S-CI-280 |  | Pouring R.C Columns For Northern Fence | 10d | 2026-10-05 A | 2026-11-02 | CO-SU-FE-S-CI-270 | 20% | 5d |
| CO-SU-FE-S-CI-290 |  | Pouring Beams For Northern Fence | 9d | 2026-10-08 A | 2026-11-12 | CO-SU-FE-S-CI-280, CO-SU-FE-S-AR-280 SS | 20% | 14d |
|  | 5 | **Finishing Work** |  | 2026-09-29 | 2027-04-18 |  |  |  |
|  | 3 | **Electrical Work** |  | 2026-10-27 | 2027-04-18 |  |  |  |
| CO-SU-FE-S-EL-560 |  | Trench excavation to receive 2 nos 50mm diameter PVC Conduit | 15d | 2026-10-27 | 2026-11-12 | CO-SU-FE-S-AR-280 SS |  | 5d |
| CO-SU-FE-S-EL-620 |  | Trench excavation to receive 3 nos 50mm diameter PVC Conduit | 15d | 2026-10-27 | 2026-11-12 | CO-SU-FE-S-EL-560 SS |  | 5d |
| CO-SU-FE-S-EL-600 |  | Fixing of Control cable,CAT6A cable | 15d | 2026-11-14 | 2026-11-30 | CO-SU-FE-S-EL-560, CO-SU-FE-S-EL-620 |  | 5d |
| CO-SU-FE-S-EL-610 |  | Install 800mm x 800mm x 800mm height concrete handhole | 15d | 2026-11-14 | 2026-11-30 | CO-SU-FE-S-EL-560, CO-SU-FE-S-EL-620 |  | 5d |
| CO-SU-FE-S-EL-630 |  | Hot dipped galvanized cable conduits for CAT6A cable and Control Cables embedded to wall | 15d | 2026-11-14 | 2026-11-30 | CO-SU-FE-S-EL-560, CO-SU-FE-S-EL-620 |  | 5d |
| CO-SU-FE-S-EL-580 |  | Fixing Earthing Work (Earth Pit,Grounding rod,Tinned Copper wire) | 6d | 2026-12-01 | 2026-12-07 | CO-SU-FE-S-EL-600, CO-SU-FE-S-EL-610, CO-SU-FE-S-EL-630 |  | 5d |
| CO-SU-FE-S-EL-640 |  | Field Equipment Cabinet enclosed outdoor complete with precast concrete footing, | 4d | 2026-12-03 | 2026-12-07 | CO-SU-FE-S-EL-580 SS, CO-SU-FE-S-EL-580 FF |  | 5d |

| ID | WBS | Task | Duration | Start | Finish | Predecessors | Complete | Total float |
| --- | --- | --- | --- | --- | --- | --- | --- | --- |
| CO-SU-FE-S-EL-650 |  | Fence Lightining 400V, 3PH, 60Hz lighting control panelï¿½ (LCP-02) | 4d | 2026-12-03 | 2026-12-07 | CO-SU-FE-S-EL-580 SS, CO-SU-FE-S-EL-580 FF |  | 5d |
| CO-SU-FE-S-EL-660 |  | Install of direct buried armored cable 4C-16mm2 ,10mm2 | 10d | 2026-12-03 | 2026-12-14 | CO-SU-FE-S-EL-640 SS, CO-SU-FE-S-EL-650 SS |  | 6d |
| CO-SU-FE-S-EL-670 |  | Install 16mm2,10mm2 CU/PVC wire | 6d | 2026-12-08 | 2026-12-14 | CO-SU-FE-S-EL-640, CO-SU-FE-S-EL-650 |  | 6d |
| CO-SU-FE-S-EL-690 |  | FEC-CCTV ( 4C-16mm2 CU/XLPE/PVC direct buried armored cable,16mm2 CU/PVC wire | 7d | 2026-12-08 | 2026-12-15 | CO-SU-FE-S-EL-640, CO-SU-FE-S-EL-650 |  | 5d |
| CO-SU-FE-S-EL-550 |  | Junction Box for lighting fixture | 7d | 2026-12-15 | 2026-12-22 | CO-SU-FE-S-EL-660, CO-SU-FE-S-EL-670, CO-SU-FE-WP2-EL-400 |  | 6d |
| CO-SU-FE-S-EL-590 |  | IR Intrusion Detection System Quad Beams | 7d | 2027-03-17 | 2027-03-24 | CO-SU-FE-S-EL-660, CO-SU-FE-S-EL-670, CO-SU-FE-S-EL-690, CO-SU-FE-S-EL-550, CO-SU-FE-S-AR-310, CO-SU-FE-S-AR-320 SS, CO-SU-FE-S-AR-300 |  | -34d |
| CO-SU-FE-S-EL-680 |  | Install of 38W, 230V, 1PH, 60Hz fence, led linear uplight lighting, IP66 | 7d | 2027-04-03 | 2027-04-10 | CO-SU-FE-S-EL-670, CO-SU-FE-S-EL-690, CO-SU-FE-S-EL-550, CO-SU-FE-S-AR-300, CO-SU-FE-S-AR-310, CO-SU-FE-S-AR-320, CO-SU-FE-WP2-EL-440 |  | -48d |
| CO-SU-FE-S-EL-570 |  | Install, fixings, testing and commissioning 80W LED | 7d | 2027-04-11 | 2027-04-18 | CO-SU-FE-S-EL-590, CO-SU-FE-S-EL-680, CO-SU-FE-WP2-EL-420 |  | -48d |
|  | 4 | **Architictural work** |  | 2026-09-29 | 2027-04-17 |  |  |  |
| CO-SU-FE-S-AR-280 |  | Install Brick Work For Northern Fence | 6d | 2026-09-29 A | 2026-11-02 | CO-SU-FE-S-CI-280 FF | 40% | 5d |
| CO-SU-FE-S-AR-290 |  | External plastering to walls and columns | 6d | 2026-12-16 | 2026-12-22 | CO-SU-FE-S-AR-280, CO-SU-FE-S-CI-290, CO-SU-FE-S-EL-690, CO-SU-FE-S-EL-670, CO-SU-FE-S-EL-660 |  | 5d |
| CO-SU-FE-S-AR-300 |  | Install 50mm thick random cut stone cladding | 6d | 2026-12-23 | 2026-12-29 | CO-SU-FE-S-AR-290 |  | 5d |
| CO-SU-FE-S-AR-310 |  | Install 2 coats of weatherproof paint at walls | 8d | 2027-03-02 | 2027-03-16 | CO-SU-FE-S-AR-300, CO-SU-FE-WP1-EL-250 |  | -44d |
| CO-SU-FE-S-AR-320 |  | Install Stone coping 500mm,525mm | 10d | 2027-03-17 | 2027-03-28 | CO-SU-FE-S-AR-310 |  | -44d |
| CO-SU-FE-S-AR-330 |  | Install MODON Signage | 8d | 2027-04-08 | 2027-04-17 | CO-SU-FE-S-AR-320, CO-SU-FE-WP2-AR-270, CO-SU-FE-WP2-AR-270 FF, CO-SU-FE-WP2-AR-270 SS |  | -45d |
|  | 5 | **Eastern Fence P1 ( E01:E06 )** |  | 2026-08-02 | 2027-04-22 |  |  |  |
|  | 1 | **Civil Work** |  | 2026-08-02 | 2026-11-21 |  |  |  |
| CO-SU-FE-EP1-CI-310 |  | Pouring for Plain Concrete Northern Fence | 8d | 2026-08-02 A | 2026-10-21 | CO-SU-FE-EP1-CI-300 | 95% | 13d |
| CO-SU-FE-EP1-CI-320 |  | Pouring R.C Footing For Northern Fence | 12d | 2026-08-02 A | 2026-10-26 | CO-SU-FE-EP1-CI-310 SS | 85% | 13d |
| CO-SU-FE-EP1-CI-300 |  | Excavation Work For Northern Fence | 12d | 2026-08-12 A | 2026-08-26 A | CO-SU-FE-S-CI-270 SS | 100% |  |
| CO-SU-FE-EP1-CI-330 |  | Pouring R.C Columns For Northern Fence | 15d | 2026-10-06 A | 2026-11-12 | CO-SU-FE-EP1-CI-320 | 20% | 13d |
| CO-SU-FE-EP1-CI-340 |  | Pouring Beams For Northern Fence | 7d | 2026-10-08 A | 2026-11-21 | CO-SU-FE-EP1-CI-330, CO-SU-FE-EP1-AR-340, CO-SU-FE-S-CI-290 | 20% | 14d |
|  | 5 | **Finishing Work** |  | 2026-09-29 | 2027-04-22 |  |  |  |
|  | 3 | **Electrical Work** |  | 2026-11-14 | 2027-04-22 |  |  |  |
| CO-SU-FE-EP1-EL-710 |  | Trench excavation to receive 2 nos 50mm diameter PVC Conduit | 4d | 2026-11-14 | 2026-11-17 | CO-SU-FE-EP1-AR-340 |  | 13d |
| CO-SU-FE-EP1-EL-770 |  | Trench excavation to receive 3 nos 50mm diameter PVC Conduit | 4d | 2026-11-14 | 2026-11-17 | CO-SU-FE-EP1-EL-710 SS |  | 13d |
| CO-SU-FE-EP1-EL-750 |  | Fixing of Control cable,CAT6A cable | 4d | 2026-11-18 | 2026-11-22 | CO-SU-FE-EP1-EL-710, CO-SU-FE-EP1-EL-770 |  | 13d |
| CO-SU-FE-EP1-EL-760 |  | Install 800mm x 800mm x 800mm height concrete handhole | 4d | 2026-11-18 | 2026-11-22 | CO-SU-FE-EP1-EL-710, CO-SU-FE-EP1-EL-770 |  | 13d |
| CO-SU-FE-EP1-EL-780 |  | Hot dipped galvanized cable conduits for CAT6A cable and Control Cables embedded to wall | 4d | 2026-11-18 | 2026-11-22 | CO-SU-FE-EP1-EL-710, CO-SU-FE-EP1-EL-770 |  | 13d |
| CO-SU-FE-EP1-EL-730 |  | Fixing Earthing Work (Earth Pit,Grounding rod,Tinned Copper wire) | 6d | 2026-11-23 | 2026-11-29 | CO-SU-FE-EP1-EL-750, CO-SU-FE-EP1-EL-760, CO-SU-FE-EP1-EL-780, CO-SU-FE-EP1-CI-340 |  | 13d |
| CO-SU-FE-EP1-EL-790 |  | Field Equipment Cabinet enclosed outdoor complete with precast concrete footing, | 4d | 2026-11-30 | 2026-12-03 | CO-SU-FE-EP1-EL-730 |  | 13d |
| CO-SU-FE-EP1-EL-800 |  | Fence Lightining 400V, 3PH, 60Hz lighting control panelï¿½ (LCP-02) | 4d | 2026-11-30 | 2026-12-03 | CO-SU-FE-EP1-EL-730 |  | 13d |
| CO-SU-FE-EP1-EL-810 |  | Install of direct buried armored cable 4C-16mm2 ,10mm2 | 4d | 2026-12-05 | 2026-12-08 | CO-SU-FE-EP1-EL-790, CO-SU-FE-EP1-EL-800 |  | 13d |
| CO-SU-FE-EP1-EL-820 |  | Install 16mm2,10mm2 CU/PVC wire | 4d | 2026-12-05 | 2026-12-08 | CO-SU-FE-EP1-EL-790, CO-SU-FE-EP1-EL-800 |  | 13d |
| CO-SU-FE-EP1-EL-840 |  | FEC-CCTV ( 4C-16mm2 CU/XLPE/PVC direct buried armored cable,16mm2 CU/PVC wire | 4d | 2026-12-05 | 2026-12-08 | CO-SU-FE-EP1-EL-790, CO-SU-FE-EP1-EL-800 |  | 13d |
| CO-SU-FE-EP1-EL-700 |  | Junction Box for lighting fixture | 3d | 2026-12-23 | 2026-12-26 | CO-SU-FE-EP1-EL-810, CO-SU-FE-EP1-EL-820, CO-SU-FE-S-EL-550 |  | 6d |
| CO-SU-FE-EP1-EL-740 |  | IR Intrusion Detection System Quad Beams | 4d | 2027-03-25 | 2027-03-29 | CO-SU-FE-EP1-EL-810, CO-SU-FE-EP1-EL-820, CO-SU-FE-EP1-EL-840, CO-SU-FE-EP1-EL-700, CO-SU-FE-EP1-AR-370, CO-SU-FE-EP1-AR-380, CO-SU-FE-EP1-AR-360, CO-SU-FE-S-EL-590 |  | -31d |
| CO-SU-FE-EP1-EL-830 |  | Install of 38W, 230V, 1PH, 60Hz fence, led linear uplight lighting, IP66 | 4d | 2027-03-25 | 2027-03-29 | CO-SU-FE-EP1-EL-820, CO-SU-FE-EP1-EL-840, CO-SU-FE-EP1-EL-700, CO-SU-FE-EP1-AR-360, CO-SU-FE-EP1-AR-370, CO-SU-FE-EP1-AR-380, CO-SU-FE-S-EL-590 |  | -31d |
| CO-SU-FE-EP1-EL-720 |  | Install, fixings, testing and commissioning 80W LED | 4d | 2027-04-19 | 2027-04-22 | CO-SU-FE-EP1-EL-740, CO-SU-FE-EP1-EL-830, CO-SU-FE-S-EL-570 |  | -48d |
|  | 4 | **Architictural work** |  | 2026-09-29 | 2027-04-20 |  |  |  |
| CO-SU-FE-EP1-AR-340 |  | Install Brick Work For Northern Fence | 8d | 2026-09-29 A | 2026-11-12 | CO-SU-FE-EP1-CI-330 FF | 40% | 13d |
| CO-SU-FE-EP1-AR-350 |  | External plastering to walls and columns | 8d | 2026-12-09 | 2026-12-17 | CO-SU-FE-EP1-AR-340, CO-SU-FE-EP1-CI-340, CO-SU-FE-EP1-EL-840, CO-SU-FE-EP1-EL-820, CO-SU-FE-EP1-EL-810 |  | 13d |
| CO-SU-FE-EP1-AR-360 |  | Install 50mm thick random cut stone cladding | 10d | 2026-12-19 | 2026-12-29 | CO-SU-FE-EP1-AR-350, CO-SU-FE-EP1-EL-840 |  | 13d |
| CO-SU-FE-EP1-AR-370 |  | Install 2 coats of weatherproof paint at walls | 10d | 2026-12-30 | 2027-01-10 | CO-SU-FE-EP1-AR-360 |  | 13d |
| CO-SU-FE-EP1-AR-380 |  | Install Stone coping 500mm,525mm | 10d | 2027-01-11 | 2027-01-21 | CO-SU-FE-EP1-AR-370 |  | 13d |
| CO-SU-FE-EP1-AR-390 |  | Install MODON Signage | 3d | 2027-04-18 | 2027-04-20 | CO-SU-FE-EP1-AR-380, CO-SU-FE-S-AR-330 |  | -45d |
|  | 6 | **Eastern Fence P2 ( E07:E13 )** |  | 2026-08-02 | 2027-04-26 |  |  |  |
|  | 1 | **Civil Work** |  | 2026-08-02 | 2026-12-20 |  |  |  |
| CO-SU-FE-EP2-CI-350 |  | Excavation Work For Northern Fence | 12d | 2026-08-02 A | 2026-09-01 A | CO-SU-FE-EP1-CI-320 SS | 100% |  |
| CO-SU-FE-EP2-CI-360 |  | Pouring for Plain Concrete Northern Fence | 12d | 2026-08-02 A | 2026-11-12 | CO-SU-FE-EP2-CI-350, CO-SU-FE-S-CI-290 FF | 95% | 39d |
| CO-SU-FE-EP2-CI-370 |  | Pouring R.C Footing For Northern Fence | 12d | 2026-08-02 A | 2026-11-12 | CO-SU-FE-EP2-CI-360 SS | 85% | 39d |
| CO-SU-FE-EP2-CI-380 |  | Pouring R.C Columns For Northern Fence | 10d | 2026-09-15 A | 2026-11-12 | CO-SU-FE-EP2-CI-370 FF, CO-SU-FE-EP2-CI-370 SS, CO-SU-FE-EP1-CI-330 FF | 30% | 39d |
| CO-SU-FE-EP2-CI-390 |  | Pouring Beams For Northern Fence | 10d | 2026-10-01 A | 2026-12-20 | CO-SU-FE-EP2-CI-380, CO-SU-FE-EP2-AR-400, CO-SU-FE-EP1-CI-340 |  | 27d |
|  | 5 | **Finishing Work** |  | 2026-09-29 | 2027-04-26 |  |  |  |
|  | 3 | **Electrical Work** |  | 2026-12-09 | 2027-04-26 |  |  |  |
| CO-SU-FE-EP2-EL-860 |  | Trench excavation to receive 2 nos 50mm diameter PVC Conduit | 4d | 2026-12-09 | 2026-12-13 | CO-SU-FE-EP2-AR-400 |  | 17d |
| CO-SU-FE-EP2-EL-920 |  | Trench excavation to receive 3 nos 50mm diameter PVC Conduit | 4d | 2026-12-09 | 2026-12-13 | CO-SU-FE-EP2-EL-860 SS |  | 17d |
| CO-SU-FE-EP2-EL-910 |  | Install 800mm x 800mm x 800mm height concrete handhole | 3d | 2026-12-14 | 2026-12-16 | CO-SU-FE-EP2-EL-860, CO-SU-FE-EP2-EL-920 |  | 17d |
| CO-SU-FE-EP2-EL-930 |  | Hot dipped galvanized cable conduits for CAT6A cable and Control Cables embedded to wall | 3d | 2026-12-14 | 2026-12-16 | CO-SU-FE-EP2-EL-860, CO-SU-FE-EP2-EL-920 |  | 17d |
| CO-SU-FE-EP2-EL-900 |  | Fixing of Control cable,CAT6A cable | 3d | 2026-12-27 | 2026-12-29 | CO-SU-FE-EP2-EL-860, CO-SU-FE-EP2-EL-920, CO-SU-FE-EP1-EL-700 |  | 6d |
| CO-SU-FE-EP2-EL-880 |  | Fixing Earthing Work (Earth Pit,Grounding rod,Tinned Copper wire) | 3d | 2026-12-30 | 2027-01-02 | CO-SU-FE-EP2-EL-900, CO-SU-FE-EP2-EL-910, CO-SU-FE-EP2-EL-930 |  | 6d |
| CO-SU-FE-EP2-EL-940 |  | Field Equipment Cabinet enclosed outdoor complete with precast concrete footing, | 4d | 2027-01-03 | 2027-01-06 | CO-SU-FE-EP2-EL-880 |  | 6d |
| CO-SU-FE-EP2-EL-950 |  | Fence Lightining 400V, 3PH, 60Hz lighting control panelï¿½ (LCP-02) | 4d | 2027-01-03 | 2027-01-06 | CO-SU-FE-EP2-EL-880 |  | 6d |
| CO-SU-FE-EP2-EL-960 |  | Install of direct buried armored cable 4C-16mm2 ,10mm2 | 3d | 2027-01-07 | 2027-01-10 | CO-SU-FE-EP2-EL-940, CO-SU-FE-EP2-EL-950 |  | 6d |
| CO-SU-FE-EP2-EL-970 |  | Install 16mm2,10mm2 CU/PVC wire | 3d | 2027-01-07 | 2027-01-10 | CO-SU-FE-EP2-EL-940, CO-SU-FE-EP2-EL-950 |  | 6d |
| CO-SU-FE-EP2-EL-990 |  | FEC-CCTV ( 4C-16mm2 CU/XLPE/PVC direct buried armored cable,16mm2 CU/PVC wire | 6d | 2027-01-07 | 2027-01-13 | CO-SU-FE-EP2-EL-940, CO-SU-FE-EP2-EL-950 |  | 6d |
| CO-SU-FE-EP2-EL-850 |  | Junction Box for lighting fixture | 3d | 2027-01-11 | 2027-01-13 | CO-SU-FE-EP2-EL-960, CO-SU-FE-EP2-EL-970 |  | 6d |
| CO-SU-FE-EP2-EL-890 |  | IR Intrusion Detection System Quad Beams | 3d | 2027-03-30 | 2027-04-01 | CO-SU-FE-EP2-EL-960, CO-SU-FE-EP2-EL-970, CO-SU-FE-EP2-EL-990, CO-SU-FE-EP2-EL-850, CO-SU-FE-EP2-AR-430, CO-SU-FE-EP2-AR-440, CO-SU-FE-EP2-AR-420, CO-SU-FE-EP1-EL-740 |  | -30d |
| CO-SU-FE-EP2-EL-980 |  | Install of 38W, 230V, 1PH, 60Hz fence, led linear uplight lighting, IP66 | 3d | 2027-03-30 | 2027-04-01 | CO-SU-FE-EP2-EL-970, CO-SU-FE-EP2-EL-990, CO-SU-FE-EP2-EL-850, CO-SU-FE-EP2-AR-420, CO-SU-FE-EP2-AR-430, CO-SU-FE-EP2-AR-440, CO-SU-FE-EP1-EL-740 |  | -30d |
| CO-SU-FE-EP2-EL-870 |  | Install, fixings, testing and commissioning 80W LED | 3d | 2027-04-24 | 2027-04-26 | CO-SU-FE-EP2-EL-890, CO-SU-FE-EP2-EL-980, CO-SU-FE-EP1-EL-720 |  | -48d |

| ID | WBS | Task | Duration | Start | Finish | Predecessors | Complete | Total float |
| --- | --- | --- | --- | --- | --- | --- | --- | --- |
|  | 4 | **Architictural work** |  | 2026-09-29 | 2027-04-22 |  |  |  |
| CO-SU-FE-EP2-AR-400 |  | Install Brick Work For Northern Fence | 6d | 2026-09-29 A | 2026-12-08 | CO-SU-FE-EP2-CI-380 FF, CO-SU-FE-EP2-CI-380 SS, CO-SU-FE-EP1-EL-840 FF | 40% | 17d |
| CO-SU-FE-EP2-AR-410 |  | External plastering to walls and columns | 5d | 2027-01-14 | 2027-01-19 | CO-SU-FE-EP2-AR-400, CO-SU-FE-EP2-CI-390, CO-SU-FE-EP2-EL-990, CO-SU-FE-EP2-EL-970, CO-SU-FE-EP2-EL-960, CO-SU-FE-EP2-EL-850 |  | 6d |
| CO-SU-FE-EP2-AR-420 |  | Install 50mm thick random cut stone cladding | 5d | 2027-01-20 | 2027-01-25 | CO-SU-FE-EP2-AR-410 |  | 6d |
| CO-SU-FE-EP2-AR-430 |  | Install 2 coats of weatherproof paint at walls | 5d | 2027-01-26 | 2027-01-31 | CO-SU-FE-EP2-AR-420 |  | 6d |
| CO-SU-FE-EP2-AR-440 |  | Install Stone coping 500mm,525mm | 4d | 2027-02-01 | 2027-02-04 | CO-SU-FE-EP2-AR-430 |  | 6d |
| CO-SU-FE-EP2-AR-450 |  | Install MODON Signage | 2d | 2027-04-21 | 2027-04-22 | CO-SU-FE-EP2-AR-440, CO-SU-FE-EP1-AR-390 |  | -45d |
|  | TC | **Testing and Comissioning** |  | 2026-10-13 | 2027-06-02 |  |  |  |
|  | INF | **Infrastructure Networks** |  | 2027-04-18 | 2027-06-02 |  |  |  |
|  | PW1 | **Irrigation Network** |  | 2027-04-26 | 2027-05-02 |  |  |  |
| T/C-IR |  | Testing and Commissioning of Irrigation Network | 5d | 2027-04-26 | 2027-05-02 | CO-IR-TF-160, CO-TSE-TF-170, CO-LS-PL-180 |  | -64.5d |
|  | PW11 | **TSE Network** |  | 2027-04-26 | 2027-05-13 |  |  |  |
| T/C-TSE-10 |  | Testing and Commissioning of TSE Network | 15d | 2027-04-26 | 2027-05-13 | CO-TSE-TF-170, CO-UB-IRT-250 |  | -67.5d |
|  | PW | **Potable Water Network** |  | 2027-05-08 | 2027-05-20 |  |  |  |
| T/C-PW |  | Testing and Commissioning of Potable Water Network | 6d | 2027-05-08 | 2027-05-20 | CO-PW-TF-110, CO-PW-TF-100, CO-PW-TF-120, CO-UB-PS-390, CO-UB-LS-470, CO-UB-LS-480, MS-CF-MV |  | -75.5d |
|  | SW | **Sewage Network** |  | 2027-04-21 | 2027-04-25 |  |  |  |
| T/C-SW |  | Testing and Commissioning of Sewage Network | 3d | 2027-04-21 | 2027-04-25 | CO-SW-TF-100, CO-SW-TF-210, MS-CF-SW, CO-SW-TF-130, CO-SW-TF-110 |  | -60.5d |
|  | SD | **Storm Drainage Network** |  | 2027-04-18 | 2027-04-27 |  |  |  |
| T/C-SD |  | Testing and Commissioning of Storm Drainage Network | 9d | 2027-04-18 | 2027-04-27 | CO-SD-ML-TF-100, CO-SD-CB-TF-160, CO-SD-MH-TF-210, CO-SD-PO-110-P2, MS-CF-SD, CO-LS-PL-180, CO-SD-CB-TF-130, CO-SD-CB-TF-110, CO-SD-MH-TF-120 |  | -56d |
|  | SL | **Street Lighting Network** |  | 2027-05-08 | 2027-05-13 |  |  |  |
| T/C-SL |  | Testing and Commissioning of Street Lighting Network | 6d | 2027-05-08 | 2027-05-13 | CO-SL-TF-220, CO-SL-TF-230, CO-SL-TF-200, CO-SL-TF-380, CO-SL-LP-330, MS-CF-SL |  | -70d |
|  | TE | **Telecom Network** |  | 2027-05-01 | 2027-05-03 |  |  |  |
| T/C-TE |  | Testing and Commissioning of Telecom Network | 3d | 2027-05-01 | 2027-05-03 | CO-TE-CTV-TF-110, CO-TE-CTV-TF-120, CO-TE-CTV-TF-130, CO-TE-CTV-TF-140, MS-CF-TE, CO-SL-ES-230, CO-TE-DW-130 |  | -66d |
|  | MV | **Medium Voltage Network** |  | 2027-04-21 | 2027-05-06 |  |  |  |
| T/C-MV |  | Testing and Commissioning of Medium Voltage Network | 14d | 2027-04-21 | 2027-05-06 | CO-MV-TF-220, MS-CF-MV |  | -69d |
|  | RD | **Road Works** |  | 2027-05-29 | 2027-06-02 |  |  |  |
| T/C-RD |  | Testing and Commissioning of Road Works | 4d | 2027-05-29 | 2027-06-02 | T/C-MV, T/C-TE, T/C-SD, CO-RD-B-160, CO-RD-PV-160, CO-RD-PV-170, CO-RD-F-RM-180, CO-RD-F-TS-120, CO-RD-B-130, CO-RD-B-140, CO-RD-PV-140, CO-RD-PV-150, CO-RD-F-RM-170, CO-RD-F-TS-110, CO-RD-B-110, CO-RD-B-120, CO-RD-PV-120, CO-RD-PV-130, CO-RD-F-RM-160 FF, CO-RD-F-TS-100 FF, MS-CF-PW, MS-CF-IR, MS-CF-TSE |  | -77.5d |
|  | 1 | **Utility Buildings** |  | 2026-10-13 | 2027-05-29 |  |  |  |
| T/C-DPO |  | Testing and Commissioning of Storm Drainage Ponds | 0d | 2026-10-13 | 2026-10-13 | CO-SD-PO-110-P1, CO-SD-PO-110-P2 |  | 97d |
| T/C-SPS |  | Testing and Commissioning of Sewage Pump Stations& soft scape and planting work | 0d | 2027-05-06 | 2027-05-06 | CO-UB-PS-390, CO-UB-PS-380, CO-UB-PS-360, CO-UB-PS-350, CO-UB-PS-340, CO-UB-PS-370, CO-UB-PS-330, CO-UB-PS-310, CO-UB-PS-290, CO-UB-PS-300, CO-UB-PS-320, CO-UB-PS-280, CO-UB-PS-270, CO-UB-PS-260, CO-UB-PS-250, CO-UB-PS-240 |  | -57d |
| T/C-CTV |  | Testing and Commissioning of Guard Room and Fence | 0d | 2027-05-29 | 2027-05-29 | CO-UB-CR-360, A1100 |  | -70d |
|  | 1 | **Handing over and close out** |  | 2026-10-13 | 2027-06-06 |  |  |  |
|  | 2 | **As-Built** |  | 2026-10-13 | 2027-06-06 |  |  |  |
| HO-130 |  | Submission As-Built Drawing For Pond | 14d | 2026-10-13 | 2026-10-28 | T/C-DPO, CO-SD-PO-110-P2, CO-SD-PO-110-P1 |  | 97d |
| HO-100 |  | Submission As-Built Drawing For Sewage Network | 14d | 2027-04-25 | 2027-05-11 | T/C-SW, CO-SW-TF-210, CO-SW-TF-130, CO-SW-TF-110, CO-SW-TF-100 |  | -60.5d |
| HO-180 |  | Submission As-Built Drawing For Irrigation Network | 12d | 2027-05-02 | 2027-05-22 | T/C-IR, CO-IR-TF-160 |  | -64.5d |
| HO-160 |  | Submission As-Built Drawing For Telecom Network | 12d | 2027-05-04 | 2027-05-23 | T/C-TE, CO-TE-CTV-TF-110, CO-TE-CTV-TF-120, CO-TE-CTV-TF-130, CO-TE-CTV-TF-140 |  | -66d |
| HO-210 |  | Submission As-Built Drawing For Pump station | 1d | 2027-05-06 | 2027-05-06 | T/C-SPS, CO-UB-PS-390, CO-UB-PS-380, CO-UB-PS-360, CO-UB-PS-350, CO-UB-PS-370, CO-UB-PS-330, CO-UB-PS-310, CO-UB-PS-300, CO-UB-PS-290, CO-UB-PS-320, CO-UB-PS-280 |  | -57d |
| HO-170 |  | Submission As-Built Drawing For Medium Voltage Network | 12d | 2027-05-08 | 2027-05-26 | T/C-MV, CO-MV-TF-220 |  | -69d |
| HO-150 |  | Submission As-Built Drawing For Street Lighting Network | 7d | 2027-05-20 | 2027-05-27 | T/C-SL, CO-SL-LP-330, CO-SL-TF-200, CO-SL-TF-220, CO-SL-TF-230, CO-SL-TF-380, CO-SL-ES-220, CO-SL-ES-230 |  | -70d |
| HO-190 |  | As-Built Drawing For Potable Water Network | 12d | 2027-05-20 | 2027-06-03 | T/C-PW, CO-PW-TF-100, CO-PW-TF-110, CO-PW-TF-120 |  | -75.5d |
| HO-140 |  | Submission As-Built Drawing For Roads Network | 3d | 2027-06-02 | 2027-06-06 | T/C-RD, CO-RD-B-150, CO-RD-B-160, CO-RD-PV-160, CO-RD-PV-170, CO-RD-F-RM-180, CO-RD-F-TS-120, CO-RD-B-130, CO-RD-B-140, CO-RD-PV-140, CO-RD-PV-150, CO-RD-F-RM-170, CO-RD-F-TS-110, CO-RD-B-110, CO-RD-B-120, CO-RD-PV-120, CO-RD-PV-130, CO-RD-F-RM-160 SS, CO-RD-F-TS-100 SS |  | -77.5d |
|  | 1 | **De-Mobilization Works** |  | 2027-05-29 | 2027-06-03 |  |  |  |
| HO-230 |  | Remove Temporary Car Shades | 5d | 2027-05-29 | 2027-06-03 | T/C-RD SS, T/C-MV, T/C-TE, T/C-SL, T/C-SD, T/C-SW, T/C-PW, T/C-TSE-10, T/C-IR |  | -75.5d |
|  | 3 | **Handing Over** |  | 2027-06-02 | 2027-06-06 |  |  |  |
| HO-250 |  | Review B.O.Q Qty. to ensure compliance with the actual status | 3d | 2027-06-02 | 2027-06-06 | T/C-RD, T/C-RD FF, T/C-MV, T/C-TE, T/C-SL, T/C-SD, T/C-SW, T/C-PW, T/C-TSE-10, T/C-IR |  | -77.5d |

## Version 5 (data date 2026-10-20, saved 2026-10-20, file MOD3-3147-BL0-R0-6UPDATE 20-10-2026.xer)

Last finish 2027-06-06 → 2027-06-05 (-1d). Complete tasks 291 → 310.

Changed:

| ID | Task | Start | Finish | Total float | Predecessors | Other |
| --- | --- | --- | --- | --- | --- | --- |
| MS | **Key Milestones** |  | 2027-06-06 → 2027-06-05 (-1d) |  |  |  |
| CM | **Contractual Milestones** |  | 2027-06-06 → 2027-06-05 (-1d) |  |  |  |
| MS-CF-EBL | Completion of Execution Plan and Baseline Schedule |  |  |  | PRE-CON-MDC-20 FF, PRE-CON-MDC-10 FF, PRE-CON-MDC-20 → PRE-CON-MDC-20 FF, PRE-CON-MDC-10 FF, PRE-CON-MDC-20 SS |  |
| MS-CF-MOB | Completion of Mobilization and Site Preperation Works |  |  |  | MOB-30 FF, MOB-20 FF, MOB-80 FF, MOB-40 FF, MOB-50 FF, MOB-60 FF, MOB-10 FF, MOB-70 FF, PRE-CON-MDC-10 FF, PRE-CON-MDC-20 FF, PRE-CON-MDC-30 FF, PRE-CON-MDC-40 FF, PRE-CON-MDC-50 FF, PRE-CON-MDC-60 FF, PRE-CON-MDC-70 FF, PRE-CON-MDC-80 FF, MOB-30 → MOB-30 FF, MOB-20 FF, MOB-80 FF, MOB-40 FF, MOB-50 FF, MOB-60 FF, MOB-10 FF, MOB-70 FF, PRE-CON-MDC-10 FF, PRE-CON-MDC-20 FF, PRE-CON-MDC-30 FF, PRE-CON-MDC-40 FF, PRE-CON-MDC-50 FF, PRE-CON-MDC-60 FF, PRE-CON-MDC-70 FF, PRE-CON-MDC-80 FF, MOB-30 SS |  |
| MS-CF-SD | Completion of Construction Works for Storm Drainage Network | 2027-04-10 → 2027-03-29 (-12d) | 2027-04-10 → 2027-03-29 (-12d) | -50d → -60.5d |  |  |
| MS-CF-SW | Completion of Construction Works for Sewage Network | 2027-04-21 → 2027-04-24 (+3d) | 2027-04-21 → 2027-04-24 (+3d) | -60.5d → -72.75d |  |  |
| MS-CF-TSE | Completion of Construction Works for Treated Sewage Effluent Network | 2027-04-26 → 2027-04-25 (-1d) | 2027-04-26 → 2027-04-25 (-1d) | -54.5d → -54d |  |  |
| MS-CF-PW | Completion of Construction Works for Potable Water Network | 2027-05-08 → 2027-05-06 (-2d) | 2027-05-08 → 2027-05-06 (-2d) | -64.5d → -64d |  |  |
| MS-CF-RD | Completion of Construction Works for Road Works | 2027-05-30 → 2027-05-29 (-1d) | 2027-05-30 → 2027-05-29 (-1d) | -71.5d → -71d |  |  |
| MS-CF-PF | Project Completion Date | 2027-06-06 → 2027-06-05 (-1d) | 2027-06-06 → 2027-06-05 (-1d) | -77.5d → -77d |  |  |
| MOB-80 | Construction Site Access Roads |  |  |  |  | resources Unskilled Labor [408 h]; Loader [408 h]; Dump Truck [408 h]; Grader [408 h]; Skilled Labor [408 h] → Unskilled Labor; Loader [408 h]; Dump Truck [408 h]; Grader [408 h]; Skilled Labor |
| MOB-90 | Site Surveying Work |  |  |  |  | resources Unskilled Labor [40 h]; Skilled Labor [40 h] → Unskilled Labor; Skilled Labor |
| MOB-40 | Construction Project Store |  |  |  |  | resources Unskilled Labor [640 h]; Loader [160 h]; Grader [160 h]; Skilled Labor [160 h] → Unskilled Labor; Loader [160 h]; Grader [160 h]; Skilled Labor |
| MOB-70 | Installation Project Sign Board |  |  |  |  | resources Unskilled Labor [160 h]; Excavator [80 h]; Skilled Labor [80 h] → Unskilled Labor; Excavator [80 h]; Skilled Labor |
| ENG | **Engineering Works** |  | 2026-10-21 → 2026-10-27 (+6d) |  |  |  |
| ENG-SH-RD-A-100 | Approval Shop Drawings for Plan and Profile of Road Works |  |  |  | ENG-SH-RD-S-100 → ENG-SH-RD-S-100 SS |  |
| ENG-SH-RD-A-110 | Approval Shop Drawings for Roads Typical Sections and Pavement Details |  |  |  |  | resources none → Unskilled Labor [50.6 h]; Electrical Technician [19.52 h]; Plumber [4.57 h]; Carpenter [5.56 h]; Mason [4.42 h]; Steel Fixer [5.65 h]; Skilled Labor [15.25 h] |
| ENG-SH-HS-S-100 | Submission Shop Drawings for Hardscaping (Curbstone& Interlock) Works |  |  |  |  | resources none → Unskilled Labor [17.71 h]; Electrical Technician [6.83 h]; Plumber [1.6 h]; Carpenter [1.95 h]; Mason [1.55 h]; Steel Fixer [1.98 h]; Skilled Labor [5.34 h] |
| ENG-SH-HS-A-110 | Approval Shop Drawings for Hardscaping (Curbstone& Interlock) Works |  |  |  |  | resources none → Unskilled Labor [20.24 h]; Electrical Technician [7.81 h]; Plumber [1.83 h]; Carpenter [2.22 h]; Mason [1.77 h]; Steel Fixer [2.26 h]; Skilled Labor [6.1 h] |
| ENG-SH-TSB-S-100 | Submission Shop Drawings for Traffic Signs Boards |  |  |  |  | resources none → Unskilled Labor [30.36 h]; Electrical Technician [11.71 h]; Plumber [2.74 h]; Carpenter [3.34 h]; Mason [2.65 h]; Steel Fixer [3.39 h]; Skilled Labor [9.15 h] |
| ENG-SH-MRK-S-110 | Submission Shop Drawings for Pavement Markings |  |  |  |  | resources none → Unskilled Labor [30.36 h]; Electrical Technician [11.71 h]; Plumber [2.74 h]; Carpenter [3.34 h]; Mason [2.65 h]; Steel Fixer [3.39 h]; Skilled Labor [9.15 h] |
| ENG-SH-TSB-A-100 | Approval Shop Drawings for Traffic Signs Boards |  |  |  |  | resources none → Unskilled Labor [35.42 h]; Electrical Technician [13.66 h]; Plumber [3.2 h]; Carpenter [3.89 h]; Mason [3.1 h]; Steel Fixer [3.96 h]; Skilled Labor [10.68 h] |
| ENG-SH-MRK-A-110 | Approval Shop Drawings for Pavement Markings |  |  |  |  | resources none → Unskilled Labor [35.42 h]; Electrical Technician [13.66 h]; Plumber [3.2 h]; Carpenter [3.89 h]; Mason [3.1 h]; Steel Fixer [3.96 h]; Skilled Labor [10.68 h] |
| ENG-SH-SW-ML-S-100 | Submission Shop Drawings for Main Line and Manholes of Sewage Network |  |  |  | MS-CS-PS SS, ENG-SH-RD-S-100, ENG-SH-RD-S-110 SS → MS-CS-PS SS, ENG-SH-RD-S-100 SS, ENG-SH-RD-S-110 SS |  |
| ENG-SH-SW-ML-A-110 | Approval Shop Drawings for Main Line and Manholes of Sewage Network |  |  |  |  | resources none → Unskilled Labor [35.42 h]; Electrical Technician [13.66 h]; Plumber [3.2 h]; Carpenter [3.89 h]; Mason [3.1 h]; Steel Fixer [3.96 h]; Skilled Labor [10.68 h] |
| ENG-SH-SD-CB-S-100_R | Submission Shop Drawings for Secondary Line and Catch Basin of Storm Drainage Network(Remaining) |  |  |  |  | resources none → Unskilled Labor [22.77 h]; Electrical Technician [8.78 h]; Plumber [2.06 h]; Carpenter [2.5 h]; Mason [1.99 h]; Steel Fixer [2.54 h]; Skilled Labor [6.86 h] |
| ENG-SH-SD-CB-A-110 | Approval Shop Drawings for Secondary Line and Catch Basin of Storm Drainage Network |  |  |  |  | resources none → Unskilled Labor [35.42 h]; Electrical Technician [13.66 h]; Plumber [3.2 h]; Carpenter [3.89 h]; Mason [3.1 h]; Steel Fixer [3.96 h]; Skilled Labor [10.68 h] |
| ENG-SH-PW-ML-A-110 | Approval Shop Drawings for Main Line and Valve Chambers of Potable Water Network |  |  |  |  | resources none → Unskilled Labor [35.42 h]; Electrical Technician [13.66 h]; Plumber [3.2 h]; Carpenter [3.89 h]; Mason [3.1 h]; Steel Fixer [3.96 h]; Skilled Labor [10.68 h] |
| ENG-SH-PW-FH-S-100 | Submission Shop Drawings for Fire Hydrant Network |  |  |  |  | resources none → Unskilled Labor [25.3 h]; Electrical Technician [9.76 h]; Plumber [2.29 h]; Carpenter [2.78 h]; Mason [2.21 h]; Steel Fixer [2.83 h]; Skilled Labor [7.63 h] |
| ENG-SH-PW-FH-A-110 | Approval Shop Drawings for Fire Hydrant Network |  |  |  |  | resources none → Unskilled Labor [35.42 h]; Electrical Technician [13.66 h]; Plumber [3.2 h]; Carpenter [3.89 h]; Mason [3.1 h]; Steel Fixer [3.96 h]; Skilled Labor [10.68 h] |
| ENG-SH-IR-ML-S-100 | Submission Shop Drawings for Main Line and Valves & Bulbblers and Sprinklers of Irrigation Network |  |  |  |  | resources none → Unskilled Labor [30.36 h]; Electrical Technician [11.71 h]; Plumber [2.74 h]; Carpenter [3.34 h]; Mason [2.65 h]; Steel Fixer [3.39 h]; Skilled Labor [9.15 h] |
| ENG-SH-IR-ML-A-110 | Approval Shop Drawings for Main Line and Valves & Bulbblers and Sprinklers of Irrigation Network |  |  |  |  | resources none → Unskilled Labor [35.42 h]; Electrical Technician [13.66 h]; Plumber [3.2 h]; Carpenter [3.89 h]; Mason [3.1 h]; Steel Fixer [3.96 h]; Skilled Labor [10.68 h] |
| ENG-SH-TSE-ML-S-110 | Submission Shop Drawings for Main Line Treated Sewage Effluent Network |  |  |  |  | resources none → Unskilled Labor [30.36 h]; Electrical Technician [11.71 h]; Plumber [2.74 h]; Carpenter [3.34 h]; Mason [2.65 h]; Steel Fixer [3.39 h]; Skilled Labor [9.15 h] |
| ENG-SH-TSE-ML-A-120 | Approval Shop Drawings for Main Line Treated Sewage Effluent Network |  |  |  |  | resources none → Unskilled Labor [35.42 h]; Electrical Technician [13.66 h]; Plumber [3.2 h]; Carpenter [3.89 h]; Mason [3.1 h]; Steel Fixer [3.96 h]; Skilled Labor [10.68 h] |
| ENG-SH-MV-A-110 | Approval Shop Drawings for Medium Voltage Network |  |  |  |  | resources none → Unskilled Labor [35.42 h]; Electrical Technician [13.66 h]; Plumber [3.2 h]; Carpenter [3.89 h]; Mason [3.1 h]; Steel Fixer [3.96 h]; Skilled Labor [10.68 h] |
| ENG-SH-LV-S-110 | Submission Shop Drawings for Low Voltage Network |  |  |  |  | resources none → Unskilled Labor [30.36 h]; Electrical Technician [11.71 h]; Plumber [2.74 h]; Carpenter [3.34 h]; Mason [2.65 h]; Steel Fixer [3.39 h]; Skilled Labor [9.15 h] |
| ENG-SH-LV-A-120 | Approval Shop Drawings for Low Voltage Network |  |  |  |  | resources none → Unskilled Labor [35.42 h]; Electrical Technician [13.66 h]; Plumber [3.2 h]; Carpenter [3.89 h]; Mason [3.1 h]; Steel Fixer [3.96 h]; Skilled Labor [10.68 h] |
| ENG-SH-SL-S-100_R | Submission Shop Drawings for Street Lighting Network(Remaining) |  |  |  |  | resources none → Unskilled Labor [30.36 h]; Electrical Technician [11.71 h]; Plumber [2.74 h]; Carpenter [3.34 h]; Mason [2.65 h]; Steel Fixer [3.39 h]; Skilled Labor [9.15 h] |
| ENG-SH-SL-A-110 | Approval Shop Drawings for Street Lighting Network |  |  |  |  | resources none → Unskilled Labor [35.42 h]; Electrical Technician [13.66 h]; Plumber [3.2 h]; Carpenter [3.89 h]; Mason [3.1 h]; Steel Fixer [3.96 h]; Skilled Labor [10.68 h] |
| ENG-SH-CTV-S-100 | Submission Shop Drawings for CCTV Complete System |  |  |  |  | resources none → Unskilled Labor [30.36 h]; Electrical Technician [11.71 h]; Plumber [2.74 h]; Carpenter [3.34 h]; Mason [2.65 h]; Steel Fixer [3.39 h]; Skilled Labor [9.15 h] |
| ENG-SH-MSN-S-110 | Submission Shop Drawings for MSN System |  |  |  |  | resources none → Unskilled Labor [30.36 h]; Electrical Technician [11.71 h]; Plumber [2.74 h]; Carpenter [3.34 h]; Mason [2.65 h]; Steel Fixer [3.39 h]; Skilled Labor [9.15 h] |
| ENG-SH-TE-S-100 | Submission Shop Drawings for Telecom Network |  |  |  |  | resources none → Unskilled Labor [30.36 h]; Electrical Technician [11.71 h]; Plumber [2.74 h]; Carpenter [3.34 h]; Mason [2.65 h]; Steel Fixer [3.39 h]; Skilled Labor [9.15 h] |
| ENG-SH-MSN-A-120 | Approval Shop Drawings for MSN System |  |  |  | ENG-SH-MSN-S-110 FF, ENG-SH-MSN-S-110 → ENG-SH-MSN-S-110 FF, ENG-SH-MSN-S-110 SS | resources none → Unskilled Labor [35.42 h]; Electrical Technician [13.66 h]; Plumber [3.2 h]; Carpenter [3.89 h]; Mason [3.1 h]; Steel Fixer [3.96 h]; Skilled Labor [10.68 h] |
| ENG-SH-CTV-A-110 | Approval Shop Drawings for CCTV Complete System |  |  |  |  | resources none → Unskilled Labor [35.42 h]; Electrical Technician [13.66 h]; Plumber [3.2 h]; Carpenter [3.89 h]; Mason [3.1 h]; Steel Fixer [3.96 h]; Skilled Labor [10.68 h] |
| ENG-SH-TE-A-110 | Approval Shop Drawings for Telecom Network |  |  |  |  | resources none → Unskilled Labor [35.42 h]; Electrical Technician [13.66 h]; Plumber [3.2 h]; Carpenter [3.89 h]; Mason [3.1 h]; Steel Fixer [3.96 h]; Skilled Labor [10.68 h] |
| ENG-SH-SPS-S-150_R | Submission Shop Drawings Package for Sewage Pump Stations(Remaining) |  |  |  |  | resources none → Unskilled Labor [30.36 h]; Electrical Technician [11.71 h]; Plumber [2.74 h]; Carpenter [3.34 h]; Mason [2.65 h]; Steel Fixer [3.39 h]; Skilled Labor [9.15 h] |
| ENG-SH-SPS-A-160 | Approval Shop Drawings Package for Sewage Pump Stations |  |  |  |  | resources none → Unskilled Labor [30.36 h]; Electrical Technician [11.71 h]; Plumber [2.74 h]; Carpenter [3.34 h]; Mason [2.65 h]; Steel Fixer [3.39 h]; Skilled Labor [9.15 h] |
| ENG-SH-LS-S-160_R | Submission Shop Drawings Package for Lift Stations(Remaining) |  |  |  |  | resources none → Unskilled Labor [30.36 h]; Electrical Technician [11.71 h]; Plumber [2.74 h]; Carpenter [3.34 h]; Mason [2.65 h]; Steel Fixer [3.39 h]; Skilled Labor [9.15 h] |
| ENG-SH-LS-A-170 | Approval Shop Drawings Package for Lift Stations |  |  |  |  | resources none → Unskilled Labor [30.36 h]; Electrical Technician [11.71 h]; Plumber [2.74 h]; Carpenter [3.34 h]; Mason [2.65 h]; Steel Fixer [3.39 h]; Skilled Labor [9.15 h] |
| ENG-SH-DPO-S-110 | Submission Shop Drawings Package for Storm Drainage Ponds |  |  |  |  | resources none → Unskilled Labor [30.36 h]; Electrical Technician [11.71 h]; Plumber [2.74 h]; Carpenter [3.34 h]; Mason [2.65 h]; Steel Fixer [3.39 h]; Skilled Labor [9.15 h] |
| ENG-SH-DPO-A-120 | Approval Shop Drawings Package for Storm Drainage Ponds |  |  |  |  | resources none → Unskilled Labor [30.36 h]; Electrical Technician [11.71 h]; Plumber [2.74 h]; Carpenter [3.34 h]; Mason [2.65 h]; Steel Fixer [3.39 h]; Skilled Labor [9.15 h] |
| ENG-SH-ST-S-170 | Submission Shop Drawings Package for Storage Tank TSE |  |  |  |  | resources none → Unskilled Labor [30.36 h]; Electrical Technician [11.71 h]; Plumber [2.74 h]; Carpenter [3.34 h]; Mason [2.65 h]; Steel Fixer [3.39 h]; Skilled Labor [9.15 h] |
| ENG-SH-ST-A-180 | Approval Shop Drawings Package for Storage Tank TSE |  |  |  |  | resources none → Unskilled Labor [30.36 h]; Electrical Technician [11.71 h]; Plumber [2.74 h]; Carpenter [3.34 h]; Mason [2.65 h]; Steel Fixer [3.39 h]; Skilled Labor [9.15 h] |
| ENG-SH-GR-A-190 | Approval Shop Drawings Package for Gaurd Room |  |  |  |  | resources none → Unskilled Labor [30.36 h]; Electrical Technician [11.71 h]; Plumber [2.74 h]; Carpenter [3.34 h]; Mason [2.65 h]; Steel Fixer [3.39 h]; Skilled Labor [9.15 h] |
| ENG-SH-GR-S-180 | Submission Shop Drawings Package for Gaurd Room |  |  |  |  | resources none → Unskilled Labor [30.36 h]; Electrical Technician [11.71 h]; Plumber [2.74 h]; Carpenter [3.34 h]; Mason [2.65 h]; Steel Fixer [3.39 h]; Skilled Labor [9.15 h] |
| ENG-SH-GR-S-190_R | Submission Shop Drawings Package for Fence(Remaining) |  |  |  |  | resources none → Unskilled Labor [17.61 h]; Electrical Technician [6.79 h]; Plumber [1.59 h]; Carpenter [1.93 h]; Mason [1.54 h]; Steel Fixer [1.97 h]; Skilled Labor [5.31 h] |
| ENG-SH-GR-A-200_R | Approval Shop Drawings Package for Fence(Remaining) |  |  |  |  | resources none → Unskilled Labor [21.25 h]; Electrical Technician [8.2 h]; Plumber [1.92 h]; Carpenter [2.34 h]; Mason [1.86 h]; Steel Fixer [2.37 h]; Skilled Labor [6.44 h] |
| SD11 | **Material Submittals and Approvals** |  | 2026-10-21 → 2026-10-27 (+6d) |  |  |  |
| 2 | **Short Lead Time Items** |  | 2026-10-20 → 2026-10-27 (+7d) |  |  |  |
| ENG-MT-RD-S-100 | Material Submittal for Subgrade of Road Works |  |  |  | ENG-SH-RD-S-100 → ENG-SH-RD-S-100 SS |  |
| ENG-MT-RD-S-110 | Material Submittal for Aggregate Base Course of Road Works |  |  |  | ENG-SH-RD-S-100 → ENG-SH-RD-S-100 SS |  |
| ENG-MT-RD-S-120 | Material Submittal for Prime Coat of Road Works |  |  |  | ENG-SH-RD-S-100 → ENG-SH-RD-S-100 SS |  |
| ENG-MT-RD-S-130 | Material Submittal for Bituminous Base & Wearing Courses of Road Works |  |  |  | ENG-SH-RD-S-100 → ENG-SH-RD-S-100 SS |  |
| ENG-MT-RD-A-100 | Material Approval for Subgrade of Road Works |  |  |  | ENG-MT-RD-S-100 → ENG-MT-RD-S-100 SS |  |
| ENG-MT-RD-A-110 | Material Approval for Aggregate Base Course of Road Works |  |  |  | ENG-MT-RD-S-110 → ENG-MT-RD-S-110 SS |  |
| ENG-MT-RD-A-120 | Material Approval for Prime Coat of Road Works |  |  |  | ENG-MT-RD-S-120 → ENG-MT-RD-S-120 SS |  |
| ENG-MT-RD-A-130 | Material Approval for Bituminous Base & Wearing Courses of Road Works |  |  |  | ENG-MT-RD-S-130 → ENG-MT-RD-S-130 SS |  |
| ENG-MT-RD-A-140 | Material Approval of Interlock Tiles for Landscaping |  |  |  | ENG-MT-RD-S-140 → ENG-MT-RD-S-140 SS |  |
| ENG-MT-RD-A-150 | Material Approval of Curbstones for Landscaping |  |  |  | ENG-MT-RD-S-150 → ENG-MT-RD-S-150 SS |  |
| ENG-MT-TS-A-100 | Material Approval for Traffic Signs Boards of Road Works |  |  |  | ENG-MT-TS-S-100, MS-CS-PS → ENG-MT-TS-S-100 SS, MS-CS-PS |  |

| ID | Task | Start | Finish | Complete | Total float | Predecessors | Other |
| --- | --- | --- | --- | --- | --- | --- | --- |
| ENG-MT-IR-ML-S-140 | Material Submittal for Softscape and Planting Works |  |  |  |  |  | resources none → Unskilled Labor [30.36 h]; Electrical Technician [11.71 h]; Plumber [2.74 h]; Carpenter [3.34 h]; Mason [2.65 h]; Steel Fixer [3.39 h]; Skilled Labor [9.15 h] |
| ENG-MT-IR-ML-S-150 | Material Submittal for Site Furnishings (Seating Bench,Stone Boulders and Gravel) |  |  |  |  |  | resources none → Unskilled Labor [30.36 h]; Electrical Technician [11.71 h]; Plumber [2.74 h]; Carpenter [3.34 h]; Mason [2.65 h]; Steel Fixer [3.39 h]; Skilled Labor [9.15 h] |
| ENG-MT-IR-ML-A-140 | Material Approval for Softscape and Planting Works |  |  |  |  |  | resources none → Unskilled Labor [35.42 h]; Electrical Technician [13.66 h]; Plumber [3.2 h]; Carpenter [3.89 h]; Mason [3.1 h]; Steel Fixer [3.96 h]; Skilled Labor [10.68 h] |
| ENG-MT-IR-ML-A-150 | Material Approval for Site Furnishings (Seating Bench,Stone Boulders and Gravel) |  |  |  |  |  | resources none → Unskilled Labor [30.36 h]; Electrical Technician [11.71 h]; Plumber [2.74 h]; Carpenter [3.34 h]; Mason [2.65 h]; Steel Fixer [3.39 h]; Skilled Labor [9.15 h] |
| ENG-MT-SW-TF-S-100 | Material Submittal for Manhole Covers of Sewage Network |  |  |  |  |  | resources none → Unskilled Labor [30.36 h]; Electrical Technician [11.71 h]; Plumber [2.74 h]; Carpenter [3.34 h]; Mason [2.65 h]; Steel Fixer [3.39 h]; Skilled Labor [9.15 h] |
| ENG-MT-SW-ML-A-100 | Material Approval for Manholes of Sewage Network |  |  |  |  | ENG-MT-SW-ML-S-100 → ENG-MT-SW-ML-S-100 SS |  |
| ENG-MT-SW-ML-A-110 | Material Approval for Main Line Pipes of Sewage Network |  |  |  |  | ENG-MT-SW-ML-S-110 → ENG-MT-SW-ML-S-110 SS |  |
| ENG-MT-SW-TF-A-100 | Material Approval for Manhole Covers of Sewage Network |  |  |  |  |  | resources none → Unskilled Labor [35.42 h]; Electrical Technician [13.66 h]; Plumber [3.2 h]; Carpenter [3.89 h]; Mason [3.1 h]; Steel Fixer [3.96 h]; Skilled Labor [10.68 h] |
| ENG-MT-SD-ML-S-100 | Material Submittal for Manholes of Storm Drainage Network |  |  |  |  | ENG-SH-SD-ML-S-100 SS, ENG-SH-SD-ML-A-110 → ENG-SH-SD-ML-S-100 SS, ENG-SH-SD-ML-A-110 SS |  |
| ENG-MT-SD-TF-S-100 | Material Submittal for Manhole Covers of Storm Drainage Network |  |  |  |  |  | resources none → Unskilled Labor [30.36 h]; Electrical Technician [11.71 h]; Plumber [2.74 h]; Carpenter [3.34 h]; Mason [2.65 h]; Steel Fixer [3.39 h]; Skilled Labor [9.15 h] |
| ENG-MT-SD-TF-S-110 | Material Submittal for Catch Basin Covers of Storm Drainage Network |  |  |  |  |  | resources none → Unskilled Labor [30.36 h]; Electrical Technician [11.71 h]; Plumber [2.74 h]; Carpenter [3.34 h]; Mason [2.65 h]; Steel Fixer [3.39 h]; Skilled Labor [9.15 h] |
| ENG-MT-SD-TF-A-100 | Material Approval for Manhole Covers of Storm Drainage Network |  |  |  |  |  | resources none → Unskilled Labor [35.42 h]; Electrical Technician [13.66 h]; Plumber [3.2 h]; Carpenter [3.89 h]; Mason [3.1 h]; Steel Fixer [3.96 h]; Skilled Labor [10.68 h] |
| ENG-MT-SD-TF-A-110 | Material Approval for Catch Basin Covers of Storm Drainage Network |  |  |  |  |  | resources none → Unskilled Labor [35.42 h]; Electrical Technician [13.66 h]; Plumber [3.2 h]; Carpenter [3.89 h]; Mason [3.1 h]; Steel Fixer [3.96 h]; Skilled Labor [10.68 h] |
| ENG-MT-PW-ML-S-110 | Material Submittal for Main Line Valves of Potable Water Network |  |  |  |  |  | resources none → Unskilled Labor [30.36 h]; Electrical Technician [11.71 h]; Plumber [2.74 h]; Carpenter [3.34 h]; Mason [2.65 h]; Steel Fixer [3.39 h]; Skilled Labor [9.15 h] |
| ENG-MT-PW-FH-S-100 | Material Submittal for Fire Hydrant of Potable Water Network |  |  |  |  |  | resources none → Unskilled Labor [30.36 h]; Electrical Technician [11.71 h]; Plumber [2.74 h]; Carpenter [3.34 h]; Mason [2.65 h]; Steel Fixer [3.39 h]; Skilled Labor [9.15 h] |
| ENG-MT-PW-TF-S-100 | Material Submittal for Surface Box of Potable Water Network |  |  |  |  |  | resources none → Unskilled Labor [30.36 h]; Electrical Technician [11.71 h]; Plumber [2.74 h]; Carpenter [3.34 h]; Mason [2.65 h]; Steel Fixer [3.39 h]; Skilled Labor [9.15 h] |
| ENG-MT-PW-ML-A-100 | Material Approval for Main Line Pipes of Potable Water Network |  |  |  |  | ENG-MT-PW-ML-S-100 → ENG-MT-PW-ML-S-100 SS |  |
| ENG-MT-PW-ML-A-110 | Material Approval for Valves of Potable Water Network |  |  |  |  |  | resources none → Unskilled Labor [35.42 h]; Electrical Technician [13.66 h]; Plumber [3.2 h]; Carpenter [3.89 h]; Mason [3.1 h]; Steel Fixer [3.96 h]; Skilled Labor [10.68 h] |
| ENG-MT-PW-FH-A-100 | Material Approval for Fire Hydrants of Potable Water Network |  |  |  |  |  | resources none → Unskilled Labor [35.42 h]; Electrical Technician [13.66 h]; Plumber [3.2 h]; Carpenter [3.89 h]; Mason [3.1 h]; Steel Fixer [3.96 h]; Skilled Labor [10.68 h] |
| ENG-MT-PW-TF-A-100 | Material Approval for Surface Box of Potable Water Network |  |  |  |  |  | resources none → Unskilled Labor [35.42 h]; Electrical Technician [13.66 h]; Plumber [3.2 h]; Carpenter [3.89 h]; Mason [3.1 h]; Steel Fixer [3.96 h]; Skilled Labor [10.68 h] |
| ENG-MT-IR-ML-A-100 | Material Approval for Main Line Pipes of Irrigation Network |  |  |  |  | ENG-MT-IR-ML-S-100 → ENG-MT-IR-ML-S-100 SS |  |
| ENG-MT-IR-ML-A-110 | Material Approval for Valves of Irrigation Network |  |  |  |  | ENG-MT-IR-ML-S-110 → ENG-MT-IR-ML-S-110 SS | resources Gate valves Dia 50 mm; Gate valves Dia 100 mm; Gate valves Dia 150 mm; Gate valves Dia 250 mm; Air valves with Dia 50 mm; Washout valve Dia 100 mm; 3-outlet fire hydrant (2 x 2.5 inch and 1 x 4.5 inch) in the form of a separate dry vacuum cylinder, complete according to drawings.; Wash out chamber (2500x 2500mm); Air valve chamber (1000x 1000 mm); Flow meter chamber (1500x 2500 mm); Flow meter dia 100 mm; Gate valve 50 mm PN16; Direct Burried Gate valve 40 mm PN16; Pressure–compensating bubblers 110 Lit/Hr; Flushing Bronze gate valve dia 1.5" inside PVC box; Air release valve 1.5" inside PVC box; Extra flexible pressure compensating on surface inline dripline`s, O.D. is 16.1 mm; Electrical Solenoid Valve ( 1.5") inside PVC box; Electrical Solenoid Valve ( 2") inside PVC box; Quick coupling valve 1" inside a round valve box 10" size with a manual gate valve, hose swivel and key with all accessories; Advanced Irrigation controller subject to client approval, can connect with Centarl Control system; Decoder cables 12 AWG between valves and controllers, The cables shall be pulled through 32Ø UPVC conduit; Preparing the irrigation program for the entire system and providing technical services for monitoring and controlling the central irrigation systems → Gate valves Dia 50 mm; Gate valves Dia 100 mm; Gate valves Dia 150 mm; Gate valves Dia 250 mm; Air valves with Dia 50 mm; Washout valve Dia 100 mm; 3-outlet fire hydrant (2 x 2.5 inch and 1 x 4.5 inch) in the form of a separate dry vacuum cylinder, complete according to drawings.; Wash out chamber (2500x 2500mm); Air valve chamber (1000x 1000 mm); Flow meter chamber (1500x 2500 mm); Flow meter dia 100 mm; Gate valve 50 mm PN16; Direct Burried Gate valve 40 mm PN16; Pressure compensating bubblers 110 Lit/Hr; Flushing Bronze gate valve dia 1.5" inside PVC box; Air release valve 1.5" inside PVC box; Extra flexible pressure compensating on surface inline dripline`s, O.D. is 16.1 mm; Electrical Solenoid Valve ( 1.5") inside PVC box; Electrical Solenoid Valve ( 2") inside PVC box; Quick coupling valve 1" inside a round valve box 10" size with a manual gate valve, hose swivel and key with all accessories; Advanced Irrigation controller subject to client approval, can connect with Centarl Control system; Decoder cables 12 AWG between valves and controllers, The cables shall be pulled through 32 UPVC conduit; Preparing the irrigation program for the entire system and providing technical services for monitoring and controlling the central irrigation systems |
| ENG-MT-IR-ML-A-130 | Material Approval for Valves of Irrigation Network |  |  |  |  | ENG-MT-IR-ML-S-130 → ENG-MT-IR-ML-S-130 SS |  |
| ENG-MT-MV-TF-S-100 | Material Submittal for Termination Kits of Medium Voltage Network |  |  |  |  |  | resources none → Unskilled Labor [30.36 h]; Electrical Technician [11.71 h]; Plumber [2.74 h]; Carpenter [3.34 h]; Mason [2.65 h]; Steel Fixer [3.39 h]; Skilled Labor [9.15 h] |
| ENG-MT-MV-TF-A-100 | Material Approval for Termination and Joints Kits of Medium Voltage Network |  |  |  |  |  | resources none → Unskilled Labor [35.42 h]; Electrical Technician [13.66 h]; Plumber [3.2 h]; Carpenter [3.89 h]; Mason [3.1 h]; Steel Fixer [3.96 h]; Skilled Labor [10.68 h] |
| ENG-MT-SL-TF-S-100 | Material Submittal for Fuse Boxes of Street Lighting Network |  |  |  |  |  | resources none → Unskilled Labor [30.36 h]; Electrical Technician [11.71 h]; Plumber [2.74 h]; Carpenter [3.34 h]; Mason [2.65 h]; Steel Fixer [3.39 h]; Skilled Labor [9.15 h] |
| ENG-MT-SL-TF-S-110 | Material Submittal for Cable Lugs of Street Lighting Network |  |  |  |  |  | resources none → Unskilled Labor [30.36 h]; Electrical Technician [11.71 h]; Plumber [2.74 h]; Carpenter [3.34 h]; Mason [2.65 h]; Steel Fixer [3.39 h]; Skilled Labor [9.15 h] |
| ENG-MT-SL-ES-S-100 | Material Submittal for Lighting Earthing of Street Lighting Network |  |  |  |  |  | resources none → Unskilled Labor [30.36 h]; Electrical Technician [11.71 h]; Plumber [2.74 h]; Carpenter [3.34 h]; Mason [2.65 h]; Steel Fixer [3.39 h]; Skilled Labor [9.15 h] |
| ENG-MT-SL-TF-A-100 | Material Approval for Fuse Boxes of Street Lighting Network |  |  |  |  |  | resources none → Unskilled Labor [35.42 h]; Electrical Technician [13.66 h]; Plumber [3.2 h]; Carpenter [3.89 h]; Mason [3.1 h]; Steel Fixer [3.96 h]; Skilled Labor [10.68 h] |
| ENG-MT-SL-TF-A-110 | Material Approval for Cable Lugs of Street Lighting Network |  |  |  |  |  | resources none → Unskilled Labor [35.42 h]; Electrical Technician [13.66 h]; Plumber [3.2 h]; Carpenter [3.89 h]; Mason [3.1 h]; Steel Fixer [3.96 h]; Skilled Labor [10.68 h] |
| 1 | **Superstructure Works** |  | 2026-10-20 → 2026-10-27 (+7d) |  |  |  |  |
| ENG-MT-PS-CV-A-150 | Material Approval for Civil Works for Sewage Pump Stations |  |  |  |  | ENG-MT-PS-CV-S-140 → ENG-MT-PS-CV-S-140 SS |  |
| ENG-MT-SLS-CV-A-110 | Material Approval for Civil Works for Sewage Lift Stations |  |  |  |  | ENG-MT-SLS-CV-S-100 → ENG-MT-SLS-CV-S-100 SS |  |
| ENG-MT-DPO-CV-A-110 | Material Approval for Civil Works for Storm Drainage Ponds |  |  |  |  | ENG-MT-DPO-CV-S-100 → ENG-MT-DPO-CV-S-100 SS |  |
| SL111 | **Storage Tank (TSE)** |  | 2026-10-20 → 2026-10-27 (+7d) |  |  |  |  |
| 1 | **Submission of Material** | 2026-10-13 → 2026-10-20 (+7d) | 2026-10-20 → 2026-10-27 (+7d) |  |  |  |  |
| ENG-MT-TSE-CV-S-130 | Material Submittal for Civil Works for Storage Tank (TSE) | 2026-10-13 → 2026-10-20 (+7d) | 2026-10-20 → 2026-10-27 (+7d) |  | -9d → -34d | none → ENG-MT-SLS-CV-S-100 | resources none → Unskilled Labor [35.42 h]; Electrical Technician [13.66 h]; Plumber [3.2 h]; Carpenter [3.89 h]; Mason [3.1 h]; Steel Fixer [3.96 h]; Skilled Labor [10.68 h] |
| ENG-MT-TSE-CV-A-140 | Material Approval for Civil Works for Storage Tank (TSE) |  |  |  |  | none → ENG-MT-SLS-CV-S-100 |  |
| ENG-MT-GR-CV-A-130 | Material Approval for Civil Works for Gaurd Room |  |  |  |  | ENG-MT-GR-CV-S-120 → ENG-MT-GR-CV-S-120 SS | resources Slab on Grade; Slabs; Lightweight Concrete Roof insulation as per Architect's specification; Insulated brickwork. with expanded polystyrene 200mm thick; vertical straight wall complete with accessories .; Common brickwork. 150mm thick; vertical straight wall complete with accessories.; 2 perpendicular layers of cold bitumen coats; 2 layer of 4mm HDPE membrane, 2 perpendicular layers cold bitumen coats; 1 layer EPOXY Paint 300 micron; Membrane fully bonded to prime deck and upstand; Geotextile Filter membrane uv resistance; 85mm thick thermal insulation; 1.5mm thick epdm waterproofing membrane; CW01 - 4500 mm width x 3700 mm height; CW02 - 4500 mm width x 3700 mm height; CW03 - 4500 mm width x 3700 mm height; CW04 - 4500 mm width x 3700 mm height; CW05 - 7500 mm width x 4250 mm height; CW06 - 7500 mm width x 4250 mm height; W01 - 1000 mm width x 2000 mm height; W02 - 2000 mm width x 2000 mm height; W03 - 2000 mm width x 1000 mm height; D2 - 900 mm x 2200 mm height temper door; D3 - 950 mm x 2000 mm height temper door; Supply and install 300*300mm terrazzo tiles with 150mm high skirting at perimeter with approv; Supply and install 300*300mm glazed ceramic wall tiles on cement mortar and including rough; Supply and install internal plastering and 2 coats of acrylic paint at walls includin; Supply and install 300*300mm glazed ceramic wall tiles on cement mortar and including rough and smooth p; Supply and install 600*600mm porcelain tiles with approved quality on 30 mm mortar inclu; Supply and install 12.5mm thk, gypsum board suspended ceiling including s; Office Chairs; Office Tables; Guard Stand; Magnetic Control Access barrier, Automatic Vehicular Barriers to be installed on ground with magnetic access; Supply and install Hand Wash Basin with Water Tap, angle valve, P-trap connected to 50mm diameter s; Supply and install paper towel dispenser, surface mounted, satin finish stainless steel as per approv; Supply and install mirror, size 460*910mm as per approved sample including frames, backing and all accessories to complete.; Supply and install towel ring , surface mounted, satin finish stainless steel as per approved sample including accessories.; Kitchen sink with single bowl with hot/cold water mixer.; Supply and install Base mounted flush tank water Western water closet system with lid connected to 110mm soil pipe; Gate Valves; Slow Closing Valve; 1 meter length 10mm diameter Flexible Hose with insulated handle complete with fork support, index push, vacuum breaker; 50mm diameter; 75mm diameter; 80mm diameter; 100mm diameter; 110mm diameter; 13mm diameter; 15mm diameter; 20mm diameter; 25mm diameter; 32mm diameter; 40mm diameter; Isolation Valve Size 20; Isolation Valve Size 25; Isolation Valve Size 32; Isolation Valve Size 40; Isolation Valve Size 50; 20 mm diameter spray head for cold water supply; Supply and install Electric Water Heater set with connection; Water meter complete with accessories.; Roof drain; Vent on a roof to exhaust air; Floor drain 100x80mm; Gully trap 300x300 mm; inspection chamber, size 800x900x1000; Mini split actual capacity 2 Ton; Ducted split actual capacity 4 Ton; Supply, fabricate, install and testing factory fabricated metal ducts with flanges complete with supports, vanes,; Supplying, installation testing & commissioning of external insulation on ducts; Supply, fix, testing and commissioning of exhaust air/fresh air louvers of powder coated extruded aluminium construction.; Providing, fixing, testing and commissioning of powder coated extruded aluminum sections grills and diffusers with dampers.; Air Grills 150mm x150mm; Air Diffuser 600mm x 600mm; Supply, Installation & Testing of 2 hours Fire rated system for closing the openings between roo; 4.5 KG CO2 Type Fire Extinguishers; 6 KG ABC Type Fire Extinguishers; Floor cleanout, size 75 mm diameter; Floor cleanout, size 110 mm diameter; GRP water tanks capacity of each 1000 liter complete with all fittings, all valves and concrete pad; Guard Room 1; Guard Room 2; Guard Room 3; 30A, 2P AC Disconnect Switch; 20A Duplex Receptacle Floor Mounted; Twin Socket outlet; Twin Socket outlet, Weather Proof; Single gang Lighting switch; 2way Single gang Lighting switch; 36W LED linear Pendant lighting; 36W LED Emergency linear Pendant lighting; 13W recess mounted LED down light fitting; 13W recess emergency mounted LED down light fitting with 1.5 Hr Battery; 10.4W LED Exit light with 1.5 Hr Battery; 4mm2 Cu./FRLSZH Cable; 6mm2 Cu./FRLSZH Cable; 8 Port Industrial PoE Switch 10/100BaseT (0 deg to +70 deg. Celsius); 06C Optical Fiber SM; 48C Optical Fiber SM; 48 Core Splice Closure; Boom Barrier at Security Guard Room; Pedestrian turnstile at Security Guard Room; Access Control Unit; Access Card Reader; Magnetic Lock; Break Glass; Exit Push button; Door Sensor; Biometrics Reader; Pole/Bollard mounted IP( PoE), Automatic Number Plate Recognition (ANPR, camera, 5MP,IP 66, IR illumin; 12U rack dimension (W x H x L) 600 x 625 x 600 mm; Fire Alarm Control panel with fire alarm zoning with Mimic panel with fire alarm zoning; Main Fire Alarm Control panel with fire alarm zoning with Mimic panel with fire alarm zoning; Supply and installation of the addressable manual call point with operation safety glass breaking and pushbutton; Supply and installation of the photoelectric heat & smoke detector with base; Sounder With Beacon; Addressable Control module for Sounders; Addressable Control module for HVAC System; Addressable Monitor module for HVAC System; 2C x 1.5 Sqm FR Rated Armored - Cable For Loop Wiring; DACT (Auto - Dailer) for 24x7 Civil Defence; Transmission Communication cable - Fiber Optics 12Core; Transmission Communication cable - Ethernet Cable; Supply, install to site and installation of power supply system for fire alarm control panel; Supply, install to site and installation of power cable; Fire Fighter’s Telephone Centre; Fireman’s Telephone Jack; Voice Command Center → Slab on Grade; Slabs; Lightweight Concrete Roof insulation as per Architect's specification; Insulated brickwork. with expanded polystyrene 200mm thick; vertical straight wall complete with accessories .; Common brickwork. 150mm thick; vertical straight wall complete with accessories.; 2 perpendicular layers of cold bitumen coats; 2 layer of 4mm HDPE membrane, 2 perpendicular layers cold bitumen coats; 1 layer EPOXY Paint 300 micron; Membrane fully bonded to prime deck and upstand; Geotextile Filter membrane uv resistance; 85mm thick thermal insulation; 1.5mm thick epdm waterproofing membrane; CW01 - 4500 mm width x 3700 mm height; CW02 - 4500 mm width x 3700 mm height; CW03 - 4500 mm width x 3700 mm height; CW04 - 4500 mm width x 3700 mm height; CW05 - 7500 mm width x 4250 mm height; CW06 - 7500 mm width x 4250 mm height; W01 - 1000 mm width x 2000 mm height; W02 - 2000 mm width x 2000 mm height; W03 - 2000 mm width x 1000 mm height; D2 - 900 mm x 2200 mm height temper door; D3 - 950 mm x 2000 mm height temper door; Supply and install 300*300mm terrazzo tiles with 150mm high skirting at perimeter with approv; Supply and install 300*300mm glazed ceramic wall tiles on cement mortar and including rough; Supply and install internal plastering and 2 coats of acrylic paint at walls includin; Supply and install 300*300mm glazed ceramic wall tiles on cement mortar and including rough and smooth p; Supply and install 600*600mm porcelain tiles with approved quality on 30 mm mortar inclu; Supply and install 12.5mm thk, gypsum board suspended ceiling including s; Office Chairs; Office Tables; Guard Stand; Magnetic Control Access barrier, Automatic Vehicular Barriers to be installed on ground with magnetic access; Supply and install Hand Wash Basin with Water Tap, angle valve, P-trap connected to 50mm diameter s; Supply and install paper towel dispenser, surface mounted, satin finish stainless steel as per approv; Supply and install mirror, size 460*910mm as per approved sample including frames, backing and all accessories to complete.; Supply and install towel ring , surface mounted, satin finish stainless steel as per approved sample including accessories.; Kitchen sink with single bowl with hot/cold water mixer.; Supply and install Base mounted flush tank water Western water closet system with lid connected to 110mm soil pipe; Gate Valves; Slow Closing Valve; 1 meter length 10mm diameter Flexible Hose with insulated handle complete with fork support, index push, vacuum breaker; 50mm diameter; 75mm diameter; 80mm diameter; 100mm diameter; 110mm diameter; 13mm diameter; 15mm diameter; 20mm diameter; 25mm diameter; 32mm diameter; 40mm diameter; Isolation Valve Size 20; Isolation Valve Size 25; Isolation Valve Size 32; Isolation Valve Size 40; Isolation Valve Size 50; 20 mm diameter spray head for cold water supply; Supply and install Electric Water Heater set with connection; Water meter complete with accessories.; Roof drain; Vent on a roof to exhaust air; Floor drain 100x80mm; Gully trap 300x300 mm; inspection chamber, size 800x900x1000; Mini split actual capacity 2 Ton; Ducted split actual capacity 4 Ton; Supply, fabricate, install and testing factory fabricated metal ducts with flanges complete with supports, vanes,; Supplying, installation testing & commissioning of external insulation on ducts; Supply, fix, testing and commissioning of exhaust air/fresh air louvers of powder coated extruded aluminium construction.; Providing, fixing, testing and commissioning of powder coated extruded aluminum sections grills and diffusers with dampers.; Air Grills 150mm x150mm; Air Diffuser 600mm x 600mm; Supply, Installation & Testing of 2 hours Fire rated system for closing the openings between roo; 4.5 KG CO2 Type Fire Extinguishers; 6 KG ABC Type Fire Extinguishers; Floor cleanout, size 75 mm diameter; Floor cleanout, size 110 mm diameter; GRP water tanks capacity of each 1000 liter complete with all fittings, all valves and concrete pad; Guard Room 1; Guard Room 2; Guard Room 3; 30A, 2P AC Disconnect Switch; 20A Duplex Receptacle Floor Mounted; Twin Socket outlet; Twin Socket outlet, Weather Proof; Single gang Lighting switch; 2way Single gang Lighting switch; 36W LED linear Pendant lighting; 36W LED Emergency linear Pendant lighting; 13W recess mounted LED down light fitting; 13W recess emergency mounted LED down light fitting with 1.5 Hr Battery; 10.4W LED Exit light with 1.5 Hr Battery; 4mm2 Cu./FRLSZH Cable; 6mm2 Cu./FRLSZH Cable; 8 Port Industrial PoE Switch 10/100BaseT (0 deg to +70 deg. Celsius); 06C Optical Fiber SM; 48C Optical Fiber SM; 48 Core Splice Closure; Boom Barrier at Security Guard Room; Pedestrian turnstile at Security Guard Room; Access Control Unit; Access Card Reader; Magnetic Lock; Break Glass; Exit Push button; Door Sensor; Biometrics Reader; Pole/Bollard mounted IP( PoE), Automatic Number Plate Recognition (ANPR, camera, 5MP,IP 66, IR illumin; 12U rack dimension (W x H x L) 600 x 625 x 600 mm; Fire Alarm Control panel with fire alarm zoning with Mimic panel with fire alarm zoning; Main Fire Alarm Control panel with fire alarm zoning with Mimic panel with fire alarm zoning; Supply and installation of the addressable manual call point with operation safety glass breaking and pushbutton; Supply and installation of the photoelectric heat & smoke detector with base; Sounder With Beacon; Addressable Control module for Sounders; Addressable Control module for HVAC System; Addressable Monitor module for HVAC System; 2C x 1.5 Sqm FR Rated Armored - Cable For Loop Wiring; DACT (Auto - Dailer) for 24x7 Civil Defence; Transmission Communication cable - Fiber Optics 12Core; Transmission Communication cable - Ethernet Cable; Supply, install to site and installation of power supply system for fire alarm control panel; Supply, install to site and installation of power cable; Fire Fighter s Telephone Centre; Fireman s Telephone Jack; Voice Command Center |
| ENG-MT-FE-CV-A-120 | Material Approval for Civil Works for Fence |  |  |  |  | ENG-MT-FE-CV-S-110 → ENG-MT-FE-CV-S-110 SS |  |
| 1 | **Long Lead Time Items** |  | 2026-10-21 → 2026-08-20 (-62d) |  |  |  |  |
| ENG-MT-CTV-S-110 | Material Submittal for Low Current Works of CCTV Complete System with All Accessories |  |  |  |  | ENG-SH-RD-S-100 → ENG-SH-RD-S-100 SS |  |
| 2 | **Superstructure Works** | 2026-10-13 → 2026-06-17 (-118d) | 2026-10-21 → 2026-08-20 (-62d) |  |  |  |  |
| SL | **Pump Stations** | 2026-10-13 → 2026-06-17 (-118d) | 2026-10-21 → 2026-06-23 (-120d) |  |  |  |  |
| 1 | **Submission of Material** | 2026-10-13 → 2026-06-17 (-118d) | 2026-10-20 → 2026-06-20 (-122d) |  |  |  |  |
| ENG-MT-SPS-MC-S-100 | Material Submittal for Electromechanical Works for Pump Stations | 2026-10-13 → 2026-06-17 A (-118d) | 2026-10-20 → 2026-06-20 A (-122d) | 0% → 100% | -34d → none |  | resources none → Unskilled Labor [35.42 h]; Electrical Technician [13.66 h]; Plumber [3.2 h]; Carpenter [3.89 h]; Mason [3.1 h]; Steel Fixer [3.96 h]; Skilled Labor [10.68 h] |
| 2 | **Approval of Material** | 2026-10-13 → 2026-06-21 (-114d) | 2026-10-21 → 2026-06-23 (-120d) |  |  |  |  |
| ENG-MT-SPS-MC-A-110 | Material Approval for Electromechanical Works for Pump Stations | 2026-10-13 → 2026-06-21 A (-114d) | 2026-10-21 → 2026-06-23 A (-120d) | 0% → 100% | -34d → none |  | resources none → Unskilled Labor [40.48 h]; Electrical Technician [15.61 h]; Plumber [3.66 h]; Carpenter [4.45 h]; Mason [3.54 h]; Steel Fixer [4.52 h]; Skilled Labor [12.2 h] |
| SL1 | **Storage Tank (TSE)** | 2026-10-13 → 2026-08-01 (-73d) | 2026-10-21 → 2026-08-20 (-62d) |  |  |  |  |
| 1 | **Submission of Material** | 2026-10-13 → 2026-08-01 (-73d) | 2026-10-20 → 2026-08-06 (-75d) |  |  |  |  |
| ENG-MT-TSE-MC-S-110 | Material Submittal for Electromechanical Works for Storage Tank (TSE) | 2026-10-13 → 2026-08-01 A (-73d) | 2026-10-20 → 2026-08-06 A (-75d) | 0% → 100% | -64d → none | none → ENG-MT-SPS-MC-S-100 SS, ENG-MT-SPS-MC-S-100 FF | resources none → Unskilled Labor [35.42 h]; Electrical Technician [13.66 h]; Plumber [3.2 h]; Carpenter [3.89 h]; Mason [3.1 h]; Steel Fixer [3.96 h]; Skilled Labor [10.68 h] |
| 2 | **Approval of Material** | 2026-10-13 → 2026-08-08 (-66d) | 2026-10-21 → 2026-08-20 (-62d) |  |  |  |  |
| ENG-MT-TSE-MC-A-120 | Material Approval for Electromechanical Works for Storage Tank (TSE) | 2026-10-13 → 2026-08-08 A (-66d) | 2026-10-21 → 2026-08-20 A (-62d) | 0% → 100% | -64d → none |  | resources none → Unskilled Labor [40.48 h]; Electrical Technician [15.61 h]; Plumber [3.66 h]; Carpenter [4.45 h]; Mason [3.54 h]; Steel Fixer [4.52 h]; Skilled Labor [12.2 h] |
| PROC | **Procurement Cycle** |  | 2027-04-24 → 2027-04-21 (-3d) |  |  |  |  |
| NLL | **Short Lead Time Items** |  | 2027-04-05 → 2027-04-11 (+6d) |  |  |  |  |
| INF | **Infrastructure Networks** |  | 2027-04-05 → 2027-04-11 (+6d) |  |  |  |  |
| RD | **Road Works** |  | 2026-10-13 → 2026-10-20 (+7d) |  |  |  |  |
| PRO-RD-PO-100 | Issuance of Purchase Order for Subgrade of Road Works |  |  |  |  |  | resources none → Unskilled Labor [18.82 h]; Electrical Technician [7.26 h]; Plumber [1.7 h]; Carpenter [2.07 h]; Mason [1.64 h]; Steel Fixer [2.1 h]; Skilled Labor [5.67 h] |
| PRO-RD-PO-110 | Issuance of Purchase Order for Aggregate Base Course of Road Works |  |  |  |  |  | resources none → Unskilled Labor [18.82 h]; Electrical Technician [7.26 h]; Plumber [1.7 h]; Carpenter [2.07 h]; Mason [1.64 h]; Steel Fixer [2.1 h]; Skilled Labor [5.67 h] |
| PRO-RD-PO-120 | Issuance of Purchase Order for Prime Coat of Road Works |  |  |  |  | ENG-MT-RD-A-120 → ENG-MT-RD-A-120, PRO-SW-PO-120 | resources none → Unskilled Labor [18.82 h]; Electrical Technician [7.26 h]; Plumber [1.7 h]; Carpenter [2.07 h]; Mason [1.64 h]; Steel Fixer [2.1 h]; Skilled Labor [5.67 h] |
| PRO-RD-PO-130 | Issuance of Purchase Order for Bituminous Base & Wearing Courses of Road Works |  |  |  |  | ENG-MT-RD-A-130 → ENG-MT-RD-A-130, PRO-SW-PO-120 | resources none → Unskilled Labor [18.82 h]; Electrical Technician [7.26 h]; Plumber [1.7 h]; Carpenter [2.07 h]; Mason [1.64 h]; Steel Fixer [2.1 h]; Skilled Labor [5.67 h] |
| PRO-RD-PO-140 | Issuance of Purchase Order for Interlock Tiles of Landscaping |  |  |  |  |  | resources none → Unskilled Labor [18.82 h]; Electrical Technician [7.26 h]; Plumber [1.7 h]; Carpenter [2.07 h]; Mason [1.64 h]; Steel Fixer [2.1 h]; Skilled Labor [5.67 h] |
| PRO-RD-PO-150 | Issuance of Purchase Order for Curbstones of Landscaping |  |  |  |  |  | resources none → Unskilled Labor [18.82 h]; Electrical Technician [7.26 h]; Plumber [1.7 h]; Carpenter [2.07 h]; Mason [1.64 h]; Steel Fixer [2.1 h]; Skilled Labor [5.67 h] |
| PRO-RD-PO-160 | Issuance of Purchase Order for Traffic Signs Boards of Road Works |  |  |  |  |  | resources none → Unskilled Labor [18.82 h]; Electrical Technician [7.26 h]; Plumber [1.7 h]; Carpenter [2.07 h]; Mason [1.64 h]; Steel Fixer [2.1 h]; Skilled Labor [5.67 h] |
| PRO-RD-PO-170 | Issuance of Purchase Order for Road Markings of Road Works |  |  |  |  |  | resources none → Unskilled Labor [18.82 h]; Electrical Technician [7.26 h]; Plumber [1.7 h]; Carpenter [2.07 h]; Mason [1.64 h]; Steel Fixer [2.1 h]; Skilled Labor [5.67 h] |
| PRO-RD-MF-100 | Manufacturing of Subgrade for Road Works |  |  |  |  |  | resources none → Unskilled Labor [295.73 h]; Electrical Technician [114.06 h]; Plumber [26.72 h]; Carpenter [32.49 h]; Mason [25.85 h]; Steel Fixer [33.02 h]; Skilled Labor [89.13 h] |
| PRO-RD-MF-110 | Manufacturing of Aggregate Base Course for Road Works |  |  |  |  |  | resources none → Unskilled Labor [322.61 h]; Electrical Technician [124.43 h]; Plumber [29.15 h]; Carpenter [35.44 h]; Mason [28.2 h]; Steel Fixer [36.03 h]; Skilled Labor [97.24 h] |
| PRO-RD-MF-120 | Manufacturing of Prime Coat for Road Works |  |  |  |  |  | resources none → Unskilled Labor [322.61 h]; Electrical Technician [124.43 h]; Plumber [29.15 h]; Carpenter [35.44 h]; Mason [28.2 h]; Steel Fixer [36.03 h]; Skilled Labor [97.24 h] |
| PRO-RD-MF-130 | Manufacturing of Bituminous Base & Wearing Courses for Road Works |  |  |  |  |  | resources none → Unskilled Labor [322.61 h]; Electrical Technician [124.43 h]; Plumber [29.15 h]; Carpenter [35.44 h]; Mason [28.2 h]; Steel Fixer [36.03 h]; Skilled Labor [97.24 h] |
| PRO-RD-MF-140 | Manufacturing of Interlock Tiles for Landscaping |  |  |  |  |  | resources none → Unskilled Labor [241.96 h]; Electrical Technician [93.32 h]; Plumber [21.86 h]; Carpenter [26.58 h]; Mason [21.15 h]; Steel Fixer [27.02 h]; Skilled Labor [72.93 h] |

| ID | Task | Start | Finish | Total float | Predecessors | Other |
| --- | --- | --- | --- | --- | --- | --- |
| PRO-RD-MF-150 | Manufacturing of Curbstones for Landscaping |  |  |  |  | resources none → Unskilled Labor [241.96 h]; Electrical Technician [93.32 h]; Plumber [21.86 h]; Carpenter [26.58 h]; Mason [21.15 h]; Steel Fixer [27.02 h]; Skilled Labor [72.93 h] |
| PRO-RD-MF-160 | Manufacturing of Traffic Signs Boards for Road Works |  |  |  |  | resources none → Unskilled Labor [268.84 h]; Electrical Technician [103.69 h]; Plumber [24.29 h]; Carpenter [29.54 h]; Mason [23.5 h]; Steel Fixer [30.02 h]; Skilled Labor [81.03 h] |
| PRO-RD-MF-170 | Manufacturing of Road Markings for Road Works |  |  |  |  | resources none → Unskilled Labor [282.28 h]; Electrical Technician [108.87 h]; Plumber [25.51 h]; Carpenter [31.01 h]; Mason [24.67 h]; Steel Fixer [31.52 h]; Skilled Labor [85.08 h] |
| PRO-RD-1DL-100 | 1ST Material Delivery for Subgrade of Road Works |  |  |  | PRO-RD-MF-100 → PRO-RD-MF-100 SS | resources none → Unskilled Labor [32.26 h]; Electrical Technician [12.44 h]; Plumber [2.91 h]; Carpenter [3.54 h]; Mason [2.82 h]; Steel Fixer [3.6 h]; Skilled Labor [9.72 h] |
| PRO-RD-1DL-110 | 1ST Material Delivery for Aggregate Base Course of Road Works |  |  |  | PRO-RD-MF-110 → PRO-RD-MF-110 SS | resources none → Unskilled Labor [32.26 h]; Electrical Technician [12.44 h]; Plumber [2.91 h]; Carpenter [3.54 h]; Mason [2.82 h]; Steel Fixer [3.6 h]; Skilled Labor [9.72 h] |
| PRO-RD-1DL-120 | 1ST Material Delivery for Prime Coat of Road Works |  |  |  | PRO-RD-MF-120 → PRO-RD-MF-120 SS | resources none → Unskilled Labor [32.26 h]; Electrical Technician [12.44 h]; Plumber [2.91 h]; Carpenter [3.54 h]; Mason [2.82 h]; Steel Fixer [3.6 h]; Skilled Labor [9.72 h] |
| PRO-RD-1DL-130 | 1ST Material Delivery for Bituminous Base & Wearing Courses of Road Works |  |  |  | PRO-RD-MF-130 → PRO-RD-MF-130 SS | resources none → Unskilled Labor [32.26 h]; Electrical Technician [12.44 h]; Plumber [2.91 h]; Carpenter [3.54 h]; Mason [2.82 h]; Steel Fixer [3.6 h]; Skilled Labor [9.72 h] |
| PRO-RD-1DL-140 | 1ST Material Delivery for Interlock Tiles of Landscaping |  |  |  | PRO-RD-MF-140 → PRO-RD-MF-140 SS | resources none → Unskilled Labor [32.26 h]; Electrical Technician [12.44 h]; Plumber [2.91 h]; Carpenter [3.54 h]; Mason [2.82 h]; Steel Fixer [3.6 h]; Skilled Labor [9.72 h] |
| PRO-RD-1DL-150 | 1ST Material Delivery for Curbstones of Landscaping |  |  |  | PRO-RD-MF-150 → PRO-RD-MF-150 SS | resources none → Unskilled Labor [32.26 h]; Electrical Technician [12.44 h]; Plumber [2.91 h]; Carpenter [3.54 h]; Mason [2.82 h]; Steel Fixer [3.6 h]; Skilled Labor [9.72 h] |
| PRO-RD-1DL-160 | 1ST Material Delivery for Traffic Signs Boards of Road Works |  |  |  | PRO-RD-MF-160 → PRO-RD-MF-160 SS | resources none → Unskilled Labor [40.33 h]; Electrical Technician [15.55 h]; Plumber [3.64 h]; Carpenter [4.43 h]; Mason [3.52 h]; Steel Fixer [4.5 h]; Skilled Labor [12.15 h] |
| PRO-RD-1DL-170 | 1ST Material Delivery for Road Markings of Road Works |  |  |  | PRO-RD-MF-170, PRO-RD-1DL-160 → PRO-RD-MF-170 SS, PRO-RD-1DL-160 SS | resources none → Unskilled Labor [40.33 h]; Electrical Technician [15.55 h]; Plumber [3.64 h]; Carpenter [4.43 h]; Mason [3.52 h]; Steel Fixer [4.5 h]; Skilled Labor [12.15 h] |
| DL | **Material Delivery & Site Inspection** |  | 2026-10-13 → 2026-10-20 (+7d) |  |  |  |
| 1 | **Pre-Bituminous Construction** |  | 2026-10-13 → 2026-10-20 (+7d) |  |  |  |
| PRO-R25-RD-DL-100 | Material Delivery & Site Inspection for Subgrade of Road Works |  | 2026-10-13 → 2026-10-20 (+7d) | 44.5d → 38.5d | PRO-RD-MF-100, PRO-RD-1DL-100 → PRO-RD-MF-100 SS, PRO-RD-1DL-100 SS |  |
| PRO-R25-RD-DL-110 | Material Delivery & Site Inspection for Aggregate Base Course of Road Works | 2026-10-13 → 2026-10-20 (+7d) | 2026-10-13 → 2026-10-20 (+7d) | 58d → 52d |  |  |
| 4 | **Bituminous Construction** | 2026-10-13 → 2026-10-20 (+7d) | 2026-10-13 → 2026-10-20 (+7d) |  |  |  |
| PRO-R25-RD-DL-160 | Material Delivery & Site Inspection for Prime Coat of Road Works | 2026-10-13 → 2026-10-20 (+7d) | 2026-10-13 → 2026-10-20 (+7d) | 73d → 67d |  |  |
| PRO-R25-RD-DL-170 | Material Delivery & Site Inspection for Bituminous Base & Wearing Courses of Road Works | 2026-10-13 → 2026-10-20 (+7d) | 2026-10-13 → 2026-10-20 (+7d) | 80d → 74d |  |  |
| 2 | **Pavement Works** | 2026-10-13 → 2026-10-20 (+7d) | 2026-10-13 → 2026-10-20 (+7d) |  |  |  |
| PRO-R25-RD-DL-120 | Material Delivery & Site Inspection of Interlock Tiles for Landscaping | 2026-10-13 → 2026-10-20 (+7d) | 2026-10-13 → 2026-10-20 (+7d) | 71d → 65d |  |  |
| PRO-R25-RD-DL-130 | Material Delivery & Site Inspection of Curbstones for Landscaping | 2026-10-13 → 2026-10-20 (+7d) | 2026-10-13 → 2026-10-20 (+7d) | 58.8d → 52.8d |  |  |
| 3 | **Traffic Signs Boards and Roads Marking** | 2026-10-13 → 2026-10-20 (+7d) | 2026-10-13 → 2026-10-20 (+7d) |  |  |  |
| PRO-R25-RD-DL-140 | Material Delivery & Site Inspection of Traffic Signs Boards For Road Works | 2026-10-13 → 2026-10-20 (+7d) | 2026-10-13 → 2026-10-20 (+7d) | 97d → 91d |  |  |
| PRO-R25-RD-DL-150 | Material Delivery & Site Inspection of Road Markings For Road Works | 2026-10-13 → 2026-10-20 (+7d) | 2026-10-13 → 2026-10-20 (+7d) | 90d → 84d |  |  |
| IR1 | **Softscape and Planting Works** | 2026-10-13 → 2026-10-20 (+7d) | 2027-02-14 → 2027-02-22 (+8d) |  |  |  |
| PO | **Issuance of Purchase Orders** | 2026-10-13 → 2026-10-20 (+7d) | 2026-10-19 → 2026-10-26 (+7d) |  |  |  |
| 1 | **Main Line Pipes** | 2026-10-13 → 2026-10-20 (+7d) | 2026-10-19 → 2026-10-26 (+7d) |  |  |  |
| PRO-IR-PO-140 | Issuance of Purchase Order for Softscape and Planting Works | 2026-10-13 → 2026-10-20 (+7d) | 2026-10-19 → 2026-10-26 (+7d) | -44.75d → -70.25d |  | resources none → Unskilled Labor [16.13 h]; Electrical Technician [6.22 h]; Plumber [1.46 h]; Carpenter [1.77 h]; Mason [1.41 h]; Steel Fixer [1.8 h]; Skilled Labor [4.86 h] |
| PRO-IR-PO-150 | Issuance of Purchase Order for Site Furnishings (Seating Bench,Stone Boulders and Gravel) | 2026-10-13 → 2026-10-20 (+7d) | 2026-10-19 → 2026-10-26 (+7d) | 6d → -68d |  | resources none → Unskilled Labor [16.13 h]; Electrical Technician [6.22 h]; Plumber [1.46 h]; Carpenter [1.77 h]; Mason [1.41 h]; Steel Fixer [1.8 h]; Skilled Labor [4.86 h] |
| MF | **Manufacturing of Material** | 2026-10-20 → 2026-10-27 (+7d) | 2027-01-17 → 2027-01-24 (+7d) |  |  |  |
| 1 | **Main Line Pipes** | 2026-10-20 → 2026-10-27 (+7d) | 2027-01-17 → 2027-01-24 (+7d) |  |  |  |
| PRO-IR-MF-140 | Manufacturing of Softscape and Planting Works | 2026-10-20 → 2026-10-27 (+7d) | 2027-01-17 → 2027-01-24 (+7d) | -54d → -83.5d |  | resources none → Unskilled Labor [241.96 h]; Electrical Technician [93.32 h]; Plumber [21.86 h]; Carpenter [26.58 h]; Mason [21.15 h]; Steel Fixer [27.02 h]; Skilled Labor [72.93 h] |
| PRO-IR-MF-150 | Manufacturing of Valves for Site Furnishings (Seating Bench,Stone Boulders and Gravel) | 2026-10-20 → 2026-10-27 (+7d) | 2027-01-17 → 2027-01-24 (+7d) | 7d → -80.5d |  | resources none → Unskilled Labor [241.96 h]; Electrical Technician [93.32 h]; Plumber [21.86 h]; Carpenter [26.58 h]; Mason [21.15 h]; Steel Fixer [27.02 h]; Skilled Labor [72.93 h] |
| 1DL | **1st Material Delivery & Site Inspection** | 2027-01-18 → 2027-01-25 (+7d) | 2027-01-24 → 2027-01-31 (+7d) |  |  |  |
| 1 | **Main Line Pipes** | 2027-01-18 → 2027-01-25 (+7d) | 2027-01-24 → 2027-01-31 (+7d) |  |  |  |
| PRO-IR-1DL-140 | 1ST Material Delivery for Softscape and Planting Works | 2027-01-18 → 2027-01-25 (+7d) | 2027-01-24 → 2027-01-31 (+7d) | -46d → -71.5d |  | resources none → Unskilled Labor [16.13 h]; Electrical Technician [6.22 h]; Plumber [1.46 h]; Carpenter [1.77 h]; Mason [1.41 h]; Steel Fixer [1.8 h]; Skilled Labor [4.86 h] |
| PRO-IR-1DL-150 | 1ST Material Delivery for Site Furnishings (Seating Bench,Stone Boulders and Gravel) | 2027-01-18 → 2027-01-25 (+7d) | 2027-01-24 → 2027-01-31 (+7d) | 6d → -68.5d |  | resources none → Unskilled Labor [16.13 h]; Electrical Technician [6.22 h]; Plumber [1.46 h]; Carpenter [1.77 h]; Mason [1.41 h]; Steel Fixer [1.8 h]; Skilled Labor [4.86 h] |
| DL | **Material Delivery & Site Inspection** | 2027-01-25 → 2027-02-01 (+7d) | 2027-02-14 → 2027-02-22 (+8d) |  |  |  |
| 1 | **Main Line Pipes** | 2027-01-25 → 2027-02-01 (+7d) | 2027-02-14 → 2027-02-22 (+8d) |  |  |  |
| PRO-R25-IR-DL-140 | Material Delivery & Site Inspection of Softscape and Planting Works | 2027-01-25 → 2027-02-01 (+7d) | 2027-02-07 → 2027-02-16 (+9d) | -46d → -71.5d |  | resources none → Unskilled Labor [32.26 h]; Electrical Technician [12.44 h]; Plumber [2.91 h]; Carpenter [3.54 h]; Mason [2.82 h]; Steel Fixer [3.6 h]; Skilled Labor [9.72 h] |
| PRO-R25-IR-DL-150 | Material Delivery & Site Inspection of Site Furnishings (Seating Bench,Stone Boulders and Gravel) | 2027-01-25 → 2027-02-01 (+7d) | 2027-02-14 → 2027-02-22 (+8d) | 6d → -68.5d |  | resources none → Unskilled Labor [43.01 h]; Electrical Technician [16.59 h]; Plumber [3.89 h]; Carpenter [4.73 h]; Mason [3.76 h]; Steel Fixer [4.8 h]; Skilled Labor [12.96 h] |
| SW | **Sewage Network** |  | 2027-04-05 → 2027-04-11 (+6d) |  |  |  |
| PRO-SW-PO-100 | Issuance of Purchase Order for Main Line Pipes of Sewage Network |  |  |  |  | resources none → Unskilled Labor [16.13 h]; Electrical Technician [6.22 h]; Plumber [1.46 h]; Carpenter [1.77 h]; Mason [1.41 h]; Steel Fixer [1.8 h]; Skilled Labor [4.86 h] |
| PRO-SW-PO-110 | Issuance of Purchase Order for Manhole of Sewage Network |  |  |  |  | resources none → Unskilled Labor [16.13 h]; Electrical Technician [6.22 h]; Plumber [1.46 h]; Carpenter [1.77 h]; Mason [1.41 h]; Steel Fixer [1.8 h]; Skilled Labor [4.86 h] |
| PRO-SW-PO-120 | Issuance of Purchase Order for Manhole Covers of Sewage Network |  |  |  | ENG-MT-SW-TF-A-100 → ENG-MT-SW-TF-A-100 SS | resources none → Unskilled Labor [16.13 h]; Electrical Technician [6.22 h]; Plumber [1.46 h]; Carpenter [1.77 h]; Mason [1.41 h]; Steel Fixer [1.8 h]; Skilled Labor [4.86 h] |
| MF | **Manufacturing of Material** |  | 2027-02-19 → 2027-02-26 (+7d) |  |  |  |
| PRO-SW-MF-100 | Manufacturing of Main Line Pipes for Sewage Network |  |  |  |  | resources none → Unskilled Labor [53.77 h]; Electrical Technician [20.74 h]; Plumber [4.86 h]; Carpenter [5.91 h]; Mason [4.7 h]; Steel Fixer [6 h]; Skilled Labor [16.21 h] |
| PRO-SW-MF-110 | Manufacturing of Manholes for Sewage Network |  |  |  |  | resources none → Unskilled Labor [107.54 h]; Electrical Technician [41.48 h]; Plumber [9.72 h]; Carpenter [11.81 h]; Mason [9.4 h]; Steel Fixer [12.01 h]; Skilled Labor [32.41 h] |
| 3 | **Testing and Finishes** | 2026-10-13 → 2026-10-20 (+7d) | 2027-02-19 → 2027-02-26 (+7d) |  |  |  |
| PRO-SW-MF-120 | Manufacturing of Manhole Covers for Sewage Network | 2026-10-13 → 2026-10-20 (+7d) | 2027-02-19 → 2027-02-26 (+7d) | -74d → -89.5d |  | resources none → Unskilled Labor [349.5 h]; Electrical Technician [134.8 h]; Plumber [31.58 h]; Carpenter [38.4 h]; Mason [30.55 h]; Steel Fixer [39.03 h]; Skilled Labor [105.34 h] |
| 1DL | **1st Material Delivery & Site Inspection** |  | 2027-02-28 → 2027-03-07 (+7d) |  |  |  |
| PRO-SW-1DL-100 | 1ST Material Delivery for Main Line Pipes of Sewage Network |  |  |  |  | resources none → Unskilled Labor [16.13 h]; Electrical Technician [6.22 h]; Plumber [1.46 h]; Carpenter [1.77 h]; Mason [1.41 h]; Steel Fixer [1.8 h]; Skilled Labor [4.86 h] |
| PRO-SW-1DL-110 | 1ST Material Delivery for Manholes of Sewage Network |  |  |  |  | resources none → Unskilled Labor [16.13 h]; Electrical Technician [6.22 h]; Plumber [1.46 h]; Carpenter [1.77 h]; Mason [1.41 h]; Steel Fixer [1.8 h]; Skilled Labor [4.86 h] |
| 3 | **Testing and Finishes** | 2027-02-20 → 2027-02-27 (+7d) | 2027-02-28 → 2027-03-07 (+7d) |  |  |  |
| PRO-SW-1DL-120 | 1ST Material Delivery for Manholes Covers of Sewage Network | 2027-02-20 → 2027-02-27 (+7d) | 2027-02-28 → 2027-03-07 (+7d) | -60.5d → -72.75d |  | resources none → Unskilled Labor [16.13 h]; Electrical Technician [6.22 h]; Plumber [1.46 h]; Carpenter [1.77 h]; Mason [1.41 h]; Steel Fixer [1.8 h]; Skilled Labor [4.86 h] |
| DL | **Material Delivery & Site Inspection** |  | 2027-04-05 → 2027-04-11 (+6d) |  |  |  |
| 1 | **Main Line Sections** |  | 2026-10-13 → 2026-10-20 (+7d) |  |  |  |
| PRO-R25-SW-DL-110 | Material Delivery & Site Inspection of Manholes for Sewage Network |  | 2026-10-13 → 2026-10-20 (+7d) | -30.5d → -36.5d |  |  |
| 3 | **Testing and Finishes** | 2027-02-28 → 2027-03-08 (+8d) | 2027-04-05 → 2027-04-11 (+6d) |  |  |  |
| PRO-R25-SW-DL-120 | Material Delivery & Site Inspection of Manholes Covers for Sewage Network | 2027-02-28 → 2027-03-08 (+8d) | 2027-04-05 → 2027-04-11 (+6d) | -60.5d → -72.75d |  | resources none → Unskilled Labor [69.9 h]; Electrical Technician [26.96 h]; Plumber [6.32 h]; Carpenter [7.68 h]; Mason [6.11 h]; Steel Fixer [7.81 h]; Skilled Labor [21.07 h] |
| SD | **Storm Drainage Network** |  | 2027-03-06 → 2027-03-31 (+25d) |  |  |  |
| MF | **Manufacturing of Material** |  | 2027-01-20 → 2027-01-27 (+7d) |  |  |  |
| PRO-SD-MF-100 | Manufacturing of Materials for Manholes of Storm Drainage Network |  |  |  |  | resources none → Unskilled Labor [107.54 h]; Electrical Technician [41.48 h]; Plumber [9.72 h]; Carpenter [11.81 h]; Mason [9.4 h]; Steel Fixer [12.01 h]; Skilled Labor [32.41 h] |
| PRO-SD-MF-110 | Manufacturing of Materials for Main Line Pipes of Storm Drainage Network |  |  |  |  | resources none → Unskilled Labor [21.51 h]; Electrical Technician [8.3 h]; Plumber [1.94 h]; Carpenter [2.36 h]; Mason [1.88 h]; Steel Fixer [2.4 h]; Skilled Labor [6.48 h] |
| PRO-SD-MF-130 | Manufacturing of Materials for Catch Basins of Storm Drainage Network |  |  |  |  | resources none → Unskilled Labor [53.77 h]; Electrical Technician [20.74 h]; Plumber [4.86 h]; Carpenter [5.91 h]; Mason [4.7 h]; Steel Fixer [6 h]; Skilled Labor [16.21 h] |
| PRO-SD-MF-150 | Manufacturing of Materials for Catch Basin Pipes of Storm Drainage Network |  |  |  |  | resources none → Unskilled Labor [53.77 h]; Electrical Technician [20.74 h]; Plumber [4.86 h]; Carpenter [5.91 h]; Mason [4.7 h]; Steel Fixer [6 h]; Skilled Labor [16.21 h] |
| 3 | **Testing and Finishes** | 2026-10-13 → 2026-10-20 (+7d) | 2027-01-20 → 2027-01-27 (+7d) |  |  |  |
| PRO-SD-MF-120 | Manufacturing of Materials for Manhole Covers of Storm Drainage Network | 2026-10-13 → 2026-10-20 (+7d) | 2027-01-20 → 2027-01-27 (+7d) | -33d → -64.38d |  | resources none → Unskilled Labor [268.84 h]; Electrical Technician [103.69 h]; Plumber [24.29 h]; Carpenter [29.54 h]; Mason [23.5 h]; Steel Fixer [30.02 h]; Skilled Labor [81.03 h] |
| PRO-SD-MF-140 | Manufacturing of Materials for Catch Basin Covers of Storm Drainage Network | 2026-10-13 → 2026-10-20 (+7d) | 2027-01-20 → 2027-01-27 (+7d) | -38d → -69.5d |  | resources none → Unskilled Labor [268.84 h]; Electrical Technician [103.69 h]; Plumber [24.29 h]; Carpenter [29.54 h]; Mason [23.5 h]; Steel Fixer [30.02 h]; Skilled Labor [81.03 h] |
| PRO-SD-PO-100 | Issuance of Purchase Order for Manholes of Storm Drainage Network |  |  |  |  | resources none → Unskilled Labor [16.67 h]; Electrical Technician [6.43 h]; Plumber [1.51 h]; Carpenter [1.83 h]; Mason [1.46 h]; Steel Fixer [1.86 h]; Skilled Labor [5.02 h] |

| ID | Task | Start | Finish | Total float | Predecessors | Other |
| --- | --- | --- | --- | --- | --- | --- |
| PRO-SD-PO-110 | Issuance of Purchase Order for Main Line Pipes of Storm Drainage Network |  |  |  | ENG-MT-SD-ML-A-110, MS-CS-PS SS, ENG-SH-SD-CB-S-100_R → ENG-MT-SD-ML-A-110, MS-CS-PS SS, ENG-SH-SD-CB-S-100_R SS | resources none → Unskilled Labor [8.07 h]; Electrical Technician [3.11 h]; Plumber [0.73 h]; Carpenter [0.89 h]; Mason [0.7 h]; Steel Fixer [0.9 h]; Skilled Labor [2.43 h] |
| PRO-SD-PO-130 | Issuance of Purchase Order for Catch Basins of Storm Drainage Network |  |  |  |  | resources none → Unskilled Labor [16.13 h]; Electrical Technician [6.22 h]; Plumber [1.46 h]; Carpenter [1.77 h]; Mason [1.41 h]; Steel Fixer [1.8 h]; Skilled Labor [4.86 h] |
| PRO-SD-PO-150 | Issuance of Purchase Order for Catch Basin Pipes of Storm Drainage Network |  |  |  |  | resources none → Unskilled Labor [16.13 h]; Electrical Technician [6.22 h]; Plumber [1.46 h]; Carpenter [1.77 h]; Mason [1.41 h]; Steel Fixer [1.8 h]; Skilled Labor [4.86 h] |
| PRO-SD-PO-120 | Issuance of Purchase Order for Manhole Covers of Storm Drainage Network |  |  |  | ENG-MT-SD-TF-A-100 → ENG-MT-SD-TF-A-100 SS | resources none → Unskilled Labor [16.13 h]; Electrical Technician [6.22 h]; Plumber [1.46 h]; Carpenter [1.77 h]; Mason [1.41 h]; Steel Fixer [1.8 h]; Skilled Labor [4.86 h] |
| PRO-SD-PO-140 | Issuance of Purchase Order for Catch Basin Covers of Storm Drainage Network |  |  |  | ENG-MT-SD-TF-A-110 → ENG-MT-SD-TF-A-110 SS | resources none → Unskilled Labor [16.13 h]; Electrical Technician [6.22 h]; Plumber [1.46 h]; Carpenter [1.77 h]; Mason [1.41 h]; Steel Fixer [1.8 h]; Skilled Labor [4.86 h] |
| 1DL | **1st Material Delivery & Site Inspection** |  | 2027-01-27 → 2027-02-03 (+7d) |  |  |  |
| PRO-SD-1DL-110 | 1ST Material Delivery for Main Line Pipes of Storm Drainage Network |  |  |  |  | resources none → Unskilled Labor [16.13 h]; Electrical Technician [6.22 h]; Plumber [1.46 h]; Carpenter [1.77 h]; Mason [1.41 h]; Steel Fixer [1.8 h]; Skilled Labor [4.86 h] |
| 2 | **Catch Basin Sections** |  | 2026-10-19 → 2026-10-24 (+5d) |  |  |  |
| PRO-SD-1DL-120 | 1ST Material Delivery for Catch Basin Pipes of Storm Drainage Network |  | 2026-10-19 → 2026-10-24 (+5d) | -38.5d → -48.13d |  | resources none → Unskilled Labor [16.13 h]; Electrical Technician [6.22 h]; Plumber [1.46 h]; Carpenter [1.77 h]; Mason [1.41 h]; Steel Fixer [1.8 h]; Skilled Labor [4.86 h] |
| PRO-SD-1DL-130 | 1ST Material Delivery for Catch Basins of Storm Drainage Network |  | 2026-10-19 → 2026-10-24 (+5d) | -38.5d → -48.13d |  | resources none → Unskilled Labor [16.13 h]; Electrical Technician [6.22 h]; Plumber [1.46 h]; Carpenter [1.77 h]; Mason [1.41 h]; Steel Fixer [1.8 h]; Skilled Labor [4.86 h] |
| 3 | **Testing and Finishes** | 2027-01-21 → 2027-01-28 (+7d) | 2027-01-27 → 2027-02-03 (+7d) |  |  |  |
| PRO-SD-1DL-140 | 1ST Material Delivery for Manholes Covers of Storm Drainage Network | 2027-01-21 → 2027-01-28 (+7d) | 2027-01-27 → 2027-02-03 (+7d) | -29d → -55.5d |  | resources none → Unskilled Labor [16.13 h]; Electrical Technician [6.22 h]; Plumber [1.46 h]; Carpenter [1.77 h]; Mason [1.41 h]; Steel Fixer [1.8 h]; Skilled Labor [4.86 h] |
| PRO-SD-1DL-150 | 1ST Material Delivery for Catch Basin Covers of Storm Drainage Network | 2027-01-21 → 2027-01-28 (+7d) | 2027-01-27 → 2027-02-03 (+7d) | -33d → -59.5d |  | resources none → Unskilled Labor [16.13 h]; Electrical Technician [6.22 h]; Plumber [1.46 h]; Carpenter [1.77 h]; Mason [1.41 h]; Steel Fixer [1.8 h]; Skilled Labor [4.86 h] |
| DL | **Material Delivery & Site Inspection** |  | 2027-03-06 → 2027-03-31 (+25d) |  |  |  |
| 1 | **Main Line Sections** |  | 2026-10-13 → 2026-10-20 (+7d) |  |  |  |
| PRO-R25-SD-DL-100 | Material Delivery & Site Inspection of Manholes of Storm Drainage Network |  | 2026-10-13 → 2026-10-20 (+7d) | -47.5d → -58.75d | PRO-SD-MF-100 FF → PRO-SD-MF-100 |  |
| PRO-R25-SD-DL-120 | Material Delivery & Site Inspection of Main Line Pipes of Storm Drainage Network |  |  |  | PRO-SD-1DL-110 FF, PRO-SD-MF-110 FF → PRO-SD-1DL-110 SS, PRO-SD-MF-110 |  |
| 2 | **Catch Basin Sections** |  | 2026-10-20 → 2026-10-27 (+7d) |  |  |  |
| PRO-R25-SD-DL-110 | Material Delivery & Site Inspection of Catch Basin Pipes for Storm Drainage Network |  | 2026-10-20 → 2026-10-27 (+7d) | -28.5d → -40.5d | PRO-SD-MF-150 FF, PRO-SD-1DL-120 FF → PRO-SD-1DL-120 SS, PRO-SD-MF-150 SS, PRO-SD-MF-150 FF, PRO-SD-1DL-120 FF |  |
| PRO-R25-SD-DL-130 | Material Delivery & Site Inspection of Catch Basins for Storm Drainage Network |  | 2026-10-20 → 2026-10-27 (+7d) | -28.5d → -40.5d | PRO-SD-MF-130 FF, PRO-SD-1DL-130 FF → PRO-SD-1DL-130 SS, PRO-SD-MF-130 SS, PRO-SD-MF-130 FF, PRO-SD-1DL-130 FF |  |
| 3 | **Testing and Finishes** | 2027-01-28 → 2027-02-04 (+7d) | 2027-03-06 → 2027-03-31 (+25d) |  |  |  |
| PRO-R25-SD-DL-150 | Material Delivery & Site Inspection of Catch Basin Covers for Storm Drainage Network | 2027-01-28 → 2027-02-04 (+7d) | 2027-02-24 → 2027-03-06 (+10d) | -33d → -59.5d |  | resources none → Unskilled Labor [53.77 h]; Electrical Technician [20.74 h]; Plumber [4.86 h]; Carpenter [5.91 h]; Mason [4.7 h]; Steel Fixer [6 h]; Skilled Labor [16.21 h] |
| PRO-R25-SD-DL-140 | Material Delivery & Site Inspection of Manholes Covers for Storm Drainage Network | 2027-01-28 → 2027-02-23 (+26d) | 2027-03-06 → 2027-03-31 (+25d) | -29d → -68.5d | PRO-SD-1DL-140, PRO-SD-MF-120 → PRO-SD-1DL-140, PRO-SD-MF-120, PRO-R25-IR-DL-150 | resources none → Unskilled Labor [69.9 h]; Electrical Technician [26.96 h]; Plumber [6.32 h]; Carpenter [7.68 h]; Mason [6.11 h]; Steel Fixer [7.81 h]; Skilled Labor [21.07 h] |
| PW | **Potable Water Network** |  | 2027-03-30 → 2027-04-05 (+6d) |  |  |  |
| PO | **Issuance of Purchase Orders** |  | 2026-10-24 → 2026-10-31 (+7d) |  |  |  |
| 1 | **Main Line Sections** |  | 2026-10-19 → 2026-10-26 (+7d) |  |  |  |
| PRO-PW-PO-100_R | Issuance of Purchase Order for Main Line Pipes of Potable Water Network(Remaining) |  |  |  | ENG-MT-PW-ML-A-100 FF, PRO-PW-PO-100 → ENG-MT-PW-ML-A-100 FF, PRO-PW-PO-100 SS, PRO-SD-PO-110 | resources none → Unskilled Labor [13.44 h]; Electrical Technician [5.18 h]; Plumber [1.21 h]; Carpenter [1.48 h]; Mason [1.17 h]; Steel Fixer [1.5 h]; Skilled Labor [4.05 h] |
| PRO-PW-PO-110 | Issuance of Purchase Order for Valves of Potable Water Network | 2026-10-13 → 2026-10-20 (+7d) | 2026-10-19 → 2026-10-26 (+7d) | -62.25d → -68.25d |  | resources none → Unskilled Labor [16.13 h]; Electrical Technician [6.22 h]; Plumber [1.46 h]; Carpenter [1.77 h]; Mason [1.41 h]; Steel Fixer [1.8 h]; Skilled Labor [4.86 h] |
| 3 | **Fire Hydrant** | 2026-10-13 → 2026-10-20 (+7d) | 2026-10-24 → 2026-10-31 (+7d) |  |  |  |
| PRO-PW-PO-120 | Issuance of Purchase Order for Fire Hydrants of Potable Water Network | 2026-10-13 → 2026-10-20 (+7d) | 2026-10-24 → 2026-10-31 (+7d) | -47.25d → -53.25d |  | resources none → Unskilled Labor [26.88 h]; Electrical Technician [10.37 h]; Plumber [2.43 h]; Carpenter [2.95 h]; Mason [2.35 h]; Steel Fixer [3 h]; Skilled Labor [8.1 h] |
| 4 | **Testing and Finishes** | 2026-10-13 → 2026-10-20 (+7d) | 2026-10-24 → 2026-10-31 (+7d) |  |  |  |
| PRO-PW-PO-130 | Issuance of Purchase Order for Surface Box of Potable Water Network | 2026-10-13 → 2026-10-20 (+7d) | 2026-10-24 → 2026-10-31 (+7d) | -51.75d → -57.75d |  | resources none → Unskilled Labor [26.88 h]; Electrical Technician [10.37 h]; Plumber [2.43 h]; Carpenter [2.95 h]; Mason [2.35 h]; Steel Fixer [3 h]; Skilled Labor [8.1 h] |
| MF | **Manufacturing of Material** |  | 2027-02-11 → 2027-02-18 (+7d) |  |  |  |
| 1 | **Main Line Sections** |  | 2027-01-17 → 2027-01-24 (+7d) |  |  |  |
| PRO-PW-MF-100_R | Manufacturing of Main Line Pipes for Potable Water Network(Remaining) |  |  |  |  | resources none → Unskilled Labor [259.43 h]; Electrical Technician [100.06 h]; Plumber [23.44 h]; Carpenter [28.5 h]; Mason [22.68 h]; Steel Fixer [28.97 h]; Skilled Labor [78.68 h] |
| PRO-PW-MF-110 | Manufacturing of Valves for Potable Water Network | 2026-10-20 → 2026-10-27 (+7d) | 2027-01-17 → 2027-01-24 (+7d) | -74.5d → -81.5d |  | resources none → Unskilled Labor [241.96 h]; Electrical Technician [93.32 h]; Plumber [21.86 h]; Carpenter [26.58 h]; Mason [21.15 h]; Steel Fixer [27.02 h]; Skilled Labor [72.93 h] |
| 3 | **Fire Hydrant** | 2026-10-25 → 2026-11-01 (+7d) | 2026-12-23 → 2026-12-30 (+7d) |  |  |  |
| PRO-PW-MF-120 | Manufacturing of Fire Hydrants for Potable Water Network | 2026-10-25 → 2026-11-01 (+7d) | 2026-12-23 → 2026-12-30 (+7d) | -56.5d → -63.5d |  | resources none → Unskilled Labor [161.31 h]; Electrical Technician [62.21 h]; Plumber [14.57 h]; Carpenter [17.72 h]; Mason [14.1 h]; Steel Fixer [18.01 h]; Skilled Labor [48.62 h] |
| 4 | **Testing and Finishes** | 2026-10-25 → 2026-11-01 (+7d) | 2027-02-11 → 2027-02-18 (+7d) |  |  |  |
| PRO-PW-MF-130 | Manufacturing for Surface Box of Potable Water Network | 2026-10-25 → 2026-11-01 (+7d) | 2027-02-11 → 2027-02-18 (+7d) | -62d → -69d |  | resources none → Unskilled Labor [295.73 h]; Electrical Technician [114.06 h]; Plumber [26.72 h]; Carpenter [32.49 h]; Mason [25.85 h]; Steel Fixer [33.02 h]; Skilled Labor [89.13 h] |
| 1DL | **1st Material Delivery & Site Inspection** |  | 2027-02-21 → 2027-02-28 (+7d) |  |  |  |
| 1 | **Main Line Sections** |  | 2027-01-24 → 2027-01-31 (+7d) |  |  |  |
| PRO-PW-1DL-100_R | 1ST Material Delivery for Main Line Pipes of Potable Water Network(Remaining) |  | 2027-01-03 → 2026-10-28 (-67d) | -71d → -77d |  | resources none → Unskilled Labor [189.53 h]; Electrical Technician [73.1 h]; Plumber [17.13 h]; Carpenter [20.82 h]; Mason [16.57 h]; Steel Fixer [21.17 h]; Skilled Labor [57.13 h] |
| PRO-PW-1DL-110 | 1ST Material Delivery for Valves of Potable Water Network | 2027-01-18 → 2027-01-25 (+7d) | 2027-01-24 → 2027-01-31 (+7d) | -63.5d → -69.5d |  | resources none → Unskilled Labor [16.13 h]; Electrical Technician [6.22 h]; Plumber [1.46 h]; Carpenter [1.77 h]; Mason [1.41 h]; Steel Fixer [1.8 h]; Skilled Labor [4.86 h] |
| 3 | **Fire Hydrant** | 2026-12-24 → 2026-12-31 (+7d) | 2026-12-30 → 2027-01-06 (+7d) |  |  |  |
| PRO-PW-1DL-120 | 1ST Material Delivery for Fire Hydrants of Potable Water Network | 2026-12-24 → 2026-12-31 (+7d) | 2026-12-30 → 2027-01-06 (+7d) | -48.5d → -54.5d |  | resources none → Unskilled Labor [16.13 h]; Electrical Technician [6.22 h]; Plumber [1.46 h]; Carpenter [1.77 h]; Mason [1.41 h]; Steel Fixer [1.8 h]; Skilled Labor [4.86 h] |
| 4 | **Testing and Finishes** | 2027-02-13 → 2027-02-20 (+7d) | 2027-02-21 → 2027-02-28 (+7d) |  |  |  |
| PRO-PW-1DL-130 | 1ST Material Delivery for Finishes of Potable Water Network | 2027-02-13 → 2027-02-20 (+7d) | 2027-02-21 → 2027-02-28 (+7d) | -53d → -57.5d |  | resources none → Unskilled Labor [16.13 h]; Electrical Technician [6.22 h]; Plumber [1.46 h]; Carpenter [1.77 h]; Mason [1.41 h]; Steel Fixer [1.8 h]; Skilled Labor [4.86 h] |
| DL | **Material Delivery & Site Inspection** |  | 2027-03-30 → 2027-04-05 (+6d) |  |  |  |
| 1 | **Main Line Sections** |  | 2027-01-25 → 2027-02-01 (+7d) |  |  |  |
| PRO-R25-PW-DL-100_R | Material Delivery & Site Inspection of Main Line Pipes for Potable Water Network(Remaining) |  | 2027-01-03 → 2027-01-10 (+7d) | -71d → -77d | PRO-R25-PW-DL-100, PRO-PW-1DL-100_R FF → PRO-PW-1DL-100_R SS, PRO-R25-PW-DL-100, PRO-PW-1DL-100_R FF |  |
| PRO-R25-PW-DL-110 | Material Delivery & Site Inspection of Valves for Potable Water Network | 2027-01-25 → 2027-02-01 (+7d) | 2027-01-25 → 2027-02-01 (+7d) | -57.5d → -63.5d |  |  |
| 3 | **Fire Hydrant** | 2026-12-31 → 2027-01-07 (+7d) | 2026-12-31 → 2027-01-07 (+7d) |  |  |  |
| PRO-R25-PW-DL-120 | Material Delivery & Site Inspection of Fire Hydrants for Potable Water Network | 2026-12-31 → 2027-01-07 (+7d) | 2026-12-31 → 2027-01-07 (+7d) | -48.5d → -54.5d |  |  |
| 4 | **Testing and Finishes** | 2027-02-22 → 2027-02-28 (+6d) | 2027-03-30 → 2027-04-05 (+6d) |  |  |  |
| PRO-R25-PW-DL-130 | Material Delivery & Site Inspection for Finishes of Potable Water Network | 2027-02-22 → 2027-02-28 (+6d) | 2027-03-30 → 2027-04-05 (+6d) | -53d → -57.5d |  | resources none → Unskilled Labor [69.9 h]; Electrical Technician [26.96 h]; Plumber [6.32 h]; Carpenter [7.68 h]; Mason [6.11 h]; Steel Fixer [7.81 h]; Skilled Labor [21.07 h] |
| IR | **Irrigation Network** |  | 2027-01-25 → 2027-02-08 (+14d) |  |  |  |
| PO | **Issuance of Purchase Orders** |  | 2026-10-19 → 2026-11-02 (+14d) |  |  |  |
| 1 | **Main Line Pipes** |  | 2026-10-19 → 2026-11-02 (+14d) |  |  |  |
| PRO-IR-PO-100_R | Issuance of Purchase Order for Main Line Pipes of Irrigation Network(Remaining) |  |  |  | ENG-MT-IR-ML-A-100, PRO-IR-PO-100 → ENG-MT-IR-ML-A-100, PRO-IR-PO-100 SS, PRO-PW-PO-100_R SS | resources none → Unskilled Labor [8.87 h]; Electrical Technician [3.42 h]; Plumber [0.8 h]; Carpenter [0.97 h]; Mason [0.78 h]; Steel Fixer [0.99 h]; Skilled Labor [2.67 h] |
| PRO-IR-PO-110 | Issuance of Purchase Order for Valves of Irrigation Network | 2026-10-13 → 2026-10-27 (+14d) | 2026-10-19 → 2026-11-02 (+14d) | -54.25d → -66.25d | ENG-MT-IR-ML-A-110 → ENG-MT-IR-ML-A-110, ENG-SH-HS-S-100, PRO-PW-PO-110 | resources none → Unskilled Labor [16.13 h]; Electrical Technician [6.22 h]; Plumber [1.46 h]; Carpenter [1.77 h]; Mason [1.41 h]; Steel Fixer [1.8 h]; Skilled Labor [4.86 h] |
| MF | **Manufacturing of Material** |  | 2027-01-17 → 2027-01-31 (+14d) |  |  |  |
| 1 | **Main Line Pipes** |  | 2027-01-17 → 2027-01-31 (+14d) |  |  |  |
| PRO-IR-MF-100 | Manufacturing of Main Line Pipes for Irrigation Network |  |  |  |  | resources none → Unskilled Labor [231.2 h]; Electrical Technician [89.17 h]; Plumber [20.89 h]; Carpenter [25.4 h]; Mason [20.21 h]; Steel Fixer [25.82 h]; Skilled Labor [69.69 h] |
| PRO-IR-MF-110 | Manufacturing of Valves for Irrigation Network | 2026-10-20 → 2026-11-03 (+14d) | 2027-01-17 → 2027-01-31 (+14d) | -64.5d → -78.5d |  | resources none → Unskilled Labor [241.96 h]; Electrical Technician [93.32 h]; Plumber [21.86 h]; Carpenter [26.58 h]; Mason [21.15 h]; Steel Fixer [27.02 h]; Skilled Labor [72.93 h] |
| 1DL | **1st Material Delivery & Site Inspection** |  | 2027-01-24 → 2027-02-07 (+14d) |  |  |  |
| 1 | **Main Line Pipes** |  | 2027-01-24 → 2027-02-07 (+14d) |  |  |  |
| PRO-IR-1DL-100 | 1ST Material Delivery for Main Line Pipes of Irrigation Network |  | 2026-10-13 → 2026-10-24 (+11d) | 14d → 4.5d |  | resources none → Unskilled Labor [13.44 h]; Electrical Technician [5.18 h]; Plumber [1.21 h]; Carpenter [1.48 h]; Mason [1.17 h]; Steel Fixer [1.5 h]; Skilled Labor [4.05 h] |
| PRO-IR-1DL-110 | 1ST Material Delivery for Valves of Irrigation Network | 2027-01-18 → 2027-02-01 (+14d) | 2027-01-24 → 2027-02-07 (+14d) | -55.5d → -67.5d |  | resources none → Unskilled Labor [16.13 h]; Electrical Technician [6.22 h]; Plumber [1.46 h]; Carpenter [1.77 h]; Mason [1.41 h]; Steel Fixer [1.8 h]; Skilled Labor [4.86 h] |
| DL | **Material Delivery & Site Inspection** | 2026-10-13 → 2026-10-24 (+11d) | 2027-01-25 → 2027-02-08 (+14d) |  |  |  |

| ID | Task | Start | Finish | Complete | Total float | Predecessors | Other |
| --- | --- | --- | --- | --- | --- | --- | --- |
| 1 | **Main Line Pipes** | 2026-10-13 → 2026-10-24 (+11d) | 2027-01-25 → 2027-02-08 (+14d) |  |  |  |  |
| PRO-R25-IR-DL-100 | Material Delivery & Site Inspection of Main Line Pipes for Irrigation Network | 2026-10-13 → 2026-10-24 (+11d) | 2026-10-13 → 2026-10-24 (+11d) |  | 14d → 4.5d |  |  |
| PRO-R25-IR-DL-110 | Material Delivery & Site Inspection of Valves for Irrigation Network | 2027-01-25 → 2027-02-08 (+14d) | 2027-01-25 → 2027-02-08 (+14d) |  | -55.5d → -67.5d |  | resources Gate valve 50 mm PN16; Direct Burried Gate valve 40 mm PN16; Pressure–compensating bubblers 110 Lit/Hr; Flushing Bronze gate valve dia 1.5" inside PVC box; Air release valve 1.5" inside PVC box; Extra flexible pressure compensating on surface inline dripline`s, O.D. is 16.1 mm; Electrical Solenoid Valve ( 1.5") inside PVC box; Electrical Solenoid Valve ( 2") inside PVC box; Quick coupling valve 1" inside a round valve box 10" size with a manual gate valve, hose swivel and key with all accessories; Advanced Irrigation controller subject to client approval, can connect with Centarl Control system; Decoder cables 12 AWG between valves and controllers, The cables shall be pulled through 32Ø UPVC conduit; Preparing the irrigation program for the entire system and providing technical services for monitoring and controlling the central irrigation systems → Gate valve 50 mm PN16; Direct Burried Gate valve 40 mm PN16; Pressure compensating bubblers 110 Lit/Hr; Flushing Bronze gate valve dia 1.5" inside PVC box; Air release valve 1.5" inside PVC box; Extra flexible pressure compensating on surface inline dripline`s, O.D. is 16.1 mm; Electrical Solenoid Valve ( 1.5") inside PVC box; Electrical Solenoid Valve ( 2") inside PVC box; Quick coupling valve 1" inside a round valve box 10" size with a manual gate valve, hose swivel and key with all accessories; Advanced Irrigation controller subject to client approval, can connect with Centarl Control system; Decoder cables 12 AWG between valves and controllers, The cables shall be pulled through 32 UPVC conduit; Preparing the irrigation program for the entire system and providing technical services for monitoring and controlling the central irrigation systems |
| TSE | **Treated Sewage Effluent (Tse)** |  | 2027-01-25 → 2027-02-01 (+7d) |  |  |  |  |
| PO | **Issuance of Purchase Orders** |  | 2026-10-19 → 2026-10-26 (+7d) |  |  |  |  |
| 1 | **Main Line Pipes** |  | 2026-10-19 → 2026-10-26 (+7d) |  |  |  |  |
| PRO-TSE-PO-120 | Issuance of Purchase Order for Main Line Pipes of Treated Sewage Effluent (Tse) |  |  |  |  | ENG-MT-IR-ML-A-120 → ENG-MT-IR-ML-A-120, ENG-SH-HS-S-100 SS | resources none → Unskilled Labor [16.13 h]; Electrical Technician [6.22 h]; Plumber [1.46 h]; Carpenter [1.77 h]; Mason [1.41 h]; Steel Fixer [1.8 h]; Skilled Labor [4.86 h] |
| PRO-TSE-PO-130 | Issuance of Purchase Order for Valves of Treated Sewage Effluent (Tse) | 2026-10-13 → 2026-10-20 (+7d) | 2026-10-19 → 2026-10-26 (+7d) |  | -53.25d → -59.25d | ENG-MT-IR-ML-A-130 → ENG-MT-IR-ML-A-130, ENG-SH-HS-S-100 | resources none → Unskilled Labor [16.13 h]; Electrical Technician [6.22 h]; Plumber [1.46 h]; Carpenter [1.77 h]; Mason [1.41 h]; Steel Fixer [1.8 h]; Skilled Labor [4.86 h] |
| MF | **Manufacturing of Material** | 2026-07-20 → 2026-03-20 (-122d) | 2027-01-17 → 2027-01-24 (+7d) |  |  |  |  |
| 1 | **Main Line Pipes** | 2026-07-20 → 2026-03-20 (-122d) | 2027-01-17 → 2027-01-24 (+7d) |  |  |  |  |
| PRO-TSE-MF-120 | Manufacturing of Main Line Pipes for Treated Sewage Effluent (Tse) | 2026-07-20 A → 2026-03-20 A (-122d) | 2026-08-03 A → 2026-03-25 A (-131d) |  |  |  | resources none → Unskilled Labor [241.96 h]; Electrical Technician [93.32 h]; Plumber [21.86 h]; Carpenter [26.58 h]; Mason [21.15 h]; Steel Fixer [27.02 h]; Skilled Labor [72.93 h] |
| PRO-TSE-MF-130 | Manufacturing of Valves for Treated Sewage Effluent (Tse) | 2026-10-20 → 2026-10-27 (+7d) | 2027-01-17 → 2027-01-24 (+7d) |  | -63.5d → -70.5d |  | resources none → Unskilled Labor [241.96 h]; Electrical Technician [93.32 h]; Plumber [21.86 h]; Carpenter [26.58 h]; Mason [21.15 h]; Steel Fixer [27.02 h]; Skilled Labor [72.93 h] |
| 1DL | **1st Material Delivery & Site Inspection** | 2026-10-13 → 2026-04-01 (-195d) | 2027-01-24 → 2027-01-31 (+7d) |  |  |  |  |
| 1 | **Main Line Pipes** | 2026-10-13 → 2026-04-01 (-195d) | 2027-01-24 → 2027-01-31 (+7d) |  |  |  |  |
| PRO-TSE-1DL-120 | 1ST Material Delivery for Main Line Pipes of Treated Sewage Effluent (Tse) | 2026-10-13 → 2026-04-01 A (-195d) | 2026-10-19 → 2026-06-15 A (-126d) | 0% → 100% | 9.5d → none |  | resources none → Unskilled Labor [16.13 h]; Electrical Technician [6.22 h]; Plumber [1.46 h]; Carpenter [1.77 h]; Mason [1.41 h]; Steel Fixer [1.8 h]; Skilled Labor [4.86 h] |
| PRO-TSE-1DL-130 | 1ST Material Delivery for Valves of Treated Sewage Effluent (Tse) | 2027-01-18 → 2027-01-25 (+7d) | 2027-01-24 → 2027-01-31 (+7d) |  | -54.5d → -60.5d |  | resources none → Unskilled Labor [16.13 h]; Electrical Technician [6.22 h]; Plumber [1.46 h]; Carpenter [1.77 h]; Mason [1.41 h]; Steel Fixer [1.8 h]; Skilled Labor [4.86 h] |
| DL | **Material Delivery & Site Inspection** |  | 2027-01-25 → 2027-02-01 (+7d) |  |  |  |  |
| 1 | **Main Line Pipes** |  | 2027-01-25 → 2027-02-01 (+7d) |  |  |  |  |
| PRO-R25-TSE-DL-120 | Material Delivery & Site Inspection of Main Line Pipes for Treated Sewage Effluent (Tse)(Completed) |  |  |  |  | PRO-IR-PO-100 → PRO-IR-PO-100 SS |  |
| PRO-R25-TSE-DL-130 | Material Delivery & Site Inspection of Valves for Treated Sewage Effluent (Tse) | 2027-01-25 → 2027-02-01 (+7d) | 2027-01-25 → 2027-02-01 (+7d) |  | -54.5d → -60.5d |  |  |
| MV | **Medium Voltage Network** | 2026-10-13 → 2026-10-20 (+7d) | 2027-03-22 → 2027-03-29 (+7d) |  |  |  |  |
| PO | **Issuance of Purchase Orders** | 2026-10-13 → 2026-10-20 (+7d) | 2026-10-26 → 2026-11-02 (+7d) |  |  |  |  |
| 1 | **Cabling Works** | 2026-10-13 → 2026-10-20 (+7d) | 2026-10-26 → 2026-11-02 (+7d) |  |  |  |  |
| PRO-MV-PO-100 | Issuance of Purchase Order for Medium Voltage Cables of Medium Voltage Network | 2026-10-13 → 2026-10-20 (+7d) | 2026-10-26 → 2026-11-02 (+7d) |  | -58.25d → -64.25d |  | resources none → Unskilled Labor [32.26 h]; Electrical Technician [12.44 h]; Plumber [2.91 h]; Carpenter [3.54 h]; Mason [2.82 h]; Steel Fixer [3.6 h]; Skilled Labor [9.72 h] |
| 3 | **Termination and Testing Works** | 2026-10-13 → 2026-10-20 (+7d) | 2026-10-26 → 2026-11-02 (+7d) |  |  |  |  |
| PRO-MV-PO-120 | Issuance of Purchase Order for Termination and Joints Kits of Medium Voltage Network | 2026-10-13 → 2026-10-20 (+7d) | 2026-10-26 → 2026-11-02 (+7d) |  | -65.75d → -71.75d |  | resources none → Unskilled Labor [32.26 h]; Electrical Technician [12.44 h]; Plumber [2.91 h]; Carpenter [3.54 h]; Mason [2.82 h]; Steel Fixer [3.6 h]; Skilled Labor [9.72 h] |
| MF | **Manufacturing of Material** | 2026-10-27 → 2026-11-03 (+7d) | 2027-01-24 → 2027-01-31 (+7d) |  |  |  |  |
| 1 | **Cabling Works** | 2026-10-27 → 2026-11-03 (+7d) | 2026-12-25 → 2027-01-01 (+7d) |  |  |  |  |
| PRO-MV-MF-100 | Manufacturing of Medium Voltage Cables for Medium Voltage Network | 2026-10-27 → 2026-11-03 (+7d) | 2026-12-25 → 2027-01-01 (+7d) |  | -69.5d → -76.5d |  | resources none → Unskilled Labor [161.31 h]; Electrical Technician [62.21 h]; Plumber [14.57 h]; Carpenter [17.72 h]; Mason [14.1 h]; Steel Fixer [18.01 h]; Skilled Labor [48.62 h] |
| 3 | **Termination and Testing Works** | 2026-10-27 → 2026-11-03 (+7d) | 2027-01-24 → 2027-01-31 (+7d) |  |  |  |  |
| PRO-MV-MF-110 | Manufacturing of Termination and Joints Kits for Medium Voltage Network | 2026-10-27 → 2026-11-03 (+7d) | 2027-01-24 → 2027-01-31 (+7d) |  | -78d → -85d |  | resources none → Unskilled Labor [241.96 h]; Electrical Technician [93.32 h]; Plumber [21.86 h]; Carpenter [26.58 h]; Mason [21.15 h]; Steel Fixer [27.02 h]; Skilled Labor [72.93 h] |
| 1DL | **1st Material Delivery & Site Inspection** | 2026-12-26 → 2027-01-02 (+7d) | 2027-02-10 → 2027-02-20 (+10d) |  |  |  |  |
| 1 | **Cabling Works** | 2026-12-26 → 2027-01-02 (+7d) | 2027-01-07 → 2027-01-14 (+7d) |  |  |  |  |
| PRO-MV-1DL-100 | 1ST Material Delivery for Medium Voltage Cables of Medium Voltage Network | 2026-12-26 → 2027-01-02 (+7d) | 2027-01-07 → 2027-01-14 (+7d) |  | -59.5d → -65.5d |  | resources none → Unskilled Labor [32.26 h]; Electrical Technician [12.44 h]; Plumber [2.91 h]; Carpenter [3.54 h]; Mason [2.82 h]; Steel Fixer [3.6 h]; Skilled Labor [9.72 h] |
| 3 | **Termination and Testing Works** | 2027-01-25 → 2027-02-01 (+7d) | 2027-02-10 → 2027-02-20 (+10d) |  |  |  |  |
| PRO-MV-1DL-120 | 1ST Material Delivery for Termination and Joints Kits of Medium Voltage Network | 2027-01-25 → 2027-02-01 (+7d) | 2027-02-10 → 2027-02-20 (+10d) |  | -67d → -73d |  | resources none → Unskilled Labor [37.64 h]; Electrical Technician [14.52 h]; Plumber [3.4 h]; Carpenter [4.14 h]; Mason [3.29 h]; Steel Fixer [4.2 h]; Skilled Labor [11.34 h] |
| DL | **Material Delivery & Site Inspection** | 2027-01-09 → 2027-01-16 (+7d) | 2027-03-22 → 2027-03-29 (+7d) |  |  |  |  |
| 1 | **Cabling Works** | 2027-01-09 → 2027-01-16 (+7d) | 2027-01-09 → 2027-01-16 (+7d) |  |  |  |  |
| PRO-MV-DL-100 | Material Delivery & Site Inspection of Medium Voltage Cables for Medium Voltage Network | 2027-01-09 → 2027-01-16 (+7d) | 2027-01-09 → 2027-01-16 (+7d) |  | -59.5d → -65.5d |  |  |
| 3 | **Termination and Testing Works** | 2027-02-10 → 2027-02-20 (+10d) | 2027-03-22 → 2027-03-29 (+7d) |  |  |  |  |
| PRO-MV-DL-110 | Material Delivery & Site Inspection of Termination and Joints Kits for Medium Voltage Network | 2027-02-10 → 2027-02-20 (+10d) | 2027-03-22 → 2027-03-29 (+7d) |  | -67d → -73d |  | resources none → Unskilled Labor [69.9 h]; Electrical Technician [26.96 h]; Plumber [6.32 h]; Carpenter [7.68 h]; Mason [6.11 h]; Steel Fixer [7.81 h]; Skilled Labor [21.07 h] |
| SL | **Low Voltage and Street Lighting Network** |  | 2026-11-29 → 2026-12-06 (+7d) |  |  |  |  |
| PRO-SL-PO-100 | Issuance of Purchase Order for Lighting Cables of Street Lighting Network |  |  |  |  |  | resources none → Unskilled Labor [16.13 h]; Electrical Technician [6.22 h]; Plumber [1.46 h]; Carpenter [1.77 h]; Mason [1.41 h]; Steel Fixer [1.8 h]; Skilled Labor [4.86 h] |
| PRO-SL-PO-110 | Issuance of Purchase Order for Lighting Poles Foundations of Street Lighting Network |  |  |  |  |  | resources none → Unskilled Labor [16.13 h]; Electrical Technician [6.22 h]; Plumber [1.46 h]; Carpenter [1.77 h]; Mason [1.41 h]; Steel Fixer [1.8 h]; Skilled Labor [4.86 h] |
| PRO-SL-PO-120 | Issuance of Purchase Order for Lighting Poles of Street Lighting Network |  |  |  |  |  | resources none → Unskilled Labor [16.13 h]; Electrical Technician [6.22 h]; Plumber [1.46 h]; Carpenter [1.77 h]; Mason [1.41 h]; Steel Fixer [1.8 h]; Skilled Labor [4.86 h] |
| PRO-SL-PO-140 | Issuance of Purchase Order for Lighting Fixtures of Street Lighting Network |  |  |  |  | ENG-MT-SL-S-120, ENG-MT-SL-A-120 → ENG-MT-SL-S-120, ENG-MT-SL-A-120, PRO-RD-PO-140 SS | resources none → Unskilled Labor [16.13 h]; Electrical Technician [6.22 h]; Plumber [1.46 h]; Carpenter [1.77 h]; Mason [1.41 h]; Steel Fixer [1.8 h]; Skilled Labor [4.86 h] |
| PRO-SL-PO-160 | Issuance of Purchase Order for Distrubution Panel Boards of Street Lighting Network |  |  |  |  |  | resources none → Unskilled Labor [26.88 h]; Electrical Technician [10.37 h]; Plumber [2.43 h]; Carpenter [2.95 h]; Mason [2.35 h]; Steel Fixer [3 h]; Skilled Labor [8.1 h] |
| PRO-SL-PO-150 | Issuance of Purchase Order for Lighting Earthing of Street Lighting Network |  |  |  |  | ENG-MT-SL-ES-S-100, ENG-MT-SL-ES-A-100 → ENG-MT-SL-ES-S-100 SS, ENG-MT-SL-ES-A-100 SS | resources none → Unskilled Labor [21.51 h]; Electrical Technician [8.3 h]; Plumber [1.94 h]; Carpenter [2.36 h]; Mason [1.88 h]; Steel Fixer [2.4 h]; Skilled Labor [6.48 h] |
| PRO-SL-PO-130 | Issuance of Purchase Order for Fuse Boxes of Street Lighting Network |  |  |  |  | ENG-MT-SL-TF-S-100, ENG-MT-SL-TF-A-100 → ENG-MT-SL-TF-S-100 SS, ENG-MT-SL-TF-A-100 SS | resources none → Unskilled Labor [21.51 h]; Electrical Technician [8.3 h]; Plumber [1.94 h]; Carpenter [2.36 h]; Mason [1.88 h]; Steel Fixer [2.4 h]; Skilled Labor [6.48 h] |
| PRO-SL-PO-170 | Issuance of Purchase Order for Cable Lugs of Street Lighting Network |  |  |  |  | ENG-MT-SL-TF-S-110, ENG-MT-SL-TF-A-110 → ENG-MT-SL-TF-S-110 SS, ENG-MT-SL-TF-A-110 SS | resources none → Unskilled Labor [21.51 h]; Electrical Technician [8.3 h]; Plumber [1.94 h]; Carpenter [2.36 h]; Mason [1.88 h]; Steel Fixer [2.4 h]; Skilled Labor [6.48 h] |
| PRO-SL-MF-100 | Manufacturing of Lighting Cables for Street Lighting Network |  |  |  |  |  | resources none → Unskilled Labor [241.96 h]; Electrical Technician [93.32 h]; Plumber [21.86 h]; Carpenter [26.58 h]; Mason [21.15 h]; Steel Fixer [27.02 h]; Skilled Labor [72.93 h] |
| PRO-SL-MF-110 | Manufacturing of Lighting Poles Foundations for Street Lighting Network |  |  |  |  |  | resources none → Unskilled Labor [241.96 h]; Electrical Technician [93.32 h]; Plumber [21.86 h]; Carpenter [26.58 h]; Mason [21.15 h]; Steel Fixer [27.02 h]; Skilled Labor [72.93 h] |
| PRO-SL-MF-120 | Manufacturing of Lighting Poles for Street Lighting Network |  |  |  |  |  | resources none → Unskilled Labor [241.96 h]; Electrical Technician [93.32 h]; Plumber [21.86 h]; Carpenter [26.58 h]; Mason [21.15 h]; Steel Fixer [27.02 h]; Skilled Labor [72.93 h] |
| PRO-SL-MF-140 | Manufacturing of Lighting Fixtures for Street Lighting Network |  |  |  |  |  | resources none → Unskilled Labor [344.12 h]; Electrical Technician [132.72 h]; Plumber [31.09 h]; Carpenter [37.81 h]; Mason [30.08 h]; Steel Fixer [38.43 h]; Skilled Labor [103.72 h] |
| PRO-SL-MF-160 | Manufacturing of Distrubution Panel Boards for Street Lighting Network |  |  |  |  |  | resources none → Unskilled Labor [295.73 h]; Electrical Technician [114.06 h]; Plumber [26.72 h]; Carpenter [32.49 h]; Mason [25.85 h]; Steel Fixer [33.02 h]; Skilled Labor [89.13 h] |
| PRO-SL-MF-150 | Manufacturing of Lighting Earthing for Street Lighting Network |  |  |  |  |  | resources none → Unskilled Labor [376.38 h]; Electrical Technician [145.17 h]; Plumber [34.01 h]; Carpenter [41.35 h]; Mason [32.9 h]; Steel Fixer [42.03 h]; Skilled Labor [113.44 h] |
| PRO-SL-MF-130 | Manufacturing of Fuse Boxes for Street Lighting Network |  |  |  |  |  | resources none → Unskilled Labor [400.58 h]; Electrical Technician [154.5 h]; Plumber [36.19 h]; Carpenter [44.01 h]; Mason [35.01 h]; Steel Fixer [44.73 h]; Skilled Labor [120.73 h] |
| PRO-SL-MF-170 | Manufacturing of Cable Lugs for Street Lighting Network |  |  |  |  |  | resources none → Unskilled Labor [295.73 h]; Electrical Technician [114.06 h]; Plumber [26.72 h]; Carpenter [32.49 h]; Mason [25.85 h]; Steel Fixer [33.02 h]; Skilled Labor [89.13 h] |
| 1DL | **1st Material Delivery & Site Inspection** | 2026-10-13 → 2026-10-20 (+7d) | 2026-10-29 → 2026-11-05 (+7d) |  |  |  |  |
| 1 | **Cabling Works** | 2026-10-13 → 2026-10-20 (+7d) | 2026-10-19 → 2026-10-26 (+7d) |  |  |  |  |
| PRO-SL-1DL-100 | 1ST Material Delivery for Lighting Cables of Street Lighting Network | 2026-10-13 → 2026-10-20 (+7d) | 2026-10-19 → 2026-10-26 (+7d) |  | 23.5d → 17.5d |  | resources none → Unskilled Labor [16.13 h]; Electrical Technician [6.22 h]; Plumber [1.46 h]; Carpenter [1.77 h]; Mason [1.41 h]; Steel Fixer [1.8 h]; Skilled Labor [4.86 h] |
| 2 | **Lighting Poles Works** | 2026-10-13 → 2026-10-20 (+7d) | 2026-10-19 → 2026-10-26 (+7d) |  |  |  |  |
| PRO-SL-1DL-110 | 1ST Material Delivery for Lighting Poles Foundations of Street Lighting Network | 2026-10-13 → 2026-10-20 (+7d) | 2026-10-19 → 2026-10-26 (+7d) |  | -5.5d → -11.5d |  | resources none → Unskilled Labor [16.13 h]; Electrical Technician [6.22 h]; Plumber [1.46 h]; Carpenter [1.77 h]; Mason [1.41 h]; Steel Fixer [1.8 h]; Skilled Labor [4.86 h] |
| PRO-SL-1DL-120 | 1ST Material Delivery for Lighting Poles of Street Lighting Network | 2026-10-13 → 2026-10-20 (+7d) | 2026-10-19 → 2026-10-26 (+7d) |  | 28.5d → 22.5d |  | resources none → Unskilled Labor [16.13 h]; Electrical Technician [6.22 h]; Plumber [1.46 h]; Carpenter [1.77 h]; Mason [1.41 h]; Steel Fixer [1.8 h]; Skilled Labor [4.86 h] |
| PRO-SL-1DL-140 | 1ST Material Delivery for Lighting Fixtures of Street Lighting Network | 2026-10-13 → 2026-10-20 (+7d) | 2026-10-19 → 2026-10-26 (+7d) |  | 78d → 66d |  | resources none → Unskilled Labor [16.13 h]; Electrical Technician [6.22 h]; Plumber [1.46 h]; Carpenter [1.77 h]; Mason [1.41 h]; Steel Fixer [1.8 h]; Skilled Labor [4.86 h] |
| 3 | **Distribution Panel Board** | 2026-10-13 → 2026-10-20 (+7d) | 2026-10-19 → 2026-10-26 (+7d) |  |  |  |  |
| PRO-SL-1DL-160 | 1ST Material Delivery for Distrubution Panel Boards of Street Lighting Network | 2026-10-13 → 2026-10-20 (+7d) | 2026-10-19 → 2026-10-26 (+7d) |  | 66d → 54d |  | resources none → Unskilled Labor [16.13 h]; Electrical Technician [6.22 h]; Plumber [1.46 h]; Carpenter [1.77 h]; Mason [1.41 h]; Steel Fixer [1.8 h]; Skilled Labor [4.86 h] |
| 5 | **Termination and Testing Works** | 2026-10-13 → 2026-10-20 (+7d) | 2026-10-29 → 2026-11-05 (+7d) |  |  |  |  |
| PRO-SL-1DL-130 | 1ST Material Delivery for Fuse Boxes of Street Lighting Network | 2026-10-13 → 2026-10-20 (+7d) | 2026-10-29 → 2026-11-05 (+7d) |  | 52d → 46d |  | resources none → Unskilled Labor [40.33 h]; Electrical Technician [15.55 h]; Plumber [3.64 h]; Carpenter [4.43 h]; Mason [3.52 h]; Steel Fixer [4.5 h]; Skilled Labor [12.15 h] |
| PRO-SL-1DL-170 | 1ST Material Delivery for Cable Lugs of Street Lighting Network | 2026-10-13 → 2026-10-20 (+7d) | 2026-10-29 → 2026-11-05 (+7d) |  | 50d → 44d |  | resources none → Unskilled Labor [40.33 h]; Electrical Technician [15.55 h]; Plumber [3.64 h]; Carpenter [4.43 h]; Mason [3.52 h]; Steel Fixer [4.5 h]; Skilled Labor [12.15 h] |

| ID | Task | Start | Finish | Complete | Total float | Predecessors | Other |
| --- | --- | --- | --- | --- | --- | --- | --- |
| 4 | **Earthing System Works** | 2026-10-13 → 2026-10-20 (+7d) | 2026-10-19 → 2026-10-26 (+7d) |  |  |  |  |
| PRO-SL-1DL-150 | 1ST Material Delivery for Lighting Earthing of Street Lighting Network | 2026-10-13 → 2026-10-20 (+7d) | 2026-10-19 → 2026-10-26 (+7d) |  | 78d → 66d |  | resources none → Unskilled Labor [16.13 h]; Electrical Technician [6.22 h]; Plumber [1.46 h]; Carpenter [1.77 h]; Mason [1.41 h]; Steel Fixer [1.8 h]; Skilled Labor [4.86 h] |
| DL | **Material Delivery & Site Inspection** | 2026-10-20 → 2026-10-27 (+7d) | 2026-11-29 → 2026-12-06 (+7d) |  |  |  |  |
| 1 | **Cabling Works** | 2026-10-20 → 2026-10-27 (+7d) | 2026-10-20 → 2026-10-27 (+7d) |  |  |  |  |
| PRO-R25-SL-DL-100 | Material Delivery & Site Inspection of Lighting Cables for Street Lighting Network | 2026-10-20 → 2026-10-27 (+7d) | 2026-10-20 → 2026-10-27 (+7d) |  | 23.5d → 17.5d |  |  |
| 2 | **Lighting Poles Works** | 2026-10-20 → 2026-10-27 (+7d) | 2026-11-09 → 2026-11-16 (+7d) |  |  |  |  |
| PRO-R25-SL-DL-110 | Material Delivery & Site Inspection of Lighting Poles Foundations for Street Lighting Network | 2026-10-20 → 2026-10-27 (+7d) | 2026-11-09 → 2026-11-16 (+7d) |  | -5.5d → -11.5d |  | resources none → Unskilled Labor [48.39 h]; Electrical Technician [18.66 h]; Plumber [4.37 h]; Carpenter [5.32 h]; Mason [4.23 h]; Steel Fixer [5.4 h]; Skilled Labor [14.59 h] |
| PRO-R25-SL-DL-120 | Material Delivery & Site Inspection of Lighting Poles for Street Lighting Network | 2026-10-20 → 2026-10-27 (+7d) | 2026-10-20 → 2026-10-27 (+7d) |  | 28.5d → 22.5d |  |  |
| PRO-R25-SL-DL-140 | Material Delivery & Site Inspection of Lighting Fixtures for Street Lighting Network | 2026-10-20 → 2026-10-27 (+7d) | 2026-10-20 → 2026-10-27 (+7d) |  | 78d → 66d |  |  |
| 3 | **Distribution Panel Board** | 2026-10-20 → 2026-10-27 (+7d) | 2026-10-20 → 2026-10-27 (+7d) |  |  |  |  |
| PRO-R25-SL-DL-160 | Material Delivery & Site Inspection of Distrubution Panel Boards for Street Lighting Network | 2026-10-20 → 2026-10-27 (+7d) | 2026-10-20 → 2026-10-27 (+7d) |  | 66d → 54d |  |  |
| 4 | **Termination and Testing Works** | 2026-10-31 → 2026-11-07 (+7d) | 2026-11-29 → 2026-12-06 (+7d) |  |  |  |  |
| PRO-R25-SL-DL-130 | Material Delivery & Site Inspection of Fuse Boxes for Street Lighting Network | 2026-10-31 → 2026-11-07 (+7d) | 2026-11-29 → 2026-12-06 (+7d) |  | 52d → 46d |  | resources none → Unskilled Labor [69.9 h]; Electrical Technician [26.96 h]; Plumber [6.32 h]; Carpenter [7.68 h]; Mason [6.11 h]; Steel Fixer [7.81 h]; Skilled Labor [21.07 h] |
| PRO-R25-SL-DL-170 | Material Delivery & Site Inspection of Cable Lugs for Street Lighting Network | 2026-10-31 → 2026-11-07 (+7d) | 2026-11-29 → 2026-12-06 (+7d) |  | 50d → 44d |  | resources none → Unskilled Labor [69.9 h]; Electrical Technician [26.96 h]; Plumber [6.32 h]; Carpenter [7.68 h]; Mason [6.11 h]; Steel Fixer [7.81 h]; Skilled Labor [21.07 h] |
| 5 | **Earthing System Works** | 2026-10-20 → 2026-10-27 (+7d) | 2026-10-20 → 2026-10-27 (+7d) |  |  |  |  |
| PRO-R25-SL-DL-150 | Material Delivery & Site Inspection of Lighting Earthing for Street Lighting Network | 2026-10-20 → 2026-10-27 (+7d) | 2026-10-20 → 2026-10-27 (+7d) |  | 78d → 66d |  |  |
| TE | **Telecom Network** | 2026-10-13 → 2026-10-20 (+7d) | 2027-01-30 → 2027-02-06 (+7d) |  |  |  |  |
| PO | **Issuance of Purchase Orders** | 2026-10-13 → 2026-10-20 (+7d) | 2026-10-19 → 2026-10-26 (+7d) |  |  |  |  |
| 1 | **Ducts Works** | 2026-10-13 → 2026-10-20 (+7d) | 2026-10-19 → 2026-10-26 (+7d) |  |  |  |  |
| PRO-TE-PO-100 | Issuance of Purchase Order for Ducts forTelecom Network | 2026-10-13 → 2026-10-20 (+7d) | 2026-10-19 → 2026-10-26 (+7d) |  | -33.25d → -40.75d |  | resources none → Unskilled Labor [16.13 h]; Electrical Technician [6.22 h]; Plumber [1.46 h]; Carpenter [1.77 h]; Mason [1.41 h]; Steel Fixer [1.8 h]; Skilled Labor [4.86 h] |
| 3 | **Manholes Works** | 2026-10-13 → 2026-10-20 (+7d) | 2026-10-19 → 2026-10-26 (+7d) |  |  |  |  |
| PRO-TE-PO-110 | Issuance of Purchase Order for Manholes forTelecom Network | 2026-10-13 → 2026-10-20 (+7d) | 2026-10-19 → 2026-10-26 (+7d) |  | -47.55d → -58.75d |  | resources none → Unskilled Labor [16.13 h]; Electrical Technician [6.22 h]; Plumber [1.46 h]; Carpenter [1.77 h]; Mason [1.41 h]; Steel Fixer [1.8 h]; Skilled Labor [4.86 h] |
| 2 | **CCTV System Wroks** | 2026-10-13 → 2026-10-20 (+7d) | 2026-10-19 → 2026-10-26 (+7d) |  |  |  |  |
| PRO-CTV-PO-100 | Issuance of Purchase Order for Civil and Finishes Works of CCTV Complete System | 2026-10-13 → 2026-10-20 (+7d) | 2026-10-19 → 2026-10-26 (+7d) |  | -27d → -44d |  | resources none → Unskilled Labor [16.13 h]; Electrical Technician [6.22 h]; Plumber [1.46 h]; Carpenter [1.77 h]; Mason [1.41 h]; Steel Fixer [1.8 h]; Skilled Labor [4.86 h] |
| MF | **Manufacturing of Material** | 2026-10-20 → 2026-10-27 (+7d) | 2027-01-17 → 2027-01-24 (+7d) |  |  |  |  |
| 1 | **Ducts Works** | 2026-10-20 → 2026-10-27 (+7d) | 2026-12-18 → 2026-12-25 (+7d) |  |  |  |  |
| PRO-TE-MF-100 | Manufacturing of Ducts for Telecom Network | 2026-10-20 → 2026-10-27 (+7d) | 2026-12-18 → 2026-12-25 (+7d) |  | -40.5d → -49d |  | resources none → Unskilled Labor [161.31 h]; Electrical Technician [62.21 h]; Plumber [14.57 h]; Carpenter [17.72 h]; Mason [14.1 h]; Steel Fixer [18.01 h]; Skilled Labor [48.62 h] |
| 3 | **Manholes Works** | 2026-10-20 → 2026-10-27 (+7d) | 2027-01-17 → 2027-01-24 (+7d) |  |  |  |  |
| PRO-TE-MF-110 | Manufacturing of Manholes for Telecom Network | 2026-10-20 → 2026-10-27 (+7d) | 2027-01-17 → 2027-01-24 (+7d) |  | -56.8d → -70d |  | resources none → Unskilled Labor [241.96 h]; Electrical Technician [93.32 h]; Plumber [21.86 h]; Carpenter [26.58 h]; Mason [21.15 h]; Steel Fixer [27.02 h]; Skilled Labor [72.93 h] |
| 2 | **CCTV System Wroks** | 2026-10-20 → 2026-10-27 (+7d) | 2027-01-17 → 2027-01-24 (+7d) |  |  |  |  |
| PRO-CTV-MF-100 | Manufacturing of Civil and Finishes Works for CCTV Complete System | 2026-10-20 → 2026-10-27 (+7d) | 2027-01-17 → 2027-01-24 (+7d) |  | -33d → -53d |  | resources none → Unskilled Labor [241.96 h]; Electrical Technician [93.32 h]; Plumber [21.86 h]; Carpenter [26.58 h]; Mason [21.15 h]; Steel Fixer [27.02 h]; Skilled Labor [72.93 h] |
| 1DL | **1st Material Delivery & Site Inspection** | 2026-12-19 → 2026-12-26 (+7d) | 2027-01-28 → 2027-02-04 (+7d) |  |  |  |  |
| 1 | **Ducts Works** | 2026-12-19 → 2026-12-26 (+7d) | 2026-12-24 → 2026-12-31 (+7d) |  |  |  |  |
| PRO-TE-1DL-100 | 1ST Material Delivery for Ducts of Telecom Network | 2026-12-19 → 2026-12-26 (+7d) | 2026-12-24 → 2026-12-31 (+7d) |  | -34.5d → -42d |  | resources none → Unskilled Labor [16.13 h]; Electrical Technician [6.22 h]; Plumber [1.46 h]; Carpenter [1.77 h]; Mason [1.41 h]; Steel Fixer [1.8 h]; Skilled Labor [4.86 h] |
| 3 | **Manholes Works** | 2027-01-18 → 2027-01-25 (+7d) | 2027-01-24 → 2027-01-31 (+7d) |  |  |  |  |
| PRO-TE-1DL-110 | 1ST Material Delivery for Manholes of Telecom Network | 2027-01-18 → 2027-01-25 (+7d) | 2027-01-24 → 2027-01-31 (+7d) |  | -48.8d → -60d |  | resources none → Unskilled Labor [16.13 h]; Electrical Technician [6.22 h]; Plumber [1.46 h]; Carpenter [1.77 h]; Mason [1.41 h]; Steel Fixer [1.8 h]; Skilled Labor [4.86 h] |
| 2 | **CCTV System Wroks** | 2027-01-18 → 2027-01-25 (+7d) | 2027-01-28 → 2027-02-04 (+7d) |  |  |  |  |
| PRO-CTV-1DL-100 | 1ST Material Delivery for Civil and Finishes Works of CCTV Complete System | 2027-01-18 → 2027-01-25 (+7d) | 2027-01-28 → 2027-02-04 (+7d) |  | -28d → -45d |  | resources none → Unskilled Labor [26.88 h]; Electrical Technician [10.37 h]; Plumber [2.43 h]; Carpenter [2.95 h]; Mason [2.35 h]; Steel Fixer [3 h]; Skilled Labor [8.1 h] |
| DL | **Material Delivery & Site Inspection** | 2026-12-26 → 2027-01-02 (+7d) | 2027-01-30 → 2027-02-06 (+7d) |  |  |  |  |
| 1 | **Ducts Works** | 2026-12-26 → 2027-01-02 (+7d) | 2026-12-26 → 2027-01-02 (+7d) |  |  |  |  |
| PRO-R25-TE-DL-100 | Material Delivery & Site Inspection for Ducts of Telecom Network | 2026-12-26 → 2027-01-02 (+7d) | 2026-12-26 → 2027-01-02 (+7d) |  | -34.5d → -42d |  |  |
| 3 | **Manholes Works** | 2027-01-25 → 2027-02-01 (+7d) | 2027-01-25 → 2027-02-01 (+7d) |  |  |  |  |
| PRO-R25-TE-DL-110 | Material Delivery & Site Inspection of Manholes for Telecom Network | 2027-01-25 → 2027-02-01 (+7d) | 2027-01-25 → 2027-02-01 (+7d) |  | -48.8d → -60d |  |  |
| 2 | **CCTV System Wroks** | 2027-01-30 → 2027-02-06 (+7d) | 2027-01-30 → 2027-02-06 (+7d) |  |  |  |  |
| PRO-R25-CTV-DL-100 | Material Delivery & Site Inspection of for Civil and Finishes Works of CCTV Complete System | 2027-01-30 → 2027-02-06 (+7d) | 2027-01-30 → 2027-02-06 (+7d) |  | -28d → -45d |  |  |
| 1 | **Superstructure Works** |  | 2027-01-11 → 2027-01-18 (+7d) |  |  |  |  |
| 1 | **Issuance of Purchase Orders** |  | 2026-11-02 → 2026-11-09 (+7d) |  |  |  |  |
| SL11 | **Storage Tank (TSE)** | 2026-10-21 → 2026-10-28 (+7d) | 2026-11-02 → 2026-11-09 (+7d) |  |  |  |  |
| PRO-TSE-CV-PO-30 | Issuance of Purchase Order for Civil Works for Storage Tank (TSE) | 2026-10-21 → 2026-10-28 (+7d) | 2026-11-02 → 2026-11-09 (+7d) |  | -9d → -34d |  | resources none → Unskilled Labor [29.57 h]; Electrical Technician [11.41 h]; Plumber [2.67 h]; Carpenter [3.25 h]; Mason [2.58 h]; Steel Fixer [3.3 h]; Skilled Labor [8.91 h] |
| PRO-DPO-CV-PO-10 | Issuance of Purchase Order for Civil Works for Storm Drainage Ponds |  |  |  |  |  | resources none → Unskilled Labor [26.88 h]; Electrical Technician [10.37 h]; Plumber [2.43 h]; Carpenter [2.95 h]; Mason [2.35 h]; Steel Fixer [3 h]; Skilled Labor [8.1 h] |
| SL12 | **Gaurd Room** | 2026-10-13 → 2026-10-20 (+7d) | 2026-10-25 → 2026-11-01 (+7d) |  |  |  |  |
| PRO-GR-CV-PO-40 | Issuance of Purchase Order for Civil Works for Gaurd Room | 2026-10-13 → 2026-10-20 (+7d) | 2026-10-25 → 2026-11-01 (+7d) |  | -69.25d → -73d |  | resources none → Unskilled Labor [28.23 h]; Electrical Technician [10.89 h]; Plumber [2.55 h]; Carpenter [3.1 h]; Mason [2.47 h]; Steel Fixer [3.15 h]; Skilled Labor [8.51 h] |
| PRO-FE-CV-PO-50 | Issuance of Purchase Order for Civil Works for Fence |  |  |  |  | ENG-MT-FE-CV-A-120 SS → ENG-MT-FE-CV-A-120 | resources none → Unskilled Labor [26.48 h]; Electrical Technician [10.21 h]; Plumber [2.39 h]; Carpenter [2.91 h]; Mason [2.31 h]; Steel Fixer [2.96 h]; Skilled Labor [7.98 h] |
| 2 | **Manufacturing of Material** |  | 2027-01-10 → 2027-01-17 (+7d) |  |  |  |  |
| SL | **Pump Stations** | 2026-10-13 → 2026-07-20 (-85d) | 2026-11-21 → 2026-07-28 (-116d) |  |  |  |  |
| PRO-SPS-CV-MF-10 | Manufacturing of Civil Works for Pump Stations | 2026-10-13 → 2026-07-20 A (-85d) | 2026-11-21 → 2026-07-28 A (-116d) | 0% → 100% | -83.75d → none |  | resources none → Unskilled Labor [107.54 h]; Electrical Technician [41.48 h]; Plumber [9.72 h]; Carpenter [11.81 h]; Mason [9.4 h]; Steel Fixer [12.01 h]; Skilled Labor [32.41 h] |
| SL1 | **Lift Station** | 2026-10-13 → 2026-07-20 (-85d) | 2026-11-21 → 2026-07-28 (-116d) |  |  |  |  |
| PRO-LS-CV-MF-30 | Manufacturing of Civil Works for Civil Works for Lift Stations | 2026-10-13 → 2026-07-20 A (-85d) | 2026-11-21 → 2026-07-28 A (-116d) | 0% → 100% | -12d → none |  | resources none → Unskilled Labor [107.54 h]; Electrical Technician [41.48 h]; Plumber [9.72 h]; Carpenter [11.81 h]; Mason [9.4 h]; Steel Fixer [12.01 h]; Skilled Labor [32.41 h] |
| PRO-DPO-CV-MF-10 | Manufacturing of Civil Works for Storm Drainage Ponds |  |  |  |  |  | resources none → Unskilled Labor [161.31 h]; Electrical Technician [62.21 h]; Plumber [14.57 h]; Carpenter [17.72 h]; Mason [14.1 h]; Steel Fixer [18.01 h]; Skilled Labor [48.62 h] |
| SL11 | **Storage Tank (TSE)** | 2026-11-03 → 2026-11-10 (+7d) | 2026-12-12 → 2026-12-19 (+7d) |  |  |  |  |
| PRO-TSE-CV-MF-40 | Manufacturing of Civil Works for Civil Works for Storage Tank (TSE) | 2026-11-03 → 2026-11-10 (+7d) | 2026-12-12 → 2026-12-19 (+7d) |  | -10d → -40d |  | resources none → Unskilled Labor [107.54 h]; Electrical Technician [41.48 h]; Plumber [9.72 h]; Carpenter [11.81 h]; Mason [9.4 h]; Steel Fixer [12.01 h]; Skilled Labor [32.41 h] |
| SL12 | **Gaurd Room** | 2026-10-25 → 2026-11-01 (+7d) | 2026-12-04 → 2026-12-11 (+7d) |  |  |  |  |
| PRO-GR-CV-MF-50 | Manufacturing of Civil Works for Civil Works for Gaurd Room | 2026-10-25 → 2026-11-01 (+7d) | 2026-12-04 → 2026-12-11 (+7d) |  | -82.5d → -87.25d |  | resources none → Unskilled Labor [107.54 h]; Electrical Technician [41.48 h]; Plumber [9.72 h]; Carpenter [11.81 h]; Mason [9.4 h]; Steel Fixer [12.01 h]; Skilled Labor [32.41 h] |
| PRO-FE-CV-MF-60 | Manufacturing of Civil Works for Civil Works for Fence |  |  |  |  | PRO-FE-CV-PO-50 FF, ENG-SH-GR-A-200_R → PRO-FE-CV-PO-50 | resources none → Unskilled Labor [53.77 h]; Electrical Technician [20.74 h]; Plumber [4.86 h]; Carpenter [5.91 h]; Mason [4.7 h]; Steel Fixer [6 h]; Skilled Labor [16.21 h] |
| SL1211 | **Softscape and Planting Works** | 2026-10-13 → 2026-10-20 (+7d) | 2027-01-10 → 2027-01-17 (+7d) |  |  |  |  |
| PRO-FE-CV-MF-70 | Manufacturing of Civil Works for Softscape and Planting Works | 2026-10-13 → 2026-10-20 (+7d) | 2027-01-10 → 2027-01-17 (+7d) |  | -26d → -55.5d | ENG-MT-PL-CV-A-160 → ENG-MT-PL-CV-A-160, ENG-SH-MRK-A-110 | resources none → Unskilled Labor [241.96 h]; Electrical Technician [93.32 h]; Plumber [21.86 h]; Carpenter [26.58 h]; Mason [21.15 h]; Steel Fixer [27.02 h]; Skilled Labor [72.93 h] |
| 3 | **1st Material Delivery & Site Inspection** |  | 2026-12-17 → 2026-12-24 (+7d) |  |  |  |  |
| SL | **Pump Stations** | 2026-11-22 → 2026-08-29 (-85d) | 2026-11-23 → 2026-08-30 (-85d) |  |  |  |  |
| PRO-SPS-CV-1DL-10 | 1ST Material Delivery for Civil Works for Pump Stations | 2026-11-22 → 2026-08-29 A (-85d) | 2026-11-23 → 2026-08-30 A (-85d) | 0% → 100% | -70.5d → none | PRO-SPS-CV-MF-10, ENG-SH-SPS-A-160 → PRO-SPS-CV-MF-10 | resources none → Unskilled Labor [5.38 h]; Electrical Technician [2.07 h]; Plumber [0.49 h]; Carpenter [0.59 h]; Mason [0.47 h]; Steel Fixer [0.6 h]; Skilled Labor [1.62 h] |
| SL1 | **Lift Station** | 2026-11-22 → 2026-08-29 (-85d) | 2026-11-22 → 2026-08-30 (-84d) |  |  |  |  |

| ID | Task | Start | Finish | Complete | Total float | Predecessors | Other |
| --- | --- | --- | --- | --- | --- | --- | --- |
| PRO-LS-CV-1DL-40 | 1ST Material Delivery for Civil Works for Civil Works for Lift Stations | 2026-11-22 → 2026-08-29 A (-85d) | 2026-11-22 → 2026-08-30 A (-84d) | 0% → 100% | -10d → none |  | resources none → Unskilled Labor [2.69 h]; Electrical Technician [1.04 h]; Plumber [0.24 h]; Carpenter [0.3 h]; Mason [0.23 h]; Steel Fixer [0.3 h]; Skilled Labor [0.81 h] |
| PRO-DPO-CV-1DL-10 | 1ST Material Delivery for Civil Works for Drainage Ponds |  |  |  |  | PRO-DPO-CV-MF-10 → PRO-DPO-CV-MF-10 SS | resources none → Unskilled Labor [80.65 h]; Electrical Technician [31.11 h]; Plumber [7.29 h]; Carpenter [8.86 h]; Mason [7.05 h]; Steel Fixer [9.01 h]; Skilled Labor [24.31 h] |
| SL11 | **Storage Tank (TSE)** | 2026-12-13 → 2026-12-20 (+7d) | 2026-12-13 → 2026-12-20 (+7d) |  |  |  |  |
| PRO-TSE-CV-1DL-50 | 1ST Material Delivery for Civil Works for Civil Works for Storage Tank (TSE) | 2026-12-13 → 2026-12-20 (+7d) | 2026-12-13 → 2026-12-20 (+7d) |  | -8d → -34d |  | resources none → Unskilled Labor [2.69 h]; Electrical Technician [1.04 h]; Plumber [0.24 h]; Carpenter [0.3 h]; Mason [0.23 h]; Steel Fixer [0.3 h]; Skilled Labor [0.81 h] |
| SL12 | **Gaurd Room** | 2026-12-05 → 2026-12-12 (+7d) | 2026-12-17 → 2026-12-24 (+7d) |  |  |  |  |
| PRO-GR-CV-1DL-60 | 1ST Material Delivery for Civil Works for Civil Works for Gaurd Room | 2026-12-05 → 2026-12-12 (+7d) | 2026-12-17 → 2026-12-24 (+7d) |  | -70d → -73.5d |  | resources none → Unskilled Labor [32.26 h]; Electrical Technician [12.44 h]; Plumber [2.91 h]; Carpenter [3.54 h]; Mason [2.82 h]; Steel Fixer [3.6 h]; Skilled Labor [9.72 h] |
| 4 | **Material Delivery & Site Inspection** |  | 2027-01-11 → 2027-01-18 (+7d) |  |  |  |  |
| SL | **Pump Stations** |  | 2026-11-24 → 2026-10-01 (-54d) |  |  |  |  |
| PRO-SPS-CV-DL-10 | Material Delivery & Site Inspection for Civil Works for Pump Stations |  | 2026-11-24 → 2026-10-01 A (-54d) | 20% → 100% | -70.5d → none | PRO-SPS-CV-MF-10 FF, PRO-SPS-CV-1DL-10 FF → PRO-SPS-CV-MF-10, PRO-SPS-CV-1DL-10 SS |  |
| SL1 | **Lift Station** | 2026-11-23 → 2026-09-17 (-67d) | 2026-11-23 → 2026-10-20 (-34d) |  |  |  |  |
| PRO-LS-CV-DL-50 | Material Delivery & Site Inspection for Civil Works for Lift Stations | 2026-11-23 → 2026-09-17 A (-67d) | 2026-11-23 → 2026-10-20 (-34d) | 0% → 70% | -10d → 37d |  |  |
| PRO-DPO-CV-DL-10 | Material Delivery & Site Inspection for Civil Works for Storm Drainage Ponds |  |  |  |  | PRO-DPO-CV-MF-10, PRO-DPO-CV-MF-10 SS, PRO-DPO-CV-1DL-10 → PRO-DPO-CV-MF-10 SS, PRO-DPO-CV-1DL-10 SS |  |
| SL11 | **Storage Tank (TSE)** | 2026-12-13 → 2026-12-20 (+7d) | 2026-12-13 → 2026-12-20 (+7d) |  |  |  |  |
| PRO-TSE-CV-DL-60 | Material Delivery & Site Inspection for Civil Works for Storage Tank (TSE) | 2026-12-13 → 2026-12-20 (+7d) | 2026-12-13 → 2026-12-20 (+7d) |  | -7d → -33d |  |  |
| SL12 | **Gaurd Room** | 2026-12-19 → 2026-12-26 (+7d) | 2026-12-19 → 2026-12-26 (+7d) |  |  |  |  |
| PRO-GR-CV-DL-70 | Material Delivery & Site Inspection for Civil Works for Gaurd Room | 2026-12-19 → 2026-12-26 (+7d) | 2026-12-19 → 2026-12-26 (+7d) |  | -70d → -73.5d |  | resources Slab on Grade; Slabs; Lightweight Concrete Roof insulation as per Architect's specification; Insulated brickwork. with expanded polystyrene 200mm thick; vertical straight wall complete with accessories .; Common brickwork. 150mm thick; vertical straight wall complete with accessories.; 2 perpendicular layers of cold bitumen coats; 2 layer of 4mm HDPE membrane, 2 perpendicular layers cold bitumen coats; 1 layer EPOXY Paint 300 micron; Membrane fully bonded to prime deck and upstand; Geotextile Filter membrane uv resistance; 85mm thick thermal insulation; 1.5mm thick epdm waterproofing membrane; CW01 - 4500 mm width x 3700 mm height; CW02 - 4500 mm width x 3700 mm height; CW03 - 4500 mm width x 3700 mm height; CW04 - 4500 mm width x 3700 mm height; CW05 - 7500 mm width x 4250 mm height; CW06 - 7500 mm width x 4250 mm height; W01 - 1000 mm width x 2000 mm height; W02 - 2000 mm width x 2000 mm height; W03 - 2000 mm width x 1000 mm height; D2 - 900 mm x 2200 mm height temper door; D3 - 950 mm x 2000 mm height temper door; Supply and install 300*300mm terrazzo tiles with 150mm high skirting at perimeter with approv; Supply and install 300*300mm glazed ceramic wall tiles on cement mortar and including rough; Supply and install internal plastering and 2 coats of acrylic paint at walls includin; Supply and install 300*300mm glazed ceramic wall tiles on cement mortar and including rough and smooth p; Supply and install 600*600mm porcelain tiles with approved quality on 30 mm mortar inclu; Supply and install 12.5mm thk, gypsum board suspended ceiling including s; Office Chairs; Office Tables; Guard Stand; Magnetic Control Access barrier, Automatic Vehicular Barriers to be installed on ground with magnetic access; Supply and install Hand Wash Basin with Water Tap, angle valve, P-trap connected to 50mm diameter s; Supply and install paper towel dispenser, surface mounted, satin finish stainless steel as per approv; Supply and install mirror, size 460*910mm as per approved sample including frames, backing and all accessories to complete.; Supply and install towel ring , surface mounted, satin finish stainless steel as per approved sample including accessories.; Kitchen sink with single bowl with hot/cold water mixer.; Supply and install Base mounted flush tank water Western water closet system with lid connected to 110mm soil pipe; Gate Valves; Slow Closing Valve; 1 meter length 10mm diameter Flexible Hose with insulated handle complete with fork support, index push, vacuum breaker; 50mm diameter; 75mm diameter; 80mm diameter; 100mm diameter; 110mm diameter; 13mm diameter; 15mm diameter; 20mm diameter; 25mm diameter; 32mm diameter; 40mm diameter; Isolation Valve Size 20; Isolation Valve Size 25; Isolation Valve Size 32; Isolation Valve Size 40; Isolation Valve Size 50; 20 mm diameter spray head for cold water supply; Supply and install Electric Water Heater set with connection; Water meter complete with accessories.; Roof drain; Vent on a roof to exhaust air; Floor drain 100x80mm; Gully trap 300x300 mm; inspection chamber, size 800x900x1000; Mini split actual capacity 2 Ton; Ducted split actual capacity 4 Ton; Supply, fabricate, install and testing factory fabricated metal ducts with flanges complete with supports, vanes,; Supplying, installation testing & commissioning of external insulation on ducts; Supply, fix, testing and commissioning of exhaust air/fresh air louvers of powder coated extruded aluminium construction.; Providing, fixing, testing and commissioning of powder coated extruded aluminum sections grills and diffusers with dampers.; Air Grills 150mm x150mm; Air Diffuser 600mm x 600mm; Supply, Installation & Testing of 2 hours Fire rated system for closing the openings between roo; 4.5 KG CO2 Type Fire Extinguishers; 6 KG ABC Type Fire Extinguishers; Floor cleanout, size 75 mm diameter; Floor cleanout, size 110 mm diameter; GRP water tanks capacity of each 1000 liter complete with all fittings, all valves and concrete pad; Guard Room 1; Guard Room 2; Guard Room 3; 30A, 2P AC Disconnect Switch; 20A Duplex Receptacle Floor Mounted; Twin Socket outlet; Twin Socket outlet, Weather Proof; Single gang Lighting switch; 2way Single gang Lighting switch; 36W LED linear Pendant lighting; 36W LED Emergency linear Pendant lighting; 13W recess mounted LED down light fitting; 13W recess emergency mounted LED down light fitting with 1.5 Hr Battery; 10.4W LED Exit light with 1.5 Hr Battery; 4mm2 Cu./FRLSZH Cable; 6mm2 Cu./FRLSZH Cable; 8 Port Industrial PoE Switch 10/100BaseT (0 deg to +70 deg. Celsius); 06C Optical Fiber SM; 48C Optical Fiber SM; 48 Core Splice Closure; Boom Barrier at Security Guard Room; Pedestrian turnstile at Security Guard Room; Access Control Unit; Access Card Reader; Magnetic Lock; Break Glass; Exit Push button; Door Sensor; Biometrics Reader; Pole/Bollard mounted IP( PoE), Automatic Number Plate Recognition (ANPR, camera, 5MP,IP 66, IR illumin; 12U rack dimension (W x H x L) 600 x 625 x 600 mm; Fire Alarm Control panel with fire alarm zoning with Mimic panel with fire alarm zoning; Main Fire Alarm Control panel with fire alarm zoning with Mimic panel with fire alarm zoning; Supply and installation of the addressable manual call point with operation safety glass breaking and pushbutton; Supply and installation of the photoelectric heat & smoke detector with base; Sounder With Beacon; Addressable Control module for Sounders; Addressable Control module for HVAC System; Addressable Monitor module for HVAC System; 2C x 1.5 Sqm FR Rated Armored - Cable For Loop Wiring; DACT (Auto - Dailer) for 24x7 Civil Defence; Transmission Communication cable - Fiber Optics 12Core; Transmission Communication cable - Ethernet Cable; Supply, install to site and installation of power supply system for fire alarm control panel; Supply, install to site and installation of power cable; Fire Fighter’s Telephone Centre; Fireman’s Telephone Jack; Voice Command Center → Slab on Grade; Slabs; Lightweight Concrete Roof insulation as per Architect's specification; Insulated brickwork. with expanded polystyrene 200mm thick; vertical straight wall complete with accessories .; Common brickwork. 150mm thick; vertical straight wall complete with accessories.; 2 perpendicular layers of cold bitumen coats; 2 layer of 4mm HDPE membrane, 2 perpendicular layers cold bitumen coats; 1 layer EPOXY Paint 300 micron; Membrane fully bonded to prime deck and upstand; Geotextile Filter membrane uv resistance; 85mm thick thermal insulation; 1.5mm thick epdm waterproofing membrane; CW01 - 4500 mm width x 3700 mm height; CW02 - 4500 mm width x 3700 mm height; CW03 - 4500 mm width x 3700 mm height; CW04 - 4500 mm width x 3700 mm height; CW05 - 7500 mm width x 4250 mm height; CW06 - 7500 mm width x 4250 mm height; W01 - 1000 mm width x 2000 mm height; W02 - 2000 mm width x 2000 mm height; W03 - 2000 mm width x 1000 mm height; D2 - 900 mm x 2200 mm height temper door; D3 - 950 mm x 2000 mm height temper door; Supply and install 300*300mm terrazzo tiles with 150mm high skirting at perimeter with approv; Supply and install 300*300mm glazed ceramic wall tiles on cement mortar and including rough; Supply and install internal plastering and 2 coats of acrylic paint at walls includin; Supply and install 300*300mm glazed ceramic wall tiles on cement mortar and including rough and smooth p; Supply and install 600*600mm porcelain tiles with approved quality on 30 mm mortar inclu; Supply and install 12.5mm thk, gypsum board suspended ceiling including s; Office Chairs; Office Tables; Guard Stand; Magnetic Control Access barrier, Automatic Vehicular Barriers to be installed on ground with magnetic access; Supply and install Hand Wash Basin with Water Tap, angle valve, P-trap connected to 50mm diameter s; Supply and install paper towel dispenser, surface mounted, satin finish stainless steel as per approv; Supply and install mirror, size 460*910mm as per approved sample including frames, backing and all accessories to complete.; Supply and install towel ring , surface mounted, satin finish stainless steel as per approved sample including accessories.; Kitchen sink with single bowl with hot/cold water mixer.; Supply and install Base mounted flush tank water Western water closet system with lid connected to 110mm soil pipe; Gate Valves; Slow Closing Valve; 1 meter length 10mm diameter Flexible Hose with insulated handle complete with fork support, index push, vacuum breaker; 50mm diameter; 75mm diameter; 80mm diameter; 100mm diameter; 110mm diameter; 13mm diameter; 15mm diameter; 20mm diameter; 25mm diameter; 32mm diameter; 40mm diameter; Isolation Valve Size 20; Isolation Valve Size 25; Isolation Valve Size 32; Isolation Valve Size 40; Isolation Valve Size 50; 20 mm diameter spray head for cold water supply; Supply and install Electric Water Heater set with connection; Water meter complete with accessories.; Roof drain; Vent on a roof to exhaust air; Floor drain 100x80mm; Gully trap 300x300 mm; inspection chamber, size 800x900x1000; Mini split actual capacity 2 Ton; Ducted split actual capacity 4 Ton; Supply, fabricate, install and testing factory fabricated metal ducts with flanges complete with supports, vanes,; Supplying, installation testing & commissioning of external insulation on ducts; Supply, fix, testing and commissioning of exhaust air/fresh air louvers of powder coated extruded aluminium construction.; Providing, fixing, testing and commissioning of powder coated extruded aluminum sections grills and diffusers with dampers.; Air Grills 150mm x150mm; Air Diffuser 600mm x 600mm; Supply, Installation & Testing of 2 hours Fire rated system for closing the openings between roo; 4.5 KG CO2 Type Fire Extinguishers; 6 KG ABC Type Fire Extinguishers; Floor cleanout, size 75 mm diameter; Floor cleanout, size 110 mm diameter; GRP water tanks capacity of each 1000 liter complete with all fittings, all valves and concrete pad; Guard Room 1; Guard Room 2; Guard Room 3; 30A, 2P AC Disconnect Switch; 20A Duplex Receptacle Floor Mounted; Twin Socket outlet; Twin Socket outlet, Weather Proof; Single gang Lighting switch; 2way Single gang Lighting switch; 36W LED linear Pendant lighting; 36W LED Emergency linear Pendant lighting; 13W recess mounted LED down light fitting; 13W recess emergency mounted LED down light fitting with 1.5 Hr Battery; 10.4W LED Exit light with 1.5 Hr Battery; 4mm2 Cu./FRLSZH Cable; 6mm2 Cu./FRLSZH Cable; 8 Port Industrial PoE Switch 10/100BaseT (0 deg to +70 deg. Celsius); 06C Optical Fiber SM; 48C Optical Fiber SM; 48 Core Splice Closure; Boom Barrier at Security Guard Room; Pedestrian turnstile at Security Guard Room; Access Control Unit; Access Card Reader; Magnetic Lock; Break Glass; Exit Push button; Door Sensor; Biometrics Reader; Pole/Bollard mounted IP( PoE), Automatic Number Plate Recognition (ANPR, camera, 5MP,IP 66, IR illumin; 12U rack dimension (W x H x L) 600 x 625 x 600 mm; Fire Alarm Control panel with fire alarm zoning with Mimic panel with fire alarm zoning; Main Fire Alarm Control panel with fire alarm zoning with Mimic panel with fire alarm zoning; Supply and installation of the addressable manual call point with operation safety glass breaking and pushbutton; Supply and installation of the photoelectric heat & smoke detector with base; Sounder With Beacon; Addressable Control module for Sounders; Addressable Control module for HVAC System; Addressable Monitor module for HVAC System; 2C x 1.5 Sqm FR Rated Armored - Cable For Loop Wiring; DACT (Auto - Dailer) for 24x7 Civil Defence; Transmission Communication cable - Fiber Optics 12Core; Transmission Communication cable - Ethernet Cable; Supply, install to site and installation of power supply system for fire alarm control panel; Supply, install to site and installation of power cable; Fire Fighter s Telephone Centre; Fireman s Telephone Jack; Voice Command Center |
| SL121 | **Fence** |  | 2026-10-13 → 2026-10-20 (+7d) |  |  |  |  |
| PRO-FE-CV-DL-80 | Material Delivery & Site Inspection for Civil Works for Fence |  | 2026-10-13 → 2026-10-20 (+7d) |  | -48d → -43d | PRO-FE-CV-MF-60 → PRO-FE-CV-MF-60 SS+10d, PRO-FE-CV-MF-60 FF |  |
| SL1211 | **Softscape and Planting Works** | 2027-01-11 → 2027-01-18 (+7d) | 2027-01-11 → 2027-01-18 (+7d) |  |  |  |  |
| PRO-FE-CV-DL-90 | Material Delivery & Site Inspection for Softscape and Planting Works | 2027-01-11 → 2027-01-18 (+7d) | 2027-01-11 → 2027-01-18 (+7d) |  | -22d → -47.5d |  |  |
| LL | **Long Lead Time Items** |  | 2027-04-24 → 2027-04-21 (-3d) |  |  |  |  |
| 2 | **Infrastructure Networks** | 2026-10-13 → 2026-10-20 (+7d) | 2027-02-24 → 2027-03-04 (+8d) |  |  |  |  |
| 2 | **CCTV System Wroks of Telecom Network** | 2026-10-13 → 2026-10-20 (+7d) | 2027-02-24 → 2027-03-04 (+8d) |  |  |  |  |
| 3 | **Issuance of Purchase Orders** | 2026-10-13 → 2026-10-20 (+7d) | 2026-11-04 → 2026-11-11 (+7d) |  |  |  |  |
| PRO-CTV-LL-PO-10 | Issuance of Purchase Order for Low Current Works of CCTV Complete System with All Accessories | 2026-10-13 → 2026-10-20 (+7d) | 2026-11-04 → 2026-11-11 (+7d) |  | -41d → -58d |  | resources none → Unskilled Labor [53.77 h]; Electrical Technician [20.74 h]; Plumber [4.86 h]; Carpenter [5.91 h]; Mason [4.7 h]; Steel Fixer [6 h]; Skilled Labor [16.21 h] |
| 1 | **Manufacturing of Material** | 2026-11-05 → 2026-11-12 (+7d) | 2027-02-02 → 2027-02-09 (+7d) |  |  |  |  |
| PRO-CTV-LL-MF-10 | Manufacturing of Low Current Works for CCTV Complete System with All Accessories | 2026-11-05 → 2026-11-12 (+7d) | 2027-02-02 → 2027-02-09 (+7d) |  | -49d → -69d |  | resources none → Unskilled Labor [241.96 h]; Electrical Technician [93.32 h]; Plumber [21.86 h]; Carpenter [26.58 h]; Mason [21.15 h]; Steel Fixer [27.02 h]; Skilled Labor [72.93 h] |
| 2 | **Material Shipping/Custom Clearance/Delivery** | 2027-02-02 → 2027-02-10 (+8d) | 2027-02-24 → 2027-03-04 (+8d) |  |  |  |  |
| PRO-CTV-LL-SH/DL-10 | Material Delivery for Low Current Works of CCTV Complete System with All Accessories | 2027-02-02 → 2027-02-10 (+8d) | 2027-02-24 → 2027-03-04 (+8d) |  | -41.88d → -58.5d |  | resources none → Unskilled Labor [40.33 h]; Electrical Technician [15.55 h]; Plumber [3.64 h]; Carpenter [4.43 h]; Mason [3.52 h]; Steel Fixer [4.5 h]; Skilled Labor [12.15 h] |
| 4 | **Material Site Inspection** | 2027-02-24 → 2027-03-04 (+8d) | 2027-02-24 → 2027-03-04 (+8d) |  |  |  |  |
| PRO-CTV-LL-MSI-10 | Material Site Inspection for Low Current Works of CCTV Complete System with All Accessories | 2027-02-24 → 2027-03-04 (+8d) | 2027-02-24 → 2027-03-04 (+8d) |  | -41.88d → -58.5d |  |  |
| 1 | **Superstructure Works** |  | 2027-04-24 → 2027-04-21 (-3d) |  |  |  |  |
| SL | **Pump Stations** |  | 2027-03-16 → 2027-02-13 (-31d) |  |  |  |  |
| PRO-SPS-LL-PO-10 | Issuance of Purchase Order for Electromechanical Works for Pump Stations |  |  |  |  |  | resources none → Unskilled Labor [80.65 h]; Electrical Technician [31.11 h]; Plumber [7.29 h]; Carpenter [8.86 h]; Mason [7.05 h]; Steel Fixer [9.01 h]; Skilled Labor [24.31 h] |
| 2 | **Manufacturing of Material** |  | 2026-12-20 → 2026-11-28 (-22d) |  |  |  |  |
| PRO-SPS-LL-MF-10 | Manufacturing of Electromechanical Works for Pump Stations |  | 2026-12-20 → 2026-11-28 (-22d) |  | -39d → -16.02d |  | resources none → Unskilled Labor [161.31 h]; Electrical Technician [62.21 h]; Plumber [14.57 h]; Carpenter [17.72 h]; Mason [14.1 h]; Steel Fixer [18.01 h]; Skilled Labor [48.62 h] |
| 3 | **Material Shipping/Custom Clearance/Delivery** | 2026-12-21 → 2026-11-28 (-23d) | 2027-01-24 → 2027-01-02 (-22d) |  |  |  |  |
| PRO-SPS-LL-SH/DL-10 | Material Delivery for Electromechanical Works for Pump Stations | 2026-12-21 → 2026-11-28 (-23d) | 2027-01-24 → 2027-01-02 (-22d) |  | -33d → -13.02d |  | resources none → Unskilled Labor [80.65 h]; Electrical Technician [31.11 h]; Plumber [7.29 h]; Carpenter [8.86 h]; Mason [7.05 h]; Steel Fixer [9.01 h]; Skilled Labor [24.31 h] |
| 4 | **Material Site Inspection** | 2027-01-25 → 2027-01-02 (-23d) | 2027-03-16 → 2027-02-13 (-31d) |  |  |  |  |
| PRO-SPS-LL-MSI-10 | Material Site Inspection for Electromechanical Works for Pump Stations | 2027-01-25 → 2027-01-02 (-23d) | 2027-03-16 → 2027-02-13 (-31d) |  | -33d → -13.02d |  | resources none → Unskilled Labor [94.09 h]; Electrical Technician [36.29 h]; Plumber [8.5 h]; Carpenter [10.34 h]; Mason [8.22 h]; Steel Fixer [10.51 h]; Skilled Labor [28.36 h] |
| SL1 | **Lift Stations** |  | 2027-03-20 → 2027-03-17 (-3d) |  |  |  |  |
| PRO-LS-LL-PO-20 | Issuance of Purchase Order for Electromechanical Works for Lift Stations |  |  |  |  |  | resources none → Unskilled Labor [80.65 h]; Electrical Technician [31.11 h]; Plumber [7.29 h]; Carpenter [8.86 h]; Mason [7.05 h]; Steel Fixer [9.01 h]; Skilled Labor [24.31 h] |
| 2 | **Manufacturing of Material** | 2026-08-01 → 2026-10-20 (+80d) | 2026-12-20 → 2026-12-18 (-2d) |  |  |  |  |
| PRO-LS-LL-MF-20 | Manufacturing of Electromechanical Works for Lift Stations | 2026-08-01 A → 2026-10-20 (+80d) | 2026-12-20 → 2026-12-18 (-2d) |  | -41d → -52d |  | resources none → Unskilled Labor [161.31 h]; Electrical Technician [62.21 h]; Plumber [14.57 h]; Carpenter [17.72 h]; Mason [14.1 h]; Steel Fixer [18.01 h]; Skilled Labor [48.62 h] |
| 3 | **Material Shipping/Custom Clearance/Delivery** | 2026-12-21 → 2026-12-19 (-2d) | 2027-01-24 → 2027-01-21 (-3d) |  |  |  |  |
| PRO-LS-LL-SH/DL-20 | Material Delivery for Electromechanical Works for Lift Stations | 2026-12-21 → 2026-12-19 (-2d) | 2027-01-24 → 2027-01-21 (-3d) |  | -35d → -44d |  | resources none → Unskilled Labor [80.65 h]; Electrical Technician [31.11 h]; Plumber [7.29 h]; Carpenter [8.86 h]; Mason [7.05 h]; Steel Fixer [9.01 h]; Skilled Labor [24.31 h] |
| 4 | **Material Site Inspection** | 2027-01-25 → 2027-01-23 (-2d) | 2027-03-20 → 2027-03-17 (-3d) |  |  |  |  |
| PRO-LS-LL-MSI-20 | Material Site Inspection for Electromechanical Works for Lift Stations | 2027-01-25 → 2027-01-23 (-2d) | 2027-03-20 → 2027-03-17 (-3d) |  | -35d → -44d |  | resources none → Unskilled Labor [102.16 h]; Electrical Technician [39.4 h]; Plumber [9.23 h]; Carpenter [11.22 h]; Mason [8.93 h]; Steel Fixer [11.41 h]; Skilled Labor [30.79 h] |
| SL2 | **Storage Tank (TSE)** | 2026-10-22 → 2026-10-20 (-2d) | 2027-04-24 → 2027-04-21 (-3d) |  |  |  |  |
| 1 | **Issuance of Purchase Orders** | 2026-10-22 → 2026-10-20 (-2d) | 2026-11-25 → 2026-11-23 (-2d) |  |  |  |  |
| PRO-TSE-LL-PO-30 | Issuance of Purchase Order for Electromechanical Works for Storage Tank (TSE) | 2026-10-22 → 2026-10-20 (-2d) | 2026-11-25 → 2026-11-23 (-2d) |  | -64d → -73.75d |  | resources none → Unskilled Labor [80.65 h]; Electrical Technician [31.11 h]; Plumber [7.29 h]; Carpenter [8.86 h]; Mason [7.05 h]; Steel Fixer [9.01 h]; Skilled Labor [24.31 h] |
| 2 | **Manufacturing of Material** | 2026-11-26 → 2026-11-24 (-2d) | 2027-01-24 → 2027-01-22 (-2d) |  |  |  |  |
| PRO-TSE-LL-MF-30 | Manufacturing of Electromechanical Works for Storage Tank (TSE) | 2026-11-26 → 2026-11-24 (-2d) | 2027-01-24 → 2027-01-22 (-2d) |  | -76d → -87d |  | resources none → Unskilled Labor [161.31 h]; Electrical Technician [62.21 h]; Plumber [14.57 h]; Carpenter [17.72 h]; Mason [14.1 h]; Steel Fixer [18.01 h]; Skilled Labor [48.62 h] |
| 3 | **Material Shipping/Custom Clearance/Delivery** | 2027-01-25 → 2027-01-23 (-2d) | 2027-03-07 → 2027-03-03 (-4d) |  |  |  |  |
| PRO-TSE-LL-SH/DL-30 | Material Delivery for Electromechanical Works for Storage Tank (TSE) | 2027-01-25 → 2027-01-23 (-2d) | 2027-03-07 → 2027-03-03 (-4d) |  | -65d → -74d |  | resources none → Unskilled Labor [80.65 h]; Electrical Technician [31.11 h]; Plumber [7.29 h]; Carpenter [8.86 h]; Mason [7.05 h]; Steel Fixer [9.01 h]; Skilled Labor [24.31 h] |
| 4 | **Material Site Inspection** | 2027-03-07 → 2027-03-04 (-3d) | 2027-04-24 → 2027-04-21 (-3d) |  |  |  |  |
| PRO-TSE-LL-MSI-30 | Material Site Inspection for Electromechanical Works for Storage Tank (TSE) | 2027-03-07 → 2027-03-04 (-3d) | 2027-04-24 → 2027-04-21 (-3d) |  | -65d → -74d |  | resources none → Unskilled Labor [102.16 h]; Electrical Technician [39.4 h]; Plumber [9.23 h]; Carpenter [11.22 h]; Mason [8.93 h]; Steel Fixer [11.41 h]; Skilled Labor [30.79 h] |
| CON | **Construction Works** |  | 2027-05-30 → 2027-05-31 (+1d) |  |  |  |  |
| INF | **Infrastructure Networks** |  | 2027-05-30 → 2027-05-29 (-1d) |  |  |  |  |
| EW | **Earthworks** |  | 2026-10-31 → 2026-10-22 (-9d) |  |  |  |  |
| EW | **Earthworks** |  | 2026-10-31 → 2026-10-22 (-9d) |  |  |  |  |
| CO-EW-200 | Excavation Works Upto Design Level for Earthworks-P1(Completed) |  |  |  |  |  | resources Excavations (including Roads , Plots and Pond) [128979]; Unskilled Labor [701.76 h]; Dozer [701.76 h]; Excavator [701.76 h]; Loader [701.76 h]; Dump Truck [1403.52 h] → Unskilled Labor [701.76 h]; Dozer [701.76 h]; Excavator [701.76 h]; Loader [701.76 h]; Dump Truck [1403.52 h]; Excavations (including Roads , Plots and Pond) [128979] |
| CO-EW-210 | Excavation Works Upto Design Level for Earthworks-P2(Completed) |  |  |  |  |  | resources Excavations (including Roads , Plots and Pond) [58490.3]; Unskilled Labor [336.96 h]; Dozer [336.96 h]; Excavator [336.96 h]; Loader [336.96 h]; Dump Truck [673.92 h] → Unskilled Labor [336.96 h]; Dozer [336.96 h]; Excavator [336.96 h]; Loader [336.96 h]; Dump Truck [673.92 h]; Excavations (including Roads , Plots and Pond) [58490.3] |
| CO-EW-220 | Excavation Works Upto Design Level for Earthworks-P3(Completed) |  |  |  |  |  | resources Excavations (including Roads , Plots and Pond) [107982]; Unskilled Labor [622.08 h]; Dozer [622.08 h]; Excavator [622.08 h]; Loader [622.08 h]; Dump Truck [1244.16 h] → Unskilled Labor [622.08 h]; Dozer [622.08 h]; Excavator [622.08 h]; Loader [622.08 h]; Dump Truck [1244.16 h]; Excavations (including Roads , Plots and Pond) [107982] |
| CO-EW-110 | Embankments Works Upto Design Level for Earthworks(Completed) |  |  |  |  |  | resources Embankments to the Site and Roads (including Roads , Plots and Pond) [98621.6]; Unskilled Labor [470.4 h]; Dozer [470.4 h]; Excavator [470.4 h]; Loader [470.4 h]; Dump Truck [940.8 h] → Unskilled Labor [470.4 h]; Dozer [470.4 h]; Excavator [470.4 h]; Loader [470.4 h]; Dump Truck [940.8 h]; Embankments to the Site and Roads (including Roads , Plots and Pond) [98621.6] |
| CO-EW-110_R | Embankments Works Upto Design Level for Earthworks(Remaining) |  | 2026-10-31 → 2026-10-22 (-9d) |  | -77.5d → -72.62d |  | resources Embankments to the Site and Roads (including Roads , Plots and Pond) [371005]; Unskilled Labor [470 h]; Dozer [470 h]; Excavator [270 h]; Loader [470 h]; Dump Truck [870 h] → Unskilled Labor [470 h]; Dozer [470 h]; Excavator [270 h]; Loader [470 h]; Dump Truck [870 h]; Embankments to the Site and Roads (including Roads , Plots and Pond) [371005] |
| CO-EW-200_R | Excavation Works Upto Design Level for Earthworks-P1(Remaining) |  | 2026-10-24 → 2026-10-21 (-3d) |  | -77.5d → -72.62d | MS-CS-PS SS, MOB-30, MOB-20, MOB-80, MOB-40, MOB-50, MOB-60 FF+15d, MOB-10, MOB-70, PRE-CON-MDC-10, PRE-CON-MDC-20, PRE-CON-MDC-30, PRE-CON-MDC-40, PRE-CON-MDC-50, PRE-CON-MDC-60, PRE-CON-MDC-70, PRE-CON-MDC-80, CO-EW-200 → MS-CF-EBL FF, MS-CF-ENG FF, MS-CS-PS SS, MOB-30, MOB-20, MOB-80, MOB-40, MOB-50, MOB-60 FF+15d, MOB-10, MOB-70, PRE-CON-MDC-10, PRE-CON-MDC-20, PRE-CON-MDC-30, PRE-CON-MDC-40, PRE-CON-MDC-50, PRE-CON-MDC-60, PRE-CON-MDC-70, PRE-CON-MDC-80, CO-EW-200 | resources Excavations (including Roads , Plots and Pond) [177897]; Unskilled Labor [930.24 h]; Dozer [350 h]; Excavator [300 h]; Loader [400 h]; Dump Truck [650 h] → Unskilled Labor [930.24 h]; Dozer [350 h]; Excavator [300 h]; Loader [400 h]; Dump Truck [650 h]; Excavations (including Roads , Plots and Pond) [177897] |
| CO-EW-210_R | Excavation Works Upto Design Level for Earthworks-P2(Remaining) |  | 2026-10-24 → 2026-10-21 (-3d) |  | -77.5d → -72.62d | MS-CF-MOB FF, CO-EW-200_R SS, CO-EW-210 → MS-CF-MOB FF, CO-EW-200_R SS, CO-EW-210, ENG-SH-HS-S-100 FS+4.35d, ENG-SH-LS-S-160_R | resources Excavations (including Roads , Plots and Pond) [91484.9]; Unskilled Labor [236 h]; Dozer [236 h]; Excavator [236 h]; Loader [236 h]; Dump Truck [430 h] → Unskilled Labor [236 h]; Dozer [236 h]; Excavator [236 h]; Loader [236 h]; Dump Truck [430 h]; Excavations (including Roads , Plots and Pond) [91484.9] |
| CO-EW-220_R | Excavation Works Upto Design Level for Earthworks-P3(Remaining) |  | 2026-10-26 → 2026-10-22 (-4d) |  | -77.5d → -72.62d |  | resources Excavations (including Roads , Plots and Pond) [191968]; Unskilled Labor [1105.92 h]; Dozer [300 h]; Excavator [222 h]; Loader [322 h]; Dump Truck [650 h] → Unskilled Labor [1105.92 h]; Dozer [300 h]; Excavator [222 h]; Loader [322 h]; Dump Truck [650 h]; Excavations (including Roads , Plots and Pond) [191968] |
| SD | **Storm Drainage Network** |  | 2027-01-31 → 2027-01-19 (-12d) |  |  |  |  |

| ID | Task | Start | Finish | Complete | Total float | Predecessors | Other |
| --- | --- | --- | --- | --- | --- | --- | --- |
| MH25-MH12 | **FROM MH-25:MH-12** |  | 2026-12-22 → 2026-12-16 (-6d) |  |  |  |  |
| ML | **Main Line Sections** |  | 2026-10-24 → 2026-11-05 (+12d) |  |  |  |  |
| CO-SD-ML-100 | Trench Excavation and Bedding Works for Main Lines of Storm Drainage Network |  | 2026-10-15 → 2026-10-31 (+16d) | 3% → 4% | -61.5d → -72.62d | CO-EW-200_R SS+10d, CO-EW-110_R SS, ENG-SH-SD-ML-A-110, ENG-MT-SD-ML-A-110, CO-EW-220_R SS, PRO-SD-1DL-110 FF, CO-EW-210_R SS → CO-EW-200_R SS+10d, CO-EW-110_R SS, ENG-SH-SD-ML-A-110, ENG-MT-SD-ML-A-110, PRO-SD-1DL-110 SS, CO-EW-220_R SS, CO-EW-210_R SS, CO-EW-210_R FF | resources Depth Between 0m to 1.50m; Depth Between 0m to 1.50m [19.5]; Depth Between 1.50m to 2.50m [578.53]; Depth > 2.50m [3.08]; Depth Between 1.50m to 2.50m [112.46]; Depth Between 2.50m to 3.50m [90.09]; Depth > 3.50m [3.08]; Depth Between 2.50m to 3.50m [39.2]; Depth Between 0m to 1.50m [5.75]; Depth Between 1.50m to 2.50m [2.05]; Depth Between 2.50m to 3.50m [19.29]; Depth > 3.50m [1.44]; Depth Between 2.50m to 3.50m [24.83]; Depth Between 3.50m to 4.50m [76.14]; Depth > 4.50m [3.08]; Depth Between 3.50m to 4.50m [151.25]; Depth > 4.50m [5.13]; Unskilled Labor [96 h]; Excavator [96 h]; Skilled Labor [96 h] → Unskilled Labor [96 h]; Excavator [96 h]; Skilled Labor [96 h]; Depth Between 0m to 1.50m; Depth Between 0m to 1.50m [19.5]; Depth Between 1.50m to 2.50m [578.53]; Depth > 2.50m [3.08]; Depth Between 1.50m to 2.50m [112.46]; Depth Between 2.50m to 3.50m [90.09]; Depth > 3.50m [3.08]; Depth Between 2.50m to 3.50m [39.2]; Depth Between 0m to 1.50m [5.75]; Depth Between 1.50m to 2.50m [2.05]; Depth Between 2.50m to 3.50m [19.29]; Depth > 3.50m [1.44]; Depth Between 2.50m to 3.50m [24.83]; Depth Between 3.50m to 4.50m [76.14]; Depth > 4.50m [3.08]; Depth Between 3.50m to 4.50m [151.25]; Depth > 4.50m [5.13] |
| CO-SD-ML-120 | Pipes Laying Works for Main Lines of Storm Drainage Network |  | 2026-10-18 → 2026-10-31 (+13d) |  | -61.5d → -72.62d | CO-SD-ML-100 SS, PRO-R25-SD-DL-120 SS, CO-EW-210_R SS → CO-SD-ML-100 SS, PRO-R25-SD-DL-120 SS, CO-EW-210_R SS, CO-SD-ML-100 FF, CO-EW-210_R FF | resources Depth Between 0m to 1.50m [35.09]; Depth Between 1.50m to 2.50m [1041.35]; Depth > 2.50m [5.54]; Depth Between 1.50m to 2.50m [202.43]; Depth Between 2.50m to 3.50m [162.17]; Depth > 3.50m [5.54]; Depth Between 2.50m to 3.50m [70.56]; Depth Between 0m to 1.50m [10.34]; Depth Between 1.50m to 2.50m [3.69]; Depth Between 2.50m to 3.50m [34.72]; Depth > 3.50m [2.59]; Depth Between 2.50m to 3.50m [44.7]; Depth Between 3.50m to 4.50m [137.05]; Depth > 4.50m [5.54]; Depth Between 3.50m to 4.50m [272.25]; Depth > 4.50m [9.24]; Unskilled Labor [448 h]; Plumber [224 h]; Excavator [224 h]; Skilled Labor [224 h] → Unskilled Labor [448 h]; Plumber [224 h]; Excavator [224 h]; Skilled Labor [224 h]; Depth Between 0m to 1.50m [35.09]; Depth Between 1.50m to 2.50m [1041.35]; Depth > 2.50m [5.54]; Depth Between 1.50m to 2.50m [202.43]; Depth Between 2.50m to 3.50m [162.17]; Depth > 3.50m [5.54]; Depth Between 2.50m to 3.50m [70.56]; Depth Between 0m to 1.50m [10.34]; Depth Between 1.50m to 2.50m [3.69]; Depth Between 2.50m to 3.50m [34.72]; Depth > 3.50m [2.59]; Depth Between 2.50m to 3.50m [44.7]; Depth Between 3.50m to 4.50m [137.05]; Depth > 4.50m [5.54]; Depth Between 3.50m to 4.50m [272.25]; Depth > 4.50m [9.24] |
| CO-SD-ML-130 | Trench Backfilling and Compaction Works for Main Lines of Storm Drainage Network |  | 2026-10-24 → 2026-11-05 (+12d) |  | -61.5d → -72.62d | CO-SD-ML-120 SS, CO-EW-210_R SS, CO-EW-220_R SS, PRO-R25-SD-DL-120 SS → CO-SD-ML-120 SS, CO-EW-210_R SS, CO-EW-220_R SS, PRO-R25-SD-DL-120 SS, CO-SD-ML-120 FF, CO-EW-210_R FF, CO-EW-220_R FF | resources Depth Between 0m to 1.50m [15.6]; Depth Between 1.50m to 2.50m [462.82]; Depth > 2.50m [2.46]; Depth Between 1.50m to 2.50m [89.97]; Depth Between 2.50m to 3.50m [72.07]; Depth > 3.50m [2.46]; Depth Between 2.50m to 3.50m [31.36]; Depth Between 0m to 1.50m [4.6]; Depth Between 1.50m to 2.50m [1.64]; Depth Between 2.50m to 3.50m [15.43]; Depth > 3.50m [1.15]; Depth Between 2.50m to 3.50m [19.87]; Depth Between 3.50m to 4.50m [60.91]; Depth > 4.50m [2.46]; Depth Between 3.50m to 4.50m [121]; Depth > 4.50m [4.1]; Unskilled Labor [224 h]; Excavator [224 h]; JCB [224 h]; Dump Truck [224 h] → Unskilled Labor [224 h]; Excavator [224 h]; JCB [224 h]; Dump Truck [224 h]; Depth Between 0m to 1.50m [15.6]; Depth Between 1.50m to 2.50m [462.82]; Depth > 2.50m [2.46]; Depth Between 1.50m to 2.50m [89.97]; Depth Between 2.50m to 3.50m [72.07]; Depth > 3.50m [2.46]; Depth Between 2.50m to 3.50m [31.36]; Depth Between 0m to 1.50m [4.6]; Depth Between 1.50m to 2.50m [1.64]; Depth Between 2.50m to 3.50m [15.43]; Depth > 3.50m [1.15]; Depth Between 2.50m to 3.50m [19.87]; Depth Between 3.50m to 4.50m [60.91]; Depth > 4.50m [2.46]; Depth Between 3.50m to 4.50m [121]; Depth > 4.50m [4.1] |
| MH | **Manholes** | 2026-11-01 → 2026-10-17 (-15d) | 2026-11-29 → 2026-11-23 (-6d) |  |  |  |  |
| CO-SD-MH-180 | Trench Excavation and Bedding Works for Manholes of Storm Drainage Network | 2026-11-01 → 2026-10-17 A (-15d) | 2026-11-08 → 2026-11-02 (-6d) | 0% → 12% | -63.5d → -63.88d | CO-SD-ML-120, ENG-MT-SD-ML-A-100, PRO-R25-SD-DL-100 SS, PRO-SD-MF-100, CO-EW-210_R, CO-EW-220_R, CO-EW-110_R → CO-SD-ML-120 SS, ENG-MT-SD-ML-A-100, PRO-R25-SD-DL-100 SS, PRO-SD-MF-100, CO-EW-210_R SS, CO-EW-220_R SS, CO-EW-110_R SS, CO-SD-ML-120 FF, CO-EW-210_R FF, CO-EW-220_R FF, CO-EW-110_R FF | resources MH depth 1.5 - 2.5m [2.46]; MH depth 2.5 - 3.5m [2.01]; MH depth > 3.50m [0.22]; MH depth 2.5 -3.5m [0.22]; Unskilled Labor [56 h]; Excavator [56 h]; Skilled Labor [56 h] → Unskilled Labor [56 h]; Excavator [56 h]; Skilled Labor [56 h]; MH depth 1.5 - 2.5m [2.46]; MH depth 2.5 - 3.5m [2.01]; MH depth > 3.50m [0.22]; MH depth 2.5 -3.5m [0.22] |
| CO-SD-MH-190 | Install RC Footing Works for Manholes of Storm Drainage Network | 2026-11-09 → 2026-11-02 (-7d) | 2026-11-16 → 2026-11-10 (-6d) |  | -63.5d → -63.88d |  | resources MH depth 1.5 - 2.5m [4.1]; MH depth 2.5 - 3.5m [3.36]; MH depth > 3.50m [0.37]; MH depth 2.5 -3.5m [0.37]; Unskilled Labor [112 h]; Plumber [56 h]; Excavator [56 h]; Skilled Labor [56 h] → Unskilled Labor [112 h]; Plumber [56 h]; Excavator [56 h]; Skilled Labor [56 h]; MH depth 1.5 - 2.5m [4.1]; MH depth 2.5 - 3.5m [3.36]; MH depth > 3.50m [0.37]; MH depth 2.5 -3.5m [0.37] |
| CO-SD-MH-200 | Install RC Wall Rings & Slab Works for Manholes of Storm Drainage Network | 2026-11-17 → 2026-11-10 (-7d) | 2026-11-21 → 2026-11-15 (-6d) |  | -63.5d → -63.88d |  | resources MH depth 1.5 - 2.5m [2.46]; MH depth 2.5 - 3.5m [2.01]; MH depth > 3.50m [0.22]; MH depth 2.5 -3.5m [0.22]; Unskilled Labor [64 h]; Plumber [32 h]; Excavator [32 h]; Mobile Crane [32 h] → Unskilled Labor [64 h]; Plumber [32 h]; Excavator [32 h]; Mobile Crane [32 h]; MH depth 1.5 - 2.5m [2.46]; MH depth 2.5 - 3.5m [2.01]; MH depth > 3.50m [0.22]; MH depth 2.5 -3.5m [0.22] |
| CO-SD-MH-220 | Backfilling Works for Manholes of Storm Drainage Network | 2026-11-22 → 2026-11-15 (-7d) | 2026-11-29 → 2026-11-23 (-6d) |  | -63.5d → -63.88d | CO-SD-MH-200, CO-SD-ML-130 FF, ENG-SH-DPO-A-120 → CO-SD-MH-200, CO-SD-ML-130 FF | resources MH depth 1.5 - 2.5m [3.28]; MH depth 2.5 - 3.5m [2.69]; MH depth > 3.50m [0.3]; MH depth 2.5 -3.5m [0.3]; Unskilled Labor [56 h]; Excavator [56 h]; JCB [56 h]; Dump Truck [56 h] → Unskilled Labor [56 h]; Excavator [56 h]; JCB [56 h]; Dump Truck [56 h]; MH depth 1.5 - 2.5m [3.28]; MH depth 2.5 - 3.5m [2.69]; MH depth > 3.50m [0.3]; MH depth 2.5 -3.5m [0.3] |
| CB | **Catch Basin Sections** | 2026-11-09 → 2026-11-02 (-7d) | 2026-12-22 → 2026-12-16 (-6d) |  |  |  |  |
| CO-SD-CB-140 | Trench Excavation and Bedding Works for Catch Basins of Storm Drainage Network | 2026-11-09 → 2026-11-02 (-7d) | 2026-11-19 → 2026-11-14 (-5d) |  | -55.5d → -55.88d |  | resources Single Catch Basin 1000mm x 1000mm [24.18]; Double Catch Basin 1200mm x 2300mm [0.45]; Unskilled Labor [160 h]; Excavator [160 h]; Skilled Labor [160 h] → Unskilled Labor [160 h]; Excavator [160 h]; Skilled Labor [160 h]; Single Catch Basin 1000mm x 1000mm [24.18]; Double Catch Basin 1200mm x 2300mm [0.45] |
| CO-SD-CB-150 | Installation and Pipes Laying Connection Works for Catch Basins of Storm Drainage Network | 2026-11-30 → 2026-11-23 (-7d) | 2026-12-10 → 2026-12-05 (-5d) |  | -63.5d → -63.88d |  | resources Single Catch Basin 1000mm x 1000mm [72.54]; Double Catch Basin 1200mm x 2300mm [1.34]; Unskilled Labor [320 h]; Plumber [160 h]; Excavator [160 h]; Skilled Labor [160 h] → Unskilled Labor [320 h]; Plumber [160 h]; Excavator [160 h]; Skilled Labor [160 h]; Single Catch Basin 1000mm x 1000mm [72.54]; Double Catch Basin 1200mm x 2300mm [1.34] |
| CO-SD-CB-170 | Trench Backfilling and Compaction Works for Catch Basins of Storm Drainage Network | 2026-12-12 → 2026-12-05 (-7d) | 2026-12-22 → 2026-12-16 (-6d) |  | -63.5d → -63.88d | CO-SD-CB-150, CO-SD-ML-130 FF, CO-SD-MH-220, ENG-SH-DPO-A-120 → CO-SD-CB-150, CO-SD-ML-130 FF, CO-SD-MH-220 | resources Single Catch Basin 1000mm x 1000mm [32.24]; Double Catch Basin 1200mm x 2300mm [0.6]; Unskilled Labor [160 h]; Excavator [160 h]; JCB [160 h]; Dump Truck [160 h] → Unskilled Labor [160 h]; Excavator [160 h]; JCB [160 h]; Dump Truck [160 h]; Single Catch Basin 1000mm x 1000mm [32.24]; Double Catch Basin 1200mm x 2300mm [0.6] |
| MH25-MH121 | **FROM MH-12:MH-01** |  | 2027-01-31 → 2027-01-19 (-12d) |  |  |  |  |
| CO-SD-ML-140 | Trench Excavation and Bedding Works for Main Lines of Storm Drainage Network |  |  |  | -69.5d → -66.5d |  | resources Depth Between 0m to 1.50m [15.95]; Depth Between 1.50m to 2.50m [473.34]; Depth > 2.50m [2.52]; Depth Between 1.50m to 2.50m [92.01]; Depth Between 2.50m to 3.50m [73.71]; Depth > 3.50m [2.52]; Depth Between 2.50m to 3.50m [32.07]; Depth Between 0m to 1.50m [4.7]; Depth Between 1.50m to 2.50m [1.68]; Depth Between 2.50m to 3.50m [15.78]; Depth > 3.50m [1.18]; Depth Between 2.50m to 3.50m [20.32]; Depth Between 3.50m to 4.50m [62.29]; Depth > 4.50m [2.52]; Depth Between 3.50m to 4.50m [123.75]; Depth > 4.50m [4.2]; Unskilled Labor [160 h]; Excavator [160 h]; Skilled Labor [160 h] → Unskilled Labor [160 h]; Excavator [160 h]; Skilled Labor [160 h]; Depth Between 0m to 1.50m [15.95]; Depth Between 1.50m to 2.50m [473.34]; Depth > 2.50m [2.52]; Depth Between 1.50m to 2.50m [92.01]; Depth Between 2.50m to 3.50m [73.71]; Depth > 3.50m [2.52]; Depth Between 2.50m to 3.50m [32.07]; Depth Between 0m to 1.50m [4.7]; Depth Between 1.50m to 2.50m [1.68]; Depth Between 2.50m to 3.50m [15.78]; Depth > 3.50m [1.18]; Depth Between 2.50m to 3.50m [20.32]; Depth Between 3.50m to 4.50m [62.29]; Depth > 4.50m [2.52]; Depth Between 3.50m to 4.50m [123.75]; Depth > 4.50m [4.2] |
| CO-SD-ML-150 | Pipes Laying Works for Main Lines of Storm Drainage Network |  |  |  | -69.5d → -66.5d |  | resources Depth Between 0m to 1.50m [28.71]; Depth Between 1.50m to 2.50m [852.01]; Depth > 2.50m [4.53]; Depth Between 1.50m to 2.50m [165.63]; Depth Between 2.50m to 3.50m [132.68]; Depth > 3.50m [4.53]; Depth Between 2.50m to 3.50m [57.73]; Depth Between 0m to 1.50m [8.46]; Depth Between 1.50m to 2.50m [3.02]; Depth Between 2.50m to 3.50m [28.41]; Depth > 3.50m [2.12]; Depth Between 2.50m to 3.50m [36.57]; Depth Between 3.50m to 4.50m [112.13]; Depth > 4.50m [4.53]; Depth Between 3.50m to 4.50m [222.75]; Depth > 4.50m [7.56]; Unskilled Labor [336 h]; Plumber [168 h]; Excavator [168 h]; Skilled Labor [168 h] → Unskilled Labor [336 h]; Plumber [168 h]; Excavator [168 h]; Skilled Labor [168 h]; Depth Between 0m to 1.50m [28.71]; Depth Between 1.50m to 2.50m [852.01]; Depth > 2.50m [4.53]; Depth Between 1.50m to 2.50m [165.63]; Depth Between 2.50m to 3.50m [132.68]; Depth > 3.50m [4.53]; Depth Between 2.50m to 3.50m [57.73]; Depth Between 0m to 1.50m [8.46]; Depth Between 1.50m to 2.50m [3.02]; Depth Between 2.50m to 3.50m [28.41]; Depth > 3.50m [2.12]; Depth Between 2.50m to 3.50m [36.57]; Depth Between 3.50m to 4.50m [112.13]; Depth > 4.50m [4.53]; Depth Between 3.50m to 4.50m [222.75]; Depth > 4.50m [7.56] |
| CO-SD-ML-160 | Trench Backfilling and Compaction Works for Main Lines of Storm Drainage Network |  |  |  | -57.5d → -54.5d | CO-SD-ML-150, CO-SD-ML-130, ENG-SH-DPO-A-120 → CO-SD-ML-150, CO-SD-ML-130 | resources Depth Between 0m to 1.50m [12.76]; Depth Between 1.50m to 2.50m [378.67]; Depth > 2.50m [2.01]; Depth Between 1.50m to 2.50m [73.61]; Depth Between 2.50m to 3.50m [58.97]; Depth > 3.50m [2.01]; Depth Between 2.50m to 3.50m [25.66]; Depth Between 0m to 1.50m [3.76]; Depth Between 1.50m to 2.50m [1.34]; Depth Between 2.50m to 3.50m [12.63]; Depth > 3.50m [0.94]; Depth Between 2.50m to 3.50m [16.25]; Depth Between 3.50m to 4.50m [49.84]; Depth > 4.50m [2.01]; Depth Between 3.50m to 4.50m [99]; Depth > 4.50m [3.36]; Unskilled Labor [160 h]; Excavator [160 h]; JCB [160 h]; Dump Truck [160 h] → Unskilled Labor [160 h]; Excavator [160 h]; JCB [160 h]; Dump Truck [160 h]; Depth Between 0m to 1.50m [12.76]; Depth Between 1.50m to 2.50m [378.67]; Depth > 2.50m [2.01]; Depth Between 1.50m to 2.50m [73.61]; Depth Between 2.50m to 3.50m [58.97]; Depth > 3.50m [2.01]; Depth Between 2.50m to 3.50m [25.66]; Depth Between 0m to 1.50m [3.76]; Depth Between 1.50m to 2.50m [1.34]; Depth Between 2.50m to 3.50m [12.63]; Depth > 3.50m [0.94]; Depth Between 2.50m to 3.50m [16.25]; Depth Between 3.50m to 4.50m [49.84]; Depth > 4.50m [2.01]; Depth Between 3.50m to 4.50m [99]; Depth > 4.50m [3.36] |
| CO-SD-MH-230 | Trench Excavation and Bedding Works for Manholes of Storm Drainage Network |  |  |  | -69.5d → -66.5d |  | resources MH depth 1.5 - 2.5m [2.01]; MH depth 2.5 - 3.5m [1.79]; MH depth > 3.50m; MH depth 2.5 -3.5m [0.22]; Unskilled Labor [72 h]; Excavator [72 h]; Skilled Labor [72 h] → Unskilled Labor [72 h]; Excavator [72 h]; Skilled Labor [72 h]; MH depth 1.5 - 2.5m [2.01]; MH depth 2.5 - 3.5m [1.79]; MH depth > 3.50m; MH depth 2.5 -3.5m [0.22] |
| CO-SD-MH-240 | Install RC Footing Works for Manholes of Storm Drainage Network |  |  |  | -69.5d → -66.5d |  | resources MH depth 1.5 - 2.5m [3.36]; MH depth 2.5 - 3.5m [2.99]; MH depth > 3.50m; MH depth 2.5 -3.5m [0.37]; Unskilled Labor [112 h]; Plumber [56 h]; Excavator [56 h]; Skilled Labor [56 h] → Unskilled Labor [112 h]; Plumber [56 h]; Excavator [56 h]; Skilled Labor [56 h]; MH depth 1.5 - 2.5m [3.36]; MH depth 2.5 - 3.5m [2.99]; MH depth > 3.50m; MH depth 2.5 -3.5m [0.37] |
| CO-SD-MH-250 | Install RC Wall Rings & Slab Works for Manholes of Storm Drainage Network |  |  |  | -69.5d → -66.5d |  | resources MH depth 1.5 - 2.5m [2.01]; MH depth 2.5 - 3.5m [1.79]; MH depth > 3.50m; MH depth 2.5 -3.5m [0.22]; Unskilled Labor [112 h]; Plumber [56 h]; Excavator [56 h]; Mobile Crane [56 h] → Unskilled Labor [112 h]; Plumber [56 h]; Excavator [56 h]; Mobile Crane [56 h]; MH depth 1.5 - 2.5m [2.01]; MH depth 2.5 - 3.5m [1.79]; MH depth > 3.50m; MH depth 2.5 -3.5m [0.22] |
| CO-SD-MH-260 | Backfilling Works for Manholes of Storm Drainage Network |  |  |  | -69.5d → -66.5d | CO-SD-MH-250, CO-SD-ML-160 FF, CO-SD-MH-220, ENG-SH-DPO-A-120 → CO-SD-MH-250, CO-SD-ML-160 FF, CO-SD-MH-220 | resources MH depth 1.5 - 2.5m [2.69]; MH depth 2.5 - 3.5m [2.39]; MH depth > 3.50m; MH depth 2.5 -3.5m [0.3]; Unskilled Labor [72 h]; Excavator [72 h]; JCB [72 h]; Dump Truck [72 h] → Unskilled Labor [72 h]; Excavator [72 h]; JCB [72 h]; Dump Truck [72 h]; MH depth 1.5 - 2.5m [2.69]; MH depth 2.5 - 3.5m [2.39]; MH depth > 3.50m; MH depth 2.5 -3.5m [0.3] |
| CB | **Catch Basin Sections** | 2026-12-23 → 2026-12-16 (-7d) | 2027-01-31 → 2027-01-19 (-12d) |  |  |  |  |
| CO-SD-CB-180 | Trench Excavation and Bedding Works for Catch Basins of Storm Drainage Network | 2026-12-23 → 2026-12-16 (-7d) | 2027-01-02 → 2026-12-27 (-6d) |  | -63.5d → -63.88d |  | resources Single Catch Basin 1000mm x 1000mm [19.93]; Double Catch Basin 1200mm x 2300mm [0.45]; Unskilled Labor [144 h]; Excavator [144 h]; Skilled Labor [144 h] → Unskilled Labor [144 h]; Excavator [144 h]; Skilled Labor [144 h]; Single Catch Basin 1000mm x 1000mm [19.93]; Double Catch Basin 1200mm x 2300mm [0.45] |
| CO-SD-CB-190 | Installation and Pipes Laying Connection Works for Catch Basins of Storm Drainage Network | 2027-01-11 → 2026-12-27 (-15d) | 2027-01-20 → 2027-01-06 (-14d) |  | -70.5d → -63.88d | CO-SD-CB-180, CO-SD-CB-150, CO-SD-MH-260, CO-SD-ML-160, CO-SD-CB-170, CO-SD-MH-220, CO-SW-ML-130, CO-SW-MH-200, CO-SW-ML-160, CO-SW-MH-250, ENG-SH-DPO-A-120 → CO-SD-CB-180, CO-SD-CB-150 | resources Single Catch Basin 1000mm x 1000mm [59.78]; Double Catch Basin 1200mm x 2300mm [1.34]; Unskilled Labor [384 h]; Plumber [192 h]; Excavator [192 h]; Skilled Labor [192 h] → Unskilled Labor [384 h]; Plumber [192 h]; Excavator [192 h]; Skilled Labor [192 h]; Single Catch Basin 1000mm x 1000mm [59.78]; Double Catch Basin 1200mm x 2300mm [1.34] |
| CO-SD-CB-200 | Trench Backfilling and Compaction Works for Catch Basins of Storm Drainage Network | 2027-01-21 → 2027-01-10 (-11d) | 2027-01-31 → 2027-01-19 (-12d) |  | -70.5d → -66.5d | CO-SD-CB-190, CO-SD-ML-160 FF, CO-SD-CB-170, CO-SD-MH-260, CO-SD-PO-100-P1 → CO-SD-CB-190, CO-SD-ML-160 FF, CO-SD-CB-170, CO-SD-MH-260 | resources Single Catch Basin 1000mm x 1000mm [26.57]; Double Catch Basin 1200mm x 2300mm [0.6]; Unskilled Labor [192 h]; Excavator [192 h]; JCB [192 h]; Dump Truck [192 h] → Unskilled Labor [192 h]; Excavator [192 h]; JCB [192 h]; Dump Truck [192 h]; Single Catch Basin 1000mm x 1000mm [26.57]; Double Catch Basin 1200mm x 2300mm [0.6] |
| SW | **Sewage Network** | 2026-11-01 → 2026-10-26 (-6d) | 2027-01-10 → 2027-01-05 (-5d) |  |  |  |  |
| 2 | **FROM MH-18:MH-10** | 2026-11-01 → 2026-10-26 (-6d) | 2026-12-31 → 2026-12-27 (-4d) |  |  |  |  |
| ML | **Main Line Sections** | 2026-11-01 → 2026-10-26 (-6d) | 2026-12-21 → 2026-12-16 (-5d) |  |  |  |  |
| CO-SW-ML-100 | Trench Excavation and Bedding Works for Main Lines of Sewage Network | 2026-11-01 → 2026-10-26 (-6d) | 2026-11-14 → 2026-11-09 (-5d) |  | -77.5d → -72.62d |  | resources Depth Between 0m to 1.50m [5.97]; Depth Between 1.50m to 2.50m [36.72]; Depth > 2.50m [1.49]; Depth Between 0m to 1.50m [3.28]; Depth Between 1.50m to 2.50m [238.81]; Depth Between 2.50m to 3.50m [11.19]; Depth > 3.50m [2.24]; HDPE Force Main (PE 100, SDR 11, PN 16 bar) DN 160 mm diameter, in trenches depth: 0- 1.5m [3.73]; HDPE Force Main (PE 100, SDR 11, PN 16 bar) DN 160 mm diameter, in trenches depth: 1.51- 2.5m [5.97]; Unskilled Labor [144 h]; Excavator [144 h]; Skilled Labor [144 h] → Unskilled Labor [144 h]; Excavator [144 h]; Skilled Labor [144 h]; Depth Between 0m to 1.50m [5.97]; Depth Between 1.50m to 2.50m [36.72]; Depth > 2.50m [1.49]; Depth Between 0m to 1.50m [3.28]; Depth Between 1.50m to 2.50m [238.81]; Depth Between 2.50m to 3.50m [11.19]; Depth > 3.50m [2.24]; HDPE Force Main (PE 100, SDR 11, PN 16 bar) DN 160 mm diameter, in trenches depth: 0- 1.5m [3.73]; HDPE Force Main (PE 100, SDR 11, PN 16 bar) DN 160 mm diameter, in trenches depth: 1.51- 2.5m [5.97] |
| CO-SW-ML-120 | Pipes Laying Works for Main Lines of Sewage Network | 2026-11-15 → 2026-11-09 (-6d) | 2026-11-28 → 2026-11-23 (-5d) |  | -77.5d → -72.62d |  | resources Depth Between 0m to 1.50m [10.75]; Depth Between 1.50m to 2.50m [66.09]; Depth > 2.50m [2.69]; Depth Between 0m to 1.50m [5.91]; Depth Between 1.50m to 2.50m [429.85]; Depth Between 2.50m to 3.50m [20.15]; Depth > 3.50m [4.03]; HDPE Force Main (PE 100, SDR 11, PN 16 bar) DN 160 mm diameter, in trenches depth: 0- 1.5m [6.72]; HDPE Force Main (PE 100, SDR 11, PN 16 bar) DN 160 mm diameter, in trenches depth: 1.51- 2.5m [10.75]; Unskilled Labor [288 h]; Plumber [144 h]; Excavator [144 h]; Skilled Labor [144 h] → Unskilled Labor [288 h]; Plumber [144 h]; Excavator [144 h]; Skilled Labor [144 h]; Depth Between 0m to 1.50m [10.75]; Depth Between 1.50m to 2.50m [66.09]; Depth > 2.50m [2.69]; Depth Between 0m to 1.50m [5.91]; Depth Between 1.50m to 2.50m [429.85]; Depth Between 2.50m to 3.50m [20.15]; Depth > 3.50m [4.03]; HDPE Force Main (PE 100, SDR 11, PN 16 bar) DN 160 mm diameter, in trenches depth: 0- 1.5m [6.72]; HDPE Force Main (PE 100, SDR 11, PN 16 bar) DN 160 mm diameter, in trenches depth: 1.51- 2.5m [10.75] |
| CO-SW-ML-130 | Trench Backfilling and Compaction Works for Main Lines of Sewage Network | 2026-11-29 → 2026-11-23 (-6d) | 2026-12-21 → 2026-12-16 (-5d) |  | -74.5d → -69.62d | CO-SW-ML-120, ENG-SH-DPO-A-120 → CO-SW-ML-120 | resources Depth Between 0m to 1.50m [4.78]; Depth Between 1.50m to 2.50m [29.37]; Depth > 2.50m [1.19]; Depth Between 0m to 1.50m [2.63]; Depth Between 1.50m to 2.50m [191.04]; Depth Between 2.50m to 3.50m [8.96]; Depth > 3.50m [1.79]; HDPE Force Main (PE 100, SDR 11, PN 16 bar) DN 160 mm diameter, in trenches depth: 0- 1.5m [2.99]; HDPE Force Main (PE 100, SDR 11, PN 16 bar) DN 160 mm diameter, in trenches depth: 1.51- 2.5m [4.78]; Unskilled Labor [160 h]; Excavator [160 h]; JCB [160 h]; Dump Truck [160 h] → Unskilled Labor [160 h]; Excavator [160 h]; JCB [160 h]; Dump Truck [160 h]; Depth Between 0m to 1.50m [4.78]; Depth Between 1.50m to 2.50m [29.37]; Depth > 2.50m [1.19]; Depth Between 0m to 1.50m [2.63]; Depth Between 1.50m to 2.50m [191.04]; Depth Between 2.50m to 3.50m [8.96]; Depth > 3.50m [1.79]; HDPE Force Main (PE 100, SDR 11, PN 16 bar) DN 160 mm diameter, in trenches depth: 0- 1.5m [2.99]; HDPE Force Main (PE 100, SDR 11, PN 16 bar) DN 160 mm diameter, in trenches depth: 1.51- 2.5m [4.78] |
| 1 | **Manholes** | 2026-11-29 → 2026-11-23 (-6d) | 2026-12-31 → 2026-12-27 (-4d) |  |  |  |  |
| CO-SW-MH-160 | Excavation Works for Main Line Manholes of Sewage Network | 2026-11-29 → 2026-11-23 (-6d) | 2026-12-06 → 2026-12-01 (-5d) |  | -77.5d → -72.62d |  | resources Depth: 0 - 1.5m [0.22]; Depth: 1.51 - 2.5m [3.13]; Depth: 2.51 - 3.5m [0.22]; Depth > 3.50m; Unskilled Labor [56 h]; Excavator [56 h]; Skilled Labor [56 h] → Unskilled Labor [56 h]; Excavator [56 h]; Skilled Labor [56 h]; Depth: 0 - 1.5m [0.22]; Depth: 1.51 - 2.5m [3.13]; Depth: 2.51 - 3.5m [0.22]; Depth > 3.50m |
| CO-SW-MH-170 | Installation RC Footing Works for Main Line Manholes of Sewage Network | 2026-12-07 → 2026-12-01 (-6d) | 2026-12-14 → 2026-12-09 (-5d) |  | -76.5d → -71.62d |  | resources Depth: 0 - 1.5m [0.3]; Depth: 1.51 - 2.5m [4.18]; Depth: 2.51 - 3.5m [0.3]; Depth > 3.50m; Unskilled Labor [128 h]; Plumber [64 h]; Excavator [64 h]; Mobile Crane [64 h] → Unskilled Labor [128 h]; Plumber [64 h]; Excavator [64 h]; Mobile Crane [64 h]; Depth: 0 - 1.5m [0.3]; Depth: 1.51 - 2.5m [4.18]; Depth: 2.51 - 3.5m [0.3]; Depth > 3.50m |
| CO-SW-MH-180 | Install Grp Liner Wall Works for Main Line Manholes of Sewage Network | 2026-12-15 → 2026-12-09 (-6d) | 2026-12-22 → 2026-12-17 (-5d) |  | -76.5d → -71.62d |  | resources Depth: 0 - 1.5m [0.3]; Depth: 1.51 - 2.5m [4.18]; Depth: 2.51 - 3.5m [0.3]; Depth > 3.50m; Unskilled Labor [128 h]; Plumber [64 h]; Excavator [64 h]; Mobile Crane [64 h] → Unskilled Labor [128 h]; Plumber [64 h]; Excavator [64 h]; Mobile Crane [64 h]; Depth: 0 - 1.5m [0.3]; Depth: 1.51 - 2.5m [4.18]; Depth: 2.51 - 3.5m [0.3]; Depth > 3.50m |
| CO-SW-MH-190 | Pouring Grp Liner Wall Works for Main Line Manholes of Sewage Network | 2026-12-23 → 2026-12-17 (-6d) | 2026-12-27 → 2026-12-22 (-5d) |  | -73.5d → -68.62d |  | resources Depth: 0 - 1.5m [0.07]; Depth: 1.51 - 2.5m [1.04]; Depth: 2.51 - 3.5m [0.07]; Depth > 3.50m; Unskilled Labor [64 h]; Mason [32 h]; Skilled Labor [32 h] → Unskilled Labor [64 h]; Mason [32 h]; Skilled Labor [32 h]; Depth: 0 - 1.5m [0.07]; Depth: 1.51 - 2.5m [1.04]; Depth: 2.51 - 3.5m [0.07]; Depth > 3.50m |
| CO-SW-MH-200 | Backfilling Works for Main Line Manholes of Sewage Network | 2026-12-28 → 2026-12-22 (-6d) | 2026-12-31 → 2026-12-27 (-4d) |  | -73.5d → -68.62d | CO-SW-MH-190, CO-SW-ML-130 FF, CO-SW-ML-130, ENG-SH-DPO-A-120 → CO-SW-MH-190, CO-SW-ML-130 FF, CO-SW-ML-130 | resources Depth: 0 - 1.5m [0.3]; Depth: 1.51 - 2.5m [4.18]; Depth: 2.51 - 3.5m [0.3]; Depth > 3.50m; Unskilled Labor [32 h]; Excavator [32 h]; JCB [32 h]; Dump Truck [32 h] → Unskilled Labor [32 h]; Excavator [32 h]; JCB [32 h]; Dump Truck [32 h]; Depth: 0 - 1.5m [0.3]; Depth: 1.51 - 2.5m [4.18]; Depth: 2.51 - 3.5m [0.3]; Depth > 3.50m |
| 1 | **FROM MH-10:MH-01** | 2026-11-15 → 2026-11-09 (-6d) | 2027-01-10 → 2027-01-05 (-5d) |  |  |  |  |
| ML | **Main Line Sections** | 2026-11-15 → 2026-11-09 (-6d) | 2026-12-13 → 2026-12-08 (-5d) |  |  |  |  |
| CO-SW-ML-140 | Trench Excavation and Bedding Works for Main Lines of Sewage Network | 2026-11-15 → 2026-11-09 (-6d) | 2026-11-21 → 2026-11-16 (-5d) |  | -75.5d → -70.62d |  | resources Depth Between 0m to 1.50m [8.96]; Depth Between 1.50m to 2.50m [55.07]; Depth > 2.50m [2.24]; Depth Between 0m to 1.50m [4.93]; Depth Between 1.50m to 2.50m [358.21]; Depth Between 2.50m to 3.50m [16.79]; Depth > 3.50m [3.36]; HDPE Force Main (PE 100, SDR 11, PN 16 bar) DN 160 mm diameter, in trenches depth: 0- 1.5m [5.6]; HDPE Force Main (PE 100, SDR 11, PN 16 bar) DN 160 mm diameter, in trenches depth: 1.51- 2.5m [8.96]; Unskilled Labor [96 h]; Excavator [96 h]; Skilled Labor [96 h] → Unskilled Labor [96 h]; Excavator [96 h]; Skilled Labor [96 h]; Depth Between 0m to 1.50m [8.96]; Depth Between 1.50m to 2.50m [55.07]; Depth > 2.50m [2.24]; Depth Between 0m to 1.50m [4.93]; Depth Between 1.50m to 2.50m [358.21]; Depth Between 2.50m to 3.50m [16.79]; Depth > 3.50m [3.36]; HDPE Force Main (PE 100, SDR 11, PN 16 bar) DN 160 mm diameter, in trenches depth: 0- 1.5m [5.6]; HDPE Force Main (PE 100, SDR 11, PN 16 bar) DN 160 mm diameter, in trenches depth: 1.51- 2.5m [8.96] |
| CO-SW-ML-150 | Pipes Laying Works for Main Lines of Sewage Network | 2026-11-22 → 2026-11-16 (-6d) | 2026-11-29 → 2026-11-24 (-5d) |  | -75.5d → -70.62d | CO-SW-ML-140, CO-SW-ML-120 SS, ENG-SH-SPS-A-160 → CO-SW-ML-140, CO-SW-ML-120 SS | resources Depth Between 0m to 1.50m [16.12]; Depth Between 1.50m to 2.50m [99.13]; Depth > 2.50m [4.03]; Depth Between 0m to 1.50m [8.87]; Depth Between 1.50m to 2.50m [644.78]; Depth Between 2.50m to 3.50m [30.22]; Depth > 3.50m [6.04]; HDPE Force Main (PE 100, SDR 11, PN 16 bar) DN 160 mm diameter, in trenches depth: 0- 1.5m [10.07]; HDPE Force Main (PE 100, SDR 11, PN 16 bar) DN 160 mm diameter, in trenches depth: 1.51- 2.5m [16.12]; Unskilled Labor [192 h]; Plumber [96 h]; Excavator [96 h]; Skilled Labor [96 h] → Unskilled Labor [192 h]; Plumber [96 h]; Excavator [96 h]; Skilled Labor [96 h]; Depth Between 0m to 1.50m [16.12]; Depth Between 1.50m to 2.50m [99.13]; Depth > 2.50m [4.03]; Depth Between 0m to 1.50m [8.87]; Depth Between 1.50m to 2.50m [644.78]; Depth Between 2.50m to 3.50m [30.22]; Depth > 3.50m [6.04]; HDPE Force Main (PE 100, SDR 11, PN 16 bar) DN 160 mm diameter, in trenches depth: 0- 1.5m [10.07]; HDPE Force Main (PE 100, SDR 11, PN 16 bar) DN 160 mm diameter, in trenches depth: 1.51- 2.5m [16.12] |
| CO-SW-ML-160 | Trench Backfilling and Compaction Works for Main Lines of Sewage Network | 2026-11-30 → 2026-11-24 (-6d) | 2026-12-13 → 2026-12-08 (-5d) |  | -75.5d → -70.62d | CO-SW-ML-150, CO-SW-ML-130 SS, CO-UB-PS-100, ENG-SH-DPO-A-120 → CO-SW-ML-150, CO-SW-ML-130 SS | resources Depth Between 0m to 1.50m [7.16]; Depth Between 1.50m to 2.50m [44.06]; Depth > 2.50m [1.79]; Depth Between 0m to 1.50m [3.94]; Depth Between 1.50m to 2.50m [286.57]; Depth Between 2.50m to 3.50m [13.43]; Depth > 3.50m [2.69]; HDPE Force Main (PE 100, SDR 11, PN 16 bar) DN 160 mm diameter, in trenches depth: 0- 1.5m [4.48]; HDPE Force Main (PE 100, SDR 11, PN 16 bar) DN 160 mm diameter, in trenches depth: 1.51- 2.5m [7.16]; Unskilled Labor [96 h]; Excavator [96 h]; JCB [96 h]; Dump Truck [96 h] → Unskilled Labor [96 h]; Excavator [96 h]; JCB [96 h]; Dump Truck [96 h]; Depth Between 0m to 1.50m [7.16]; Depth Between 1.50m to 2.50m [44.06]; Depth > 2.50m [1.79]; Depth Between 0m to 1.50m [3.94]; Depth Between 1.50m to 2.50m [286.57]; Depth Between 2.50m to 3.50m [13.43]; Depth > 3.50m [2.69]; HDPE Force Main (PE 100, SDR 11, PN 16 bar) DN 160 mm diameter, in trenches depth: 0- 1.5m [4.48]; HDPE Force Main (PE 100, SDR 11, PN 16 bar) DN 160 mm diameter, in trenches depth: 1.51- 2.5m [7.16] |
| 1 | **Manholes** | 2026-12-07 → 2026-12-01 (-6d) | 2027-01-10 → 2027-01-05 (-5d) |  |  |  |  |
| CO-SW-MH-210 | Excavation Works for Main Line Manholes of Sewage Network | 2026-12-07 → 2026-12-01 (-6d) | 2026-12-15 → 2026-12-10 (-5d) |  | -77.5d → -72.62d |  | resources Depth: 0 - 1.5m [0.22]; Depth: 1.51 - 2.5m [4.7]; Depth: 2.51 - 3.5m [0.22]; Depth > 3.50m [0.22]; Unskilled Labor [80 h]; Excavator [80 h]; Skilled Labor [80 h] → Unskilled Labor [80 h]; Excavator [80 h]; Skilled Labor [80 h]; Depth: 0 - 1.5m [0.22]; Depth: 1.51 - 2.5m [4.7]; Depth: 2.51 - 3.5m [0.22]; Depth > 3.50m [0.22] |
| CO-SW-MH-220 | Installation RC Footing Works for Main Line Manholes of Sewage Network | 2026-12-16 → 2026-12-10 (-6d) | 2026-12-23 → 2026-12-19 (-4d) |  | -77.5d → -72.62d |  | resources Depth: 0 - 1.5m [0.3]; Depth: 1.51 - 2.5m [6.27]; Depth: 2.51 - 3.5m [0.3]; Depth > 3.50m [0.3]; Unskilled Labor [208 h]; Plumber [104 h]; Excavator [104 h]; Mobile Crane [104 h] → Unskilled Labor [208 h]; Plumber [104 h]; Excavator [104 h]; Mobile Crane [104 h]; Depth: 0 - 1.5m [0.3]; Depth: 1.51 - 2.5m [6.27]; Depth: 2.51 - 3.5m [0.3]; Depth > 3.50m [0.3] |
| CO-SW-MH-230 | Install Grp Liner Wall Works for Main Line Manholes of Sewage Network | 2026-12-24 → 2026-12-19 (-5d) | 2026-12-31 → 2026-12-27 (-4d) |  | -77.5d → -72.62d |  | resources Depth: 0 - 1.5m [0.3]; Depth: 1.51 - 2.5m [6.27]; Depth: 2.51 - 3.5m [0.3]; Depth > 3.50m [0.3]; Unskilled Labor [208 h]; Plumber [104 h]; Excavator [104 h]; Mobile Crane [104 h] → Unskilled Labor [208 h]; Plumber [104 h]; Excavator [104 h]; Mobile Crane [104 h]; Depth: 0 - 1.5m [0.3]; Depth: 1.51 - 2.5m [6.27]; Depth: 2.51 - 3.5m [0.3]; Depth > 3.50m [0.3] |
| CO-SW-MH-240 | Pouring Grp Liner Wall Works for Main Line Manholes of Sewage Network | 2027-01-02 → 2026-12-27 (-6d) | 2027-01-05 → 2026-12-31 (-5d) |  | -77.5d → -72.62d |  | resources Depth: 0 - 1.5m [0.07]; Depth: 1.51 - 2.5m [1.57]; Depth: 2.51 - 3.5m [0.07]; Depth > 3.50m [0.07]; Unskilled Labor [64 h]; Mason [32 h]; Skilled Labor [32 h] → Unskilled Labor [64 h]; Mason [32 h]; Skilled Labor [32 h]; Depth: 0 - 1.5m [0.07]; Depth: 1.51 - 2.5m [1.57]; Depth: 2.51 - 3.5m [0.07]; Depth > 3.50m [0.07] |
| CO-SW-MH-250 | Backfilling Works for Main Line Manholes of Sewage Network | 2027-01-06 → 2026-12-31 (-6d) | 2027-01-10 → 2027-01-05 (-5d) |  | -77.5d → -72.62d | CO-SW-MH-240, CO-SW-ML-160, CO-SW-MH-200, ENG-SH-DPO-A-120 → CO-SW-MH-240, CO-SW-ML-160, CO-SW-MH-200 | resources Depth: 0 - 1.5m [0.3]; Depth: 1.51 - 2.5m [6.27]; Depth: 2.51 - 3.5m [0.3]; Depth > 3.50m [0.3]; Unskilled Labor [32 h]; Excavator [32 h]; JCB [32 h]; Dump Truck [32 h] → Unskilled Labor [32 h]; Excavator [32 h]; JCB [32 h]; Dump Truck [32 h]; Depth: 0 - 1.5m [0.3]; Depth: 1.51 - 2.5m [6.27]; Depth: 2.51 - 3.5m [0.3]; Depth > 3.50m [0.3] |
| PW | **Potable Water Network** | 2027-01-11 → 2027-01-10 (-1d) |  |  |  |  |  |
| ML | **Main Line Sections** | 2027-01-11 → 2027-01-10 (-1d) |  |  |  |  |  |
| CO-PW-ML-100 | Trench Excavation and Bedding Works for Main Lines of Potable Water Network | 2027-01-11 → 2027-01-10 (-1d) |  |  | -77.5d → -77d |  | resources Depth Between 0m to 1.50m [2.24]; Depth Between 1.50m to 2.50m [2.24]; Depth > 2.50m [0.75]; Depth Between 0m to 1.50m [156.72]; Depth Between 1.50m to 2.50m [104.48]; Depth > 2.50m [3.73]; Depth Between 0m to 1.50m [18.66]; Depth Between 1.50m to 2.50m [3.73]; Depth > 2.50m [1.87]; Depth Between 0m to 1.50m [119.4]; Depth Between 1.50m to 2.50m [488.81]; Depth > 2.50m [7.46]; Unskilled Labor [192 h]; Excavator [192 h]; Skilled Labor [192 h] → Unskilled Labor [192 h]; Excavator [192 h]; Skilled Labor [192 h]; Depth Between 0m to 1.50m [2.24]; Depth Between 1.50m to 2.50m [2.24]; Depth > 2.50m [0.75]; Depth Between 0m to 1.50m [156.72]; Depth Between 1.50m to 2.50m [104.48]; Depth > 2.50m [3.73]; Depth Between 0m to 1.50m [18.66]; Depth Between 1.50m to 2.50m [3.73]; Depth > 2.50m [1.87]; Depth Between 0m to 1.50m [119.4]; Depth Between 1.50m to 2.50m [488.81]; Depth > 2.50m [7.46] |
| CO-PW-ML-110 | Pipes Laying and accessories for Main Lines of Potable Water Network | 2027-01-20 → 2027-01-19 (-1d) |  |  | -77.5d → -77d |  | resources Depth Between 0m to 1.50m [4.03]; Depth Between 1.50m to 2.50m [4.03]; Depth > 2.50m [1.34]; Depth Between 0m to 1.50m [282.09]; Depth Between 1.50m to 2.50m [188.06]; Depth > 2.50m [6.72]; Depth Between 0m to 1.50m [33.58]; Depth Between 1.50m to 2.50m [6.72]; Depth > 2.50m [3.36]; Depth Between 0m to 1.50m [214.93]; Depth Between 1.50m to 2.50m [879.85]; Depth > 2.50m [13.43]; Unskilled Labor [384 h]; Plumber [192 h]; Excavator [192 h]; Skilled Labor [192 h] → Unskilled Labor [384 h]; Plumber [192 h]; Excavator [192 h]; Skilled Labor [192 h]; Depth Between 0m to 1.50m [4.03]; Depth Between 1.50m to 2.50m [4.03]; Depth > 2.50m [1.34]; Depth Between 0m to 1.50m [282.09]; Depth Between 1.50m to 2.50m [188.06]; Depth > 2.50m [6.72]; Depth Between 0m to 1.50m [33.58]; Depth Between 1.50m to 2.50m [6.72]; Depth > 2.50m [3.36]; Depth Between 0m to 1.50m [214.93]; Depth Between 1.50m to 2.50m [879.85]; Depth > 2.50m [13.43] |
| CO-PW-ML-130 | Trench Backfilling and Compaction Works for Main Lines of Potable Water Network | 2027-01-30 → 2027-01-28 (-2d) |  |  | -75.5d → -75d |  | resources Depth Between 0m to 1.50m [1.79]; Depth Between 1.50m to 2.50m [1.79]; Depth > 2.50m [0.6]; Depth Between 0m to 1.50m [125.37]; Depth Between 1.50m to 2.50m [83.58]; Depth > 2.50m [2.99]; Depth Between 0m to 1.50m [14.93]; Depth Between 1.50m to 2.50m [2.99]; Depth > 2.50m [1.49]; Depth Between 0m to 1.50m [95.52]; Depth Between 1.50m to 2.50m [391.04]; Depth > 2.50m [5.97]; Unskilled Labor [192 h]; Excavator [192 h]; JCB [192 h]; Dump Truck [192 h] → Unskilled Labor [192 h]; Excavator [192 h]; JCB [192 h]; Dump Truck [192 h]; Depth Between 0m to 1.50m [1.79]; Depth Between 1.50m to 2.50m [1.79]; Depth > 2.50m [0.6]; Depth Between 0m to 1.50m [125.37]; Depth Between 1.50m to 2.50m [83.58]; Depth > 2.50m [2.99]; Depth Between 0m to 1.50m [14.93]; Depth Between 1.50m to 2.50m [2.99]; Depth > 2.50m [1.49]; Depth Between 0m to 1.50m [95.52]; Depth Between 1.50m to 2.50m [391.04]; Depth > 2.50m [5.97] |
| VC | **Valve Chamber** | 2027-02-08 → 2027-02-07 (-1d) |  |  |  |  |  |
| CO-PW-VC-170 | Excavation Works for Main Line Valves and Valve Chambers of Potable Water Network | 2027-02-08 → 2027-02-07 (-1d) | 2027-02-10 → 2027-02-09 (-1d) |  | -75.5d → -75d |  | resources Wash out chamber (2500x 2500mm) [0.75]; Air valve chamber (1000x 1000 mm) [0.37]; Unskilled Labor [16 h]; Excavator [16 h]; Skilled Labor [16 h] → Unskilled Labor [16 h]; Excavator [16 h]; Skilled Labor [16 h]; Wash out chamber (2500x 2500mm) [0.75]; Air valve chamber (1000x 1000 mm) [0.37] |
| CO-PW-VC180 | Installation Works for Valve Chambers of Potable Water Network |  |  |  | -75.5d → -75d |  | resources Wash out chamber (2500x 2500mm) [1.34]; Air valve chamber (1000x 1000 mm) [0.67]; Unskilled Labor [64 h]; Plumber [32 h]; Excavator [32 h]; Mobile Crane [32 h] → Unskilled Labor [64 h]; Plumber [32 h]; Excavator [32 h]; Mobile Crane [32 h]; Wash out chamber (2500x 2500mm) [1.34]; Air valve chamber (1000x 1000 mm) [0.67] |
| CO-PW-VC-190 | Installation Works for Valves of Potable Water Network | 2027-02-17 → 2027-02-16 (-1d) |  |  | -75.5d → -75d |  | resources Gate valves Dia 50 mm [1.49]; Gate valves Dia 100 mm [17.91]; Gate valves Dia 150 mm [25.37]; Gate valves Dia 250 mm [13.43]; Air valves with Dia 50 mm [1.49]; Washout valve Dia 100 mm [2.99]; Flow meter chamber (1500x 2500 mm) [1.49]; Flow meter dia 100 mm [1.49]; Unskilled Labor [112 h]; Plumber [56 h] → Unskilled Labor [112 h]; Plumber [56 h]; Gate valves Dia 50 mm [1.49]; Gate valves Dia 100 mm [17.91]; Gate valves Dia 150 mm [25.37]; Gate valves Dia 250 mm [13.43]; Air valves with Dia 50 mm [1.49]; Washout valve Dia 100 mm [2.99]; Flow meter chamber (1500x 2500 mm) [1.49]; Flow meter dia 100 mm [1.49] |
| CO-PW-VC-220 | Backfilling Works for Main Line Valves and Valve Chambers of Potable Water Network | 2027-02-28 → 2027-02-27 (-1d) |  |  | -75.5d → -75d |  | resources Wash out chamber (2500x 2500mm) [0.6]; Air valve chamber (1000x 1000 mm) [0.3]; Unskilled Labor [24 h]; Excavator [24 h]; JCB [24 h]; Dump Truck [24 h] → Unskilled Labor [24 h]; Excavator [24 h]; JCB [24 h]; Dump Truck [24 h]; Wash out chamber (2500x 2500mm) [0.6]; Air valve chamber (1000x 1000 mm) [0.3] |
| FH | **Fire Hydrant** | 2027-03-04 → 2027-03-03 (-1d) |  |  |  |  |  |
| CO-PW-FH-140 | Excavation Works for Fire Hydrants of Potable Water Network | 2027-03-04 → 2027-03-03 (-1d) |  |  | -75.5d → -75d |  | resources 3-outlet fire hydrant (2 x 2.5 inch and 1 x 4.5 inch) in the form of a separate dry vacuum cylinder, complete according to drawings. [6.34]; Unskilled Labor [56 h]; Excavator [56 h]; Skilled Labor [56 h] → Unskilled Labor [56 h]; Excavator [56 h]; Skilled Labor [56 h]; 3-outlet fire hydrant (2 x 2.5 inch and 1 x 4.5 inch) in the form of a separate dry vacuum cylinder, complete according to drawings. [6.34] |
| CO-PW-FH-150 | Installation Works for Fire Hydrant of Potable Water Network | 2027-03-17 → 2027-03-16 (-1d) |  |  | -75.5d → -75d |  | resources 3-outlet fire hydrant (2 x 2.5 inch and 1 x 4.5 inch) in the form of a separate dry vacuum cylinder, complete according to drawings. [11.42]; Unskilled Labor [112 h]; Plumber [56 h]; Excavator [56 h]; Skilled Labor [56 h] → Unskilled Labor [112 h]; Plumber [56 h]; Excavator [56 h]; Skilled Labor [56 h]; 3-outlet fire hydrant (2 x 2.5 inch and 1 x 4.5 inch) in the form of a separate dry vacuum cylinder, complete according to drawings. [11.42] |
| CO-PW-FH-160 | Trench Backfilling and Compaction Works for Fire Hydrants of Potable Water Network | 2027-03-25 → 2027-03-24 (-1d) |  |  | -75.5d → -75d |  | resources 3-outlet fire hydrant (2 x 2.5 inch and 1 x 4.5 inch) in the form of a separate dry vacuum cylinder, complete according to drawings. [5.07]; Unskilled Labor [56 h]; Excavator [56 h]; JCB [56 h]; Dump Truck [56 h] → Unskilled Labor [56 h]; Excavator [56 h]; JCB [56 h]; Dump Truck [56 h]; 3-outlet fire hydrant (2 x 2.5 inch and 1 x 4.5 inch) in the form of a separate dry vacuum cylinder, complete according to drawings. [5.07] |
| IR | **Irrigation Network** | 2027-01-20 → 2027-01-19 (-1d) |  |  |  |  |  |
| ML | **Main Line Pipes** | 2027-01-20 → 2027-01-19 (-1d) |  |  |  |  |  |
| CO-IR-ML-100 | Trench Excavation and Bedding Works for Main Lines of Irrigation Network | 2027-01-20 → 2027-01-19 (-1d) |  |  | -71d → -70.5d |  | resources pipe line O.D 32 mm PN 10, in depth 0 to 1.5 m [1250]; pipe line O.D 40 mm PN 10, in depth 0 to 1.5 m [690.3]; pipe line O.D 50 mm PN 10, in depth 0 to 1.5 m [93.28]; Unskilled Labor [336 h]; Excavator [336 h]; Skilled Labor [336 h] → Unskilled Labor [336 h]; Excavator [336 h]; Skilled Labor [336 h]; pipe line O.D 32 mm PN 10, in depth 0 to 1.5 m [1250]; pipe line O.D 40 mm PN 10, in depth 0 to 1.5 m [690.3]; pipe line O.D 50 mm PN 10, in depth 0 to 1.5 m [93.28] |
| CO-IR-ML-110 | Pipes Laying Works for Main Lines of Irrigation Network | 2027-02-01 → 2027-01-31 (-1d) | 2027-02-13 → 2027-02-11 (-2d) |  | -71d → -70.5d |  | resources pipe line O.D 32 mm PN 10, in depth 0 to 1.5 m [2250]; pipe line O.D 40 mm PN 10, in depth 0 to 1.5 m [1242.54]; pipe line O.D 50 mm PN 10, in depth 0 to 1.5 m [167.91]; Unskilled Labor [672 h]; Plumber [336 h]; Excavator [336 h]; Skilled Labor [336 h] → Unskilled Labor [672 h]; Plumber [336 h]; Excavator [336 h]; Skilled Labor [336 h]; pipe line O.D 32 mm PN 10, in depth 0 to 1.5 m [2250]; pipe line O.D 40 mm PN 10, in depth 0 to 1.5 m [1242.54]; pipe line O.D 50 mm PN 10, in depth 0 to 1.5 m [167.91] |
| CO-IR-ML-120 | Installation Works for Main Line Valves of Irrigation Network |  | 2027-02-27 → 2027-02-25 (-2d) |  | -71d → -70.5d |  | resources Gate valve 50 mm PN16 [10.45]; Direct Burried Gate valve 40 mm PN16 [17.91]; Flushing Bronze gate valve dia 1.5" inside PVC box [28.36]; Air release valve 1.5" inside PVC box [28.36]; Extra flexible pressure compensating on surface inline dripline`s, O.D. is 16.1 mm [17910.5]; Electrical Solenoid Valve ( 1.5") inside PVC box [17.91]; Electrical Solenoid Valve ( 2") inside PVC box [10.45]; Quick coupling valve 1" inside a round valve box 10" size with a manual gate valve, hose swivel and key with all accessories [79.1]; Advanced Irrigation controller subject to client approval, can connect with Centarl Control system [1.49]; Decoder cables 12 AWG between valves and controllers, The cables shall be pulled through 32Ø UPVC conduit [5223.88]; Preparing the irrigation program for the entire system and providing technical services for monitoring and controlling the central irrigation systems [1.49]; Unskilled Labor [192 h]; Plumber [96 h] → Unskilled Labor [192 h]; Plumber [96 h]; Gate valve 50 mm PN16 [10.45]; Direct Burried Gate valve 40 mm PN16 [17.91]; Flushing Bronze gate valve dia 1.5" inside PVC box [28.36]; Air release valve 1.5" inside PVC box [28.36]; Extra flexible pressure compensating on surface inline dripline`s, O.D. is 16.1 mm [17910.5]; Electrical Solenoid Valve ( 1.5") inside PVC box [17.91]; Electrical Solenoid Valve ( 2") inside PVC box [10.45]; Quick coupling valve 1" inside a round valve box 10" size with a manual gate valve, hose swivel and key with all accessories [79.1]; Advanced Irrigation controller subject to client approval, can connect with Centarl Control system [1.49]; Decoder cables 12 AWG between valves and controllers, The cables shall be pulled through 32 UPVC conduit [5223.88]; Preparing the irrigation program for the entire system and providing technical services for monitoring and controlling the central irrigation systems [1.49] |
| CO-IR-ML-130 | Trench Backfilling and Compaction Works for Main Lines of Irrigation Network | 2027-03-04 → 2027-03-03 (-1d) |  |  | -74.5d → -74d |  | resources pipe line O.D 32 mm PN 10, in depth 0 to 1.5 m [1000]; pipe line O.D 40 mm PN 10, in depth 0 to 1.5 m [552.24]; pipe line O.D 50 mm PN 10, in depth 0 to 1.5 m [74.63]; Unskilled Labor [336 h]; Excavator [336 h]; JCB [336 h]; Dump Truck [336 h] → Unskilled Labor [336 h]; Excavator [336 h]; JCB [336 h]; Dump Truck [336 h]; pipe line O.D 32 mm PN 10, in depth 0 to 1.5 m [1000]; pipe line O.D 40 mm PN 10, in depth 0 to 1.5 m [552.24]; pipe line O.D 50 mm PN 10, in depth 0 to 1.5 m [74.63] |
| CO-IR-ML-140 | Installation Works for Bulbblers And Sprinklers of Irrigation Network | 2027-03-20 → 2027-03-18 (-2d) |  |  | -67.5d → -67d |  | resources Pressure–compensating bubblers 110 Lit/Hr [1268.66]; Unskilled Labor [192 h]; Plumber [96 h] → Unskilled Labor [192 h]; Plumber [96 h]; Pressure compensating bubblers 110 Lit/Hr [1268.66] |

| ID | Task | Start | Finish | Total float | Predecessors | Other |
| --- | --- | --- | --- | --- | --- | --- |
| TSE | **Treated Sewage Effluent (Tse)** | 2027-01-20 → 2027-01-19 (-1d) |  |  |  |  |
| ML | **Main Line Pipes** | 2027-01-20 → 2027-01-19 (-1d) |  |  |  |  |
| CO-TSE-ML-150 | Trench Excavation and Bedding Works for Main Lines of Treated Sewage Effluent (Tse) | 2027-01-20 → 2027-01-19 (-1d) |  | -69.5d → -69d |  | resources Depth Between 0m to 1.50m [3.73]; Depth Between 1.50m to 2.50m [1.87]; Depth > 2.50m [0.75]; Depth Between 0m to 1.50m [343.28]; Depth Between 0m to 1.50m [26.12]; Depth Between 1.50m to 2.50m [16.79]; Depth > 2.50m [3.73]; Depth Between 0m to 1.50m [317.16]; Depth Between 1.50m to 2.50m [97.01]; Depth > 2.50m [9.33]; Depth Between 0m to 1.50m [22.39]; Depth Between 1.50m to 2.50m [14.93]; Depth > 2.50m [2.99]; Unskilled Labor [144 h]; Excavator [144 h]; Skilled Labor [144 h] → Unskilled Labor [144 h]; Excavator [144 h]; Skilled Labor [144 h]; Depth Between 0m to 1.50m [3.73]; Depth Between 1.50m to 2.50m [1.87]; Depth > 2.50m [0.75]; Depth Between 0m to 1.50m [343.28]; Depth Between 0m to 1.50m [26.12]; Depth Between 1.50m to 2.50m [16.79]; Depth > 2.50m [3.73]; Depth Between 0m to 1.50m [317.16]; Depth Between 1.50m to 2.50m [97.01]; Depth > 2.50m [9.33]; Depth Between 0m to 1.50m [22.39]; Depth Between 1.50m to 2.50m [14.93]; Depth > 2.50m [2.99] |
| CO-TSE-ML-160 | Pipes Laying Works for Main Lines of Treated Sewage Effluent (Tse) | 2027-02-01 → 2027-01-31 (-1d) |  | -69.5d → -69d |  | resources Depth Between 0m to 1.50m [6.72]; Depth Between 1.50m to 2.50m [3.36]; Depth > 2.50m [1.34]; Depth Between 0m to 1.50m [617.91]; Depth Between 0m to 1.50m [47.01]; Depth Between 1.50m to 2.50m [30.22]; Depth > 2.50m [6.72]; Depth Between 0m to 1.50m [570.9]; Depth Between 1.50m to 2.50m [174.63]; Depth > 2.50m [16.79]; Depth Between 0m to 1.50m [40.3]; Depth Between 1.50m to 2.50m [26.87]; Depth > 2.50m [5.37]; Unskilled Labor [288 h]; Plumber [144 h]; Excavator [144 h]; Skilled Labor [144 h] → Unskilled Labor [288 h]; Plumber [144 h]; Excavator [144 h]; Skilled Labor [144 h]; Depth Between 0m to 1.50m [6.72]; Depth Between 1.50m to 2.50m [3.36]; Depth > 2.50m [1.34]; Depth Between 0m to 1.50m [617.91]; Depth Between 0m to 1.50m [47.01]; Depth Between 1.50m to 2.50m [30.22]; Depth > 2.50m [6.72]; Depth Between 0m to 1.50m [570.9]; Depth Between 1.50m to 2.50m [174.63]; Depth > 2.50m [16.79]; Depth Between 0m to 1.50m [40.3]; Depth Between 1.50m to 2.50m [26.87]; Depth > 2.50m [5.37] |
| CO-TSE-ML-170 | Installation Works for Main Line Valves of Treated Sewage Effluent (Tse) |  |  | -70d → -69.5d |  | resources Gate valves dia 50 mm [1.49]; Gate valves dia 100 mm [20.9]; Gate valves dia 150 mm [7.46]; Gate valves dia 200 mm [2.99]; Air valves with dia 50 mm [1.49]; Washout valve dia 100 mm [2.99]; Flow meter dia 150 mm [1.49]; Unskilled Labor [192 h]; Plumber [96 h] → Unskilled Labor [192 h]; Plumber [96 h]; Gate valves dia 50 mm [1.49]; Gate valves dia 100 mm [20.9]; Gate valves dia 150 mm [7.46]; Gate valves dia 200 mm [2.99]; Air valves with dia 50 mm [1.49]; Washout valve dia 100 mm [2.99]; Flow meter dia 150 mm [1.49] |
| CO-TSE-ML-180 | Trench Backfilling and Compaction Works for Treated Sewage Effluent (Tse) | 2027-03-04 → 2027-03-03 (-1d) |  | -74.5d → -74d |  | resources Depth Between 0m to 1.50m [2.99]; Depth Between 1.50m to 2.50m [1.49]; Depth > 2.50m [0.6]; Depth Between 0m to 1.50m [274.63]; Depth Between 0m to 1.50m [20.9]; Depth Between 1.50m to 2.50m [13.43]; Depth > 2.50m [2.99]; Depth Between 0m to 1.50m [253.73]; Depth Between 1.50m to 2.50m [77.61]; Depth > 2.50m [7.46]; Depth Between 0m to 1.50m [17.91]; Depth Between 1.50m to 2.50m [11.94]; Depth > 2.50m [2.39]; Unskilled Labor [144 h]; Excavator [144 h]; JCB [144 h]; Dump Truck [144 h] → Unskilled Labor [144 h]; Excavator [144 h]; JCB [144 h]; Dump Truck [144 h]; Depth Between 0m to 1.50m [2.99]; Depth Between 1.50m to 2.50m [1.49]; Depth > 2.50m [0.6]; Depth Between 0m to 1.50m [274.63]; Depth Between 0m to 1.50m [20.9]; Depth Between 1.50m to 2.50m [13.43]; Depth > 2.50m [2.99]; Depth Between 0m to 1.50m [253.73]; Depth Between 1.50m to 2.50m [77.61]; Depth > 2.50m [7.46]; Depth Between 0m to 1.50m [17.91]; Depth Between 1.50m to 2.50m [11.94]; Depth > 2.50m [2.39] |
| CO-TSE-ML-190 | Installation Works for Valve and Washout Chambers of Treated Sewage Effluent (Tse) | 2027-03-20 → 2027-03-18 (-2d) |  | -55.5d → -55d |  | resources Wash out chamber (2500x 2500mm) [2.99]; Air valve chamber (1000x 1000 mm) [5.23]; Flow meter chamber (1500x 3000 mm) [1.49]; Unskilled Labor [192 h]; Plumber [96 h]; Excavator [96 h]; Mobile Crane [96 h] → Unskilled Labor [192 h]; Plumber [96 h]; Excavator [96 h]; Mobile Crane [96 h]; Wash out chamber (2500x 2500mm) [2.99]; Air valve chamber (1000x 1000 mm) [5.23]; Flow meter chamber (1500x 3000 mm) [1.49] |
| MV | **Medium Voltage Network** | 2027-01-30 → 2027-01-28 (-2d) |  |  |  |  |
| CW | **Cabling Works** | 2027-01-30 → 2027-01-28 (-2d) |  |  |  |  |
| CO-MV-ML-250 | Trench Excavation and Bedding Works for Medium Voltage Network | 2027-01-30 → 2027-01-28 (-2d) |  | -77.5d → -77d | ENG-SH-MV-A-110, ENG-MT-MV-ML-A-100, PRO-MV-1DL-100, PRO-MV-DL-100, CO-TSE-ML-150 SS, CO-SD-ML-130, CO-SD-MH-220, CO-SD-CB-170, CO-SD-ML-160, CO-SD-MH-260, CO-SD-CB-200 SS, CO-SW-ML-130, CO-SW-MH-200, CO-SW-ML-160, CO-SW-MH-250, CO-PW-ML-110 → ENG-SH-MV-A-110, ENG-MT-MV-ML-A-100, PRO-MV-1DL-100, PRO-MV-DL-100, CO-TSE-ML-150 SS, CO-SW-TF-100, CO-SD-ML-130, CO-SD-MH-220, CO-SD-CB-170, CO-SD-ML-160, CO-SD-MH-260, CO-SD-CB-200 SS, CO-SW-ML-130, CO-SW-MH-200, CO-SW-ML-160, CO-SW-MH-250, CO-PW-ML-110 | resources Excavation for Trench size 40cm wide and 80cm deep (for 1 cable) [299.34]; Excavation for Trench Size 60cm wide and 80cm deep (for 2 cables) [149.41]; Excavation for Trench Size 90cm wide and 80cm deep (for 3 cables) [207.94]; Excavation for Trench Size 180cm wide and 80cm deep (for 6 cables) [92.42]; Excavation for Trench Size 210 cm wide and 80cm deep (for 7 cables) [107.82]; Excavation for Trench Size 240cm wide and 80cm deep (for 8 cables) [659.25]; Unskilled Labor [168 h]; Excavator [168 h]; JCB [168 h] → Unskilled Labor [168 h]; Excavator [168 h]; JCB [168 h]; Excavation for Trench size 40cm wide and 80cm deep (for 1 cable) [299.34]; Excavation for Trench Size 60cm wide and 80cm deep (for 2 cables) [149.41]; Excavation for Trench Size 90cm wide and 80cm deep (for 3 cables) [207.94]; Excavation for Trench Size 180cm wide and 80cm deep (for 6 cables) [92.42]; Excavation for Trench Size 210 cm wide and 80cm deep (for 7 cables) [107.82]; Excavation for Trench Size 240cm wide and 80cm deep (for 8 cables) [659.25] |
| CO-MV-ML-260 | Cable Laying Works for Medium Voltage Network | 2027-02-13 → 2027-02-11 (-2d) |  | -77.5d → -77d |  | resources Duct bank for (33) cables [131.64]; Duct bank for (21) cables [208.96]; Duct bank for (15) cables [62.78]; HV Cable Road Crossing [67.02]; Electrical Technician [168 h]; Cable Drum Trailer [168 h]; Boom Truck [168 h]; Pulling Machine [168 h] → Electrical Technician [168 h]; Cable Drum Trailer [168 h]; Boom Truck [168 h]; Pulling Machine [168 h]; Duct bank for (33) cables [131.64]; Duct bank for (21) cables [208.96]; Duct bank for (15) cables [62.78]; HV Cable Road Crossing [67.02] |
| CO-MV-ML-270 | Trench Backfilling and Compaction Works for Medium Voltage Network | 2027-03-13 → 2027-03-08 (-5d) |  | -77.5d → -77d |  | resources Duct bank for (33) cables [37.61]; Duct bank for (21) cables [59.7]; Duct bank for (15) cables [17.94]; HV Cable Road Crossing [19.15]; Unskilled Labor [168 h]; Excavator [168 h]; JCB [168 h]; Dump Truck [168 h] → Unskilled Labor [168 h]; Excavator [168 h]; JCB [168 h]; Dump Truck [168 h]; Duct bank for (33) cables [37.61]; Duct bank for (21) cables [59.7]; Duct bank for (15) cables [17.94]; HV Cable Road Crossing [19.15] |
| SL | **Street Lighting Network** | 2027-01-30 → 2027-01-28 (-2d) |  |  |  |  |
| LP | **Lighting Poles Works** | 2027-01-30 → 2027-01-28 (-2d) |  |  |  |  |
| CO-SL-LP-300 | Foundation Excavation Works for Lighting Poles of Street Lighting Network | 2027-01-30 → 2027-01-28 (-2d) |  | -74.5d → -74d |  | resources Lighting poles with 1 arm, height of (12) meters, including the power distribution box, cables, and RCC foundation. [5.82]; Lighting poles with 2 arms, height of (12) meters, including the power distribution box, cables, and RCC foundation. [5.37]; Unskilled Labor [96 h]; Excavator [96 h]; JCB [96 h]; Dump Truck [96 h] → Unskilled Labor [96 h]; Excavator [96 h]; JCB [96 h]; Dump Truck [96 h]; Lighting poles with 1 arm, height of (12) meters, including the power distribution box, cables, and RCC foundation. [5.82]; Lighting poles with 2 arms, height of (12) meters, including the power distribution box, cables, and RCC foundation. [5.37] |
| CO-SL-LP-310 | Installation Works for Lighting Poles Foundation of Street Lighting Network | 2027-02-08 → 2027-02-07 (-1d) | 2027-02-20 → 2027-02-18 (-2d) | -74.5d → -74d |  | resources Lighting poles with 1 arm, height of (12) meters, including the power distribution box, cables, and RCC foundation. [11.64]; Lighting poles with 2 arms, height of (12) meters, including the power distribution box, cables, and RCC foundation. [10.75]; Unskilled Labor [96 h]; Boom Truck [96 h]; Skilled Labor [96 h] → Unskilled Labor [96 h]; Boom Truck [96 h]; Skilled Labor [96 h]; Lighting poles with 1 arm, height of (12) meters, including the power distribution box, cables, and RCC foundation. [11.64]; Lighting poles with 2 arms, height of (12) meters, including the power distribution box, cables, and RCC foundation. [10.75] |
| CO-SL-LP-320 | Installation Works for Lighting Poles of Street Lighting Network |  | 2027-03-06 → 2027-03-04 (-2d) | -74.5d → -74d |  | resources Lighting poles with 1 arm, height of (12) meters, including the power distribution box, cables, and RCC foundation. [23.28]; Lighting poles with 2 arms, height of (12) meters, including the power distribution box, cables, and RCC foundation. [21.49]; Electrical Technician [112 h]; Boom Truck [112 h]; Skilled Labor [112 h] → Electrical Technician [112 h]; Boom Truck [112 h]; Skilled Labor [112 h]; Lighting poles with 1 arm, height of (12) meters, including the power distribution box, cables, and RCC foundation. [23.28]; Lighting poles with 2 arms, height of (12) meters, including the power distribution box, cables, and RCC foundation. [21.49] |
| CO-SL-LP-210 | Backfilling Works for Lighting Poles of Street Lighting Network | 2027-03-06 → 2027-03-04 (-2d) |  | -74.5d → -74d |  | resources Lighting poles with 1 arm, height of (12) meters, including the power distribution box, cables, and RCC foundation. [5.82]; Lighting poles with 2 arms, height of (12) meters, including the power distribution box, cables, and RCC foundation. [5.37]; Unskilled Labor [96 h]; Excavator [96 h]; JCB [96 h]; Dump Truck [96 h] → Unskilled Labor [96 h]; Excavator [96 h]; JCB [96 h]; Dump Truck [96 h]; Lighting poles with 1 arm, height of (12) meters, including the power distribution box, cables, and RCC foundation. [5.82]; Lighting poles with 2 arms, height of (12) meters, including the power distribution box, cables, and RCC foundation. [5.37] |
| CW | **Cabling Works** | 2027-02-08 → 2027-02-07 (-1d) |  |  |  |  |
| CO-SL-CL-250 | Trench Excavation and Bedding Works for Street Lighting Network | 2027-02-08 → 2027-02-07 (-1d) | 2027-02-18 → 2027-02-17 (-1d) | -71.5d → -71d |  | resources Road crossing ducts, 2 ways (2 x 150mm HDPE) [341.33]; Road crossing ducts, 2 ways (2 x 110mm UPVC) [135.6]; Road crossing ducts, 3 ways (3 x 110mm UPVC) [45.06]; Unskilled Labor [240 h]; Excavator [240 h]; JCB [240 h] → Unskilled Labor [240 h]; Excavator [240 h]; JCB [240 h]; Road crossing ducts, 2 ways (2 x 150mm HDPE) [341.33]; Road crossing ducts, 2 ways (2 x 110mm UPVC) [135.6]; Road crossing ducts, 3 ways (3 x 110mm UPVC) [45.06] |
| CO-SL-CL-260 | Cable Laying Works for Street Lighting Network | 2027-02-18 → 2027-02-17 (-1d) | 2027-03-01 → 2027-02-28 (-1d) | -71.5d → -71d |  | resources 4C-300mm2 CU/XLPE / PVC ARMORED CABLE [83.58]; 4C-240mm2 CU/XLPE / PVC ARMORED CABLE [47.76]; 4C-185mm2 CU/XLPE / PVC ARMORED CABLE [47.76]; 4C-50mm2 CU/XLPE / PVC ARMORED CABLE [179.1]; 4C-16mm2 CU/XLPE / PVC ARMORED CABLE [4161.19]; 4C-16MM2 CU/XLPE / PVC CABLE [1665.67]; 1Cx150sq.mm2,Cu, PVC wire [89.55]; 1Cx120sq.mm2,Cu, PVC wire [89.55]; 1Cx95sq.mm,Cu, PVC wire [47.76]; 1Cx70sq.mm2,Cu, PVC wire [23.88]; 1Cx25sq.mm2,Cu, PVC wire [89.55]; 1Cx16sq.mm2,Cu, PVC wire [4161.19]; 1Cx10sq.mm2,Cu, PVC wire [59.7]; Electrical Technician [240 h]; Cable Drum Trailer [240 h]; Boom Truck [240 h]; Pulling Machine [240 h] → Electrical Technician [240 h]; Cable Drum Trailer [240 h]; Boom Truck [240 h]; Pulling Machine [240 h]; 4C-300mm2 CU/XLPE / PVC ARMORED CABLE [83.58]; 4C-240mm2 CU/XLPE / PVC ARMORED CABLE [47.76]; 4C-185mm2 CU/XLPE / PVC ARMORED CABLE [47.76]; 4C-50mm2 CU/XLPE / PVC ARMORED CABLE [179.1]; 4C-16mm2 CU/XLPE / PVC ARMORED CABLE [4161.19]; 4C-16MM2 CU/XLPE / PVC CABLE [1665.67]; 1Cx150sq.mm2,Cu, PVC wire [89.55]; 1Cx120sq.mm2,Cu, PVC wire [89.55]; 1Cx95sq.mm,Cu, PVC wire [47.76]; 1Cx70sq.mm2,Cu, PVC wire [23.88]; 1Cx25sq.mm2,Cu, PVC wire [89.55]; 1Cx16sq.mm2,Cu, PVC wire [4161.19]; 1Cx10sq.mm2,Cu, PVC wire [59.7] |
| CO-SL-CL-270 | Trench Backfilling and Compaction Works for Street Lighting Network | 2027-03-06 → 2027-03-04 (-2d) |  | -74.5d → -74d |  | resources 4C-300mm2 CU/XLPE / PVC ARMORED CABLE [20.9]; 4C-240mm2 CU/XLPE / PVC ARMORED CABLE [11.94]; 4C-185mm2 CU/XLPE / PVC ARMORED CABLE [11.94]; 4C-50mm2 CU/XLPE / PVC ARMORED CABLE [44.78]; 4C-16mm2 CU/XLPE / PVC ARMORED CABLE [1040.3]; 4C-16MM2 CU/XLPE / PVC CABLE [416.42]; 1Cx150sq.mm2,Cu, PVC wire [22.39]; 1Cx120sq.mm2,Cu, PVC wire [22.39]; 1Cx95sq.mm,Cu, PVC wire [11.94]; 1Cx70sq.mm2,Cu, PVC wire [5.97]; 1Cx25sq.mm2,Cu, PVC wire [22.39]; 1Cx16sq.mm2,Cu, PVC wire [1040.3]; 1Cx10sq.mm2,Cu, PVC wire [14.93]; Unskilled Labor [240 h]; Excavator [240 h]; JCB [240 h]; Dump Truck [240 h] → Unskilled Labor [240 h]; Excavator [240 h]; JCB [240 h]; Dump Truck [240 h]; 4C-300mm2 CU/XLPE / PVC ARMORED CABLE [20.9]; 4C-240mm2 CU/XLPE / PVC ARMORED CABLE [11.94]; 4C-185mm2 CU/XLPE / PVC ARMORED CABLE [11.94]; 4C-50mm2 CU/XLPE / PVC ARMORED CABLE [44.78]; 4C-16mm2 CU/XLPE / PVC ARMORED CABLE [1040.3]; 4C-16MM2 CU/XLPE / PVC CABLE [416.42]; 1Cx150sq.mm2,Cu, PVC wire [22.39]; 1Cx120sq.mm2,Cu, PVC wire [22.39]; 1Cx95sq.mm,Cu, PVC wire [11.94]; 1Cx70sq.mm2,Cu, PVC wire [5.97]; 1Cx25sq.mm2,Cu, PVC wire [22.39]; 1Cx16sq.mm2,Cu, PVC wire [1040.3]; 1Cx10sq.mm2,Cu, PVC wire [14.93] |
| DPB | **Distrubution Panel Boards** | 2027-03-31 → 2027-03-30 (-1d) |  |  |  |  |
| CO-SL-DB-250 | Foundation Excavation Works For Panel Boards of Street Lighting Network | 2027-03-31 → 2027-03-30 (-1d) |  | -70d → -75.5d |  | resources Street Lighting panels LCP (01) [0.3]; Unskilled Labor [48 h]; Excavator [48 h]; JCB [48 h]; Dump Truck [48 h] → Unskilled Labor [48 h]; Excavator [48 h]; JCB [48 h]; Dump Truck [48 h]; Street Lighting panels LCP (01) [0.3] |
| CO-SL-DB-260 | Installation Works for Panel Board Concrete Foundations of Street Lighting Network | 2027-04-07 → 2027-04-06 (-1d) |  | -70d → -75.5d |  | resources Street Lighting panels LCP (01) [0.3]; Unskilled Labor [48 h]; Boom Truck [48 h]; Skilled Labor [48 h] → Unskilled Labor [48 h]; Boom Truck [48 h]; Skilled Labor [48 h]; Street Lighting panels LCP (01) [0.3] |
| CO-SL-DB-270 | Installation Works for Lighting Panel Boards of Street Lighting Network | 2027-04-14 → 2027-04-13 (-1d) |  | -70d → -75.5d |  | resources Street Lighting panels LCP (01) [0.6]; Electrical Technician [48 h]; Boom Truck [48 h]; Skilled Labor [48 h] → Electrical Technician [48 h]; Boom Truck [48 h]; Skilled Labor [48 h]; Street Lighting panels LCP (01) [0.6] |
| CO-SL-DB-220 | A wall of concrete blocks to install the KWH meter of Street Lighting Network | 2027-04-21 → 2027-04-20 (-1d) |  | -69d → -68.5d |  | resources Supply and installation of KWH meter mounting frame including concrete block for installation of KWH meter [8.96]; Unskilled Labor [96 h]; Mason [48 h] → Unskilled Labor [96 h]; Mason [48 h]; Supply and installation of KWH meter mounting frame including concrete block for installation of KWH meter [8.96] |
| TE | **Telecom Network** | 2027-02-13 → 2027-02-11 (-2d) |  |  |  |  |
| PD | **Ducts Works** | 2027-02-13 → 2027-02-11 (-2d) |  |  |  |  |
| CO-TE-DW-100 | Trench Excavation and Bedding Works for Ducts of Telecom Network | 2027-02-13 → 2027-02-11 (-2d) | 2027-02-18 → 2027-02-17 (-1d) | -75.5d → -76.5d |  | resources 2-ways ducts, 50mm diameter [192.54]; 6-ways ducts, 110mm diameter [776.87]; 9-ways ducts, 6 x 160mm & 2 x 100mm [1139.55]; Unskilled Labor [168 h]; Excavator [168 h]; Skilled Labor [168 h] → Unskilled Labor [168 h]; Excavator [168 h]; Skilled Labor [168 h]; 2-ways ducts, 50mm diameter [192.54]; 6-ways ducts, 110mm diameter [776.87]; 9-ways ducts, 6 x 160mm & 2 x 100mm [1139.55] |
| CO-TE-DW-110 | Pipes Laying Works for Ducts of Telecom Network | 2027-02-18 → 2027-02-17 (-1d) | 2027-02-24 → 2027-02-23 (-1d) | -75.5d → -76.5d |  | resources 2-ways ducts, 50mm diameter [423.58]; 6-ways ducts, 110mm diameter [1709.1]; 9-ways ducts, 6 x 160mm & 2 x 100mm [2507.01]; Unskilled Labor [336 h]; Electrical Technician [168 h]; Excavator [168 h] → Unskilled Labor [336 h]; Electrical Technician [168 h]; Excavator [168 h]; 2-ways ducts, 50mm diameter [423.58]; 6-ways ducts, 110mm diameter [1709.1]; 9-ways ducts, 6 x 160mm & 2 x 100mm [2507.01] |
| CO-TE-DW-130 | Trench Backfilling and Compaction Works for Ducts of Telecom Network | 2027-02-24 → 2027-02-23 (-1d) |  |  |  | resources 2-ways ducts, 50mm diameter [154.03]; 6-ways ducts, 110mm diameter [621.49]; 9-ways ducts, 6 x 160mm & 2 x 100mm [911.64]; Unskilled Labor [168 h]; Excavator [168 h]; JCB [168 h]; Dump Truck [168 h] → Unskilled Labor [168 h]; Excavator [168 h]; JCB [168 h]; Dump Truck [168 h]; 2-ways ducts, 50mm diameter [154.03]; 6-ways ducts, 110mm diameter [621.49]; 9-ways ducts, 6 x 160mm & 2 x 100mm [911.64] |
| CO-TE-DW-120 | Pouring Road Crossing Concrete Encasement | 2027-03-13 → 2027-03-08 (-5d) |  |  |  | resources 6 PVC ducts 150x200 mm (60mm diameter) [241.79]; 6 PVC ducts 600x800 mm (120mm diameter) [420.9]; 6 PVC ducts 800x800 mm (170mm diameter) [600]; Unskilled Labor [112 h]; Mason [56 h] → Unskilled Labor [112 h]; Mason [56 h]; 6 PVC ducts 150x200 mm (60mm diameter) [241.79]; 6 PVC ducts 600x800 mm (120mm diameter) [420.9]; 6 PVC ducts 800x800 mm (170mm diameter) [600] |
| MH | **Manholes Works** | 2027-02-24 → 2027-02-23 (-1d) |  |  |  |  |
| CO-TE-MH-140 | Excavation Works for Manholes of Telecom Network | 2027-02-24 → 2027-02-23 (-1d) |  | -71.8d → -76.5d |  | resources Manhole Type 2 (1600 x 1600 x 2000) [9.33]; Manhole Type 3 (1200 x 1200 x 2000) [11.57]; Unskilled Labor [112 h]; Excavator [112 h]; Skilled Labor [112 h] → Unskilled Labor [112 h]; Excavator [112 h]; Skilled Labor [112 h]; Manhole Type 2 (1600 x 1600 x 2000) [9.33]; Manhole Type 3 (1200 x 1200 x 2000) [11.57] |
| CO-TE-MH-150 | Installation Works for Manholes of Telecom Network | 2027-03-04 → 2027-03-03 (-1d) |  | -71.8d → -76.5d |  | resources Manhole Type 2 (1600 x 1600 x 2000) [20.52]; Manhole Type 3 (1200 x 1200 x 2000) [25.45]; Unskilled Labor [224 h]; Plumber [112 h]; Excavator [112 h]; Mobile Crane [112 h] → Unskilled Labor [224 h]; Plumber [112 h]; Excavator [112 h]; Mobile Crane [112 h]; Manhole Type 2 (1600 x 1600 x 2000) [20.52]; Manhole Type 3 (1200 x 1200 x 2000) [25.45] |
| CO-TE-MH-160 | Backfilling Works for Manholes of Telecom Network | 2027-03-17 → 2027-03-16 (-1d) |  | -71.8d → -76.5d |  | resources Manhole Type 2 (1600 x 1600 x 2000) [7.46]; Manhole Type 3 (1200 x 1200 x 2000) [9.25]; Unskilled Labor [112 h]; Excavator [112 h]; JCB [112 h]; Dump Truck [112 h] → Unskilled Labor [112 h]; Excavator [112 h]; JCB [112 h]; Dump Truck [112 h]; Manhole Type 2 (1600 x 1600 x 2000) [7.46]; Manhole Type 3 (1200 x 1200 x 2000) [9.25] |
| DD | **CCTV System Wroks** | 2027-03-25 → 2027-03-24 (-1d) |  |  |  |  |
| CO-TE-CTV-100 | Digging and Pulling Trenches PVC ducts , Backfilling, Excavations, of Power Cable | 2027-03-25 → 2027-03-24 (-1d) |  | -66d → -76.5d |  | resources 6 PVC ducts 200x150 mm (60mm diameter) [205.97]; 2-ways ducts, 50mm diameter [743.28]; Unskilled Labor [56 h]; Electrical Technician [112 h]; Excavator [56 h] → Unskilled Labor [56 h]; Electrical Technician [112 h]; Excavator [56 h]; 6 PVC ducts 200x150 mm (60mm diameter) [205.97]; 2-ways ducts, 50mm diameter [743.28] |
| CO-TE-CTV-110 | Installation of Network Cable Cat.6A from Network switch to CCTV Camera and ACS Device | 2027-03-31 → 2027-03-30 (-1d) |  | -66d → -76.5d |  | resources NVR Server with RAID (5, 6 or 10) to record all cameras storage 80TB with all hardware / software / licenses etc. [2.99]; VMS Server with RAID (5, 6 or 10) complete Hardware / Software with one Color Laser Printer and all associated [2.99]; Licenses for Cameras, Workstations and Keyboards [1.49]; Work Station (MMI with two monitors each, for Monitoring for CCTV & ACS) [1.49]; Keyboard with joystick for CCTV with all accessories as per specification [1.49]; Pole mounted IP( PoE) Fixed camera, 5MP,IP 66, IR illumination, 3-8mm varifocal, auto iris lens type [65.67]; Wall mounted IP( PoE) Fixed camera, 5MP,IP 66, IR illumination, 3-8mm varifocal, auto iris lens type [116.42]; 5MP Dome camera ceiling Mounted IP (PoE) indoor [25.37]; 5MP PTZ Multi Sensor Camera IP(PoE) 360 Degree View Outdoor with accessories (IP 66) [10.45]; 8 Port Industrial PoE Switch 10/100BaseT (0 deg to +70 deg. Celsius) [17.91]; Filed Equipment cabinet (FEC), with fan and ventilation, NEMEX 4X ,door, minimum size (600x600x400mm) [17.91]; IP Phone Communication server (hot standby) 50 Port equipped, Gateway, Gatekeeper, H.323, SIP, redundant Power etc. [4.48]; IP Phone Voice gateway [1.49]; Voice IP Phone [1.49]; NMS Server for IP phone and NETWORK Elements [1.49]; NMS Workstation [1.49]; Firm Ware, software & licenses [1.49]; Data Cable [1.49]; Power Cable [1.49]; Layer 3, 24 Port non-PoE switch10/1000BaseT/LX (-40 deg to +70 deg. Celsius), stack module and associated [2.99]; Layer 2, 24 Port non-PoE switch10/1000BaseT (-40 deg to +70 deg. Celsiu [8.96]; Network Management System Server [2.99]; Network Management System workstation [1.49]; 42U rack dimension (W x H x L) 800 x 2000 x 1000 mm [2.99]; 12U rack dimension (W x H x L) 600 x 625 x 600 mm [1.49]; 06C Optical Fiber SM [2716.42]; 48C Optical Fiber SM [8656.72]; 48 Core Splice Closure [10.45]; Optical fiber patch cord 5m [35.82]; Data Cable (STP CAT 6A) [15403]; 3C Power Cable armored 1.5mm2 [15403]; 3C Power Cable armored 2.5 mm2 [15403]; UTP CAT6A Patch Cord 1m/3m/5m [34.33]; Unskilled Labor [56 h]; Electrical Technician [112 h] → Unskilled Labor [56 h]; Electrical Technician [112 h]; NVR Server with RAID (5, 6 or 10) to record all cameras storage 80TB with all hardware / software / licenses etc. [2.99]; VMS Server with RAID (5, 6 or 10) complete Hardware / Software with one Color Laser Printer and all associated [2.99]; Licenses for Cameras, Workstations and Keyboards [1.49]; Work Station (MMI with two monitors each, for Monitoring for CCTV & ACS) [1.49]; Keyboard with joystick for CCTV with all accessories as per specification [1.49]; Pole mounted IP( PoE) Fixed camera, 5MP,IP 66, IR illumination, 3-8mm varifocal, auto iris lens type [65.67]; Wall mounted IP( PoE) Fixed camera, 5MP,IP 66, IR illumination, 3-8mm varifocal, auto iris lens type [116.42]; 5MP Dome camera ceiling Mounted IP (PoE) indoor [25.37]; 5MP PTZ Multi Sensor Camera IP(PoE) 360 Degree View Outdoor with accessories (IP 66) [10.45]; 8 Port Industrial PoE Switch 10/100BaseT (0 deg to +70 deg. Celsius) [17.91]; Filed Equipment cabinet (FEC), with fan and ventilation, NEMEX 4X ,door, minimum size (600x600x400mm) [17.91]; IP Phone Communication server (hot standby) 50 Port equipped, Gateway, Gatekeeper, H.323, SIP, redundant Power etc. [4.48]; IP Phone Voice gateway [1.49]; Voice IP Phone [1.49]; NMS Server for IP phone and NETWORK Elements [1.49]; NMS Workstation [1.49]; Firm Ware, software & licenses [1.49]; Data Cable [1.49]; Power Cable [1.49]; Layer 3, 24 Port non-PoE switch10/1000BaseT/LX (-40 deg to +70 deg. Celsius), stack module and associated [2.99]; Layer 2, 24 Port non-PoE switch10/1000BaseT (-40 deg to +70 deg. Celsiu [8.96]; Network Management System Server [2.99]; Network Management System workstation [1.49]; 42U rack dimension (W x H x L) 800 x 2000 x 1000 mm [2.99]; 12U rack dimension (W x H x L) 600 x 625 x 600 mm [1.49]; 06C Optical Fiber SM [2716.42]; 48C Optical Fiber SM [8656.72]; 48 Core Splice Closure [10.45]; Optical fiber patch cord 5m [35.82]; Data Cable (STP CAT 6A) [15403]; 3C Power Cable armored 1.5mm2 [15403]; 3C Power Cable armored 2.5 mm2 [15403]; UTP CAT6A Patch Cord 1m/3m/5m [34.33] |
| CO-TE-CTV-130 | Installation of Access Control System | 2027-04-06 → 2027-04-05 (-1d) |  | -66d → -76.5d |  | resources Access Control Unit [7.46]; Access Card Reader [7.46]; Magnetic Lock [7.46]; Break Glass [5.97]; Exit Push button [7.46]; Door Sensor [7.46]; Biometrics Reader [11.94]; Unskilled Labor [56 h]; Electrical Technician [112 h] → Unskilled Labor [56 h]; Electrical Technician [112 h]; Access Control Unit [7.46]; Access Card Reader [7.46]; Magnetic Lock [7.46]; Break Glass [5.97]; Exit Push button [7.46]; Door Sensor [7.46]; Biometrics Reader [11.94] |
| RD | **Road Works** | 2027-03-15 → 2027-03-14 (-1d) | 2027-05-12 → 2027-05-11 (-1d) |  |  |  |
| 3 | **ST+1000:ST+1531** | 2027-03-15 → 2027-03-14 (-1d) | 2027-04-15 → 2027-04-14 (-1d) |  |  |  |
| RD | **Pre-Bituminous Construction** | 2027-03-15 → 2027-03-14 (-1d) | 2027-04-15 → 2027-04-14 (-1d) |  |  |  |
| CO-RD-PB-140 | Subgrade Layer for Road Works | 2027-03-15 → 2027-03-14 (-1d) | 2027-03-30 → 2027-03-29 (-1d) | -77.5d → -77d |  | resources Subgrade [2294.03]; Loader [56 h]; Dump Truck [56 h]; Water Tanker [56 h]; Compactor [56 h]; Grader [56 h] → Loader [56 h]; Dump Truck [56 h]; Water Tanker [56 h]; Compactor [56 h]; Grader [56 h]; Subgrade [2294.03] |
| CO-RD-PB-150 | Aggregate Base Course Layer for Road Works |  | 2027-04-15 → 2027-04-14 (-1d) | -77.5d → -77d |  | resources Aggregate base course [774.18]; Loader [56 h]; Dump Truck [56 h]; Water Tanker [56 h]; Compactor [56 h]; Grader [56 h] → Loader [56 h]; Dump Truck [56 h]; Water Tanker [56 h]; Compactor [56 h]; Grader [56 h]; Aggregate base course [774.18] |
| 2 | **ST+500:ST+1000** | 2027-03-31 → 2027-03-30 (-1d) | 2027-04-28 → 2027-04-27 (-1d) |  |  |  |
| RD | **Pre-Bituminous Construction** | 2027-03-31 → 2027-03-30 (-1d) | 2027-04-28 → 2027-04-27 (-1d) |  |  |  |
| CO-RD-PB-120 | Subgrade Layer for Road Works | 2027-03-31 → 2027-03-30 (-1d) |  | -76.8d → -76.3d | CO-RD-PB-140, CO-SD-ML-160, CO-SD-MH-260, CO-SD-CB-200, CO-SW-ML-160, CO-SW-MH-250, CO-PW-ML-130, CO-PW-VC-220, CO-PW-FH-160 SS+2d, CO-TSE-ML-180 SS+2d, CO-IR-ML-130 SS+2d, CO-MV-ML-270, CO-SL-LP-210, CO-SL-CL-270, CO-TE-DW-120, CO-TE-MH-160, CO-TE-DW-130, CO-TSE-ML-180, CO-SD-PO-100-P1 → CO-RD-PB-140, CO-SD-ML-160, CO-SD-MH-260, CO-SD-CB-200, CO-SW-ML-160, CO-SW-MH-250, CO-PW-ML-130, CO-PW-VC-220, CO-PW-FH-160 SS+2d, CO-TSE-ML-180 SS+2d, CO-IR-ML-130 SS+2d, CO-MV-ML-270, CO-SL-LP-210, CO-SL-CL-270, CO-TE-DW-120, CO-TE-MH-160, CO-TE-DW-130, CO-TSE-ML-180 | resources Subgrade [801.49]; Loader [56 h]; Dump Truck [56 h]; Water Tanker [56 h]; Compactor [56 h]; Grader [56 h] → Loader [56 h]; Dump Truck [56 h]; Water Tanker [56 h]; Compactor [56 h]; Grader [56 h]; Subgrade [801.49] |
| CO-RD-PB-130 | Aggregate Base Course Layer for Road Works |  | 2027-04-28 → 2027-04-27 (-1d) | -77.5d → -77d |  | resources Aggregate base course [774.18]; Loader [56 h]; Dump Truck [56 h]; Water Tanker [56 h]; Compactor [56 h]; Grader [56 h] → Loader [56 h]; Dump Truck [56 h]; Water Tanker [56 h]; Compactor [56 h]; Grader [56 h]; Aggregate base course [774.18] |
| 1 | **ST+01:ST+500** |  | 2027-05-12 → 2027-05-11 (-1d) |  |  |  |
| RD | **Pre-Bituminous Construction** |  | 2027-05-12 → 2027-05-11 (-1d) |  |  |  |
| CO-RD-PB-100 | Subgrade Layer for Road Works |  |  | -76.8d → -76.3d |  | resources Subgrade [1326.72]; Loader [56 h]; Dump Truck [56 h]; Water Tanker [56 h]; Compactor [56 h]; Grader [56 h] → Loader [56 h]; Dump Truck [56 h]; Water Tanker [56 h]; Compactor [56 h]; Grader [56 h]; Subgrade [1326.72] |
| CO-RD-PB-110 | Aggregate Base Course Layer for Road Works |  | 2027-05-12 → 2027-05-11 (-1d) | -77.5d → -77d |  | resources Aggregate base course [663.58]; Loader [56 h]; Dump Truck [56 h]; Water Tanker [56 h]; Compactor [56 h]; Grader [56 h] → Loader [56 h]; Dump Truck [56 h]; Water Tanker [56 h]; Compactor [56 h]; Grader [56 h]; Aggregate base course [663.58] |
| 3 | **Finishes for Infrastructure Networks** | 2027-01-11 → 2027-01-05 (-6d) | 2027-05-30 → 2027-05-29 (-1d) |  |  |  |
| 11 | **Storm Drainage Network** | 2027-02-01 → 2027-01-20 (-12d) | 2027-04-17 → 2027-04-07 (-10d) |  |  |  |
| TF | **Testing and Finishes** | 2027-02-01 → 2027-01-20 (-12d) | 2027-04-17 → 2027-04-07 (-10d) |  |  |  |
| CO-SD-ML-TF-100 | Testing Work for Pipes of Storm Drainage Network | 2027-02-01 → 2027-01-20 (-12d) | 2027-02-14 → 2027-01-31 (-14d) | -56d → -66.5d |  | resources Depth Between 0m to 1.50m [14.18]; Depth Between 1.50m to 2.50m [420.75]; Depth > 2.50m [2.24]; Depth Between 1.50m to 2.50m [81.79]; Depth Between 2.50m to 3.50m [65.52]; Depth > 3.50m [2.24]; Depth Between 2.50m to 3.50m [28.51]; Depth Between 0m to 1.50m [4.18]; Depth Between 1.50m to 2.50m [1.49]; Depth Between 2.50m to 3.50m [14.03]; Depth > 3.50m [1.04]; Depth Between 2.50m to 3.50m [18.06]; Depth Between 3.50m to 4.50m [55.37]; Depth > 4.50m [2.24]; Depth Between 3.50m to 4.50m [110]; Depth > 4.50m [3.73]; Unskilled Labor [192 h]; Plumber [192 h]; Water Tanker [192 h] → Unskilled Labor [192 h]; Plumber [192 h]; Water Tanker [192 h]; Depth Between 0m to 1.50m [14.18]; Depth Between 1.50m to 2.50m [420.75]; Depth > 2.50m [2.24]; Depth Between 1.50m to 2.50m [81.79]; Depth Between 2.50m to 3.50m [65.52]; Depth > 3.50m [2.24]; Depth Between 2.50m to 3.50m [28.51]; Depth Between 0m to 1.50m [4.18]; Depth Between 1.50m to 2.50m [1.49]; Depth Between 2.50m to 3.50m [14.03]; Depth > 3.50m [1.04]; Depth Between 2.50m to 3.50m [18.06]; Depth Between 3.50m to 4.50m [55.37]; Depth > 4.50m [2.24]; Depth Between 3.50m to 4.50m [110]; Depth > 4.50m [3.73] |
| CO-SD-CB-TF-130 | Catch Basin Internal Finishes (Benching ) for Storm Drainage Network | 2027-02-14 → 2027-02-01 (-13d) | 2027-03-01 → 2027-02-14 (-15d) | -56d → -66.5d |  | resources Single Catch Basin 1000mm x 1000mm [14.7]; Double Catch Basin 1200mm x 2300mm [0.3]; Unskilled Labor [192 h]; Mason [192 h]; JCB [192 h] → Unskilled Labor [192 h]; Mason [192 h]; JCB [192 h]; Single Catch Basin 1000mm x 1000mm [14.7]; Double Catch Basin 1200mm x 2300mm [0.3] |
| CO-SD-CB-TF-160 | Testing Works for Catch Basins of Storm Drainage Network | 2027-03-01 → 2027-02-14 (-15d) | 2027-03-17 → 2027-03-01 (-16d) | -56d → -66.5d | CO-SD-CB-170, CO-SD-ML-TF-100, CO-SD-CB-TF-130, CO-SD-CB-200, CO-SD-PO-100-P1 → CO-SD-CB-170, CO-SD-ML-TF-100, CO-SD-CB-TF-130, CO-SD-CB-200 | resources Single Catch Basin 1000mm x 1000mm [29.4]; Double Catch Basin 1200mm x 2300mm [0.6]; Unskilled Labor [128 h]; Plumber [128 h]; Water Tanker [128 h] → Unskilled Labor [128 h]; Plumber [128 h]; Water Tanker [128 h]; Single Catch Basin 1000mm x 1000mm [29.4]; Double Catch Basin 1200mm x 2300mm [0.6] |
| CO-SD-CB-TF-110 | Install Catch Basin Cover Works for External Finishes of Storm Drainage Network | 2027-03-18 → 2027-03-01 (-17d) | 2027-03-29 → 2027-03-17 (-12d) | -56d → -66.5d |  | resources Single Catch Basin 1000mm x 1000mm [14.7]; Double Catch Basin 1200mm x 2300mm [0.3]; Unskilled Labor [192 h]; Mason [192 h]; JCB [192 h] → Unskilled Labor [192 h]; Mason [192 h]; JCB [192 h]; Single Catch Basin 1000mm x 1000mm [14.7]; Double Catch Basin 1200mm x 2300mm [0.3] |
| CO-SD-MH-TF-120 | Main Manhole Internal Finishes (Benching ) for Storm Drainage Network | 2027-03-30 → 2027-03-18 (-12d) | 2027-04-10 → 2027-03-29 (-12d) | -56d → -66.5d |  | resources MH depth 1.5 - 2.5m [4.48]; MH depth 2.5 - 3.5m [3.81]; MH depth > 3.50m [0.22]; MH depth 2.5 -3.5m [0.45]; Unskilled Labor [96 h]; Mason [96 h]; JCB [96 h] → Unskilled Labor [96 h]; Mason [96 h]; JCB [96 h]; MH depth 1.5 - 2.5m [4.48]; MH depth 2.5 - 3.5m [3.81]; MH depth > 3.50m [0.22]; MH depth 2.5 -3.5m [0.45] |
| CO-SD-MH-TF-210 | Testing Works for Manholes of Storm Drainage Network | 2027-04-11 → 2027-04-01 (-10d) | 2027-04-17 → 2027-04-07 (-10d) | -56d → -68.5d | CO-SD-MH-220, CO-SD-ML-TF-100, CO-SD-MH-TF-120, PRO-R25-SD-DL-140, CO-SD-CB-TF-110, CO-SD-MH-260, CO-SD-PO-100-P1 → CO-SD-MH-220, CO-SD-ML-TF-100, CO-SD-MH-TF-120, PRO-R25-SD-DL-140, CO-SD-CB-TF-110, CO-SD-MH-260 | resources MH depth 1.5 - 2.5m [2.99]; MH depth 2.5 - 3.5m [2.54]; MH depth > 3.50m [0.15]; MH depth 2.5 -3.5m [0.3]; Unskilled Labor [24 h]; Plumber [24 h]; Water Tanker [24 h] → Unskilled Labor [24 h]; Plumber [24 h]; Water Tanker [24 h]; MH depth 1.5 - 2.5m [2.99]; MH depth 2.5 - 3.5m [2.54]; MH depth > 3.50m [0.15]; MH depth 2.5 -3.5m [0.3] |
| 10 | **Sewage Network** | 2027-01-11 → 2027-01-05 (-6d) | 2027-04-21 → 2027-04-24 (+3d) |  |  |  |
| TF | **Testing and Finishes** | 2027-01-11 → 2027-01-05 (-6d) | 2027-04-21 → 2027-04-24 (+3d) |  |  |  |
| CO-SW-TF-100 | Final Testing For Main Line of Sewage Network | 2027-01-11 → 2027-01-05 (-6d) | 2027-01-20 → 2027-01-16 (-4d) | -27d → -65.62d |  | resources Depth Between 0m to 1.50m [5.97]; Depth Between 1.50m to 2.50m [36.72]; Depth > 2.50m [1.49]; Depth Between 0m to 1.50m [3.28]; Depth Between 1.50m to 2.50m [238.81]; Depth Between 2.50m to 3.50m [11.19]; Depth > 3.50m [2.24]; HDPE Force Main (PE 100, SDR 11, PN 16 bar) DN 160 mm diameter, in trenches depth: 0- 1.5m [3.73]; HDPE Force Main (PE 100, SDR 11, PN 16 bar) DN 160 mm diameter, in trenches depth: 1.51- 2.5m [5.97]; Unskilled Labor [96 h]; Plumber [96 h]; Water Tanker [96 h] → Unskilled Labor [96 h]; Plumber [96 h]; Water Tanker [96 h]; Depth Between 0m to 1.50m [5.97]; Depth Between 1.50m to 2.50m [36.72]; Depth > 2.50m [1.49]; Depth Between 0m to 1.50m [3.28]; Depth Between 1.50m to 2.50m [238.81]; Depth Between 2.50m to 3.50m [11.19]; Depth > 3.50m [2.24]; HDPE Force Main (PE 100, SDR 11, PN 16 bar) DN 160 mm diameter, in trenches depth: 0- 1.5m [3.73]; HDPE Force Main (PE 100, SDR 11, PN 16 bar) DN 160 mm diameter, in trenches depth: 1.51- 2.5m [5.97] |
| CO-SW-TF-130 | Main Manhole Internal Finishes (Benching + Insulation) of Sewage Network | 2027-01-21 → 2027-01-16 (-5d) | 2027-02-16 → 2027-02-09 (-7d) | -27d → -29.62d |  | resources Depth: 0 - 1.5m [0.15]; Depth: 1.51 - 2.5m [2.61]; Depth: 2.51 - 3.5m [0.15]; Depth > 3.50m [0.07]; Unskilled Labor [128 h]; Mason [128 h]; JCB [128 h] → Unskilled Labor [128 h]; Mason [128 h]; JCB [128 h]; Depth: 0 - 1.5m [0.15]; Depth: 1.51 - 2.5m [2.61]; Depth: 2.51 - 3.5m [0.15]; Depth > 3.50m [0.07] |
| CO-SW-TF-110 | Install Manhole Cover Works for External Finishes of Sewage Network | 2027-04-05 → 2027-04-11 (+6d) | 2027-04-17 → 2027-04-22 (+5d) | -60.5d → -72.75d |  | resources Depth: 0 - 1.5m [0.15]; Depth: 1.51 - 2.5m [2.61]; Depth: 2.51 - 3.5m [0.15]; Depth > 3.50m [0.07]; Unskilled Labor [128 h]; Mason [128 h]; JCB [128 h] → Unskilled Labor [128 h]; Mason [128 h]; JCB [128 h]; Depth: 0 - 1.5m [0.15]; Depth: 1.51 - 2.5m [2.61]; Depth: 2.51 - 3.5m [0.15]; Depth > 3.50m [0.07] |
| CO-SW-TF-210 | Testing Works for Main Line Manholes of Sewage Network | 2027-04-17 → 2027-04-19 (+2d) | 2027-04-21 → 2027-04-24 (+3d) | -60.5d → -72.75d | CO-SW-TF-130, CO-SW-TF-110 → CO-SW-TF-130, CO-SW-TF-110 SS+5d, CO-SW-TF-110 FF+1d | resources Depth: 0 - 1.5m [0.3]; Depth: 1.51 - 2.5m [5.22]; Depth: 2.51 - 3.5m [0.3]; Depth > 3.50m [0.15]; Unskilled Labor [64 h]; Plumber [64 h]; Water Tanker [64 h] → Unskilled Labor [64 h]; Plumber [64 h]; Water Tanker [64 h]; Depth: 0 - 1.5m [0.3]; Depth: 1.51 - 2.5m [5.22]; Depth: 2.51 - 3.5m [0.3]; Depth > 3.50m [0.15] |
| 9 | **Potable Water Network** | 2027-04-03 → 2027-04-01 (-2d) | 2027-05-08 → 2027-05-06 (-2d) |  |  |  |

| ID | Task | Start | Finish | Total float | Predecessors | Other |
| --- | --- | --- | --- | --- | --- | --- |
| TF | **Testing and Finishes** | 2027-04-03 → 2027-04-01 (-2d) | 2027-05-08 → 2027-05-06 (-2d) |  |  |  |
| CO-PW-TF-110 | Testing Work for Main Line of Potable Water Network | 2027-04-03 → 2027-04-01 (-2d) | 2027-04-14 → 2027-04-13 (-1d) | -75.5d → -75d |  | resources Depth Between 0m to 1.50m [0.9]; Depth Between 1.50m to 2.50m [0.9]; Depth > 2.50m [0.3]; Depth Between 0m to 1.50m [62.69]; Depth Between 1.50m to 2.50m [41.79]; Depth > 2.50m [1.49]; Depth Between 0m to 1.50m [7.46]; Depth Between 1.50m to 2.50m [1.49]; Depth > 2.50m [0.75]; Depth Between 0m to 1.50m [47.76]; Depth Between 1.50m to 2.50m [195.52]; Depth > 2.50m [2.99]; Unskilled Labor [160 h]; Plumber [160 h]; Water Tanker [160 h] → Unskilled Labor [160 h]; Plumber [160 h]; Water Tanker [160 h]; Depth Between 0m to 1.50m [0.9]; Depth Between 1.50m to 2.50m [0.9]; Depth > 2.50m [0.3]; Depth Between 0m to 1.50m [62.69]; Depth Between 1.50m to 2.50m [41.79]; Depth > 2.50m [1.49]; Depth Between 0m to 1.50m [7.46]; Depth Between 1.50m to 2.50m [1.49]; Depth > 2.50m [0.75]; Depth Between 0m to 1.50m [47.76]; Depth Between 1.50m to 2.50m [195.52]; Depth > 2.50m [2.99] |
| CO-PW-TF-120 | Fire Hydrant Finishies (S.Box + Safety + Marker Post ) of Potable Water Network |  | 2027-04-26 → 2027-04-25 (-1d) | -75.5d → -75d |  | resources 3-outlet fire hydrant (2 x 2.5 inch and 1 x 4.5 inch) in the form of a separate dry vacuum cylinder, complete according to drawings. [2.54]; Unskilled Labor [80 h]; Plumber [80 h] → Unskilled Labor [80 h]; Plumber [80 h]; 3-outlet fire hydrant (2 x 2.5 inch and 1 x 4.5 inch) in the form of a separate dry vacuum cylinder, complete according to drawings. [2.54] |
| CO-PW-TF-100 | Final Finishes works and Covers for Valves and Valve Chambers of Potable Water Network |  | 2027-05-08 → 2027-05-06 (-2d) | -75.5d → -75d |  | resources Wash out chamber (2500x 2500mm) [0.3]; Air valve chamber (1000x 1000 mm) [0.15]; Unskilled Labor [80 h]; Mason [80 h]; JCB [80 h] → Unskilled Labor [80 h]; Mason [80 h]; JCB [80 h]; Wash out chamber (2500x 2500mm) [0.3]; Air valve chamber (1000x 1000 mm) [0.15] |
| 13 | **Irrigation Network** | 2027-03-30 → 2027-03-29 (-1d) |  |  |  |  |
| TF | **Testing and Finishes** | 2027-03-30 → 2027-03-29 (-1d) |  |  |  |  |
| CO-IR-TF-160 | Final Testing (pressure tests) of Irrigation Network | 2027-03-30 → 2027-03-29 (-1d) |  | -67.5d → -67d |  | resources pipe line O.D 32 mm PN 10, in depth 0 to 1.5 m [500]; pipe line O.D 40 mm PN 10, in depth 0 to 1.5 m [276.12]; pipe line O.D 50 mm PN 10, in depth 0 to 1.5 m [37.31]; Unskilled Labor [256 h]; Plumber [256 h]; Water Tanker [256 h] → Unskilled Labor [256 h]; Plumber [256 h]; Water Tanker [256 h]; pipe line O.D 32 mm PN 10, in depth 0 to 1.5 m [500]; pipe line O.D 40 mm PN 10, in depth 0 to 1.5 m [276.12]; pipe line O.D 50 mm PN 10, in depth 0 to 1.5 m [37.31] |
| 1 | **Treated Sewage Effluent (Tse)** | 2027-04-13 → 2027-04-12 (-1d) | 2027-04-26 → 2027-04-25 (-1d) |  |  |  |
| TF | **Testing and Finishes** | 2027-04-13 → 2027-04-12 (-1d) | 2027-04-26 → 2027-04-25 (-1d) |  |  |  |
| CO-TSE-TF-170 | Final Testing (pressure tests) of Treated Sewage Effluent (Tse) | 2027-04-13 → 2027-04-12 (-1d) | 2027-04-26 → 2027-04-25 (-1d) | -67.5d → -67d |  | resources Depth Between 0m to 1.50m [1.49]; Depth Between 1.50m to 2.50m [0.75]; Depth > 2.50m [0.3]; Depth Between 0m to 1.50m [137.31]; Depth Between 0m to 1.50m [10.45]; Depth Between 1.50m to 2.50m [6.72]; Depth > 2.50m [1.49]; Depth Between 0m to 1.50m [126.87]; Depth Between 1.50m to 2.50m [38.81]; Depth > 2.50m [3.73]; Depth Between 0m to 1.50m [8.96]; Depth Between 1.50m to 2.50m [5.97]; Depth > 2.50m [1.19]; Unskilled Labor [128 h]; Plumber [128 h]; Water Tanker [128 h] → Unskilled Labor [128 h]; Plumber [128 h]; Water Tanker [128 h]; Depth Between 0m to 1.50m [1.49]; Depth Between 1.50m to 2.50m [0.75]; Depth > 2.50m [0.3]; Depth Between 0m to 1.50m [137.31]; Depth Between 0m to 1.50m [10.45]; Depth Between 1.50m to 2.50m [6.72]; Depth > 2.50m [1.49]; Depth Between 0m to 1.50m [126.87]; Depth Between 1.50m to 2.50m [38.81]; Depth > 2.50m [3.73]; Depth Between 0m to 1.50m [8.96]; Depth Between 1.50m to 2.50m [5.97]; Depth > 2.50m [1.19] |
| 14 | **Medium Voltage Network** | 2027-03-31 → 2027-03-30 (-1d) |  |  |  |  |
| TT | **Termination and Testing Works** | 2027-03-31 → 2027-03-30 (-1d) |  |  |  |  |
| CO-MV-TF-220 | Termination Works of Medium Voltage Network | 2027-03-31 → 2027-03-30 (-1d) |  | -74d → -73.5d |  | resources Duct bank for (33) cables [18.81]; Duct bank for (21) cables [29.85]; Duct bank for (15) cables [8.97]; HV Cable Road Crossing [9.57]; Unskilled Labor [144 h]; Electrical Technician [288 h] → Unskilled Labor [144 h]; Electrical Technician [288 h]; Duct bank for (33) cables [18.81]; Duct bank for (21) cables [29.85]; Duct bank for (15) cables [8.97]; HV Cable Road Crossing [9.57] |
| 12 | **Street Lighting Network** | 2027-04-21 → 2027-04-20 (-1d) |  |  |  |  |
| TR | **Termination and Testing Works** | 2027-04-21 → 2027-04-20 (-1d) |  |  |  |  |
| CO-SL-LP-330 | Installation Works for Lighting Fixtures With Drop Wire of Street Lighting Network | 2027-04-21 → 2027-04-20 (-1d) |  | -70d → -75.5d |  | resources Street Lighting( LED) Luminaire of Output ? 20,965 lumen complete with control gear and lamp, (129.1) WATT. [165.67]; Unskilled Labor [72 h]; Electrical Technician [144 h] → Unskilled Labor [72 h]; Electrical Technician [144 h]; Street Lighting( LED) Luminaire of Output ? 20,965 lumen complete with control gear and lamp, (129.1) WATT. [165.67] |
| CO-SL-TF-200 | Testing Works for Lighting Poles of Street Lighting Network | 2027-04-29 → 2027-04-28 (-1d) |  | -68d → -67.5d |  | resources Lighting poles with 1 arm, height of (12) meters, including the power distribution box, cables, and RCC foundation. [5.82]; Lighting poles with 2 arms, height of (12) meters, including the power distribution box, cables, and RCC foundation. [5.37]; Unskilled Labor [80 h]; Electrical Technician [160 h] → Unskilled Labor [80 h]; Electrical Technician [160 h]; Lighting poles with 1 arm, height of (12) meters, including the power distribution box, cables, and RCC foundation. [5.82]; Lighting poles with 2 arms, height of (12) meters, including the power distribution box, cables, and RCC foundation. [5.37] |
| CO-SL-TF-220 | Termination Works For Lighting Poles Cables of Street Lighting Network | 2027-04-29 → 2027-04-28 (-1d) |  | -70d → -69.5d |  | resources Lighting poles with 1 arm, height of (12) meters, including the power distribution box, cables, and RCC foundation. [5.82]; Lighting poles with 2 arms, height of (12) meters, including the power distribution box, cables, and RCC foundation. [5.37]; Unskilled Labor [64 h]; Electrical Technician [128 h] → Unskilled Labor [64 h]; Electrical Technician [128 h]; Lighting poles with 1 arm, height of (12) meters, including the power distribution box, cables, and RCC foundation. [5.82]; Lighting poles with 2 arms, height of (12) meters, including the power distribution box, cables, and RCC foundation. [5.37] |
| CO-SL-TF-230 | Termination Works For Panel Board Cables of Street Lighting Network | 2027-04-29 → 2027-04-28 (-1d) |  | -70d → -69.5d |  | resources Street Lighting panels LCP (01) [0.15]; Unskilled Labor [64 h]; Electrical Technician [128 h] → Unskilled Labor [64 h]; Electrical Technician [128 h]; Street Lighting panels LCP (01) [0.15] |
| CO-SL-TF-380 | Testing Works For Panel Board Cables of Street Lighting Network | 2027-04-29 → 2027-04-28 (-1d) |  | -65d → -64.5d |  | resources Street Lighting panels LCP (01) [0.15]; Unskilled Labor [48 h]; Electrical Technician [96 h] → Unskilled Labor [48 h]; Electrical Technician [96 h]; Street Lighting panels LCP (01) [0.15] |
| ES | **Earthing System Works** | 2027-04-21 → 2027-04-20 (-1d) |  |  |  |  |
| CO-SL-ES-220 | Install Earthing System Works for Lighting Poles of Street Lighting Network | 2027-04-21 → 2027-04-20 (-1d) |  | -70d → -75.5d |  | resources Including earthing of lighting poles, masts, feeder pillars, unit substations and LV feeders. [78.36]; Unskilled Labor [96 h]; Electrical Technician [192 h] → Unskilled Labor [96 h]; Electrical Technician [192 h]; Including earthing of lighting poles, masts, feeder pillars, unit substations and LV feeders. [78.36] |
| CO-SL-ES-230 | Install Earthing System Works for Lighting Panel Boards of Street Lighting Network | 2027-04-21 → 2027-04-20 (-1d) |  | -70d → -75.5d |  | resources Including earthing of lighting poles, masts, feeder pillars, unit substations and LV feeders. [33.58]; Unskilled Labor [96 h]; Electrical Technician [192 h] → Unskilled Labor [96 h]; Electrical Technician [192 h]; Including earthing of lighting poles, masts, feeder pillars, unit substations and LV feeders. [33.58] |
| 3 | **Telecom Network** | 2027-04-12 → 2027-04-11 (-1d) |  |  |  |  |
| 1 | **Testing and Finishes** | 2027-04-12 → 2027-04-11 (-1d) |  |  |  |  |
| CO-TE-CTV-TF-110 | Smart Card Printer | 2027-04-12 → 2027-04-11 (-1d) |  | -66d → -76.5d |  | resources Smart Card Printer [1.49]; Unskilled Labor [32 h]; Electrical Technician [64 h] → Unskilled Labor [32 h]; Electrical Technician [64 h]; Smart Card Printer [1.49] |
| CO-TE-CTV-TF-120 | Card Issue Work Station | 2027-04-17 → 2027-04-15 (-2d) |  | -66d → -76.5d |  | resources Card Issue Work Station [1.49]; Unskilled Labor [32 h]; Electrical Technician [64 h] → Unskilled Labor [32 h]; Electrical Technician [64 h]; Card Issue Work Station [1.49] |
| CO-TE-CTV-TF-130 | Photographic Camera with stand | 2027-04-21 → 2027-04-20 (-1d) |  | -66d → -76.5d |  | resources Photographic Camera with stand [1.49]; Unskilled Labor [32 h]; Electrical Technician [64 h] → Unskilled Labor [32 h]; Electrical Technician [64 h]; Photographic Camera with stand [1.49] |
| CO-TE-CTV-TF-140 | Interface modules with CCTV, Fire and other systems | 2027-04-26 → 2027-04-25 (-1d) |  | -66d → -76.5d |  | resources Interface modules with CCTV, Fire and other systems [1.49]; Unskilled Labor [32 h]; Electrical Technician [64 h] → Unskilled Labor [32 h]; Electrical Technician [64 h]; Interface modules with CCTV, Fire and other systems [1.49] |
| 2 | **Road Works** |  | 2027-05-30 → 2027-05-29 (-1d) |  |  |  |
| 3 | **ST+1000:ST+1531** |  | 2027-05-24 → 2027-05-23 (-1d) |  |  |  |
| 1 | **Bituminous Construction** |  | 2027-05-02 → 2027-05-01 (-1d) |  |  |  |
| CO-RD-B-150 | Application of Prime Coat Layer for Road Works |  | 2027-04-24 → 2027-04-22 (-2d) | -76.5d → -76d |  | resources Bituminous base course (Grading I - Class A), including Prime Coat (MC1) [258.06]; Unskilled Labor [16 h]; MC1 Sprinkler [16 h]; Skilled Labor [16 h] → Unskilled Labor [16 h]; MC1 Sprinkler [16 h]; Skilled Labor [16 h]; Bituminous base course (Grading I - Class A), including Prime Coat (MC1) [258.06] |
| CO-RD-B-160 | Bituminous Base Courses Layers for Road Works- |  | 2027-05-02 → 2027-05-01 (-1d) | -76.5d → -76d |  | resources Bituminous concrete wearing course, (Grading I - Class A), including tack coat (RC2) [258.06]; Bob Cat [24 h]; Dump Truck [24 h]; Compactor [24 h]; Asphalt Paver [24 h] → Bob Cat [24 h]; Dump Truck [24 h]; Compactor [24 h]; Asphalt Paver [24 h]; Bituminous concrete wearing course, (Grading I - Class A), including tack coat (RC2) [258.06] |
| CO-RD-PV-160 | Fixing of Curbstone for Sidewalks Pavement |  |  | -76.7d → -76.2d |  | resources Precast Concrete Curbstone 150X300X900 Type (K1-A) [3796.19]; Precast Concrete Curbstone 100X200X500 Type (K4) [2945.22]; Precast Concrete Curbstone 150X300X500 Type (K1-B) [1154.48]; Precast Concrete Curbstone Type (K1-C) [51.72]; Flush Kerb Type (D) [98.21]; Unskilled Labor [160 h]; Mason [160 h]; JCB [160 h]; Compactor [160 h]; Forklift [160 h] → Unskilled Labor [160 h]; Mason [160 h]; JCB [160 h]; Compactor [160 h]; Forklift [160 h]; Precast Concrete Curbstone 150X300X900 Type (K1-A) [3796.19]; Precast Concrete Curbstone 100X200X500 Type (K4) [2945.22]; Precast Concrete Curbstone 150X300X500 Type (K1-B) [1154.48]; Precast Concrete Curbstone Type (K1-C) [51.72]; Flush Kerb Type (D) [98.21] |
| CO-RD-PV-170 | Fixing of Interlock Tiles for Sidewalks Pavement |  |  | -76.7d → -76.2d |  | resources 60mm thick [14588.2]; 80mm thick [20371.5]; Unskilled Labor [160 h]; Mason [160 h]; JCB [160 h]; Compactor [160 h]; Forklift [160 h] → Unskilled Labor [160 h]; Mason [160 h]; JCB [160 h]; Compactor [160 h]; Forklift [160 h]; 60mm thick [14588.2]; 80mm thick [20371.5] |
| TS | **Traffic Signs Boards and Roads Marking** |  | 2027-05-24 → 2027-05-23 (-1d) |  |  |  |
| CO-RD-F-RM-180 | Application of Road Marking Works For Road Works |  | 2027-05-10 → 2027-05-09 (-1d) | -73.5d → -73d |  | resources Retroreflective Thermoplastic White Traffic lines [504.1]; Retroreflective Thermoplastic Yellow, Traffic lines [754.85]; Road Marking Machine [32 h] → Road Marking Machine [32 h]; Retroreflective Thermoplastic White Traffic lines [504.1]; Retroreflective Thermoplastic Yellow, Traffic lines [754.85] |
| CO-RD-F-TS-120 | Installation Works of Traffic Signs Boards For Road Works |  | 2027-05-24 → 2027-05-23 (-1d) | -73.5d → -73d |  | resources Traffic signs, ground mounted, Sheet Aluminum, (breakaway) Single post IPE, with all accessories [51.72]; Precast Concrete Blister Warning Tactile Paver Brown Finish 300*300*60mm [33.43]; Unskilled Labor [64 h]; Skilled Labor [64 h] → Unskilled Labor [64 h]; Skilled Labor [64 h]; Traffic signs, ground mounted, Sheet Aluminum, (breakaway) Single post IPE, with all accessories [51.72]; Precast Concrete Blister Warning Tactile Paver Brown Finish 300*300*60mm [33.43] |
| 1 | **ST+500:ST+1000** |  | 2027-05-29 → 2027-05-27 (-2d) |  |  |  |
| 1 | **Bituminous Construction** |  | 2027-05-11 → 2027-05-10 (-1d) |  |  |  |
| CO-RD-B-130 | Application of Prime Coat Layer for Road Works |  | 2027-05-06 → 2027-05-05 (-1d) | -76.5d → -76d |  | resources Bituminous base course (Grading I - Class A), including Prime Coat (MC1) [258.06]; Unskilled Labor [16 h]; MC1 Sprinkler [16 h]; Skilled Labor [16 h] → Unskilled Labor [16 h]; MC1 Sprinkler [16 h]; Skilled Labor [16 h]; Bituminous base course (Grading I - Class A), including Prime Coat (MC1) [258.06] |
| CO-RD-B-140 | Bituminous Base Courses Layers for Road Works- |  | 2027-05-11 → 2027-05-10 (-1d) | -76.5d → -76d |  | resources Bituminous concrete wearing course, (Grading I - Class A), including tack coat (RC2) [258.06]; Bob Cat [32 h]; Dump Truck [32 h]; Compactor [32 h]; Asphalt Paver [32 h] → Bob Cat [32 h]; Dump Truck [32 h]; Compactor [32 h]; Asphalt Paver [32 h]; Bituminous concrete wearing course, (Grading I - Class A), including tack coat (RC2) [258.06] |
| CO-RD-PV-140 | Fixing of Curbstone for Sidewalks Pavement |  |  | -76.7d → -76.2d |  | resources Precast Concrete Curbstone 150X300X900 Type (K1-A) [3796.19]; Precast Concrete Curbstone 100X200X500 Type (K4) [2945.22]; Precast Concrete Curbstone 150X300X500 Type (K1-B) [1154.48]; Precast Concrete Curbstone Type (K1-C) [51.72]; Flush Kerb Type (D) [98.21]; Unskilled Labor [176 h]; Mason [176 h]; JCB [176 h]; Compactor [176 h]; Forklift [176 h] → Unskilled Labor [176 h]; Mason [176 h]; JCB [176 h]; Compactor [176 h]; Forklift [176 h]; Precast Concrete Curbstone 150X300X900 Type (K1-A) [3796.19]; Precast Concrete Curbstone 100X200X500 Type (K4) [2945.22]; Precast Concrete Curbstone 150X300X500 Type (K1-B) [1154.48]; Precast Concrete Curbstone Type (K1-C) [51.72]; Flush Kerb Type (D) [98.21] |
| CO-RD-PV-150 | Fixing of Interlock Tiles for Sidewalks Pavement |  |  | -76.7d → -76.2d |  | resources 60mm thick [14588.2]; 80mm thick [20371.5]; Unskilled Labor [176 h]; Mason [176 h]; JCB [176 h]; Compactor [176 h]; Forklift [176 h] → Unskilled Labor [176 h]; Mason [176 h]; JCB [176 h]; Compactor [176 h]; Forklift [176 h]; 60mm thick [14588.2]; 80mm thick [20371.5] |
| TS | **Traffic Signs Boards and Roads Marking** |  | 2027-05-29 → 2027-05-27 (-2d) |  |  |  |
| CO-RD-F-RM-170 | Application of Road Marking Works For Road Works |  | 2027-05-24 → 2027-05-23 (-1d) | -77.5d → -77d |  | resources Retroreflective Thermoplastic White Traffic lines [504.1]; Retroreflective Thermoplastic Yellow, Traffic lines [754.85]; Road Marking Machine [64 h] → Road Marking Machine [64 h]; Retroreflective Thermoplastic White Traffic lines [504.1]; Retroreflective Thermoplastic Yellow, Traffic lines [754.85] |
| CO-RD-F-TS-110 | Installation Works of Traffic Signs Boards For Road Works |  | 2027-05-29 → 2027-05-27 (-2d) | -77.5d → -77d |  | resources Traffic signs, ground mounted, Sheet Aluminum, (breakaway) Single post IPE, with all accessories [51.72]; Precast Concrete Blister Warning Tactile Paver Brown Finish 300*300*60mm [33.43]; Unskilled Labor [64 h]; Skilled Labor [64 h] → Unskilled Labor [64 h]; Skilled Labor [64 h]; Traffic signs, ground mounted, Sheet Aluminum, (breakaway) Single post IPE, with all accessories [51.72]; Precast Concrete Blister Warning Tactile Paver Brown Finish 300*300*60mm [33.43] |
| 2 | **ST+01:ST+500** |  | 2027-05-30 → 2027-05-29 (-1d) |  |  |  |
| 1 | **Bituminous Construction** |  | 2027-05-29 → 2027-05-27 (-2d) |  |  |  |
| CO-RD-B-110 | Application of Prime Coat Layer for Road Works |  | 2027-05-24 → 2027-05-23 (-1d) | -77.5d → -77d |  | resources Bituminous base course (Grading I - Class A), including Prime Coat (MC1) [221.19]; Unskilled Labor [16 h]; MC1 Sprinkler [16 h]; Skilled Labor [16 h] → Unskilled Labor [16 h]; MC1 Sprinkler [16 h]; Skilled Labor [16 h]; Bituminous base course (Grading I - Class A), including Prime Coat (MC1) [221.19] |
| CO-RD-B-120 | Bituminous Base Courses Layers for Road Works- |  | 2027-05-29 → 2027-05-27 (-2d) | -77.5d → -77d |  | resources Bituminous concrete wearing course, (Grading I - Class A), including tack coat (RC2) [221.19]; Bob Cat [24 h]; Dump Truck [24 h]; Compactor [24 h]; Asphalt Paver [24 h] → Bob Cat [24 h]; Dump Truck [24 h]; Compactor [24 h]; Asphalt Paver [24 h]; Bituminous concrete wearing course, (Grading I - Class A), including tack coat (RC2) [221.19] |
| CO-RD-PV-120 | Fixing of Curbstone for Sidewalks Pavement |  |  | -76.8d → -76.3d |  | resources Precast Concrete Curbstone 150X300X900 Type (K1-A) [3253.88]; Precast Concrete Curbstone 100X200X500 Type (K4) [2524.48]; Precast Concrete Curbstone 150X300X500 Type (K1-B) [989.55]; Precast Concrete Curbstone Type (K1-C) [44.33]; Flush Kerb Type (D) [84.18]; Unskilled Labor [160 h]; Mason [160 h]; JCB [160 h]; Compactor [160 h]; Forklift [160 h] → Unskilled Labor [160 h]; Mason [160 h]; JCB [160 h]; Compactor [160 h]; Forklift [160 h]; Precast Concrete Curbstone 150X300X900 Type (K1-A) [3253.88]; Precast Concrete Curbstone 100X200X500 Type (K4) [2524.48]; Precast Concrete Curbstone 150X300X500 Type (K1-B) [989.55]; Precast Concrete Curbstone Type (K1-C) [44.33]; Flush Kerb Type (D) [84.18] |
| CO-RD-PV-130 | Fixing of Interlock Tiles for Sidewalks Pavement |  |  | -76.8d → -76.3d |  | resources 60mm thick [12504.2]; 80mm thick [17461.3]; Unskilled Labor [160 h]; Mason [160 h]; JCB [160 h]; Compactor [160 h]; Forklift [160 h] → Unskilled Labor [160 h]; Mason [160 h]; JCB [160 h]; Compactor [160 h]; Forklift [160 h]; 60mm thick [12504.2]; 80mm thick [17461.3] |
| TS | **Traffic Signs Boards and Roads Marking** |  | 2027-05-30 → 2027-05-29 (-1d) |  |  |  |
| CO-RD-F-RM-160 | Application of Road Marking Works For Road Works |  | 2027-05-30 → 2027-05-29 (-1d) | -74.5d → -74d |  | resources Retroreflective Thermoplastic White Traffic lines [432.09]; Retroreflective Thermoplastic Yellow, Traffic lines [647.01]; Road Marking Machine [48 h] → Road Marking Machine [48 h]; Retroreflective Thermoplastic White Traffic lines [432.09]; Retroreflective Thermoplastic Yellow, Traffic lines [647.01] |
| CO-RD-F-TS-100 | Installation Works of Traffic Signs Boards For Road Works |  | 2027-05-30 → 2027-05-29 (-1d) | -74.5d → -74d |  | resources Traffic signs, ground mounted, Sheet Aluminum, (breakaway) Single post IPE, with all accessories [44.33]; Precast Concrete Blister Warning Tactile Paver Brown Finish 300*300*60mm [28.66]; Unskilled Labor [48 h]; Skilled Labor [48 h] → Unskilled Labor [48 h]; Skilled Labor [48 h]; Traffic signs, ground mounted, Sheet Aluminum, (breakaway) Single post IPE, with all accessories [44.33]; Precast Concrete Blister Warning Tactile Paver Brown Finish 300*300*60mm [28.66] |
| GEN | **Superstructure Work** |  | 2027-05-27 → 2027-05-31 (+4d) |  |  |  |
| CO-SD-PO-100-P1 | Excavation & Filling Works - PART 1 |  |  |  | ENG-SH-DPO-A-120, ENG-MT-DPO-CV-A-110, PRO-DPO-CV-1DL-10, PRO-DPO-CV-DL-10 FF, CO-SD-ML-130 SS → ENG-SH-DPO-A-120, ENG-MT-DPO-CV-A-110, PRO-DPO-CV-1DL-10 SS, PRO-DPO-CV-DL-10 FF |  |
| CO-SD-PO-100-P2 | Excavation & Filling Works - PART 2 |  |  |  | CO-SD-PO-100-P1, CO-SD-PO-110-P1 → CO-SD-PO-100-P1 SS, CO-SD-PO-110-P1 SS |  |
| CO-SD-PO-110-P1 | Finished Grouted Riprap - PART 1 |  |  |  | CO-SD-PO-100-P1 → CO-SD-PO-100-P1 SS | resources Finished grouted riprap for Pond 300mm as per drawings [3053.73]; Unskilled Labor [336 h]; Mason [336 h] → Unskilled Labor [336 h]; Mason [336 h]; Finished grouted riprap for Pond 300mm as per drawings [3053.73] |
| CO-SD-PO-110-P2 | Finished Grouted Riprap - PART 2 |  |  |  | CO-SD-PO-100-P2, CO-SD-PO-110-P1 → CO-SD-PO-100-P2 SS, CO-SD-PO-110-P1 SS | resources Finished grouted riprap for Pond 300mm as per drawings [2498.51]; Unskilled Labor [336 h]; Mason [336 h] → Unskilled Labor [336 h]; Mason [336 h]; Finished grouted riprap for Pond 300mm as per drawings [2498.51] |
| 1 | **Civil work** |  | 2026-11-25 → 2026-10-21 (-35d) |  |  |  |
| CO-UB-PS-100 | Excavation Work for for Pump station building |  |  |  | ENG-SH-SPS-A-160, PRO-SPS-CV-DL-10 SS → ENG-SH-SPS-A-160, PRO-SPS-CV-1DL-10 SS, PRO-SPS-CV-DL-10 FF, PRO-SPS-CV-DL-10 SS | resources Price; Unskilled Labor [160 h]; Excavator [80 h]; Skilled Labor [80 h] → Unskilled Labor [160 h]; Excavator [80 h]; Skilled Labor [80 h]; Price |
| CO-UB-PS-110 | pouring P.C Conceret for Pump station building |  |  |  | CO-UB-PS-100 → CO-UB-PS-100 SS | resources Price [72069.1 SAR]; Unskilled Labor [24 h]; Mason [24 h] → Unskilled Labor [24 h]; Mason [24 h]; Price [72069.1 SAR] |
| CO-UB-PS-120 | Formwork for Foundation for Pump station building |  |  |  | CO-UB-PS-110 → CO-UB-PS-110 SS | resources Price [72069.1 SAR]; Unskilled Labor [56 h]; Carpenter [112 h] → Unskilled Labor [56 h]; Carpenter [112 h]; Price [72069.1 SAR] |
| CO-UB-PS-130 | Steel fixing for Foundation for Pump station building |  |  |  | CO-UB-PS-120 → CO-UB-PS-120 SS | resources Price [72069.1 SAR]; Unskilled Labor [40 h]; Steel Fixer [120 h] → Unskilled Labor [40 h]; Steel Fixer [120 h]; Price [72069.1 SAR] |
| CO-UB-PS-140 | pouring for Foundation for Pump station building |  |  |  | CO-UB-PS-130 → CO-UB-PS-130 SS | resources Price [72069.1 SAR]; Unskilled Labor [8 h]; Mason [8 h] → Unskilled Labor [8 h]; Mason [8 h]; Price [72069.1 SAR] |
| CO-UB-PS-150 | curing and deshuttering formwork Pump station building |  |  |  | CO-UB-PS-140 → CO-UB-PS-140 SS | resources Price [72069.1 SAR]; Unskilled Labor [72 h]; Carpenter [48 h] → Unskilled Labor [72 h]; Carpenter [48 h]; Price [72069.1 SAR] |
| CO-UB-PS-160 | Backfilling and compaction work for pump station |  |  |  | CO-UB-PS-150 → CO-UB-PS-150 SS | resources Price [72069.1 SAR]; Unskilled Labor [80 h]; Excavator [40 h]; Skilled Labor [40 h] → Unskilled Labor [80 h]; Excavator [40 h]; Skilled Labor [40 h]; Price [72069.1 SAR] |

| ID | Task | Start | Finish | Total float | Predecessors | Other |
| --- | --- | --- | --- | --- | --- | --- |
| 2 | **Super structure** |  | 2026-11-25 → 2026-10-21 (-35d) |  |  |  |
| CO-UB-PS-170 | Formwork for Wall and columns for Pump station building |  | 2026-09-21 A → 2026-09-19 A (-2d) |  |  | resources Price [72069.1 SAR]; Unskilled Labor [96 h]; Carpenter [192 h] → Unskilled Labor [96 h]; Carpenter [192 h]; Price [72069.1 SAR] |
| CO-UB-PS-180 | Steel fixing for Wall columns |  |  |  | CO-UB-PS-170 → CO-UB-PS-170 SS | resources Price [72069.1 SAR]; Unskilled Labor [56 h]; Steel Fixer [168 h] → Unskilled Labor [56 h]; Steel Fixer [168 h]; Price [72069.1 SAR] |
| CO-UB-PS-190 | pouring for Wall columns |  | 2026-09-21 A → 2026-09-25 A (+4d) |  |  | resources Price [72069.1 SAR]; Unskilled Labor [8 h]; Mason [8 h] → Unskilled Labor [8 h]; Mason [8 h]; Price [72069.1 SAR] |
| CO-UB-PS-200 | curing and deshuttering formwork for Wall columns | 2026-09-23 A → 2026-09-28 A (+5d) | 2026-09-23 A → 2026-09-29 A (+6d) |  |  | resources Price [72069.1 SAR]; Unskilled Labor [48 h]; Carpenter [32 h] → Unskilled Labor [48 h]; Carpenter [32 h]; Price [72069.1 SAR] |
| CO-UB-PS-210 | Waterproofing for Walls columns | 2026-09-24 A → 2026-09-30 A (+6d) | 2026-09-24 A → 2026-10-01 A (+7d) |  |  | resources Price [72069.1 SAR]; Unskilled Labor [40 h]; Mason [40 h] → Unskilled Labor [40 h]; Mason [40 h]; Price [72069.1 SAR] |
| CO-UB-PS-220 | Formwork for pump roof | 2026-09-24 A → 2026-10-03 A (+9d) | 2026-10-03 A → 2026-10-07 A (+4d) |  |  | resources Price [72069.1 SAR]; Unskilled Labor [96 h]; Carpenter [192 h] → Unskilled Labor [96 h]; Carpenter [192 h]; Price [72069.1 SAR] |
| CO-UB-PS-230 | Steel fixing for pump roof | 2026-09-26 A → 2026-10-03 A (+7d) |  |  | CO-UB-PS-220 → CO-UB-PS-220 SS | resources Price [72069.1 SAR]; Unskilled Labor [80 h]; Steel Fixer [240 h] → Unskilled Labor [80 h]; Steel Fixer [240 h]; Price [72069.1 SAR] |
| CO-UB-PS-240 | pouring for pump roof |  |  |  |  | resources Price [72069.1 SAR]; Unskilled Labor [8 h]; Mason [8 h] → Unskilled Labor [8 h]; Mason [8 h]; Price [72069.1 SAR] |
| CO-UB-PS-250 | curing and deshuttering formwork for pump roof | 2026-11-24 → 2026-10-20 (-35d) | 2026-11-25 → 2026-10-21 (-35d) | 6d → 36d |  | resources Price [72069.1 SAR]; Unskilled Labor [48 h]; Carpenter [32 h] → Unskilled Labor [48 h]; Carpenter [32 h]; Price [72069.1 SAR] |
| 2 | **Architectural work** | 2026-11-26 → 2026-10-22 (-35d) | 2027-01-05 → 2026-12-01 (-35d) |  |  |  |
| CO-UB-PS-260 | Executing Masonry Works for Pump station building | 2026-11-26 → 2026-10-22 (-35d) | 2026-12-01 → 2026-10-27 (-35d) | 6d → 36d |  | resources Price [183776 SAR]; Unskilled Labor [192 h]; Mason [192 h] → Unskilled Labor [192 h]; Mason [192 h]; Price [183776 SAR] |
| CO-UB-PS-270 | Executing Plastering Works for Pump station building | 2026-12-02 → 2026-10-28 (-35d) | 2026-12-07 → 2026-11-02 (-35d) | 6d → 36d |  | resources Price [229720 SAR]; Unskilled Labor [112 h]; Mason [112 h] → Unskilled Labor [112 h]; Mason [112 h]; Price [229720 SAR] |
| CO-UB-PS-280 | Executing Painting Works for Pump station building | 2026-12-08 → 2026-11-03 (-35d) | 2026-12-13 → 2026-11-08 (-35d) | 6d → 36d |  | resources Price [227221 SAR]; Unskilled Labor [224 h]; Skilled Labor [224 h] → Unskilled Labor [224 h]; Skilled Labor [224 h]; Price [227221 SAR] |
| CO-UB-PS-320 | Doors and windows Fixing &Stair Tiles | 2026-12-29 → 2026-11-24 (-35d) | 2027-01-05 → 2026-12-01 (-35d) | 10d → 40d |  | resources Price [229720 SAR]; Unskilled Labor [56 h]; Carpenter [112 h] → Unskilled Labor [56 h]; Carpenter [112 h]; Price [229720 SAR] |
| 3 | **Electrical work** | 2026-12-14 → 2026-11-09 (-35d) |  |  |  |  |
| CO-UB-PS-290 | Lighting system for pump house | 2026-12-14 → 2026-11-09 (-35d) | 2026-12-19 → 2026-11-14 (-35d) | 6d → 36d |  | resources Price [135130 SAR]; Unskilled Labor [96 h]; Electrical Technician [192 h] → Unskilled Labor [96 h]; Electrical Technician [192 h]; Price [135130 SAR] |
| CO-UB-PS-300 | Wiring connection for pump house | 2026-12-20 → 2026-11-15 (-35d) | 2026-12-24 → 2026-11-19 (-35d) | 6d → 36d |  | resources Price [54051.9 SAR]; Unskilled Labor [72 h]; Electrical Technician [144 h] → Unskilled Labor [72 h]; Electrical Technician [144 h]; Price [54051.9 SAR] |
| CO-UB-PS-310 | Sockets and switches for pump house | 2026-12-26 → 2026-11-21 (-35d) | 2026-12-28 → 2026-11-23 (-35d) | 6d → 36d |  | resources Price [81077.8 SAR]; Unskilled Labor [56 h]; Electrical Technician [112 h] → Unskilled Labor [56 h]; Electrical Technician [112 h]; Price [81077.8 SAR] |
| CO-UB-PS-330 | Installation for Distribution boards for pump house | 2026-12-29 → 2026-11-24 (-35d) | 2027-01-06 → 2026-12-02 (-35d) | 6d → 36d |  | resources Price [135130 SAR]; Unskilled Labor [96 h]; Electrical Technician [192 h] → Unskilled Labor [96 h]; Electrical Technician [192 h]; Price [135130 SAR] |
| CO-UB-PS-370 | Executing Earthing and bonding for the entire system | 2027-04-21 → 2027-04-20 (-1d) |  | -74d → -73.5d |  | resources Price [135130 SAR]; Unskilled Labor [104 h]; Electrical Technician [208 h] → Unskilled Labor [104 h]; Electrical Technician [208 h]; Price [135130 SAR] |
| 4 | **Mechanical work** | 2026-12-29 → 2026-11-24 (-35d) |  |  |  |  |
| CO-UB-PS-340 | Executing HVAC System for Pump station building | 2026-12-29 → 2026-11-24 (-35d) | 2027-01-13 → 2026-12-09 (-35d) | 8d → 38d |  | resources Price [162156 SAR]; Unskilled Labor [112 h]; Electrical Technician [224 h] → Unskilled Labor [112 h]; Electrical Technician [224 h]; Price [162156 SAR] |
| CO-UB-PS-350 | Executing Fire Alarm System for Pump station building | 2026-12-29 → 2026-11-24 (-35d) | 2027-01-03 → 2026-11-29 (-35d) | 7d → 37d |  | resources Price [324311 SAR]; Unskilled Labor [72 h]; Electrical Technician [144 h] → Unskilled Labor [72 h]; Electrical Technician [144 h]; Price [324311 SAR] |
| CO-UB-PS-360 | Executing Fire fighting institution works(piping and wire installation) for Pump station building | 2027-01-04 → 2026-11-30 (-35d) | 2027-01-09 → 2026-12-05 (-35d) | 7d → 37d |  | resources Price [405389 SAR]; Unskilled Labor [72 h]; Electrical Technician [144 h] → Unskilled Labor [72 h]; Electrical Technician [144 h]; Price [405389 SAR] |
| CO-UB-PS-380 | Executing Fire fighting finishing works for Pump station building | 2027-01-10 → 2026-12-06 (-35d) | 2027-01-14 → 2026-12-10 (-35d) | 7d → 37d |  | resources Price [162156 SAR]; Unskilled Labor [72 h]; Electrical Technician [144 h] → Unskilled Labor [72 h]; Electrical Technician [144 h]; Price [162156 SAR] |
| CO-UB-PS-390 | Installation of pumps | 2027-05-01 → 2027-04-29 (-2d) |  | -74d → -73.5d |  | resources Price [567545 SAR]; Unskilled Labor [112 h]; Electrical Technician [224 h] → Unskilled Labor [112 h]; Electrical Technician [224 h]; Price [567545 SAR] |
| 3 | **Lift Station** |  | 2027-02-15 → 2027-01-10 (-36d) |  |  |  |
| 1 | **Civil work** |  | 2026-12-20 → 2026-11-16 (-34d) |  |  |  |
| CO-UB-LS-220 | Excavation Work for for Lift Station |  |  |  | CO-UB-PS-100, ENG-SH-LS-A-170 → CO-UB-PS-100, ENG-SH-LS-A-170, PRO-LS-CV-1DL-40 | resources Price; Unskilled Labor [144 h]; Excavator [72 h]; Skilled Labor [72 h] → Unskilled Labor [144 h]; Excavator [72 h]; Skilled Labor [72 h]; Price |
| CO-UB-LS-230 | pouring P.C Conceret for Lift Station |  |  |  | CO-UB-LS-220, PRO-FE-CV-MF-60 → CO-UB-LS-220 | resources Price [42040.3 SAR]; Unskilled Labor [40 h]; Mason [40 h] → Unskilled Labor [40 h]; Mason [40 h]; Price [42040.3 SAR] |
| CO-UB-LS-240 | Formwork for Foundation for Lift Station |  |  |  |  | resources Price [58856.5 SAR]; Unskilled Labor [56 h]; Carpenter [112 h] → Unskilled Labor [56 h]; Carpenter [112 h]; Price [58856.5 SAR] |
| CO-UB-LS-250 | Steel fixing for Foundation for Lift Station |  |  |  |  | resources Price [42040.3 SAR]; Unskilled Labor [64 h]; Steel Fixer [192 h] → Unskilled Labor [64 h]; Steel Fixer [192 h]; Price [42040.3 SAR] |
| CO-UB-LS-260 | pouring for Foundation for Lift Station |  |  |  |  | resources Price [50448.4 SAR]; Unskilled Labor [8 h]; Mason [8 h] → Unskilled Labor [8 h]; Mason [8 h]; Price [50448.4 SAR] |
| CO-UB-LS-270 | curing and deshuttering formwork Lift Station |  |  |  |  | resources Price [8408.07 SAR]; Unskilled Labor [48 h]; Carpenter [32 h] → Unskilled Labor [48 h]; Carpenter [32 h]; Price [8408.07 SAR] |
| CO-UB-LS-280 | Backfilling and compaction work for pump station |  |  |  |  | resources Price [84080.7 SAR]; Unskilled Labor [96 h]; Excavator [48 h]; Skilled Labor [48 h] → Unskilled Labor [96 h]; Excavator [48 h]; Skilled Labor [48 h]; Price [84080.7 SAR] |
| 2 | **Super structure** |  | 2026-12-20 → 2026-11-16 (-34d) |  |  |  |
| CO-UB-LS-290 | Formwork for Wall and columns for Lift Station |  | 2026-11-24 → 2026-10-22 (-33d) | -13d → 16.25d | CO-UB-LS-280 FF → CO-UB-LS-280 SS | resources Price [84080.7 SAR]; Unskilled Labor [168 h]; Carpenter [112 h] → Unskilled Labor [168 h]; Carpenter [112 h]; Price [84080.7 SAR] |
| CO-UB-LS-300 | Steel fixing for Wall columns |  | 2026-11-25 → 2026-10-22 (-34d) | -13d → 16.25d |  | resources Price [84080.7 SAR]; Unskilled Labor [72 h]; Steel Fixer [216 h] → Unskilled Labor [72 h]; Steel Fixer [216 h]; Price [84080.7 SAR] |
| CO-UB-LS-310 | pouring for Wall columns |  | 2026-11-25 → 2026-10-22 (-34d) | -13d → 16.25d |  | resources Price [50448.4 SAR]; Unskilled Labor [8 h]; Mason [8 h] → Unskilled Labor [8 h]; Mason [8 h]; Price [50448.4 SAR] |
| CO-UB-LS-320 | curing and deshuttering formwork for Wall columns | 2026-11-26 → 2026-10-22 (-35d) | 2026-11-28 → 2026-10-25 (-34d) | -13d → 16.25d | CO-UB-LS-310, PRO-LS-CV-DL-50 → CO-UB-LS-310 | resources Price [8408.07 SAR]; Unskilled Labor [48 h]; Carpenter [32 h] → Unskilled Labor [48 h]; Carpenter [32 h]; Price [8408.07 SAR] |
| CO-UB-LS-330 | Waterproofing for Walls columns | 2026-11-29 → 2026-10-25 (-35d) | 2026-12-02 → 2026-10-29 (-34d) | -13d → 16.25d |  | resources Price [84080.7 SAR]; Unskilled Labor [32 h]; Mason [32 h] → Unskilled Labor [32 h]; Mason [32 h]; Price [84080.7 SAR] |
| CO-UB-LS-340 | Formwork for pump roof | 2026-12-03 → 2026-10-29 (-35d) | 2026-12-08 → 2026-11-04 (-34d) | -13d → 16.25d |  | resources Price [84080.7 SAR]; Unskilled Labor [120 h]; Carpenter [80 h] → Unskilled Labor [120 h]; Carpenter [80 h]; Price [84080.7 SAR] |
| CO-UB-LS-350 | Steel fixing for pump roof | 2026-12-09 → 2026-11-04 (-35d) | 2026-12-15 → 2026-11-11 (-34d) | -13d → 16.25d |  | resources Price [84080.7 SAR]; Unskilled Labor [48 h]; Steel Fixer [144 h] → Unskilled Labor [48 h]; Steel Fixer [144 h]; Price [84080.7 SAR] |
| CO-UB-LS-360 | pouring for pump roof | 2026-12-16 → 2026-11-11 (-35d) | 2026-12-16 → 2026-11-12 (-34d) | -13d → 16.25d | CO-UB-LS-350 → CO-UB-LS-350, PRO-LS-CV-DL-50 FF | resources Price [67264.5 SAR]; Unskilled Labor [8 h]; Mason [8 h] → Unskilled Labor [8 h]; Mason [8 h]; Price [67264.5 SAR] |
| CO-UB-LS-370 | curing and deshuttering formwork for pump roof | 2026-12-17 → 2026-11-12 (-35d) | 2026-12-20 → 2026-11-16 (-34d) | -13d → 16.25d |  | resources Price [8408.07 SAR]; Unskilled Labor [72 h]; Carpenter [48 h] → Unskilled Labor [72 h]; Carpenter [48 h]; Price [8408.07 SAR] |
| 2 | **Architectural work** | 2026-12-21 → 2026-11-16 (-35d) | 2027-01-06 → 2026-12-03 (-34d) |  |  |  |
| CO-UB-LS-380 | Executing Masonry Works for Pump station building | 2026-12-21 → 2026-11-16 (-35d) | 2026-12-28 → 2026-11-24 (-34d) | -13d → 16.25d |  | resources Price [357343 SAR]; Unskilled Labor [192 h]; Mason [192 h] → Unskilled Labor [192 h]; Mason [192 h]; Price [357343 SAR] |
| CO-UB-LS-390 | Executing Plastering Works for Pump station building | 2026-12-29 → 2026-11-24 (-35d) | 2027-01-06 → 2026-12-03 (-34d) | -13d → 16.25d |  | resources Price [357343 SAR]; Unskilled Labor [112 h]; Mason [112 h] → Unskilled Labor [112 h]; Mason [112 h]; Price [357343 SAR] |
| 3 | **Electrical work** | 2027-01-07 → 2026-12-03 (-35d) | 2027-02-15 → 2027-01-10 (-36d) |  |  |  |
| CO-UB-LS-400 | Lighting system for pump house | 2027-01-07 → 2026-12-03 (-35d) | 2027-01-16 → 2026-12-13 (-34d) | -13d → 16.25d |  | resources Price [147141 SAR]; Unskilled Labor [88 h]; Electrical Technician [176 h] → Unskilled Labor [88 h]; Electrical Technician [176 h]; Price [147141 SAR] |
| CO-UB-LS-420 | Wiring connection for pump house | 2027-01-17 → 2026-12-13 (-35d) | 2027-01-23 → 2026-12-20 (-34d) | -13d → 16.25d |  | resources Price [84080.7 SAR]; Unskilled Labor [72 h]; Electrical Technician [144 h] → Unskilled Labor [72 h]; Electrical Technician [144 h]; Price [84080.7 SAR] |
| CO-UB-LS-440 | Sockets and switches for pump house | 2027-01-24 → 2026-12-20 (-35d) | 2027-01-30 → 2026-12-27 (-34d) | -13d → 16.25d |  | resources Price [42040.3 SAR]; Unskilled Labor [64 h]; Electrical Technician [128 h] → Unskilled Labor [64 h]; Electrical Technician [128 h]; Price [42040.3 SAR] |
| CO-UB-LS-460 | Installation for Distribution boards for pump house | 2027-01-31 → 2026-12-27 (-35d) | 2027-02-06 → 2027-01-03 (-34d) | -13d → 16.25d |  | resources Price [105101 SAR]; Unskilled Labor [72 h]; Electrical Technician [144 h] → Unskilled Labor [72 h]; Electrical Technician [144 h]; Price [105101 SAR] |
| CO-UB-LS-480 | Executing Earthing and bonding for the entire system | 2027-02-07 → 2027-01-03 (-35d) | 2027-02-15 → 2027-01-10 (-36d) | -13d → 16.25d |  | resources Price [42040.3 SAR]; Unskilled Labor [64 h]; Electrical Technician [128 h] → Unskilled Labor [64 h]; Electrical Technician [128 h]; Price [42040.3 SAR] |
| 4 | **Mechanical work** | 2027-01-07 → 2026-12-03 (-35d) | 2027-02-11 → 2027-01-07 (-35d) |  |  |  |
| CO-UB-LS-410 | Internal pipe installation | 2027-01-07 → 2026-12-03 (-35d) | 2027-01-16 → 2026-12-13 (-34d) | -11d → 18.25d |  | resources Price [210202 SAR]; Unskilled Labor [64 h]; Plumber [64 h] → Unskilled Labor [64 h]; Plumber [64 h]; Price [210202 SAR] |
| CO-UB-LS-430 | Guide rails & lifting chains installation | 2027-01-17 → 2026-12-13 (-35d) | 2027-01-24 → 2026-12-21 (-34d) | -11d → 18.25d |  | resources Price [168161 SAR]; Unskilled Labor [56 h]; Plumber [56 h] → Unskilled Labor [56 h]; Plumber [56 h]; Price [168161 SAR] |
| CO-UB-LS-450 | ExeValve installation | 2027-01-25 → 2026-12-21 (-35d) | 2027-02-01 → 2026-12-29 (-34d) | -11d → 18.25d |  | resources Price [210202 SAR]; Unskilled Labor [72 h]; Plumber [72 h] → Unskilled Labor [72 h]; Plumber [72 h]; Price [210202 SAR] |
| CO-UB-LS-470 | Installation of pumps | 2027-02-02 → 2026-12-29 (-35d) | 2027-02-11 → 2027-01-07 (-35d) | -11d → 18.25d |  | resources Price [252242 SAR]; Unskilled Labor [64 h]; Plumber [64 h] → Unskilled Labor [64 h]; Plumber [64 h]; Price [252242 SAR] |
| 5 | **Potable Water Tank** | 2026-12-14 → 2026-12-21 (+7d) | 2027-03-07 → 2027-03-17 (+10d) |  |  |  |
| 1 | **Eearth Work** | 2026-12-14 → 2026-12-21 (+7d) | 2026-12-27 → 2027-01-03 (+7d) |  |  |  |
| CO-UB-PWT-100 | Excavation work for tank foundation tank formation level | 2026-12-14 → 2026-12-21 (+7d) | 2026-12-21 → 2026-12-28 (+7d) | -8d → -34d |  | resources Glass Fused Bolted (GLS) 1500 m3 Tank with associated accessories & manufacturer recommendation for the foundation; Unskilled Labor [112 h]; Excavator [56 h]; Skilled Labor [56 h] → Unskilled Labor [112 h]; Excavator [56 h]; Skilled Labor [56 h]; Glass Fused Bolted (GLS) 1500 m3 Tank with associated accessories & manufacturer recommendation for the foundation |
| CO-UB-PWT-110 | Soil replacement Up to tank formation level | 2026-12-22 → 2026-12-29 (+7d) | 2026-12-27 → 2027-01-03 (+7d) | -8d → -34d |  | resources Glass Fused Bolted (GLS) 1500 m3 Tank with associated accessories & manufacturer recommendation for the foundation [0.02]; Unskilled Labor [80 h]; Excavator [40 h]; Compactor [40 h] → Unskilled Labor [80 h]; Excavator [40 h]; Compactor [40 h]; Glass Fused Bolted (GLS) 1500 m3 Tank with associated accessories & manufacturer recommendation for the foundation [0.02] |
| 2 | **Structural Work** | 2026-12-28 → 2027-01-04 (+7d) | 2027-01-13 → 2027-01-20 (+7d) |  |  |  |
| CO-UB-PWT-120 | Plain Concrete works | 2026-12-28 → 2027-01-04 (+7d) | 2026-12-30 → 2027-01-06 (+7d) | -8d → -34d |  | resources Glass Fused Bolted (GLS) 1500 m3 Tank with associated accessories & manufacturer recommendation for the foundation [0.06]; Unskilled Labor [24 h]; Mason [24 h] → Unskilled Labor [24 h]; Mason [24 h]; Glass Fused Bolted (GLS) 1500 m3 Tank with associated accessories & manufacturer recommendation for the foundation [0.06] |
| CO-UB-PWT-130 | Form work for Tank Foundation | 2026-12-31 → 2027-01-07 (+7d) | 2027-01-05 → 2027-01-12 (+7d) | -8d → -34d |  | resources Glass Fused Bolted (GLS) 1500 m3 Tank with associated accessories & manufacturer recommendation for the foundation [0.1]; Unskilled Labor [144 h]; Carpenter [96 h] → Unskilled Labor [144 h]; Carpenter [96 h]; Glass Fused Bolted (GLS) 1500 m3 Tank with associated accessories & manufacturer recommendation for the foundation [0.1] |
| CO-UB-PWT-140 | Steel Reinforcement work for Tank Foundation | 2027-01-06 → 2027-01-13 (+7d) | 2027-01-12 → 2027-01-19 (+7d) | -8d → -34d |  | resources Glass Fused Bolted (GLS) 1500 m3 Tank with associated accessories & manufacturer recommendation for the foundation [0.09]; Unskilled Labor [56 h]; Steel Fixer [168 h] → Unskilled Labor [56 h]; Steel Fixer [168 h]; Glass Fused Bolted (GLS) 1500 m3 Tank with associated accessories & manufacturer recommendation for the foundation [0.09] |
| CO-UB-PWT-150 | Casting concrete for Tank Foundation | 2027-01-13 → 2027-01-20 (+7d) | 2027-01-13 → 2027-01-20 (+7d) | -8d → -34d |  | resources Glass Fused Bolted (GLS) 1500 m3 Tank with associated accessories & manufacturer recommendation for the foundation [0.03]; Unskilled Labor [8 h]; Mason [8 h] → Unskilled Labor [8 h]; Mason [8 h]; Glass Fused Bolted (GLS) 1500 m3 Tank with associated accessories & manufacturer recommendation for the foundation [0.03] |
| 3 | **Tank Shell Erection&Roof Installation** | 2027-01-14 → 2027-01-21 (+7d) | 2027-02-09 → 2027-02-18 (+9d) |  |  |  |

| ID | Task | Start | Finish | Complete | Total float | Predecessors | Other |
| --- | --- | --- | --- | --- | --- | --- | --- |
| CO-UB-PWT-160 | Bottom ring installation | 2027-01-14 → 2027-01-21 (+7d) | 2027-01-20 → 2027-01-27 (+7d) |  | -8d → -34d |  | resources Glass Fused Bolted (GLS) 1500 m3 Tank with associated accessories & manufacturer recommendation for the foundation [0.2]; Unskilled Labor [80 h]; Skilled Labor [160 h] → Unskilled Labor [80 h]; Skilled Labor [160 h]; Glass Fused Bolted (GLS) 1500 m3 Tank with associated accessories & manufacturer recommendation for the foundation [0.2] |
| CO-UB-PWT-170 | shell erection | 2027-01-21 → 2027-01-28 (+7d) | 2027-01-30 → 2027-02-06 (+7d) |  | -8d → -34d |  | resources Glass Fused Bolted (GLS) 1500 m3 Tank with associated accessories & manufacturer recommendation for the foundation [0.27]; Unskilled Labor [112 h]; Skilled Labor [224 h] → Unskilled Labor [112 h]; Skilled Labor [224 h]; Glass Fused Bolted (GLS) 1500 m3 Tank with associated accessories & manufacturer recommendation for the foundation [0.27] |
| CO-UB-PWT-180 | Aluminum dome / steel roof installation | 2027-01-31 → 2027-02-07 (+7d) | 2027-02-09 → 2027-02-18 (+9d) |  | -8d → -34d |  | resources Glass Fused Bolted (GLS) 1500 m3 Tank with associated accessories & manufacturer recommendation for the foundation [0.33]; Unskilled Labor [112 h]; Skilled Labor [224 h] → Unskilled Labor [112 h]; Skilled Labor [224 h]; Glass Fused Bolted (GLS) 1500 m3 Tank with associated accessories & manufacturer recommendation for the foundation [0.33] |
| 4 | **Mechanical Work&Accessories** | 2027-02-09 → 2027-02-18 (+9d) | 2027-03-07 → 2027-03-17 (+10d) |  |  |  |  |
| CO-UB-PWT-190 | Inlet / outlet piping connections | 2027-02-09 → 2027-02-18 (+9d) | 2027-02-18 → 2027-02-27 (+9d) |  | -8d → -34d |  | resources Glass Fused Bolted (GLS) 1500 m3 Tank with associated accessories & manufacturer recommendation for the foundation [0.2]; Unskilled Labor [48 h]; Plumber [48 h] → Unskilled Labor [48 h]; Plumber [48 h]; Glass Fused Bolted (GLS) 1500 m3 Tank with associated accessories & manufacturer recommendation for the foundation [0.2] |
| CO-UB-PWT-200 | installation Valves | 2027-02-18 → 2027-02-28 (+10d) | 2027-02-27 → 2027-03-08 (+9d) |  | -8d → -34d |  | resources Glass Fused Bolted (GLS) 1500 m3 Tank with associated accessories & manufacturer recommendation for the foundation [0.13]; Unskilled Labor [48 h]; Plumber [48 h] → Unskilled Labor [48 h]; Plumber [48 h]; Glass Fused Bolted (GLS) 1500 m3 Tank with associated accessories & manufacturer recommendation for the foundation [0.13] |
| CO-UB-PWT-210 | Ladders, platforms & handrails | 2027-02-28 → 2027-03-13 (+13d) | 2027-03-07 → 2027-03-17 (+10d) |  | -8d → -34d |  | resources Glass Fused Bolted (GLS) 1500 m3 Tank with associated accessories & manufacturer recommendation for the foundation [0.05]; Unskilled Labor [40 h]; Skilled Labor [80 h] → Unskilled Labor [40 h]; Skilled Labor [80 h]; Glass Fused Bolted (GLS) 1500 m3 Tank with associated accessories & manufacturer recommendation for the foundation [0.05] |
| 2 | **IrrigationTank** | 2026-10-13 → 2026-10-14 (+1d) | 2026-12-14 → 2026-12-20 (+6d) |  |  |  |  |
| 1 | **Eearth Work** | 2026-10-13 → 2026-10-14 (+1d) | 2026-10-25 → 2026-10-31 (+6d) |  |  |  |  |
| CO-UB-IRT-140 | Excavation work for tank foundation tank formation level | 2026-10-13 → 2026-10-14 A (+1d) | 2026-10-19 → 2026-10-25 (+6d) | 0% → 30% | 37d → 32.75d | none → ENG-SH-ST-A-180 |  |
| CO-UB-IRT-150 | Soil replacement Up to tank formation level | 2026-10-20 → 2026-10-25 (+5d) | 2026-10-25 → 2026-10-31 (+6d) |  | 37d → 32.75d |  | resources Glass Fused Bolted (GLS) 1500 m3 Tank with associated accessories & manufacturer recommendation for the foundation [0.02]; Unskilled Labor [80 h]; Excavator [40 h]; Compactor [40 h] → Unskilled Labor [80 h]; Excavator [40 h]; Compactor [40 h]; Glass Fused Bolted (GLS) 1500 m3 Tank with associated accessories & manufacturer recommendation for the foundation [0.02] |
| 2 | **Structural Work** | 2026-10-26 → 2026-10-31 (+5d) | 2026-11-11 → 2026-11-17 (+6d) |  |  |  |  |
| CO-UB-IRT-160 | Plain Concrete works | 2026-10-26 → 2026-10-31 (+5d) | 2026-10-28 → 2026-11-03 (+6d) |  | 37d → 32.75d |  | resources Glass Fused Bolted (GLS) 1500 m3 Tank with associated accessories & manufacturer recommendation for the foundation [0.06]; Unskilled Labor [24 h]; Mason [24 h] → Unskilled Labor [24 h]; Mason [24 h]; Glass Fused Bolted (GLS) 1500 m3 Tank with associated accessories & manufacturer recommendation for the foundation [0.06] |
| CO-UB-IRT-170 | Form work for Tank Foundation | 2026-10-29 → 2026-11-03 (+5d) | 2026-11-04 → 2026-11-10 (+6d) |  | 37d → 32.75d |  | resources Glass Fused Bolted (GLS) 1500 m3 Tank with associated accessories & manufacturer recommendation for the foundation [0.1]; Unskilled Labor [144 h]; Carpenter [96 h] → Unskilled Labor [144 h]; Carpenter [96 h]; Glass Fused Bolted (GLS) 1500 m3 Tank with associated accessories & manufacturer recommendation for the foundation [0.1] |
| CO-UB-IRT-180 | Steel Reinforcement work for Tank Foundation | 2026-11-05 → 2026-11-10 (+5d) | 2026-11-10 → 2026-11-16 (+6d) |  | 37d → 32.75d |  | resources Glass Fused Bolted (GLS) 1500 m3 Tank with associated accessories & manufacturer recommendation for the foundation [0.09]; Unskilled Labor [56 h]; Steel Fixer [168 h] → Unskilled Labor [56 h]; Steel Fixer [168 h]; Glass Fused Bolted (GLS) 1500 m3 Tank with associated accessories & manufacturer recommendation for the foundation [0.09] |
| CO-UB-IRT-190 | Casting concrete for Tank Foundation | 2026-11-11 → 2026-11-16 (+5d) | 2026-11-11 → 2026-11-17 (+6d) |  | 37d → 32.75d |  | resources Glass Fused Bolted (GLS) 1500 m3 Tank with associated accessories & manufacturer recommendation for the foundation [0.03]; Unskilled Labor [8 h]; Mason [8 h] → Unskilled Labor [8 h]; Mason [8 h]; Glass Fused Bolted (GLS) 1500 m3 Tank with associated accessories & manufacturer recommendation for the foundation [0.03] |
| 3 | **Tank Shell Erection&Roof Installation** | 2026-11-12 → 2026-11-17 (+5d) | 2026-12-02 → 2026-12-08 (+6d) |  |  |  |  |
| CO-UB-IRT-200 | Bottom ring installation | 2026-11-12 → 2026-11-17 (+5d) | 2026-11-18 → 2026-11-24 (+6d) |  | 37d → 32.75d |  | resources Glass Fused Bolted (GLS) 1500 m3 Tank with associated accessories & manufacturer recommendation for the foundation [0.2]; Unskilled Labor [80 h]; Skilled Labor [160 h] → Unskilled Labor [80 h]; Skilled Labor [160 h]; Glass Fused Bolted (GLS) 1500 m3 Tank with associated accessories & manufacturer recommendation for the foundation [0.2] |
| CO-UB-IRT-210 | shell erection | 2026-11-19 → 2026-11-24 (+5d) | 2026-11-25 → 2026-12-01 (+6d) |  | 37d → 32.75d |  | resources Glass Fused Bolted (GLS) 1500 m3 Tank with associated accessories & manufacturer recommendation for the foundation [0.27]; Unskilled Labor [112 h]; Skilled Labor [224 h] → Unskilled Labor [112 h]; Skilled Labor [224 h]; Glass Fused Bolted (GLS) 1500 m3 Tank with associated accessories & manufacturer recommendation for the foundation [0.27] |
| CO-UB-IRT-220 | Aluminum dome / steel roof installation | 2026-11-26 → 2026-12-01 (+5d) | 2026-12-02 → 2026-12-08 (+6d) |  | 37d → 32.75d |  | resources Glass Fused Bolted (GLS) 1500 m3 Tank with associated accessories & manufacturer recommendation for the foundation [0.33]; Unskilled Labor [112 h]; Skilled Labor [224 h] → Unskilled Labor [112 h]; Skilled Labor [224 h]; Glass Fused Bolted (GLS) 1500 m3 Tank with associated accessories & manufacturer recommendation for the foundation [0.33] |
| 4 | **Mechanical Work&Accessories** | 2026-12-03 → 2026-12-08 (+5d) | 2026-12-14 → 2026-12-20 (+6d) |  |  |  |  |
| CO-UB-IRT-230 | Inlet / outlet piping connections | 2026-12-03 → 2026-12-08 (+5d) | 2026-12-07 → 2026-12-13 (+6d) |  | 37d → 32.75d |  | resources Glass Fused Bolted (GLS) 1500 m3 Tank with associated accessories & manufacturer recommendation for the foundation [0.2]; Unskilled Labor [48 h]; Plumber [48 h] → Unskilled Labor [48 h]; Plumber [48 h]; Glass Fused Bolted (GLS) 1500 m3 Tank with associated accessories & manufacturer recommendation for the foundation [0.2] |
| CO-UB-IRT-240 | installation Valves | 2026-12-08 → 2026-12-13 (+5d) | 2026-12-12 → 2026-12-17 (+5d) |  | 37d → 32.75d |  | resources Glass Fused Bolted (GLS) 1500 m3 Tank with associated accessories & manufacturer recommendation for the foundation [0.13]; Unskilled Labor [48 h]; Plumber [48 h] → Unskilled Labor [48 h]; Plumber [48 h]; Glass Fused Bolted (GLS) 1500 m3 Tank with associated accessories & manufacturer recommendation for the foundation [0.13] |
| CO-UB-IRT-250 | Ladders, platforms & handrails | 2026-12-13 → 2026-12-17 (+4d) | 2026-12-14 → 2026-12-20 (+6d) |  | 37d → 32.75d |  | resources Glass Fused Bolted (GLS) 1500 m3 Tank with associated accessories & manufacturer recommendation for the foundation [0.05]; Unskilled Labor [16 h]; Skilled Labor [32 h] → Unskilled Labor [16 h]; Skilled Labor [32 h]; Glass Fused Bolted (GLS) 1500 m3 Tank with associated accessories & manufacturer recommendation for the foundation [0.05] |
| 1 | **Control Room** |  | 2027-03-06 → 2027-01-23 (-42d) |  |  |  |  |
| 5 | **Civil Work** |  | 2026-12-12 → 2026-11-07 (-35d) |  |  |  |  |
| CO-UB-CR-100 | Excavation Work For Control Room Foundation |  |  |  |  | CO-UB-LS-220 → CO-UB-LS-220 SS | resources Price; Unskilled Labor [112 h]; Excavator [56 h]; Skilled Labor [56 h] → Unskilled Labor [112 h]; Excavator [56 h]; Skilled Labor [56 h]; Price |
| CO-UB-CR-110 | Pouring for Plain Concrete |  |  |  |  |  | resources Price [72069.1 SAR]; Unskilled Labor [40 h]; Mason [40 h] → Unskilled Labor [40 h]; Mason [40 h]; Price [72069.1 SAR] |
| CO-UB-CR-120 | Pouring R.C Footing For Control Room |  |  |  |  |  | resources Price [180173 SAR]; Unskilled Labor [168 h]; Mason [168 h] → Unskilled Labor [168 h]; Mason [168 h]; Price [180173 SAR] |
| CO-UB-CR-130 | Pouring R.C Columns For Control Room | 2026-11-24 → 2026-10-20 (-35d) | 2026-12-02 → 2026-10-28 (-35d) |  | -7d → 23d |  | resources Price [216207 SAR]; Unskilled Labor [96 h]; Mason [96 h] → Unskilled Labor [96 h]; Mason [96 h]; Price [216207 SAR] |
| CO-UB-CR-140 | Pouring Beams and Slab For Control Room | 2026-12-03 → 2026-10-29 (-35d) | 2026-12-12 → 2026-11-07 (-35d) |  | -7d → 23d |  | resources Price [252242 SAR]; Unskilled Labor [80 h]; Mason [80 h] → Unskilled Labor [80 h]; Mason [80 h]; Price [252242 SAR] |
| 6 | **Finishing Work** | 2026-12-13 → 2026-11-08 (-35d) | 2027-03-06 → 2027-01-23 (-42d) |  |  |  |  |
| 1 | **Architictural work** | 2026-12-13 → 2026-11-08 (-35d) | 2027-01-27 → 2026-12-23 (-35d) |  |  |  |  |
| CO-UB-CR-150 | Brick Work For Control Room | 2026-12-13 → 2026-11-08 (-35d) | 2026-12-22 → 2026-11-17 (-35d) |  | -7d → 23d |  | resources Price [96092.2 SAR]; Unskilled Labor [320 h]; Mason [320 h] → Unskilled Labor [320 h]; Mason [320 h]; Price [96092.2 SAR] |
| CO-UB-CR-160 | Thermal & Moisture Protection Work for Control Room | 2026-12-23 → 2026-11-18 (-35d) | 2026-12-30 → 2026-11-25 (-35d) |  | -7d → 23d |  | resources Price [96092.2 SAR]; Unskilled Labor [56 h]; Mason [56 h] → Unskilled Labor [56 h]; Mason [56 h]; Price [96092.2 SAR] |
| CO-UB-CR-200 | Install For Curtian Wall and Windows and Doors | 2026-12-31 → 2026-11-26 (-35d) | 2027-01-09 → 2026-12-05 (-35d) |  | -7d → 23d |  | resources Price [96092.2 SAR]; Unskilled Labor [80 h]; Skilled Labor [160 h] → Unskilled Labor [80 h]; Skilled Labor [160 h]; Price [96092.2 SAR] |
| CO-UB-CR-240 | External Finshing Work (Walls and Floor) | 2027-01-10 → 2026-12-06 (-35d) | 2027-01-18 → 2026-12-14 (-35d) |  | -7d → 23d |  | resources Price [96092.2 SAR]; Unskilled Labor [80 h]; Skilled Labor [160 h] → Unskilled Labor [80 h]; Skilled Labor [160 h]; Price [96092.2 SAR] |
| CO-UB-CR-250 | Internal Finshing Work (Walls,Floor and Ceiling) | 2027-01-19 → 2026-12-15 (-35d) | 2027-01-27 → 2026-12-23 (-35d) |  | -7d → 23d |  | resources Price [96092.2 SAR]; Unskilled Labor [80 h]; Skilled Labor [160 h] → Unskilled Labor [80 h]; Skilled Labor [160 h]; Price [96092.2 SAR] |
| 3 | **Mechanical Work** | 2026-12-23 → 2026-11-18 (-35d) | 2027-02-09 → 2027-01-04 (-36d) |  |  |  |  |
| 3 | **HVAC System** | 2026-12-23 → 2026-11-18 (-35d) | 2027-02-09 → 2027-01-04 (-36d) |  |  |  |  |
| CO-UB-CR-170 | Install of Refrigerant Piping ( fabricated metal ducts with flanges complete with supports, vanes, dampers ) | 2026-12-23 → 2026-11-18 (-35d) | 2026-12-27 → 2026-11-22 (-35d) |  | 6d → 36d |  | resources Price [96092.2 SAR]; Unskilled Labor [32 h]; Electrical Technician [64 h] → Unskilled Labor [32 h]; Electrical Technician [64 h]; Price [96092.2 SAR] |
| CO-UB-CR-260 | Install of Mini split actual capacity 2 Ton and Ducted split actual capacity 4 Ton | 2027-01-28 → 2026-12-24 (-35d) | 2027-02-04 → 2026-12-31 (-35d) |  | 4d → 34d |  | resources Price [96092.2 SAR]; Unskilled Labor [56 h]; Electrical Technician [112 h] → Unskilled Labor [56 h]; Electrical Technician [112 h]; Price [96092.2 SAR] |
| CO-UB-CR-310 | Install of Air Grills 150mm x150mm and Air Diffuser 600mm x 600mm | 2027-02-06 → 2027-01-02 (-35d) | 2027-02-09 → 2027-01-04 (-36d) |  | 4d → 34d |  | resources Price [96092.2 SAR]; Unskilled Labor [24 h]; Electrical Technician [48 h] → Unskilled Labor [24 h]; Electrical Technician [48 h]; Price [96092.2 SAR] |
| 4 | **Fire Fitting System** | 2026-12-28 → 2026-11-23 (-35d) | 2027-01-31 → 2026-12-27 (-35d) |  |  |  |  |
| CO-UB-CR-180 | Installation & Testing of 2 hours Fire rated system for closing the openings between rooms with help of Rock wool | 2026-12-28 → 2026-11-23 (-35d) | 2026-12-31 → 2026-11-26 (-35d) |  | 6d → 36d |  | resources Price [96092.2 SAR]; Unskilled Labor [32 h]; Electrical Technician [64 h] → Unskilled Labor [32 h]; Electrical Technician [64 h]; Price [96092.2 SAR] |
| CO-UB-CR-270 | Install Fire Extinguishers | 2027-01-28 → 2026-12-24 (-35d) | 2027-01-31 → 2026-12-27 (-35d) |  | 11d → 41d |  | resources Price [96092.2 SAR]; Unskilled Labor [24 h]; Electrical Technician [48 h] → Unskilled Labor [24 h]; Electrical Technician [48 h]; Price [96092.2 SAR] |
| 4 | **Electrical Work** | 2027-01-02 → 2026-11-28 (-35d) | 2027-02-25 → 2027-01-17 (-39d) |  |  |  |  |
| 1 | **LV Power** | 2027-01-28 → 2026-12-24 (-35d) | 2027-02-16 → 2027-01-10 (-37d) |  |  |  |  |
| CO-UB-CR-190 | Install of Distribution board For Control Room | 2027-01-28 → 2026-12-24 (-35d) | 2027-02-02 → 2026-12-29 (-35d) |  | -1d → 29d |  | resources Price [43678.3 SAR]; Unskilled Labor [40 h]; Electrical Technician [80 h] → Unskilled Labor [40 h]; Electrical Technician [80 h]; Price [43678.3 SAR] |
| CO-UB-CR-220 | Install of Earting Cable for Control Room | 2027-02-03 → 2026-12-30 (-35d) | 2027-02-09 → 2027-01-04 (-36d) |  | -1d → 29d |  | resources Price [43678.3 SAR]; Unskilled Labor [40 h]; Electrical Technician [80 h] → Unskilled Labor [40 h]; Electrical Technician [80 h]; Price [43678.3 SAR] |
| CO-UB-CR-280 | Install of Socket outlet and LED Lighting | 2027-02-09 → 2027-01-05 (-35d) | 2027-02-16 → 2027-01-10 (-37d) |  | -1d → 29d |  | resources Price [43678.3 SAR]; Unskilled Labor [40 h]; Electrical Technician [80 h] → Unskilled Labor [40 h]; Electrical Technician [80 h]; Price [43678.3 SAR] |
| 3 | **Fire Detection And Alarm System** | 2027-01-02 → 2026-11-28 (-35d) | 2027-02-25 → 2027-01-17 (-39d) |  |  |  |  |
| CO-UB-CR-210 | Install of 2C x 1.5 Sqm FR Rated Armored - Cable For Loop Wiring | 2027-01-02 → 2026-11-28 (-35d) | 2027-01-06 → 2026-12-02 (-35d) |  | 6d → 36d |  | resources Price [43678.3 SAR]; Unskilled Labor [40 h]; Electrical Technician [80 h] → Unskilled Labor [40 h]; Electrical Technician [80 h]; Price [43678.3 SAR] |
| CO-UB-CR-230 | Install of Transmission Communication cable - Fiber Optics 12Core | 2027-01-07 → 2026-12-03 (-35d) | 2027-01-12 → 2026-12-08 (-35d) |  | 6d → 36d |  | resources Price [43678.3 SAR]; Unskilled Labor [40 h]; Electrical Technician [80 h] → Unskilled Labor [40 h]; Electrical Technician [80 h]; Price [43678.3 SAR] |
| CO-UB-CR-290 | Install of power supply system for fire alarm control panel | 2027-01-28 → 2026-12-24 (-35d) | 2027-02-02 → 2026-12-29 (-35d) |  | -7d → 23d |  | resources Price [43678.3 SAR]; Unskilled Labor [40 h]; Electrical Technician [80 h] → Unskilled Labor [40 h]; Electrical Technician [80 h]; Price [43678.3 SAR] |
| CO-UB-CR-300 | Install of Fire Alarm Control panel | 2027-02-03 → 2026-12-30 (-35d) | 2027-02-10 → 2027-01-05 (-36d) |  | -7d → 23d |  | resources Price [43678.3 SAR]; Unskilled Labor [48 h]; Electrical Technician [96 h] → Unskilled Labor [48 h]; Electrical Technician [96 h]; Price [43678.3 SAR] |
| CO-UB-CR-320 | Installation of the addressable manual call point with operation safety glass breaking | 2027-02-10 → 2027-01-06 (-35d) | 2027-02-15 → 2027-01-09 (-37d) |  | -7d → 23d |  | resources Price [43678.3 SAR]; Unskilled Labor [24 h]; Electrical Technician [48 h] → Unskilled Labor [24 h]; Electrical Technician [48 h]; Price [43678.3 SAR] |
| CO-UB-CR-330 | Install of the photoelectric heat & smoke detector | 2027-02-15 → 2027-01-10 (-36d) | 2027-02-20 → 2027-01-12 (-39d) |  | -7d → 23d |  | resources Price [43678.3 SAR]; Unskilled Labor [24 h]; Electrical Technician [48 h] → Unskilled Labor [24 h]; Electrical Technician [48 h]; Price [43678.3 SAR] |
| CO-UB-CR-340 | Install of Sounder With Beacon | 2027-02-15 → 2027-01-10 (-36d) | 2027-02-20 → 2027-01-12 (-39d) |  | -7d → 23d |  | resources Price [43678.3 SAR]; Unskilled Labor [24 h]; Electrical Technician [48 h] → Unskilled Labor [24 h]; Electrical Technician [48 h]; Price [43678.3 SAR] |
| CO-UB-CR-350 | Install of Addressable Control module | 2027-02-20 → 2027-01-13 (-38d) | 2027-02-25 → 2027-01-17 (-39d) |  | -7d → 23d |  | resources Price [43678.3 SAR]; Unskilled Labor [32 h]; Electrical Technician [64 h] → Unskilled Labor [32 h]; Electrical Technician [64 h]; Price [43678.3 SAR] |
| 2 | **Furnitures work** | 2027-02-25 → 2027-01-18 (-38d) | 2027-03-06 → 2027-01-23 (-42d) |  |  |  |  |
| CO-UB-CR-360 | Office Chairs,Tables and Stand | 2027-02-25 → 2027-01-18 (-38d) | 2027-03-06 → 2027-01-23 (-42d) |  | -7d → 23d |  | resources Price [240230 SAR]; Unskilled Labor [40 h]; Skilled Labor [80 h] → Unskilled Labor [40 h]; Skilled Labor [80 h]; Price [240230 SAR] |
| ML | **Softscape and Planting Works** | 2027-02-08 → 2027-02-17 (+9d) | 2027-04-04 → 2027-04-11 (+7d) |  |  |  |  |
| 1 | **Planting Beds Preparation** | 2027-02-08 → 2027-02-17 (+9d) | 2027-03-14 → 2027-03-21 (+7d) |  |  |  |  |
| CO-LS-PL-100 | Excavation of planting beds | 2027-02-08 → 2027-02-17 (+9d) | 2027-02-18 → 2027-02-27 (+9d) |  | -46d → -71.5d |  | resources Price [144463 SAR]; Unskilled Labor [112 h]; Excavator [56 h]; Skilled Labor [56 h] → Unskilled Labor [112 h]; Excavator [56 h]; Skilled Labor [56 h]; Price [144463 SAR] |
| CO-LS-PL-110 | Supply & placement of suitable topsoil | 2027-02-18 → 2027-02-28 (+10d) | 2027-03-01 → 2027-03-13 (+12d) |  | -46d → -71.5d |  | resources Price [433390 SAR]; Unskilled Labor [40 h]; Skilled Labor [80 h] → Unskilled Labor [40 h]; Skilled Labor [80 h]; Price [433390 SAR] |
| CO-LS-PL-120 | Soil improvement (fertilizer, compost, additives) | 2027-03-01 → 2027-03-14 (+13d) | 2027-03-14 → 2027-03-21 (+7d) |  | -46d → -71.5d |  | resources Price [433390 SAR]; Unskilled Labor [40 h]; Skilled Labor [80 h] → Unskilled Labor [40 h]; Skilled Labor [80 h]; Price [433390 SAR] |
| 2 | **Supports & Protection** | 2027-03-15 → 2027-03-22 (+7d) | 2027-03-21 → 2027-03-28 (+7d) |  |  |  |  |
| CO-LS-PL-130 | installation of plant supports / stakes | 2027-03-15 → 2027-03-22 (+7d) | 2027-03-17 → 2027-03-24 (+7d) |  | -46d → -71.5d |  | resources Price [433390 SAR]; Unskilled Labor [40 h]; Skilled Labor [80 h] → Unskilled Labor [40 h]; Skilled Labor [80 h]; Price [433390 SAR] |
| CO-LS-PL-140 | Ties and protection materials | 2027-03-18 → 2027-03-25 (+7d) | 2027-03-21 → 2027-03-28 (+7d) |  | -46d → -71.5d |  | resources Price [577854 SAR]; Unskilled Labor [40 h]; Skilled Labor [80 h] → Unskilled Labor [40 h]; Skilled Labor [80 h]; Price [577854 SAR] |

| ID | Task | Start | Finish | Complete | Total float | Predecessors | Other |
| --- | --- | --- | --- | --- | --- | --- | --- |
| 3 | **Plant Supply** | 2027-03-22 → 2027-03-29 (+7d) | 2027-03-24 → 2027-03-31 (+7d) |  |  |  |  |
| CO-LS-PL-150 | installation of trees | 2027-03-22 → 2027-03-29 (+7d) | 2027-03-24 → 2027-03-31 (+7d) |  | -46d → -71.5d |  | resources Price [866781 SAR]; Unskilled Labor [40 h]; Skilled Labor [80 h] → Unskilled Labor [40 h]; Skilled Labor [80 h]; Price [866781 SAR] |
| 4 | **Site Furnishings** | 2027-03-25 → 2027-04-01 (+7d) | 2027-04-04 → 2027-04-11 (+7d) |  |  |  |  |
| CO-LS-PL-160 | installation of Seating benches | 2027-03-25 → 2027-04-01 (+7d) | 2027-03-28 → 2027-04-04 (+7d) |  | -46d → -71.5d |  | resources Price [345424 SAR]; Unskilled Labor [40 h]; Skilled Labor [80 h] → Unskilled Labor [40 h]; Skilled Labor [80 h]; Price [345424 SAR] |
| CO-LS-PL-170 | tone boulders placement & fixing Works | 2027-03-29 → 2027-04-05 (+7d) | 2027-03-31 → 2027-04-07 (+7d) |  | -46d → -71.5d |  | was named tone boulders ï¿½ placement & fixing Works; resources Price [345424 SAR]; Unskilled Labor [40 h]; Skilled Labor [80 h] → Unskilled Labor [40 h]; Skilled Labor [80 h]; Price [345424 SAR] |
| CO-LS-PL-180 | Gravel Works | 2027-04-01 → 2027-04-08 (+7d) | 2027-04-04 → 2027-04-11 (+7d) |  | -46d → -71.5d |  | resources Price [345424 SAR]; Unskilled Labor [40 h]; Skilled Labor [80 h] → Unskilled Labor [40 h]; Skilled Labor [80 h]; Price [345424 SAR] |
| 1 | **Fence and Gaurd Room** |  | 2027-05-27 → 2027-05-31 (+4d) |  |  |  |  |
| 1 | **Gaurd Room Work** | 2026-12-19 → 2026-12-26 (+7d) | 2027-05-27 → 2027-05-31 (+4d) |  |  |  |  |
| 1 | **Civil Work** | 2026-12-19 → 2026-12-26 (+7d) | 2027-02-03 → 2027-02-11 (+8d) |  |  |  |  |
| A1000 | Excavation Work For Gaurd Room Foundation | 2026-12-19 → 2026-12-26 (+7d) | 2026-12-26 → 2027-01-02 (+7d) |  | -70d → -73.5d |  |  |
| A1010 | Pouring for Plain Concrete | 2026-12-27 → 2027-01-03 (+7d) | 2026-12-30 → 2027-01-06 (+7d) |  | -70d → -73.5d |  | resources 100 mm thickness lean concrete under the foundation [149.25]; Unskilled Labor [160 h]; Carpenter [80 h]; Steel Fixer [80 h] → Unskilled Labor [160 h]; Carpenter [80 h]; Steel Fixer [80 h]; 100 mm thickness lean concrete under the foundation [149.25] |
| A1020 | Pouring R.C Footing For Gaurd Room | 2026-12-31 → 2027-01-07 (+7d) | 2027-01-12 → 2027-01-19 (+7d) |  | -70d → -73.5d |  | resources Foundation [74.63]; Slab on Grade [29.85]; Walls; Unskilled Labor [672 h]; Carpenter [336 h]; Steel Fixer [336 h] → Unskilled Labor [672 h]; Carpenter [336 h]; Steel Fixer [336 h]; Foundation [74.63]; Slab on Grade [29.85]; Walls |
| A1030 | Pouring R.C Columns For Gaurd Room | 2027-01-13 → 2027-01-20 (+7d) | 2027-01-24 → 2027-01-31 (+7d) |  | -70d → -73.5d |  | resources Columns [10.45]; Unskilled Labor [384 h]; Carpenter [192 h]; Steel Fixer [192 h] → Unskilled Labor [384 h]; Carpenter [192 h]; Steel Fixer [192 h]; Columns [10.45] |
| A1040 | Pouring Beams and Slab For Gaurd Room | 2027-01-25 → 2027-02-01 (+7d) | 2027-02-03 → 2027-02-11 (+8d) |  | -70d → -73.5d |  | resources Beams [29.85]; Slabs [46.27]; Lightweight Concrete Roof insulation as per Architect's specification [231.34]; Unskilled Labor [320 h]; Carpenter [160 h]; Steel Fixer [160 h] → Unskilled Labor [320 h]; Carpenter [160 h]; Steel Fixer [160 h]; Beams [29.85]; Slabs [46.27]; Lightweight Concrete Roof insulation as per Architect's specification [231.34] |
| 2 | **Finishing Work** | 2027-02-04 → 2027-02-13 (+9d) | 2027-05-27 → 2027-05-31 (+4d) |  |  |  |  |
| 1 | **Architictural work** | 2027-02-04 → 2027-02-13 (+9d) | 2027-04-08 → 2027-04-15 (+7d) |  |  |  |  |
| A1050 | Brick Work For Gaurd Room | 2027-02-04 → 2027-02-13 (+9d) | 2027-02-16 → 2027-02-25 (+9d) |  | -70d → -73.5d |  | resources Common brickwork. 300mm thick; vertical straight wall complete with accessories.; Insulated brickwork. with expanded polystyrene 200mm thick; vertical straight wall complete with accessories . [152.24]; Common brickwork. 150mm thick; vertical straight wall complete with accessories. [268.66]; Unskilled Labor [160 h]; Skilled Labor [320 h] → Unskilled Labor [160 h]; Skilled Labor [320 h]; Common brickwork. 300mm thick; vertical straight wall complete with accessories.; Insulated brickwork. with expanded polystyrene 200mm thick; vertical straight wall complete with accessories . [152.24]; Common brickwork. 150mm thick; vertical straight wall complete with accessories. [268.66] |
| A1060 | Thermal & Moisture Protection Work for Gaurd Room | 2027-02-17 → 2027-02-25 (+8d) | 2027-02-27 → 2027-03-08 (+9d) |  | -64d → -67.5d |  | resources 2 perpendicular layers of cold bitumen coats [231.34]; 2 layer of 4mm HDPE membrane, 2 perpendicular layers cold bitumen coats [231.34]; 1 layer EPOXY Paint 300 micron [231.34]; Membrane fully bonded to prime deck and upstand [231.34]; Geotextile Filter membrane uv resistance [231.34]; 85mm thick thermal insulation [231.34]; 1.5mm thick epdm waterproofing membrane [231.34]; Unskilled Labor [56 h]; Skilled Labor [112 h] → Unskilled Labor [56 h]; Skilled Labor [112 h]; 2 perpendicular layers of cold bitumen coats [231.34]; 2 layer of 4mm HDPE membrane, 2 perpendicular layers cold bitumen coats [231.34]; 1 layer EPOXY Paint 300 micron [231.34]; Membrane fully bonded to prime deck and upstand [231.34]; Geotextile Filter membrane uv resistance [231.34]; 85mm thick thermal insulation [231.34]; 1.5mm thick epdm waterproofing membrane [231.34] |
| A1070 | Install For Curtian Wall and Windows and Doors | 2027-03-13 → 2027-03-20 (+7d) | 2027-03-21 → 2027-03-28 (+7d) |  | -70d → -73.5d |  | resources CW01 - 4500 mm width x 3700 mm height [1.49]; CW02 - 4500 mm width x 3700 mm height [1.49]; CW03 - 4500 mm width x 3700 mm height [1.49]; CW04 - 4500 mm width x 3700 mm height [1.49]; CW05 - 7500 mm width x 4250 mm height [1.49]; CW06 - 7500 mm width x 4250 mm height [1.49]; W01 - 1000 mm width x 2000 mm height [1.49]; W02 - 2000 mm width x 2000 mm height [2.99]; W03 - 2000 mm width x 1000 mm height [4.48]; D2 - 900 mm x 2200 mm height temper door [10.45]; D3 - 950 mm x 2000 mm height temper door [2.99]; Unskilled Labor [80 h]; Skilled Labor [160 h] → Unskilled Labor [80 h]; Skilled Labor [160 h]; CW01 - 4500 mm width x 3700 mm height [1.49]; CW02 - 4500 mm width x 3700 mm height [1.49]; CW03 - 4500 mm width x 3700 mm height [1.49]; CW04 - 4500 mm width x 3700 mm height [1.49]; CW05 - 7500 mm width x 4250 mm height [1.49]; CW06 - 7500 mm width x 4250 mm height [1.49]; W01 - 1000 mm width x 2000 mm height [1.49]; W02 - 2000 mm width x 2000 mm height [2.99]; W03 - 2000 mm width x 1000 mm height [4.48]; D2 - 900 mm x 2200 mm height temper door [10.45]; D3 - 950 mm x 2000 mm height temper door [2.99] |
| A1080 | External Finshing Work (Walls and Floor) | 2027-03-22 → 2027-03-29 (+7d) | 2027-03-30 → 2027-04-06 (+7d) |  | -70d → -73.5d |  | resources Supply and install 300*300mm terrazzo tiles with 150mm high skirting at perimeter with approv [198.51]; Unskilled Labor [80 h]; Skilled Labor [160 h] → Unskilled Labor [80 h]; Skilled Labor [160 h]; Supply and install 300*300mm terrazzo tiles with 150mm high skirting at perimeter with approv [198.51] |
| A1090 | Internal Finshing Work (Walls,Floor and Ceiling) | 2027-03-31 → 2027-04-07 (+7d) | 2027-04-08 → 2027-04-15 (+7d) |  | -70d → -73.5d |  | resources Supply and install 300*300mm glazed ceramic wall tiles on cement mortar and including rough [141.79]; Supply and install internal plastering and 2 coats of acrylic paint at walls includin [322.39]; Supply and install 300*300mm glazed ceramic wall tiles on cement mortar and including rough and smooth p [17.91]; Supply and install 600*600mm porcelain tiles with approved quality on 30 mm mortar inclu [186.57]; Supply and install 12.5mm thk, gypsum board suspended ceiling including s [7.46]; Unskilled Labor [80 h]; Skilled Labor [160 h] → Unskilled Labor [80 h]; Skilled Labor [160 h]; Supply and install 300*300mm glazed ceramic wall tiles on cement mortar and including rough [141.79]; Supply and install internal plastering and 2 coats of acrylic paint at walls includin [322.39]; Supply and install 300*300mm glazed ceramic wall tiles on cement mortar and including rough and smooth p [17.91]; Supply and install 600*600mm porcelain tiles with approved quality on 30 mm mortar inclu [186.57]; Supply and install 12.5mm thk, gypsum board suspended ceiling including s [7.46] |
| 3 | **Mechanical Work** | 2027-02-17 → 2027-02-25 (+8d) | 2027-04-20 → 2027-04-27 (+7d) |  |  |  |  |
| 1 | **Sanitary Drainage & Plumbing System** | 2027-02-17 → 2027-02-25 (+8d) | 2027-03-08 → 2027-03-18 (+10d) |  |  |  |  |
| A1110 | Install Sanitary Piping System (UPVC) | 2027-02-17 → 2027-02-25 (+8d) | 2027-02-22 → 2027-03-03 (+9d) |  | -70d → -73.5d |  | resources Supply and install Hand Wash Basin with Water Tap, angle valve, P-trap connected to 50mm diameter s [4.48]; Supply and install paper towel dispenser, surface mounted, satin finish stainless steel as per approv [4.48]; Supply and install mirror, size 460*910mm as per approved sample including frames, backing and all accessories to complete. [4.48]; Supply and install towel ring , surface mounted, satin finish stainless steel as per approved sample including accessories. [4.48]; Kitchen sink with single bowl with hot/cold water mixer. [4.48]; 50mm diameter [55.22]; 75mm diameter [5.97]; 80mm diameter [16.42]; 100mm diameter [2.99]; 110mm diameter [17.91]; Floor cleanout, size 75 mm diameter [2.99]; Floor cleanout, size 110 mm diameter [5.97]; Unskilled Labor [32 h]; Skilled Labor [64 h] → Unskilled Labor [32 h]; Skilled Labor [64 h]; Supply and install Hand Wash Basin with Water Tap, angle valve, P-trap connected to 50mm diameter s [4.48]; Supply and install paper towel dispenser, surface mounted, satin finish stainless steel as per approv [4.48]; Supply and install mirror, size 460*910mm as per approved sample including frames, backing and all accessories to complete. [4.48]; Supply and install towel ring , surface mounted, satin finish stainless steel as per approved sample including accessories. [4.48]; Kitchen sink with single bowl with hot/cold water mixer. [4.48]; 50mm diameter [55.22]; 75mm diameter [5.97]; 80mm diameter [16.42]; 100mm diameter [2.99]; 110mm diameter [17.91]; Floor cleanout, size 75 mm diameter [2.99]; Floor cleanout, size 110 mm diameter [5.97] |
| A1120 | Install Base mounted flush tank water Western water closet system | 2027-02-23 → 2027-03-04 (+9d) | 2027-03-03 → 2027-03-15 (+12d) |  | -70d → -73.5d |  | resources Supply and install Base mounted flush tank water Western water closet system with lid connected to 110mm soil pipe [2.99]; Unskilled Labor [48 h]; Skilled Labor [96 h] → Unskilled Labor [48 h]; Skilled Labor [96 h]; Supply and install Base mounted flush tank water Western water closet system with lid connected to 110mm soil pipe [2.99] |
| A1130 | Install 1 meter length 10mm diameter Flexible Hose and Gate Valves and Slow Closing Valve | 2027-03-04 → 2027-03-16 (+12d) | 2027-03-08 → 2027-03-18 (+10d) |  | -70d → -73.5d |  | resources Gate Valves [2.99]; Slow Closing Valve [2.99]; 1 meter length 10mm diameter Flexible Hose with insulated handle complete with fork support, index push, vacuum breaker [2.99]; Unskilled Labor [24 h]; Skilled Labor [48 h] → Unskilled Labor [24 h]; Skilled Labor [48 h]; Gate Valves [2.99]; Slow Closing Valve [2.99]; 1 meter length 10mm diameter Flexible Hose with insulated handle complete with fork support, index push, vacuum breaker [2.99] |
| 2 | **Water Supply System** | 2027-02-17 → 2027-02-25 (+8d) | 2027-04-11 → 2027-04-18 (+7d) |  |  |  |  |
| A1240 | Install GRP water tanks capacity of each 1000 liter | 2027-02-17 → 2027-02-25 (+8d) | 2027-02-21 → 2027-03-02 (+9d) |  | -69d → -72.5d |  | resources GRP water tanks capacity of each 1000 liter complete with all fittings, all valves and concrete pad [4.48]; Unskilled Labor [24 h]; Skilled Labor [48 h] → Unskilled Labor [24 h]; Skilled Labor [48 h]; GRP water tanks capacity of each 1000 liter complete with all fittings, all valves and concrete pad [4.48] |
| A1140 | Install for Cold Water Pipe complete with joints, angles, reducer etc. | 2027-02-22 → 2027-03-02 (+8d) | 2027-03-01 → 2027-03-13 (+12d) |  | -69d → -72.5d |  | resources 13mm diameter [1.49]; 15mm diameter [1.49]; 20mm diameter [1.49]; 25mm diameter [28.36]; 32mm diameter [52.24]; 40mm diameter [17.91]; 50mm diameter [1.49]; Unskilled Labor [40 h]; Skilled Labor [80 h] → Unskilled Labor [40 h]; Skilled Labor [80 h]; 13mm diameter [1.49]; 15mm diameter [1.49]; 20mm diameter [1.49]; 25mm diameter [28.36]; 32mm diameter [52.24]; 40mm diameter [17.91]; 50mm diameter [1.49] |
| A1150 | Install for Hot Water Pipe complete with joints, angles, reducer etc. | 2027-03-01 → 2027-03-14 (+13d) | 2027-03-07 → 2027-03-17 (+10d) |  | -69d → -72.5d |  | resources 13mm diameter [1.49]; 20mm diameter [7.46]; 25mm diameter [17.91]; Unskilled Labor [32 h]; Skilled Labor [64 h] → Unskilled Labor [32 h]; Skilled Labor [64 h]; 13mm diameter [1.49]; 20mm diameter [7.46]; 25mm diameter [17.91] |
| A1160 | Install for Isolation Valve,Spray Head,Roof Drain,Floor Drain,Gully teap,Vend on Roof to exhaust air | 2027-03-07 → 2027-03-18 (+11d) | 2027-03-14 → 2027-03-21 (+7d) |  | -50d → -53.5d |  | resources Isolation Valve Size 20 [4.48]; Isolation Valve Size 25 [4.48]; Isolation Valve Size 32 [7.46]; Isolation Valve Size 40 [1.49]; Isolation Valve Size 50 [1.49]; 20 mm diameter spray head for cold water supply [4.48]; Roof drain [4.48]; Vent on a roof to exhaust air [4.48]; Floor drain 100x80mm [5.97]; Gully trap 300x300 mm [4.48]; Unskilled Labor [24 h]; Skilled Labor [48 h] → Unskilled Labor [24 h]; Skilled Labor [48 h]; Isolation Valve Size 20 [4.48]; Isolation Valve Size 25 [4.48]; Isolation Valve Size 32 [7.46]; Isolation Valve Size 40 [1.49]; Isolation Valve Size 50 [1.49]; 20 mm diameter spray head for cold water supply [4.48]; Roof drain [4.48]; Vent on a roof to exhaust air [4.48]; Floor drain 100x80mm [5.97]; Gully trap 300x300 mm [4.48] |
| A1170 | Install of Inspection chamber, size 800x900x1000 | 2027-03-15 → 2027-03-22 (+7d) | 2027-03-16 → 2027-03-23 (+7d) |  | -50d → -53.5d |  | resources inspection chamber, size 800x900x1000 [4.48]; Unskilled Labor [16 h]; Skilled Labor [32 h] → Unskilled Labor [16 h]; Skilled Labor [32 h]; inspection chamber, size 800x900x1000 [4.48] |
| A1180 | Install OF Electric Water Heater set with connection and Water meter complete with accessories | 2027-04-10 → 2027-04-17 (+7d) | 2027-04-11 → 2027-04-18 (+7d) |  | -70d → -73.5d |  | resources Supply and install Electric Water Heater set with connection [4.48]; Water meter complete with accessories. [4.48]; Unskilled Labor [16 h]; Skilled Labor [32 h] → Unskilled Labor [16 h]; Skilled Labor [32 h]; Supply and install Electric Water Heater set with connection [4.48]; Water meter complete with accessories. [4.48] |
| 3 | **HVAC System** | 2027-02-23 → 2027-03-04 (+9d) | 2027-04-20 → 2027-04-27 (+7d) |  |  |  |  |
| A1200 | Install of Refrigerant Piping ( fabricated metal ducts with flanges complete with supports, vanes, dampers ) | 2027-02-23 → 2027-03-04 (+9d) | 2027-03-01 → 2027-03-13 (+12d) |  | -49d → -54.5d |  | resources Supply, fabricate, install and testing factory fabricated metal ducts with flanges complete with supports, vanes, [59.7]; Supplying, installation testing & commissioning of external insulation on ducts [59.7]; Supply, fix, testing and commissioning of exhaust air/fresh air louvers of powder coated extruded aluminium construction. [1.49]; Providing, fixing, testing and commissioning of powder coated extruded aluminum sections grills and diffusers with dampers. [2.99]; Unskilled Labor [32 h]; Electrical Technician [64 h] → Unskilled Labor [32 h]; Electrical Technician [64 h]; Supply, fabricate, install and testing factory fabricated metal ducts with flanges complete with supports, vanes, [59.7]; Supplying, installation testing & commissioning of external insulation on ducts [59.7]; Supply, fix, testing and commissioning of exhaust air/fresh air louvers of powder coated extruded aluminium construction. [1.49]; Providing, fixing, testing and commissioning of powder coated extruded aluminum sections grills and diffusers with dampers. [2.99] |
| A1190 | Install of Mini split actual capacity 2 Ton and Ducted split actual capacity 4 Ton | 2027-04-10 → 2027-04-17 (+7d) | 2027-04-17 → 2027-04-24 (+7d) |  | -48d → -55d |  | resources Mini split actual capacity 2 Ton [1.49]; Ducted split actual capacity 4 Ton [2.99]; Unskilled Labor [56 h]; Electrical Technician [112 h] → Unskilled Labor [56 h]; Electrical Technician [112 h]; Mini split actual capacity 2 Ton [1.49]; Ducted split actual capacity 4 Ton [2.99] |
| A1210 | Install of Air Grills 150mm x150mm and Air Diffuser 600mm x 600mm | 2027-04-18 → 2027-04-25 (+7d) | 2027-04-20 → 2027-04-27 (+7d) |  | -48d → -55d |  | resources Air Grills 150mm x150mm [2.99]; Air Diffuser 600mm x 600mm [8.96]; Unskilled Labor [24 h]; Electrical Technician [48 h] → Unskilled Labor [24 h]; Electrical Technician [48 h]; Air Grills 150mm x150mm [2.99]; Air Diffuser 600mm x 600mm [8.96] |
| 4 | **Fire Fitting System** | 2027-03-01 → 2027-03-14 (+13d) | 2027-04-15 → 2027-04-22 (+7d) |  |  |  |  |
| A1220 | Installation & Testing of 2 hours Fire rated system for closing the openings between rooms with help of Rock wool | 2027-03-01 → 2027-03-14 (+13d) | 2027-03-13 → 2027-03-20 (+7d) |  | -49d → -54.5d |  | resources Supply, Installation & Testing of 2 hours Fire rated system for closing the openings between roo [1.49]; Unskilled Labor [48 h]; Electrical Technician [96 h] → Unskilled Labor [48 h]; Electrical Technician [96 h]; Supply, Installation & Testing of 2 hours Fire rated system for closing the openings between roo [1.49] |
| A1230 | Install Fire Extinguishers | 2027-04-10 → 2027-04-17 (+7d) | 2027-04-15 → 2027-04-22 (+7d) |  | -44d → -51d |  | resources 4.5 KG CO2 Type Fire Extinguishers [5.97]; 6 KG ABC Type Fire Extinguishers [5.97]; Unskilled Labor [48 h]; Electrical Technician [96 h] → Unskilled Labor [48 h]; Electrical Technician [96 h]; 4.5 KG CO2 Type Fire Extinguishers [5.97]; 6 KG ABC Type Fire Extinguishers [5.97] |
| 4 | **Electrical Work** | 2027-03-01 → 2027-03-14 (+13d) | 2027-05-22 → 2027-05-26 (+4d) |  |  |  |  |
| 1 | **LV Power** | 2027-03-01 → 2027-03-14 (+13d) | 2027-04-14 → 2027-04-21 (+7d) |  |  |  |  |
| A1250 | Install of Distribution board For Gaurd Room | 2027-03-01 → 2027-03-14 (+13d) | 2027-03-08 → 2027-03-18 (+10d) |  | -49d → -52.5d |  | resources Guard Room 1 [1.49]; Guard Room 2 [1.49]; Guard Room 3 [1.49]; Unskilled Labor [40 h]; Electrical Technician [80 h] → Unskilled Labor [40 h]; Electrical Technician [80 h]; Guard Room 1 [1.49]; Guard Room 2 [1.49]; Guard Room 3 [1.49] |
| A1270 | Install of Earting Cable for Gaurd Room | 2027-03-13 → 2027-03-20 (+7d) | 2027-03-17 → 2027-03-24 (+7d) |  | -49d → -52.5d |  | resources 4mm2 Cu./FRLSZH Cable [895.52]; 6mm2 Cu./FRLSZH Cable [164.18]; Unskilled Labor [40 h]; Electrical Technician [80 h] → Unskilled Labor [40 h]; Electrical Technician [80 h]; 4mm2 Cu./FRLSZH Cable [895.52]; 6mm2 Cu./FRLSZH Cable [164.18] |
| A1260 | Install of Socket outlet and LED Lighting | 2027-04-10 → 2027-04-17 (+7d) | 2027-04-14 → 2027-04-21 (+7d) |  | -43d → -50d |  | resources 30A, 2P AC Disconnect Switch [16.42]; 20A Duplex Receptacle Floor Mounted [17.91]; Twin Socket outlet [8.96]; Twin Socket outlet, Weather Proof [7.46]; Single gang Lighting switch [8.96]; 2way Single gang Lighting switch [2.99]; 36W LED linear Pendant lighting [20.9]; 36W LED Emergency linear Pendant lighting [8.96]; 13W recess mounted LED down light fitting [11.94]; 13W recess emergency mounted LED down light fitting with 1.5 Hr Battery [8.96]; 10.4W LED Exit light with 1.5 Hr Battery [4.48]; Unskilled Labor [40 h]; Electrical Technician [80 h] → Unskilled Labor [40 h]; Electrical Technician [80 h]; 30A, 2P AC Disconnect Switch [16.42]; 20A Duplex Receptacle Floor Mounted [17.91]; Twin Socket outlet [8.96]; Twin Socket outlet, Weather Proof [7.46]; Single gang Lighting switch [8.96]; 2way Single gang Lighting switch [2.99]; 36W LED linear Pendant lighting [20.9]; 36W LED Emergency linear Pendant lighting [8.96]; 13W recess mounted LED down light fitting [11.94]; 13W recess emergency mounted LED down light fitting with 1.5 Hr Battery [8.96]; 10.4W LED Exit light with 1.5 Hr Battery [4.48] |
| 3 | **Fire Detection And Alarm System** | 2027-03-14 → 2027-03-21 (+7d) | 2027-05-03 → 2027-05-10 (+7d) |  |  |  |  |
| A1340 | Install of 2C x 1.5 Sqm FR Rated Armored - Cable For Loop Wiring | 2027-03-14 → 2027-03-21 (+7d) | 2027-03-18 → 2027-03-25 (+7d) |  | -49d → -54.5d |  | resources 2C x 1.5 Sqm FR Rated Armored - Cable For Loop Wiring [2686.57]; DACT (Auto - Dailer) for 24x7 Civil Defence [1.49]; Unskilled Labor [40 h]; Electrical Technician [80 h] → Unskilled Labor [40 h]; Electrical Technician [80 h]; 2C x 1.5 Sqm FR Rated Armored - Cable For Loop Wiring [2686.57]; DACT (Auto - Dailer) for 24x7 Civil Defence [1.49] |
| A1350 | Install of Transmission Communication cable - Fiber Optics 12Core | 2027-03-20 → 2027-03-27 (+7d) | 2027-03-24 → 2027-03-31 (+7d) |  | -49d → -54.5d |  | resources Transmission Communication cable - Fiber Optics 12Core [3731.34]; Transmission Communication cable - Ethernet Cable [746.27]; Supply, install to site and installation of power cable [2388.06]; Fire Fighter’s Telephone Centre [1.49]; Fireman’s Telephone Jack [2.99]; Voice Command Center [1.49]; Unskilled Labor [40 h]; Electrical Technician [80 h] → Unskilled Labor [40 h]; Electrical Technician [80 h]; Transmission Communication cable - Fiber Optics 12Core [3731.34]; Transmission Communication cable - Ethernet Cable [746.27]; Supply, install to site and installation of power cable [2388.06]; Fire Fighter s Telephone Centre [1.49]; Fireman s Telephone Jack [2.99]; Voice Command Center [1.49] |
| A1360 | Install of power supply system for fire alarm control panel | 2027-04-10 → 2027-04-17 (+7d) | 2027-04-14 → 2027-04-21 (+7d) |  | -62d → -67.5d |  | resources Supply, install to site and installation of power supply system for fire alarm control panel [1.49]; Unskilled Labor [40 h]; Electrical Technician [80 h] → Unskilled Labor [40 h]; Electrical Technician [80 h]; Supply, install to site and installation of power supply system for fire alarm control panel [1.49] |
| A1280 | Install of Fire Alarm Control panel | 2027-04-15 → 2027-04-22 (+7d) | 2027-04-21 → 2027-04-28 (+7d) |  | -62d → -67.5d |  | resources Fire Alarm Control panel with fire alarm zoning with Mimic panel with fire alarm zoning [5.97]; Main Fire Alarm Control panel with fire alarm zoning with Mimic panel with fire alarm zoning [1.49]; Unskilled Labor [48 h]; Electrical Technician [96 h] → Unskilled Labor [48 h]; Electrical Technician [96 h]; Fire Alarm Control panel with fire alarm zoning with Mimic panel with fire alarm zoning [5.97]; Main Fire Alarm Control panel with fire alarm zoning with Mimic panel with fire alarm zoning [1.49] |
| A1290 | Installation of the addressable manual call point with operation safety glass breaking | 2027-04-22 → 2027-04-29 (+7d) | 2027-04-25 → 2027-05-02 (+7d) |  | -62d → -67.5d |  | resources Supply and installation of the addressable manual call point with operation safety glass breaking and pushbutton [25.37]; Unskilled Labor [24 h]; Electrical Technician [48 h] → Unskilled Labor [24 h]; Electrical Technician [48 h]; Supply and installation of the addressable manual call point with operation safety glass breaking and pushbutton [25.37] |
| A1300 | Install of the photoelectric heat & smoke detector | 2027-04-26 → 2027-05-03 (+7d) | 2027-04-28 → 2027-05-05 (+7d) |  | -62d → -67.5d |  | resources Supply and installation of the photoelectric heat & smoke detector with base [61.19]; Unskilled Labor [24 h]; Electrical Technician [48 h] → Unskilled Labor [24 h]; Electrical Technician [48 h]; Supply and installation of the photoelectric heat & smoke detector with base [61.19] |
| A1310 | Install of Sounder With Beacon | 2027-04-26 → 2027-05-03 (+7d) | 2027-04-28 → 2027-05-05 (+7d) |  | -62d → -67.5d |  | resources Sounder With Beacon [29.85]; Unskilled Labor [24 h]; Electrical Technician [48 h] → Unskilled Labor [24 h]; Electrical Technician [48 h]; Sounder With Beacon [29.85] |
| A1320 | Install of Addressable Control module | 2027-04-29 → 2027-05-06 (+7d) | 2027-05-03 → 2027-05-10 (+7d) |  | -62d → -67.5d |  | resources Addressable Control module for Sounders [29.85]; Addressable Control module for HVAC System [2.99]; Addressable Monitor module for HVAC System [2.99]; Unskilled Labor [32 h]; Electrical Technician [64 h] → Unskilled Labor [32 h]; Electrical Technician [64 h]; Addressable Control module for Sounders [29.85]; Addressable Control module for HVAC System [2.99]; Addressable Monitor module for HVAC System [2.99] |
| 2 | **Security System** | 2027-04-12 → 2027-04-19 (+7d) | 2027-05-22 → 2027-05-26 (+4d) |  |  |  |  |
| A1580 | Install 8 Port Industrial PoE Switch 10/100BaseT (0 deg to +70 deg. Celsius) | 2027-04-12 → 2027-04-19 (+7d) | 2027-04-17 → 2027-04-24 (+7d) |  | -70d → -73.5d |  | resources 8 Port Industrial PoE Switch 10/100BaseT (0 deg to +70 deg. Celsius) [46.27]; Unskilled Labor [48 h]; Electrical Technician [96 h] → Unskilled Labor [48 h]; Electrical Technician [96 h]; 8 Port Industrial PoE Switch 10/100BaseT (0 deg to +70 deg. Celsius) [46.27] |
| A1590 | Optical Fiber,48 Core Splice Closure | 2027-04-18 → 2027-04-25 (+7d) | 2027-04-20 → 2027-04-27 (+7d) |  | -69d → -72.5d |  | resources 06C Optical Fiber SM [3738.81]; 48C Optical Fiber SM [10462.7]; 48 Core Splice Closure [10.45]; Unskilled Labor [24 h]; Electrical Technician [48 h] → Unskilled Labor [24 h]; Electrical Technician [48 h]; 06C Optical Fiber SM [3738.81]; 48C Optical Fiber SM [10462.7]; 48 Core Splice Closure [10.45] |
| A1650 | Pole/Bollard mounted IP( PoE) and 12U rack dimension | 2027-04-18 → 2027-04-25 (+7d) | 2027-04-21 → 2027-04-28 (+7d) |  | -70d → -73.5d |  | resources Pole/Bollard mounted IP( PoE), Automatic Number Plate Recognition (ANPR, camera, 5MP,IP 66, IR illumin [8.96]; 12U rack dimension (W x H x L) 600 x 625 x 600 mm [1.49]; Unskilled Labor [32 h]; Electrical Technician [64 h] → Unskilled Labor [32 h]; Electrical Technician [64 h]; Pole/Bollard mounted IP( PoE), Automatic Number Plate Recognition (ANPR, camera, 5MP,IP 66, IR illumin [8.96]; 12U rack dimension (W x H x L) 600 x 625 x 600 mm [1.49] |
| A1600 | Boom Barrier at Security Guard Room | 2027-04-22 → 2027-04-29 (+7d) | 2027-04-27 → 2027-05-04 (+7d) |  | -70d → -73.5d |  | resources Magnetic Control Access barrier, Automatic Vehicular Barriers to be installed on ground with magnetic access [8.96]; Boom Barrier at Security Guard Room [8.96]; Unskilled Labor [48 h]; Electrical Technician [96 h] → Unskilled Labor [48 h]; Electrical Technician [96 h]; Magnetic Control Access barrier, Automatic Vehicular Barriers to be installed on ground with magnetic access [8.96]; Boom Barrier at Security Guard Room [8.96] |
| A1610 | Pedestrian turnstile at Security Guard Room | 2027-04-28 → 2027-05-05 (+7d) | 2027-05-03 → 2027-05-10 (+7d) |  | -70d → -73.5d |  | resources Pedestrian turnstile at Security Guard Room [8.96]; Unskilled Labor [56 h]; Electrical Technician [112 h] → Unskilled Labor [56 h]; Electrical Technician [112 h]; Pedestrian turnstile at Security Guard Room [8.96] |
| A1620 | Access Control Unit and Access Card Reader | 2027-05-04 → 2027-05-11 (+7d) | 2027-05-08 → 2027-05-20 (+12d) |  | -70d → -73.5d |  | resources Access Control Unit [4.48]; Access Card Reader [4.48]; Unskilled Labor [32 h]; Electrical Technician [64 h] → Unskilled Labor [32 h]; Electrical Technician [64 h]; Access Control Unit [4.48]; Access Card Reader [4.48] |
| A1630 | Magnetic Lock and Break Glass and Exit Push button | 2027-05-09 → 2027-05-22 (+13d) | 2027-05-12 → 2027-05-25 (+13d) |  | -70d → -73.5d |  | resources Magnetic Lock [4.48]; Break Glass [4.48]; Exit Push button [4.48]; Unskilled Labor [40 h]; Electrical Technician [80 h] → Unskilled Labor [40 h]; Electrical Technician [80 h]; Magnetic Lock [4.48]; Break Glass [4.48]; Exit Push button [4.48] |
| A1640 | Door Sensor and Biometrics Reader | 2027-05-13 → 2027-05-24 (+11d) | 2027-05-22 → 2027-05-26 (+4d) |  | -70d → -73.5d | A1630, A1320 → A1630 SS+2d, A1320, A1630 FF+1d | resources Door Sensor [4.48]; Biometrics Reader [2.99]; Unskilled Labor [24 h]; Electrical Technician [48 h] → Unskilled Labor [24 h]; Electrical Technician [48 h]; Door Sensor [4.48]; Biometrics Reader [2.99] |
| 2 | **Furnitures work** | 2027-05-23 → 2027-05-25 (+2d) | 2027-05-27 → 2027-05-31 (+4d) |  |  |  |  |
| A1100 | Office Chairs,Tables and Stand | 2027-05-23 → 2027-05-25 (+2d) | 2027-05-27 → 2027-05-31 (+4d) |  | -70d → -73.5d | A1640, A1320, A1260, A1230, A1210, A1180 → A1640 SS+1.5d, A1320, A1260, A1230, A1210, A1180, A1640 FF+1d | resources Office Chairs [5.97]; Office Tables [5.97]; Guard Stand [2.99]; Unskilled Labor [40 h]; Skilled Labor [80 h] → Unskilled Labor [40 h]; Skilled Labor [80 h]; Office Chairs [5.97]; Office Tables [5.97]; Guard Stand [2.99] |
| 2 | **Fence Work** |  | 2027-04-26 → 2027-05-05 (+9d) |  |  |  |  |
| 1 | **Northern Fence N01:N03** |  | 2027-01-28 → 2027-01-23 (-5d) |  |  |  |  |
| 1 | **Civil Work** |  | 2026-10-29 → 2026-10-19 (-10d) |  |  |  |  |
| CO-SU-FE-N-CI-100 | Excavation Work For Northern Fence |  |  |  |  | ENG-SH-GR-A-200_R, PRO-FE-CV-DL-80 SS+3d, CO-EW-110_R SS+5d → ENG-SH-GR-A-200_R, PRO-FE-CV-DL-80 SS+3d, CO-EW-110_R SS+5d, PRO-FE-CV-MF-60 SS |  |
| CO-SU-FE-N-CI-110 | Pouring for Plain Concrete Northern Fence |  | 2026-10-17 → 2026-10-03 A (-14d) | 95% → 100% | -48d → none |  | resources 100 mm thickness lean concrete under the foundation [189.96]; Unskilled Labor [96 h]; Carpenter [48 h]; Steel Fixer [48 h] → Unskilled Labor [96 h]; Carpenter [48 h]; Steel Fixer [48 h]; 100 mm thickness lean concrete under the foundation [189.96] |

| ID | Task | Start | Finish | Complete | Total float | Predecessors | Other |
| --- | --- | --- | --- | --- | --- | --- | --- |
| CO-SU-FE-N-CI-120 | Pouring R.C Footing For Northern Fence |  | 2026-10-19 → 2026-10-11 A (-8d) | 85% → 100% | -48d → none |  | resources Foundation [2477.61]; Slab on Grade; Unskilled Labor [320 h]; Carpenter [160 h]; Steel Fixer [160 h] → Unskilled Labor [320 h]; Carpenter [160 h]; Steel Fixer [160 h]; Foundation [2477.61]; Slab on Grade |
| CO-SU-FE-N-CI-130 | Pouring R.C Columns For Northern Fence |  | 2026-10-25 → 2026-10-14 A (-11d) | 10% → 100% | -48d → none | CO-SU-FE-N-CI-120, CO-SU-FE-N-CI-100 → CO-SU-FE-N-CI-120 SS | resources Walls [564.18]; Columns [49.53]; Unskilled Labor [160 h]; Carpenter [80 h]; Steel Fixer [80 h] → Unskilled Labor [160 h]; Carpenter [80 h]; Steel Fixer [80 h]; Walls [564.18]; Columns [49.53] |
| CO-SU-FE-N-CI-140 | Pouring Beams For Northern Fence |  | 2026-10-29 → 2026-10-19 A (-10d) | 20% → 100% | -22d → none | CO-SU-FE-N-CI-130, CO-SU-FE-N-AR-100, CO-SU-FE-WP1-CI-150 → CO-SU-FE-N-CI-130 SS, CO-SU-FE-N-AR-100 SS | resources Beams [36.36]; Unskilled Labor [128 h]; Carpenter [64 h]; Steel Fixer [64 h] → Unskilled Labor [128 h]; Carpenter [64 h]; Steel Fixer [64 h]; Beams [36.36] |
| 5 | **Finishing Work** |  | 2027-01-28 → 2027-01-23 (-5d) |  |  |  |  |
| 3 | **Electrical Work** | 2026-10-26 → 2026-10-20 (-6d) | 2027-01-28 → 2027-01-23 (-5d) |  |  |  |  |
| CO-SU-FE-N-EL-100 | Trench excavation to receive 2 nos 50mm diameter PVC Conduit | 2026-10-26 → 2026-10-20 (-6d) | 2026-11-03 → 2026-10-28 (-6d) |  | -48d → -43d |  | resources Trench excavation to receive 2 nos 50mm diameter PVC Conduit, sand bedding and embedded with sa [475.58]; Unskilled Labor [80 h]; Electrical Technician [160 h] → Unskilled Labor [80 h]; Electrical Technician [160 h]; Trench excavation to receive 2 nos 50mm diameter PVC Conduit, sand bedding and embedded with sa [475.58] |
| CO-SU-FE-N-EL-110 | Trench excavation to receive 3 nos 50mm diameter PVC Conduit | 2026-10-26 → 2026-10-20 (-6d) | 2026-11-03 → 2026-10-28 (-6d) |  | -48d → -43d |  | resources 800mm depth minimum Trench excavation to receive 3 nos 50mm diameter PVC Conduit with spacer, sand bedding an [203.53]; Unskilled Labor [80 h]; Electrical Technician [160 h] → Unskilled Labor [80 h]; Electrical Technician [160 h]; 800mm depth minimum Trench excavation to receive 3 nos 50mm diameter PVC Conduit with spacer, sand bedding an [203.53] |
| CO-SU-FE-N-EL-120 | Fixing of Control cable,CAT6A cable | 2026-11-04 → 2026-10-29 (-6d) | 2026-11-14 → 2026-11-08 (-6d) |  | -48d → -43d |  | resources Control cable [421.98]; CAT6A cable [421.98]; Unskilled Labor [96 h]; Electrical Technician [192 h] → Unskilled Labor [96 h]; Electrical Technician [192 h]; Control cable [421.98]; CAT6A cable [421.98] |
| CO-SU-FE-N-EL-130 | Install 800mm x 800mm x 800mm height concrete handhole | 2026-11-04 → 2026-10-29 (-6d) | 2026-11-14 → 2026-11-08 (-6d) |  | -48d → -43d |  | resources Supply and install 800mm x 800mm x 800mm height concrete handhole with bituminous paint all aroun [2.58]; Unskilled Labor [96 h]; Electrical Technician [192 h] → Unskilled Labor [96 h]; Electrical Technician [192 h]; Supply and install 800mm x 800mm x 800mm height concrete handhole with bituminous paint all aroun [2.58] |
| CO-SU-FE-N-EL-140 | Hot dipped galvanized cable conduits for CAT6A cable and Control Cables embedded to wall | 2026-11-04 → 2026-10-29 (-6d) | 2026-11-12 → 2026-11-07 (-5d) |  | -47d → -42d |  | resources Hot dipped galvanized cable conduits for CAT6A cable and Control Cables embedded to wall [56.99]; 400V, 3PH, 60Hz lighting control panel (LCP-02) [0.14]; Unskilled Labor [88 h]; Electrical Technician [176 h] → Unskilled Labor [88 h]; Electrical Technician [176 h]; Hot dipped galvanized cable conduits for CAT6A cable and Control Cables embedded to wall [56.99]; 400V, 3PH, 60Hz lighting control panel (LCP-02) [0.14] |
| CO-SU-FE-N-EL-150 | Fixing Earthing Work (Earth Pit,Grounding rod,Tinned Copper wire) | 2026-11-15 → 2026-11-09 (-6d) | 2026-11-23 → 2026-11-17 (-6d) |  | -48d → -43d |  | resources Earth Pit [2.31]; Grounding rod 20mmX3m [1.22]; Grounding rod with Pit 20mmX3m [0.54]; Earthing Bar [0.41]; 120mm2 Tinned copper wire [27.14]; Unskilled Labor [128 h]; Electrical Technician [256 h] → Unskilled Labor [128 h]; Electrical Technician [256 h]; Earth Pit [2.31]; Grounding rod 20mmX3m [1.22]; Grounding rod with Pit 20mmX3m [0.54]; Earthing Bar [0.41]; 120mm2 Tinned copper wire [27.14] |
| CO-SU-FE-N-EL-160 | Field Equipment Cabinet enclosed outdoor complete with precast concrete footing, | 2026-11-24 → 2026-11-18 (-6d) | 2026-12-02 → 2026-11-26 (-6d) |  | -48d → -43d |  | resources Field Equipment Cabinet enclosed outdoor complete with precast concrete footing, suitable for parame [2.58]; Unskilled Labor [80 h]; Electrical Technician [160 h] → Unskilled Labor [80 h]; Electrical Technician [160 h]; Field Equipment Cabinet enclosed outdoor complete with precast concrete footing, suitable for parame [2.58] |
| CO-SU-FE-N-EL-170 | Fence Lightining 400V, 3PH, 60Hz lighting control panel (LCP-02) | 2026-11-24 → 2026-11-18 (-6d) | 2026-12-02 → 2026-11-26 (-6d) |  | -48d → -43d |  | was named Fence Lightining 400V, 3PH, 60Hz lighting control panelï¿½ (LCP-02) |
| CO-SU-FE-N-EL-180 | Install of direct buried armored cable 4C-16mm2 ,10mm2 | 2026-12-03 → 2026-11-28 (-5d) | 2026-12-13 → 2026-12-07 (-6d) |  | -48d → -43d |  | resources 4C-16mm2 CU/XLPE/PVC direct buried armored cable [176.39]; 4C-10mm2 CU/XLPE/PVC direct buried armored cable [115.33]; Unskilled Labor [72 h]; Electrical Technician [144 h] → Unskilled Labor [72 h]; Electrical Technician [144 h]; 4C-16mm2 CU/XLPE/PVC direct buried armored cable [176.39]; 4C-10mm2 CU/XLPE/PVC direct buried armored cable [115.33] |
| CO-SU-FE-N-EL-190 | Install 16mm2,10mm2 CU/PVC wire | 2026-12-03 → 2026-11-28 (-5d) | 2026-12-13 → 2026-12-07 (-6d) |  | -48d → -43d |  | resources 16mm2 CU/PVC wire [176.39]; 10mm2 CU/PVC wire [115.33]; Unskilled Labor [72 h]; Electrical Technician [144 h] → Unskilled Labor [72 h]; Electrical Technician [144 h]; 16mm2 CU/PVC wire [176.39]; 10mm2 CU/PVC wire [115.33] |
| CO-SU-FE-N-EL-200 | FEC-CCTV ( 4C-16mm2 CU/XLPE/PVC direct buried armored cable,16mm2 CU/PVC wire | 2026-12-03 → 2026-11-28 (-5d) | 2026-12-12 → 2026-12-06 (-6d) |  | -47d → -42d |  | resources 4C-16mm2 CU/XLPE/PVC direct buried armored cable [553.6]; 16mm2 CU/PVC wire [553.6]; Unskilled Labor [64 h]; Electrical Technician [128 h] → Unskilled Labor [64 h]; Electrical Technician [128 h]; 4C-16mm2 CU/XLPE/PVC direct buried armored cable [553.6]; 16mm2 CU/PVC wire [553.6] |
| CO-SU-FE-N-EL-210 | Junction Box for lighting fixture | 2026-12-14 → 2026-12-08 (-6d) | 2026-12-22 → 2026-12-16 (-6d) |  | -46d → -41d |  | resources Junction Box for lighting fixture [18.45]; Unskilled Labor [64 h]; Electrical Technician [128 h] → Unskilled Labor [64 h]; Electrical Technician [128 h]; Junction Box for lighting fixture [18.45] |
| CO-SU-FE-N-EL-220 | IR Intrusion Detection System Quad Beams | 2027-01-11 → 2027-01-05 (-6d) | 2027-01-19 → 2027-01-13 (-6d) |  | -6d → -1d |  | resources IR Intrusion Detection System Quad Beams (Tx & Rx) (SL-350 QDM) [8.14]; Unskilled Labor [64 h]; Electrical Technician [128 h] → Unskilled Labor [64 h]; Electrical Technician [128 h]; IR Intrusion Detection System Quad Beams (Tx & Rx) (SL-350 QDM) [8.14] |
| CO-SU-FE-N-EL-230 | Install of 38W, 230V, 1PH, 60Hz fence, led linear uplight lighting, IP66 | 2027-01-11 → 2027-01-05 (-6d) | 2027-01-20 → 2027-01-14 (-6d) |  | -7d → -2d |  | resources 38W, 230V, 1PH, 60Hz fence, led linear uplight lighting, IP66 [18.45]; Unskilled Labor [72 h]; Electrical Technician [144 h] → Unskilled Labor [72 h]; Electrical Technician [144 h]; 38W, 230V, 1PH, 60Hz fence, led linear uplight lighting, IP66 [18.45] |
| CO-SU-FE-N-EL-240 | Install, fixings, testing and commissioning 80W LED | 2027-01-21 → 2027-01-16 (-5d) | 2027-01-28 → 2027-01-23 (-5d) |  | -7d → -2d |  | resources Supply, Install, fixings, testing and commissioning 80W LED Projector waterproof DJ effect light including c [0.41]; Unskilled Labor [56 h]; Electrical Technician [112 h] → Unskilled Labor [56 h]; Electrical Technician [112 h]; Supply, Install, fixings, testing and commissioning 80W LED Projector waterproof DJ effect light including c [0.41] |
| 4 | **Architictural work** |  | 2027-01-20 → 2027-01-12 (-8d) |  |  |  |  |
| CO-SU-FE-N-AR-100 | Install Brick Work For Northern Fence |  | 2026-10-25 → 2026-10-13 A (-12d) | 40% → 100% | -48d → none | CO-SU-FE-N-CI-130 FF → CO-SU-FE-N-CI-130 SS | resources Common brickwork. 300mm thick; vertical straight wall complete with accessories. [1190.64]; Insulated brickwork. with expanded polystyrene 200mm thick; vertical straight wall complete with accessories .; Common brickwork. 150mm thick; vertical straight wall complete with accessories.; Two Layers of Bituminous Coating [5314.79]; 20x20 Approved Polysulfide Joint Sealant [56.31]; Unskilled Labor [80 h]; Skilled Labor [160 h] → Unskilled Labor [80 h]; Skilled Labor [160 h]; Common brickwork. 300mm thick; vertical straight wall complete with accessories. [1190.64]; Insulated brickwork. with expanded polystyrene 200mm thick; vertical straight wall complete with accessories .; Common brickwork. 150mm thick; vertical straight wall complete with accessories.; Two Layers of Bituminous Coating [5314.79]; 20x20 Approved Polysulfide Joint Sealant [56.31] |
| CO-SU-FE-N-AR-110 | External plastering to walls and columns | 2026-12-14 → 2026-12-08 (-6d) | 2026-12-21 → 2026-12-15 (-6d) |  | -48d → -43d |  |  |
| CO-SU-FE-N-AR-120 | Install 50mm thick random cut stone cladding | 2026-12-22 → 2026-12-16 (-6d) | 2026-12-29 → 2026-12-23 (-6d) |  | -48d → -43d |  | resources Supply and install 33mm thick Lexan cladding blue complete with necessary framings [151.28]; Supply and install 50mm thick random cut stone cladding complete with 600m [8659.7]; Supply and install External plastering to walls and columns min. 15mm thick with cement mortar of specified grade including [2274.76]; Unskilled Labor [56 h]; Skilled Labor [112 h] → Unskilled Labor [56 h]; Skilled Labor [112 h]; Supply and install 33mm thick Lexan cladding blue complete with necessary framings [151.28]; Supply and install 50mm thick random cut stone cladding complete with 600m [8659.7]; Supply and install External plastering to walls and columns min. 15mm thick with cement mortar of specified grade including [2274.76] |
| CO-SU-FE-N-AR-130 | Install 2 coats of weatherproof paint at walls | 2026-12-30 → 2026-12-24 (-6d) | 2027-01-05 → 2026-12-30 (-6d) |  | -48d → -43d |  | resources Supply and install 2 coats of weatherproof paint at walls including one prime coat and [2274.76]; Unskilled Labor [48 h]; Skilled Labor [96 h] → Unskilled Labor [48 h]; Skilled Labor [96 h]; Supply and install 2 coats of weatherproof paint at walls including one prime coat and [2274.76] |
| CO-SU-FE-N-AR-140 | Install Stone coping 500mm,525mm | 2027-01-06 → 2026-12-31 (-6d) | 2027-01-10 → 2027-01-04 (-6d) |  | -48d → -43d |  | resources Guard room coping 350mm [7.73]; Guard room coping 450mm [3.66]; Stone coping 500mm [346.68]; Stone coping 525mm [166.08]; Unskilled Labor [32 h]; Skilled Labor [64 h] → Unskilled Labor [32 h]; Skilled Labor [64 h]; Guard room coping 350mm [7.73]; Guard room coping 450mm [3.66]; Stone coping 500mm [346.68]; Stone coping 525mm [166.08] |
| CO-SU-FE-N-AR-150 | Install MODON Signage | 2027-01-13 → 2027-01-05 (-8d) | 2027-01-20 → 2027-01-12 (-8d) |  | -4d → 3d |  | resources Supply and install MODON Signage with Logo Type 1 [3.26]; Supply and install MODON Signage Type 2 [3.26]; Supply and install "Triangle Style" signage [7.46]; Unskilled Labor [56 h]; Skilled Labor [112 h] → Unskilled Labor [56 h]; Skilled Labor [112 h]; Supply and install MODON Signage with Logo Type 1 [3.26]; Supply and install MODON Signage Type 2 [3.26]; Supply and install "Triangle Style" signage [7.46] |
| 2 | **Western Fence P1 ( W01:W06 )** |  | 2027-03-29 → 2027-03-23 (-6d) |  |  |  |  |
| 1 | **Civil Work** |  | 2026-11-28 → 2026-10-25 (-34d) |  |  |  |  |
| CO-SU-FE-WP1-CI-160 | Pouring for Plain Concrete Northern Fence |  | 2026-10-18 → 2026-10-10 A (-8d) | 95% → 100% | -15d → none | CO-SU-FE-WP1-CI-150 → CO-SU-FE-WP1-CI-150 SS | resources 100 mm thickness lean concrete under the foundation [379.92]; Unskilled Labor [160 h]; Carpenter [80 h]; Steel Fixer [80 h] → Unskilled Labor [160 h]; Carpenter [80 h]; Steel Fixer [80 h]; 100 mm thickness lean concrete under the foundation [379.92] |
| CO-SU-FE-WP1-CI-170 | Pouring R.C Footing For Northern Fence |  | 2026-10-29 → 2026-10-17 A (-12d) | 85% → 100% | -22d → none | CO-SU-FE-WP1-CI-160 SS, CO-SU-FE-N-CI-140 FF → CO-SU-FE-WP1-CI-160 SS, CO-SU-FE-N-CI-140 SS | resources Foundation [1970.15]; Slab on Grade; Unskilled Labor [480 h]; Carpenter [240 h]; Steel Fixer [240 h] → Unskilled Labor [480 h]; Carpenter [240 h]; Steel Fixer [240 h]; Foundation [1970.15]; Slab on Grade |
| CO-SU-FE-WP1-CI-150 | Excavation Work For Northern Fence |  |  |  |  | CO-SU-FE-N-CI-120 SS → CO-SU-FE-N-CI-120 SS, CO-SU-FE-N-CI-130 SS, CO-SU-FE-N-CI-130 FF |  |
| CO-SU-FE-WP1-CI-180 | Pouring R.C Columns For Northern Fence |  | 2026-11-08 → 2026-10-24 (-15d) | 30% → 80% | -22d → -9d | CO-SU-FE-WP1-CI-170 FF, CO-SU-FE-WP1-CI-150 FF, CO-SU-FE-WP1-CI-170 SS → CO-SU-FE-WP1-CI-170 SS | resources Walls [531.89]; Columns [99.05]; Unskilled Labor [384 h]; Carpenter [192 h]; Steel Fixer [192 h] → Unskilled Labor [384 h]; Carpenter [192 h]; Steel Fixer [192 h]; Walls [531.89]; Columns [99.05] |
| CO-SU-FE-WP1-CI-190 | Pouring Beams For Northern Fence |  | 2026-11-28 → 2026-10-25 (-34d) | 20% → 80% | -4d → 32d | CO-SU-FE-WP1-CI-180, CO-SU-FE-WP1-AR-160, CO-SU-FE-WP2-CI-200 → CO-SU-FE-WP1-CI-180 SS, CO-SU-FE-WP1-AR-160 SS, CO-SU-FE-WP1-CI-180 FF, CO-SU-FE-WP1-AR-160 FF | resources Beams [72.73]; Unskilled Labor [608 h]; Carpenter [304 h]; Steel Fixer [304 h] → Unskilled Labor [608 h]; Carpenter [304 h]; Steel Fixer [304 h]; Beams [72.73] |
| 5 | **Finishing Work** |  | 2027-03-29 → 2027-03-23 (-6d) |  |  |  |  |
| 3 | **Electrical Work** | 2026-11-09 → 2026-10-29 (-11d) | 2027-03-29 → 2027-03-23 (-6d) |  |  |  |  |
| CO-SU-FE-WP1-EL-260 | Trench excavation to receive 2 nos 50mm diameter PVC Conduit | 2026-11-09 → 2026-10-29 (-11d) | 2026-11-24 → 2026-11-14 (-10d) |  | -22d → -13d |  | resources Trench excavation to receive 2 nos 50mm diameter PVC Conduit, sand bedding and embedded with sa [951.15]; Unskilled Labor [144 h]; Electrical Technician [288 h] → Unskilled Labor [144 h]; Electrical Technician [288 h]; Trench excavation to receive 2 nos 50mm diameter PVC Conduit, sand bedding and embedded with sa [951.15] |
| CO-SU-FE-WP1-EL-320 | Trench excavation to receive 3 nos 50mm diameter PVC Conduit | 2026-11-09 → 2026-10-29 (-11d) | 2026-11-24 → 2026-11-14 (-10d) |  | -22d → -13d |  | resources 800mm depth minimum Trench excavation to receive 3 nos 50mm diameter PVC Conduit with spacer, sand bedding an [407.06]; Unskilled Labor [152 h]; Electrical Technician [304 h] → Unskilled Labor [152 h]; Electrical Technician [304 h]; 800mm depth minimum Trench excavation to receive 3 nos 50mm diameter PVC Conduit with spacer, sand bedding an [407.06] |
| CO-SU-FE-WP1-EL-300 | Fixing of Control cable,CAT6A cable | 2026-11-25 → 2026-11-15 (-10d) | 2026-12-10 → 2026-11-30 (-10d) |  | -22d → -13d |  | resources Control cable [843.96]; CAT6A cable [843.96]; Unskilled Labor [112 h]; Electrical Technician [224 h] → Unskilled Labor [112 h]; Electrical Technician [224 h]; Control cable [843.96]; CAT6A cable [843.96] |
| CO-SU-FE-WP1-EL-330 | Hot dipped galvanized cable conduits for CAT6A cable and Control Cables embedded to wall | 2026-11-25 → 2026-11-15 (-10d) | 2026-12-10 → 2026-11-30 (-10d) |  | -22d → -13d |  | resources Hot dipped galvanized cable conduits for CAT6A cable and Control Cables embedded to wall [113.98]; 400V, 3PH, 60Hz lighting control panel (LCP-02) [0.27]; Unskilled Labor [112 h]; Electrical Technician [224 h] → Unskilled Labor [112 h]; Electrical Technician [224 h]; Hot dipped galvanized cable conduits for CAT6A cable and Control Cables embedded to wall [113.98]; 400V, 3PH, 60Hz lighting control panel (LCP-02) [0.27] |
| CO-SU-FE-WP1-EL-310 | Install 800mm x 800mm x 800mm height concrete handhole | 2026-12-23 → 2026-12-17 (-6d) | 2027-01-07 → 2027-01-02 (-5d) |  | -46d → -41d |  | resources Supply and install 800mm x 800mm x 800mm height concrete handhole with bituminous paint all aroun [5.16]; Unskilled Labor [128 h]; Electrical Technician [256 h] → Unskilled Labor [128 h]; Electrical Technician [256 h]; Supply and install 800mm x 800mm x 800mm height concrete handhole with bituminous paint all aroun [5.16] |
| CO-SU-FE-WP1-EL-280 | Fixing Earthing Work (Earth Pit,Grounding rod,Tinned Copper wire) | 2027-01-11 → 2027-01-05 (-6d) | 2027-01-23 → 2027-01-17 (-6d) |  | -48d → -43d |  | resources Earth Pit [4.61]; Grounding rod 20mmX3m [2.44]; Grounding rod with Pit 20mmX3m [1.09]; Earthing Bar [0.81]; 120mm2 Tinned copper wire [54.27]; Unskilled Labor [112 h]; Electrical Technician [224 h] → Unskilled Labor [112 h]; Electrical Technician [224 h]; Earth Pit [4.61]; Grounding rod 20mmX3m [2.44]; Grounding rod with Pit 20mmX3m [1.09]; Earthing Bar [0.81]; 120mm2 Tinned copper wire [54.27] |
| CO-SU-FE-WP1-EL-340 | Field Equipment Cabinet enclosed outdoor complete with precast concrete footing, | 2027-01-24 → 2027-01-18 (-6d) | 2027-02-02 → 2027-01-27 (-6d) |  | -48d → -43d |  | resources Field Equipment Cabinet enclosed outdoor complete with precast concrete footing, suitable for parame [5.16]; Unskilled Labor [72 h]; Electrical Technician [144 h] → Unskilled Labor [72 h]; Electrical Technician [144 h]; Field Equipment Cabinet enclosed outdoor complete with precast concrete footing, suitable for parame [5.16] |
| CO-SU-FE-WP1-EL-350 | Fence Lightining 400V, 3PH, 60Hz lighting control panel (LCP-02) | 2027-01-24 → 2027-01-18 (-6d) | 2027-02-02 → 2027-01-27 (-6d) |  | -48d → -43d |  | was named Fence Lightining 400V, 3PH, 60Hz lighting control panelï¿½ (LCP-02) |
| CO-SU-FE-WP1-EL-360 | Install of direct buried armored cable 4C-16mm2 ,10mm2 | 2027-02-03 → 2027-01-28 (-6d) | 2027-02-14 → 2027-02-06 (-8d) |  | -47d → -42d |  | resources 4C-16mm2 CU/XLPE/PVC direct buried armored cable [352.78]; 4C-10mm2 CU/XLPE/PVC direct buried armored cable [230.66]; Unskilled Labor [80 h]; Electrical Technician [160 h] → Unskilled Labor [80 h]; Electrical Technician [160 h]; 4C-16mm2 CU/XLPE/PVC direct buried armored cable [352.78]; 4C-10mm2 CU/XLPE/PVC direct buried armored cable [230.66] |
| CO-SU-FE-WP1-EL-370 | Install 16mm2,10mm2 CU/PVC wire | 2027-02-03 → 2027-01-28 (-6d) | 2027-02-14 → 2027-02-06 (-8d) |  | -47d → -42d |  | resources 16mm2 CU/PVC wire [352.78]; 10mm2 CU/PVC wire [230.66]; Unskilled Labor [80 h]; Electrical Technician [160 h] → Unskilled Labor [80 h]; Electrical Technician [160 h]; 16mm2 CU/PVC wire [352.78]; 10mm2 CU/PVC wire [230.66] |
| CO-SU-FE-WP1-EL-390 | FEC-CCTV ( 4C-16mm2 CU/XLPE/PVC direct buried armored cable,16mm2 CU/PVC wire | 2027-02-03 → 2027-01-28 (-6d) | 2027-02-15 → 2027-02-07 (-8d) |  | -48d → -43d |  | resources 4C-16mm2 CU/XLPE/PVC direct buried armored cable [1107.19]; 16mm2 CU/PVC wire [1107.19]; Unskilled Labor [72 h]; Electrical Technician [144 h] → Unskilled Labor [72 h]; Electrical Technician [144 h]; 4C-16mm2 CU/XLPE/PVC direct buried armored cable [1107.19]; 16mm2 CU/PVC wire [1107.19] |
| CO-SU-FE-WP1-EL-250 | Junction Box for lighting fixture | 2027-02-14 → 2027-02-07 (-7d) | 2027-03-02 → 2027-02-22 (-8d) |  | -44d → -39d |  | resources Junction Box for lighting fixture [36.91]; Unskilled Labor [64 h]; Electrical Technician [128 h] → Unskilled Labor [64 h]; Electrical Technician [128 h]; Junction Box for lighting fixture [36.91] |
| CO-SU-FE-WP1-EL-290 | IR Intrusion Detection System Quad Beams | 2027-03-21 → 2027-03-15 (-6d) | 2027-03-24 → 2027-03-18 (-6d) |  | -48d → -43d |  | resources IR Intrusion Detection System Quad Beams (Tx & Rx) (SL-350 QDM) [16.28]; Unskilled Labor [56 h]; Electrical Technician [112 h] → Unskilled Labor [56 h]; Electrical Technician [112 h]; IR Intrusion Detection System Quad Beams (Tx & Rx) (SL-350 QDM) [16.28] |
| CO-SU-FE-WP1-EL-380 | Install of 38W, 230V, 1PH, 60Hz fence, led linear uplight lighting, IP66 | 2027-03-21 → 2027-03-15 (-6d) | 2027-03-24 → 2027-03-18 (-6d) |  | -45d → -40d |  | resources 38W, 230V, 1PH, 60Hz fence, led linear uplight lighting, IP66 [36.91]; Unskilled Labor [56 h]; Electrical Technician [112 h] → Unskilled Labor [56 h]; Electrical Technician [112 h]; 38W, 230V, 1PH, 60Hz fence, led linear uplight lighting, IP66 [36.91] |
| CO-SU-FE-WP1-EL-270 | Install, fixings, testing and commissioning 80W LED | 2027-03-25 → 2027-03-20 (-5d) | 2027-03-29 → 2027-03-23 (-6d) |  | -45d → -40d |  | resources Supply, Install, fixings, testing and commissioning 80W LED Projector waterproof DJ effect light including c [0.81]; Unskilled Labor [56 h]; Electrical Technician [112 h] → Unskilled Labor [56 h]; Electrical Technician [112 h]; Supply, Install, fixings, testing and commissioning 80W LED Projector waterproof DJ effect light including c [0.81] |
| 4 | **Architictural work** |  | 2027-03-29 → 2027-03-23 (-6d) |  |  |  |  |
| CO-SU-FE-WP1-AR-160 | Install Brick Work For Northern Fence |  | 2026-11-08 → 2026-10-24 (-15d) | 40% → 80% | -22d → -9d |  | resources Common brickwork. 300mm thick; vertical straight wall complete with accessories. [2381.28]; Insulated brickwork. with expanded polystyrene 200mm thick; vertical straight wall complete with accessories .; Common brickwork. 150mm thick; vertical straight wall complete with accessories.; Two Layers of Bituminous Coating [10629.6]; 20x20 Approved Polysulfide Joint Sealant [112.62]; Unskilled Labor [80 h]; Skilled Labor [160 h] → Unskilled Labor [80 h]; Skilled Labor [160 h]; Common brickwork. 300mm thick; vertical straight wall complete with accessories. [2381.28]; Insulated brickwork. with expanded polystyrene 200mm thick; vertical straight wall complete with accessories .; Common brickwork. 150mm thick; vertical straight wall complete with accessories.; Two Layers of Bituminous Coating [10629.6]; 20x20 Approved Polysulfide Joint Sealant [112.62] |
| CO-SU-FE-WP1-AR-170 | External plastering to walls and columns | 2027-02-15 → 2027-02-08 (-7d) | 2027-02-24 → 2027-02-16 (-8d) |  | -48d → -43d |  |  |
| CO-SU-FE-WP1-AR-180 | Install 50mm thick random cut stone cladding | 2027-02-24 → 2027-02-17 (-7d) | 2027-03-03 → 2027-02-24 (-7d) |  | -48d → -43d |  | resources Supply and install 33mm thick Lexan cladding blue complete with necessary framings [302.57]; Supply and install 50mm thick random cut stone cladding complete with 600m [900]; Supply and install External plastering to walls and columns min. 15mm thick with cement mortar of specified grade including [4549.53]; Unskilled Labor [56 h]; Skilled Labor [112 h] → Unskilled Labor [56 h]; Skilled Labor [112 h]; Supply and install 33mm thick Lexan cladding blue complete with necessary framings [302.57]; Supply and install 50mm thick random cut stone cladding complete with 600m [900]; Supply and install External plastering to walls and columns min. 15mm thick with cement mortar of specified grade including [4549.53] |
| CO-SU-FE-WP1-AR-190 | Install 2 coats of weatherproof paint at walls | 2027-03-04 → 2027-02-24 (-8d) | 2027-03-15 → 2027-03-06 (-9d) |  | -48d → -43d |  | resources Supply and install 2 coats of weatherproof paint at walls including one prime coat and [4549.53]; Unskilled Labor [48 h]; Skilled Labor [96 h] → Unskilled Labor [48 h]; Skilled Labor [96 h]; Supply and install 2 coats of weatherproof paint at walls including one prime coat and [4549.53] |
| CO-SU-FE-WP1-AR-200 | Install Stone coping 500mm,525mm | 2027-03-16 → 2027-03-06 (-10d) | 2027-03-20 → 2027-03-14 (-6d) |  | -48d → -43d |  | resources Guard room coping 350mm [15.47]; Guard room coping 450mm [7.33]; Stone coping 500mm [693.35]; Stone coping 525mm [332.16]; Unskilled Labor [32 h]; Skilled Labor [64 h] → Unskilled Labor [32 h]; Skilled Labor [64 h]; Guard room coping 350mm [15.47]; Guard room coping 450mm [7.33]; Stone coping 500mm [693.35]; Stone coping 525mm [332.16] |
| CO-SU-FE-WP1-AR-210 | Install MODON Signage | 2027-03-21 → 2027-03-15 (-6d) | 2027-03-29 → 2027-03-23 (-6d) |  | -45d → -40d |  | resources Supply and install MODON Signage with Logo Type 1 [6.51]; Supply and install MODON Signage Type 2 [6.51]; Supply and install "Triangle Style" signage [14.93]; Unskilled Labor [48 h]; Skilled Labor [96 h] → Unskilled Labor [48 h]; Skilled Labor [96 h]; Supply and install MODON Signage with Logo Type 1 [6.51]; Supply and install MODON Signage Type 2 [6.51]; Supply and install "Triangle Style" signage [14.93] |
| 3 | **Western Fence P2 ( W07:W12 )** |  | 2027-04-10 → 2027-04-04 (-6d) |  |  |  |  |
| 1 | **Civil Work** |  | 2026-12-06 → 2026-10-25 (-42d) |  |  |  |  |
| CO-SU-FE-WP2-CI-200 | Excavation Work For Northern Fence |  |  |  |  | CO-SU-FE-WP1-CI-170 SS → CO-SU-FE-WP1-CI-170 SS, CO-SU-FE-WP1-CI-180 SS+3.65d |  |
| CO-SU-FE-WP2-CI-210 | Pouring for Plain Concrete Northern Fence |  | 2026-10-26 → 2026-10-08 A (-18d) | 95% → 100% | -4d → none | CO-SU-FE-WP2-CI-200 → CO-SU-FE-WP2-CI-200 SS | resources 100 mm thickness lean concrete under the foundation [379.92]; Unskilled Labor [160 h]; Carpenter [80 h]; Steel Fixer [80 h] → Unskilled Labor [160 h]; Carpenter [80 h]; Steel Fixer [80 h]; 100 mm thickness lean concrete under the foundation [379.92] |
| CO-SU-FE-WP2-CI-220 | Pouring R.C Footing For Northern Fence |  | 2026-10-28 → 2026-10-18 A (-10d) | 85% → 100% | -4d → none |  | resources Foundation [1970.15]; Slab on Grade; Unskilled Labor [320 h]; Carpenter [160 h]; Steel Fixer [160 h] → Unskilled Labor [320 h]; Carpenter [160 h]; Steel Fixer [160 h]; Foundation [1970.15]; Slab on Grade |
| CO-SU-FE-WP2-CI-230 | Pouring R.C Columns For Northern Fence |  | 2026-10-31 → 2026-10-21 (-10d) | 30% → 80% | -4d → 4.12d | CO-SU-FE-WP2-CI-220 FF, CO-SU-FE-WP2-CI-220 SS → CO-SU-FE-WP2-CI-220 SS | resources Walls [531.89]; Columns [99.05]; Unskilled Labor [288 h]; Carpenter [144 h]; Steel Fixer [144 h] → Unskilled Labor [288 h]; Carpenter [144 h]; Steel Fixer [144 h]; Walls [531.89]; Columns [99.05] |
| CO-SU-FE-WP2-CI-240 | Pouring Beams For Northern Fence |  | 2026-12-06 → 2026-10-25 (-42d) | 20% → 80% | -4d → 32d | CO-SU-FE-WP2-CI-230, CO-SU-FE-WP2-AR-220, CO-SU-FE-WP1-CI-190 → CO-SU-FE-WP2-CI-230 SS, CO-SU-FE-WP2-AR-220 SS, CO-SU-FE-WP1-CI-190 SS, CO-SU-FE-WP2-CI-230 FF, CO-SU-FE-WP2-AR-220 FF, CO-SU-FE-WP1-CI-190 FF | resources Beams [72.73]; Unskilled Labor [224 h]; Carpenter [112 h]; Steel Fixer [112 h] → Unskilled Labor [224 h]; Carpenter [112 h]; Steel Fixer [112 h]; Beams [72.73] |
| 5 | **Finishing Work** |  | 2027-04-10 → 2027-04-04 (-6d) |  |  |  |  |
| 3 | **Electrical Work** | 2026-11-01 → 2026-10-21 (-11d) | 2027-04-10 → 2027-04-04 (-6d) |  |  |  |  |
| CO-SU-FE-WP2-EL-410 | Trench excavation to receive 2 nos 50mm diameter PVC Conduit | 2026-11-01 → 2026-10-21 (-11d) | 2026-11-04 → 2026-10-26 (-9d) |  | -4d → 4.12d |  | resources Trench excavation to receive 2 nos 50mm diameter PVC Conduit, sand bedding and embedded with sa [951.15]; Unskilled Labor [32 h]; Electrical Technician [64 h] → Unskilled Labor [32 h]; Electrical Technician [64 h]; Trench excavation to receive 2 nos 50mm diameter PVC Conduit, sand bedding and embedded with sa [951.15] |
| CO-SU-FE-WP2-EL-470 | Trench excavation to receive 3 nos 50mm diameter PVC Conduit | 2026-11-01 → 2026-10-21 (-11d) | 2026-11-07 → 2026-10-28 (-10d) |  | -4d → 4.12d |  | resources 800mm depth minimum Trench excavation to receive 3 nos 50mm diameter PVC Conduit with spacer, sand bedding an [407.06]; Unskilled Labor [48 h]; Electrical Technician [96 h] → Unskilled Labor [48 h]; Electrical Technician [96 h]; 800mm depth minimum Trench excavation to receive 3 nos 50mm diameter PVC Conduit with spacer, sand bedding an [407.06] |
| CO-SU-FE-WP2-EL-450 | Fixing of Control cable,CAT6A cable | 2026-11-08 → 2026-10-28 (-11d) | 2026-11-15 → 2026-11-05 (-10d) |  | -4d → 4.12d |  | resources Control cable [843.96]; CAT6A cable [843.96]; Unskilled Labor [56 h]; Electrical Technician [112 h] → Unskilled Labor [56 h]; Electrical Technician [112 h]; Control cable [843.96]; CAT6A cable [843.96] |

| ID | Task | Start | Finish | Complete | Total float | Predecessors | Other |
| --- | --- | --- | --- | --- | --- | --- | --- |
| CO-SU-FE-WP2-EL-460 | Install 800mm x 800mm x 800mm height concrete handhole | 2026-11-08 → 2026-10-28 (-11d) | 2026-11-15 → 2026-11-05 (-10d) |  | -3.8d → 4.33d |  | resources Supply and install 800mm x 800mm x 800mm height concrete handhole with bituminous paint all aroun [5.16]; Unskilled Labor [56 h]; Electrical Technician [112 h] → Unskilled Labor [56 h]; Electrical Technician [112 h]; Supply and install 800mm x 800mm x 800mm height concrete handhole with bituminous paint all aroun [5.16] |
| CO-SU-FE-WP2-EL-480 | Hot dipped galvanized cable conduits for CAT6A cable and Control Cables embedded to wall | 2026-11-08 → 2026-10-28 (-11d) | 2026-11-14 → 2026-11-04 (-10d) |  | -3d → 5.12d |  | resources Hot dipped galvanized cable conduits for CAT6A cable and Control Cables embedded to wall [113.98]; 400V, 3PH, 60Hz lighting control panel (LCP-02) [0.27]; Unskilled Labor [56 h]; Electrical Technician [112 h] → Unskilled Labor [56 h]; Electrical Technician [112 h]; Hot dipped galvanized cable conduits for CAT6A cable and Control Cables embedded to wall [113.98]; 400V, 3PH, 60Hz lighting control panel (LCP-02) [0.27] |
| CO-SU-FE-WP2-EL-430 | Fixing Earthing Work (Earth Pit,Grounding rod,Tinned Copper wire) | 2026-11-16 → 2026-11-05 (-11d) | 2026-11-22 → 2026-11-12 (-10d) |  | -4d → 4.12d |  | resources Earth Pit [4.61]; Grounding rod 20mmX3m [2.44]; Grounding rod with Pit 20mmX3m [1.09]; Earthing Bar [0.81]; 120mm2 Tinned copper wire [54.27]; Unskilled Labor [48 h]; Electrical Technician [96 h] → Unskilled Labor [48 h]; Electrical Technician [96 h]; Earth Pit [4.61]; Grounding rod 20mmX3m [2.44]; Grounding rod with Pit 20mmX3m [1.09]; Earthing Bar [0.81]; 120mm2 Tinned copper wire [54.27] |
| CO-SU-FE-WP2-EL-490 | Field Equipment Cabinet enclosed outdoor complete with precast concrete footing, | 2026-11-23 → 2026-11-12 (-11d) | 2026-11-26 → 2026-11-17 (-9d) |  | -4d → 4.12d |  | resources Field Equipment Cabinet enclosed outdoor complete with precast concrete footing, suitable for parame [5.16]; Unskilled Labor [32 h]; Electrical Technician [64 h] → Unskilled Labor [32 h]; Electrical Technician [64 h]; Field Equipment Cabinet enclosed outdoor complete with precast concrete footing, suitable for parame [5.16] |
| CO-SU-FE-WP2-EL-510 | Install of direct buried armored cable 4C-16mm2 ,10mm2 | 2026-11-28 → 2026-11-17 (-11d) | 2026-12-06 → 2026-11-26 (-10d) |  | -3.5d → 4.62d |  | resources 4C-16mm2 CU/XLPE/PVC direct buried armored cable [352.78]; 4C-10mm2 CU/XLPE/PVC direct buried armored cable [230.66]; Unskilled Labor [56 h]; Electrical Technician [112 h] → Unskilled Labor [56 h]; Electrical Technician [112 h]; 4C-16mm2 CU/XLPE/PVC direct buried armored cable [352.78]; 4C-10mm2 CU/XLPE/PVC direct buried armored cable [230.66] |
| CO-SU-FE-WP2-EL-520 | Install 16mm2,10mm2 CU/PVC wire | 2026-11-28 → 2026-11-17 (-11d) | 2026-12-06 → 2026-11-26 (-10d) |  | -3.5d → 4.62d |  | resources 16mm2 CU/PVC wire [352.78]; 10mm2 CU/PVC wire [230.66]; Unskilled Labor [56 h]; Electrical Technician [112 h] → Unskilled Labor [56 h]; Electrical Technician [112 h]; 16mm2 CU/PVC wire [352.78]; 10mm2 CU/PVC wire [230.66] |
| CO-SU-FE-WP2-EL-540 | FEC-CCTV ( 4C-16mm2 CU/XLPE/PVC direct buried armored cable,16mm2 CU/PVC wire | 2026-11-28 → 2026-11-17 (-11d) | 2026-12-06 → 2026-11-26 (-10d) |  | -4d → 4.12d |  | resources 4C-16mm2 CU/XLPE/PVC direct buried armored cable [1107.19]; 16mm2 CU/PVC wire [1107.19]; Unskilled Labor [64 h]; Electrical Technician [128 h] → Unskilled Labor [64 h]; Electrical Technician [128 h]; 4C-16mm2 CU/XLPE/PVC direct buried armored cable [1107.19]; 16mm2 CU/PVC wire [1107.19] |
| CO-SU-FE-WP2-EL-400 | Junction Box for lighting fixture | 2026-12-06 → 2026-11-26 (-10d) | 2026-12-09 → 2026-11-30 (-9d) |  | 10.5d → 18.62d |  | resources Junction Box for lighting fixture [36.91]; Unskilled Labor [24 h]; Electrical Technician [48 h] → Unskilled Labor [24 h]; Electrical Technician [48 h]; Junction Box for lighting fixture [36.91] |
| CO-SU-FE-WP2-EL-440 | IR Intrusion Detection System Quad Beams | 2027-03-25 → 2027-03-20 (-5d) | 2027-04-01 → 2027-03-27 (-5d) |  | -48d → -43d |  | resources IR Intrusion Detection System Quad Beams (Tx & Rx) (SL-350 QDM) [16.28]; Unskilled Labor [56 h]; Electrical Technician [112 h] → Unskilled Labor [56 h]; Electrical Technician [112 h]; IR Intrusion Detection System Quad Beams (Tx & Rx) (SL-350 QDM) [16.28] |
| CO-SU-FE-WP2-EL-530 | Install of 38W, 230V, 1PH, 60Hz fence, led linear uplight lighting, IP66 | 2027-03-25 → 2027-03-20 (-5d) | 2027-04-01 → 2027-03-27 (-5d) |  | -48d → -43d |  | resources 38W, 230V, 1PH, 60Hz fence, led linear uplight lighting, IP66 [36.91]; Unskilled Labor [56 h]; Electrical Technician [112 h] → Unskilled Labor [56 h]; Electrical Technician [112 h]; 38W, 230V, 1PH, 60Hz fence, led linear uplight lighting, IP66 [36.91] |
| CO-SU-FE-WP2-EL-420 | Install, fixings, testing and commissioning 80W LED | 2027-04-03 → 2027-03-28 (-6d) | 2027-04-10 → 2027-04-04 (-6d) |  | -48d → -43d |  | resources Supply, Install, fixings, testing and commissioning 80W LED Projector waterproof DJ effect light including c [0.81]; Unskilled Labor [56 h]; Electrical Technician [112 h] → Unskilled Labor [56 h]; Electrical Technician [112 h]; Supply, Install, fixings, testing and commissioning 80W LED Projector waterproof DJ effect light including c [0.81] |
| 4 | **Architictural work** |  | 2027-04-07 → 2027-04-01 (-6d) |  |  |  |  |
| CO-SU-FE-WP2-AR-220 | Install Brick Work For Northern Fence |  | 2026-10-31 → 2026-10-21 (-10d) | 40% → 80% | -4d → 4.12d |  | resources Common brickwork. 300mm thick; vertical straight wall complete with accessories. [2381.28]; Insulated brickwork. with expanded polystyrene 200mm thick; vertical straight wall complete with accessories .; Common brickwork. 150mm thick; vertical straight wall complete with accessories.; Two Layers of Bituminous Coating [10629.6]; 20x20 Approved Polysulfide Joint Sealant [112.62]; Unskilled Labor [160 h]; Skilled Labor [320 h] → Unskilled Labor [160 h]; Skilled Labor [320 h]; Common brickwork. 300mm thick; vertical straight wall complete with accessories. [2381.28]; Insulated brickwork. with expanded polystyrene 200mm thick; vertical straight wall complete with accessories .; Common brickwork. 150mm thick; vertical straight wall complete with accessories.; Two Layers of Bituminous Coating [10629.6]; 20x20 Approved Polysulfide Joint Sealant [112.62] |
| CO-SU-FE-WP2-AR-230 | External plastering to walls and columns | 2026-12-07 → 2026-11-26 (-11d) | 2026-12-15 → 2026-12-06 (-9d) |  | -4d → 4.12d |  |  |
| CO-SU-FE-WP2-AR-240 | Install 50mm thick random cut stone cladding | 2026-12-16 → 2026-12-06 (-10d) | 2026-12-24 → 2026-12-15 (-9d) |  | -4d → 4.12d |  | resources Supply and install 33mm thick Lexan cladding blue complete with necessary framings [302.57]; Supply and install 50mm thick random cut stone cladding complete with 600m [5377.61]; Supply and install External plastering to walls and columns min. 15mm thick with cement mortar of specified grade including [4549.53]; Unskilled Labor [120 h]; Skilled Labor [240 h] → Unskilled Labor [120 h]; Skilled Labor [240 h]; Supply and install 33mm thick Lexan cladding blue complete with necessary framings [302.57]; Supply and install 50mm thick random cut stone cladding complete with 600m [5377.61]; Supply and install External plastering to walls and columns min. 15mm thick with cement mortar of specified grade including [4549.53] |
| CO-SU-FE-WP2-AR-250 | Install 2 coats of weatherproof paint at walls | 2026-12-26 → 2026-12-15 (-11d) | 2027-01-03 → 2026-12-24 (-10d) |  | -4d → 4.12d |  | resources Supply and install 2 coats of weatherproof paint at walls including one prime coat and [4549.53]; Unskilled Labor [80 h]; Skilled Labor [160 h] → Unskilled Labor [80 h]; Skilled Labor [160 h]; Supply and install 2 coats of weatherproof paint at walls including one prime coat and [4549.53] |
| CO-SU-FE-WP2-AR-260 | Install Stone coping 500mm,525mm | 2027-01-04 → 2026-12-24 (-11d) | 2027-01-12 → 2027-01-03 (-9d) |  | -4d → 4.12d |  | resources Guard room coping 350mm [15.47]; Guard room coping 450mm [7.33]; Stone coping 500mm [693.35]; Stone coping 525mm [332.16]; Unskilled Labor [80 h]; Skilled Labor [160 h] → Unskilled Labor [80 h]; Skilled Labor [160 h]; Guard room coping 350mm [15.47]; Guard room coping 450mm [7.33]; Stone coping 500mm [693.35]; Stone coping 525mm [332.16] |
| CO-SU-FE-WP2-AR-270 | Install MODON Signage | 2027-03-30 → 2027-03-24 (-6d) | 2027-04-07 → 2027-04-01 (-6d) |  | -45d → -40d |  | resources Supply and install MODON Signage with Logo Type 1 [6.51]; Supply and install MODON Signage Type 2 [6.51]; Supply and install "Triangle Style" signage [14.93]; Unskilled Labor [48 h]; Skilled Labor [96 h] → Unskilled Labor [48 h]; Skilled Labor [96 h]; Supply and install MODON Signage with Logo Type 1 [6.51]; Supply and install MODON Signage Type 2 [6.51]; Supply and install "Triangle Style" signage [14.93] |
| 4 | **Southern Fence S01:S05** |  | 2027-04-18 → 2027-04-12 (-6d) |  |  |  |  |
| 1 | **Civil Work** |  | 2026-11-12 → 2026-11-02 (-10d) |  |  |  |  |
| CO-SU-FE-S-CI-250 | Excavation Work For Northern Fence |  |  |  |  | ENG-SH-GR-A-200_R, CO-EW-110_R SS, PRO-FE-CV-DL-80 SS, CO-SU-FE-N-CI-100 → ENG-SH-GR-A-200_R, PRO-FE-CV-MF-60 SS |  |
| CO-SU-FE-S-CI-260 | Pouring for Plain Concrete Northern Fence |  | 2026-10-15 → 2026-10-20 (+5d) |  | 5d → 6.62d | CO-SU-FE-S-CI-250 → CO-SU-FE-S-CI-250 SS | resources 100 mm thickness lean concrete under the foundation [316.6]; Unskilled Labor [96 h]; Carpenter [48 h]; Steel Fixer [48 h] → Unskilled Labor [96 h]; Carpenter [48 h]; Steel Fixer [48 h]; 100 mm thickness lean concrete under the foundation [316.6] |
| CO-SU-FE-S-CI-270 | Pouring R.C Footing For Northern Fence |  |  |  | 5d → 6.62d | CO-SU-FE-S-CI-260 SS → CO-SU-FE-S-CI-260 SS, CO-SU-FE-S-CI-260 FF | resources Foundation [1641.79]; Slab on Grade; Unskilled Labor [320 h]; Carpenter [160 h]; Steel Fixer [160 h] → Unskilled Labor [320 h]; Carpenter [160 h]; Steel Fixer [160 h]; Foundation [1641.79]; Slab on Grade |
| CO-SU-FE-S-CI-280 | Pouring R.C Columns For Northern Fence |  | 2026-11-02 → 2026-10-28 (-5d) |  | 5d → 6.62d | CO-SU-FE-S-CI-270 → CO-SU-FE-S-CI-270 SS, CO-SU-FE-S-CI-270 FF | resources Walls [592.54]; Columns [82.54]; Unskilled Labor [160 h]; Carpenter [80 h]; Steel Fixer [80 h] → Unskilled Labor [160 h]; Carpenter [80 h]; Steel Fixer [80 h]; Walls [592.54]; Columns [82.54] |
| CO-SU-FE-S-CI-290 | Pouring Beams For Northern Fence |  | 2026-11-12 → 2026-11-02 (-10d) |  | 14d → 30.38d | CO-SU-FE-S-CI-280, CO-SU-FE-S-AR-280 SS → CO-SU-FE-S-CI-280 SS, CO-SU-FE-S-AR-280 SS, CO-SU-FE-S-CI-280 FF | resources Beams [60.61]; Unskilled Labor [128 h]; Carpenter [64 h]; Steel Fixer [64 h] → Unskilled Labor [128 h]; Carpenter [64 h]; Steel Fixer [64 h]; Beams [60.61] |
| 5 | **Finishing Work** |  | 2027-04-18 → 2027-04-12 (-6d) |  |  |  |  |
| 3 | **Electrical Work** | 2026-10-27 → 2026-10-25 (-2d) | 2027-04-18 → 2027-04-12 (-6d) |  |  |  |  |
| CO-SU-FE-S-EL-560 | Trench excavation to receive 2 nos 50mm diameter PVC Conduit | 2026-10-27 → 2026-10-25 (-2d) | 2026-11-12 → 2026-11-11 (-1d) |  | 5d → 6.62d |  | resources Trench excavation to receive 2 nos 50mm diameter PVC Conduit, sand bedding and embedded with sa [792.63]; Unskilled Labor [32 h]; Electrical Technician [64 h] → Unskilled Labor [32 h]; Electrical Technician [64 h]; Trench excavation to receive 2 nos 50mm diameter PVC Conduit, sand bedding and embedded with sa [792.63] |
| CO-SU-FE-S-EL-620 | Trench excavation to receive 3 nos 50mm diameter PVC Conduit | 2026-10-27 → 2026-10-25 (-2d) | 2026-11-12 → 2026-11-11 (-1d) |  | 5d → 6.62d |  | resources 800mm depth minimum Trench excavation to receive 3 nos 50mm diameter PVC Conduit with spacer, sand bedding an [339.21]; Unskilled Labor [48 h]; Electrical Technician [96 h] → Unskilled Labor [48 h]; Electrical Technician [96 h]; 800mm depth minimum Trench excavation to receive 3 nos 50mm diameter PVC Conduit with spacer, sand bedding an [339.21] |
| CO-SU-FE-S-EL-600 | Fixing of Control cable,CAT6A cable | 2026-11-14 → 2026-11-11 (-3d) | 2026-11-30 → 2026-11-29 (-1d) |  | 5d → 6.62d |  | resources Control cable [703.3]; CAT6A cable [703.3]; Unskilled Labor [56 h]; Electrical Technician [112 h] → Unskilled Labor [56 h]; Electrical Technician [112 h]; Control cable [703.3]; CAT6A cable [703.3] |
| CO-SU-FE-S-EL-610 | Install 800mm x 800mm x 800mm height concrete handhole | 2026-11-14 → 2026-11-11 (-3d) | 2026-11-30 → 2026-11-29 (-1d) |  | 5d → 6.62d |  | resources Supply and install 800mm x 800mm x 800mm height concrete handhole with bituminous paint all aroun [4.3]; Unskilled Labor [56 h]; Electrical Technician [112 h] → Unskilled Labor [56 h]; Electrical Technician [112 h]; Supply and install 800mm x 800mm x 800mm height concrete handhole with bituminous paint all aroun [4.3] |
| CO-SU-FE-S-EL-630 | Hot dipped galvanized cable conduits for CAT6A cable and Control Cables embedded to wall | 2026-11-14 → 2026-11-11 (-3d) | 2026-11-30 → 2026-11-29 (-1d) |  | 5d → 6.62d |  | resources Hot dipped galvanized cable conduits for CAT6A cable and Control Cables embedded to wall [94.98]; 400V, 3PH, 60Hz lighting control panel (LCP-02) [0.23]; Unskilled Labor [56 h]; Electrical Technician [112 h] → Unskilled Labor [56 h]; Electrical Technician [112 h]; Hot dipped galvanized cable conduits for CAT6A cable and Control Cables embedded to wall [94.98]; 400V, 3PH, 60Hz lighting control panel (LCP-02) [0.23] |
| CO-SU-FE-S-EL-580 | Fixing Earthing Work (Earth Pit,Grounding rod,Tinned Copper wire) | 2026-12-01 → 2026-11-29 (-2d) | 2026-12-07 → 2026-12-06 (-1d) |  | 5d → 6.62d |  | resources Earth Pit [3.84]; Grounding rod 20mmX3m [2.04]; Grounding rod with Pit 20mmX3m [0.9]; Earthing Bar [0.68]; 120mm2 Tinned copper wire [45.23]; Unskilled Labor [48 h]; Electrical Technician [96 h] → Unskilled Labor [48 h]; Electrical Technician [96 h]; Earth Pit [3.84]; Grounding rod 20mmX3m [2.04]; Grounding rod with Pit 20mmX3m [0.9]; Earthing Bar [0.68]; 120mm2 Tinned copper wire [45.23] |
| CO-SU-FE-S-EL-640 | Field Equipment Cabinet enclosed outdoor complete with precast concrete footing, | 2026-12-03 → 2026-12-01 (-2d) | 2026-12-07 → 2026-12-06 (-1d) |  | 5d → 6.62d |  | resources Field Equipment Cabinet enclosed outdoor complete with precast concrete footing, suitable for parame [4.3]; Unskilled Labor [32 h]; Electrical Technician [64 h] → Unskilled Labor [32 h]; Electrical Technician [64 h]; Field Equipment Cabinet enclosed outdoor complete with precast concrete footing, suitable for parame [4.3] |
| CO-SU-FE-S-EL-650 | Fence Lightining 400V, 3PH, 60Hz lighting control panel (LCP-02) | 2026-12-03 → 2026-12-01 (-2d) | 2026-12-07 → 2026-12-06 (-1d) |  | 5d → 6.62d |  | was named Fence Lightining 400V, 3PH, 60Hz lighting control panelï¿½ (LCP-02) |
| CO-SU-FE-S-EL-660 | Install of direct buried armored cable 4C-16mm2 ,10mm2 | 2026-12-03 → 2026-12-01 (-2d) | 2026-12-14 → 2026-12-13 (-1d) |  | 6d → 7.62d |  | resources 4C-16mm2 CU/XLPE/PVC direct buried armored cable [293.98]; 4C-10mm2 CU/XLPE/PVC direct buried armored cable [192.22]; Unskilled Labor [56 h]; Electrical Technician [112 h] → Unskilled Labor [56 h]; Electrical Technician [112 h]; 4C-16mm2 CU/XLPE/PVC direct buried armored cable [293.98]; 4C-10mm2 CU/XLPE/PVC direct buried armored cable [192.22] |
| CO-SU-FE-S-EL-670 | Install 16mm2,10mm2 CU/PVC wire | 2026-12-08 → 2026-12-06 (-2d) | 2026-12-14 → 2026-12-13 (-1d) |  | 6d → 7.62d |  | resources 16mm2 CU/PVC wire [293.98]; 10mm2 CU/PVC wire [192.22]; Unskilled Labor [56 h]; Electrical Technician [112 h] → Unskilled Labor [56 h]; Electrical Technician [112 h]; 16mm2 CU/PVC wire [293.98]; 10mm2 CU/PVC wire [192.22] |
| CO-SU-FE-S-EL-690 | FEC-CCTV ( 4C-16mm2 CU/XLPE/PVC direct buried armored cable,16mm2 CU/PVC wire | 2026-12-08 → 2026-12-06 (-2d) | 2026-12-15 → 2026-12-14 (-1d) |  | 5d → 6.62d |  | resources 4C-16mm2 CU/XLPE/PVC direct buried armored cable [922.66]; 16mm2 CU/PVC wire [922.66]; Unskilled Labor [56 h]; Electrical Technician [112 h] → Unskilled Labor [56 h]; Electrical Technician [112 h]; 4C-16mm2 CU/XLPE/PVC direct buried armored cable [922.66]; 16mm2 CU/PVC wire [922.66] |
| CO-SU-FE-S-EL-550 | Junction Box for lighting fixture | 2026-12-15 → 2026-12-13 (-2d) | 2026-12-22 → 2026-12-21 (-1d) |  | 6d → 7.62d |  | resources Junction Box for lighting fixture [30.76]; Unskilled Labor [24 h]; Electrical Technician [48 h] → Unskilled Labor [24 h]; Electrical Technician [48 h]; Junction Box for lighting fixture [30.76] |
| CO-SU-FE-S-EL-590 | IR Intrusion Detection System Quad Beams | 2027-03-17 → 2027-03-07 (-10d) | 2027-03-24 → 2027-03-18 (-6d) |  | -34d → -29d |  | resources IR Intrusion Detection System Quad Beams (Tx & Rx) (SL-350 QDM) [13.57]; Unskilled Labor [56 h]; Electrical Technician [112 h] → Unskilled Labor [56 h]; Electrical Technician [112 h]; IR Intrusion Detection System Quad Beams (Tx & Rx) (SL-350 QDM) [13.57] |
| CO-SU-FE-S-EL-680 | Install of 38W, 230V, 1PH, 60Hz fence, led linear uplight lighting, IP66 | 2027-04-03 → 2027-03-28 (-6d) | 2027-04-10 → 2027-04-04 (-6d) |  | -48d → -43d |  | resources 38W, 230V, 1PH, 60Hz fence, led linear uplight lighting, IP66 [30.76]; Unskilled Labor [56 h]; Electrical Technician [112 h] → Unskilled Labor [56 h]; Electrical Technician [112 h]; 38W, 230V, 1PH, 60Hz fence, led linear uplight lighting, IP66 [30.76] |
| CO-SU-FE-S-EL-570 | Install, fixings, testing and commissioning 80W LED | 2027-04-11 → 2027-04-05 (-6d) | 2027-04-18 → 2027-04-12 (-6d) |  | -48d → -43d |  | resources Supply, Install, fixings, testing and commissioning 80W LED Projector waterproof DJ effect light including c [0.68]; Unskilled Labor [56 h]; Electrical Technician [112 h] → Unskilled Labor [56 h]; Electrical Technician [112 h]; Supply, Install, fixings, testing and commissioning 80W LED Projector waterproof DJ effect light including c [0.68] |
| 4 | **Architictural work** |  | 2027-04-17 → 2027-04-11 (-6d) |  |  |  |  |
| CO-SU-FE-S-AR-280 | Install Brick Work For Northern Fence |  | 2026-11-02 → 2026-10-28 (-5d) |  | 5d → 6.62d | CO-SU-FE-S-CI-280 FF → CO-SU-FE-S-CI-280 SS, CO-SU-FE-S-CI-280 FF | resources Common brickwork. 300mm thick; vertical straight wall complete with accessories. [1984.4]; Insulated brickwork. with expanded polystyrene 200mm thick; vertical straight wall complete with accessories .; Common brickwork. 150mm thick; vertical straight wall complete with accessories.; Two Layers of Bituminous Coating [8857.98]; 20x20 Approved Polysulfide Joint Sealant [93.85]; Unskilled Labor [120 h]; Skilled Labor [240 h] → Unskilled Labor [120 h]; Skilled Labor [240 h]; Common brickwork. 300mm thick; vertical straight wall complete with accessories. [1984.4]; Insulated brickwork. with expanded polystyrene 200mm thick; vertical straight wall complete with accessories .; Common brickwork. 150mm thick; vertical straight wall complete with accessories.; Two Layers of Bituminous Coating [8857.98]; 20x20 Approved Polysulfide Joint Sealant [93.85] |
| CO-SU-FE-S-AR-290 | External plastering to walls and columns | 2026-12-16 → 2026-12-14 (-2d) | 2026-12-22 → 2026-12-21 (-1d) |  | 5d → 6.62d |  |  |
| CO-SU-FE-S-AR-300 | Install 50mm thick random cut stone cladding | 2026-12-23 → 2026-12-21 (-2d) | 2026-12-29 → 2026-12-28 (-1d) |  | 5d → 6.62d |  | resources Supply and install 33mm thick Lexan cladding blue complete with necessary framings [252.14]; Supply and install 50mm thick random cut stone cladding complete with 600m [3237.31]; Supply and install External plastering to walls and columns min. 15mm thick with cement mortar of specified grade including [3791.27]; Unskilled Labor [112 h]; Skilled Labor [224 h] → Unskilled Labor [112 h]; Skilled Labor [224 h]; Supply and install 33mm thick Lexan cladding blue complete with necessary framings [252.14]; Supply and install 50mm thick random cut stone cladding complete with 600m [3237.31]; Supply and install External plastering to walls and columns min. 15mm thick with cement mortar of specified grade including [3791.27] |
| CO-SU-FE-S-AR-310 | Install 2 coats of weatherproof paint at walls | 2027-03-02 → 2027-02-23 (-7d) | 2027-03-16 → 2027-03-07 (-9d) |  | -44d → -39d |  | resources Supply and install 2 coats of weatherproof paint at walls including one prime coat and [3791.27]; Unskilled Labor [64 h]; Skilled Labor [128 h] → Unskilled Labor [64 h]; Skilled Labor [128 h]; Supply and install 2 coats of weatherproof paint at walls including one prime coat and [3791.27] |
| CO-SU-FE-S-AR-320 | Install Stone coping 500mm,525mm | 2027-03-17 → 2027-03-07 (-10d) | 2027-03-28 → 2027-03-22 (-6d) |  | -44d → -39d |  | resources Guard room coping 350mm [12.89]; Guard room coping 450mm [6.11]; Stone coping 500mm [577.79]; Stone coping 525mm [276.8]; Unskilled Labor [80 h]; Skilled Labor [160 h] → Unskilled Labor [80 h]; Skilled Labor [160 h]; Guard room coping 350mm [12.89]; Guard room coping 450mm [6.11]; Stone coping 500mm [577.79]; Stone coping 525mm [276.8] |
| CO-SU-FE-S-AR-330 | Install MODON Signage | 2027-04-08 → 2027-04-03 (-5d) | 2027-04-17 → 2027-04-11 (-6d) |  | -45d → -40d |  | resources Supply and install MODON Signage with Logo Type 1 [5.43]; Supply and install MODON Signage Type 2 [5.43]; Supply and install "Triangle Style" signage [12.44]; Unskilled Labor [48 h]; Skilled Labor [96 h] → Unskilled Labor [48 h]; Skilled Labor [96 h]; Supply and install MODON Signage with Logo Type 1 [5.43]; Supply and install MODON Signage Type 2 [5.43]; Supply and install "Triangle Style" signage [12.44] |
| 5 | **Eastern Fence P1 ( E01:E06 )** |  | 2027-04-22 → 2027-04-17 (-5d) |  |  |  |  |
| 1 | **Civil Work** |  | 2026-11-21 → 2026-11-03 (-18d) |  |  |  |  |
| CO-SU-FE-EP1-CI-310 | Pouring for Plain Concrete Northern Fence |  | 2026-10-21 → 2026-10-20 (-1d) |  | 13d → 22d | CO-SU-FE-EP1-CI-300 → CO-SU-FE-EP1-CI-300 SS | resources 100 mm thickness lean concrete under the foundation [379.92]; Unskilled Labor [160 h]; Carpenter [80 h]; Steel Fixer [80 h] → Unskilled Labor [160 h]; Carpenter [80 h]; Steel Fixer [80 h]; 100 mm thickness lean concrete under the foundation [379.92] |
| CO-SU-FE-EP1-CI-320 | Pouring R.C Footing For Northern Fence |  | 2026-10-26 → 2026-10-21 (-5d) |  | 13d → 22d | CO-SU-FE-EP1-CI-310 SS → CO-SU-FE-EP1-CI-310 SS, CO-SU-FE-EP1-CI-310 FF | resources Foundation [1970.15]; Slab on Grade; Unskilled Labor [480 h]; Carpenter [240 h]; Steel Fixer [240 h] → Unskilled Labor [480 h]; Carpenter [240 h]; Steel Fixer [240 h]; Foundation [1970.15]; Slab on Grade |
| CO-SU-FE-EP1-CI-330 | Pouring R.C Columns For Northern Fence |  | 2026-11-12 → 2026-11-02 (-10d) |  | 13d → 22d | CO-SU-FE-EP1-CI-320 → CO-SU-FE-EP1-CI-320 SS, CO-SU-FE-EP1-CI-320 FF | resources Walls [382.09]; Columns [99.05]; Unskilled Labor [384 h]; Carpenter [192 h]; Steel Fixer [192 h] → Unskilled Labor [384 h]; Carpenter [192 h]; Steel Fixer [192 h]; Walls [382.09]; Columns [99.05] |
| CO-SU-FE-EP1-CI-340 | Pouring Beams For Northern Fence |  | 2026-11-21 → 2026-11-03 (-18d) |  | 14d → 29.25d | CO-SU-FE-EP1-CI-330, CO-SU-FE-EP1-AR-340, CO-SU-FE-S-CI-290 → CO-SU-FE-EP1-CI-330 SS, CO-SU-FE-EP1-AR-340 SS, CO-SU-FE-S-CI-290 SS, CO-SU-FE-EP1-CI-330 FF, CO-SU-FE-EP1-AR-340 FF, CO-SU-FE-S-CI-290 FF | resources Beams [72.73]; Unskilled Labor [224 h]; Carpenter [112 h]; Steel Fixer [112 h] → Unskilled Labor [224 h]; Carpenter [112 h]; Steel Fixer [112 h]; Beams [72.73] |
| 5 | **Finishing Work** |  | 2027-04-22 → 2027-04-17 (-5d) |  |  |  |  |
| 3 | **Electrical Work** | 2026-11-14 → 2026-11-03 (-11d) | 2027-04-22 → 2027-04-17 (-5d) |  |  |  |  |
| CO-SU-FE-EP1-EL-710 | Trench excavation to receive 2 nos 50mm diameter PVC Conduit | 2026-11-14 → 2026-11-03 (-11d) | 2026-11-17 → 2026-11-07 (-10d) |  | 13d → 22d |  | resources Trench excavation to receive 2 nos 50mm diameter PVC Conduit, sand bedding and embedded with sa [951.15]; Unskilled Labor [32 h]; Electrical Technician [64 h] → Unskilled Labor [32 h]; Electrical Technician [64 h]; Trench excavation to receive 2 nos 50mm diameter PVC Conduit, sand bedding and embedded with sa [951.15] |
| CO-SU-FE-EP1-EL-770 | Trench excavation to receive 3 nos 50mm diameter PVC Conduit | 2026-11-14 → 2026-11-03 (-11d) | 2026-11-17 → 2026-11-07 (-10d) |  | 13d → 22d |  | resources 800mm depth minimum Trench excavation to receive 3 nos 50mm diameter PVC Conduit with spacer, sand bedding an [407.06]; Unskilled Labor [48 h]; Electrical Technician [96 h] → Unskilled Labor [48 h]; Electrical Technician [96 h]; 800mm depth minimum Trench excavation to receive 3 nos 50mm diameter PVC Conduit with spacer, sand bedding an [407.06] |
| CO-SU-FE-EP1-EL-750 | Fixing of Control cable,CAT6A cable | 2026-11-18 → 2026-11-08 (-10d) | 2026-11-22 → 2026-11-11 (-11d) |  | 13d → 22d |  | resources Control cable [843.96]; CAT6A cable [843.96]; Unskilled Labor [56 h]; Electrical Technician [112 h] → Unskilled Labor [56 h]; Electrical Technician [112 h]; Control cable [843.96]; CAT6A cable [843.96] |
| CO-SU-FE-EP1-EL-760 | Install 800mm x 800mm x 800mm height concrete handhole | 2026-11-18 → 2026-11-08 (-10d) | 2026-11-22 → 2026-11-11 (-11d) |  | 13d → 22d |  | resources Supply and install 800mm x 800mm x 800mm height concrete handhole with bituminous paint all aroun [5.16]; Unskilled Labor [56 h]; Electrical Technician [112 h] → Unskilled Labor [56 h]; Electrical Technician [112 h]; Supply and install 800mm x 800mm x 800mm height concrete handhole with bituminous paint all aroun [5.16] |
| CO-SU-FE-EP1-EL-780 | Hot dipped galvanized cable conduits for CAT6A cable and Control Cables embedded to wall | 2026-11-18 → 2026-11-08 (-10d) | 2026-11-22 → 2026-11-11 (-11d) |  | 13d → 22d |  | resources Hot dipped galvanized cable conduits for CAT6A cable and Control Cables embedded to wall [113.98]; 400V, 3PH, 60Hz lighting control panel (LCP-02) [0.27]; Unskilled Labor [56 h]; Electrical Technician [112 h] → Unskilled Labor [56 h]; Electrical Technician [112 h]; Hot dipped galvanized cable conduits for CAT6A cable and Control Cables embedded to wall [113.98]; 400V, 3PH, 60Hz lighting control panel (LCP-02) [0.27] |
| CO-SU-FE-EP1-EL-730 | Fixing Earthing Work (Earth Pit,Grounding rod,Tinned Copper wire) | 2026-11-23 → 2026-11-12 (-11d) | 2026-11-29 → 2026-11-18 (-11d) |  | 13d → 22d |  | resources Earth Pit [4.61]; Grounding rod 20mmX3m [2.44]; Grounding rod with Pit 20mmX3m [1.09]; Earthing Bar [0.81]; 120mm2 Tinned copper wire [54.27]; Unskilled Labor [48 h]; Electrical Technician [96 h] → Unskilled Labor [48 h]; Electrical Technician [96 h]; Earth Pit [4.61]; Grounding rod 20mmX3m [2.44]; Grounding rod with Pit 20mmX3m [1.09]; Earthing Bar [0.81]; 120mm2 Tinned copper wire [54.27] |
| CO-SU-FE-EP1-EL-790 | Field Equipment Cabinet enclosed outdoor complete with precast concrete footing, | 2026-11-30 → 2026-11-19 (-11d) | 2026-12-03 → 2026-11-23 (-10d) |  | 13d → 22d |  | resources Field Equipment Cabinet enclosed outdoor complete with precast concrete footing, suitable for parame [5.16]; Unskilled Labor [32 h]; Electrical Technician [64 h] → Unskilled Labor [32 h]; Electrical Technician [64 h]; Field Equipment Cabinet enclosed outdoor complete with precast concrete footing, suitable for parame [5.16] |
| CO-SU-FE-EP1-EL-800 | Fence Lightining 400V, 3PH, 60Hz lighting control panel (LCP-02) | 2026-11-30 → 2026-11-19 (-11d) | 2026-12-03 → 2026-11-23 (-10d) |  | 13d → 22d |  | was named Fence Lightining 400V, 3PH, 60Hz lighting control panelï¿½ (LCP-02) |
| CO-SU-FE-EP1-EL-810 | Install of direct buried armored cable 4C-16mm2 ,10mm2 | 2026-12-05 → 2026-11-24 (-11d) | 2026-12-08 → 2026-11-28 (-10d) |  | 13d → 22d |  | resources 4C-16mm2 CU/XLPE/PVC direct buried armored cable [352.78]; 4C-10mm2 CU/XLPE/PVC direct buried armored cable [230.66]; Unskilled Labor [56 h]; Electrical Technician [112 h] → Unskilled Labor [56 h]; Electrical Technician [112 h]; 4C-16mm2 CU/XLPE/PVC direct buried armored cable [352.78]; 4C-10mm2 CU/XLPE/PVC direct buried armored cable [230.66] |
| CO-SU-FE-EP1-EL-820 | Install 16mm2,10mm2 CU/PVC wire | 2026-12-05 → 2026-11-24 (-11d) | 2026-12-08 → 2026-11-28 (-10d) |  | 13d → 22d |  | resources 16mm2 CU/PVC wire [352.78]; 10mm2 CU/PVC wire [230.66]; Unskilled Labor [56 h]; Electrical Technician [112 h] → Unskilled Labor [56 h]; Electrical Technician [112 h]; 16mm2 CU/PVC wire [352.78]; 10mm2 CU/PVC wire [230.66] |
| CO-SU-FE-EP1-EL-840 | FEC-CCTV ( 4C-16mm2 CU/XLPE/PVC direct buried armored cable,16mm2 CU/PVC wire | 2026-12-05 → 2026-11-24 (-11d) | 2026-12-08 → 2026-11-28 (-10d) |  | 13d → 22d |  | resources 4C-16mm2 CU/XLPE/PVC direct buried armored cable [1107.19]; 16mm2 CU/PVC wire [1107.19]; Unskilled Labor [56 h]; Electrical Technician [112 h] → Unskilled Labor [56 h]; Electrical Technician [112 h]; 4C-16mm2 CU/XLPE/PVC direct buried armored cable [1107.19]; 16mm2 CU/PVC wire [1107.19] |
| CO-SU-FE-EP1-EL-700 | Junction Box for lighting fixture | 2026-12-23 → 2026-12-21 (-2d) | 2026-12-26 → 2026-12-24 (-2d) |  | 6d → 7.62d |  | resources Junction Box for lighting fixture [36.91]; Unskilled Labor [24 h]; Electrical Technician [48 h] → Unskilled Labor [24 h]; Electrical Technician [48 h]; Junction Box for lighting fixture [36.91] |
| CO-SU-FE-EP1-EL-740 | IR Intrusion Detection System Quad Beams | 2027-03-25 → 2027-03-20 (-5d) | 2027-03-29 → 2027-03-23 (-6d) |  | -31d → -26d |  | resources IR Intrusion Detection System Quad Beams (Tx & Rx) (SL-350 QDM) [16.28]; Unskilled Labor [56 h]; Electrical Technician [112 h] → Unskilled Labor [56 h]; Electrical Technician [112 h]; IR Intrusion Detection System Quad Beams (Tx & Rx) (SL-350 QDM) [16.28] |

| ID | Task | Start | Finish | Total float | Predecessors | Other |
| --- | --- | --- | --- | --- | --- | --- |
| CO-SU-FE-EP1-EL-830 | Install of 38W, 230V, 1PH, 60Hz fence, led linear uplight lighting, IP66 | 2027-03-25 → 2027-03-20 (-5d) | 2027-03-29 → 2027-03-23 (-6d) | -31d → -26d |  | resources 38W, 230V, 1PH, 60Hz fence, led linear uplight lighting, IP66 [36.91]; Unskilled Labor [56 h]; Electrical Technician [112 h] → Unskilled Labor [56 h]; Electrical Technician [112 h]; 38W, 230V, 1PH, 60Hz fence, led linear uplight lighting, IP66 [36.91] |
| CO-SU-FE-EP1-EL-720 | Install, fixings, testing and commissioning 80W LED | 2027-04-19 → 2027-04-13 (-6d) | 2027-04-22 → 2027-04-17 (-5d) | -48d → -43d |  | resources Supply, Install, fixings, testing and commissioning 80W LED Projector waterproof DJ effect light including c [0.81]; Unskilled Labor [56 h]; Electrical Technician [112 h] → Unskilled Labor [56 h]; Electrical Technician [112 h]; Supply, Install, fixings, testing and commissioning 80W LED Projector waterproof DJ effect light including c [0.81] |
| 4 | **Architictural work** |  | 2027-04-20 → 2027-04-14 (-6d) |  |  |  |
| CO-SU-FE-EP1-AR-340 | Install Brick Work For Northern Fence |  | 2026-11-12 → 2026-11-02 (-10d) | 13d → 22d | CO-SU-FE-EP1-CI-330 FF → CO-SU-FE-EP1-CI-330 SS, CO-SU-FE-EP1-CI-330 FF | resources Common brickwork. 300mm thick; vertical straight wall complete with accessories. [2381.28]; Insulated brickwork. with expanded polystyrene 200mm thick; vertical straight wall complete with accessories .; Common brickwork. 150mm thick; vertical straight wall complete with accessories.; Two Layers of Bituminous Coating [10629.6]; 20x20 Approved Polysulfide Joint Sealant [112.62]; Unskilled Labor [80 h]; Skilled Labor [160 h] → Unskilled Labor [80 h]; Skilled Labor [160 h]; Common brickwork. 300mm thick; vertical straight wall complete with accessories. [2381.28]; Insulated brickwork. with expanded polystyrene 200mm thick; vertical straight wall complete with accessories .; Common brickwork. 150mm thick; vertical straight wall complete with accessories.; Two Layers of Bituminous Coating [10629.6]; 20x20 Approved Polysulfide Joint Sealant [112.62] |
| CO-SU-FE-EP1-AR-350 | External plastering to walls and columns | 2026-12-09 → 2026-11-29 (-10d) | 2026-12-17 → 2026-12-07 (-10d) | 13d → 22d |  |  |
| CO-SU-FE-EP1-AR-360 | Install 50mm thick random cut stone cladding | 2026-12-19 → 2026-12-08 (-11d) | 2026-12-29 → 2026-12-19 (-10d) | 13d → 22d |  | resources Supply and install 33mm thick Lexan cladding blue complete with necessary framings [302.57]; Supply and install 50mm thick random cut stone cladding complete with 600m [1646.27]; Supply and install External plastering to walls and columns min. 15mm thick with cement mortar of specified grade including [4549.53]; Unskilled Labor [56 h]; Skilled Labor [112 h] → Unskilled Labor [56 h]; Skilled Labor [112 h]; Supply and install 33mm thick Lexan cladding blue complete with necessary framings [302.57]; Supply and install 50mm thick random cut stone cladding complete with 600m [1646.27]; Supply and install External plastering to walls and columns min. 15mm thick with cement mortar of specified grade including [4549.53] |
| CO-SU-FE-EP1-AR-370 | Install 2 coats of weatherproof paint at walls | 2026-12-30 → 2026-12-20 (-10d) | 2027-01-10 → 2026-12-30 (-11d) | 13d → 22d |  | resources Supply and install 2 coats of weatherproof paint at walls including one prime coat and [4549.53]; Unskilled Labor [48 h]; Skilled Labor [96 h] → Unskilled Labor [48 h]; Skilled Labor [96 h]; Supply and install 2 coats of weatherproof paint at walls including one prime coat and [4549.53] |
| CO-SU-FE-EP1-AR-380 | Install Stone coping 500mm,525mm | 2027-01-11 → 2026-12-31 (-11d) | 2027-01-21 → 2027-01-11 (-10d) | 13d → 22d |  | resources Guard room coping 350mm [15.47]; Guard room coping 450mm [7.33]; Stone coping 500mm [693.35]; Stone coping 525mm [332.16]; Unskilled Labor [32 h]; Skilled Labor [64 h] → Unskilled Labor [32 h]; Skilled Labor [64 h]; Guard room coping 350mm [15.47]; Guard room coping 450mm [7.33]; Stone coping 500mm [693.35]; Stone coping 525mm [332.16] |
| CO-SU-FE-EP1-AR-390 | Install MODON Signage | 2027-04-18 → 2027-04-12 (-6d) | 2027-04-20 → 2027-04-14 (-6d) | -45d → -40d |  | resources Supply and install MODON Signage with Logo Type 1 [6.51]; Supply and install MODON Signage Type 2 [6.51]; Supply and install "Triangle Style" signage [14.93]; Unskilled Labor [48 h]; Skilled Labor [96 h] → Unskilled Labor [48 h]; Skilled Labor [96 h]; Supply and install MODON Signage with Logo Type 1 [6.51]; Supply and install MODON Signage Type 2 [6.51]; Supply and install "Triangle Style" signage [14.93] |
| 6 | **Eastern Fence P2 ( E07:E13 )** |  | 2027-04-26 → 2027-05-05 (+9d) |  |  |  |
| 1 | **Civil Work** |  | 2026-12-20 → 2026-11-17 (-33d) |  |  |  |
| CO-SU-FE-EP2-CI-350 | Excavation Work For Northern Fence |  |  |  | CO-SU-FE-EP1-CI-320 SS → ENG-SH-GR-A-200_R |  |
| CO-SU-FE-EP2-CI-360 | Pouring for Plain Concrete Northern Fence |  | 2026-11-12 → 2026-11-02 (-10d) | 39d → 42d | CO-SU-FE-EP2-CI-350, CO-SU-FE-S-CI-290 FF → CO-SU-FE-EP2-CI-350 SS, CO-SU-FE-S-CI-290 SS, CO-SU-FE-S-CI-290 FF | resources 100 mm thickness lean concrete under the foundation [443.24]; Unskilled Labor [160 h]; Carpenter [80 h]; Steel Fixer [80 h] → Unskilled Labor [160 h]; Carpenter [80 h]; Steel Fixer [80 h]; 100 mm thickness lean concrete under the foundation [443.24] |
| CO-SU-FE-EP2-CI-370 | Pouring R.C Footing For Northern Fence |  | 2026-11-12 → 2026-11-03 (-9d) | 39d → 42d | CO-SU-FE-EP2-CI-360 SS → CO-SU-FE-EP2-CI-360 SS, CO-SU-FE-EP2-CI-360 FF | resources Foundation [805.97]; Slab on Grade; Unskilled Labor [480 h]; Carpenter [240 h]; Steel Fixer [240 h] → Unskilled Labor [480 h]; Carpenter [240 h]; Steel Fixer [240 h]; Foundation [805.97]; Slab on Grade |
| CO-SU-FE-EP2-CI-380 | Pouring R.C Columns For Northern Fence |  | 2026-11-12 → 2026-11-09 (-3d) | 39d → 42d | CO-SU-FE-EP2-CI-370 FF, CO-SU-FE-EP2-CI-370 SS, CO-SU-FE-EP1-CI-330 FF → CO-SU-FE-EP2-CI-370 SS, CO-SU-FE-EP1-CI-330 SS, CO-SU-FE-EP2-CI-370 FF, CO-SU-FE-EP1-CI-330 FF | resources Walls [322.39]; Columns [115.56]; Unskilled Labor [384 h]; Carpenter [192 h]; Steel Fixer [192 h] → Unskilled Labor [384 h]; Carpenter [192 h]; Steel Fixer [192 h]; Walls [322.39]; Columns [115.56] |
| CO-SU-FE-EP2-CI-390 | Pouring Beams For Northern Fence |  | 2026-12-20 → 2026-11-17 (-33d) | 27d → 55.62d | CO-SU-FE-EP2-CI-380, CO-SU-FE-EP2-AR-400, CO-SU-FE-EP1-CI-340 → CO-SU-FE-EP2-CI-380 SS, CO-SU-FE-EP2-AR-400 SS, CO-SU-FE-EP1-CI-340 SS, CO-SU-FE-EP2-CI-380 FF, CO-SU-FE-EP2-AR-400 FF, CO-SU-FE-EP1-CI-340 FF | resources Beams [84.85]; Unskilled Labor [224 h]; Carpenter [112 h]; Steel Fixer [112 h] → Unskilled Labor [224 h]; Carpenter [112 h]; Steel Fixer [112 h]; Beams [84.85] |
| 5 | **Finishing Work** |  | 2027-04-26 → 2027-05-05 (+9d) |  |  |  |
| 3 | **Electrical Work** | 2026-12-09 → 2026-11-10 (-29d) | 2027-04-26 → 2027-05-05 (+9d) |  |  |  |
| CO-SU-FE-EP2-EL-860 | Trench excavation to receive 2 nos 50mm diameter PVC Conduit | 2026-12-09 → 2026-11-10 (-29d) | 2026-12-13 → 2026-11-14 (-29d) | 17d → 42d |  | resources Trench excavation to receive 2 nos 50mm diameter PVC Conduit, sand bedding and embedded with sa [1109.68]; Unskilled Labor [32 h]; Electrical Technician [64 h] → Unskilled Labor [32 h]; Electrical Technician [64 h]; Trench excavation to receive 2 nos 50mm diameter PVC Conduit, sand bedding and embedded with sa [1109.68] |
| CO-SU-FE-EP2-EL-920 | Trench excavation to receive 3 nos 50mm diameter PVC Conduit | 2026-12-09 → 2026-11-10 (-29d) | 2026-12-13 → 2026-11-14 (-29d) | 17d → 42d |  | resources 800mm depth minimum Trench excavation to receive 3 nos 50mm diameter PVC Conduit with spacer, sand bedding an [474.9]; Unskilled Labor [48 h]; Electrical Technician [96 h] → Unskilled Labor [48 h]; Electrical Technician [96 h]; 800mm depth minimum Trench excavation to receive 3 nos 50mm diameter PVC Conduit with spacer, sand bedding an [474.9] |
| CO-SU-FE-EP2-EL-910 | Install 800mm x 800mm x 800mm height concrete handhole | 2026-12-14 → 2026-11-15 (-29d) | 2026-12-16 → 2026-11-17 (-29d) | 17d → 42d |  | resources Supply and install 800mm x 800mm x 800mm height concrete handhole with bituminous paint all aroun [6.02]; Unskilled Labor [56 h]; Electrical Technician [112 h] → Unskilled Labor [56 h]; Electrical Technician [112 h]; Supply and install 800mm x 800mm x 800mm height concrete handhole with bituminous paint all aroun [6.02] |
| CO-SU-FE-EP2-EL-930 | Hot dipped galvanized cable conduits for CAT6A cable and Control Cables embedded to wall | 2026-12-14 → 2026-11-15 (-29d) | 2026-12-16 → 2026-11-17 (-29d) | 17d → 42d |  | resources Hot dipped galvanized cable conduits for CAT6A cable and Control Cables embedded to wall [132.97]; 400V, 3PH, 60Hz lighting control panel (LCP-02) [0.32]; Unskilled Labor [56 h]; Electrical Technician [112 h] → Unskilled Labor [56 h]; Electrical Technician [112 h]; Hot dipped galvanized cable conduits for CAT6A cable and Control Cables embedded to wall [132.97]; 400V, 3PH, 60Hz lighting control panel (LCP-02) [0.32] |
| CO-SU-FE-EP2-EL-900 | Fixing of Control cable,CAT6A cable | 2026-12-27 → 2026-12-24 (-3d) | 2026-12-29 → 2026-12-28 (-1d) | 6d → 7.62d |  | resources Control cable [984.62]; CAT6A cable [984.62]; Unskilled Labor [56 h]; Electrical Technician [112 h] → Unskilled Labor [56 h]; Electrical Technician [112 h]; Control cable [984.62]; CAT6A cable [984.62] |
| CO-SU-FE-EP2-EL-880 | Fixing Earthing Work (Earth Pit,Grounding rod,Tinned Copper wire) | 2026-12-30 → 2026-12-28 (-2d) | 2027-01-02 → 2026-12-31 (-2d) | 6d → 7.62d |  | resources Earth Pit [5.38]; Grounding rod 20mmX3m [2.85]; Grounding rod with Pit 20mmX3m [1.27]; Earthing Bar [0.95]; 120mm2 Tinned copper wire [63.32]; Unskilled Labor [48 h]; Electrical Technician [96 h] → Unskilled Labor [48 h]; Electrical Technician [96 h]; Earth Pit [5.38]; Grounding rod 20mmX3m [2.85]; Grounding rod with Pit 20mmX3m [1.27]; Earthing Bar [0.95]; 120mm2 Tinned copper wire [63.32] |
| CO-SU-FE-EP2-EL-940 | Field Equipment Cabinet enclosed outdoor complete with precast concrete footing, | 2027-01-03 → 2026-12-31 (-3d) | 2027-01-06 → 2027-01-05 (-1d) | 6d → 7.62d |  | resources Field Equipment Cabinet enclosed outdoor complete with precast concrete footing, suitable for parame [6.02]; Unskilled Labor [32 h]; Electrical Technician [64 h] → Unskilled Labor [32 h]; Electrical Technician [64 h]; Field Equipment Cabinet enclosed outdoor complete with precast concrete footing, suitable for parame [6.02] |
| CO-SU-FE-EP2-EL-950 | Fence Lightining 400V, 3PH, 60Hz lighting control panel (LCP-02) | 2027-01-03 → 2026-12-31 (-3d) | 2027-01-06 → 2027-01-05 (-1d) | 6d → 7.62d |  | was named Fence Lightining 400V, 3PH, 60Hz lighting control panelï¿½ (LCP-02) |
| CO-SU-FE-EP2-EL-960 | Install of direct buried armored cable 4C-16mm2 ,10mm2 | 2027-01-07 → 2027-01-05 (-2d) | 2027-01-10 → 2027-01-09 (-1d) | 6d → 7.62d |  | resources 4C-16mm2 CU/XLPE/PVC direct buried armored cable [411.58]; 4C-10mm2 CU/XLPE/PVC direct buried armored cable [269.11]; Unskilled Labor [56 h]; Electrical Technician [112 h] → Unskilled Labor [56 h]; Electrical Technician [112 h]; 4C-16mm2 CU/XLPE/PVC direct buried armored cable [411.58]; 4C-10mm2 CU/XLPE/PVC direct buried armored cable [269.11] |
| CO-SU-FE-EP2-EL-970 | Install 16mm2,10mm2 CU/PVC wire | 2027-01-07 → 2027-01-05 (-2d) | 2027-01-10 → 2027-01-09 (-1d) | 6d → 7.62d |  | resources 16mm2 CU/PVC wire [411.58]; 10mm2 CU/PVC wire [269.11]; Unskilled Labor [56 h]; Electrical Technician [112 h] → Unskilled Labor [56 h]; Electrical Technician [112 h]; 16mm2 CU/PVC wire [411.58]; 10mm2 CU/PVC wire [269.11] |
| CO-SU-FE-EP2-EL-990 | FEC-CCTV ( 4C-16mm2 CU/XLPE/PVC direct buried armored cable,16mm2 CU/PVC wire | 2027-01-07 → 2027-01-05 (-2d) | 2027-01-13 → 2027-01-12 (-1d) | 6d → 7.62d |  | resources 4C-16mm2 CU/XLPE/PVC direct buried armored cable [1291.72]; 16mm2 CU/PVC wire [1291.72]; Unskilled Labor [56 h]; Electrical Technician [112 h] → Unskilled Labor [56 h]; Electrical Technician [112 h]; 4C-16mm2 CU/XLPE/PVC direct buried armored cable [1291.72]; 16mm2 CU/PVC wire [1291.72] |
| CO-SU-FE-EP2-EL-850 | Junction Box for lighting fixture | 2027-01-11 → 2027-01-09 (-2d) | 2027-01-13 → 2027-01-12 (-1d) | 6d → 7.62d |  | resources Junction Box for lighting fixture [43.06]; Unskilled Labor [24 h]; Electrical Technician [48 h] → Unskilled Labor [24 h]; Electrical Technician [48 h]; Junction Box for lighting fixture [43.06] |
| CO-SU-FE-EP2-EL-890 | IR Intrusion Detection System Quad Beams | 2027-03-30 → 2027-04-28 (+29d) | 2027-04-01 → 2027-05-02 (+31d) | -30d → -55.25d |  | resources IR Intrusion Detection System Quad Beams (Tx & Rx) (SL-350 QDM) [19]; Unskilled Labor [56 h]; Electrical Technician [112 h] → Unskilled Labor [56 h]; Electrical Technician [112 h]; IR Intrusion Detection System Quad Beams (Tx & Rx) (SL-350 QDM) [19] |
| CO-SU-FE-EP2-EL-980 | Install of 38W, 230V, 1PH, 60Hz fence, led linear uplight lighting, IP66 | 2027-03-30 → 2027-04-28 (+29d) | 2027-04-01 → 2027-05-02 (+31d) | -30d → -55.25d |  | resources 38W, 230V, 1PH, 60Hz fence, led linear uplight lighting, IP66 [43.06]; Unskilled Labor [56 h]; Electrical Technician [112 h] → Unskilled Labor [56 h]; Electrical Technician [112 h]; 38W, 230V, 1PH, 60Hz fence, led linear uplight lighting, IP66 [43.06] |
| CO-SU-FE-EP2-EL-870 | Install, fixings, testing and commissioning 80W LED | 2027-04-24 → 2027-05-02 (+8d) | 2027-04-26 → 2027-05-05 (+9d) | -48d → -55.25d |  | resources Supply, Install, fixings, testing and commissioning 80W LED Projector waterproof DJ effect light including c [0.95]; Unskilled Labor [48 h]; Electrical Technician [96 h] → Unskilled Labor [48 h]; Electrical Technician [96 h]; Supply, Install, fixings, testing and commissioning 80W LED Projector waterproof DJ effect light including c [0.95] |
| 4 | **Architictural work** |  | 2027-04-22 → 2027-05-01 (+9d) |  |  |  |
| CO-SU-FE-EP2-AR-400 | Install Brick Work For Northern Fence |  | 2026-12-08 → 2026-11-09 (-29d) | 17d → 42d | CO-SU-FE-EP2-CI-380 FF, CO-SU-FE-EP2-CI-380 SS, CO-SU-FE-EP1-EL-840 FF → CO-SU-FE-EP2-CI-380 SS, CO-SU-FE-EP2-CI-380 FF | resources Common brickwork. 300mm thick; vertical straight wall complete with accessories. [2778.15]; Insulated brickwork. with expanded polystyrene 200mm thick; vertical straight wall complete with accessories .; Common brickwork. 150mm thick; vertical straight wall complete with accessories.; Two Layers of Bituminous Coating [12401.2]; 20x20 Approved Polysulfide Joint Sealant [131.39]; Unskilled Labor [80 h]; Skilled Labor [160 h] → Unskilled Labor [80 h]; Skilled Labor [160 h]; Common brickwork. 300mm thick; vertical straight wall complete with accessories. [2778.15]; Insulated brickwork. with expanded polystyrene 200mm thick; vertical straight wall complete with accessories .; Common brickwork. 150mm thick; vertical straight wall complete with accessories.; Two Layers of Bituminous Coating [12401.2]; 20x20 Approved Polysulfide Joint Sealant [131.39] |
| CO-SU-FE-EP2-AR-410 | External plastering to walls and columns | 2027-01-14 → 2027-01-12 (-2d) | 2027-01-19 → 2027-01-18 (-1d) | 6d → 7.62d |  |  |
| CO-SU-FE-EP2-AR-420 | Install 50mm thick random cut stone cladding | 2027-01-20 → 2027-01-18 (-2d) | 2027-01-25 → 2027-01-24 (-1d) | 6d → 7.62d |  | resources Supply and install 33mm thick Lexan cladding blue complete with necessary framings [353]; Supply and install 50mm thick random cut stone cladding complete with 600m [1547.76]; Supply and install External plastering to walls and columns min. 15mm thick with cement mortar of specified grade including [5307.78]; Unskilled Labor [56 h]; Skilled Labor [112 h] → Unskilled Labor [56 h]; Skilled Labor [112 h]; Supply and install 33mm thick Lexan cladding blue complete with necessary framings [353]; Supply and install 50mm thick random cut stone cladding complete with 600m [1547.76]; Supply and install External plastering to walls and columns min. 15mm thick with cement mortar of specified grade including [5307.78] |
| CO-SU-FE-EP2-AR-430 | Install 2 coats of weatherproof paint at walls | 2027-01-26 → 2027-01-24 (-2d) | 2027-01-31 → 2027-01-30 (-1d) | 6d → 7.62d |  | resources Supply and install 2 coats of weatherproof paint at walls including one prime coat and [5307.78]; Unskilled Labor [48 h]; Skilled Labor [96 h] → Unskilled Labor [48 h]; Skilled Labor [96 h]; Supply and install 2 coats of weatherproof paint at walls including one prime coat and [5307.78] |
| CO-SU-FE-EP2-AR-440 | Install Stone coping 500mm,525mm | 2027-02-01 → 2027-04-24 (+82d) | 2027-02-04 → 2027-04-28 (+83d) | 6d → -55.25d | CO-SU-FE-EP2-AR-430 → CO-SU-FE-EP2-AR-430, MS-CF-SW | resources Guard room coping 350mm [18.05]; Guard room coping 450mm [8.55]; Stone coping 500mm [808.91]; Stone coping 525mm [387.52]; Unskilled Labor [32 h]; Skilled Labor [64 h] → Unskilled Labor [32 h]; Skilled Labor [64 h]; Guard room coping 350mm [18.05]; Guard room coping 450mm [8.55]; Stone coping 500mm [808.91]; Stone coping 525mm [387.52] |
| CO-SU-FE-EP2-AR-450 | Install MODON Signage | 2027-04-21 → 2027-04-28 (+7d) | 2027-04-22 → 2027-05-01 (+9d) | -45d → -51.25d |  | resources Supply and install MODON Signage with Logo Type 1 [7.6]; Supply and install MODON Signage Type 2 [7.6]; Supply and install "Triangle Style" signage [17.41]; Unskilled Labor [48 h]; Skilled Labor [96 h] → Unskilled Labor [48 h]; Skilled Labor [96 h]; Supply and install MODON Signage with Logo Type 1 [7.6]; Supply and install MODON Signage Type 2 [7.6]; Supply and install "Triangle Style" signage [17.41] |
| TC | **Testing and Comissioning** | 2026-10-13 → 2026-10-20 (+7d) | 2027-06-02 → 2027-06-01 (-1d) |  |  |  |
| INF | **Infrastructure Networks** | 2027-04-18 → 2027-04-12 (-6d) | 2027-06-02 → 2027-06-01 (-1d) |  |  |  |
| PW1 | **Irrigation Network** | 2027-04-26 → 2027-05-08 (+12d) | 2027-05-02 → 2027-05-12 (+10d) |  |  |  |
| T/C-IR | Testing and Commissioning of Irrigation Network | 2027-04-26 → 2027-05-08 (+12d) | 2027-05-02 → 2027-05-12 (+10d) | -64.5d → -75d | CO-IR-TF-160, CO-TSE-TF-170, CO-LS-PL-180 → T/C-PW SS, CO-IR-TF-160, CO-TSE-TF-170, CO-LS-PL-180, T/C-SW | resources pipe line O.D 32 mm PN 10, in depth 0 to 1.5 m; pipe line O.D 40 mm PN 10, in depth 0 to 1.5 m; pipe line O.D 50 mm PN 10, in depth 0 to 1.5 m; Gate valve 50 mm PN16; Direct Burried Gate valve 40 mm PN16; Pressure–compensating bubblers 110 Lit/Hr; Flushing Bronze gate valve dia 1.5" inside PVC box; Air release valve 1.5" inside PVC box; Extra flexible pressure compensating on surface inline dripline`s, O.D. is 16.1 mm; Electrical Solenoid Valve ( 1.5") inside PVC box; Electrical Solenoid Valve ( 2") inside PVC box; Quick coupling valve 1" inside a round valve box 10" size with a manual gate valve, hose swivel and key with all accessories; Advanced Irrigation controller subject to client approval, can connect with Centarl Control system; Decoder cables 12 AWG between valves and controllers, The cables shall be pulled through 32Ø UPVC conduit; Preparing the irrigation program for the entire system and providing technical services for monitoring and controlling the central irrigation systems → Unskilled Labor [560.11 h]; Electrical Technician [216.03 h]; Plumber [50.61 h]; Carpenter [61.54 h]; Mason [48.96 h]; Steel Fixer [62.55 h]; Skilled Labor [168.82 h]; pipe line O.D 32 mm PN 10, in depth 0 to 1.5 m; pipe line O.D 40 mm PN 10, in depth 0 to 1.5 m; pipe line O.D 50 mm PN 10, in depth 0 to 1.5 m; Gate valve 50 mm PN16; Direct Burried Gate valve 40 mm PN16; Pressure compensating bubblers 110 Lit/Hr; Flushing Bronze gate valve dia 1.5" inside PVC box; Air release valve 1.5" inside PVC box; Extra flexible pressure compensating on surface inline dripline`s, O.D. is 16.1 mm; Electrical Solenoid Valve ( 1.5") inside PVC box; Electrical Solenoid Valve ( 2") inside PVC box; Quick coupling valve 1" inside a round valve box 10" size with a manual gate valve, hose swivel and key with all accessories; Advanced Irrigation controller subject to client approval, can connect with Centarl Control system; Decoder cables 12 AWG between valves and controllers, The cables shall be pulled through 32 UPVC conduit; Preparing the irrigation program for the entire system and providing technical services for monitoring and controlling the central irrigation systems |
| PW11 | **TSE Network** |  | 2027-05-13 → 2027-05-12 (-1d) |  |  |  |
| T/C-TSE-10 | Testing and Commissioning of TSE Network |  | 2027-05-13 → 2027-05-12 (-1d) | -67.5d → -67d | CO-TSE-TF-170, CO-UB-IRT-250 → CO-TSE-TF-170, T/C-SD, CO-UB-IRT-250, CO-UB-PWT-210 | resources Depth Between 0m to 1.50m; Depth Between 1.50m to 2.50m; Depth > 2.50m; Gate valves dia 50 mm; Gate valves dia 100 mm; Gate valves dia 150 mm; Gate valves dia 200 mm; Air valves with dia 50 mm; Washout valve dia 100 mm; Wash out chamber (2500x 2500mm); Air valve chamber (1000x 1000 mm); Flow meter chamber (1500x 3000 mm); Flow meter dia 150 mm; Glass Fused Bolted (GLS) 1500 m3 Tank with associated accessories & manufacturer recommendation for the foundation → Unskilled Labor [1680.32 h]; Electrical Technician [648.08 h]; Plumber [151.83 h]; Carpenter [184.62 h]; Mason [146.87 h]; Steel Fixer [187.65 h]; Skilled Labor [506.41 h]; Depth Between 0m to 1.50m; Depth Between 1.50m to 2.50m; Depth > 2.50m; Gate valves dia 50 mm; Gate valves dia 100 mm; Gate valves dia 150 mm; Gate valves dia 200 mm; Air valves with dia 50 mm; Washout valve dia 100 mm; Wash out chamber (2500x 2500mm); Air valve chamber (1000x 1000 mm); Flow meter chamber (1500x 3000 mm); Flow meter dia 150 mm; Glass Fused Bolted (GLS) 1500 m3 Tank with associated accessories & manufacturer recommendation for the foundation |
| PW | **Potable Water Network** |  | 2027-05-20 → 2027-05-13 (-7d) |  |  |  |
| T/C-PW | Testing and Commissioning of Potable Water Network |  | 2027-05-20 → 2027-05-13 (-7d) | -75.5d → -75d |  | resources Depth Between 0m to 1.50m; Depth Between 1.50m to 2.50m; Depth > 2.50m; Gate valves Dia 50 mm; Gate valves Dia 100 mm; Gate valves Dia 150 mm; Gate valves Dia 250 mm; Air valves with Dia 50 mm; Washout valve Dia 100 mm; 3-outlet fire hydrant (2 x 2.5 inch and 1 x 4.5 inch) in the form of a separate dry vacuum cylinder, complete according to drawings.; Wash out chamber (2500x 2500mm); Air valve chamber (1000x 1000 mm); Flow meter chamber (1500x 2500 mm); Flow meter dia 100 mm; Glass Fused Bolted (GLS) 1500 m3 Tank with associated accessories & manufacturer recommendation for the foundation → Unskilled Labor [672.13 h]; Electrical Technician [259.23 h]; Plumber [60.73 h]; Carpenter [73.85 h]; Mason [58.75 h]; Steel Fixer [75.06 h]; Skilled Labor [202.58 h]; Depth Between 0m to 1.50m; Depth Between 1.50m to 2.50m; Depth > 2.50m; Gate valves Dia 50 mm; Gate valves Dia 100 mm; Gate valves Dia 150 mm; Gate valves Dia 250 mm; Air valves with Dia 50 mm; Washout valve Dia 100 mm; 3-outlet fire hydrant (2 x 2.5 inch and 1 x 4.5 inch) in the form of a separate dry vacuum cylinder, complete according to drawings.; Wash out chamber (2500x 2500mm); Air valve chamber (1000x 1000 mm); Flow meter chamber (1500x 2500 mm); Flow meter dia 100 mm; Glass Fused Bolted (GLS) 1500 m3 Tank with associated accessories & manufacturer recommendation for the foundation |
| SW | **Sewage Network** | 2027-04-21 → 2027-04-24 (+3d) | 2027-04-25 → 2027-04-27 (+2d) |  |  |  |
| T/C-SW | Testing and Commissioning of Sewage Network | 2027-04-21 → 2027-04-24 (+3d) | 2027-04-25 → 2027-04-27 (+2d) | -60.5d → -72.75d | CO-SW-TF-100, CO-SW-TF-210, MS-CF-SW, CO-SW-TF-130, CO-SW-TF-110 → T/C-SD, CO-SW-TF-100, CO-SW-TF-210 SS+2d, MS-CF-SW, CO-SW-TF-130, CO-SW-TF-110, CO-SW-TF-210 FF+1d | resources Depth Between 0m to 1.50m; Depth Between 1.50m to 2.50m; Depth > 2.50m; Depth Between 2.50m to 3.50m; Depth > 3.50m; HDPE Force Main (PE 100, SDR 11, PN 16 bar) DN 160 mm diameter, in trenches depth: 0- 1.5m; HDPE Force Main (PE 100, SDR 11, PN 16 bar) DN 160 mm diameter, in trenches depth: 1.51- 2.5m; Depth: 0 - 1.5m; Depth: 1.51 - 2.5m; Depth: 2.51 - 3.5m → Unskilled Labor [336.06 h]; Electrical Technician [129.62 h]; Plumber [30.37 h]; Carpenter [36.92 h]; Mason [29.37 h]; Steel Fixer [37.53 h]; Skilled Labor [101.29 h]; Depth Between 0m to 1.50m; Depth Between 1.50m to 2.50m; Depth > 2.50m; Depth Between 2.50m to 3.50m; Depth > 3.50m; HDPE Force Main (PE 100, SDR 11, PN 16 bar) DN 160 mm diameter, in trenches depth: 0- 1.5m; HDPE Force Main (PE 100, SDR 11, PN 16 bar) DN 160 mm diameter, in trenches depth: 1.51- 2.5m; Depth: 0 - 1.5m; Depth: 1.51 - 2.5m; Depth: 2.51 - 3.5m |
| SD | **Storm Drainage Network** | 2027-04-18 → 2027-04-12 (-6d) | 2027-04-27 → 2027-04-21 (-6d) |  |  |  |
| T/C-SD | Testing and Commissioning of Storm Drainage Network | 2027-04-18 → 2027-04-12 (-6d) | 2027-04-27 → 2027-04-21 (-6d) | -56d → -71.5d |  | resources Depth Between 0m to 1.50m; Depth Between 1.50m to 2.50m; Depth > 2.50m; Depth Between 2.50m to 3.50m; Depth > 3.50m; Depth Between 3.50m to 4.50m; Depth > 4.50m; MH depth 1.5 - 2.5m; MH depth 2.5 - 3.5m; MH depth > 3.50m; MH depth 2.5 -3.5m; Single Catch Basin 1000mm x 1000mm; Double Catch Basin 1200mm x 2300mm → Unskilled Labor [1008.19 h]; Electrical Technician [388.85 h]; Plumber [91.1 h]; Carpenter [110.77 h]; Mason [88.12 h]; Steel Fixer [112.59 h]; Skilled Labor [303.87 h]; Depth Between 0m to 1.50m; Depth Between 1.50m to 2.50m; Depth > 2.50m; Depth Between 2.50m to 3.50m; Depth > 3.50m; Depth Between 3.50m to 4.50m; Depth > 4.50m; MH depth 1.5 - 2.5m; MH depth 2.5 - 3.5m; MH depth > 3.50m; MH depth 2.5 -3.5m; Single Catch Basin 1000mm x 1000mm; Double Catch Basin 1200mm x 2300mm |
| SL | **Street Lighting Network** | 2027-05-08 → 2027-05-13 (+5d) | 2027-05-13 → 2027-05-25 (+12d) |  |  |  |
| T/C-SL | Testing and Commissioning of Street Lighting Network | 2027-05-08 → 2027-05-13 (+5d) | 2027-05-13 → 2027-05-25 (+12d) | -70d → -75d | CO-SL-TF-220, CO-SL-TF-230, CO-SL-TF-200, CO-SL-TF-380, CO-SL-LP-330, MS-CF-SL → T/C-IR, CO-SL-TF-220, CO-SL-TF-230, CO-SL-TF-200, CO-SL-TF-380, CO-SL-LP-330, MS-CF-SL, T/C-DPO, T/C-SW | resources Road crossing ducts, 2 ways (2 x 150mm HDPE); Road crossing ducts, 2 ways (2 x 110mm UPVC); Road crossing ducts, 3 ways (3 x 110mm UPVC); 4C-300mm2 CU/XLPE / PVC ARMORED CABLE; 4C-240mm2 CU/XLPE / PVC ARMORED CABLE; 4C-185mm2 CU/XLPE / PVC ARMORED CABLE; 4C-50mm2 CU/XLPE / PVC ARMORED CABLE; 4C-16mm2 CU/XLPE / PVC ARMORED CABLE; 4C-16MM2 CU/XLPE / PVC CABLE; 1Cx150sq.mm2,Cu, PVC wire; 1Cx120sq.mm2,Cu, PVC wire; 1Cx95sq.mm,Cu, PVC wire; 1Cx70sq.mm2,Cu, PVC wire; 1Cx25sq.mm2,Cu, PVC wire; 1Cx16sq.mm2,Cu, PVC wire; 1Cx10sq.mm2,Cu, PVC wire; Supply and installation of KWH meter mounting frame including concrete block for installation of KWH meter; Street Lighting panels LCP (01); Lighting poles with 1 arm, height of (12) meters, including the power distribution box, cables, and RCC foundation.; Lighting poles with 2 arms, height of (12) meters, including the power distribution box, cables, and RCC foundation.; Street Lighting( LED) Luminaire of Output ? 20,965 lumen complete with control gear and lamp, (129.1) WATT.; Including earthing of lighting poles, masts, feeder pillars, unit substations and LV feeders. → Unskilled Labor [672.13 h]; Electrical Technician [259.23 h]; Plumber [60.73 h]; Carpenter [73.85 h]; Mason [58.75 h]; Steel Fixer [75.06 h]; Skilled Labor [202.58 h]; Road crossing ducts, 2 ways (2 x 150mm HDPE); Road crossing ducts, 2 ways (2 x 110mm UPVC); Road crossing ducts, 3 ways (3 x 110mm UPVC); 4C-300mm2 CU/XLPE / PVC ARMORED CABLE; 4C-240mm2 CU/XLPE / PVC ARMORED CABLE; 4C-185mm2 CU/XLPE / PVC ARMORED CABLE; 4C-50mm2 CU/XLPE / PVC ARMORED CABLE; 4C-16mm2 CU/XLPE / PVC ARMORED CABLE; 4C-16MM2 CU/XLPE / PVC CABLE; 1Cx150sq.mm2,Cu, PVC wire; 1Cx120sq.mm2,Cu, PVC wire; 1Cx95sq.mm,Cu, PVC wire; 1Cx70sq.mm2,Cu, PVC wire; 1Cx25sq.mm2,Cu, PVC wire; 1Cx16sq.mm2,Cu, PVC wire; 1Cx10sq.mm2,Cu, PVC wire; Supply and installation of KWH meter mounting frame including concrete block for installation of KWH meter; Street Lighting panels LCP (01); Lighting poles with 1 arm, height of (12) meters, including the power distribution box, cables, and RCC foundation.; Lighting poles with 2 arms, height of (12) meters, including the power distribution box, cables, and RCC foundation.; Street Lighting( LED) Luminaire of Output ? 20,965 lumen complete with control gear and lamp, (129.1) WATT.; Including earthing of lighting poles, masts, feeder pillars, unit substations and LV feeders. |
| TE | **Telecom Network** | 2027-05-01 → 2027-04-29 (-2d) |  |  |  |  |
| T/C-TE | Testing and Commissioning of Telecom Network | 2027-05-01 → 2027-04-29 (-2d) |  | -66d → -76.5d | CO-TE-CTV-TF-110, CO-TE-CTV-TF-120, CO-TE-CTV-TF-130, CO-TE-CTV-TF-140, MS-CF-TE, CO-SL-ES-230, CO-TE-DW-130 → CO-TE-CTV-TF-110, CO-TE-CTV-TF-120, CO-TE-CTV-TF-130, CO-TE-CTV-TF-140 SS+2d, MS-CF-TE, CO-SL-ES-230, CO-TE-DW-130, T/C-SD, T/C-SW SS+1.5d, T/C-SW FF+1d, CO-TE-CTV-TF-140 FF+1d | resources 2-ways ducts, 50mm diameter; 6-ways ducts, 110mm diameter; 9-ways ducts, 6 x 160mm & 2 x 100mm; Manhole Type 2 (1600 x 1600 x 2000); Manhole Type 3 (1200 x 1200 x 2000); 6 PVC ducts 150x200 mm (60mm diameter); 6 PVC ducts 600x800 mm (120mm diameter); 6 PVC ducts 800x800 mm (170mm diameter); NVR Server with RAID (5, 6 or 10) to record all cameras storage 80TB with all hardware / software / licenses etc.; VMS Server with RAID (5, 6 or 10) complete Hardware / Software with one Color Laser Printer and all associated; Licenses for Cameras, Workstations and Keyboards; Work Station (MMI with two monitors each, for Monitoring for CCTV & ACS); Keyboard with joystick for CCTV with all accessories as per specification; Pole mounted IP( PoE) Fixed camera, 5MP,IP 66, IR illumination, 3-8mm varifocal, auto iris lens type; Wall mounted IP( PoE) Fixed camera, 5MP,IP 66, IR illumination, 3-8mm varifocal, auto iris lens type; 5MP Dome camera ceiling Mounted IP (PoE) indoor; 5MP PTZ Multi Sensor Camera IP(PoE) 360 Degree View Outdoor with accessories (IP 66); 8 Port Industrial PoE Switch 10/100BaseT (0 deg to +70 deg. Celsius); Filed Equipment cabinet (FEC), with fan and ventilation, NEMEX 4X ,door, minimum size (600x600x400mm); 6 PVC ducts 200x150 mm (60mm diameter); IP Phone Communication server (hot standby) 50 Port equipped, Gateway, Gatekeeper, H.323, SIP, redundant Power etc.; IP Phone Voice gateway; Voice IP Phone; NMS Server for IP phone and NETWORK Elements; NMS Workstation; Firm Ware, software & licenses; Data Cable; Power Cable; Layer 3, 24 Port non-PoE switch10/1000BaseT/LX (-40 deg to +70 deg. Celsius), stack module and associated; Layer 2, 24 Port non-PoE switch10/1000BaseT (-40 deg to +70 deg. Celsiu; Network Management System Server; Network Management System workstation; 42U rack dimension (W x H x L) 800 x 2000 x 1000 mm; 12U rack dimension (W x H x L) 600 x 625 x 600 mm; 06C Optical Fiber SM; 48C Optical Fiber SM; 48 Core Splice Closure; Optical fiber patch cord 5m; Data Cable (STP CAT 6A); 3C Power Cable armored 1.5mm2; 3C Power Cable armored 2.5 mm2; UTP CAT6A Patch Cord 1m/3m/5m; Access Control Unit; Access Card Reader; Magnetic Lock; Break Glass; Exit Push button; Door Sensor; Biometrics Reader; Smart Card Printer; Card Issue Work Station; Photographic Camera with stand; Interface modules with CCTV, Fire and other systems → Unskilled Labor [336.06 h]; Electrical Technician [129.62 h]; Plumber [30.37 h]; Carpenter [36.92 h]; Mason [29.37 h]; Steel Fixer [37.53 h]; Skilled Labor [101.29 h]; 2-ways ducts, 50mm diameter; 6-ways ducts, 110mm diameter; 9-ways ducts, 6 x 160mm & 2 x 100mm; Manhole Type 2 (1600 x 1600 x 2000); Manhole Type 3 (1200 x 1200 x 2000); 6 PVC ducts 150x200 mm (60mm diameter); 6 PVC ducts 600x800 mm (120mm diameter); 6 PVC ducts 800x800 mm (170mm diameter); NVR Server with RAID (5, 6 or 10) to record all cameras storage 80TB with all hardware / software / licenses etc.; VMS Server with RAID (5, 6 or 10) complete Hardware / Software with one Color Laser Printer and all associated; Licenses for Cameras, Workstations and Keyboards; Work Station (MMI with two monitors each, for Monitoring for CCTV & ACS); Keyboard with joystick for CCTV with all accessories as per specification; Pole mounted IP( PoE) Fixed camera, 5MP,IP 66, IR illumination, 3-8mm varifocal, auto iris lens type; Wall mounted IP( PoE) Fixed camera, 5MP,IP 66, IR illumination, 3-8mm varifocal, auto iris lens type; 5MP Dome camera ceiling Mounted IP (PoE) indoor; 5MP PTZ Multi Sensor Camera IP(PoE) 360 Degree View Outdoor with accessories (IP 66); 8 Port Industrial PoE Switch 10/100BaseT (0 deg to +70 deg. Celsius); Filed Equipment cabinet (FEC), with fan and ventilation, NEMEX 4X ,door, minimum size (600x600x400mm); 6 PVC ducts 200x150 mm (60mm diameter); IP Phone Communication server (hot standby) 50 Port equipped, Gateway, Gatekeeper, H.323, SIP, redundant Power etc.; IP Phone Voice gateway; Voice IP Phone; NMS Server for IP phone and NETWORK Elements; NMS Workstation; Firm Ware, software & licenses; Data Cable; Power Cable; Layer 3, 24 Port non-PoE switch10/1000BaseT/LX (-40 deg to +70 deg. Celsius), stack module and associated; Layer 2, 24 Port non-PoE switch10/1000BaseT (-40 deg to +70 deg. Celsiu; Network Management System Server; Network Management System workstation; 42U rack dimension (W x H x L) 800 x 2000 x 1000 mm; 12U rack dimension (W x H x L) 600 x 625 x 600 mm; 06C Optical Fiber SM; 48C Optical Fiber SM; 48 Core Splice Closure; Optical fiber patch cord 5m; Data Cable (STP CAT 6A); 3C Power Cable armored 1.5mm2; 3C Power Cable armored 2.5 mm2; UTP CAT6A Patch Cord 1m/3m/5m; Access Control Unit; Access Card Reader; Magnetic Lock; Break Glass; Exit Push button; Door Sensor; Biometrics Reader; Smart Card Printer; Card Issue Work Station; Photographic Camera with stand; Interface modules with CCTV, Fire and other systems |
| MV | **Medium Voltage Network** | 2027-04-21 → 2027-04-29 (+8d) | 2027-05-06 → 2027-05-22 (+16d) |  |  |  |
| T/C-MV | Testing and Commissioning of Medium Voltage Network | 2027-04-21 → 2027-04-29 (+8d) | 2027-05-06 → 2027-05-22 (+16d) | -69d → -76.5d | CO-MV-TF-220, MS-CF-MV → T/C-TE SS, CO-MV-TF-220, MS-CF-MV | resources Excavation for Trench size 40cm wide and 80cm deep (for 1 cable); Excavation for Trench Size 60cm wide and 80cm deep (for 2 cables); Excavation for Trench Size 90cm wide and 80cm deep (for 3 cables); Excavation for Trench Size 180cm wide and 80cm deep (for 6 cables); Excavation for Trench Size 210 cm wide and 80cm deep (for 7 cables); Excavation for Trench Size 240cm wide and 80cm deep (for 8 cables); Duct bank for (33) cables; Duct bank for (21) cables; Duct bank for (15) cables; HV Cable Road Crossing → Unskilled Labor [1568.3 h]; Electrical Technician [604.88 h]; Plumber [141.7 h]; Carpenter [172.31 h]; Mason [137.07 h]; Steel Fixer [175.14 h]; Skilled Labor [472.69 h]; Excavation for Trench size 40cm wide and 80cm deep (for 1 cable); Excavation for Trench Size 60cm wide and 80cm deep (for 2 cables); Excavation for Trench Size 90cm wide and 80cm deep (for 3 cables); Excavation for Trench Size 180cm wide and 80cm deep (for 6 cables); Excavation for Trench Size 210 cm wide and 80cm deep (for 7 cables); Excavation for Trench Size 240cm wide and 80cm deep (for 8 cables); Duct bank for (33) cables; Duct bank for (21) cables; Duct bank for (15) cables; HV Cable Road Crossing |
| RD | **Road Works** |  | 2027-06-02 → 2027-06-01 (-1d) |  |  |  |
| T/C-RD | Testing and Commissioning of Road Works |  | 2027-06-02 → 2027-06-01 (-1d) | -77.5d → -77d |  | resources Excavations (including Roads , Plots and Pond); Embankments to the Site and Roads (including Roads , Plots and Pond); Subgrade; Aggregate base course; Bituminous base course (Grading I - Class A), including Prime Coat (MC1); Bituminous concrete wearing course, (Grading I - Class A), including tack coat (RC2); Precast Concrete Curbstone 150X300X900 Type (K1-A); Precast Concrete Curbstone 100X200X500 Type (K4); Precast Concrete Curbstone 150X300X500 Type (K1-B); Precast Concrete Curbstone Type (K1-C); Flush Kerb Type (D); 60mm thick; 80mm thick; Retroreflective Thermoplastic White Traffic lines; Retroreflective Thermoplastic Yellow, Traffic lines; Traffic signs, ground mounted, Sheet Aluminum, (breakaway) Single post IPE, with all accessories; Precast Concrete Blister Warning Tactile Paver Brown Finish 300*300*60mm → Unskilled Labor [448.09 h]; Electrical Technician [172.82 h]; Plumber [40.49 h]; Carpenter [49.23 h]; Mason [39.16 h]; Steel Fixer [50.04 h]; Skilled Labor [135.05 h]; Excavations (including Roads , Plots and Pond); Embankments to the Site and Roads (including Roads , Plots and Pond); Subgrade; Aggregate base course; Bituminous base course (Grading I - Class A), including Prime Coat (MC1); Bituminous concrete wearing course, (Grading I - Class A), including tack coat (RC2); Precast Concrete Curbstone 150X300X900 Type (K1-A); Precast Concrete Curbstone 100X200X500 Type (K4); Precast Concrete Curbstone 150X300X500 Type (K1-B); Precast Concrete Curbstone Type (K1-C); Flush Kerb Type (D); 60mm thick; 80mm thick; Retroreflective Thermoplastic White Traffic lines; Retroreflective Thermoplastic Yellow, Traffic lines; Traffic signs, ground mounted, Sheet Aluminum, (breakaway) Single post IPE, with all accessories; Precast Concrete Blister Warning Tactile Paver Brown Finish 300*300*60mm |
| 1 | **Utility Buildings** | 2026-10-13 → 2026-10-20 (+7d) | 2027-05-29 → 2027-06-01 (+3d) |  |  |  |
| T/C-DPO | Testing and Commissioning of Storm Drainage Ponds | 2026-10-13 → 2026-10-20 (+7d) | 2026-10-13 → 2026-10-20 (+7d) | 97d → 91d |  |  |
| T/C-SPS | Testing and Commissioning of Sewage Pump Stations& soft scape and planting work | 2027-05-06 → 2027-05-13 (+7d) | 2027-05-06 → 2027-05-13 (+7d) | -57d → -63d | CO-UB-PS-390, CO-UB-PS-380, CO-UB-PS-360, CO-UB-PS-350, CO-UB-PS-340, CO-UB-PS-370, CO-UB-PS-330, CO-UB-PS-310, CO-UB-PS-290, CO-UB-PS-300, CO-UB-PS-320, CO-UB-PS-280, CO-UB-PS-270, CO-UB-PS-260, CO-UB-PS-250, CO-UB-PS-240 → T/C-TSE-10, CO-UB-PS-390, CO-UB-PS-380, CO-UB-PS-360, CO-UB-PS-350, CO-UB-PS-340, CO-UB-PS-370, CO-UB-PS-330, CO-UB-PS-310, CO-UB-PS-290, CO-UB-PS-300, CO-UB-PS-320, CO-UB-PS-280, CO-UB-PS-270, CO-UB-PS-260, CO-UB-PS-250, CO-UB-PS-240 |  |
| T/C-CTV | Testing and Commissioning of Guard Room and Fence | 2027-05-29 → 2027-06-01 (+3d) | 2027-05-29 → 2027-06-01 (+3d) | -70d → -73.5d | CO-UB-CR-360, A1100 → CO-UB-CR-360, A1100 SS+2.5d, A1100 FF+1d | resources 100 mm thickness lean concrete under the foundation; Foundation; Slab on Grade; Walls; Beams; Columns; Slabs; Lightweight Concrete Roof insulation as per Architect's specification; Common brickwork. 300mm thick; vertical straight wall complete with accessories.; Insulated brickwork. with expanded polystyrene 200mm thick; vertical straight wall complete with accessories .; Common brickwork. 150mm thick; vertical straight wall complete with accessories.; Two Layers of Bituminous Coating; 20x20 Approved Polysulfide Joint Sealant; 2 perpendicular layers of cold bitumen coats; 2 layer of 4mm HDPE membrane, 2 perpendicular layers cold bitumen coats; 1 layer EPOXY Paint 300 micron; Membrane fully bonded to prime deck and upstand; Geotextile Filter membrane uv resistance; 85mm thick thermal insulation; 1.5mm thick epdm waterproofing membrane; CW01 - 4500 mm width x 3700 mm height; CW02 - 4500 mm width x 3700 mm height; CW03 - 4500 mm width x 3700 mm height; CW04 - 4500 mm width x 3700 mm height; CW05 - 7500 mm width x 4250 mm height; CW06 - 7500 mm width x 4250 mm height; W01 - 1000 mm width x 2000 mm height; W02 - 2000 mm width x 2000 mm height; W03 - 2000 mm width x 1000 mm height; D2 - 900 mm x 2200 mm height temper door; D3 - 950 mm x 2000 mm height temper door; Supply and install 33mm thick Lexan cladding blue complete with necessary framings; Supply and install 50mm thick random cut stone cladding complete with 600m; Supply and install External plastering to walls and columns min. 15mm thick with cement mortar of specified grade including; Supply and install 2 coats of weatherproof paint at walls including one prime coat and; Supply and install 300*300mm terrazzo tiles with 150mm high skirting at perimeter with approv; Supply and install 300*300mm glazed ceramic wall tiles on cement mortar and including rough; Supply and install internal plastering and 2 coats of acrylic paint at walls includin; Supply and install 300*300mm glazed ceramic wall tiles on cement mortar and including rough and smooth p; Supply and install 600*600mm porcelain tiles with approved quality on 30 mm mortar inclu; Supply and install 12.5mm thk, gypsum board suspended ceiling including s; Guard room coping 350mm; Guard room coping 450mm; Stone coping 500mm; Stone coping 525mm; Supply and install MODON Signage with Logo Type 1; Supply and install MODON Signage Type 2; Supply and install "Triangle Style" signage; Office Chairs; Office Tables; Guard Stand; Magnetic Control Access barrier, Automatic Vehicular Barriers to be installed on ground with magnetic access; Supply and install Hand Wash Basin with Water Tap, angle valve, P-trap connected to 50mm diameter s; Supply and install paper towel dispenser, surface mounted, satin finish stainless steel as per approv; Supply and install mirror, size 460*910mm as per approved sample including frames, backing and all accessories to complete.; Supply and install towel ring , surface mounted, satin finish stainless steel as per approved sample including accessories.; Kitchen sink with single bowl with hot/cold water mixer.; Supply and install Base mounted flush tank water Western water closet system with lid connected to 110mm soil pipe; Gate Valves; Slow Closing Valve; 1 meter length 10mm diameter Flexible Hose with insulated handle complete with fork support, index push, vacuum breaker; 50mm diameter; 75mm diameter; 80mm diameter; 100mm diameter; 110mm diameter; 13mm diameter; 15mm diameter; 20mm diameter; 25mm diameter; 32mm diameter; 40mm diameter; Isolation Valve Size 20; Isolation Valve Size 25; Isolation Valve Size 32; Isolation Valve Size 40; Isolation Valve Size 50; 20 mm diameter spray head for cold water supply; Supply and install Electric Water Heater set with connection; Water meter complete with accessories.; Roof drain; Vent on a roof to exhaust air; Floor drain 100x80mm; Gully trap 300x300 mm; inspection chamber, size 800x900x1000; Mini split actual capacity 2 Ton; Ducted split actual capacity 4 Ton; Supply, fabricate, install and testing factory fabricated metal ducts with flanges complete with supports, vanes,; Supplying, installation testing & commissioning of external insulation on ducts; Supply, fix, testing and commissioning of exhaust air/fresh air louvers of powder coated extruded aluminium construction.; Providing, fixing, testing and commissioning of powder coated extruded aluminum sections grills and diffusers with dampers.; Air Grills 150mm x150mm; Air Diffuser 600mm x 600mm; Supply, Installation & Testing of 2 hours Fire rated system for closing the openings between roo; 4.5 KG CO2 Type Fire Extinguishers; 6 KG ABC Type Fire Extinguishers; Floor cleanout, size 75 mm diameter; Floor cleanout, size 110 mm diameter; GRP water tanks capacity of each 1000 liter complete with all fittings, all valves and concrete pad; Junction Box for lighting fixture; Trench excavation to receive 2 nos 50mm diameter PVC Conduit, sand bedding and embedded with sa; Supply, Install, fixings, testing and commissioning 80W LED Projector waterproof DJ effect light including c; Earth Pit; Grounding rod 20mmX3m; Grounding rod with Pit 20mmX3m; Earthing Bar; 120mm2 Tinned copper wire; Guard Room 1; Guard Room 2; Guard Room 3; 30A, 2P AC Disconnect Switch; 20A Duplex Receptacle Floor Mounted; Twin Socket outlet; Twin Socket outlet, Weather Proof; Single gang Lighting switch; 2way Single gang Lighting switch; 36W LED linear Pendant lighting; 36W LED Emergency linear Pendant lighting; 13W recess mounted LED down light fitting; 13W recess emergency mounted LED down light fitting with 1.5 Hr Battery; 10.4W LED Exit light with 1.5 Hr Battery; 4mm2 Cu./FRLSZH Cable; 6mm2 Cu./FRLSZH Cable; IR Intrusion Detection System Quad Beams (Tx & Rx) (SL-350 QDM); Control cable; CAT6A cable; Field Equipment Cabinet enclosed outdoor complete with precast concrete footing, suitable for parame; Supply and install 800mm x 800mm x 800mm height concrete handhole with bituminous paint all aroun; 800mm depth minimum Trench excavation to receive 3 nos 50mm diameter PVC Conduit with spacer, sand bedding an; Hot dipped galvanized cable conduits for CAT6A cable and Control Cables embedded to wall; 8 Port Industrial PoE Switch 10/100BaseT (0 deg to +70 deg. Celsius); 06C Optical Fiber SM; 48C Optical Fiber SM; 48 Core Splice Closure; Boom Barrier at Security Guard Room; Pedestrian turnstile at Security Guard Room; Access Control Unit; Access Card Reader; Magnetic Lock; Break Glass; Exit Push button; Door Sensor; Biometrics Reader; Pole/Bollard mounted IP( PoE), Automatic Number Plate Recognition (ANPR, camera, 5MP,IP 66, IR illumin; 12U rack dimension (W x H x L) 600 x 625 x 600 mm; 400V, 3PH, 60Hz lighting control panel (LCP-02); 38W, 230V, 1PH, 60Hz fence, led linear uplight lighting, IP66; 4C-16mm2 CU/XLPE/PVC direct buried armored cable; 4C-10mm2 CU/XLPE/PVC direct buried armored cable; 16mm2 CU/PVC wire; 10mm2 CU/PVC wire; Fire Alarm Control panel with fire alarm zoning with Mimic panel with fire alarm zoning; Main Fire Alarm Control panel with fire alarm zoning with Mimic panel with fire alarm zoning; Supply and installation of the addressable manual call point with operation safety glass breaking and pushbutton; Supply and installation of the photoelectric heat & smoke detector with base; Sounder With Beacon; Addressable Control module for Sounders; Addressable Control module for HVAC System; Addressable Monitor module for HVAC System; 2C x 1.5 Sqm FR Rated Armored - Cable For Loop Wiring; DACT (Auto - Dailer) for 24x7 Civil Defence; Transmission Communication cable - Fiber Optics 12Core; Transmission Communication cable - Ethernet Cable; Supply, install to site and installation of power supply system for fire alarm control panel; Supply, install to site and installation of power cable; Fire Fighter’s Telephone Centre; Fireman’s Telephone Jack; Voice Command Center → 100 mm thickness lean concrete under the foundation; Foundation; Slab on Grade; Walls; Beams; Columns; Slabs; Lightweight Concrete Roof insulation as per Architect's specification; Common brickwork. 300mm thick; vertical straight wall complete with accessories.; Insulated brickwork. with expanded polystyrene 200mm thick; vertical straight wall complete with accessories .; Common brickwork. 150mm thick; vertical straight wall complete with accessories.; Two Layers of Bituminous Coating; 20x20 Approved Polysulfide Joint Sealant; 2 perpendicular layers of cold bitumen coats; 2 layer of 4mm HDPE membrane, 2 perpendicular layers cold bitumen coats; 1 layer EPOXY Paint 300 micron; Membrane fully bonded to prime deck and upstand; Geotextile Filter membrane uv resistance; 85mm thick thermal insulation; 1.5mm thick epdm waterproofing membrane; CW01 - 4500 mm width x 3700 mm height; CW02 - 4500 mm width x 3700 mm height; CW03 - 4500 mm width x 3700 mm height; CW04 - 4500 mm width x 3700 mm height; CW05 - 7500 mm width x 4250 mm height; CW06 - 7500 mm width x 4250 mm height; W01 - 1000 mm width x 2000 mm height; W02 - 2000 mm width x 2000 mm height; W03 - 2000 mm width x 1000 mm height; D2 - 900 mm x 2200 mm height temper door; D3 - 950 mm x 2000 mm height temper door; Supply and install 33mm thick Lexan cladding blue complete with necessary framings; Supply and install 50mm thick random cut stone cladding complete with 600m; Supply and install External plastering to walls and columns min. 15mm thick with cement mortar of specified grade including; Supply and install 2 coats of weatherproof paint at walls including one prime coat and; Supply and install 300*300mm terrazzo tiles with 150mm high skirting at perimeter with approv; Supply and install 300*300mm glazed ceramic wall tiles on cement mortar and including rough; Supply and install internal plastering and 2 coats of acrylic paint at walls includin; Supply and install 300*300mm glazed ceramic wall tiles on cement mortar and including rough and smooth p; Supply and install 600*600mm porcelain tiles with approved quality on 30 mm mortar inclu; Supply and install 12.5mm thk, gypsum board suspended ceiling including s; Guard room coping 350mm; Guard room coping 450mm; Stone coping 500mm; Stone coping 525mm; Supply and install MODON Signage with Logo Type 1; Supply and install MODON Signage Type 2; Supply and install "Triangle Style" signage; Office Chairs; Office Tables; Guard Stand; Magnetic Control Access barrier, Automatic Vehicular Barriers to be installed on ground with magnetic access; Supply and install Hand Wash Basin with Water Tap, angle valve, P-trap connected to 50mm diameter s; Supply and install paper towel dispenser, surface mounted, satin finish stainless steel as per approv; Supply and install mirror, size 460*910mm as per approved sample including frames, backing and all accessories to complete.; Supply and install towel ring , surface mounted, satin finish stainless steel as per approved sample including accessories.; Kitchen sink with single bowl with hot/cold water mixer.; Supply and install Base mounted flush tank water Western water closet system with lid connected to 110mm soil pipe; Gate Valves; Slow Closing Valve; 1 meter length 10mm diameter Flexible Hose with insulated handle complete with fork support, index push, vacuum breaker; 50mm diameter; 75mm diameter; 80mm diameter; 100mm diameter; 110mm diameter; 13mm diameter; 15mm diameter; 20mm diameter; 25mm diameter; 32mm diameter; 40mm diameter; Isolation Valve Size 20; Isolation Valve Size 25; Isolation Valve Size 32; Isolation Valve Size 40; Isolation Valve Size 50; 20 mm diameter spray head for cold water supply; Supply and install Electric Water Heater set with connection; Water meter complete with accessories.; Roof drain; Vent on a roof to exhaust air; Floor drain 100x80mm; Gully trap 300x300 mm; inspection chamber, size 800x900x1000; Mini split actual capacity 2 Ton; Ducted split actual capacity 4 Ton; Supply, fabricate, install and testing factory fabricated metal ducts with flanges complete with supports, vanes,; Supplying, installation testing & commissioning of external insulation on ducts; Supply, fix, testing and commissioning of exhaust air/fresh air louvers of powder coated extruded aluminium construction.; Providing, fixing, testing and commissioning of powder coated extruded aluminum sections grills and diffusers with dampers.; Air Grills 150mm x150mm; Air Diffuser 600mm x 600mm; Supply, Installation & Testing of 2 hours Fire rated system for closing the openings between roo; 4.5 KG CO2 Type Fire Extinguishers; 6 KG ABC Type Fire Extinguishers; Floor cleanout, size 75 mm diameter; Floor cleanout, size 110 mm diameter; GRP water tanks capacity of each 1000 liter complete with all fittings, all valves and concrete pad; Junction Box for lighting fixture; Trench excavation to receive 2 nos 50mm diameter PVC Conduit, sand bedding and embedded with sa; Supply, Install, fixings, testing and commissioning 80W LED Projector waterproof DJ effect light including c; Earth Pit; Grounding rod 20mmX3m; Grounding rod with Pit 20mmX3m; Earthing Bar; 120mm2 Tinned copper wire; Guard Room 1; Guard Room 2; Guard Room 3; 30A, 2P AC Disconnect Switch; 20A Duplex Receptacle Floor Mounted; Twin Socket outlet; Twin Socket outlet, Weather Proof; Single gang Lighting switch; 2way Single gang Lighting switch; 36W LED linear Pendant lighting; 36W LED Emergency linear Pendant lighting; 13W recess mounted LED down light fitting; 13W recess emergency mounted LED down light fitting with 1.5 Hr Battery; 10.4W LED Exit light with 1.5 Hr Battery; 4mm2 Cu./FRLSZH Cable; 6mm2 Cu./FRLSZH Cable; IR Intrusion Detection System Quad Beams (Tx & Rx) (SL-350 QDM); Control cable; CAT6A cable; Field Equipment Cabinet enclosed outdoor complete with precast concrete footing, suitable for parame; Supply and install 800mm x 800mm x 800mm height concrete handhole with bituminous paint all aroun; 800mm depth minimum Trench excavation to receive 3 nos 50mm diameter PVC Conduit with spacer, sand bedding an; Hot dipped galvanized cable conduits for CAT6A cable and Control Cables embedded to wall; 8 Port Industrial PoE Switch 10/100BaseT (0 deg to +70 deg. Celsius); 06C Optical Fiber SM; 48C Optical Fiber SM; 48 Core Splice Closure; Boom Barrier at Security Guard Room; Pedestrian turnstile at Security Guard Room; Access Control Unit; Access Card Reader; Magnetic Lock; Break Glass; Exit Push button; Door Sensor; Biometrics Reader; Pole/Bollard mounted IP( PoE), Automatic Number Plate Recognition (ANPR, camera, 5MP,IP 66, IR illumin; 12U rack dimension (W x H x L) 600 x 625 x 600 mm; 400V, 3PH, 60Hz lighting control panel (LCP-02); 38W, 230V, 1PH, 60Hz fence, led linear uplight lighting, IP66; 4C-16mm2 CU/XLPE/PVC direct buried armored cable; 4C-10mm2 CU/XLPE/PVC direct buried armored cable; 16mm2 CU/PVC wire; 10mm2 CU/PVC wire; Fire Alarm Control panel with fire alarm zoning with Mimic panel with fire alarm zoning; Main Fire Alarm Control panel with fire alarm zoning with Mimic panel with fire alarm zoning; Supply and installation of the addressable manual call point with operation safety glass breaking and pushbutton; Supply and installation of the photoelectric heat & smoke detector with base; Sounder With Beacon; Addressable Control module for Sounders; Addressable Control module for HVAC System; Addressable Monitor module for HVAC System; 2C x 1.5 Sqm FR Rated Armored - Cable For Loop Wiring; DACT (Auto - Dailer) for 24x7 Civil Defence; Transmission Communication cable - Fiber Optics 12Core; Transmission Communication cable - Ethernet Cable; Supply, install to site and installation of power supply system for fire alarm control panel; Supply, install to site and installation of power cable; Fire Fighter s Telephone Centre; Fireman s Telephone Jack; Voice Command Center |
| 1 | **Handing over and close out** | 2026-10-13 → 2026-10-20 (+7d) | 2027-06-06 → 2027-06-05 (-1d) |  |  |  |
| 2 | **As-Built** | 2026-10-13 → 2026-10-20 (+7d) | 2027-06-06 → 2027-06-05 (-1d) |  |  |  |
| HO-130 | Submission As-Built Drawing For Pond | 2026-10-13 → 2026-10-20 (+7d) | 2026-10-28 → 2026-11-04 (+7d) | 97d → 91d |  |  |
| HO-100 | Submission As-Built Drawing For Sewage Network | 2027-04-25 → 2027-04-27 (+2d) | 2027-05-11 → 2027-05-13 (+2d) | -60.5d → -62.25d |  |  |
| HO-160 | Submission As-Built Drawing For Telecom Network | 2027-05-04 → 2027-05-03 (-1d) |  | -66d → -65.5d |  |  |
| HO-180 | Submission As-Built Drawing For Irrigation Network | 2027-05-02 → 2027-05-13 (+11d) | 2027-05-22 → 2027-06-01 (+10d) | -64.5d → -74d |  |  |

| ID | Task | Start | Finish | Total float |
| --- | --- | --- | --- | --- |
| HO-210 | Submission As-Built Drawing For Pump station | 2027-05-06 → 2027-05-13 (+7d) | 2027-05-06 → 2027-05-13 (+7d) | -57d → -63d |
| HO-190 | As-Built Drawing For Potable Water Network |  | 2027-06-03 → 2027-06-02 (-1d) | -75.5d → -75d |
| HO-170 | Submission As-Built Drawing For Medium Voltage Network | 2027-05-08 → 2027-05-22 (+14d) | 2027-05-26 → 2027-06-05 (+10d) | -69d → -76.5d |
| HO-150 | Submission As-Built Drawing For Street Lighting Network | 2027-05-20 → 2027-05-26 (+6d) | 2027-05-27 → 2027-06-02 (+6d) | -70d → -75d |
| HO-140 | Submission As-Built Drawing For Roads Network |  | 2027-06-06 → 2027-06-05 (-1d) | -77.5d → -77d |
| 1 | **De-Mobilization Works** |  | 2027-06-03 → 2027-06-02 (-1d) |  |
| HO-230 | Remove Temporary Car Shades |  | 2027-06-03 → 2027-06-02 (-1d) | -75.5d → -75d |
| 3 | **Handing Over** |  | 2027-06-06 → 2027-06-05 (-1d) |  |
| HO-250 | Review B.O.Q Qty. to ensure compliance with the actual status |  | 2027-06-06 → 2027-06-05 (-1d) | -77.5d → -77d |

## Version 6 (data date 2026-10-27, saved 2026-10-28, file MOD3-3147-BL0-R0-6UPDATE 27-10-2026.xer)

Note of the change: Weekly folders named by the Thursday the week ends on: a report dated after one Thursday up to the next goes in the next Thursday's folder (26-Oct → W05 - 29-Oct-2026); all weeks moved accordingly, W00 removed

Last finish 2027-06-05 → 2027-06-08 (+3d). Complete tasks 310 → 333.

Changed:

| ID | Task | Start | Finish | Complete | Total float |
| --- | --- | --- | --- | --- | --- |
| MS | **Key Milestones** |  | 2027-06-05 → 2027-06-08 (+3d) |  |  |
| CM | **Contractual Milestones** |  | 2027-06-05 → 2027-06-08 (+3d) |  |  |
| MS-CF-SD | Completion of Construction Works for Storm Drainage Network | 2027-03-29 → 2027-04-05 (+7d) | 2027-03-29 → 2027-04-05 (+7d) |  | -60.5d → -66.5d |
| MS-CF-TSE | Completion of Construction Works for Treated Sewage Effluent Network | 2027-04-25 → 2027-04-26 (+1d) | 2027-04-25 → 2027-04-26 (+1d) |  | -54d → -54.5d |
| MS-CF-MV | Completion of Construction Works for Medium Voltage Network | 2027-04-20 → 2027-04-26 (+6d) | 2027-04-20 → 2027-04-26 (+6d) |  | -68.5d → -74d |
| MS-CF-SW | Completion of Construction Works for Sewage Network | 2027-04-24 → 2027-04-28 (+4d) | 2027-04-24 → 2027-04-28 (+4d) |  | -72.75d → -77.25d |
| MS-CF-SL | Completion of Construction Works for Street Lighting Network | 2027-05-06 → 2027-04-29 (-7d) | 2027-05-06 → 2027-04-29 (-7d) |  | -69.5d → -64d |
| MS-CF-TE | Completion of Construction Works for Telecom Network | 2027-04-29 → 2027-05-03 (+4d) | 2027-04-29 → 2027-05-03 (+4d) |  | -76.5d → -80d |
| MS-CF-PW | Completion of Construction Works for Potable Water Network | 2027-05-06 → 2027-05-08 (+2d) | 2027-05-06 → 2027-05-08 (+2d) |  | -64d → -64.5d |
| MS-CF-RD | Completion of Construction Works for Road Works | 2027-05-29 → 2027-05-26 (-3d) | 2027-05-29 → 2027-05-26 (-3d) |  | -71d → -68.5d |
| MS-CF-PF | Project Completion Date | 2027-06-05 → 2027-06-08 (+3d) | 2027-06-05 → 2027-06-08 (+3d) |  | -77d → -80d |
| ENG | **Engineering Works** |  | 2026-10-27 → 2026-08-20 (-68d) |  |  |
| SD11 | **Material Submittals and Approvals** |  | 2026-10-27 → 2026-08-20 (-68d) |  |  |
| 2 | **Short Lead Time Items** |  | 2026-10-27 → 2026-07-12 (-107d) |  |  |
| 1 | **Superstructure Works** |  | 2026-10-27 → 2026-03-08 (-233d) |  |  |
| SL111 | **Storage Tank (TSE)** | 2026-02-04 → 2026-01-27 (-8d) | 2026-10-27 → 2026-02-09 (-260d) |  |  |
| 1 | **Submission of Material** | 2026-10-20 → 2026-01-27 (-266d) | 2026-10-27 → 2026-02-03 (-266d) |  |  |
| ENG-MT-TSE-CV-S-130 | Material Submittal for Civil Works for Storage Tank (TSE) | 2026-10-20 → 2026-01-27 A (-266d) | 2026-10-27 → 2026-02-03 A (-266d) | 0% → 100% | -34d → none |
| PROC | **Procurement Cycle** |  | 2027-04-21 → 2027-04-28 (+7d) |  |  |
| NLL | **Short Lead Time Items** |  | 2027-04-11 → 2027-04-15 (+4d) |  |  |
| INF | **Infrastructure Networks** |  | 2027-04-11 → 2027-04-15 (+4d) |  |  |
| RD | **Road Works** |  | 2026-10-20 → 2026-10-27 (+7d) |  |  |
| DL | **Material Delivery & Site Inspection** |  | 2026-10-20 → 2026-10-27 (+7d) |  |  |
| 1 | **Pre-Bituminous Construction** |  | 2026-10-20 → 2026-10-27 (+7d) |  |  |
| PRO-R25-RD-DL-100 | Material Delivery & Site Inspection for Subgrade of Road Works |  | 2026-10-20 → 2026-10-27 (+7d) |  | 38.5d → 32.5d |
| PRO-R25-RD-DL-110 | Material Delivery & Site Inspection for Aggregate Base Course of Road Works | 2026-10-20 → 2026-10-27 (+7d) | 2026-10-20 → 2026-10-27 (+7d) |  | 52d → 46d |
| 4 | **Bituminous Construction** | 2026-10-20 → 2026-10-27 (+7d) | 2026-10-20 → 2026-10-27 (+7d) |  |  |
| PRO-R25-RD-DL-160 | Material Delivery & Site Inspection for Prime Coat of Road Works | 2026-10-20 → 2026-10-27 (+7d) | 2026-10-20 → 2026-10-27 (+7d) |  | 67d → 61d |
| PRO-R25-RD-DL-170 | Material Delivery & Site Inspection for Bituminous Base & Wearing Courses of Road Works | 2026-10-20 → 2026-10-27 (+7d) | 2026-10-20 → 2026-10-27 (+7d) |  | 74d → 68d |
| 2 | **Pavement Works** | 2026-10-20 → 2026-10-27 (+7d) | 2026-10-20 → 2026-10-27 (+7d) |  |  |
| PRO-R25-RD-DL-120 | Material Delivery & Site Inspection of Interlock Tiles for Landscaping | 2026-10-20 → 2026-10-27 (+7d) | 2026-10-20 → 2026-10-27 (+7d) |  | 65d → 59d |
| PRO-R25-RD-DL-130 | Material Delivery & Site Inspection of Curbstones for Landscaping | 2026-10-20 → 2026-10-27 (+7d) | 2026-10-20 → 2026-10-27 (+7d) |  | 52.8d → 46.8d |
| 3 | **Traffic Signs Boards and Roads Marking** | 2026-10-20 → 2026-10-27 (+7d) | 2026-10-20 → 2026-10-27 (+7d) |  |  |
| PRO-R25-RD-DL-140 | Material Delivery & Site Inspection of Traffic Signs Boards For Road Works | 2026-10-20 → 2026-10-27 (+7d) | 2026-10-20 → 2026-10-27 (+7d) |  | 91d → 85d |
| PRO-R25-RD-DL-150 | Material Delivery & Site Inspection of Road Markings For Road Works | 2026-10-20 → 2026-10-27 (+7d) | 2026-10-20 → 2026-10-27 (+7d) |  | 84d → 78d |
| IR1 | **Softscape and Planting Works** | 2026-10-20 → 2026-10-27 (+7d) | 2027-02-22 → 2027-03-03 (+9d) |  |  |
| PO | **Issuance of Purchase Orders** | 2026-10-20 → 2026-10-27 (+7d) | 2026-10-26 → 2026-11-02 (+7d) |  |  |
| 1 | **Main Line Pipes** | 2026-10-20 → 2026-10-27 (+7d) | 2026-10-26 → 2026-11-02 (+7d) |  |  |
| PRO-IR-PO-140 | Issuance of Purchase Order for Softscape and Planting Works | 2026-10-20 → 2026-10-27 (+7d) | 2026-10-26 → 2026-11-02 (+7d) |  | -70.25d → -76.25d |
| PRO-IR-PO-150 | Issuance of Purchase Order for Site Furnishings (Seating Bench,Stone Boulders and Gravel) | 2026-10-20 → 2026-10-27 (+7d) | 2026-10-26 → 2026-11-02 (+7d) |  | -68d → -74d |
| MF | **Manufacturing of Material** | 2026-10-27 → 2026-11-03 (+7d) | 2027-01-24 → 2027-01-31 (+7d) |  |  |
| 1 | **Main Line Pipes** | 2026-10-27 → 2026-11-03 (+7d) | 2027-01-24 → 2027-01-31 (+7d) |  |  |
| PRO-IR-MF-140 | Manufacturing of Softscape and Planting Works | 2026-10-27 → 2026-11-03 (+7d) | 2027-01-24 → 2027-01-31 (+7d) |  | -83.5d → -90.5d |
| PRO-IR-MF-150 | Manufacturing of Valves for Site Furnishings (Seating Bench,Stone Boulders and Gravel) | 2026-10-27 → 2026-11-03 (+7d) | 2027-01-24 → 2027-01-31 (+7d) |  | -80.5d → -87.5d |
| 1DL | **1st Material Delivery & Site Inspection** | 2027-01-25 → 2027-02-01 (+7d) | 2027-01-31 → 2027-02-07 (+7d) |  |  |
| 1 | **Main Line Pipes** | 2027-01-25 → 2027-02-01 (+7d) | 2027-01-31 → 2027-02-07 (+7d) |  |  |
| PRO-IR-1DL-140 | 1ST Material Delivery for Softscape and Planting Works | 2027-01-25 → 2027-02-01 (+7d) | 2027-01-31 → 2027-02-07 (+7d) |  | -71.5d → -77.5d |
| PRO-IR-1DL-150 | 1ST Material Delivery for Site Furnishings (Seating Bench,Stone Boulders and Gravel) | 2027-01-25 → 2027-02-01 (+7d) | 2027-01-31 → 2027-02-07 (+7d) |  | -68.5d → -74.5d |
| DL | **Material Delivery & Site Inspection** | 2027-02-01 → 2027-02-08 (+7d) | 2027-02-22 → 2027-03-03 (+9d) |  |  |
| 1 | **Main Line Pipes** | 2027-02-01 → 2027-02-08 (+7d) | 2027-02-22 → 2027-03-03 (+9d) |  |  |
| PRO-R25-IR-DL-140 | Material Delivery & Site Inspection of Softscape and Planting Works | 2027-02-01 → 2027-02-08 (+7d) | 2027-02-16 → 2027-02-25 (+9d) |  | -71.5d → -77.5d |
| PRO-R25-IR-DL-150 | Material Delivery & Site Inspection of Site Furnishings (Seating Bench,Stone Boulders and Gravel) | 2027-02-01 → 2027-02-08 (+7d) | 2027-02-22 → 2027-03-03 (+9d) |  | -68.5d → -74.5d |
| SW | **Sewage Network** |  | 2027-04-11 → 2027-04-15 (+4d) |  |  |
| MF | **Manufacturing of Material** |  | 2027-02-26 → 2027-03-05 (+7d) |  |  |
| 3 | **Testing and Finishes** | 2026-10-20 → 2026-10-27 (+7d) | 2027-02-26 → 2027-03-05 (+7d) |  |  |
| PRO-SW-MF-120 | Manufacturing of Manhole Covers for Sewage Network | 2026-10-20 → 2026-10-27 (+7d) | 2027-02-26 → 2027-03-05 (+7d) |  | -89.5d → -96.5d |
| 1DL | **1st Material Delivery & Site Inspection** |  | 2027-03-07 → 2027-03-16 (+9d) |  |  |
| 3 | **Testing and Finishes** | 2027-02-27 → 2027-03-06 (+7d) | 2027-03-07 → 2027-03-16 (+9d) |  |  |
| PRO-SW-1DL-120 | 1ST Material Delivery for Manholes Covers of Sewage Network | 2027-02-27 → 2027-03-06 (+7d) | 2027-03-07 → 2027-03-16 (+9d) |  | -72.75d → -77.25d |
| DL | **Material Delivery & Site Inspection** |  | 2027-04-11 → 2027-04-15 (+4d) |  |  |
| 1 | **Main Line Sections** |  | 2026-10-20 → 2026-10-27 (+7d) |  |  |
| PRO-R25-SW-DL-110 | Material Delivery & Site Inspection of Manholes for Sewage Network |  | 2026-10-20 → 2026-10-27 (+7d) |  | -36.5d → -35.5d |
| 3 | **Testing and Finishes** | 2027-03-08 → 2027-03-16 (+8d) | 2027-04-11 → 2027-04-15 (+4d) |  |  |
| PRO-R25-SW-DL-120 | Material Delivery & Site Inspection of Manholes Covers for Sewage Network | 2027-03-08 → 2027-03-16 (+8d) | 2027-04-11 → 2027-04-15 (+4d) |  | -72.75d → -77.25d |
| SD | **Storm Drainage Network** |  | 2027-03-31 → 2027-04-07 (+7d) |  |  |
| MF | **Manufacturing of Material** |  | 2027-01-27 → 2027-02-03 (+7d) |  |  |
| 3 | **Testing and Finishes** | 2026-10-20 → 2026-10-27 (+7d) | 2027-01-27 → 2027-02-03 (+7d) |  |  |
| PRO-SD-MF-120 | Manufacturing of Materials for Manhole Covers of Storm Drainage Network | 2026-10-20 → 2026-10-27 (+7d) | 2027-01-27 → 2027-02-03 (+7d) |  | -64.38d → -71.38d |
| PRO-SD-MF-140 | Manufacturing of Materials for Catch Basin Covers of Storm Drainage Network | 2026-10-20 → 2026-10-27 (+7d) | 2027-01-27 → 2027-02-03 (+7d) |  | -69.5d → -76.5d |
| 1DL | **1st Material Delivery & Site Inspection** | 2026-09-13 → 2026-07-25 (-50d) | 2027-02-03 → 2027-02-11 (+8d) |  |  |

| ID | Task | Start | Finish | Complete | Total float |
| --- | --- | --- | --- | --- | --- |
| 2 | **Catch Basin Sections** | 2026-09-13 → 2026-07-25 (-50d) | 2026-10-24 → 2026-08-02 (-83d) |  |  |
| PRO-SD-1DL-120 | 1ST Material Delivery for Catch Basin Pipes of Storm Drainage Network | 2026-09-13 A → 2026-07-25 A (-50d) | 2026-10-24 → 2026-08-02 A (-83d) | 40% → 100% | -48.13d → none |
| PRO-SD-1DL-130 | 1ST Material Delivery for Catch Basins of Storm Drainage Network | 2026-09-13 A → 2026-07-25 A (-50d) | 2026-10-24 → 2026-08-02 A (-83d) | 40% → 100% | -48.13d → none |
| 3 | **Testing and Finishes** | 2027-01-28 → 2027-02-04 (+7d) | 2027-02-03 → 2027-02-11 (+8d) |  |  |
| PRO-SD-1DL-140 | 1ST Material Delivery for Manholes Covers of Storm Drainage Network | 2027-01-28 → 2027-02-04 (+7d) | 2027-02-03 → 2027-02-11 (+8d) |  | -55.5d → -61.5d |
| PRO-SD-1DL-150 | 1ST Material Delivery for Catch Basin Covers of Storm Drainage Network | 2027-01-28 → 2027-02-04 (+7d) | 2027-02-03 → 2027-02-11 (+8d) |  | -59.5d → -65.5d |
| DL | **Material Delivery & Site Inspection** |  | 2027-03-31 → 2027-04-07 (+7d) |  |  |
| 1 | **Main Line Sections** |  | 2026-10-20 → 2026-10-27 (+7d) |  |  |
| PRO-R25-SD-DL-100 | Material Delivery & Site Inspection of Manholes of Storm Drainage Network |  | 2026-10-20 → 2026-10-27 (+7d) |  | -58.75d → -63.69d |
| 2 | **Catch Basin Sections** |  | 2026-10-27 → 2026-11-03 (+7d) |  |  |
| PRO-R25-SD-DL-110 | Material Delivery & Site Inspection of Catch Basin Pipes for Storm Drainage Network |  | 2026-10-27 → 2026-11-03 (+7d) |  | -40.5d → -46.5d |
| PRO-R25-SD-DL-130 | Material Delivery & Site Inspection of Catch Basins for Storm Drainage Network |  | 2026-10-27 → 2026-11-03 (+7d) |  | -40.5d → -46.5d |
| 3 | **Testing and Finishes** | 2027-02-04 → 2027-02-13 (+9d) | 2027-03-31 → 2027-04-07 (+7d) |  |  |
| PRO-R25-SD-DL-150 | Material Delivery & Site Inspection of Catch Basin Covers for Storm Drainage Network | 2027-02-04 → 2027-02-13 (+9d) | 2027-03-06 → 2027-03-16 (+10d) |  | -59.5d → -65.5d |
| PRO-R25-SD-DL-140 | Material Delivery & Site Inspection of Manholes Covers for Storm Drainage Network | 2027-02-23 → 2027-03-04 (+9d) | 2027-03-31 → 2027-04-07 (+7d) |  | -68.5d → -74.5d |
| PW | **Potable Water Network** |  | 2027-04-05 → 2027-04-11 (+6d) |  |  |
| PO | **Issuance of Purchase Orders** |  | 2026-10-31 → 2026-11-07 (+7d) |  |  |
| 1 | **Main Line Sections** |  | 2026-10-26 → 2026-11-02 (+7d) |  |  |
| PRO-PW-PO-110 | Issuance of Purchase Order for Valves of Potable Water Network | 2026-10-20 → 2026-10-27 (+7d) | 2026-10-26 → 2026-11-02 (+7d) |  | -68.25d → -74.25d |
| 3 | **Fire Hydrant** | 2026-10-20 → 2026-10-27 (+7d) | 2026-10-31 → 2026-11-07 (+7d) |  |  |
| PRO-PW-PO-120 | Issuance of Purchase Order for Fire Hydrants of Potable Water Network | 2026-10-20 → 2026-10-27 (+7d) | 2026-10-31 → 2026-11-07 (+7d) |  | -53.25d → -59.25d |
| 4 | **Testing and Finishes** | 2026-10-20 → 2026-10-27 (+7d) | 2026-10-31 → 2026-11-07 (+7d) |  |  |
| PRO-PW-PO-130 | Issuance of Purchase Order for Surface Box of Potable Water Network | 2026-10-20 → 2026-10-27 (+7d) | 2026-10-31 → 2026-11-07 (+7d) |  | -57.75d → -63.75d |
| MF | **Manufacturing of Material** |  | 2027-02-18 → 2027-02-25 (+7d) |  |  |
| 1 | **Main Line Sections** |  | 2027-01-24 → 2027-01-31 (+7d) |  |  |
| PRO-PW-MF-110 | Manufacturing of Valves for Potable Water Network | 2026-10-27 → 2026-11-03 (+7d) | 2027-01-24 → 2027-01-31 (+7d) |  | -81.5d → -88.5d |
| 3 | **Fire Hydrant** | 2026-11-01 → 2026-11-08 (+7d) | 2026-12-30 → 2027-01-06 (+7d) |  |  |
| PRO-PW-MF-120 | Manufacturing of Fire Hydrants for Potable Water Network | 2026-11-01 → 2026-11-08 (+7d) | 2026-12-30 → 2027-01-06 (+7d) |  | -63.5d → -70.5d |
| 4 | **Testing and Finishes** | 2026-11-01 → 2026-11-08 (+7d) | 2027-02-18 → 2027-02-25 (+7d) |  |  |
| PRO-PW-MF-130 | Manufacturing for Surface Box of Potable Water Network | 2026-11-01 → 2026-11-08 (+7d) | 2027-02-18 → 2027-02-25 (+7d) |  | -69d → -76d |
| 1DL | **1st Material Delivery & Site Inspection** |  | 2027-02-28 → 2027-03-07 (+7d) |  |  |
| 1 | **Main Line Sections** |  | 2027-01-31 → 2027-02-07 (+7d) |  |  |
| PRO-PW-1DL-100_R | 1ST Material Delivery for Main Line Pipes of Potable Water Network(Remaining) |  | 2026-10-28 → 2026-10-27 (-1d) | 90% → 100% | -77d → -67d |
| PRO-PW-1DL-110 | 1ST Material Delivery for Valves of Potable Water Network | 2027-01-25 → 2027-02-01 (+7d) | 2027-01-31 → 2027-02-07 (+7d) |  | -69.5d → -75.5d |
| 3 | **Fire Hydrant** | 2026-12-31 → 2027-01-07 (+7d) | 2027-01-06 → 2027-01-13 (+7d) |  |  |
| PRO-PW-1DL-120 | 1ST Material Delivery for Fire Hydrants of Potable Water Network | 2026-12-31 → 2027-01-07 (+7d) | 2027-01-06 → 2027-01-13 (+7d) |  | -54.5d → -60.5d |
| 4 | **Testing and Finishes** | 2027-02-20 → 2027-02-27 (+7d) | 2027-02-28 → 2027-03-07 (+7d) |  |  |
| PRO-PW-1DL-130 | 1ST Material Delivery for Finishes of Potable Water Network | 2027-02-20 → 2027-02-27 (+7d) | 2027-02-28 → 2027-03-07 (+7d) |  | -57.5d → -62.25d |
| DL | **Material Delivery & Site Inspection** |  | 2027-04-05 → 2027-04-11 (+6d) |  |  |
| 1 | **Main Line Sections** |  | 2027-02-01 → 2027-02-08 (+7d) |  |  |
| PRO-R25-PW-DL-100_R | Material Delivery & Site Inspection of Main Line Pipes for Potable Water Network(Remaining) |  | 2027-01-10 → 2027-01-17 (+7d) | 90% → 75% | -77d → -67d |
| PRO-R25-PW-DL-110 | Material Delivery & Site Inspection of Valves for Potable Water Network | 2027-02-01 → 2027-02-08 (+7d) | 2027-02-01 → 2027-02-08 (+7d) |  | -63.5d → -69.5d |
| 3 | **Fire Hydrant** | 2027-01-07 → 2027-01-14 (+7d) | 2027-01-07 → 2027-01-14 (+7d) |  |  |
| PRO-R25-PW-DL-120 | Material Delivery & Site Inspection of Fire Hydrants for Potable Water Network | 2027-01-07 → 2027-01-14 (+7d) | 2027-01-07 → 2027-01-14 (+7d) |  | -54.5d → -60.5d |
| 4 | **Testing and Finishes** | 2027-02-28 → 2027-03-08 (+8d) | 2027-04-05 → 2027-04-11 (+6d) |  |  |
| PRO-R25-PW-DL-130 | Material Delivery & Site Inspection for Finishes of Potable Water Network | 2027-02-28 → 2027-03-08 (+8d) | 2027-04-05 → 2027-04-11 (+6d) |  | -57.5d → -62.25d |
| IR | **Irrigation Network** |  | 2027-02-08 → 2027-02-17 (+9d) |  |  |
| PO | **Issuance of Purchase Orders** |  | 2026-11-02 → 2026-11-09 (+7d) |  |  |
| 1 | **Main Line Pipes** |  | 2026-11-02 → 2026-11-09 (+7d) |  |  |
| PRO-IR-PO-110 | Issuance of Purchase Order for Valves of Irrigation Network | 2026-10-27 → 2026-11-03 (+7d) | 2026-11-02 → 2026-11-09 (+7d) |  | -66.25d → -72.25d |
| MF | **Manufacturing of Material** |  | 2027-01-31 → 2027-02-07 (+7d) |  |  |
| 1 | **Main Line Pipes** |  | 2027-01-31 → 2027-02-07 (+7d) |  |  |
| PRO-IR-MF-110 | Manufacturing of Valves for Irrigation Network | 2026-11-03 → 2026-11-10 (+7d) | 2027-01-31 → 2027-02-07 (+7d) |  | -78.5d → -85.5d |
| 1DL | **1st Material Delivery & Site Inspection** |  | 2027-02-07 → 2027-02-16 (+9d) |  |  |
| 1 | **Main Line Pipes** |  | 2027-02-07 → 2027-02-16 (+9d) |  |  |
| PRO-IR-1DL-100 | 1ST Material Delivery for Main Line Pipes of Irrigation Network |  | 2026-10-24 → 2026-10-31 (+7d) |  | 4.5d → -1.5d |
| PRO-IR-1DL-110 | 1ST Material Delivery for Valves of Irrigation Network | 2027-02-01 → 2027-02-08 (+7d) | 2027-02-07 → 2027-02-16 (+9d) |  | -67.5d → -73.5d |
| DL | **Material Delivery & Site Inspection** | 2026-10-24 → 2026-10-31 (+7d) | 2027-02-08 → 2027-02-17 (+9d) |  |  |
| 1 | **Main Line Pipes** | 2026-10-24 → 2026-10-31 (+7d) | 2027-02-08 → 2027-02-17 (+9d) |  |  |
| PRO-R25-IR-DL-100 | Material Delivery & Site Inspection of Main Line Pipes for Irrigation Network | 2026-10-24 → 2026-10-31 (+7d) | 2026-10-24 → 2026-10-31 (+7d) |  | 4.5d → -1.5d |
| PRO-R25-IR-DL-110 | Material Delivery & Site Inspection of Valves for Irrigation Network | 2027-02-08 → 2027-02-17 (+9d) | 2027-02-08 → 2027-02-17 (+9d) |  | -67.5d → -73.5d |
| TSE | **Treated Sewage Effluent (Tse)** |  | 2027-02-01 → 2027-02-08 (+7d) |  |  |
| PO | **Issuance of Purchase Orders** |  | 2026-10-26 → 2026-11-02 (+7d) |  |  |
| 1 | **Main Line Pipes** |  | 2026-10-26 → 2026-11-02 (+7d) |  |  |
| PRO-TSE-PO-130 | Issuance of Purchase Order for Valves of Treated Sewage Effluent (Tse) | 2026-10-20 → 2026-10-27 (+7d) | 2026-10-26 → 2026-11-02 (+7d) |  | -59.25d → -65.25d |
| MF | **Manufacturing of Material** |  | 2027-01-24 → 2027-01-31 (+7d) |  |  |
| 1 | **Main Line Pipes** |  | 2027-01-24 → 2027-01-31 (+7d) |  |  |
| PRO-TSE-MF-130 | Manufacturing of Valves for Treated Sewage Effluent (Tse) | 2026-10-27 → 2026-11-03 (+7d) | 2027-01-24 → 2027-01-31 (+7d) |  | -70.5d → -77.5d |
| 1DL | **1st Material Delivery & Site Inspection** |  | 2027-01-31 → 2027-02-07 (+7d) |  |  |
| 1 | **Main Line Pipes** |  | 2027-01-31 → 2027-02-07 (+7d) |  |  |

| ID | Task | Start | Finish | Complete | Total float |
| --- | --- | --- | --- | --- | --- |
| PRO-TSE-1DL-130 | 1ST Material Delivery for Valves of Treated Sewage Effluent (Tse) | 2027-01-25 → 2027-02-01 (+7d) | 2027-01-31 → 2027-02-07 (+7d) |  | -60.5d → -66.5d |
| DL | **Material Delivery & Site Inspection** |  | 2027-02-01 → 2027-02-08 (+7d) |  |  |
| 1 | **Main Line Pipes** |  | 2027-02-01 → 2027-02-08 (+7d) |  |  |
| PRO-R25-TSE-DL-120_R | Material Delivery & Site Inspection of Main Line Pipes for Treated Sewage Effluent (Tse)(Remaining) |  | 2026-10-20 → 2026-10-27 (+7d) | 50% → 100% | 9.5d → 3.5d |
| PRO-R25-TSE-DL-130 | Material Delivery & Site Inspection of Valves for Treated Sewage Effluent (Tse) | 2027-02-01 → 2027-02-08 (+7d) | 2027-02-01 → 2027-02-08 (+7d) |  | -60.5d → -66.5d |
| MV | **Medium Voltage Network** | 2026-10-20 → 2026-10-27 (+7d) | 2027-03-29 → 2027-04-05 (+7d) |  |  |
| PO | **Issuance of Purchase Orders** | 2026-10-20 → 2026-10-27 (+7d) | 2026-11-02 → 2026-11-09 (+7d) |  |  |
| 1 | **Cabling Works** | 2026-10-20 → 2026-10-27 (+7d) | 2026-11-02 → 2026-11-09 (+7d) |  |  |
| PRO-MV-PO-100 | Issuance of Purchase Order for Medium Voltage Cables of Medium Voltage Network | 2026-10-20 → 2026-10-27 (+7d) | 2026-11-02 → 2026-11-09 (+7d) |  | -64.25d → -70.25d |
| 3 | **Termination and Testing Works** | 2026-10-20 → 2026-10-27 (+7d) | 2026-11-02 → 2026-11-09 (+7d) |  |  |
| PRO-MV-PO-120 | Issuance of Purchase Order for Termination and Joints Kits of Medium Voltage Network | 2026-10-20 → 2026-10-27 (+7d) | 2026-11-02 → 2026-11-09 (+7d) |  | -71.75d → -77.75d |
| MF | **Manufacturing of Material** | 2026-11-03 → 2026-11-10 (+7d) | 2027-01-31 → 2027-02-07 (+7d) |  |  |
| 1 | **Cabling Works** | 2026-11-03 → 2026-11-10 (+7d) | 2027-01-01 → 2027-01-08 (+7d) |  |  |
| PRO-MV-MF-100 | Manufacturing of Medium Voltage Cables for Medium Voltage Network | 2026-11-03 → 2026-11-10 (+7d) | 2027-01-01 → 2027-01-08 (+7d) |  | -76.5d → -83.5d |
| 3 | **Termination and Testing Works** | 2026-11-03 → 2026-11-10 (+7d) | 2027-01-31 → 2027-02-07 (+7d) |  |  |
| PRO-MV-MF-110 | Manufacturing of Termination and Joints Kits for Medium Voltage Network | 2026-11-03 → 2026-11-10 (+7d) | 2027-01-31 → 2027-02-07 (+7d) |  | -85d → -92d |
| 1DL | **1st Material Delivery & Site Inspection** | 2027-01-02 → 2027-01-09 (+7d) | 2027-02-20 → 2027-03-01 (+9d) |  |  |
| 1 | **Cabling Works** | 2027-01-02 → 2027-01-09 (+7d) | 2027-01-14 → 2027-01-21 (+7d) |  |  |
| PRO-MV-1DL-100 | 1ST Material Delivery for Medium Voltage Cables of Medium Voltage Network | 2027-01-02 → 2027-01-09 (+7d) | 2027-01-14 → 2027-01-21 (+7d) |  | -65.5d → -71.5d |
| 3 | **Termination and Testing Works** | 2027-02-01 → 2027-02-08 (+7d) | 2027-02-20 → 2027-03-01 (+9d) |  |  |
| PRO-MV-1DL-120 | 1ST Material Delivery for Termination and Joints Kits of Medium Voltage Network | 2027-02-01 → 2027-02-08 (+7d) | 2027-02-20 → 2027-03-01 (+9d) |  | -73d → -79d |
| DL | **Material Delivery & Site Inspection** | 2027-01-16 → 2027-01-23 (+7d) | 2027-03-29 → 2027-04-05 (+7d) |  |  |
| 1 | **Cabling Works** | 2027-01-16 → 2027-01-23 (+7d) | 2027-01-16 → 2027-01-23 (+7d) |  |  |
| PRO-MV-DL-100 | Material Delivery & Site Inspection of Medium Voltage Cables for Medium Voltage Network | 2027-01-16 → 2027-01-23 (+7d) | 2027-01-16 → 2027-01-23 (+7d) |  | -65.5d → -71.5d |
| 3 | **Termination and Testing Works** | 2027-02-20 → 2027-03-01 (+9d) | 2027-03-29 → 2027-04-05 (+7d) |  |  |
| PRO-MV-DL-110 | Material Delivery & Site Inspection of Termination and Joints Kits for Medium Voltage Network | 2027-02-20 → 2027-03-01 (+9d) | 2027-03-29 → 2027-04-05 (+7d) |  | -73d → -79d |
| SL | **Low Voltage and Street Lighting Network** |  | 2026-12-06 → 2026-12-13 (+7d) |  |  |
| 1DL | **1st Material Delivery & Site Inspection** | 2026-10-20 → 2026-10-27 (+7d) | 2026-11-05 → 2026-11-12 (+7d) |  |  |
| 1 | **Cabling Works** | 2026-10-20 → 2026-10-27 (+7d) | 2026-10-26 → 2026-11-02 (+7d) |  |  |
| PRO-SL-1DL-100 | 1ST Material Delivery for Lighting Cables of Street Lighting Network | 2026-10-20 → 2026-10-27 (+7d) | 2026-10-26 → 2026-11-02 (+7d) |  | 17.5d → 11.5d |
| 2 | **Lighting Poles Works** | 2026-10-20 → 2026-10-27 (+7d) | 2026-10-26 → 2026-11-02 (+7d) |  |  |
| PRO-SL-1DL-110 | 1ST Material Delivery for Lighting Poles Foundations of Street Lighting Network | 2026-10-20 → 2026-10-27 (+7d) | 2026-10-26 → 2026-11-02 (+7d) |  | -11.5d → -17.5d |
| PRO-SL-1DL-120 | 1ST Material Delivery for Lighting Poles of Street Lighting Network | 2026-10-20 → 2026-10-27 (+7d) | 2026-10-26 → 2026-11-02 (+7d) |  | 22.5d → 16.5d |
| PRO-SL-1DL-140 | 1ST Material Delivery for Lighting Fixtures of Street Lighting Network | 2026-10-20 → 2026-10-27 (+7d) | 2026-10-26 → 2026-11-02 (+7d) |  | 66d → 60d |
| 3 | **Distribution Panel Board** | 2026-10-20 → 2026-10-27 (+7d) | 2026-10-26 → 2026-11-02 (+7d) |  |  |
| PRO-SL-1DL-160 | 1ST Material Delivery for Distrubution Panel Boards of Street Lighting Network | 2026-10-20 → 2026-10-27 (+7d) | 2026-10-26 → 2026-11-02 (+7d) |  | 54d → 48d |
| 5 | **Termination and Testing Works** | 2026-10-20 → 2026-10-27 (+7d) | 2026-11-05 → 2026-11-12 (+7d) |  |  |
| PRO-SL-1DL-130 | 1ST Material Delivery for Fuse Boxes of Street Lighting Network | 2026-10-20 → 2026-10-27 (+7d) | 2026-11-05 → 2026-11-12 (+7d) |  | 46d → 40d |
| PRO-SL-1DL-170 | 1ST Material Delivery for Cable Lugs of Street Lighting Network | 2026-10-20 → 2026-10-27 (+7d) | 2026-11-05 → 2026-11-12 (+7d) |  | 44d → 38d |
| 4 | **Earthing System Works** | 2026-10-20 → 2026-10-27 (+7d) | 2026-10-26 → 2026-11-02 (+7d) |  |  |
| PRO-SL-1DL-150 | 1ST Material Delivery for Lighting Earthing of Street Lighting Network | 2026-10-20 → 2026-10-27 (+7d) | 2026-10-26 → 2026-11-02 (+7d) |  | 66d → 60d |
| DL | **Material Delivery & Site Inspection** | 2026-10-27 → 2026-11-03 (+7d) | 2026-12-06 → 2026-12-13 (+7d) |  |  |
| 1 | **Cabling Works** | 2026-10-27 → 2026-11-03 (+7d) | 2026-10-27 → 2026-11-03 (+7d) |  |  |
| PRO-R25-SL-DL-100 | Material Delivery & Site Inspection of Lighting Cables for Street Lighting Network | 2026-10-27 → 2026-11-03 (+7d) | 2026-10-27 → 2026-11-03 (+7d) |  | 17.5d → 11.5d |
| 2 | **Lighting Poles Works** | 2026-10-27 → 2026-11-03 (+7d) | 2026-11-16 → 2026-11-23 (+7d) |  |  |
| PRO-R25-SL-DL-110 | Material Delivery & Site Inspection of Lighting Poles Foundations for Street Lighting Network | 2026-10-27 → 2026-11-03 (+7d) | 2026-11-16 → 2026-11-23 (+7d) |  | -11.5d → -17.5d |
| PRO-R25-SL-DL-120 | Material Delivery & Site Inspection of Lighting Poles for Street Lighting Network | 2026-10-27 → 2026-11-03 (+7d) | 2026-10-27 → 2026-11-03 (+7d) |  | 22.5d → 16.5d |
| PRO-R25-SL-DL-140 | Material Delivery & Site Inspection of Lighting Fixtures for Street Lighting Network | 2026-10-27 → 2026-11-03 (+7d) | 2026-10-27 → 2026-11-03 (+7d) |  | 66d → 60d |
| 3 | **Distribution Panel Board** | 2026-10-27 → 2026-11-03 (+7d) | 2026-10-27 → 2026-11-03 (+7d) |  |  |
| PRO-R25-SL-DL-160 | Material Delivery & Site Inspection of Distrubution Panel Boards for Street Lighting Network | 2026-10-27 → 2026-11-03 (+7d) | 2026-10-27 → 2026-11-03 (+7d) |  | 54d → 48d |
| 4 | **Termination and Testing Works** | 2026-11-07 → 2026-11-14 (+7d) | 2026-12-06 → 2026-12-13 (+7d) |  |  |
| PRO-R25-SL-DL-130 | Material Delivery & Site Inspection of Fuse Boxes for Street Lighting Network | 2026-11-07 → 2026-11-14 (+7d) | 2026-12-06 → 2026-12-13 (+7d) |  | 46d → 40d |
| PRO-R25-SL-DL-170 | Material Delivery & Site Inspection of Cable Lugs for Street Lighting Network | 2026-11-07 → 2026-11-14 (+7d) | 2026-12-06 → 2026-12-13 (+7d) |  | 44d → 38d |
| 5 | **Earthing System Works** | 2026-10-27 → 2026-11-03 (+7d) | 2026-10-27 → 2026-11-03 (+7d) |  |  |
| PRO-R25-SL-DL-150 | Material Delivery & Site Inspection of Lighting Earthing for Street Lighting Network | 2026-10-27 → 2026-11-03 (+7d) | 2026-10-27 → 2026-11-03 (+7d) |  | 66d → 60d |
| TE | **Telecom Network** | 2026-10-20 → 2026-10-27 (+7d) | 2027-02-06 → 2027-02-14 (+8d) |  |  |
| PO | **Issuance of Purchase Orders** | 2026-10-20 → 2026-10-27 (+7d) | 2026-10-26 → 2026-11-02 (+7d) |  |  |
| 1 | **Ducts Works** | 2026-10-20 → 2026-10-27 (+7d) | 2026-10-26 → 2026-11-02 (+7d) |  |  |
| PRO-TE-PO-100 | Issuance of Purchase Order for Ducts forTelecom Network | 2026-10-20 → 2026-10-27 (+7d) | 2026-10-26 → 2026-11-02 (+7d) |  | -40.75d → -46.75d |
| 3 | **Manholes Works** | 2026-10-20 → 2026-10-27 (+7d) | 2026-10-26 → 2026-11-02 (+7d) |  |  |
| PRO-TE-PO-110 | Issuance of Purchase Order for Manholes forTelecom Network | 2026-10-20 → 2026-10-27 (+7d) | 2026-10-26 → 2026-11-02 (+7d) |  | -58.75d → -64.75d |
| 2 | **CCTV System Wroks** | 2026-10-20 → 2026-10-27 (+7d) | 2026-10-26 → 2026-11-02 (+7d) |  |  |
| PRO-CTV-PO-100 | Issuance of Purchase Order for Civil and Finishes Works of CCTV Complete System | 2026-10-20 → 2026-10-27 (+7d) | 2026-10-26 → 2026-11-02 (+7d) |  | -44d → -50d |
| MF | **Manufacturing of Material** | 2026-10-27 → 2026-11-03 (+7d) | 2027-01-24 → 2027-01-31 (+7d) |  |  |
| 1 | **Ducts Works** | 2026-10-27 → 2026-11-03 (+7d) | 2026-12-25 → 2027-01-01 (+7d) |  |  |
| PRO-TE-MF-100 | Manufacturing of Ducts for Telecom Network | 2026-10-27 → 2026-11-03 (+7d) | 2026-12-25 → 2027-01-01 (+7d) |  | -49d → -56d |
| 3 | **Manholes Works** | 2026-10-27 → 2026-11-03 (+7d) | 2027-01-24 → 2027-01-31 (+7d) |  |  |
| PRO-TE-MF-110 | Manufacturing of Manholes for Telecom Network | 2026-10-27 → 2026-11-03 (+7d) | 2027-01-24 → 2027-01-31 (+7d) |  | -70d → -77d |
| 2 | **CCTV System Wroks** | 2026-10-27 → 2026-11-03 (+7d) | 2027-01-24 → 2027-01-31 (+7d) |  |  |
| PRO-CTV-MF-100 | Manufacturing of Civil and Finishes Works for CCTV Complete System | 2026-10-27 → 2026-11-03 (+7d) | 2027-01-24 → 2027-01-31 (+7d) |  | -53d → -60d |

| ID | Task | Start | Finish | Complete | Total float |
| --- | --- | --- | --- | --- | --- |
| 1DL | **1st Material Delivery & Site Inspection** | 2026-12-26 → 2027-01-02 (+7d) | 2027-02-04 → 2027-02-14 (+10d) |  |  |
| 1 | **Ducts Works** | 2026-12-26 → 2027-01-02 (+7d) | 2026-12-31 → 2027-01-07 (+7d) |  |  |
| PRO-TE-1DL-100 | 1ST Material Delivery for Ducts of Telecom Network | 2026-12-26 → 2027-01-02 (+7d) | 2026-12-31 → 2027-01-07 (+7d) |  | -42d → -48d |
| 3 | **Manholes Works** | 2027-01-25 → 2027-02-01 (+7d) | 2027-01-31 → 2027-02-07 (+7d) |  |  |
| PRO-TE-1DL-110 | 1ST Material Delivery for Manholes of Telecom Network | 2027-01-25 → 2027-02-01 (+7d) | 2027-01-31 → 2027-02-07 (+7d) |  | -60d → -66d |
| 2 | **CCTV System Wroks** | 2027-01-25 → 2027-02-01 (+7d) | 2027-02-04 → 2027-02-14 (+10d) |  |  |
| PRO-CTV-1DL-100 | 1ST Material Delivery for Civil and Finishes Works of CCTV Complete System | 2027-01-25 → 2027-02-01 (+7d) | 2027-02-04 → 2027-02-14 (+10d) |  | -45d → -51d |
| DL | **Material Delivery & Site Inspection** | 2027-01-02 → 2027-01-09 (+7d) | 2027-02-06 → 2027-02-14 (+8d) |  |  |
| 1 | **Ducts Works** | 2027-01-02 → 2027-01-09 (+7d) | 2027-01-02 → 2027-01-09 (+7d) |  |  |
| PRO-R25-TE-DL-100 | Material Delivery & Site Inspection for Ducts of Telecom Network | 2027-01-02 → 2027-01-09 (+7d) | 2027-01-02 → 2027-01-09 (+7d) |  | -42d → -48d |
| 3 | **Manholes Works** | 2027-02-01 → 2027-02-08 (+7d) | 2027-02-01 → 2027-02-08 (+7d) |  |  |
| PRO-R25-TE-DL-110 | Material Delivery & Site Inspection of Manholes for Telecom Network | 2027-02-01 → 2027-02-08 (+7d) | 2027-02-01 → 2027-02-08 (+7d) |  | -60d → -66d |
| 2 | **CCTV System Wroks** | 2027-02-06 → 2027-02-14 (+8d) | 2027-02-06 → 2027-02-14 (+8d) |  |  |
| PRO-R25-CTV-DL-100 | Material Delivery & Site Inspection of for Civil and Finishes Works of CCTV Complete System | 2027-02-06 → 2027-02-14 (+8d) | 2027-02-06 → 2027-02-14 (+8d) |  | -45d → -51d |
| 1 | **Superstructure Works** |  | 2027-01-18 → 2027-01-25 (+7d) |  |  |
| 1 | **Issuance of Purchase Orders** |  | 2026-11-09 → 2026-08-27 (-74d) |  |  |
| SL11 | **Storage Tank (TSE)** | 2026-10-28 → 2026-08-11 (-78d) | 2026-11-09 → 2026-08-19 (-82d) |  |  |
| PRO-TSE-CV-PO-30 | Issuance of Purchase Order for Civil Works for Storage Tank (TSE) | 2026-10-28 → 2026-08-11 A (-78d) | 2026-11-09 → 2026-08-19 A (-82d) | 0% → 100% | -34d → none |
| SL12 | **Gaurd Room** | 2026-10-20 → 2026-06-29 (-113d) | 2026-11-01 → 2026-07-09 (-115d) |  |  |
| PRO-GR-CV-PO-40 | Issuance of Purchase Order for Civil Works for Gaurd Room | 2026-10-20 → 2026-06-29 A (-113d) | 2026-11-01 → 2026-07-09 A (-115d) | 0% → 100% | -73d → none |
| 2 | **Manufacturing of Material** |  | 2027-01-17 → 2027-01-24 (+7d) |  |  |
| SL11 | **Storage Tank (TSE)** | 2026-11-10 → 2026-08-19 (-83d) | 2026-12-19 → 2026-10-20 (-60d) |  |  |
| PRO-TSE-CV-MF-40 | Manufacturing of Civil Works for Civil Works for Storage Tank (TSE) | 2026-11-10 → 2026-08-19 A (-83d) | 2026-12-19 → 2026-10-20 A (-60d) | 0% → 100% | -40d → none |
| SL12 | **Gaurd Room** | 2026-11-01 → 2026-07-09 (-115d) | 2026-12-11 → 2026-10-13 (-59d) |  |  |
| PRO-GR-CV-MF-50 | Manufacturing of Civil Works for Civil Works for Gaurd Room | 2026-11-01 → 2026-07-09 A (-115d) | 2026-12-11 → 2026-10-13 A (-59d) | 0% → 100% | -87.25d → none |
| SL1211 | **Softscape and Planting Works** | 2026-10-20 → 2026-10-27 (+7d) | 2027-01-17 → 2027-01-24 (+7d) |  |  |
| PRO-FE-CV-MF-70 | Manufacturing of Civil Works for Softscape and Planting Works | 2026-10-20 → 2026-10-27 (+7d) | 2027-01-17 → 2027-01-24 (+7d) |  | -55.5d → -62.5d |
| 3 | **1st Material Delivery & Site Inspection** |  | 2026-12-24 → 2026-10-27 (-58d) |  |  |
| SL11 | **Storage Tank (TSE)** | 2026-12-20 → 2026-10-21 (-60d) | 2026-12-20 → 2026-10-27 (-54d) |  |  |
| PRO-TSE-CV-1DL-50 | 1ST Material Delivery for Civil Works for Civil Works for Storage Tank (TSE) | 2026-12-20 → 2026-10-21 A (-60d) | 2026-12-20 → 2026-10-27 (-54d) | 0% → 90% | -34d → 24.9d |
| SL12 | **Gaurd Room** | 2026-12-12 → 2026-10-13 (-60d) | 2026-12-24 → 2026-10-20 (-65d) |  |  |
| PRO-GR-CV-1DL-60 | 1ST Material Delivery for Civil Works for Civil Works for Gaurd Room | 2026-12-12 → 2026-10-13 A (-60d) | 2026-12-24 → 2026-10-20 A (-65d) | 0% → 100% | -73.5d → none |
| 4 | **Material Delivery & Site Inspection** |  | 2027-01-18 → 2027-01-25 (+7d) |  |  |
| SL1 | **Lift Station** | 2026-09-17 → 2026-08-11 (-37d) | 2026-10-20 → 2026-09-08 (-42d) |  |  |
| PRO-LS-CV-DL-50 | Material Delivery & Site Inspection for Civil Works for Lift Stations | 2026-09-17 A → 2026-08-11 A (-37d) | 2026-10-20 → 2026-09-08 A (-42d) | 70% → 100% | 37d → none |
| SL11 | **Storage Tank (TSE)** | 2026-12-20 → 2026-10-27 (-54d) | 2026-12-20 → 2026-10-27 (-54d) |  |  |
| PRO-TSE-CV-DL-60 | Material Delivery & Site Inspection for Civil Works for Storage Tank (TSE) | 2026-12-20 → 2026-10-27 (-54d) | 2026-12-20 → 2026-10-27 (-54d) |  | -33d → 25d |
| SL12 | **Gaurd Room** | 2026-12-26 → 2026-10-21 (-66d) | 2026-12-26 → 2026-10-27 (-60d) |  |  |
| PRO-GR-CV-DL-70 | Material Delivery & Site Inspection for Civil Works for Gaurd Room | 2026-12-26 → 2026-10-21 A (-66d) | 2026-12-26 → 2026-10-27 (-60d) | 0% → 90% | -73.5d → -10.3d |
| SL121 | **Fence** |  | 2026-10-20 → 2026-10-12 (-8d) |  |  |
| PRO-FE-CV-DL-80 | Material Delivery & Site Inspection for Civil Works for Fence |  | 2026-10-20 → 2026-10-12 A (-8d) | 80% → 100% | -43d → none |
| SL1211 | **Softscape and Planting Works** | 2027-01-18 → 2027-01-25 (+7d) | 2027-01-18 → 2027-01-25 (+7d) |  |  |
| PRO-FE-CV-DL-90 | Material Delivery & Site Inspection for Softscape and Planting Works | 2027-01-18 → 2027-01-25 (+7d) | 2027-01-18 → 2027-01-25 (+7d) |  | -47.5d → -53.5d |
| LL | **Long Lead Time Items** |  | 2027-04-21 → 2027-04-28 (+7d) |  |  |
| 2 | **Infrastructure Networks** | 2026-10-20 → 2026-10-27 (+7d) | 2027-03-04 → 2027-03-15 (+11d) |  |  |
| 2 | **CCTV System Wroks of Telecom Network** | 2026-10-20 → 2026-10-27 (+7d) | 2027-03-04 → 2027-03-15 (+11d) |  |  |
| 3 | **Issuance of Purchase Orders** | 2026-10-20 → 2026-10-27 (+7d) | 2026-11-11 → 2026-11-18 (+7d) |  |  |
| PRO-CTV-LL-PO-10 | Issuance of Purchase Order for Low Current Works of CCTV Complete System with All Accessories | 2026-10-20 → 2026-10-27 (+7d) | 2026-11-11 → 2026-11-18 (+7d) |  | -58d → -64d |
| 1 | **Manufacturing of Material** | 2026-11-12 → 2026-11-19 (+7d) | 2027-02-09 → 2027-02-16 (+7d) |  |  |
| PRO-CTV-LL-MF-10 | Manufacturing of Low Current Works for CCTV Complete System with All Accessories | 2026-11-12 → 2026-11-19 (+7d) | 2027-02-09 → 2027-02-16 (+7d) |  | -69d → -76d |
| 2 | **Material Shipping/Custom Clearance/Delivery** | 2027-02-10 → 2027-02-17 (+7d) | 2027-03-04 → 2027-03-14 (+10d) |  |  |
| PRO-CTV-LL-SH/DL-10 | Material Delivery for Low Current Works of CCTV Complete System with All Accessories | 2027-02-10 → 2027-02-17 (+7d) | 2027-03-04 → 2027-03-14 (+10d) |  | -58.5d → -63d |
| 4 | **Material Site Inspection** | 2027-03-04 → 2027-03-15 (+11d) | 2027-03-04 → 2027-03-15 (+11d) |  |  |
| PRO-CTV-LL-MSI-10 | Material Site Inspection for Low Current Works of CCTV Complete System with All Accessories | 2027-03-04 → 2027-03-15 (+11d) | 2027-03-04 → 2027-03-15 (+11d) |  | -58.5d → -63d |
| 1 | **Superstructure Works** |  | 2027-04-21 → 2027-04-28 (+7d) |  |  |
| SL | **Pump Stations** |  | 2027-02-13 → 2027-02-01 (-12d) |  |  |
| 2 | **Manufacturing of Material** |  | 2026-11-28 → 2026-11-17 (-11d) |  |  |
| PRO-SPS-LL-MF-10 | Manufacturing of Electromechanical Works for Pump Stations |  | 2026-11-28 → 2026-11-17 (-11d) | 35% → 46% | -16.02d → -5.09d |
| 3 | **Material Shipping/Custom Clearance/Delivery** | 2026-11-28 → 2026-11-17 (-11d) | 2027-01-02 → 2026-12-22 (-11d) |  |  |
| PRO-SPS-LL-SH/DL-10 | Material Delivery for Electromechanical Works for Pump Stations | 2026-11-28 → 2026-11-17 (-11d) | 2027-01-02 → 2026-12-22 (-11d) |  | -13.02d → -4.09d |
| 4 | **Material Site Inspection** | 2027-01-02 → 2026-12-22 (-11d) | 2027-02-13 → 2027-02-01 (-12d) |  |  |
| PRO-SPS-LL-MSI-10 | Material Site Inspection for Electromechanical Works for Pump Stations | 2027-01-02 → 2026-12-22 (-11d) | 2027-02-13 → 2027-02-01 (-12d) |  | -13.02d → -4.09d |
| SL1 | **Lift Stations** |  | 2027-03-17 → 2027-03-24 (+7d) |  |  |
| 2 | **Manufacturing of Material** | 2026-10-20 → 2026-10-27 (+7d) | 2026-12-18 → 2026-12-25 (+7d) |  |  |
| PRO-LS-LL-MF-20 | Manufacturing of Electromechanical Works for Lift Stations | 2026-10-20 → 2026-10-27 (+7d) | 2026-12-18 → 2026-12-25 (+7d) |  | -52d → -59d |
| 3 | **Material Shipping/Custom Clearance/Delivery** | 2026-12-19 → 2026-12-26 (+7d) | 2027-01-21 → 2027-01-28 (+7d) |  |  |
| PRO-LS-LL-SH/DL-20 | Material Delivery for Electromechanical Works for Lift Stations | 2026-12-19 → 2026-12-26 (+7d) | 2027-01-21 → 2027-01-28 (+7d) |  | -44d → -50d |
| 4 | **Material Site Inspection** | 2027-01-23 → 2027-01-30 (+7d) | 2027-03-17 → 2027-03-24 (+7d) |  |  |
| PRO-LS-LL-MSI-20 | Material Site Inspection for Electromechanical Works for Lift Stations | 2027-01-23 → 2027-01-30 (+7d) | 2027-03-17 → 2027-03-24 (+7d) |  | -44d → -50d |
| SL2 | **Storage Tank (TSE)** | 2026-10-20 → 2026-10-27 (+7d) | 2027-04-21 → 2027-04-28 (+7d) |  |  |

| ID | Task | Start | Finish | Complete | Total float | Predecessors |
| --- | --- | --- | --- | --- | --- | --- |
| 1 | **Issuance of Purchase Orders** | 2026-10-20 → 2026-10-27 (+7d) | 2026-11-23 → 2026-11-30 (+7d) |  |  |  |
| PRO-TSE-LL-PO-30 | Issuance of Purchase Order for Electromechanical Works for Storage Tank (TSE) | 2026-10-20 → 2026-10-27 (+7d) | 2026-11-23 → 2026-11-30 (+7d) |  | -73.75d → -79.75d |  |
| 2 | **Manufacturing of Material** | 2026-11-24 → 2026-12-01 (+7d) | 2027-01-22 → 2027-01-29 (+7d) |  |  |  |
| PRO-TSE-LL-MF-30 | Manufacturing of Electromechanical Works for Storage Tank (TSE) | 2026-11-24 → 2026-12-01 (+7d) | 2027-01-22 → 2027-01-29 (+7d) |  | -87d → -94d |  |
| 3 | **Material Shipping/Custom Clearance/Delivery** | 2027-01-23 → 2027-01-30 (+7d) | 2027-03-03 → 2027-03-15 (+12d) |  |  |  |
| PRO-TSE-LL-SH/DL-30 | Material Delivery for Electromechanical Works for Storage Tank (TSE) | 2027-01-23 → 2027-01-30 (+7d) | 2027-03-03 → 2027-03-15 (+12d) |  | -74d → -80d |  |
| 4 | **Material Site Inspection** | 2027-03-04 → 2027-03-16 (+12d) | 2027-04-21 → 2027-04-28 (+7d) |  |  |  |
| PRO-TSE-LL-MSI-30 | Material Site Inspection for Electromechanical Works for Storage Tank (TSE) | 2027-03-04 → 2027-03-16 (+12d) | 2027-04-21 → 2027-04-28 (+7d) |  | -74d → -80d |  |
| CON | **Construction Works** |  | 2027-05-31 → 2027-05-26 (-5d) |  |  |  |
| INF | **Infrastructure Networks** |  | 2027-05-29 → 2027-05-26 (-3d) |  |  |  |
| EW | **Earthworks** |  | 2026-10-22 → 2026-10-27 (+5d) |  |  |  |
| EW | **Earthworks** |  | 2026-10-22 → 2026-10-27 (+5d) |  |  |  |
| CO-EW-110_R | Embankments Works Upto Design Level for Earthworks(Remaining) |  | 2026-10-22 → 2026-10-27 (+5d) | 84% → 91% | -72.62d → -72.5d |  |
| CO-EW-200_R | Excavation Works Upto Design Level for Earthworks-P1(Remaining) |  | 2026-10-21 → 2026-10-27 (+6d) | 84% → 95% | -72.62d → -72.5d |  |
| CO-EW-210_R | Excavation Works Upto Design Level for Earthworks-P2(Remaining) |  | 2026-10-21 → 2026-10-27 (+6d) | 80% → 95% | -72.62d → -72.5d |  |
| CO-EW-220_R | Excavation Works Upto Design Level for Earthworks-P3(Remaining) |  | 2026-10-22 → 2026-10-27 (+5d) | 80% → 95% | -72.62d → -72.5d |  |
| SD | **Storm Drainage Network** |  | 2027-01-19 → 2027-01-26 (+7d) |  |  |  |
| MH25-MH12 | **FROM MH-25:MH-12** |  | 2026-12-16 → 2026-12-22 (+6d) |  |  |  |
| ML | **Main Line Sections** |  | 2026-11-05 → 2026-11-12 (+7d) |  |  |  |
| CO-SD-ML-100 | Trench Excavation and Bedding Works for Main Lines of Storm Drainage Network |  | 2026-10-31 → 2026-11-07 (+7d) | 4% → 10% | -72.62d → -72.5d |  |
| CO-SD-ML-120 | Pipes Laying Works for Main Lines of Storm Drainage Network |  | 2026-10-31 → 2026-11-07 (+7d) | 3% → 5% | -72.62d → -71.03d |  |
| CO-SD-ML-130 | Trench Backfilling and Compaction Works for Main Lines of Storm Drainage Network |  | 2026-11-05 → 2026-11-12 (+7d) |  | -72.62d → -71.03d |  |
| MH | **Manholes** |  | 2026-11-23 → 2026-11-29 (+6d) |  |  |  |
| CO-SD-MH-180 | Trench Excavation and Bedding Works for Manholes of Storm Drainage Network |  | 2026-11-02 → 2026-11-08 (+6d) | 12% → 20% | -63.88d → -68.81d |  |
| CO-SD-MH-190 | Install RC Footing Works for Manholes of Storm Drainage Network | 2026-11-02 → 2026-11-08 (+6d) | 2026-11-10 → 2026-11-16 (+6d) |  | -63.88d → -68.81d |  |
| CO-SD-MH-200 | Install RC Wall Rings & Slab Works for Manholes of Storm Drainage Network | 2026-11-10 → 2026-11-16 (+6d) | 2026-11-15 → 2026-11-21 (+6d) |  | -63.88d → -68.81d |  |
| CO-SD-MH-220 | Backfilling Works for Manholes of Storm Drainage Network | 2026-11-15 → 2026-11-21 (+6d) | 2026-11-23 → 2026-11-29 (+6d) |  | -63.88d → -68.81d |  |
| CB | **Catch Basin Sections** | 2026-11-02 → 2026-11-08 (+6d) | 2026-12-16 → 2026-12-22 (+6d) |  |  |  |
| CO-SD-CB-140 | Trench Excavation and Bedding Works for Catch Basins of Storm Drainage Network | 2026-11-02 → 2026-11-08 (+6d) | 2026-11-14 → 2026-11-19 (+5d) |  | -55.88d → -60.81d |  |
| CO-SD-CB-150 | Installation and Pipes Laying Connection Works for Catch Basins of Storm Drainage Network | 2026-11-23 → 2026-11-29 (+6d) | 2026-12-05 → 2026-12-10 (+5d) |  | -63.88d → -68.81d |  |
| CO-SD-CB-170 | Trench Backfilling and Compaction Works for Catch Basins of Storm Drainage Network | 2026-12-05 → 2026-12-10 (+5d) | 2026-12-16 → 2026-12-22 (+6d) |  | -63.88d → -68.81d |  |
| MH25-MH121 | **FROM MH-12:MH-01** | 2026-11-01 → 2026-11-08 (+7d) | 2027-01-19 → 2027-01-26 (+7d) |  |  |  |
| ML | **Main Line Sections** | 2026-11-01 → 2026-11-08 (+7d) | 2026-12-26 → 2027-01-02 (+7d) |  |  |  |
| CO-SD-ML-140 | Trench Excavation and Bedding Works for Main Lines of Storm Drainage Network | 2026-11-01 → 2026-11-08 (+7d) | 2026-11-16 → 2026-11-23 (+7d) |  | -66.5d → -72.5d |  |
| CO-SD-ML-150 | Pipes Laying Works for Main Lines of Storm Drainage Network | 2026-11-17 → 2026-11-24 (+7d) | 2026-12-02 → 2026-12-09 (+7d) |  | -66.5d → -72.5d |  |
| CO-SD-ML-160 | Trench Backfilling and Compaction Works for Main Lines of Storm Drainage Network | 2026-12-03 → 2026-12-10 (+7d) | 2026-12-26 → 2027-01-02 (+7d) |  | -54.5d → -60.5d |  |
| MH | **Manholes** | 2026-12-03 → 2026-12-10 (+7d) | 2027-01-09 → 2027-01-16 (+7d) |  |  |  |
| CO-SD-MH-230 | Trench Excavation and Bedding Works for Manholes of Storm Drainage Network | 2026-12-03 → 2026-12-10 (+7d) | 2026-12-13 → 2026-12-20 (+7d) |  | -66.5d → -72.5d |  |
| CO-SD-MH-240 | Install RC Footing Works for Manholes of Storm Drainage Network | 2026-12-14 → 2026-12-21 (+7d) | 2026-12-21 → 2026-12-28 (+7d) |  | -66.5d → -72.5d |  |
| CO-SD-MH-250 | Install RC Wall Rings & Slab Works for Manholes of Storm Drainage Network | 2026-12-22 → 2026-12-29 (+7d) | 2026-12-29 → 2027-01-05 (+7d) |  | -66.5d → -72.5d |  |
| CO-SD-MH-260 | Backfilling Works for Manholes of Storm Drainage Network | 2026-12-30 → 2027-01-06 (+7d) | 2027-01-09 → 2027-01-16 (+7d) |  | -66.5d → -72.5d |  |
| CB | **Catch Basin Sections** | 2026-12-16 → 2026-12-22 (+6d) | 2027-01-19 → 2027-01-26 (+7d) |  |  |  |
| CO-SD-CB-180 | Trench Excavation and Bedding Works for Catch Basins of Storm Drainage Network | 2026-12-16 → 2026-12-22 (+6d) | 2026-12-27 → 2027-01-02 (+6d) |  | -63.88d → -68.81d |  |
| CO-SD-CB-190 | Installation and Pipes Laying Connection Works for Catch Basins of Storm Drainage Network | 2026-12-27 → 2027-01-02 (+6d) | 2027-01-06 → 2027-01-12 (+6d) |  | -63.88d → -68.81d |  |
| CO-SD-CB-200 | Trench Backfilling and Compaction Works for Catch Basins of Storm Drainage Network | 2027-01-10 → 2027-01-17 (+7d) | 2027-01-19 → 2027-01-26 (+7d) |  | -66.5d → -72.5d |  |
| SW | **Sewage Network** | 2026-10-26 → 2026-10-22 (-4d) | 2027-01-05 → 2027-01-11 (+6d) |  |  |  |
| 2 | **FROM MH-18:MH-10** | 2026-10-26 → 2026-10-22 (-4d) | 2026-12-27 → 2027-01-02 (+6d) |  |  |  |
| ML | **Main Line Sections** | 2026-10-26 → 2026-10-22 (-4d) | 2026-12-16 → 2026-12-22 (+6d) |  |  |  |
| CO-SW-ML-100 | Trench Excavation and Bedding Works for Main Lines of Sewage Network | 2026-10-26 → 2026-10-22 A (-4d) | 2026-11-09 → 2026-11-15 (+6d) | 0% → 7% | -72.62d → -71.03d | ENG-SH-SW-ML-A-110, ENG-MT-SW-ML-A-110, PRO-SW-1DL-100, CO-SD-ML-130 SS+3d, CO-EW-220_R, CO-EW-110_R → ENG-SH-SW-ML-A-110, ENG-MT-SW-ML-A-110, PRO-SW-1DL-100, CO-SD-ML-130 SS+3d, CO-EW-220_R SS, CO-EW-110_R SS |
| CO-SW-ML-120 | Pipes Laying Works for Main Lines of Sewage Network | 2026-11-09 → 2026-11-15 (+6d) | 2026-11-23 → 2026-11-29 (+6d) |  | -72.62d → -71.03d |  |
| CO-SW-ML-130 | Trench Backfilling and Compaction Works for Main Lines of Sewage Network | 2026-11-23 → 2026-11-29 (+6d) | 2026-12-16 → 2026-12-22 (+6d) |  | -69.62d → -68.03d |  |
| 1 | **Manholes** | 2026-11-23 → 2026-11-29 (+6d) | 2026-12-27 → 2027-01-02 (+6d) |  |  |  |
| CO-SW-MH-160 | Excavation Works for Main Line Manholes of Sewage Network | 2026-11-23 → 2026-11-29 (+6d) | 2026-12-01 → 2026-12-07 (+6d) |  | -72.62d → -71.03d |  |
| CO-SW-MH-170 | Installation RC Footing Works for Main Line Manholes of Sewage Network | 2026-12-01 → 2026-12-07 (+6d) | 2026-12-09 → 2026-12-15 (+6d) |  | -71.62d → -70.03d |  |
| CO-SW-MH-180 | Install Grp Liner Wall Works for Main Line Manholes of Sewage Network | 2026-12-09 → 2026-12-15 (+6d) | 2026-12-17 → 2026-12-23 (+6d) |  | -71.62d → -70.03d |  |
| CO-SW-MH-190 | Pouring Grp Liner Wall Works for Main Line Manholes of Sewage Network | 2026-12-17 → 2026-12-23 (+6d) | 2026-12-22 → 2026-12-28 (+6d) |  | -68.62d → -67.03d |  |
| CO-SW-MH-200 | Backfilling Works for Main Line Manholes of Sewage Network | 2026-12-22 → 2026-12-28 (+6d) | 2026-12-27 → 2027-01-02 (+6d) |  | -68.62d → -67.03d |  |
| 1 | **FROM MH-10:MH-01** | 2026-11-09 → 2026-11-15 (+6d) | 2027-01-05 → 2027-01-11 (+6d) |  |  |  |
| ML | **Main Line Sections** | 2026-11-09 → 2026-11-15 (+6d) | 2026-12-08 → 2026-12-14 (+6d) |  |  |  |
| CO-SW-ML-140 | Trench Excavation and Bedding Works for Main Lines of Sewage Network | 2026-11-09 → 2026-11-15 (+6d) | 2026-11-16 → 2026-11-22 (+6d) |  | -70.62d → -69.03d |  |
| CO-SW-ML-150 | Pipes Laying Works for Main Lines of Sewage Network | 2026-11-16 → 2026-11-22 (+6d) | 2026-11-24 → 2026-11-30 (+6d) |  | -70.62d → -69.03d |  |
| CO-SW-ML-160 | Trench Backfilling and Compaction Works for Main Lines of Sewage Network | 2026-11-24 → 2026-11-30 (+6d) | 2026-12-08 → 2026-12-14 (+6d) |  | -70.62d → -69.03d |  |
| 1 | **Manholes** | 2026-12-01 → 2026-12-07 (+6d) | 2027-01-05 → 2027-01-11 (+6d) |  |  |  |
| CO-SW-MH-210 | Excavation Works for Main Line Manholes of Sewage Network | 2026-12-01 → 2026-12-07 (+6d) | 2026-12-10 → 2026-12-16 (+6d) |  | -72.62d → -71.03d |  |
| CO-SW-MH-220 | Installation RC Footing Works for Main Line Manholes of Sewage Network | 2026-12-10 → 2026-12-16 (+6d) | 2026-12-19 → 2026-12-24 (+5d) |  | -72.62d → -71.03d |  |
| CO-SW-MH-230 | Install Grp Liner Wall Works for Main Line Manholes of Sewage Network | 2026-12-19 → 2026-12-24 (+5d) | 2026-12-27 → 2027-01-02 (+6d) |  | -72.62d → -71.03d |  |
| CO-SW-MH-240 | Pouring Grp Liner Wall Works for Main Line Manholes of Sewage Network | 2026-12-27 → 2027-01-02 (+6d) | 2026-12-31 → 2027-01-06 (+6d) |  | -72.62d → -71.03d |  |
| CO-SW-MH-250 | Backfilling Works for Main Line Manholes of Sewage Network | 2026-12-31 → 2027-01-06 (+6d) | 2027-01-05 → 2027-01-11 (+6d) |  | -72.62d → -71.03d |  |
| PW | **Potable Water Network** | 2027-01-10 → 2026-10-21 (-81d) |  |  |  |  |
| ML | **Main Line Sections** | 2027-01-10 → 2026-10-21 (-81d) | 2027-02-07 → 2027-01-30 (-8d) |  |  |  |

| ID | Task | Start | Finish | Complete | Total float | Predecessors |
| --- | --- | --- | --- | --- | --- | --- |
| CO-PW-ML-100 | Trench Excavation and Bedding Works for Main Lines of Potable Water Network | 2027-01-10 → 2026-10-21 A (-81d) | 2027-01-19 → 2027-01-11 (-8d) | 0% → 3% | -77d → -70.03d | ENG-SH-PW-ML-A-110, ENG-MT-PW-ML-A-100, PRO-PW-1DL-100_R, PRO-R25-PW-DL-100_R, CO-SW-ML-130, CO-SW-MH-250, PRO-PW-MF-100_R, CO-SW-MH-250 FF → ENG-SH-PW-ML-A-110, ENG-MT-PW-ML-A-100, PRO-PW-1DL-100_R SS, PRO-R25-PW-DL-100_R SS, CO-SW-ML-130 FF, PRO-PW-MF-100_R, CO-SW-MH-250 FF |
| CO-PW-ML-110 | Pipes Laying and accessories for Main Lines of Potable Water Network | 2027-01-19 → 2027-01-11 (-8d) | 2027-01-28 → 2027-01-20 (-8d) |  | -77d → -70.03d | CO-PW-ML-100 → CO-PW-ML-100, PRO-R25-PW-DL-100_R FF |
| CO-PW-ML-130 | Trench Backfilling and Compaction Works for Main Lines of Potable Water Network | 2027-01-28 → 2027-01-20 (-8d) | 2027-02-07 → 2027-01-30 (-8d) |  | -75d → -68.03d |  |
| VC | **Valve Chamber** | 2027-02-07 → 2027-02-08 (+1d) |  |  |  |  |
| CO-PW-VC-170 | Excavation Works for Main Line Valves and Valve Chambers of Potable Water Network | 2027-02-07 → 2027-02-08 (+1d) | 2027-02-09 → 2027-02-10 (+1d) |  | -75d → -75.5d |  |
| CO-PW-VC-190 | Installation Works for Valves of Potable Water Network | 2027-02-16 → 2027-02-17 (+1d) |  |  | -75d → -75.5d |  |
| CO-PW-VC-220 | Backfilling Works for Main Line Valves and Valve Chambers of Potable Water Network | 2027-02-27 → 2027-02-28 (+1d) |  |  | -75d → -75.5d |  |
| FH | **Fire Hydrant** | 2027-03-03 → 2027-03-04 (+1d) |  |  |  |  |
| CO-PW-FH-140 | Excavation Works for Fire Hydrants of Potable Water Network | 2027-03-03 → 2027-03-04 (+1d) |  |  | -75d → -75.5d |  |
| CO-PW-FH-150 | Installation Works for Fire Hydrant of Potable Water Network | 2027-03-16 → 2027-03-17 (+1d) |  |  | -75d → -75.5d |  |
| CO-PW-FH-160 | Trench Backfilling and Compaction Works for Fire Hydrants of Potable Water Network | 2027-03-24 → 2027-03-25 (+1d) |  |  | -75d → -75.5d |  |
| IR | **Irrigation Network** | 2027-01-19 → 2027-01-11 (-8d) |  |  |  |  |
| ML | **Main Line Pipes** | 2027-01-19 → 2027-01-11 (-8d) |  |  |  |  |
| CO-IR-ML-100 | Trench Excavation and Bedding Works for Main Lines of Irrigation Network | 2027-01-19 → 2027-01-11 (-8d) | 2027-01-31 → 2027-01-23 (-8d) |  | -70.5d → -63.52d |  |
| CO-IR-ML-110 | Pipes Laying Works for Main Lines of Irrigation Network | 2027-01-31 → 2027-01-23 (-8d) | 2027-02-11 → 2027-02-03 (-8d) |  | -70.5d → -63.52d |  |
| CO-IR-ML-120 | Installation Works for Main Line Valves of Irrigation Network | 2027-02-13 → 2027-02-17 (+4d) | 2027-02-25 → 2027-03-02 (+5d) |  | -70.5d → -73.5d |  |
| CO-IR-ML-130 | Trench Backfilling and Compaction Works for Main Lines of Irrigation Network | 2027-03-03 → 2027-03-04 (+1d) |  |  | -74d → -74.5d |  |
| CO-IR-ML-140 | Installation Works for Bulbblers And Sprinklers of Irrigation Network | 2027-03-18 → 2027-03-20 (+2d) |  |  | -67d → -67.5d |  |
| TSE | **Treated Sewage Effluent (Tse)** | 2027-01-19 → 2027-01-11 (-8d) |  |  |  |  |
| ML | **Main Line Pipes** | 2027-01-19 → 2027-01-11 (-8d) |  |  |  |  |
| CO-TSE-ML-150 | Trench Excavation and Bedding Works for Main Lines of Treated Sewage Effluent (Tse) | 2027-01-19 → 2027-01-11 (-8d) | 2027-01-30 → 2027-01-21 (-9d) |  | -69d → -62.02d |  |
| CO-TSE-ML-160 | Pipes Laying Works for Main Lines of Treated Sewage Effluent (Tse) | 2027-01-31 → 2027-01-23 (-8d) | 2027-02-11 → 2027-02-02 (-9d) |  | -69d → -62.02d |  |
| CO-TSE-ML-170 | Installation Works for Main Line Valves of Treated Sewage Effluent (Tse) | 2027-02-13 → 2027-02-17 (+4d) | 2027-02-24 → 2027-03-01 (+5d) |  | -69.5d → -72.5d |  |
| CO-TSE-ML-180 | Trench Backfilling and Compaction Works for Treated Sewage Effluent (Tse) | 2027-03-03 → 2027-03-04 (+1d) |  |  | -74d → -74.5d |  |
| CO-TSE-ML-190 | Installation Works for Valve and Washout Chambers of Treated Sewage Effluent (Tse) | 2027-03-18 → 2027-03-20 (+2d) |  |  | -55d → -55.5d |  |
| MV | **Medium Voltage Network** | 2027-01-28 → 2027-01-23 (-5d) | 2027-03-30 → 2027-03-23 (-7d) |  |  |  |
| CW | **Cabling Works** | 2027-01-28 → 2027-01-23 (-5d) | 2027-03-30 → 2027-03-23 (-7d) |  |  |  |
| CO-MV-ML-250 | Trench Excavation and Bedding Works for Medium Voltage Network | 2027-01-28 → 2027-01-23 (-5d) | 2027-02-11 → 2027-02-03 (-8d) |  | -77d → -71.5d |  |
| CO-MV-ML-260 | Cable Laying Works for Medium Voltage Network | 2027-02-11 → 2027-02-04 (-7d) | 2027-03-08 → 2027-02-27 (-9d) |  | -77d → -71.5d |  |
| CO-MV-ML-270 | Trench Backfilling and Compaction Works for Medium Voltage Network | 2027-03-08 → 2027-02-28 (-8d) | 2027-03-30 → 2027-03-23 (-7d) |  | -77d → -71.5d |  |
| SL | **Street Lighting Network** | 2027-01-28 → 2027-01-23 (-5d) | 2027-04-27 → 2027-04-20 (-7d) |  |  |  |
| LP | **Lighting Poles Works** | 2027-01-28 → 2027-01-23 (-5d) | 2027-03-21 → 2027-03-14 (-7d) |  |  |  |
| CO-SL-LP-300 | Foundation Excavation Works for Lighting Poles of Street Lighting Network | 2027-01-28 → 2027-01-23 (-5d) | 2027-02-07 → 2027-01-31 (-7d) |  | -74d → -68.5d |  |
| CO-SL-LP-310 | Installation Works for Lighting Poles Foundation of Street Lighting Network | 2027-02-07 → 2027-02-01 (-6d) | 2027-02-18 → 2027-02-10 (-8d) |  | -74d → -68.5d |  |
| CO-SL-LP-320 | Installation Works for Lighting Poles of Street Lighting Network | 2027-02-20 → 2027-02-10 (-10d) | 2027-03-04 → 2027-02-24 (-8d) |  | -74d → -68.5d |  |
| CO-SL-LP-210 | Backfilling Works for Lighting Poles of Street Lighting Network | 2027-03-04 → 2027-02-24 (-8d) | 2027-03-21 → 2027-03-14 (-7d) |  | -74d → -68.5d |  |
| CW | **Cabling Works** | 2027-02-07 → 2027-02-01 (-6d) | 2027-03-18 → 2027-03-08 (-10d) |  |  |  |
| CO-SL-CL-250 | Trench Excavation and Bedding Works for Street Lighting Network | 2027-02-07 → 2027-02-01 (-6d) | 2027-02-17 → 2027-02-09 (-8d) |  | -71d → -65.5d |  |
| CO-SL-CL-260 | Cable Laying Works for Street Lighting Network | 2027-02-17 → 2027-02-09 (-8d) | 2027-02-28 → 2027-02-20 (-8d) |  | -71d → -65.5d |  |
| CO-SL-CL-270 | Trench Backfilling and Compaction Works for Street Lighting Network | 2027-03-04 → 2027-02-24 (-8d) | 2027-03-18 → 2027-03-08 (-10d) |  | -74d → -68.5d |  |
| DPB | **Distrubution Panel Boards** | 2027-03-30 → 2027-03-24 (-6d) | 2027-04-27 → 2027-04-20 (-7d) |  |  |  |
| CO-SL-DB-250 | Foundation Excavation Works For Panel Boards of Street Lighting Network | 2027-03-30 → 2027-03-24 (-6d) | 2027-04-06 → 2027-03-30 (-7d) |  | -75.5d → -70d |  |
| CO-SL-DB-260 | Installation Works for Panel Board Concrete Foundations of Street Lighting Network | 2027-04-06 → 2027-03-31 (-6d) | 2027-04-13 → 2027-04-06 (-7d) |  | -75.5d → -70d |  |
| CO-SL-DB-270 | Installation Works for Lighting Panel Boards of Street Lighting Network | 2027-04-13 → 2027-04-07 (-6d) | 2027-04-20 → 2027-04-13 (-7d) |  | -75.5d → -70d |  |
| CO-SL-DB-220 | A wall of concrete blocks to install the KWH meter of Street Lighting Network | 2027-04-20 → 2027-04-14 (-6d) | 2027-04-27 → 2027-04-20 (-7d) |  | -68.5d → -63d |  |
| TE | **Telecom Network** | 2027-02-11 → 2027-02-04 (-7d) | 2027-04-11 → 2027-04-04 (-7d) |  |  |  |
| PD | **Ducts Works** | 2027-02-11 → 2027-02-04 (-7d) | 2027-03-23 → 2027-03-16 (-7d) |  |  |  |
| CO-TE-DW-100 | Trench Excavation and Bedding Works for Ducts of Telecom Network | 2027-02-11 → 2027-02-04 (-7d) | 2027-02-17 → 2027-02-09 (-8d) |  | -76.5d → -71d |  |
| CO-TE-DW-110 | Pipes Laying Works for Ducts of Telecom Network | 2027-02-17 → 2027-02-09 (-8d) | 2027-02-23 → 2027-02-15 (-8d) |  | -76.5d → -71d |  |
| CO-TE-DW-130 | Trench Backfilling and Compaction Works for Ducts of Telecom Network | 2027-02-23 → 2027-02-15 (-8d) | 2027-03-08 → 2027-02-27 (-9d) |  | -75.5d → -70d |  |
| CO-TE-DW-120 | Pouring Road Crossing Concrete Encasement | 2027-03-08 → 2027-02-28 (-8d) | 2027-03-23 → 2027-03-16 (-7d) |  | -75.5d → -70d |  |
| MH | **Manholes Works** | 2027-02-23 → 2027-02-15 (-8d) | 2027-03-24 → 2027-03-17 (-7d) |  |  |  |
| CO-TE-MH-140 | Excavation Works for Manholes of Telecom Network | 2027-02-23 → 2027-02-15 (-8d) | 2027-03-03 → 2027-02-22 (-9d) |  | -76.5d → -71d |  |
| CO-TE-MH-150 | Installation Works for Manholes of Telecom Network | 2027-03-03 → 2027-02-23 (-8d) | 2027-03-16 → 2027-03-06 (-10d) |  | -76.5d → -71d |  |
| CO-TE-MH-160 | Backfilling Works for Manholes of Telecom Network | 2027-03-16 → 2027-03-06 (-10d) | 2027-03-24 → 2027-03-17 (-7d) |  | -76.5d → -71d |  |
| DD | **CCTV System Wroks** | 2027-03-24 → 2027-03-18 (-6d) | 2027-04-11 → 2027-04-04 (-7d) |  |  |  |
| CO-TE-CTV-100 | Digging and Pulling Trenches PVC ducts , Backfilling, Excavations, of Power Cable | 2027-03-24 → 2027-03-18 (-6d) | 2027-03-30 → 2027-03-23 (-7d) |  | -76.5d → -71d |  |
| CO-TE-CTV-110 | Installation of Network Cable Cat.6A from Network switch to CCTV Camera and ACS Device | 2027-03-30 → 2027-03-24 (-6d) | 2027-04-05 → 2027-03-29 (-7d) |  | -76.5d → -71d |  |
| CO-TE-CTV-130 | Installation of Access Control System | 2027-04-05 → 2027-03-30 (-6d) | 2027-04-11 → 2027-04-04 (-7d) |  | -76.5d → -71d |  |
| RD | **Road Works** | 2027-03-14 → 2027-03-07 (-7d) | 2027-05-11 → 2027-05-09 (-2d) |  |  |  |
| 3 | **ST+1000:ST+1531** | 2027-03-14 → 2027-03-07 (-7d) | 2027-04-14 → 2027-04-12 (-2d) |  |  |  |
| RD | **Pre-Bituminous Construction** | 2027-03-14 → 2027-03-07 (-7d) | 2027-04-14 → 2027-04-12 (-2d) |  |  |  |
| CO-RD-PB-140 | Subgrade Layer for Road Works | 2027-03-14 → 2027-03-07 (-7d) | 2027-03-29 → 2027-03-27 (-2d) |  | -77d → -74.5d |  |
| CO-RD-PB-150 | Aggregate Base Course Layer for Road Works | 2027-03-30 → 2027-03-27 (-3d) | 2027-04-14 → 2027-04-12 (-2d) |  | -77d → -74.5d |  |
| 2 | **ST+500:ST+1000** | 2027-03-30 → 2027-03-28 (-2d) | 2027-04-27 → 2027-04-25 (-2d) |  |  |  |
| RD | **Pre-Bituminous Construction** | 2027-03-30 → 2027-03-28 (-2d) | 2027-04-27 → 2027-04-25 (-2d) |  |  |  |
| CO-RD-PB-120 | Subgrade Layer for Road Works | 2027-03-30 → 2027-03-28 (-2d) | 2027-04-12 → 2027-04-08 (-4d) |  | -76.3d → -73.8d |  |
| CO-RD-PB-130 | Aggregate Base Course Layer for Road Works | 2027-04-15 → 2027-04-12 (-3d) | 2027-04-27 → 2027-04-25 (-2d) |  | -77d → -74.5d |  |
| 1 | **ST+01:ST+500** | 2027-04-12 → 2027-04-08 (-4d) | 2027-05-11 → 2027-05-09 (-2d) |  |  |  |
| RD | **Pre-Bituminous Construction** | 2027-04-12 → 2027-04-08 (-4d) | 2027-05-11 → 2027-05-09 (-2d) |  |  |  |

| ID | Task | Start | Finish | Total float |
| --- | --- | --- | --- | --- |
| CO-RD-PB-100 | Subgrade Layer for Road Works | 2027-04-12 → 2027-04-08 (-4d) | 2027-04-26 → 2027-04-22 (-4d) | -76.3d → -73.8d |
| CO-RD-PB-110 | Aggregate Base Course Layer for Road Works | 2027-04-28 → 2027-04-25 (-3d) | 2027-05-11 → 2027-05-09 (-2d) | -77d → -74.5d |
| 3 | **Finishes for Infrastructure Networks** | 2027-01-05 → 2027-01-11 (+6d) | 2027-05-29 → 2027-05-26 (-3d) |  |
| 11 | **Storm Drainage Network** | 2027-01-20 → 2027-01-27 (+7d) | 2027-04-07 → 2027-04-14 (+7d) |  |
| TF | **Testing and Finishes** | 2027-01-20 → 2027-01-27 (+7d) | 2027-04-07 → 2027-04-14 (+7d) |  |
| CO-SD-ML-TF-100 | Testing Work for Pipes of Storm Drainage Network | 2027-01-20 → 2027-01-27 (+7d) | 2027-01-31 → 2027-02-07 (+7d) | -66.5d → -72.5d |
| CO-SD-CB-TF-130 | Catch Basin Internal Finishes (Benching ) for Storm Drainage Network | 2027-02-01 → 2027-02-08 (+7d) | 2027-02-14 → 2027-02-22 (+8d) | -66.5d → -72.5d |
| CO-SD-CB-TF-160 | Testing Works for Catch Basins of Storm Drainage Network | 2027-02-14 → 2027-02-23 (+9d) | 2027-03-01 → 2027-03-13 (+12d) | -66.5d → -72.5d |
| CO-SD-CB-TF-110 | Install Catch Basin Cover Works for External Finishes of Storm Drainage Network | 2027-03-01 → 2027-03-14 (+13d) | 2027-03-17 → 2027-03-24 (+7d) | -66.5d → -72.5d |
| CO-SD-MH-TF-120 | Main Manhole Internal Finishes (Benching ) for Storm Drainage Network | 2027-03-18 → 2027-03-25 (+7d) | 2027-03-29 → 2027-04-05 (+7d) | -66.5d → -72.5d |
| CO-SD-MH-TF-210 | Testing Works for Manholes of Storm Drainage Network | 2027-04-01 → 2027-04-08 (+7d) | 2027-04-07 → 2027-04-14 (+7d) | -68.5d → -74.5d |
| 10 | **Sewage Network** | 2027-01-05 → 2027-01-11 (+6d) | 2027-04-24 → 2027-04-28 (+4d) |  |
| TF | **Testing and Finishes** | 2027-01-05 → 2027-01-11 (+6d) | 2027-04-24 → 2027-04-28 (+4d) |  |
| CO-SW-TF-100 | Final Testing For Main Line of Sewage Network | 2027-01-05 → 2027-01-11 (+6d) | 2027-01-16 → 2027-01-21 (+5d) | -65.62d → -71.03d |
| CO-SW-TF-130 | Main Manhole Internal Finishes (Benching + Insulation) of Sewage Network | 2027-01-16 → 2027-01-21 (+5d) | 2027-02-09 → 2027-02-17 (+8d) | -29.62d → -35.02d |
| CO-SW-TF-110 | Install Manhole Cover Works for External Finishes of Sewage Network | 2027-04-11 → 2027-04-15 (+4d) | 2027-04-22 → 2027-04-27 (+5d) | -72.75d → -77.25d |
| CO-SW-TF-210 | Testing Works for Main Line Manholes of Sewage Network | 2027-04-19 → 2027-04-24 (+5d) | 2027-04-24 → 2027-04-28 (+4d) | -72.75d → -77.25d |
| 9 | **Potable Water Network** | 2027-04-01 → 2027-04-03 (+2d) | 2027-05-06 → 2027-05-08 (+2d) |  |
| TF | **Testing and Finishes** | 2027-04-01 → 2027-04-03 (+2d) | 2027-05-06 → 2027-05-08 (+2d) |  |
| CO-PW-TF-110 | Testing Work for Main Line of Potable Water Network | 2027-04-01 → 2027-04-03 (+2d) | 2027-04-13 → 2027-04-14 (+1d) | -75d → -75.5d |
| CO-PW-TF-120 | Fire Hydrant Finishies (S.Box + Safety + Marker Post ) of Potable Water Network |  | 2027-04-25 → 2027-04-26 (+1d) | -75d → -75.5d |
| CO-PW-TF-100 | Final Finishes works and Covers for Valves and Valve Chambers of Potable Water Network |  | 2027-05-06 → 2027-05-08 (+2d) | -75d → -75.5d |
| 13 | **Irrigation Network** | 2027-03-29 → 2027-03-30 (+1d) |  |  |
| TF | **Testing and Finishes** | 2027-03-29 → 2027-03-30 (+1d) |  |  |
| CO-IR-TF-160 | Final Testing (pressure tests) of Irrigation Network | 2027-03-29 → 2027-03-30 (+1d) |  | -67d → -67.5d |
| 1 | **Treated Sewage Effluent (Tse)** | 2027-04-12 → 2027-04-13 (+1d) | 2027-04-25 → 2027-04-26 (+1d) |  |
| TF | **Testing and Finishes** | 2027-04-12 → 2027-04-13 (+1d) | 2027-04-25 → 2027-04-26 (+1d) |  |
| CO-TSE-TF-170 | Final Testing (pressure tests) of Treated Sewage Effluent (Tse) | 2027-04-12 → 2027-04-13 (+1d) | 2027-04-25 → 2027-04-26 (+1d) | -67d → -67.5d |
| 14 | **Medium Voltage Network** | 2027-03-30 → 2027-04-06 (+7d) | 2027-04-20 → 2027-04-26 (+6d) |  |
| TT | **Termination and Testing Works** | 2027-03-30 → 2027-04-06 (+7d) | 2027-04-20 → 2027-04-26 (+6d) |  |
| CO-MV-TF-220 | Termination Works of Medium Voltage Network | 2027-03-30 → 2027-04-06 (+7d) | 2027-04-20 → 2027-04-26 (+6d) | -73.5d → -79d |
| 12 | **Street Lighting Network** | 2027-04-20 → 2027-04-14 (-6d) | 2027-05-06 → 2027-04-29 (-7d) |  |
| TR | **Termination and Testing Works** | 2027-04-20 → 2027-04-14 (-6d) | 2027-05-06 → 2027-04-29 (-7d) |  |
| CO-SL-LP-330 | Installation Works for Lighting Fixtures With Drop Wire of Street Lighting Network | 2027-04-20 → 2027-04-14 (-6d) | 2027-04-28 → 2027-04-21 (-7d) | -75.5d → -70d |
| CO-SL-TF-200 | Testing Works for Lighting Poles of Street Lighting Network | 2027-04-28 → 2027-04-22 (-6d) | 2027-05-04 → 2027-04-27 (-7d) | -67.5d → -62d |
| CO-SL-TF-220 | Termination Works For Lighting Poles Cables of Street Lighting Network | 2027-04-28 → 2027-04-22 (-6d) | 2027-05-06 → 2027-04-29 (-7d) | -69.5d → -64d |
| CO-SL-TF-230 | Termination Works For Panel Board Cables of Street Lighting Network | 2027-04-28 → 2027-04-22 (-6d) | 2027-05-06 → 2027-04-29 (-7d) | -69.5d → -64d |
| CO-SL-TF-380 | Testing Works For Panel Board Cables of Street Lighting Network | 2027-04-28 → 2027-04-22 (-6d) | 2027-05-01 → 2027-04-24 (-7d) | -64.5d → -59d |
| ES | **Earthing System Works** | 2027-04-20 → 2027-04-14 (-6d) | 2027-04-28 → 2027-04-21 (-7d) |  |
| CO-SL-ES-220 | Install Earthing System Works for Lighting Poles of Street Lighting Network | 2027-04-20 → 2027-04-14 (-6d) | 2027-04-28 → 2027-04-21 (-7d) | -75.5d → -70d |
| CO-SL-ES-230 | Install Earthing System Works for Lighting Panel Boards of Street Lighting Network | 2027-04-20 → 2027-04-14 (-6d) | 2027-04-28 → 2027-04-21 (-7d) | -75.5d → -70d |
| 3 | **Telecom Network** | 2027-04-11 → 2027-04-05 (-6d) | 2027-04-29 → 2027-05-03 (+4d) |  |
| 1 | **Testing and Finishes** | 2027-04-11 → 2027-04-05 (-6d) | 2027-04-29 → 2027-05-03 (+4d) |  |
| CO-TE-CTV-TF-110 | Smart Card Printer | 2027-04-11 → 2027-04-05 (-6d) | 2027-04-15 → 2027-04-08 (-7d) | -76.5d → -71d |
| CO-TE-CTV-TF-120 | Card Issue Work Station | 2027-04-15 → 2027-04-10 (-5d) | 2027-04-20 → 2027-04-13 (-7d) | -76.5d → -71d |
| CO-TE-CTV-TF-130 | Photographic Camera with stand | 2027-04-20 → 2027-04-14 (-6d) | 2027-04-25 → 2027-04-18 (-7d) | -76.5d → -71d |
| CO-TE-CTV-TF-140 | Interface modules with CCTV, Fire and other systems | 2027-04-25 → 2027-04-29 (+4d) | 2027-04-29 → 2027-05-03 (+4d) | -76.5d → -80d |
| 2 | **Road Works** | 2027-03-30 → 2027-03-27 (-3d) | 2027-05-29 → 2027-05-26 (-3d) |  |
| 3 | **ST+1000:ST+1531** | 2027-03-30 → 2027-03-27 (-3d) | 2027-05-23 → 2027-05-20 (-3d) |  |
| 1 | **Bituminous Construction** | 2027-04-15 → 2027-04-12 (-3d) | 2027-05-01 → 2027-04-28 (-3d) |  |
| CO-RD-B-150 | Application of Prime Coat Layer for Road Works | 2027-04-15 → 2027-04-12 (-3d) | 2027-04-22 → 2027-04-20 (-2d) | -76d → -73.5d |
| CO-RD-B-160 | Bituminous Base Courses Layers for Road Works- | 2027-04-24 → 2027-04-20 (-4d) | 2027-05-01 → 2027-04-28 (-3d) | -76d → -73.5d |
| LS | **Pavement Works** | 2027-03-30 → 2027-03-27 (-3d) | 2027-04-26 → 2027-04-22 (-4d) |  |
| CO-RD-PV-160 | Fixing of Curbstone for Sidewalks Pavement | 2027-03-30 → 2027-03-27 (-3d) | 2027-04-13 → 2027-04-10 (-3d) | -76.2d → -73.7d |
| CO-RD-PV-170 | Fixing of Interlock Tiles for Sidewalks Pavement | 2027-04-13 → 2027-04-10 (-3d) | 2027-04-26 → 2027-04-22 (-4d) | -76.2d → -73.7d |
| TS | **Traffic Signs Boards and Roads Marking** | 2027-05-02 → 2027-04-28 (-4d) | 2027-05-23 → 2027-05-20 (-3d) |  |
| CO-RD-F-RM-180 | Application of Road Marking Works For Road Works | 2027-05-02 → 2027-04-28 (-4d) | 2027-05-09 → 2027-05-06 (-3d) | -73d → -70.5d |
| CO-RD-F-TS-120 | Installation Works of Traffic Signs Boards For Road Works | 2027-05-10 → 2027-05-06 (-4d) | 2027-05-23 → 2027-05-20 (-3d) | -73d → -70.5d |
| 1 | **ST+500:ST+1000** | 2027-04-13 → 2027-04-10 (-3d) | 2027-05-27 → 2027-05-25 (-2d) |  |
| 1 | **Bituminous Construction** | 2027-05-02 → 2027-04-28 (-4d) | 2027-05-10 → 2027-05-08 (-2d) |  |
| CO-RD-B-130 | Application of Prime Coat Layer for Road Works | 2027-05-02 → 2027-04-28 (-4d) | 2027-05-05 → 2027-05-03 (-2d) | -76d → -73.5d |
| CO-RD-B-140 | Bituminous Base Courses Layers for Road Works- | 2027-05-06 → 2027-05-03 (-3d) | 2027-05-10 → 2027-05-08 (-2d) | -76d → -73.5d |
| LS | **Pavement Works** | 2027-04-13 → 2027-04-10 (-3d) | 2027-05-09 → 2027-05-05 (-4d) |  |
| CO-RD-PV-140 | Fixing of Curbstone for Sidewalks Pavement | 2027-04-13 → 2027-04-10 (-3d) | 2027-04-26 → 2027-04-22 (-4d) | -76.2d → -73.7d |
| CO-RD-PV-150 | Fixing of Interlock Tiles for Sidewalks Pavement | 2027-04-26 → 2027-04-22 (-4d) | 2027-05-09 → 2027-05-05 (-4d) | -76.2d → -73.7d |
| TS | **Traffic Signs Boards and Roads Marking** | 2027-05-12 → 2027-05-09 (-3d) | 2027-05-27 → 2027-05-25 (-2d) |  |
| CO-RD-F-RM-170 | Application of Road Marking Works For Road Works | 2027-05-12 → 2027-05-09 (-3d) | 2027-05-23 → 2027-05-20 (-3d) | -77d → -74.5d |
| CO-RD-F-TS-110 | Installation Works of Traffic Signs Boards For Road Works | 2027-05-24 → 2027-05-20 (-4d) | 2027-05-27 → 2027-05-25 (-2d) | -77d → -74.5d |
| 2 | **ST+01:ST+500** | 2027-04-26 → 2027-04-22 (-4d) | 2027-05-29 → 2027-05-26 (-3d) |  |
| 1 | **Bituminous Construction** | 2027-05-12 → 2027-05-09 (-3d) | 2027-05-27 → 2027-05-25 (-2d) |  |

| ID | Task | Start | Finish | Complete | Total float | Predecessors |
| --- | --- | --- | --- | --- | --- | --- |
| CO-RD-B-110 | Application of Prime Coat Layer for Road Works | 2027-05-12 → 2027-05-09 (-3d) | 2027-05-23 → 2027-05-20 (-3d) |  | -77d → -74.5d |  |
| CO-RD-B-120 | Bituminous Base Courses Layers for Road Works- | 2027-05-24 → 2027-05-20 (-4d) | 2027-05-27 → 2027-05-25 (-2d) |  | -77d → -74.5d |  |
| LS | **Pavement Works** | 2027-04-26 → 2027-04-22 (-4d) | 2027-05-27 → 2027-05-24 (-3d) |  |  |  |
| CO-RD-PV-120 | Fixing of Curbstone for Sidewalks Pavement | 2027-04-26 → 2027-04-22 (-4d) | 2027-05-09 → 2027-05-05 (-4d) |  | -76.3d → -73.8d |  |
| CO-RD-PV-130 | Fixing of Interlock Tiles for Sidewalks Pavement | 2027-05-09 → 2027-05-05 (-4d) | 2027-05-27 → 2027-05-24 (-3d) |  | -76.3d → -73.8d |  |
| TS | **Traffic Signs Boards and Roads Marking** | 2027-05-29 → 2027-05-25 (-4d) | 2027-05-29 → 2027-05-26 (-3d) |  |  |  |
| CO-RD-F-RM-160 | Application of Road Marking Works For Road Works | 2027-05-29 → 2027-05-25 (-4d) | 2027-05-29 → 2027-05-26 (-3d) |  | -74d → -71.5d |  |
| CO-RD-F-TS-100 | Installation Works of Traffic Signs Boards For Road Works | 2027-05-29 → 2027-05-25 (-4d) | 2027-05-29 → 2027-05-26 (-3d) |  | -74d → -71.5d |  |
| GEN | **Superstructure Work** |  | 2027-05-31 → 2027-05-11 (-20d) |  |  |  |
| 4 | **Utility Buildings** |  | 2027-05-05 → 2027-05-11 (+6d) |  |  |  |
| 4 | **Pump Station** |  | 2027-05-05 → 2027-05-11 (+6d) |  |  |  |
| 1 | **Civil work** |  | 2026-10-21 → 2026-10-26 (+5d) |  |  |  |
| 2 | **Super structure** |  | 2026-10-21 → 2026-10-26 (+5d) |  |  |  |
| CO-UB-PS-250 | curing and deshuttering formwork for pump roof | 2026-10-20 → 2026-10-25 A (+5d) | 2026-10-21 → 2026-10-26 A (+5d) | 0% → 100% | 36d → none |  |
| 2 | **Architectural work** | 2026-10-22 → 2026-10-27 (+5d) | 2026-12-01 → 2026-12-06 (+5d) |  |  |  |
| CO-UB-PS-260 | Executing Masonry Works for Pump station building | 2026-10-22 → 2026-10-27 (+5d) | 2026-10-27 → 2026-11-01 (+5d) |  | 36d → 32d |  |
| CO-UB-PS-270 | Executing Plastering Works for Pump station building | 2026-10-28 → 2026-11-02 (+5d) | 2026-11-02 → 2026-11-07 (+5d) |  | 36d → 32d |  |
| CO-UB-PS-280 | Executing Painting Works for Pump station building | 2026-11-03 → 2026-11-08 (+5d) | 2026-11-08 → 2026-11-12 (+4d) |  | 36d → 32d |  |
| CO-UB-PS-320 | Doors and windows Fixing &Stair Tiles | 2026-11-24 → 2026-11-29 (+5d) | 2026-12-01 → 2026-12-06 (+5d) |  | 40d → 36d |  |
| 3 | **Electrical work** | 2026-11-09 → 2026-11-14 (+5d) | 2027-04-29 → 2027-05-05 (+6d) |  |  |  |
| CO-UB-PS-290 | Lighting system for pump house | 2026-11-09 → 2026-11-14 (+5d) | 2026-11-14 → 2026-11-18 (+4d) |  | 36d → 32d |  |
| CO-UB-PS-300 | Wiring connection for pump house | 2026-11-15 → 2026-11-19 (+4d) | 2026-11-19 → 2026-11-24 (+5d) |  | 36d → 32d |  |
| CO-UB-PS-310 | Sockets and switches for pump house | 2026-11-21 → 2026-11-25 (+4d) | 2026-11-23 → 2026-11-28 (+5d) |  | 36d → 32d |  |
| CO-UB-PS-330 | Installation for Distribution boards for pump house | 2026-11-24 → 2026-11-29 (+5d) | 2026-12-02 → 2026-12-07 (+5d) |  | 36d → 32d |  |
| CO-UB-PS-370 | Executing Earthing and bonding for the entire system | 2027-04-20 → 2027-04-27 (+7d) | 2027-04-29 → 2027-05-05 (+6d) |  | -73.5d → -79d |  |
| 4 | **Mechanical work** | 2026-11-24 → 2026-11-29 (+5d) | 2027-05-05 → 2027-05-11 (+6d) |  |  |  |
| CO-UB-PS-340 | Executing HVAC System for Pump station building | 2026-11-24 → 2026-11-29 (+5d) | 2026-12-09 → 2026-12-14 (+5d) |  | 38d → 34d |  |
| CO-UB-PS-350 | Executing Fire Alarm System for Pump station building | 2026-11-24 → 2026-11-29 (+5d) | 2026-11-29 → 2026-12-03 (+4d) |  | 37d → 33d |  |
| CO-UB-PS-360 | Executing Fire fighting institution works(piping and wire installation) for Pump station building | 2026-11-30 → 2026-12-05 (+5d) | 2026-12-05 → 2026-12-09 (+4d) |  | 37d → 33d |  |
| CO-UB-PS-380 | Executing Fire fighting finishing works for Pump station building | 2026-12-06 → 2026-12-10 (+4d) | 2026-12-10 → 2026-12-15 (+5d) |  | 37d → 33d |  |
| CO-UB-PS-390 | Installation of pumps | 2027-04-29 → 2027-05-06 (+7d) | 2027-05-05 → 2027-05-11 (+6d) |  | -73.5d → -79d |  |
| 3 | **Lift Station** |  | 2027-01-10 → 2027-01-17 (+7d) |  |  |  |
| 1 | **Civil work** |  | 2026-11-16 → 2026-11-23 (+7d) |  |  |  |
| 2 | **Super structure** |  | 2026-11-16 → 2026-11-23 (+7d) |  |  |  |
| CO-UB-LS-290 | Formwork for Wall and columns for Lift Station |  | 2026-10-22 → 2026-10-29 (+7d) |  | 16.25d → 10.76d |  |
| CO-UB-LS-300 | Steel fixing for Wall columns |  | 2026-10-22 → 2026-10-29 (+7d) |  | 16.25d → 10.76d |  |
| CO-UB-LS-310 | pouring for Wall columns |  | 2026-10-22 → 2026-10-29 (+7d) |  | 16.25d → 10.76d |  |
| CO-UB-LS-320 | curing and deshuttering formwork for Wall columns | 2026-10-22 → 2026-10-17 A (-5d) | 2026-10-25 → 2026-11-01 (+7d) |  | 16.25d → 10.76d | CO-UB-LS-310 → CO-UB-LS-310 SS, CO-UB-LS-310 FF |
| CO-UB-LS-330 | Waterproofing for Walls columns | 2026-10-25 → 2026-11-01 (+7d) | 2026-10-29 → 2026-11-05 (+7d) |  | 16.25d → 10.76d |  |
| CO-UB-LS-340 | Formwork for pump roof | 2026-10-29 → 2026-11-05 (+7d) | 2026-11-04 → 2026-11-11 (+7d) |  | 16.25d → 10.76d |  |
| CO-UB-LS-350 | Steel fixing for pump roof | 2026-11-04 → 2026-11-11 (+7d) | 2026-11-11 → 2026-11-18 (+7d) |  | 16.25d → 10.76d |  |
| CO-UB-LS-360 | pouring for pump roof | 2026-11-11 → 2026-11-18 (+7d) | 2026-11-12 → 2026-11-19 (+7d) |  | 16.25d → 10.76d |  |
| CO-UB-LS-370 | curing and deshuttering formwork for pump roof | 2026-11-12 → 2026-11-19 (+7d) | 2026-11-16 → 2026-11-23 (+7d) |  | 16.25d → 10.76d |  |
| 2 | **Architectural work** | 2026-11-16 → 2026-11-23 (+7d) | 2026-12-03 → 2026-12-10 (+7d) |  |  |  |
| CO-UB-LS-380 | Executing Masonry Works for Pump station building | 2026-11-16 → 2026-11-23 (+7d) | 2026-11-24 → 2026-12-01 (+7d) |  | 16.25d → 10.76d |  |
| CO-UB-LS-390 | Executing Plastering Works for Pump station building | 2026-11-24 → 2026-12-01 (+7d) | 2026-12-03 → 2026-12-10 (+7d) |  | 16.25d → 10.76d |  |
| 3 | **Electrical work** | 2026-12-03 → 2026-12-10 (+7d) | 2027-01-10 → 2027-01-17 (+7d) |  |  |  |
| CO-UB-LS-400 | Lighting system for pump house | 2026-12-03 → 2026-12-10 (+7d) | 2026-12-13 → 2026-12-20 (+7d) |  | 16.25d → 10.76d |  |
| CO-UB-LS-420 | Wiring connection for pump house | 2026-12-13 → 2026-12-20 (+7d) | 2026-12-20 → 2026-12-27 (+7d) |  | 16.25d → 10.76d |  |
| CO-UB-LS-440 | Sockets and switches for pump house | 2026-12-20 → 2026-12-27 (+7d) | 2026-12-27 → 2027-01-03 (+7d) |  | 16.25d → 10.76d |  |
| CO-UB-LS-460 | Installation for Distribution boards for pump house | 2026-12-27 → 2027-01-03 (+7d) | 2027-01-03 → 2027-01-10 (+7d) |  | 16.25d → 10.76d |  |
| CO-UB-LS-480 | Executing Earthing and bonding for the entire system | 2027-01-03 → 2027-01-10 (+7d) | 2027-01-10 → 2027-01-17 (+7d) |  | 16.25d → 10.76d |  |
| 4 | **Mechanical work** | 2026-12-03 → 2026-12-10 (+7d) | 2027-01-07 → 2027-01-14 (+7d) |  |  |  |
| CO-UB-LS-410 | Internal pipe installation | 2026-12-03 → 2026-12-10 (+7d) | 2026-12-13 → 2026-12-20 (+7d) |  | 18.25d → 12.76d |  |
| CO-UB-LS-430 | Guide rails & lifting chains installation | 2026-12-13 → 2026-12-20 (+7d) | 2026-12-21 → 2026-12-28 (+7d) |  | 18.25d → 12.76d |  |
| CO-UB-LS-450 | ExeValve installation | 2026-12-21 → 2026-12-28 (+7d) | 2026-12-29 → 2027-01-05 (+7d) |  | 18.25d → 12.76d |  |
| CO-UB-LS-470 | Installation of pumps | 2026-12-29 → 2027-01-05 (+7d) | 2027-01-07 → 2027-01-14 (+7d) |  | 18.25d → 12.76d |  |
| 5 | **Potable Water Tank** | 2026-12-21 → 2026-10-21 (-61d) | 2027-03-17 → 2026-12-29 (-78d) |  |  |  |
| 1 | **Eearth Work** | 2026-12-21 → 2026-10-21 (-61d) | 2027-01-03 → 2026-10-26 (-69d) |  |  |  |
| CO-UB-PWT-100 | Excavation work for tank foundation tank formation level | 2026-12-21 → 2026-10-21 A (-61d) | 2026-12-28 → 2026-10-24 A (-65d) | 0% → 100% | -34d → none | ENG-SH-ST-A-180, PRO-TSE-CV-1DL-50, PRO-TSE-CV-DL-60 → ENG-SH-ST-A-180 |
| CO-UB-PWT-110 | Soil replacement Up to tank formation level | 2026-12-29 → 2026-10-24 A (-66d) | 2027-01-03 → 2026-10-26 A (-69d) | 0% → 100% | -34d → none |  |
| 2 | **Structural Work** | 2027-01-04 → 2026-10-27 (-69d) | 2027-01-20 → 2026-11-14 (-67d) |  |  |  |
| CO-UB-PWT-120 | Plain Concrete works | 2027-01-04 → 2026-10-27 (-69d) | 2027-01-06 → 2026-10-31 (-67d) |  | -34d → 24.9d | CO-UB-PWT-110 → PRO-TSE-CV-1DL-50, PRO-TSE-CV-DL-60, CO-UB-PWT-110 |
| CO-UB-PWT-130 | Form work for Tank Foundation | 2027-01-07 → 2026-10-31 (-68d) | 2027-01-12 → 2026-11-05 (-68d) |  | -34d → 24.9d |  |
| CO-UB-PWT-140 | Steel Reinforcement work for Tank Foundation | 2027-01-13 → 2026-11-05 (-69d) | 2027-01-19 → 2026-11-12 (-68d) |  | -34d → 24.9d |  |
| CO-UB-PWT-150 | Casting concrete for Tank Foundation | 2027-01-20 → 2026-11-12 (-69d) | 2027-01-20 → 2026-11-14 (-67d) |  | -34d → 24.9d |  |
| 3 | **Tank Shell Erection&Roof Installation** | 2027-01-21 → 2026-11-14 (-68d) | 2027-02-18 → 2026-12-09 (-71d) |  |  |  |
| CO-UB-PWT-160 | Bottom ring installation | 2027-01-21 → 2026-11-14 (-68d) | 2027-01-27 → 2026-11-21 (-67d) |  | -34d → 24.9d |  |
| CO-UB-PWT-170 | shell erection | 2027-01-28 → 2026-11-21 (-68d) | 2027-02-06 → 2026-11-30 (-68d) |  | -34d → 24.9d |  |
| CO-UB-PWT-180 | Aluminum dome / steel roof installation | 2027-02-07 → 2026-11-30 (-69d) | 2027-02-18 → 2026-12-09 (-71d) |  | -34d → 24.9d |  |

| ID | Task | Start | Finish | Complete | Total float |
| --- | --- | --- | --- | --- | --- |
| 4 | **Mechanical Work&Accessories** | 2027-02-18 → 2026-12-09 (-71d) | 2027-03-17 → 2026-12-29 (-78d) |  |  |
| CO-UB-PWT-190 | Inlet / outlet piping connections | 2027-02-18 → 2026-12-09 (-71d) | 2027-02-27 → 2026-12-16 (-73d) |  | -34d → 24.9d |
| CO-UB-PWT-200 | installation Valves | 2027-02-28 → 2026-12-16 (-74d) | 2027-03-08 → 2026-12-23 (-75d) |  | -34d → 24.9d |
| CO-UB-PWT-210 | Ladders, platforms & handrails | 2027-03-13 → 2026-12-23 (-80d) | 2027-03-17 → 2026-12-29 (-78d) |  | -34d → 24.9d |
| 2 | **IrrigationTank** |  | 2026-12-20 → 2026-12-15 (-5d) |  |  |
| 1 | **Eearth Work** |  | 2026-10-31 → 2026-10-26 (-5d) |  |  |
| CO-UB-IRT-140 | Excavation work for tank foundation tank formation level |  | 2026-10-25 → 2026-10-21 A (-4d) | 30% → 100% | 32.75d → none |
| CO-UB-IRT-150 | Soil replacement Up to tank formation level | 2026-10-25 → 2026-10-21 A (-4d) | 2026-10-31 → 2026-10-26 A (-5d) | 0% → 100% | 32.75d → none |
| 2 | **Structural Work** | 2026-10-31 → 2026-10-27 (-4d) | 2026-11-17 → 2026-11-12 (-5d) |  |  |
| CO-UB-IRT-160 | Plain Concrete works | 2026-10-31 → 2026-10-27 (-4d) | 2026-11-03 → 2026-10-29 (-5d) |  | 32.75d → 36d |
| CO-UB-IRT-170 | Form work for Tank Foundation | 2026-11-03 → 2026-10-31 (-3d) | 2026-11-10 → 2026-11-05 (-5d) |  | 32.75d → 36d |
| CO-UB-IRT-180 | Steel Reinforcement work for Tank Foundation | 2026-11-10 → 2026-11-07 (-3d) | 2026-11-16 → 2026-11-11 (-5d) |  | 32.75d → 36d |
| CO-UB-IRT-190 | Casting concrete for Tank Foundation | 2026-11-16 → 2026-11-12 (-4d) | 2026-11-17 → 2026-11-12 (-5d) |  | 32.75d → 36d |
| 3 | **Tank Shell Erection&Roof Installation** | 2026-11-17 → 2026-11-14 (-3d) | 2026-12-08 → 2026-12-03 (-5d) |  |  |
| CO-UB-IRT-200 | Bottom ring installation | 2026-11-17 → 2026-11-14 (-3d) | 2026-11-24 → 2026-11-19 (-5d) |  | 32.75d → 36d |
| CO-UB-IRT-210 | shell erection | 2026-11-24 → 2026-11-21 (-3d) | 2026-12-01 → 2026-11-26 (-5d) |  | 32.75d → 36d |
| CO-UB-IRT-220 | Aluminum dome / steel roof installation | 2026-12-01 → 2026-11-28 (-3d) | 2026-12-08 → 2026-12-03 (-5d) |  | 32.75d → 36d |
| 4 | **Mechanical Work&Accessories** | 2026-12-08 → 2026-12-05 (-3d) | 2026-12-20 → 2026-12-15 (-5d) |  |  |
| CO-UB-IRT-230 | Inlet / outlet piping connections | 2026-12-08 → 2026-12-05 (-3d) | 2026-12-13 → 2026-12-08 (-5d) |  | 32.75d → 36d |
| CO-UB-IRT-240 | installation Valves | 2026-12-13 → 2026-12-09 (-4d) | 2026-12-17 → 2026-12-13 (-4d) |  | 32.75d → 36d |
| CO-UB-IRT-250 | Ladders, platforms & handrails | 2026-12-17 → 2026-12-14 (-3d) | 2026-12-20 → 2026-12-15 (-5d) |  | 32.75d → 36d |
| 1 | **Control Room** |  | 2027-01-23 → 2027-01-16 (-7d) |  |  |
| 5 | **Civil Work** |  | 2026-11-07 → 2026-10-31 (-7d) |  |  |
| CO-UB-CR-130 | Pouring R.C Columns For Control Room | 2026-10-20 A | 2026-10-28 → 2026-10-22 A (-6d) | 0% → 100% | 23d → none |
| CO-UB-CR-140 | Pouring Beams and Slab For Control Room | 2026-10-29 → 2026-10-24 A (-5d) | 2026-11-07 → 2026-10-31 (-7d) | 0% → 50% | 23d → 29d |
| 6 | **Finishing Work** | 2026-11-08 → 2026-11-01 (-7d) | 2027-01-23 → 2027-01-16 (-7d) |  |  |
| 1 | **Architictural work** | 2026-11-08 → 2026-11-01 (-7d) | 2026-12-23 → 2026-12-16 (-7d) |  |  |
| CO-UB-CR-150 | Brick Work For Control Room | 2026-11-08 → 2026-11-01 (-7d) | 2026-11-17 → 2026-11-10 (-7d) |  | 23d → 29d |
| CO-UB-CR-160 | Thermal & Moisture Protection Work for Control Room | 2026-11-18 → 2026-11-11 (-7d) | 2026-11-25 → 2026-11-18 (-7d) |  | 23d → 29d |
| CO-UB-CR-200 | Install For Curtian Wall and Windows and Doors | 2026-11-26 → 2026-11-19 (-7d) | 2026-12-05 → 2026-11-28 (-7d) |  | 23d → 29d |
| CO-UB-CR-240 | External Finshing Work (Walls and Floor) | 2026-12-06 → 2026-11-29 (-7d) | 2026-12-14 → 2026-12-07 (-7d) |  | 23d → 29d |
| CO-UB-CR-250 | Internal Finshing Work (Walls,Floor and Ceiling) | 2026-12-15 → 2026-12-08 (-7d) | 2026-12-23 → 2026-12-16 (-7d) |  | 23d → 29d |
| 3 | **Mechanical Work** | 2026-11-18 → 2026-11-11 (-7d) | 2027-01-04 → 2026-12-28 (-7d) |  |  |
| 3 | **HVAC System** | 2026-11-18 → 2026-11-11 (-7d) | 2027-01-04 → 2026-12-28 (-7d) |  |  |
| CO-UB-CR-170 | Install of Refrigerant Piping ( fabricated metal ducts with flanges complete with supports, vanes, dampers ) | 2026-11-18 → 2026-11-11 (-7d) | 2026-11-22 → 2026-11-15 (-7d) |  | 36d → 42d |
| CO-UB-CR-260 | Install of Mini split actual capacity 2 Ton and Ducted split actual capacity 4 Ton | 2026-12-24 → 2026-12-17 (-7d) | 2026-12-31 → 2026-12-24 (-7d) |  | 34d → 40d |
| CO-UB-CR-310 | Install of Air Grills 150mm x150mm and Air Diffuser 600mm x 600mm | 2027-01-02 → 2026-12-26 (-7d) | 2027-01-04 → 2026-12-28 (-7d) |  | 34d → 40d |
| 4 | **Fire Fitting System** | 2026-11-23 → 2026-11-16 (-7d) | 2026-12-27 → 2026-12-20 (-7d) |  |  |
| CO-UB-CR-180 | Installation & Testing of 2 hours Fire rated system for closing the openings between rooms with help of Rock wool | 2026-11-23 → 2026-11-16 (-7d) | 2026-11-26 → 2026-11-19 (-7d) |  | 36d → 42d |
| CO-UB-CR-270 | Install Fire Extinguishers | 2026-12-24 → 2026-12-17 (-7d) | 2026-12-27 → 2026-12-20 (-7d) |  | 41d → 47d |
| 4 | **Electrical Work** | 2026-11-28 → 2026-11-21 (-7d) | 2027-01-17 → 2027-01-10 (-7d) |  |  |
| 1 | **LV Power** | 2026-12-24 → 2026-12-17 (-7d) | 2027-01-10 → 2027-01-03 (-7d) |  |  |
| CO-UB-CR-190 | Install of Distribution board For Control Room | 2026-12-24 → 2026-12-17 (-7d) | 2026-12-29 → 2026-12-22 (-7d) |  | 29d → 35d |
| CO-UB-CR-220 | Install of Earting Cable for Control Room | 2026-12-30 → 2026-12-23 (-7d) | 2027-01-04 → 2026-12-28 (-7d) |  | 29d → 35d |
| CO-UB-CR-280 | Install of Socket outlet and LED Lighting | 2027-01-05 → 2026-12-29 (-7d) | 2027-01-10 → 2027-01-03 (-7d) |  | 29d → 35d |
| 3 | **Fire Detection And Alarm System** | 2026-11-28 → 2026-11-21 (-7d) | 2027-01-17 → 2027-01-10 (-7d) |  |  |
| CO-UB-CR-210 | Install of 2C x 1.5 Sqm FR Rated Armored - Cable For Loop Wiring | 2026-11-28 → 2026-11-21 (-7d) | 2026-12-02 → 2026-11-25 (-7d) |  | 36d → 42d |
| CO-UB-CR-230 | Install of Transmission Communication cable - Fiber Optics 12Core | 2026-12-03 → 2026-11-26 (-7d) | 2026-12-08 → 2026-12-01 (-7d) |  | 36d → 42d |
| CO-UB-CR-290 | Install of power supply system for fire alarm control panel | 2026-12-24 → 2026-12-17 (-7d) | 2026-12-29 → 2026-12-22 (-7d) |  | 23d → 29d |
| CO-UB-CR-300 | Install of Fire Alarm Control panel | 2026-12-30 → 2026-12-23 (-7d) | 2027-01-05 → 2026-12-29 (-7d) |  | 23d → 29d |
| CO-UB-CR-320 | Installation of the addressable manual call point with operation safety glass breaking | 2027-01-06 → 2026-12-30 (-7d) | 2027-01-09 → 2027-01-02 (-7d) |  | 23d → 29d |
| CO-UB-CR-330 | Install of the photoelectric heat & smoke detector | 2027-01-10 → 2027-01-03 (-7d) | 2027-01-12 → 2027-01-05 (-7d) |  | 23d → 29d |
| CO-UB-CR-340 | Install of Sounder With Beacon | 2027-01-10 → 2027-01-03 (-7d) | 2027-01-12 → 2027-01-05 (-7d) |  | 23d → 29d |
| CO-UB-CR-350 | Install of Addressable Control module | 2027-01-13 → 2027-01-06 (-7d) | 2027-01-17 → 2027-01-10 (-7d) |  | 23d → 29d |
| 2 | **Furnitures work** | 2027-01-18 → 2027-01-11 (-7d) | 2027-01-23 → 2027-01-16 (-7d) |  |  |
| CO-UB-CR-360 | Office Chairs,Tables and Stand | 2027-01-18 → 2027-01-11 (-7d) | 2027-01-23 → 2027-01-16 (-7d) |  | 23d → 29d |
| ML | **Softscape and Planting Works** | 2027-02-17 → 2027-02-25 (+8d) | 2027-04-11 → 2027-04-18 (+7d) |  |  |
| 1 | **Planting Beds Preparation** | 2027-02-17 → 2027-02-25 (+8d) | 2027-03-21 → 2027-03-28 (+7d) |  |  |
| CO-LS-PL-100 | Excavation of planting beds | 2027-02-17 → 2027-02-25 (+8d) | 2027-02-27 → 2027-03-08 (+9d) |  | -71.5d → -77.5d |
| CO-LS-PL-110 | Supply & placement of suitable topsoil | 2027-02-28 → 2027-03-13 (+13d) | 2027-03-13 → 2027-03-20 (+7d) |  | -71.5d → -77.5d |
| CO-LS-PL-120 | Soil improvement (fertilizer, compost, additives) | 2027-03-14 → 2027-03-21 (+7d) | 2027-03-21 → 2027-03-28 (+7d) |  | -71.5d → -77.5d |
| 2 | **Supports & Protection** | 2027-03-22 → 2027-03-29 (+7d) | 2027-03-28 → 2027-04-04 (+7d) |  |  |
| CO-LS-PL-130 | installation of plant supports / stakes | 2027-03-22 → 2027-03-29 (+7d) | 2027-03-24 → 2027-03-31 (+7d) |  | -71.5d → -77.5d |
| CO-LS-PL-140 | Ties and protection materials | 2027-03-25 → 2027-04-01 (+7d) | 2027-03-28 → 2027-04-04 (+7d) |  | -71.5d → -77.5d |
| 3 | **Plant Supply** | 2027-03-29 → 2027-04-05 (+7d) | 2027-03-31 → 2027-04-07 (+7d) |  |  |
| CO-LS-PL-150 | installation of trees | 2027-03-29 → 2027-04-05 (+7d) | 2027-03-31 → 2027-04-07 (+7d) |  | -71.5d → -77.5d |
| 4 | **Site Furnishings** | 2027-04-01 → 2027-04-08 (+7d) | 2027-04-11 → 2027-04-18 (+7d) |  |  |
| CO-LS-PL-160 | installation of Seating benches | 2027-04-01 → 2027-04-08 (+7d) | 2027-04-04 → 2027-04-11 (+7d) |  | -71.5d → -77.5d |
| CO-LS-PL-170 | tone boulders placement & fixing Works | 2027-04-05 → 2027-04-12 (+7d) | 2027-04-07 → 2027-04-14 (+7d) |  | -71.5d → -77.5d |
| CO-LS-PL-180 | Gravel Works | 2027-04-08 → 2027-04-15 (+7d) | 2027-04-11 → 2027-04-18 (+7d) |  | -71.5d → -77.5d |

| ID | Task | Start | Finish | Complete | Total float | Predecessors |
| --- | --- | --- | --- | --- | --- | --- |
| 1 | **Fence and Gaurd Room** |  | 2027-05-31 → 2027-05-10 (-21d) |  |  |  |
| 1 | **Gaurd Room Work** | 2026-12-26 → 2026-10-20 (-67d) | 2027-05-31 → 2027-03-15 (-77d) |  |  |  |
| 1 | **Civil Work** | 2026-12-26 → 2026-10-20 (-67d) | 2027-02-11 → 2026-12-01 (-72d) |  |  |  |
| A1000 | Excavation Work For Gaurd Room Foundation | 2026-12-26 → 2026-10-20 A (-67d) | 2027-01-02 → 2026-10-29 (-65d) | 0% → 70% | -73.5d → -12.4d | MS-CF-MOB, ENG-SH-GR-A-190, PRO-GR-CV-1DL-60, PRO-GR-CV-DL-70 → MS-CF-MOB, ENG-SH-GR-A-190, PRO-GR-CV-1DL-60, PRO-GR-CV-DL-70 FF |
| A1010 | Pouring for Plain Concrete | 2027-01-03 → 2026-10-23 A (-72d) | 2027-01-06 → 2026-10-29 (-69d) | 0% → 70% | -73.5d → -12.4d | A1000 → A1000 SS, A1000 FF |
| A1020 | Pouring R.C Footing For Gaurd Room | 2027-01-07 → 2026-10-25 A (-74d) | 2027-01-19 → 2026-11-09 (-71d) | 0% → 10% | -73.5d → -12.4d | A1010 → A1010 SS, A1010 FF |
| A1030 | Pouring R.C Columns For Gaurd Room | 2027-01-20 → 2026-11-09 (-72d) | 2027-01-31 → 2026-11-21 (-71d) |  | -73.5d → -12.4d |  |
| A1040 | Pouring Beams and Slab For Gaurd Room | 2027-02-01 → 2026-11-21 (-72d) | 2027-02-11 → 2026-12-01 (-72d) |  | -73.5d → -12.4d |  |
| 2 | **Finishing Work** | 2027-02-13 → 2026-12-01 (-74d) | 2027-05-31 → 2027-03-15 (-77d) |  |  |  |
| 1 | **Architictural work** | 2027-02-13 → 2026-12-01 (-74d) | 2027-04-15 → 2027-01-24 (-81d) |  |  |  |
| A1050 | Brick Work For Gaurd Room | 2027-02-13 → 2026-12-01 (-74d) | 2027-02-25 → 2026-12-12 (-75d) |  | -73.5d → -12.4d |  |
| A1060 | Thermal & Moisture Protection Work for Gaurd Room | 2027-02-25 → 2026-12-12 (-75d) | 2027-03-08 → 2026-12-20 (-78d) |  | -67.5d → -6.4d |  |
| A1070 | Install For Curtian Wall and Windows and Doors | 2027-03-20 → 2026-12-27 (-83d) | 2027-03-28 → 2027-01-05 (-82d) |  | -73.5d → -12.4d |  |
| A1080 | External Finshing Work (Walls and Floor) | 2027-03-29 → 2027-01-05 (-83d) | 2027-04-06 → 2027-01-14 (-82d) |  | -73.5d → -12.4d |  |
| A1090 | Internal Finshing Work (Walls,Floor and Ceiling) | 2027-04-07 → 2027-01-14 (-83d) | 2027-04-15 → 2027-01-24 (-81d) |  | -73.5d → -12.4d |  |
| 3 | **Mechanical Work** | 2027-02-25 → 2026-12-12 (-75d) | 2027-04-27 → 2027-02-04 (-82d) |  |  |  |
| 1 | **Sanitary Drainage & Plumbing System** | 2027-02-25 → 2026-12-12 (-75d) | 2027-03-18 → 2026-12-27 (-81d) |  |  |  |
| A1110 | Install Sanitary Piping System (UPVC) | 2027-02-25 → 2026-12-12 (-75d) | 2027-03-03 → 2026-12-16 (-77d) |  | -73.5d → -12.4d |  |
| A1120 | Install Base mounted flush tank water Western water closet system | 2027-03-04 → 2026-12-16 (-78d) | 2027-03-15 → 2026-12-23 (-82d) |  | -73.5d → -12.4d |  |
| A1130 | Install 1 meter length 10mm diameter Flexible Hose and Gate Valves and Slow Closing Valve | 2027-03-16 → 2026-12-23 (-83d) | 2027-03-18 → 2026-12-27 (-81d) |  | -73.5d → -12.4d |  |
| 2 | **Water Supply System** | 2027-02-25 → 2026-12-12 (-75d) | 2027-04-18 → 2027-01-26 (-82d) |  |  |  |
| A1240 | Install GRP water tanks capacity of each 1000 liter | 2027-02-25 → 2026-12-12 (-75d) | 2027-03-02 → 2026-12-15 (-77d) |  | -72.5d → -11.4d |  |
| A1140 | Install for Cold Water Pipe complete with joints, angles, reducer etc. | 2027-03-02 → 2026-12-15 (-77d) | 2027-03-13 → 2026-12-21 (-82d) |  | -72.5d → -11.4d |  |
| A1150 | Install for Hot Water Pipe complete with joints, angles, reducer etc. | 2027-03-14 → 2026-12-21 (-83d) | 2027-03-17 → 2026-12-26 (-81d) |  | -72.5d → -11.4d |  |
| A1160 | Install for Isolation Valve,Spray Head,Roof Drain,Floor Drain,Gully teap,Vend on Roof to exhaust air | 2027-03-18 → 2026-12-26 (-82d) | 2027-03-21 → 2026-12-29 (-82d) |  | -53.5d → 7.6d |  |
| A1170 | Install of Inspection chamber, size 800x900x1000 | 2027-03-22 → 2026-12-29 (-83d) | 2027-03-23 → 2026-12-31 (-82d) |  | -53.5d → 7.6d |  |
| A1180 | Install OF Electric Water Heater set with connection and Water meter complete with accessories | 2027-04-17 → 2027-01-24 (-83d) | 2027-04-18 → 2027-01-26 (-82d) |  | -73.5d → -12.4d |  |
| 3 | **HVAC System** | 2027-03-04 → 2026-12-16 (-78d) | 2027-04-27 → 2027-02-04 (-82d) |  |  |  |
| A1200 | Install of Refrigerant Piping ( fabricated metal ducts with flanges complete with supports, vanes, dampers ) | 2027-03-04 → 2026-12-16 (-78d) | 2027-03-13 → 2026-12-21 (-82d) |  | -54.5d → 6.6d |  |
| A1190 | Install of Mini split actual capacity 2 Ton and Ducted split actual capacity 4 Ton | 2027-04-17 → 2027-01-24 (-83d) | 2027-04-24 → 2027-02-01 (-82d) |  | -55d → 6.1d |  |
| A1210 | Install of Air Grills 150mm x150mm and Air Diffuser 600mm x 600mm | 2027-04-25 → 2027-02-01 (-83d) | 2027-04-27 → 2027-02-04 (-82d) |  | -55d → 6.1d |  |
| 4 | **Fire Fitting System** | 2027-03-14 → 2026-12-21 (-83d) | 2027-04-22 → 2027-01-31 (-81d) |  |  |  |
| A1220 | Installation & Testing of 2 hours Fire rated system for closing the openings between rooms with help of Rock wool | 2027-03-14 → 2026-12-21 (-83d) | 2027-03-20 → 2026-12-28 (-82d) |  | -54.5d → 6.6d |  |
| A1230 | Install Fire Extinguishers | 2027-04-17 → 2027-01-24 (-83d) | 2027-04-22 → 2027-01-31 (-81d) |  | -51d → 10.1d |  |
| 4 | **Electrical Work** | 2027-03-14 → 2026-12-21 (-83d) | 2027-05-26 → 2027-03-07 (-80d) |  |  |  |
| 1 | **LV Power** | 2027-03-14 → 2026-12-21 (-83d) | 2027-04-21 → 2027-01-30 (-81d) |  |  |  |
| A1250 | Install of Distribution board For Gaurd Room | 2027-03-14 → 2026-12-21 (-83d) | 2027-03-18 → 2026-12-27 (-81d) |  | -52.5d → 8.6d |  |
| A1270 | Install of Earting Cable for Gaurd Room | 2027-03-20 → 2026-12-27 (-83d) | 2027-03-24 → 2027-01-02 (-81d) |  | -52.5d → 8.6d |  |
| A1260 | Install of Socket outlet and LED Lighting | 2027-04-17 → 2027-01-24 (-83d) | 2027-04-21 → 2027-01-30 (-81d) |  | -50d → 11.1d |  |
| 3 | **Fire Detection And Alarm System** | 2027-03-21 → 2026-12-28 (-83d) | 2027-05-10 → 2027-02-21 (-78d) |  |  |  |
| A1340 | Install of 2C x 1.5 Sqm FR Rated Armored - Cable For Loop Wiring | 2027-03-21 → 2026-12-28 (-83d) | 2027-03-25 → 2027-01-03 (-81d) |  | -54.5d → 6.6d |  |
| A1350 | Install of Transmission Communication cable - Fiber Optics 12Core | 2027-03-27 → 2027-01-03 (-83d) | 2027-03-31 → 2027-01-09 (-81d) |  | -54.5d → 6.6d |  |
| A1360 | Install of power supply system for fire alarm control panel | 2027-04-17 → 2027-01-24 (-83d) | 2027-04-21 → 2027-01-30 (-81d) |  | -67.5d → -6.4d |  |
| A1280 | Install of Fire Alarm Control panel | 2027-04-22 → 2027-01-30 (-82d) | 2027-04-28 → 2027-02-06 (-81d) |  | -67.5d → -6.4d |  |
| A1290 | Installation of the addressable manual call point with operation safety glass breaking | 2027-04-29 → 2027-02-06 (-82d) | 2027-05-02 → 2027-02-10 (-81d) |  | -67.5d → -6.4d |  |
| A1300 | Install of the photoelectric heat & smoke detector | 2027-05-03 → 2027-02-10 (-82d) | 2027-05-05 → 2027-02-15 (-79d) |  | -67.5d → -6.4d |  |
| A1310 | Install of Sounder With Beacon | 2027-05-03 → 2027-02-10 (-82d) | 2027-05-05 → 2027-02-15 (-79d) |  | -67.5d → -6.4d |  |
| A1320 | Install of Addressable Control module | 2027-05-06 → 2027-02-15 (-80d) | 2027-05-10 → 2027-02-21 (-78d) |  | -67.5d → -6.4d |  |
| 2 | **Security System** | 2027-04-19 → 2027-01-26 (-83d) | 2027-05-26 → 2027-03-07 (-80d) |  |  |  |
| A1580 | Install 8 Port Industrial PoE Switch 10/100BaseT (0 deg to +70 deg. Celsius) | 2027-04-19 → 2027-01-26 (-83d) | 2027-04-24 → 2027-02-01 (-82d) |  | -73.5d → -12.4d |  |
| A1590 | Optical Fiber,48 Core Splice Closure | 2027-04-25 → 2027-02-01 (-83d) | 2027-04-27 → 2027-02-04 (-82d) |  | -72.5d → -11.4d |  |
| A1650 | Pole/Bollard mounted IP( PoE) and 12U rack dimension | 2027-04-25 → 2027-02-01 (-83d) | 2027-04-28 → 2027-02-06 (-81d) |  | -73.5d → -12.4d |  |
| A1600 | Boom Barrier at Security Guard Room | 2027-04-29 → 2027-02-06 (-82d) | 2027-05-04 → 2027-02-14 (-79d) |  | -73.5d → -12.4d |  |
| A1610 | Pedestrian turnstile at Security Guard Room | 2027-05-05 → 2027-02-14 (-80d) | 2027-05-10 → 2027-02-21 (-78d) |  | -73.5d → -12.4d |  |
| A1620 | Access Control Unit and Access Card Reader | 2027-05-11 → 2027-02-21 (-79d) | 2027-05-20 → 2027-02-27 (-82d) |  | -73.5d → -12.4d |  |
| A1630 | Magnetic Lock and Break Glass and Exit Push button | 2027-05-22 → 2027-02-27 (-84d) | 2027-05-25 → 2027-03-06 (-80d) |  | -73.5d → -12.4d |  |
| A1640 | Door Sensor and Biometrics Reader | 2027-05-24 → 2027-03-02 (-83d) | 2027-05-26 → 2027-03-07 (-80d) |  | -73.5d → -12.4d |  |
| 2 | **Furnitures work** | 2027-05-25 → 2027-03-04 (-82d) | 2027-05-31 → 2027-03-15 (-77d) |  |  |  |
| A1100 | Office Chairs,Tables and Stand | 2027-05-25 → 2027-03-04 (-82d) | 2027-05-31 → 2027-03-15 (-77d) |  | -73.5d → -12.4d |  |
| 2 | **Fence Work** |  | 2027-05-05 → 2027-05-10 (+5d) |  |  |  |
| 1 | **Northern Fence N01:N03** |  | 2027-01-23 → 2027-01-18 (-5d) |  |  |  |
| 5 | **Finishing Work** |  | 2027-01-23 → 2027-01-18 (-5d) |  |  |  |
| 3 | **Electrical Work** | 2026-10-20 → 2026-10-27 (+7d) | 2027-01-23 → 2027-01-11 (-12d) |  |  |  |
| CO-SU-FE-N-EL-100 | Trench excavation to receive 2 nos 50mm diameter PVC Conduit | 2026-10-20 → 2026-10-27 (+7d) | 2026-10-28 → 2026-11-04 (+7d) |  |  |  |
| CO-SU-FE-N-EL-110 | Trench excavation to receive 3 nos 50mm diameter PVC Conduit | 2026-10-20 → 2026-10-27 (+7d) | 2026-10-28 → 2026-11-04 (+7d) |  |  |  |
| CO-SU-FE-N-EL-120 | Fixing of Control cable,CAT6A cable | 2026-10-29 → 2026-11-05 (+7d) | 2026-11-08 → 2026-11-15 (+7d) |  |  |  |
| CO-SU-FE-N-EL-130 | Install 800mm x 800mm x 800mm height concrete handhole | 2026-10-29 → 2026-11-05 (+7d) | 2026-11-08 → 2026-11-15 (+7d) |  |  |  |
| CO-SU-FE-N-EL-140 | Hot dipped galvanized cable conduits for CAT6A cable and Control Cables embedded to wall | 2026-10-29 → 2026-11-05 (+7d) | 2026-11-07 → 2026-11-14 (+7d) |  |  |  |
| CO-SU-FE-N-EL-150 | Fixing Earthing Work (Earth Pit,Grounding rod,Tinned Copper wire) | 2026-11-09 → 2026-11-16 (+7d) | 2026-11-17 → 2026-11-24 (+7d) |  |  |  |
| CO-SU-FE-N-EL-160 | Field Equipment Cabinet enclosed outdoor complete with precast concrete footing, | 2026-11-18 → 2026-11-25 (+7d) | 2026-11-26 → 2026-12-03 (+7d) |  |  |  |

| ID | Task | Start | Finish | Complete | Total float | Predecessors |
| --- | --- | --- | --- | --- | --- | --- |
| CO-SU-FE-N-EL-170 | Fence Lightining 400V, 3PH, 60Hz lighting control panel (LCP-02) | 2026-11-18 → 2026-11-25 (+7d) | 2026-11-26 → 2026-12-03 (+7d) |  |  |  |
| CO-SU-FE-N-EL-180 | Install of direct buried armored cable 4C-16mm2 ,10mm2 | 2026-11-28 → 2026-12-05 (+7d) | 2026-12-07 → 2026-12-14 (+7d) |  |  |  |
| CO-SU-FE-N-EL-190 | Install 16mm2,10mm2 CU/PVC wire | 2026-11-28 → 2026-12-05 (+7d) | 2026-12-07 → 2026-12-14 (+7d) |  |  |  |
| CO-SU-FE-N-EL-200 | FEC-CCTV ( 4C-16mm2 CU/XLPE/PVC direct buried armored cable,16mm2 CU/PVC wire | 2026-11-28 → 2026-12-05 (+7d) | 2026-12-06 → 2026-12-13 (+7d) |  | -42d → 17d |  |
| CO-SU-FE-N-EL-210 | Junction Box for lighting fixture | 2026-12-08 → 2026-12-15 (+7d) | 2026-12-16 → 2026-12-23 (+7d) |  | -41d → -43d |  |
| CO-SU-FE-N-EL-220 | IR Intrusion Detection System Quad Beams | 2027-01-05 → 2026-12-24 (-12d) | 2027-01-13 → 2027-01-02 (-11d) |  | -1d → 9d |  |
| CO-SU-FE-N-EL-230 | Install of 38W, 230V, 1PH, 60Hz fence, led linear uplight lighting, IP66 | 2027-01-05 → 2026-12-24 (-12d) | 2027-01-14 → 2027-01-03 (-11d) |  | -2d → 8d |  |
| CO-SU-FE-N-EL-240 | Install, fixings, testing and commissioning 80W LED | 2027-01-16 → 2027-01-04 (-12d) | 2027-01-23 → 2027-01-11 (-12d) |  | -2d → 8d |  |
| 4 | **Architictural work** |  | 2027-01-12 → 2027-01-18 (+6d) |  |  |  |
| CO-SU-FE-N-AR-110 | External plastering to walls and columns | 2026-12-08 → 2026-10-21 A (-48d) | 2026-12-15 → 2026-11-01 (-44d) | 0% → 40% | -43d → 4.49d | CO-SU-FE-N-AR-100, CO-SU-FE-N-CI-140, CO-SU-FE-N-EL-200, CO-SU-FE-N-EL-190, CO-SU-FE-N-EL-180 → CO-SU-FE-N-AR-100, CO-SU-FE-N-CI-140 |
| CO-SU-FE-N-AR-120 | Install 50mm thick random cut stone cladding | 2026-12-16 → 2026-10-22 A (-55d) | 2026-12-23 → 2026-11-03 (-50d) | 0% → 7% | -43d → 4.49d | CO-SU-FE-N-AR-110 → CO-SU-FE-N-AR-110 SS, CO-SU-FE-N-AR-110 FF |
| CO-SU-FE-N-AR-130 | Install 2 coats of weatherproof paint at walls | 2026-12-24 → 2026-11-03 (-51d) | 2026-12-30 → 2026-11-10 (-50d) |  | -43d → 4.49d |  |
| CO-SU-FE-N-AR-140 | Install Stone coping 500mm,525mm | 2026-12-31 → 2026-11-10 (-51d) | 2027-01-04 → 2026-11-15 (-50d) |  | -43d → 4.49d |  |
| CO-SU-FE-N-AR-150 | Install MODON Signage | 2027-01-05 → 2027-01-10 (+5d) | 2027-01-12 → 2027-01-18 (+6d) |  | 3d → -1.62d |  |
| 2 | **Western Fence P1 ( W01:W06 )** |  | 2027-03-23 → 2027-03-15 (-8d) |  |  |  |
| 1 | **Civil Work** |  | 2026-10-25 → 2026-10-31 (+6d) |  |  |  |
| CO-SU-FE-WP1-CI-180 | Pouring R.C Columns For Northern Fence |  | 2026-10-24 → 2026-10-28 (+4d) | 80% → 90% | -9d → -11d |  |
| CO-SU-FE-WP1-CI-190 | Pouring Beams For Northern Fence |  | 2026-10-25 → 2026-10-31 (+6d) | 80% → 87% | 32d → 27d |  |
| 5 | **Finishing Work** |  | 2027-03-23 → 2027-03-15 (-8d) |  |  |  |
| 3 | **Electrical Work** | 2026-10-29 → 2026-11-05 (+7d) | 2027-03-23 → 2027-03-15 (-8d) |  |  |  |
| CO-SU-FE-WP1-EL-260 | Trench excavation to receive 2 nos 50mm diameter PVC Conduit | 2026-10-29 → 2026-11-05 (+7d) | 2026-11-14 → 2026-11-21 (+7d) |  | -13d → -15d |  |
| CO-SU-FE-WP1-EL-320 | Trench excavation to receive 3 nos 50mm diameter PVC Conduit | 2026-10-29 → 2026-11-05 (+7d) | 2026-11-14 → 2026-11-21 (+7d) |  | -13d → -15d |  |
| CO-SU-FE-WP1-EL-300 | Fixing of Control cable,CAT6A cable | 2026-11-15 → 2026-11-22 (+7d) | 2026-11-30 → 2026-12-07 (+7d) |  | -13d → -15d |  |
| CO-SU-FE-WP1-EL-330 | Hot dipped galvanized cable conduits for CAT6A cable and Control Cables embedded to wall | 2026-11-15 → 2026-11-22 (+7d) | 2026-11-30 → 2026-12-07 (+7d) |  | -13d → -15d |  |
| CO-SU-FE-WP1-EL-310 | Install 800mm x 800mm x 800mm height concrete handhole | 2026-12-17 → 2026-12-24 (+7d) | 2027-01-02 → 2027-01-09 (+7d) |  | -41d → -43d |  |
| CO-SU-FE-WP1-EL-280 | Fixing Earthing Work (Earth Pit,Grounding rod,Tinned Copper wire) | 2027-01-05 → 2027-01-10 (+5d) | 2027-01-17 → 2027-01-21 (+4d) |  |  |  |
| CO-SU-FE-WP1-EL-340 | Field Equipment Cabinet enclosed outdoor complete with precast concrete footing, | 2027-01-18 → 2027-01-23 (+5d) | 2027-01-27 → 2027-02-01 (+5d) |  |  |  |
| CO-SU-FE-WP1-EL-350 | Fence Lightining 400V, 3PH, 60Hz lighting control panel (LCP-02) | 2027-01-18 → 2027-01-23 (+5d) | 2027-01-27 → 2027-02-01 (+5d) |  |  |  |
| CO-SU-FE-WP1-EL-360 | Install of direct buried armored cable 4C-16mm2 ,10mm2 | 2027-01-28 → 2027-02-02 (+5d) | 2027-02-06 → 2027-02-11 (+5d) |  | -42d → -43d |  |
| CO-SU-FE-WP1-EL-370 | Install 16mm2,10mm2 CU/PVC wire | 2027-01-28 → 2027-02-02 (+5d) | 2027-02-06 → 2027-02-11 (+5d) |  | -42d → -43d |  |
| CO-SU-FE-WP1-EL-390 | FEC-CCTV ( 4C-16mm2 CU/XLPE/PVC direct buried armored cable,16mm2 CU/PVC wire | 2027-01-28 → 2027-02-02 (+5d) | 2027-02-07 → 2027-02-14 (+7d) |  | -43d → -26d |  |
| CO-SU-FE-WP1-EL-250 | Junction Box for lighting fixture | 2027-02-07 → 2027-02-13 (+6d) | 2027-02-22 → 2027-03-01 (+7d) |  | -39d → -43d |  |
| CO-SU-FE-WP1-EL-290 | IR Intrusion Detection System Quad Beams | 2027-03-15 → 2027-03-01 (-14d) | 2027-03-18 → 2027-03-07 (-11d) |  | -43d → -36d |  |
| CO-SU-FE-WP1-EL-380 | Install of 38W, 230V, 1PH, 60Hz fence, led linear uplight lighting, IP66 | 2027-03-15 → 2027-03-01 (-14d) | 2027-03-18 → 2027-03-07 (-11d) |  | -40d → -33d |  |
| CO-SU-FE-WP1-EL-270 | Install, fixings, testing and commissioning 80W LED | 2027-03-20 → 2027-03-07 (-13d) | 2027-03-23 → 2027-03-15 (-8d) |  | -40d → -33d |  |
| 4 | **Architictural work** |  | 2027-03-23 → 2027-01-27 (-55d) |  |  |  |
| CO-SU-FE-WP1-AR-160 | Install Brick Work For Northern Fence |  | 2026-10-24 → 2026-10-31 (+7d) | 80% → 90% | -9d → -11d |  |
| CO-SU-FE-WP1-AR-170 | External plastering to walls and columns | 2027-02-08 → 2026-10-22 A (-109d) | 2027-02-16 → 2026-11-03 (-105d) | 0% → 13% | -43d → 50d | CO-SU-FE-WP1-AR-160, CO-SU-FE-WP1-CI-190, CO-SU-FE-WP1-EL-390, CO-SU-FE-WP1-EL-370, CO-SU-FE-WP1-EL-360 → CO-SU-FE-WP1-AR-160 SS, CO-SU-FE-WP1-CI-190 SS, CO-SU-FE-WP1-AR-160 FF, CO-SU-FE-WP1-CI-190 FF |
| CO-SU-FE-WP1-AR-180 | Install 50mm thick random cut stone cladding | 2027-02-17 → 2026-10-24 A (-116d) | 2027-02-24 → 2026-11-03 (-113d) | 0% → 4% | -43d → 50d | CO-SU-FE-WP1-AR-170 → CO-SU-FE-WP1-AR-170 SS, CO-SU-FE-WP1-AR-170 FF |
| CO-SU-FE-WP1-AR-190 | Install 2 coats of weatherproof paint at walls | 2027-02-24 → 2026-11-03 (-113d) | 2027-03-06 → 2026-11-10 (-116d) |  | -43d → 50d |  |
| CO-SU-FE-WP1-AR-200 | Install Stone coping 500mm,525mm | 2027-03-06 → 2026-11-10 (-116d) | 2027-03-14 → 2026-11-15 (-119d) |  | -43d → 50d |  |
| CO-SU-FE-WP1-AR-210 | Install MODON Signage | 2027-03-15 → 2027-01-18 (-56d) | 2027-03-23 → 2027-01-27 (-55d) |  | -40d → -1.62d |  |
| 3 | **Western Fence P2 ( W07:W12 )** |  | 2027-04-04 → 2027-03-27 (-8d) |  |  |  |
| 1 | **Civil Work** |  | 2026-10-25 → 2026-10-31 (+6d) |  |  |  |
| CO-SU-FE-WP2-CI-230 | Pouring R.C Columns For Northern Fence |  | 2026-10-21 → 2026-10-27 (+6d) | 80% → 90% | 4.12d → -1.62d |  |
| CO-SU-FE-WP2-CI-240 | Pouring Beams For Northern Fence |  | 2026-10-25 → 2026-10-31 (+6d) | 80% → 90% | 32d → 27d |  |
| 5 | **Finishing Work** |  | 2027-04-04 → 2027-03-27 (-8d) |  |  |  |
| 3 | **Electrical Work** | 2026-10-21 → 2026-10-28 (+7d) | 2027-04-04 → 2027-03-27 (-8d) |  |  |  |
| CO-SU-FE-WP2-EL-410 | Trench excavation to receive 2 nos 50mm diameter PVC Conduit | 2026-10-21 → 2026-10-28 (+7d) | 2026-10-26 → 2026-11-02 (+7d) |  | 4.12d → -1.62d |  |
| CO-SU-FE-WP2-EL-470 | Trench excavation to receive 3 nos 50mm diameter PVC Conduit | 2026-10-21 → 2026-10-28 (+7d) | 2026-10-28 → 2026-11-04 (+7d) |  | 4.12d → -1.62d |  |
| CO-SU-FE-WP2-EL-450 | Fixing of Control cable,CAT6A cable | 2026-10-28 → 2026-11-04 (+7d) | 2026-11-05 → 2026-11-12 (+7d) |  | 4.12d → -1.62d |  |
| CO-SU-FE-WP2-EL-460 | Install 800mm x 800mm x 800mm height concrete handhole | 2026-10-28 → 2026-11-04 (+7d) | 2026-11-05 → 2026-11-12 (+7d) |  | 4.33d → -1.43d |  |
| CO-SU-FE-WP2-EL-480 | Hot dipped galvanized cable conduits for CAT6A cable and Control Cables embedded to wall | 2026-10-28 → 2026-11-04 (+7d) | 2026-11-04 → 2026-11-11 (+7d) |  | 5.12d → -0.62d |  |
| CO-SU-FE-WP2-EL-430 | Fixing Earthing Work (Earth Pit,Grounding rod,Tinned Copper wire) | 2026-11-05 → 2026-11-12 (+7d) | 2026-11-12 → 2026-11-19 (+7d) |  | 4.12d → -1.62d |  |
| CO-SU-FE-WP2-EL-490 | Field Equipment Cabinet enclosed outdoor complete with precast concrete footing, | 2026-11-12 → 2026-11-19 (+7d) | 2026-11-17 → 2026-11-24 (+7d) |  | 4.12d → -1.62d |  |
| CO-SU-FE-WP2-EL-510 | Install of direct buried armored cable 4C-16mm2 ,10mm2 | 2026-11-17 → 2026-11-24 (+7d) | 2026-11-26 → 2026-12-03 (+7d) |  | 4.62d → -1.12d |  |
| CO-SU-FE-WP2-EL-520 | Install 16mm2,10mm2 CU/PVC wire | 2026-11-17 → 2026-11-24 (+7d) | 2026-11-26 → 2026-12-03 (+7d) |  | 4.62d → -1.12d |  |
| CO-SU-FE-WP2-EL-540 | FEC-CCTV ( 4C-16mm2 CU/XLPE/PVC direct buried armored cable,16mm2 CU/PVC wire | 2026-11-17 → 2026-11-24 (+7d) | 2026-11-26 → 2026-12-03 (+7d) |  | 4.12d → -1.62d |  |
| CO-SU-FE-WP2-EL-400 | Junction Box for lighting fixture | 2026-11-26 → 2026-12-03 (+7d) | 2026-11-30 → 2026-12-07 (+7d) |  | 18.62d → 12.88d |  |
| CO-SU-FE-WP2-EL-440 | IR Intrusion Detection System Quad Beams | 2027-03-20 → 2027-03-07 (-13d) | 2027-03-27 → 2027-03-18 (-9d) |  | -43d → -36d |  |
| CO-SU-FE-WP2-EL-530 | Install of 38W, 230V, 1PH, 60Hz fence, led linear uplight lighting, IP66 | 2027-03-20 → 2027-03-07 (-13d) | 2027-03-27 → 2027-03-18 (-9d) |  | -43d → -36d |  |
| CO-SU-FE-WP2-EL-420 | Install, fixings, testing and commissioning 80W LED | 2027-03-28 → 2027-03-20 (-8d) | 2027-04-04 → 2027-03-27 (-8d) |  | -43d → -36d |  |
| 4 | **Architictural work** |  | 2027-04-01 → 2027-02-06 (-54d) |  |  |  |
| CO-SU-FE-WP2-AR-220 | Install Brick Work For Northern Fence |  | 2026-10-21 → 2026-10-28 (+7d) | 80% → 90% | 4.12d → -1.62d |  |
| CO-SU-FE-WP2-AR-230 | External plastering to walls and columns | 2026-11-26 → 2026-12-03 (+7d) | 2026-12-06 → 2026-12-13 (+7d) |  | 4.12d → -1.62d |  |
| CO-SU-FE-WP2-AR-240 | Install 50mm thick random cut stone cladding | 2026-12-06 → 2026-12-13 (+7d) | 2026-12-15 → 2026-12-22 (+7d) |  | 4.12d → -1.62d |  |
| CO-SU-FE-WP2-AR-250 | Install 2 coats of weatherproof paint at walls | 2026-12-15 → 2026-12-22 (+7d) | 2026-12-24 → 2026-12-31 (+7d) |  | 4.12d → -1.62d |  |
| CO-SU-FE-WP2-AR-260 | Install Stone coping 500mm,525mm | 2026-12-24 → 2026-12-31 (+7d) | 2027-01-03 → 2027-01-10 (+7d) |  | 4.12d → -1.62d |  |
| CO-SU-FE-WP2-AR-270 | Install MODON Signage | 2027-03-24 → 2027-01-27 (-56d) | 2027-04-01 → 2027-02-06 (-54d) |  | -40d → -1.62d |  |
| 1 | **Civil Work** |  | 2026-11-02 → 2026-10-29 (-4d) |  |  |  |

| ID | Task | Start | Finish | Complete | Total float | Predecessors |
| --- | --- | --- | --- | --- | --- | --- |
| CO-SU-FE-S-CI-260 | Pouring for Plain Concrete Northern Fence |  | 2026-10-20 → 2026-10-21 A (+1d) | 95% → 100% | 6.62d → none |  |
| CO-SU-FE-S-CI-270 | Pouring R.C Footing For Northern Fence |  | 2026-10-21 → 2026-10-28 (+7d) |  | 6.62d → 5d |  |
| CO-SU-FE-S-CI-280 | Pouring R.C Columns For Northern Fence |  |  | 20% → 75% | 6.62d → 5d |  |
| CO-SU-FE-S-CI-290 | Pouring Beams For Northern Fence |  | 2026-11-02 → 2026-10-29 (-4d) | 20% → 60% | 30.38d → 32.91d |  |
| 3 | **Electrical Work** | 2026-10-25 → 2026-10-27 (+2d) |  |  |  |  |
| CO-SU-FE-S-EL-560 | Trench excavation to receive 2 nos 50mm diameter PVC Conduit | 2026-10-25 → 2026-10-27 (+2d) | 2026-11-11 → 2026-11-12 (+1d) |  | 6.62d → 5d |  |
| CO-SU-FE-S-EL-620 | Trench excavation to receive 3 nos 50mm diameter PVC Conduit | 2026-10-25 → 2026-10-27 (+2d) | 2026-11-11 → 2026-11-12 (+1d) |  | 6.62d → 5d |  |
| CO-SU-FE-S-EL-600 | Fixing of Control cable,CAT6A cable | 2026-11-11 → 2026-11-14 (+3d) | 2026-11-29 → 2026-11-30 (+1d) |  | 6.62d → 5d |  |
| CO-SU-FE-S-EL-610 | Install 800mm x 800mm x 800mm height concrete handhole | 2026-11-11 → 2026-11-14 (+3d) | 2026-11-29 → 2026-11-30 (+1d) |  | 6.62d → 5d |  |
| CO-SU-FE-S-EL-630 | Hot dipped galvanized cable conduits for CAT6A cable and Control Cables embedded to wall | 2026-11-11 → 2026-11-14 (+3d) | 2026-11-29 → 2026-11-30 (+1d) |  | 6.62d → 5d |  |
| CO-SU-FE-S-EL-580 | Fixing Earthing Work (Earth Pit,Grounding rod,Tinned Copper wire) | 2026-11-29 → 2026-12-01 (+2d) | 2026-12-06 → 2026-12-07 (+1d) |  | 6.62d → 5d |  |
| CO-SU-FE-S-EL-640 | Field Equipment Cabinet enclosed outdoor complete with precast concrete footing, | 2026-12-01 → 2026-12-03 (+2d) | 2026-12-06 → 2026-12-07 (+1d) |  | 6.62d → 5d |  |
| CO-SU-FE-S-EL-650 | Fence Lightining 400V, 3PH, 60Hz lighting control panel (LCP-02) | 2026-12-01 → 2026-12-03 (+2d) | 2026-12-06 → 2026-12-07 (+1d) |  | 6.62d → 5d |  |
| CO-SU-FE-S-EL-660 | Install of direct buried armored cable 4C-16mm2 ,10mm2 | 2026-12-01 → 2026-12-03 (+2d) | 2026-12-13 → 2026-12-14 (+1d) |  | 7.62d → 6d |  |
| CO-SU-FE-S-EL-670 | Install 16mm2,10mm2 CU/PVC wire | 2026-12-06 → 2026-12-08 (+2d) | 2026-12-13 → 2026-12-14 (+1d) |  | 7.62d → 6d |  |
| CO-SU-FE-S-EL-690 | FEC-CCTV ( 4C-16mm2 CU/XLPE/PVC direct buried armored cable,16mm2 CU/PVC wire | 2026-12-06 → 2026-12-08 (+2d) | 2026-12-14 → 2026-12-15 (+1d) |  | 6.62d → 5d |  |
| CO-SU-FE-S-EL-550 | Junction Box for lighting fixture | 2026-12-13 → 2026-12-15 (+2d) | 2026-12-21 → 2026-12-22 (+1d) |  | 7.62d → 6d |  |
| CO-SU-FE-S-EL-590 | IR Intrusion Detection System Quad Beams | 2027-03-07 → 2027-03-16 (+9d) | 2027-03-18 → 2027-03-23 (+5d) |  | -29d → -33d |  |
| 4 | **Architictural work** |  | 2027-04-11 → 2027-04-05 (-6d) |  |  |  |
| CO-SU-FE-S-AR-280 | Install Brick Work For Northern Fence |  | 2026-10-28 → 2026-10-31 (+3d) | 40% → 75% | 6.62d → 5d |  |
| CO-SU-FE-S-AR-290 | External plastering to walls and columns | 2026-12-14 → 2026-12-16 (+2d) | 2026-12-21 → 2026-12-22 (+1d) |  | 6.62d → 5d |  |
| CO-SU-FE-S-AR-300 | Install 50mm thick random cut stone cladding | 2026-12-21 → 2026-12-23 (+2d) | 2026-12-28 → 2026-12-29 (+1d) |  | 6.62d → 5d |  |
| CO-SU-FE-S-AR-310 | Install 2 coats of weatherproof paint at walls | 2027-02-23 → 2027-03-01 (+6d) | 2027-03-07 → 2027-03-15 (+8d) |  | -39d → -43d |  |
| CO-SU-FE-S-AR-320 | Install Stone coping 500mm,525mm | 2027-03-07 → 2027-03-16 (+9d) | 2027-03-22 → 2027-03-27 (+5d) |  | -39d → -43d |  |
| CO-SU-FE-S-AR-330 | Install MODON Signage | 2027-04-03 → 2027-03-28 (-6d) | 2027-04-11 → 2027-04-05 (-6d) |  | -40d → -35d |  |
| 1 | **Civil Work** |  | 2026-11-03 → 2026-11-01 (-2d) |  |  |  |
| CO-SU-FE-EP1-CI-310 | Pouring for Plain Concrete Northern Fence |  | 2026-10-20 → 2026-10-21 A (+1d) | 95% → 100% | 22d → none |  |
| CO-SU-FE-EP1-CI-320 | Pouring R.C Footing For Northern Fence |  | 2026-10-21 → 2026-10-22 A (+1d) | 85% → 100% | 22d → none |  |
| CO-SU-FE-EP1-CI-330 | Pouring R.C Columns For Northern Fence |  | 2026-11-02 → 2026-11-01 (-1d) | 20% → 60% | 22d → 23.12d |  |
| CO-SU-FE-EP1-CI-340 | Pouring Beams For Northern Fence |  | 2026-11-03 → 2026-11-01 (-2d) | 20% → 45% | 29.25d → 31.12d |  |
| 3 | **Electrical Work** | 2026-11-03 → 2026-11-01 (-2d) |  |  |  |  |
| CO-SU-FE-EP1-EL-710 | Trench excavation to receive 2 nos 50mm diameter PVC Conduit | 2026-11-03 → 2026-11-01 (-2d) | 2026-11-07 → 2026-11-05 (-2d) |  | 22d → 23.12d |  |
| CO-SU-FE-EP1-EL-770 | Trench excavation to receive 3 nos 50mm diameter PVC Conduit | 2026-11-03 → 2026-11-01 (-2d) | 2026-11-07 → 2026-11-05 (-2d) |  | 22d → 23.12d |  |
| CO-SU-FE-EP1-EL-750 | Fixing of Control cable,CAT6A cable | 2026-11-08 → 2026-11-05 (-3d) | 2026-11-11 → 2026-11-10 (-1d) |  | 22d → 23.12d |  |
| CO-SU-FE-EP1-EL-760 | Install 800mm x 800mm x 800mm height concrete handhole | 2026-11-08 → 2026-11-05 (-3d) | 2026-11-11 → 2026-11-10 (-1d) |  | 22d → 23.12d |  |
| CO-SU-FE-EP1-EL-780 | Hot dipped galvanized cable conduits for CAT6A cable and Control Cables embedded to wall | 2026-11-08 → 2026-11-05 (-3d) | 2026-11-11 → 2026-11-10 (-1d) |  | 22d → 23.12d |  |
| CO-SU-FE-EP1-EL-730 | Fixing Earthing Work (Earth Pit,Grounding rod,Tinned Copper wire) | 2026-11-12 → 2026-11-10 (-2d) | 2026-11-18 → 2026-11-17 (-1d) |  | 22d → 23.12d |  |
| CO-SU-FE-EP1-EL-790 | Field Equipment Cabinet enclosed outdoor complete with precast concrete footing, | 2026-11-19 → 2026-11-17 (-2d) | 2026-11-23 → 2026-11-22 (-1d) |  | 22d → 23.12d |  |
| CO-SU-FE-EP1-EL-800 | Fence Lightining 400V, 3PH, 60Hz lighting control panel (LCP-02) | 2026-11-19 → 2026-11-17 (-2d) | 2026-11-23 → 2026-11-22 (-1d) |  | 22d → 23.12d |  |
| CO-SU-FE-EP1-EL-810 | Install of direct buried armored cable 4C-16mm2 ,10mm2 | 2026-11-24 → 2026-11-22 (-2d) | 2026-11-28 → 2026-11-26 (-2d) |  | 22d → 23.12d |  |
| CO-SU-FE-EP1-EL-820 | Install 16mm2,10mm2 CU/PVC wire | 2026-11-24 → 2026-11-22 (-2d) | 2026-11-28 → 2026-11-26 (-2d) |  | 22d → 23.12d |  |
| CO-SU-FE-EP1-EL-840 | FEC-CCTV ( 4C-16mm2 CU/XLPE/PVC direct buried armored cable,16mm2 CU/PVC wire | 2026-11-24 → 2026-11-22 (-2d) | 2026-11-28 → 2026-11-26 (-2d) |  | 22d → 23.12d |  |
| CO-SU-FE-EP1-EL-700 | Junction Box for lighting fixture | 2026-12-21 → 2026-12-23 (+2d) | 2026-12-24 → 2026-12-26 (+2d) |  | 7.62d → 6d |  |
| CO-SU-FE-EP1-EL-740 | IR Intrusion Detection System Quad Beams | 2027-03-20 → 2027-03-24 (+4d) | 2027-03-23 → 2027-03-28 (+5d) |  | -26d → -30d |  |
| CO-SU-FE-EP1-EL-830 | Install of 38W, 230V, 1PH, 60Hz fence, led linear uplight lighting, IP66 | 2027-03-20 → 2027-03-24 (+4d) | 2027-03-23 → 2027-03-28 (+5d) |  | -26d → -30d |  |
| 4 | **Architictural work** |  | 2027-04-14 → 2027-04-08 (-6d) |  |  |  |
| CO-SU-FE-EP1-AR-340 | Install Brick Work For Northern Fence |  | 2026-11-02 → 2026-11-01 (-1d) | 40% → 70% | 22d → 23.12d |  |
| CO-SU-FE-EP1-AR-350 | External plastering to walls and columns | 2026-11-29 → 2026-11-26 (-3d) | 2026-12-07 → 2026-12-06 (-1d) |  | 22d → 23.12d |  |
| CO-SU-FE-EP1-AR-360 | Install 50mm thick random cut stone cladding | 2026-12-08 → 2026-12-06 (-2d) | 2026-12-19 → 2026-12-17 (-2d) |  | 22d → 23.12d |  |
| CO-SU-FE-EP1-AR-370 | Install 2 coats of weatherproof paint at walls | 2026-12-20 → 2026-12-17 (-3d) | 2026-12-30 → 2026-12-29 (-1d) |  | 22d → 23.12d |  |
| CO-SU-FE-EP1-AR-380 | Install Stone coping 500mm,525mm | 2026-12-31 → 2026-12-29 (-2d) | 2027-01-11 → 2027-01-10 (-1d) |  | 22d → 23.12d |  |
| CO-SU-FE-EP1-AR-390 | Install MODON Signage | 2027-04-12 → 2027-04-06 (-6d) | 2027-04-14 → 2027-04-08 (-6d) |  | -40d → -35d |  |
| 6 | **Eastern Fence P2 ( E07:E13 )** |  | 2027-05-05 → 2027-05-10 (+5d) |  |  |  |
| 1 | **Civil Work** |  | 2026-11-17 → 2026-11-04 (-13d) |  |  |  |
| CO-SU-FE-EP2-CI-360 | Pouring for Plain Concrete Northern Fence |  | 2026-11-02 → 2026-10-20 A (-13d) | 95% → 100% | 42d → none | CO-SU-FE-EP2-CI-350 SS, CO-SU-FE-S-CI-290 SS, CO-SU-FE-S-CI-290 FF → CO-SU-FE-EP2-CI-350 SS |
| CO-SU-FE-EP2-CI-370 | Pouring R.C Footing For Northern Fence |  | 2026-11-03 → 2026-10-22 A (-12d) | 85% → 100% | 42d → none |  |
| CO-SU-FE-EP2-CI-380 | Pouring R.C Columns For Northern Fence |  | 2026-11-09 → 2026-11-01 (-8d) | 30% → 70% | 42d → 48.38d |  |
| CO-SU-FE-EP2-CI-390 | Pouring Beams For Northern Fence |  | 2026-11-17 → 2026-11-04 (-13d) | 0% → 45% | 55.62d → 66.5d |  |
| 5 | **Finishing Work** |  | 2027-05-05 → 2027-05-10 (+5d) |  |  |  |
| 3 | **Electrical Work** | 2026-11-10 → 2026-11-02 (-8d) | 2027-05-05 → 2027-05-10 (+5d) |  |  |  |
| CO-SU-FE-EP2-EL-860 | Trench excavation to receive 2 nos 50mm diameter PVC Conduit | 2026-11-10 → 2026-11-02 (-8d) | 2026-11-14 → 2026-11-07 (-7d) |  | 42d → 48.38d |  |
| CO-SU-FE-EP2-EL-920 | Trench excavation to receive 3 nos 50mm diameter PVC Conduit | 2026-11-10 → 2026-11-02 (-8d) | 2026-11-14 → 2026-11-07 (-7d) |  | 42d → 48.38d |  |
| CO-SU-FE-EP2-EL-910 | Install 800mm x 800mm x 800mm height concrete handhole | 2026-11-15 → 2026-11-07 (-8d) | 2026-11-17 → 2026-11-10 (-7d) |  | 42d → 48.38d |  |
| CO-SU-FE-EP2-EL-930 | Hot dipped galvanized cable conduits for CAT6A cable and Control Cables embedded to wall | 2026-11-15 → 2026-11-07 (-8d) | 2026-11-17 → 2026-11-10 (-7d) |  | 42d → 48.38d |  |
| CO-SU-FE-EP2-EL-900 | Fixing of Control cable,CAT6A cable | 2026-12-24 → 2026-12-27 (+3d) | 2026-12-28 → 2026-12-29 (+1d) |  | 7.62d → 6d |  |
| CO-SU-FE-EP2-EL-880 | Fixing Earthing Work (Earth Pit,Grounding rod,Tinned Copper wire) | 2026-12-28 → 2026-12-30 (+2d) | 2026-12-31 → 2027-01-02 (+2d) |  | 7.62d → 6d |  |
| CO-SU-FE-EP2-EL-940 | Field Equipment Cabinet enclosed outdoor complete with precast concrete footing, | 2026-12-31 → 2027-01-03 (+3d) | 2027-01-05 → 2027-01-06 (+1d) |  | 7.62d → 6d |  |
| CO-SU-FE-EP2-EL-950 | Fence Lightining 400V, 3PH, 60Hz lighting control panel (LCP-02) | 2026-12-31 → 2027-01-03 (+3d) | 2027-01-05 → 2027-01-06 (+1d) |  | 7.62d → 6d |  |
| CO-SU-FE-EP2-EL-960 | Install of direct buried armored cable 4C-16mm2 ,10mm2 | 2027-01-05 → 2027-01-07 (+2d) | 2027-01-09 → 2027-01-10 (+1d) |  | 7.62d → 6d |  |
| CO-SU-FE-EP2-EL-970 | Install 16mm2,10mm2 CU/PVC wire | 2027-01-05 → 2027-01-07 (+2d) | 2027-01-09 → 2027-01-10 (+1d) |  | 7.62d → 6d |  |

| ID | Task | Start | Finish | Complete | Total float |
| --- | --- | --- | --- | --- | --- |
| CO-SU-FE-EP2-EL-990 | FEC-CCTV ( 4C-16mm2 CU/XLPE/PVC direct buried armored cable,16mm2 CU/PVC wire | 2027-01-05 → 2027-01-07 (+2d) | 2027-01-12 → 2027-01-13 (+1d) |  | 7.62d → 6d |
| CO-SU-FE-EP2-EL-850 | Junction Box for lighting fixture | 2027-01-09 → 2027-01-11 (+2d) | 2027-01-12 → 2027-01-13 (+1d) |  | 7.62d → 6d |
| CO-SU-FE-EP2-EL-890 | IR Intrusion Detection System Quad Beams | 2027-04-28 → 2027-05-03 (+5d) | 2027-05-02 → 2027-05-06 (+4d) |  | -55.25d → -59.75d |
| CO-SU-FE-EP2-EL-980 | Install of 38W, 230V, 1PH, 60Hz fence, led linear uplight lighting, IP66 | 2027-04-28 → 2027-05-03 (+5d) | 2027-05-02 → 2027-05-06 (+4d) |  | -55.25d → -59.75d |
| CO-SU-FE-EP2-EL-870 | Install, fixings, testing and commissioning 80W LED | 2027-05-02 → 2027-05-06 (+4d) | 2027-05-05 → 2027-05-10 (+5d) |  | -55.25d → -59.75d |
| 4 | **Architictural work** |  | 2027-05-01 → 2027-05-05 (+4d) |  |  |
| CO-SU-FE-EP2-AR-400 | Install Brick Work For Northern Fence |  | 2026-11-09 → 2026-11-02 (-7d) | 40% → 70% | 42d → 48.38d |
| CO-SU-FE-EP2-AR-410 | External plastering to walls and columns | 2027-01-12 → 2027-01-14 (+2d) | 2027-01-18 → 2027-01-19 (+1d) |  | 7.62d → 6d |
| CO-SU-FE-EP2-AR-420 | Install 50mm thick random cut stone cladding | 2027-01-18 → 2027-01-20 (+2d) | 2027-01-24 → 2027-01-25 (+1d) |  | 7.62d → 6d |
| CO-SU-FE-EP2-AR-430 | Install 2 coats of weatherproof paint at walls | 2027-01-24 → 2027-01-26 (+2d) | 2027-01-30 → 2027-01-31 (+1d) |  | 7.62d → 6d |
| CO-SU-FE-EP2-AR-440 | Install Stone coping 500mm,525mm | 2027-04-24 → 2027-04-28 (+4d) | 2027-04-28 → 2027-05-03 (+5d) |  | -55.25d → -59.75d |
| CO-SU-FE-EP2-AR-450 | Install MODON Signage | 2027-04-28 → 2027-05-03 (+5d) | 2027-05-01 → 2027-05-05 (+4d) |  | -51.25d → -55.75d |
| TC | **Testing and Comissioning** | 2026-10-20 → 2026-10-27 (+7d) | 2027-06-01 → 2027-05-30 (-2d) |  |  |
| INF | **Infrastructure Networks** | 2027-04-12 → 2027-04-19 (+7d) | 2027-06-01 → 2027-05-30 (-2d) |  |  |
| PW1 | **Irrigation Network** | 2027-05-08 → 2027-05-12 (+4d) | 2027-05-12 → 2027-05-23 (+11d) |  |  |
| T/C-IR | Testing and Commissioning of Irrigation Network | 2027-05-08 → 2027-05-12 (+4d) | 2027-05-12 → 2027-05-23 (+11d) |  | -75d → -79d |
| PW11 | **TSE Network** | 2027-04-26 → 2027-04-29 (+3d) | 2027-05-12 → 2027-05-22 (+10d) |  |  |
| T/C-TSE-10 | Testing and Commissioning of TSE Network | 2027-04-26 → 2027-04-29 (+3d) | 2027-05-12 → 2027-05-22 (+10d) |  | -67d → -70d |
| PW | **Potable Water Network** | 2027-05-08 → 2027-05-12 (+4d) | 2027-05-13 → 2027-05-24 (+11d) |  |  |
| T/C-PW | Testing and Commissioning of Potable Water Network | 2027-05-08 → 2027-05-12 (+4d) | 2027-05-13 → 2027-05-24 (+11d) |  | -75d → -79d |
| SW | **Sewage Network** | 2027-04-24 → 2027-04-29 (+5d) | 2027-04-27 → 2027-05-02 (+5d) |  |  |
| T/C-SW | Testing and Commissioning of Sewage Network | 2027-04-24 → 2027-04-29 (+5d) | 2027-04-27 → 2027-05-02 (+5d) |  | -72.75d → -77.5d |
| SD | **Storm Drainage Network** | 2027-04-12 → 2027-04-19 (+7d) | 2027-04-21 → 2027-04-28 (+7d) |  |  |
| T/C-SD | Testing and Commissioning of Storm Drainage Network | 2027-04-12 → 2027-04-19 (+7d) | 2027-04-21 → 2027-04-28 (+7d) |  | -71.5d → -77.5d |
| SL | **Street Lighting Network** | 2027-05-13 → 2027-05-24 (+11d) | 2027-05-25 → 2027-05-30 (+5d) |  |  |
| T/C-SL | Testing and Commissioning of Street Lighting Network | 2027-05-13 → 2027-05-24 (+11d) | 2027-05-25 → 2027-05-30 (+5d) |  | -75d → -79d |
| TE | **Telecom Network** | 2027-04-29 → 2027-05-04 (+5d) | 2027-05-03 → 2027-05-06 (+3d) |  |  |
| T/C-TE | Testing and Commissioning of Telecom Network | 2027-04-29 → 2027-05-04 (+5d) | 2027-05-03 → 2027-05-06 (+3d) |  | -76.5d → -80d |
| MV | **Medium Voltage Network** | 2027-04-29 → 2027-05-04 (+5d) | 2027-05-22 → 2027-05-25 (+3d) |  |  |
| T/C-MV | Testing and Commissioning of Medium Voltage Network | 2027-04-29 → 2027-05-04 (+5d) | 2027-05-22 → 2027-05-25 (+3d) |  | -76.5d → -80d |
| RD | **Road Works** | 2027-05-29 → 2027-05-26 (-3d) | 2027-06-01 → 2027-05-30 (-2d) |  |  |
| T/C-RD | Testing and Commissioning of Road Works | 2027-05-29 → 2027-05-26 (-3d) | 2027-06-01 → 2027-05-30 (-2d) |  | -77d → -75d |
| 1 | **Utility Buildings** | 2026-10-20 → 2026-10-27 (+7d) | 2027-06-01 → 2027-05-23 (-9d) |  |  |
| T/C-DPO | Testing and Commissioning of Storm Drainage Ponds | 2026-10-20 → 2026-10-27 (+7d) | 2026-10-20 → 2026-10-27 (+7d) |  | 91d → 85d |
| T/C-CTV | Testing and Commissioning of Guard Room and Fence | 2027-06-01 → 2027-03-16 (-77d) | 2027-06-01 → 2027-03-16 (-77d) |  | -73.5d → -12.4d |
| T/C-SPS | Testing and Commissioning of Sewage Pump Stations& soft scape and planting work | 2027-05-13 → 2027-05-23 (+10d) | 2027-05-13 → 2027-05-23 (+10d) |  | -63d → -66d |
| 1 | **Handing over and close out** | 2026-10-20 → 2026-10-27 (+7d) | 2027-06-05 → 2027-06-08 (+3d) |  |  |
| 2 | **As-Built** | 2026-10-20 → 2026-10-27 (+7d) | 2027-06-05 → 2027-06-08 (+3d) |  |  |
| HO-130 | Submission As-Built Drawing For Pond | 2026-10-20 → 2026-10-27 (+7d) | 2026-11-04 → 2026-11-11 (+7d) |  | 91d → 85d |
| HO-100 | Submission As-Built Drawing For Sewage Network | 2027-04-27 → 2027-05-03 (+6d) | 2027-05-13 → 2027-05-24 (+11d) |  | -62.25d → -67d |
| HO-160 | Submission As-Built Drawing For Telecom Network | 2027-05-03 → 2027-05-08 (+5d) | 2027-05-23 → 2027-05-26 (+3d) |  | -65.5d → -69d |
| HO-210 | Submission As-Built Drawing For Pump station | 2027-05-13 → 2027-05-23 (+10d) | 2027-05-13 → 2027-05-23 (+10d) |  | -63d → -66d |
| HO-180 | Submission As-Built Drawing For Irrigation Network | 2027-05-13 → 2027-05-24 (+11d) | 2027-06-01 → 2027-06-06 (+5d) |  | -74d → -78d |
| HO-190 | As-Built Drawing For Potable Water Network | 2027-05-20 → 2027-05-25 (+5d) | 2027-06-02 → 2027-06-07 (+5d) |  | -75d → -79d |
| HO-170 | Submission As-Built Drawing For Medium Voltage Network | 2027-05-22 → 2027-05-26 (+4d) | 2027-06-05 → 2027-06-08 (+3d) |  | -76.5d → -80d |
| HO-140 | Submission As-Built Drawing For Roads Network | 2027-06-02 → 2027-05-31 (-2d) | 2027-06-05 → 2027-06-02 (-3d) |  | -77d → -75d |
| HO-150 | Submission As-Built Drawing For Street Lighting Network | 2027-05-26 → 2027-05-31 (+5d) | 2027-06-02 → 2027-06-07 (+5d) |  | -75d → -79d |
| 1 | **De-Mobilization Works** | 2027-05-29 → 2027-05-31 (+2d) | 2027-06-02 → 2027-06-05 (+3d) |  |  |
| HO-230 | Remove Temporary Car Shades | 2027-05-29 → 2027-05-31 (+2d) | 2027-06-02 → 2027-06-05 (+3d) |  | -75d → -77d |
| 3 | **Handing Over** | 2027-06-02 → 2027-05-31 (-2d) | 2027-06-05 → 2027-06-02 (-3d) |  |  |
| HO-250 | Review B.O.Q Qty. to ensure compliance with the actual status | 2027-06-02 → 2027-05-31 (-2d) | 2027-06-05 → 2027-06-02 (-3d) |  | -77d → -75d |

## Version 7 (data date 2026-11-03, saved 2026-11-03, file MOD3-3147-BL0-R0-6UPDATE 03-11-2026.xer)

Last finish 2027-06-08 → 2027-06-15 (+7d). Complete tasks 333 → 346.

Changed:

| ID | Task | Start | Finish | Complete | Total float |
| --- | --- | --- | --- | --- | --- |
| MS | **Key Milestones** |  | 2027-06-08 → 2027-06-15 (+7d) |  |  |
| CM | **Contractual Milestones** |  | 2027-06-08 → 2027-06-15 (+7d) |  |  |
| MS-CF-SW | Completion of Construction Works for Sewage Network | 2027-04-28 → 2027-03-04 (-55d) | 2027-04-28 → 2027-03-04 (-55d) |  | -77.25d → -33.9d |
| MS-CF-IR | Completion of Construction Works for Irrigation Network | 2027-04-12 → 2027-04-11 (-1d) | 2027-04-12 → 2027-04-11 (-1d) |  | -43d → -42d |
| MS-CF-TSE | Completion of Construction Works for Treated Sewage Effluent Network | 2027-04-26 → 2027-04-25 (-1d) | 2027-04-26 → 2027-04-25 (-1d) |  | -54.5d → -53.5d |
| MS-CF-PW | Completion of Construction Works for Potable Water Network | 2027-05-08 → 2027-04-27 (-11d) | 2027-05-08 → 2027-04-27 (-11d) |  | -64.5d → -55.75d |
| MS-CF-MV | Completion of Construction Works for Medium Voltage Network | 2027-04-26 → 2027-05-02 (+6d) | 2027-04-26 → 2027-05-02 (+6d) |  | -74d → -78.5d |
| MS-CF-SL | Completion of Construction Works for Street Lighting Network | 2027-04-29 → 2027-05-06 (+7d) | 2027-04-29 → 2027-05-06 (+7d) |  | -64d → -70d |
| MS-CF-TE | Completion of Construction Works for Telecom Network | 2027-05-03 → 2027-05-10 (+7d) | 2027-05-03 → 2027-05-10 (+7d) |  | -80d → -86d |
| MS-CF-RD | Completion of Construction Works for Road Works | 2027-05-26 → 2027-05-30 (+4d) | 2027-05-26 → 2027-05-30 (+4d) |  | -68.5d → -71.5d |
| MS-CF-PF | Project Completion Date | 2027-06-08 → 2027-06-15 (+7d) | 2027-06-08 → 2027-06-15 (+7d) |  | -80d → -86d |
| PROC | **Procurement Cycle** |  | 2027-04-28 → 2027-05-05 (+7d) |  |  |
| RD | **Road Works** |  | 2026-10-27 → 2026-11-03 (+7d) |  |  |
| DL | **Material Delivery & Site Inspection** |  | 2026-10-27 → 2026-11-03 (+7d) |  |  |
| 1 | **Pre-Bituminous Construction** |  | 2026-10-27 → 2026-11-03 (+7d) |  |  |
| PRO-R25-RD-DL-100 | Material Delivery & Site Inspection for Subgrade of Road Works |  | 2026-10-27 → 2026-11-03 (+7d) |  | 32.5d → 26.5d |
| PRO-R25-RD-DL-110 | Material Delivery & Site Inspection for Aggregate Base Course of Road Works | 2026-10-27 → 2026-11-03 (+7d) | 2026-10-27 → 2026-11-03 (+7d) |  | 46d → 40d |
| 4 | **Bituminous Construction** | 2026-10-27 → 2026-11-03 (+7d) | 2026-10-27 → 2026-11-03 (+7d) |  |  |
| PRO-R25-RD-DL-160 | Material Delivery & Site Inspection for Prime Coat of Road Works | 2026-10-27 → 2026-11-03 (+7d) | 2026-10-27 → 2026-11-03 (+7d) |  | 61d → 55d |
| PRO-R25-RD-DL-170 | Material Delivery & Site Inspection for Bituminous Base & Wearing Courses of Road Works | 2026-10-27 → 2026-11-03 (+7d) | 2026-10-27 → 2026-11-03 (+7d) |  | 68d → 62d |
| 2 | **Pavement Works** | 2026-10-27 → 2026-11-03 (+7d) | 2026-10-27 → 2026-11-03 (+7d) |  |  |
| PRO-R25-RD-DL-120 | Material Delivery & Site Inspection of Interlock Tiles for Landscaping | 2026-10-27 → 2026-11-03 (+7d) | 2026-10-27 → 2026-11-03 (+7d) |  | 59d → 53d |
| PRO-R25-RD-DL-130 | Material Delivery & Site Inspection of Curbstones for Landscaping | 2026-10-27 → 2026-11-03 (+7d) | 2026-10-27 → 2026-11-03 (+7d) |  | 46.8d → 40.8d |
| 3 | **Traffic Signs Boards and Roads Marking** | 2026-10-27 → 2026-11-03 (+7d) | 2026-10-27 → 2026-11-03 (+7d) |  |  |
| PRO-R25-RD-DL-140 | Material Delivery & Site Inspection of Traffic Signs Boards For Road Works | 2026-10-27 → 2026-11-03 (+7d) | 2026-10-27 → 2026-11-03 (+7d) |  | 85d → 79d |
| PRO-R25-RD-DL-150 | Material Delivery & Site Inspection of Road Markings For Road Works | 2026-10-27 → 2026-11-03 (+7d) | 2026-10-27 → 2026-11-03 (+7d) |  | 78d → 72d |
| IR1 | **Softscape and Planting Works** | 2026-10-27 → 2026-11-03 (+7d) | 2027-03-03 → 2027-03-15 (+12d) |  |  |
| PO | **Issuance of Purchase Orders** | 2026-10-27 → 2026-11-03 (+7d) | 2026-11-02 → 2026-11-09 (+7d) |  |  |
| 1 | **Main Line Pipes** | 2026-10-27 → 2026-11-03 (+7d) | 2026-11-02 → 2026-11-09 (+7d) |  |  |
| PRO-IR-PO-140 | Issuance of Purchase Order for Softscape and Planting Works | 2026-10-27 → 2026-11-03 (+7d) | 2026-11-02 → 2026-11-09 (+7d) |  | -76.25d → -82.25d |
| PRO-IR-PO-150 | Issuance of Purchase Order for Site Furnishings (Seating Bench,Stone Boulders and Gravel) | 2026-10-27 → 2026-11-03 (+7d) | 2026-11-02 → 2026-11-09 (+7d) |  | -74d → -80d |
| MF | **Manufacturing of Material** | 2026-11-03 → 2026-11-10 (+7d) | 2027-01-31 → 2027-02-07 (+7d) |  |  |
| 1 | **Main Line Pipes** | 2026-11-03 → 2026-11-10 (+7d) | 2027-01-31 → 2027-02-07 (+7d) |  |  |
| PRO-IR-MF-140 | Manufacturing of Softscape and Planting Works | 2026-11-03 → 2026-11-10 (+7d) | 2027-01-31 → 2027-02-07 (+7d) |  | -90.5d → -97.5d |
| PRO-IR-MF-150 | Manufacturing of Valves for Site Furnishings (Seating Bench,Stone Boulders and Gravel) | 2026-11-03 → 2026-11-10 (+7d) | 2027-01-31 → 2027-02-07 (+7d) |  | -87.5d → -94.5d |
| 1DL | **1st Material Delivery & Site Inspection** | 2027-02-01 → 2027-02-08 (+7d) | 2027-02-07 → 2027-02-16 (+9d) |  |  |
| 1 | **Main Line Pipes** | 2027-02-01 → 2027-02-08 (+7d) | 2027-02-07 → 2027-02-16 (+9d) |  |  |
| PRO-IR-1DL-140 | 1ST Material Delivery for Softscape and Planting Works | 2027-02-01 → 2027-02-08 (+7d) | 2027-02-07 → 2027-02-16 (+9d) |  | -77.5d → -83.5d |
| PRO-IR-1DL-150 | 1ST Material Delivery for Site Furnishings (Seating Bench,Stone Boulders and Gravel) | 2027-02-01 → 2027-02-08 (+7d) | 2027-02-07 → 2027-02-16 (+9d) |  | -74.5d → -80.5d |
| DL | **Material Delivery & Site Inspection** | 2027-02-08 → 2027-02-17 (+9d) | 2027-03-03 → 2027-03-15 (+12d) |  |  |
| 1 | **Main Line Pipes** | 2027-02-08 → 2027-02-17 (+9d) | 2027-03-03 → 2027-03-15 (+12d) |  |  |
| PRO-R25-IR-DL-140 | Material Delivery & Site Inspection of Softscape and Planting Works | 2027-02-08 → 2027-02-17 (+9d) | 2027-02-25 → 2027-03-07 (+10d) |  | -77.5d → -83.5d |
| PRO-R25-IR-DL-150 | Material Delivery & Site Inspection of Site Furnishings (Seating Bench,Stone Boulders and Gravel) | 2027-02-08 → 2027-02-17 (+9d) | 2027-03-03 → 2027-03-15 (+12d) |  | -74.5d → -80.5d |
| SW | **Sewage Network** |  | 2027-04-15 → 2027-01-09 (-96d) |  |  |
| MF | **Manufacturing of Material** |  | 2027-03-05 → 2026-12-02 (-93d) |  |  |
| 3 | **Testing and Finishes** | 2026-10-27 → 2026-10-28 (+1d) | 2027-03-05 → 2026-12-02 (-93d) |  |  |
| PRO-SW-MF-120 | Manufacturing of Manhole Covers for Sewage Network | 2026-10-27 → 2026-10-28 A (+1d) | 2027-03-05 → 2026-12-02 (-93d) | 0% → 50% | -96.5d → -3.5d |
| 1DL | **1st Material Delivery & Site Inspection** |  | 2027-03-16 → 2026-12-09 (-97d) |  |  |
| 3 | **Testing and Finishes** | 2027-03-06 → 2026-12-03 (-93d) | 2027-03-16 → 2026-12-09 (-97d) |  |  |
| PRO-SW-1DL-120 | 1ST Material Delivery for Manholes Covers of Sewage Network | 2027-03-06 → 2026-12-03 (-93d) | 2027-03-16 → 2026-12-09 (-97d) |  | -77.25d → -3.5d |
| DL | **Material Delivery & Site Inspection** |  | 2027-04-15 → 2027-01-09 (-96d) |  |  |
| 1 | **Main Line Sections** |  | 2026-10-27 → 2026-11-03 (+7d) |  |  |
| PRO-R25-SW-DL-110 | Material Delivery & Site Inspection of Manholes for Sewage Network |  | 2026-10-27 → 2026-11-03 (+7d) |  | -35.5d → -41.5d |
| 3 | **Testing and Finishes** | 2027-03-16 → 2026-12-10 (-96d) | 2027-04-15 → 2027-01-09 (-96d) |  |  |
| PRO-R25-SW-DL-120 | Material Delivery & Site Inspection of Manholes Covers for Sewage Network | 2027-03-16 → 2026-12-10 (-96d) | 2027-04-15 → 2027-01-09 (-96d) |  | -77.25d → -3.5d |
| SD | **Storm Drainage Network** |  | 2027-04-07 → 2027-04-14 (+7d) |  |  |
| MF | **Manufacturing of Material** |  | 2027-02-03 → 2027-02-10 (+7d) |  |  |
| 3 | **Testing and Finishes** | 2026-10-27 → 2026-11-03 (+7d) | 2027-02-03 → 2027-02-10 (+7d) |  |  |
| PRO-SD-MF-120 | Manufacturing of Materials for Manhole Covers of Storm Drainage Network | 2026-10-27 → 2026-11-03 (+7d) | 2027-02-03 → 2027-02-10 (+7d) |  | -71.38d → -78.38d |
| PRO-SD-MF-140 | Manufacturing of Materials for Catch Basin Covers of Storm Drainage Network | 2026-10-27 → 2026-11-03 (+7d) | 2027-02-03 → 2027-02-10 (+7d) |  | -76.5d → -83.5d |
| 1DL | **1st Material Delivery & Site Inspection** |  | 2027-02-11 → 2027-02-20 (+9d) |  |  |
| 3 | **Testing and Finishes** | 2027-02-04 → 2027-02-11 (+7d) | 2027-02-11 → 2027-02-20 (+9d) |  |  |
| PRO-SD-1DL-140 | 1ST Material Delivery for Manholes Covers of Storm Drainage Network | 2027-02-04 → 2027-02-11 (+7d) | 2027-02-11 → 2027-02-20 (+9d) |  | -61.5d → -66.75d |
| PRO-SD-1DL-150 | 1ST Material Delivery for Catch Basin Covers of Storm Drainage Network | 2027-02-04 → 2027-02-11 (+7d) | 2027-02-11 → 2027-02-20 (+9d) |  | -65.5d → -70.75d |
| DL | **Material Delivery & Site Inspection** |  | 2027-04-07 → 2027-04-14 (+7d) |  |  |
| 1 | **Main Line Sections** |  | 2026-10-27 → 2026-11-03 (+7d) |  |  |
| PRO-R25-SD-DL-100 | Material Delivery & Site Inspection of Manholes of Storm Drainage Network |  | 2026-10-27 → 2026-11-03 (+7d) | 40% → 92% | -63.69d → -61.69d |
| 3 | **Testing and Finishes** | 2027-02-13 → 2027-02-21 (+8d) | 2027-04-07 → 2027-04-14 (+7d) |  |  |
| PRO-R25-SD-DL-150 | Material Delivery & Site Inspection of Catch Basin Covers for Storm Drainage Network | 2027-02-13 → 2027-02-21 (+8d) | 2027-03-16 → 2027-03-23 (+7d) |  | -65.5d → -70.75d |
| PRO-R25-SD-DL-140 | Material Delivery & Site Inspection of Manholes Covers for Storm Drainage Network | 2027-03-04 → 2027-03-16 (+12d) | 2027-04-07 → 2027-04-14 (+7d) |  | -74.5d → -80.5d |

| ID | Task | Start | Finish | Complete | Total float | Predecessors |
| --- | --- | --- | --- | --- | --- | --- |
| PW | **Potable Water Network** |  | 2027-04-11 → 2027-04-15 (+4d) |  |  |  |
| PO | **Issuance of Purchase Orders** |  | 2026-11-07 → 2026-11-14 (+7d) |  |  |  |
| 1 | **Main Line Sections** |  | 2026-11-02 → 2026-10-08 (-25d) |  |  |  |
| PRO-PW-PO-110 | Issuance of Purchase Order for Valves of Potable Water Network | 2026-10-27 → 2026-10-03 A (-24d) | 2026-11-02 → 2026-10-08 A (-25d) | 0% → 100% | -74.25d → none |  |
| 3 | **Fire Hydrant** | 2026-10-27 → 2026-10-03 (-24d) | 2026-11-07 → 2026-10-14 (-24d) |  |  |  |
| PRO-PW-PO-120 | Issuance of Purchase Order for Fire Hydrants of Potable Water Network | 2026-10-27 → 2026-10-03 A (-24d) | 2026-11-07 → 2026-10-14 A (-24d) | 0% → 100% | -59.25d → none |  |
| 4 | **Testing and Finishes** | 2026-10-27 → 2026-11-03 (+7d) | 2026-11-07 → 2026-11-14 (+7d) |  |  |  |
| PRO-PW-PO-130 | Issuance of Purchase Order for Surface Box of Potable Water Network | 2026-10-27 → 2026-11-03 (+7d) | 2026-11-07 → 2026-11-14 (+7d) |  | -63.75d → -69.75d |  |
| MF | **Manufacturing of Material** |  | 2027-02-25 → 2027-03-04 (+7d) |  |  |  |
| 1 | **Main Line Sections** |  | 2027-01-31 → 2026-10-14 (-109d) |  |  |  |
| PRO-PW-MF-110 | Manufacturing of Valves for Potable Water Network | 2026-11-03 → 2026-10-10 A (-24d) | 2027-01-31 → 2026-10-14 A (-109d) | 0% → 100% | -88.5d → none | PRO-PW-PO-110, PRO-R25-PW-DL-120 FF → PRO-PW-PO-110 |
| 3 | **Fire Hydrant** | 2026-11-08 → 2026-10-15 (-24d) | 2027-01-06 → 2026-10-18 (-80d) |  |  |  |
| PRO-PW-MF-120 | Manufacturing of Fire Hydrants for Potable Water Network | 2026-11-08 → 2026-10-15 A (-24d) | 2027-01-06 → 2026-10-18 A (-80d) | 0% → 100% | -70.5d → none |  |
| 4 | **Testing and Finishes** | 2026-11-08 → 2026-11-15 (+7d) | 2027-02-25 → 2027-03-04 (+7d) |  |  |  |
| PRO-PW-MF-130 | Manufacturing for Surface Box of Potable Water Network | 2026-11-08 → 2026-11-15 (+7d) | 2027-02-25 → 2027-03-04 (+7d) |  | -76d → -83d |  |
| 1DL | **1st Material Delivery & Site Inspection** |  | 2027-03-07 → 2027-03-16 (+9d) |  |  |  |
| 1 | **Main Line Sections** |  | 2027-02-07 → 2026-11-03 (-96d) |  |  |  |
| PRO-PW-1DL-100_R | 1ST Material Delivery for Main Line Pipes of Potable Water Network(Remaining) |  | 2026-10-27 → 2026-11-03 (+7d) |  |  |  |
| PRO-PW-1DL-110 | 1ST Material Delivery for Valves of Potable Water Network | 2027-02-01 → 2026-10-18 A (-106d) | 2027-02-07 → 2026-10-22 A (-108d) | 0% → 100% | -75.5d → none |  |
| 3 | **Fire Hydrant** | 2027-01-07 → 2026-10-28 (-71d) | 2027-01-13 → 2026-10-31 (-74d) |  |  |  |
| PRO-PW-1DL-120 | 1ST Material Delivery for Fire Hydrants of Potable Water Network | 2027-01-07 → 2026-10-28 A (-71d) | 2027-01-13 → 2026-10-31 A (-74d) | 0% → 100% | -60.5d → none |  |
| 4 | **Testing and Finishes** | 2027-02-27 → 2027-03-06 (+7d) | 2027-03-07 → 2027-03-16 (+9d) |  |  |  |
| PRO-PW-1DL-130 | 1ST Material Delivery for Finishes of Potable Water Network | 2027-02-27 → 2027-03-06 (+7d) | 2027-03-07 → 2027-03-16 (+9d) |  | -62.25d → -66.75d |  |
| DL | **Material Delivery & Site Inspection** |  | 2027-04-11 → 2027-04-15 (+4d) |  |  |  |
| 1 | **Main Line Sections** |  | 2027-02-08 → 2027-01-17 (-22d) |  |  |  |
| PRO-R25-PW-DL-110 | Material Delivery & Site Inspection of Valves for Potable Water Network | 2027-02-08 → 2026-10-31 A (-100d) | 2027-02-08 → 2026-11-03 (-97d) | 0% → 92% | -69.5d → 13.5d |  |
| 3 | **Fire Hydrant** | 2027-01-14 → 2026-10-31 (-75d) | 2027-01-14 → 2026-11-03 (-72d) |  |  |  |
| PRO-R25-PW-DL-120 | Material Delivery & Site Inspection of Fire Hydrants for Potable Water Network | 2027-01-14 → 2026-10-31 A (-75d) | 2027-01-14 → 2026-11-03 (-72d) | 0% → 30% | -60.5d → 23.5d |  |
| 4 | **Testing and Finishes** | 2027-03-08 → 2027-03-16 (+8d) | 2027-04-11 → 2027-04-15 (+4d) |  |  |  |
| PRO-R25-PW-DL-130 | Material Delivery & Site Inspection for Finishes of Potable Water Network | 2027-03-08 → 2027-03-16 (+8d) | 2027-04-11 → 2027-04-15 (+4d) |  | -62.25d → -66.75d |  |
| PRO-IR-1DL-100 | 1ST Material Delivery for Main Line Pipes of Irrigation Network |  | 2026-10-31 → 2026-11-07 (+7d) |  | -1.5d → -7.5d |  |
| DL | **Material Delivery & Site Inspection** | 2026-10-31 → 2026-11-07 (+7d) |  |  |  |  |
| 1 | **Main Line Pipes** | 2026-10-31 → 2026-11-07 (+7d) |  |  |  |  |
| PRO-R25-IR-DL-100 | Material Delivery & Site Inspection of Main Line Pipes for Irrigation Network | 2026-10-31 → 2026-11-07 (+7d) | 2026-10-31 → 2026-11-07 (+7d) |  | -1.5d → -7.5d |  |
| TSE | **Treated Sewage Effluent (Tse)** |  | 2027-02-08 → 2027-02-17 (+9d) |  |  |  |
| PO | **Issuance of Purchase Orders** |  | 2026-11-02 → 2026-11-09 (+7d) |  |  |  |
| 1 | **Main Line Pipes** |  | 2026-11-02 → 2026-11-09 (+7d) |  |  |  |
| PRO-TSE-PO-130 | Issuance of Purchase Order for Valves of Treated Sewage Effluent (Tse) | 2026-10-27 → 2026-11-03 (+7d) | 2026-11-02 → 2026-11-09 (+7d) |  | -65.25d → -71.25d |  |
| MF | **Manufacturing of Material** |  | 2027-01-31 → 2027-02-07 (+7d) |  |  |  |
| 1 | **Main Line Pipes** |  | 2027-01-31 → 2027-02-07 (+7d) |  |  |  |
| PRO-TSE-MF-130 | Manufacturing of Valves for Treated Sewage Effluent (Tse) | 2026-11-03 → 2026-11-10 (+7d) | 2027-01-31 → 2027-02-07 (+7d) |  | -77.5d → -84.5d |  |
| 1DL | **1st Material Delivery & Site Inspection** |  | 2027-02-07 → 2027-02-16 (+9d) |  |  |  |
| 1 | **Main Line Pipes** |  | 2027-02-07 → 2027-02-16 (+9d) |  |  |  |
| PRO-TSE-1DL-130 | 1ST Material Delivery for Valves of Treated Sewage Effluent (Tse) | 2027-02-01 → 2027-02-08 (+7d) | 2027-02-07 → 2027-02-16 (+9d) |  | -66.5d → -72.5d |  |
| DL | **Material Delivery & Site Inspection** |  | 2027-02-08 → 2027-02-17 (+9d) |  |  |  |
| 1 | **Main Line Pipes** |  | 2027-02-08 → 2027-02-17 (+9d) |  |  |  |
| PRO-R25-TSE-DL-120_R | Material Delivery & Site Inspection of Main Line Pipes for Treated Sewage Effluent (Tse)(Remaining) |  | 2026-10-27 → 2026-11-03 (+7d) |  | 3.5d → -2.5d |  |
| PRO-R25-TSE-DL-130 | Material Delivery & Site Inspection of Valves for Treated Sewage Effluent (Tse) | 2027-02-08 → 2027-02-17 (+9d) | 2027-02-08 → 2027-02-17 (+9d) |  | -66.5d → -72.5d |  |
| MV | **Medium Voltage Network** | 2026-10-27 → 2026-11-03 (+7d) | 2027-04-05 → 2027-04-11 (+6d) |  |  |  |
| PO | **Issuance of Purchase Orders** | 2026-10-27 → 2026-11-03 (+7d) | 2026-11-09 → 2026-11-16 (+7d) |  |  |  |
| 1 | **Cabling Works** | 2026-10-27 → 2026-11-03 (+7d) | 2026-11-09 → 2026-11-16 (+7d) |  |  |  |
| PRO-MV-PO-100 | Issuance of Purchase Order for Medium Voltage Cables of Medium Voltage Network | 2026-10-27 → 2026-11-03 (+7d) | 2026-11-09 → 2026-11-16 (+7d) |  | -70.25d → -76.25d |  |
| 3 | **Termination and Testing Works** | 2026-10-27 → 2026-11-03 (+7d) | 2026-11-09 → 2026-11-16 (+7d) |  |  |  |
| PRO-MV-PO-120 | Issuance of Purchase Order for Termination and Joints Kits of Medium Voltage Network | 2026-10-27 → 2026-11-03 (+7d) | 2026-11-09 → 2026-11-16 (+7d) |  | -77.75d → -83.75d |  |
| MF | **Manufacturing of Material** | 2026-11-10 → 2026-11-17 (+7d) | 2027-02-07 → 2027-02-14 (+7d) |  |  |  |
| 1 | **Cabling Works** | 2026-11-10 → 2026-11-17 (+7d) | 2027-01-08 → 2027-01-15 (+7d) |  |  |  |
| PRO-MV-MF-100 | Manufacturing of Medium Voltage Cables for Medium Voltage Network | 2026-11-10 → 2026-11-17 (+7d) | 2027-01-08 → 2027-01-15 (+7d) |  | -83.5d → -90.5d |  |
| 3 | **Termination and Testing Works** | 2026-11-10 → 2026-11-17 (+7d) | 2027-02-07 → 2027-02-14 (+7d) |  |  |  |
| PRO-MV-MF-110 | Manufacturing of Termination and Joints Kits for Medium Voltage Network | 2026-11-10 → 2026-11-17 (+7d) | 2027-02-07 → 2027-02-14 (+7d) |  | -92d → -99d |  |
| 1DL | **1st Material Delivery & Site Inspection** | 2027-01-09 → 2027-01-16 (+7d) | 2027-03-01 → 2027-03-08 (+7d) |  |  |  |
| 1 | **Cabling Works** | 2027-01-09 → 2027-01-16 (+7d) | 2027-01-21 → 2027-01-28 (+7d) |  |  |  |
| PRO-MV-1DL-100 | 1ST Material Delivery for Medium Voltage Cables of Medium Voltage Network | 2027-01-09 → 2027-01-16 (+7d) | 2027-01-21 → 2027-01-28 (+7d) |  | -71.5d → -77.5d |  |
| 3 | **Termination and Testing Works** | 2027-02-08 → 2027-02-15 (+7d) | 2027-03-01 → 2027-03-08 (+7d) |  |  |  |
| PRO-MV-1DL-120 | 1ST Material Delivery for Termination and Joints Kits of Medium Voltage Network | 2027-02-08 → 2027-02-15 (+7d) | 2027-03-01 → 2027-03-08 (+7d) |  | -79d → -83.5d |  |
| DL | **Material Delivery & Site Inspection** | 2027-01-23 → 2027-01-30 (+7d) | 2027-04-05 → 2027-04-11 (+6d) |  |  |  |
| 1 | **Cabling Works** | 2027-01-23 → 2027-01-30 (+7d) | 2027-01-23 → 2027-01-30 (+7d) |  |  |  |
| PRO-MV-DL-100 | Material Delivery & Site Inspection of Medium Voltage Cables for Medium Voltage Network | 2027-01-23 → 2027-01-30 (+7d) | 2027-01-23 → 2027-01-30 (+7d) |  | -71.5d → -77.5d |  |
| 3 | **Termination and Testing Works** | 2027-03-01 → 2027-03-08 (+7d) | 2027-04-05 → 2027-04-11 (+6d) |  |  |  |
| PRO-MV-DL-110 | Material Delivery & Site Inspection of Termination and Joints Kits for Medium Voltage Network | 2027-03-01 → 2027-03-08 (+7d) | 2027-04-05 → 2027-04-11 (+6d) |  | -79d → -83.5d |  |
| SL | **Low Voltage and Street Lighting Network** |  | 2026-12-13 → 2026-12-20 (+7d) |  |  |  |

| ID | Task | Start | Finish | Complete | Total float |
| --- | --- | --- | --- | --- | --- |
| 1DL | **1st Material Delivery & Site Inspection** | 2026-10-27 → 2026-11-03 (+7d) | 2026-11-12 → 2026-11-19 (+7d) |  |  |
| 1 | **Cabling Works** | 2026-10-27 → 2026-11-03 (+7d) | 2026-11-02 → 2026-11-09 (+7d) |  |  |
| PRO-SL-1DL-100 | 1ST Material Delivery for Lighting Cables of Street Lighting Network | 2026-10-27 → 2026-11-03 (+7d) | 2026-11-02 → 2026-11-09 (+7d) |  | 11.5d → 5.5d |
| 2 | **Lighting Poles Works** | 2026-10-27 → 2026-11-03 (+7d) | 2026-11-02 → 2026-11-09 (+7d) |  |  |
| PRO-SL-1DL-110 | 1ST Material Delivery for Lighting Poles Foundations of Street Lighting Network | 2026-10-27 → 2026-11-03 (+7d) | 2026-11-02 → 2026-11-09 (+7d) |  | -17.5d → -23.5d |
| PRO-SL-1DL-120 | 1ST Material Delivery for Lighting Poles of Street Lighting Network | 2026-10-27 → 2026-11-03 (+7d) | 2026-11-02 → 2026-11-09 (+7d) |  | 16.5d → 10.5d |
| PRO-SL-1DL-140 | 1ST Material Delivery for Lighting Fixtures of Street Lighting Network | 2026-10-27 → 2026-11-03 (+7d) | 2026-11-02 → 2026-11-09 (+7d) |  | 60d → 54d |
| 3 | **Distribution Panel Board** | 2026-10-27 → 2026-11-03 (+7d) | 2026-11-02 → 2026-11-09 (+7d) |  |  |
| PRO-SL-1DL-160 | 1ST Material Delivery for Distrubution Panel Boards of Street Lighting Network | 2026-10-27 → 2026-11-03 (+7d) | 2026-11-02 → 2026-11-09 (+7d) |  | 48d → 42d |
| 5 | **Termination and Testing Works** | 2026-10-27 → 2026-11-03 (+7d) | 2026-11-12 → 2026-11-19 (+7d) |  |  |
| PRO-SL-1DL-130 | 1ST Material Delivery for Fuse Boxes of Street Lighting Network | 2026-10-27 → 2026-11-03 (+7d) | 2026-11-12 → 2026-11-19 (+7d) |  | 40d → 34d |
| PRO-SL-1DL-170 | 1ST Material Delivery for Cable Lugs of Street Lighting Network | 2026-10-27 → 2026-11-03 (+7d) | 2026-11-12 → 2026-11-19 (+7d) |  | 38d → 32d |
| 4 | **Earthing System Works** | 2026-10-27 → 2026-11-03 (+7d) | 2026-11-02 → 2026-11-09 (+7d) |  |  |
| PRO-SL-1DL-150 | 1ST Material Delivery for Lighting Earthing of Street Lighting Network | 2026-10-27 → 2026-11-03 (+7d) | 2026-11-02 → 2026-11-09 (+7d) |  | 60d → 54d |
| DL | **Material Delivery & Site Inspection** | 2026-11-03 → 2026-11-10 (+7d) | 2026-12-13 → 2026-12-20 (+7d) |  |  |
| 1 | **Cabling Works** | 2026-11-03 → 2026-11-10 (+7d) | 2026-11-03 → 2026-11-10 (+7d) |  |  |
| PRO-R25-SL-DL-100 | Material Delivery & Site Inspection of Lighting Cables for Street Lighting Network | 2026-11-03 → 2026-11-10 (+7d) | 2026-11-03 → 2026-11-10 (+7d) |  | 11.5d → 5.5d |
| 2 | **Lighting Poles Works** | 2026-11-03 → 2026-11-10 (+7d) | 2026-11-23 → 2026-11-30 (+7d) |  |  |
| PRO-R25-SL-DL-110 | Material Delivery & Site Inspection of Lighting Poles Foundations for Street Lighting Network | 2026-11-03 → 2026-11-10 (+7d) | 2026-11-23 → 2026-11-30 (+7d) |  | -17.5d → -23.5d |
| PRO-R25-SL-DL-120 | Material Delivery & Site Inspection of Lighting Poles for Street Lighting Network | 2026-11-03 → 2026-11-10 (+7d) | 2026-11-03 → 2026-11-10 (+7d) |  | 16.5d → 10.5d |
| PRO-R25-SL-DL-140 | Material Delivery & Site Inspection of Lighting Fixtures for Street Lighting Network | 2026-11-03 → 2026-11-10 (+7d) | 2026-11-03 → 2026-11-10 (+7d) |  | 60d → 54d |
| 3 | **Distribution Panel Board** | 2026-11-03 → 2026-11-10 (+7d) | 2026-11-03 → 2026-11-10 (+7d) |  |  |
| PRO-R25-SL-DL-160 | Material Delivery & Site Inspection of Distrubution Panel Boards for Street Lighting Network | 2026-11-03 → 2026-11-10 (+7d) | 2026-11-03 → 2026-11-10 (+7d) |  | 48d → 42d |
| 4 | **Termination and Testing Works** | 2026-11-14 → 2026-11-21 (+7d) | 2026-12-13 → 2026-12-20 (+7d) |  |  |
| PRO-R25-SL-DL-130 | Material Delivery & Site Inspection of Fuse Boxes for Street Lighting Network | 2026-11-14 → 2026-11-21 (+7d) | 2026-12-13 → 2026-12-20 (+7d) |  | 40d → 34d |
| PRO-R25-SL-DL-170 | Material Delivery & Site Inspection of Cable Lugs for Street Lighting Network | 2026-11-14 → 2026-11-21 (+7d) | 2026-12-13 → 2026-12-20 (+7d) |  | 38d → 32d |
| 5 | **Earthing System Works** | 2026-11-03 → 2026-11-10 (+7d) | 2026-11-03 → 2026-11-10 (+7d) |  |  |
| PRO-R25-SL-DL-150 | Material Delivery & Site Inspection of Lighting Earthing for Street Lighting Network | 2026-11-03 → 2026-11-10 (+7d) | 2026-11-03 → 2026-11-10 (+7d) |  | 60d → 54d |
| TE | **Telecom Network** | 2026-10-27 → 2026-11-03 (+7d) | 2027-02-14 → 2027-02-23 (+9d) |  |  |
| PO | **Issuance of Purchase Orders** | 2026-10-27 → 2026-11-03 (+7d) | 2026-11-02 → 2026-11-09 (+7d) |  |  |
| 1 | **Ducts Works** | 2026-10-27 → 2026-11-03 (+7d) | 2026-11-02 → 2026-11-09 (+7d) |  |  |
| PRO-TE-PO-100 | Issuance of Purchase Order for Ducts forTelecom Network | 2026-10-27 → 2026-11-03 (+7d) | 2026-11-02 → 2026-11-09 (+7d) |  | -46.75d → -52.75d |
| 3 | **Manholes Works** | 2026-10-27 → 2026-11-03 (+7d) | 2026-11-02 → 2026-11-09 (+7d) |  |  |
| PRO-TE-PO-110 | Issuance of Purchase Order for Manholes forTelecom Network | 2026-10-27 → 2026-11-03 (+7d) | 2026-11-02 → 2026-11-09 (+7d) |  | -64.75d → -70.75d |
| 2 | **CCTV System Wroks** | 2026-10-27 → 2026-11-03 (+7d) | 2026-11-02 → 2026-11-09 (+7d) |  |  |
| PRO-CTV-PO-100 | Issuance of Purchase Order for Civil and Finishes Works of CCTV Complete System | 2026-10-27 → 2026-11-03 (+7d) | 2026-11-02 → 2026-11-09 (+7d) |  | -50d → -56d |
| MF | **Manufacturing of Material** | 2026-11-03 → 2026-11-10 (+7d) | 2027-01-31 → 2027-02-07 (+7d) |  |  |
| 1 | **Ducts Works** | 2026-11-03 → 2026-11-10 (+7d) | 2027-01-01 → 2027-01-08 (+7d) |  |  |
| PRO-TE-MF-100 | Manufacturing of Ducts for Telecom Network | 2026-11-03 → 2026-11-10 (+7d) | 2027-01-01 → 2027-01-08 (+7d) |  | -56d → -63d |
| 3 | **Manholes Works** | 2026-11-03 → 2026-11-10 (+7d) | 2027-01-31 → 2027-02-07 (+7d) |  |  |
| PRO-TE-MF-110 | Manufacturing of Manholes for Telecom Network | 2026-11-03 → 2026-11-10 (+7d) | 2027-01-31 → 2027-02-07 (+7d) |  | -77d → -84d |
| 2 | **CCTV System Wroks** | 2026-11-03 → 2026-11-10 (+7d) | 2027-01-31 → 2027-02-07 (+7d) |  |  |
| PRO-CTV-MF-100 | Manufacturing of Civil and Finishes Works for CCTV Complete System | 2026-11-03 → 2026-11-10 (+7d) | 2027-01-31 → 2027-02-07 (+7d) |  | -60d → -67d |
| 1DL | **1st Material Delivery & Site Inspection** | 2027-01-02 → 2027-01-09 (+7d) | 2027-02-14 → 2027-02-22 (+8d) |  |  |
| 1 | **Ducts Works** | 2027-01-02 → 2027-01-09 (+7d) | 2027-01-07 → 2027-01-14 (+7d) |  |  |
| PRO-TE-1DL-100 | 1ST Material Delivery for Ducts of Telecom Network | 2027-01-02 → 2027-01-09 (+7d) | 2027-01-07 → 2027-01-14 (+7d) |  | -48d → -54d |
| 3 | **Manholes Works** | 2027-02-01 → 2027-02-08 (+7d) | 2027-02-07 → 2027-02-16 (+9d) |  |  |
| PRO-TE-1DL-110 | 1ST Material Delivery for Manholes of Telecom Network | 2027-02-01 → 2027-02-08 (+7d) | 2027-02-07 → 2027-02-16 (+9d) |  | -66d → -72d |
| 2 | **CCTV System Wroks** | 2027-02-01 → 2027-02-08 (+7d) | 2027-02-14 → 2027-02-22 (+8d) |  |  |
| PRO-CTV-1DL-100 | 1ST Material Delivery for Civil and Finishes Works of CCTV Complete System | 2027-02-01 → 2027-02-08 (+7d) | 2027-02-14 → 2027-02-22 (+8d) |  | -51d → -57d |
| DL | **Material Delivery & Site Inspection** | 2027-01-09 → 2027-01-16 (+7d) | 2027-02-14 → 2027-02-23 (+9d) |  |  |
| 1 | **Ducts Works** | 2027-01-09 → 2027-01-16 (+7d) | 2027-01-09 → 2027-01-16 (+7d) |  |  |
| PRO-R25-TE-DL-100 | Material Delivery & Site Inspection for Ducts of Telecom Network | 2027-01-09 → 2027-01-16 (+7d) | 2027-01-09 → 2027-01-16 (+7d) |  | -48d → -54d |
| 3 | **Manholes Works** | 2027-02-08 → 2027-02-17 (+9d) | 2027-02-08 → 2027-02-17 (+9d) |  |  |
| PRO-R25-TE-DL-110 | Material Delivery & Site Inspection of Manholes for Telecom Network | 2027-02-08 → 2027-02-17 (+9d) | 2027-02-08 → 2027-02-17 (+9d) |  | -66d → -72d |
| 2 | **CCTV System Wroks** | 2027-02-14 → 2027-02-23 (+9d) | 2027-02-14 → 2027-02-23 (+9d) |  |  |
| PRO-R25-CTV-DL-100 | Material Delivery & Site Inspection of for Civil and Finishes Works of CCTV Complete System | 2027-02-14 → 2027-02-23 (+9d) | 2027-02-14 → 2027-02-23 (+9d) |  | -51d → -57d |
| 1 | **Superstructure Works** |  | 2027-01-25 → 2027-02-01 (+7d) |  |  |
| 2 | **Manufacturing of Material** |  | 2027-01-24 → 2027-01-31 (+7d) |  |  |
| SL1211 | **Softscape and Planting Works** | 2026-10-27 → 2026-11-03 (+7d) | 2027-01-24 → 2027-01-31 (+7d) |  |  |
| PRO-FE-CV-MF-70 | Manufacturing of Civil Works for Softscape and Planting Works | 2026-10-27 → 2026-11-03 (+7d) | 2027-01-24 → 2027-01-31 (+7d) |  | -62.5d → -69.5d |
| 3 | **1st Material Delivery & Site Inspection** |  | 2026-10-27 → 2026-11-03 (+7d) |  |  |
| SL11 | **Storage Tank (TSE)** |  | 2026-10-27 → 2026-11-03 (+7d) |  |  |
| PRO-TSE-CV-1DL-50 | 1ST Material Delivery for Civil Works for Civil Works for Storage Tank (TSE) |  | 2026-10-27 → 2026-11-03 (+7d) |  | 24.9d → 22d |
| 4 | **Material Delivery & Site Inspection** |  | 2027-01-25 → 2027-02-01 (+7d) |  |  |
| SL11 | **Storage Tank (TSE)** | 2026-10-27 → 2026-11-03 (+7d) | 2026-10-27 → 2026-11-03 (+7d) |  |  |
| PRO-TSE-CV-DL-60 | Material Delivery & Site Inspection for Civil Works for Storage Tank (TSE) | 2026-10-27 → 2026-11-03 (+7d) | 2026-10-27 → 2026-11-03 (+7d) |  | 25d → 22d |
| PRO-GR-CV-DL-70 | Material Delivery & Site Inspection for Civil Works for Gaurd Room |  | 2026-10-27 A | 90% → 100% | -10.3d → none |
| SL1211 | **Softscape and Planting Works** | 2027-01-25 → 2027-02-01 (+7d) | 2027-01-25 → 2027-02-01 (+7d) |  |  |
| PRO-FE-CV-DL-90 | Material Delivery & Site Inspection for Softscape and Planting Works | 2027-01-25 → 2027-02-01 (+7d) | 2027-01-25 → 2027-02-01 (+7d) |  | -53.5d → -59.5d |

| ID | Task | Start | Finish | Complete | Total float | Predecessors |
| --- | --- | --- | --- | --- | --- | --- |
| LL | **Long Lead Time Items** |  | 2027-04-28 → 2027-05-05 (+7d) |  |  |  |
| 2 | **Infrastructure Networks** | 2026-10-27 → 2026-11-03 (+7d) | 2027-03-15 → 2027-03-20 (+5d) |  |  |  |
| 2 | **CCTV System Wroks of Telecom Network** | 2026-10-27 → 2026-11-03 (+7d) | 2027-03-15 → 2027-03-20 (+5d) |  |  |  |
| 3 | **Issuance of Purchase Orders** | 2026-10-27 → 2026-11-03 (+7d) | 2026-11-18 → 2026-11-25 (+7d) |  |  |  |
| PRO-CTV-LL-PO-10 | Issuance of Purchase Order for Low Current Works of CCTV Complete System with All Accessories | 2026-10-27 → 2026-11-03 (+7d) | 2026-11-18 → 2026-11-25 (+7d) |  | -64d → -70d |  |
| 1 | **Manufacturing of Material** | 2026-11-19 → 2026-11-26 (+7d) | 2027-02-16 → 2027-02-23 (+7d) |  |  |  |
| PRO-CTV-LL-MF-10 | Manufacturing of Low Current Works for CCTV Complete System with All Accessories | 2026-11-19 → 2026-11-26 (+7d) | 2027-02-16 → 2027-02-23 (+7d) |  | -76d → -83d |  |
| 2 | **Material Shipping/Custom Clearance/Delivery** | 2027-02-17 → 2027-02-24 (+7d) | 2027-03-14 → 2027-03-20 (+6d) |  |  |  |
| PRO-CTV-LL-SH/DL-10 | Material Delivery for Low Current Works of CCTV Complete System with All Accessories | 2027-02-17 → 2027-02-24 (+7d) | 2027-03-14 → 2027-03-20 (+6d) |  | -63d → -67.75d |  |
| 4 | **Material Site Inspection** | 2027-03-15 → 2027-03-20 (+5d) | 2027-03-15 → 2027-03-20 (+5d) |  |  |  |
| PRO-CTV-LL-MSI-10 | Material Site Inspection for Low Current Works of CCTV Complete System with All Accessories | 2027-03-15 → 2027-03-20 (+5d) | 2027-03-15 → 2027-03-20 (+5d) |  | -63d → -67.75d |  |
| 1 | **Superstructure Works** |  | 2027-04-28 → 2027-05-05 (+7d) |  |  |  |
| SL | **Pump Stations** |  | 2027-02-01 → 2027-02-08 (+7d) |  |  |  |
| 2 | **Manufacturing of Material** |  | 2026-11-17 → 2026-11-24 (+7d) |  |  |  |
| PRO-SPS-LL-MF-10 | Manufacturing of Electromechanical Works for Pump Stations |  | 2026-11-17 → 2026-11-24 (+7d) |  | -5.09d → -12.09d |  |
| 3 | **Material Shipping/Custom Clearance/Delivery** | 2026-11-17 → 2026-11-24 (+7d) | 2026-12-22 → 2026-12-29 (+7d) |  |  |  |
| PRO-SPS-LL-SH/DL-10 | Material Delivery for Electromechanical Works for Pump Stations | 2026-11-17 → 2026-11-24 (+7d) | 2026-12-22 → 2026-12-29 (+7d) |  | -4.09d → -10.09d |  |
| 4 | **Material Site Inspection** | 2026-12-22 → 2026-12-29 (+7d) | 2027-02-01 → 2027-02-08 (+7d) |  |  |  |
| PRO-SPS-LL-MSI-10 | Material Site Inspection for Electromechanical Works for Pump Stations | 2026-12-22 → 2026-12-29 (+7d) | 2027-02-01 → 2027-02-08 (+7d) |  | -4.09d → -10.09d |  |
| SL1 | **Lift Stations** |  | 2027-03-24 → 2027-03-31 (+7d) |  |  |  |
| 2 | **Manufacturing of Material** | 2026-10-27 → 2026-11-03 (+7d) | 2026-12-25 → 2027-01-01 (+7d) |  |  |  |
| PRO-LS-LL-MF-20 | Manufacturing of Electromechanical Works for Lift Stations | 2026-10-27 → 2026-11-03 (+7d) | 2026-12-25 → 2027-01-01 (+7d) |  | -59d → -66d |  |
| 3 | **Material Shipping/Custom Clearance/Delivery** | 2026-12-26 → 2027-01-02 (+7d) | 2027-01-28 → 2027-02-04 (+7d) |  |  |  |
| PRO-LS-LL-SH/DL-20 | Material Delivery for Electromechanical Works for Lift Stations | 2026-12-26 → 2027-01-02 (+7d) | 2027-01-28 → 2027-02-04 (+7d) |  | -50d → -56d |  |
| 4 | **Material Site Inspection** | 2027-01-30 → 2027-02-06 (+7d) | 2027-03-24 → 2027-03-31 (+7d) |  |  |  |
| PRO-LS-LL-MSI-20 | Material Site Inspection for Electromechanical Works for Lift Stations | 2027-01-30 → 2027-02-06 (+7d) | 2027-03-24 → 2027-03-31 (+7d) |  | -50d → -56d |  |
| SL2 | **Storage Tank (TSE)** | 2026-10-27 → 2026-11-03 (+7d) | 2027-04-28 → 2027-05-05 (+7d) |  |  |  |
| 1 | **Issuance of Purchase Orders** | 2026-10-27 → 2026-11-03 (+7d) | 2026-11-30 → 2026-12-07 (+7d) |  |  |  |
| PRO-TSE-LL-PO-30 | Issuance of Purchase Order for Electromechanical Works for Storage Tank (TSE) | 2026-10-27 → 2026-11-03 (+7d) | 2026-11-30 → 2026-12-07 (+7d) |  | -79.75d → -85.75d |  |
| 2 | **Manufacturing of Material** | 2026-12-01 → 2026-12-08 (+7d) | 2027-01-29 → 2027-02-05 (+7d) |  |  |  |
| PRO-TSE-LL-MF-30 | Manufacturing of Electromechanical Works for Storage Tank (TSE) | 2026-12-01 → 2026-12-08 (+7d) | 2027-01-29 → 2027-02-05 (+7d) |  | -94d → -101d |  |
| 3 | **Material Shipping/Custom Clearance/Delivery** | 2027-01-30 → 2027-02-06 (+7d) | 2027-03-15 → 2027-03-22 (+7d) |  |  |  |
| PRO-TSE-LL-SH/DL-30 | Material Delivery for Electromechanical Works for Storage Tank (TSE) | 2027-01-30 → 2027-02-06 (+7d) | 2027-03-15 → 2027-03-22 (+7d) |  | -80d → -86d |  |
| 4 | **Material Site Inspection** | 2027-03-16 → 2027-03-23 (+7d) | 2027-04-28 → 2027-05-05 (+7d) |  |  |  |
| PRO-TSE-LL-MSI-30 | Material Site Inspection for Electromechanical Works for Storage Tank (TSE) | 2027-03-16 → 2027-03-23 (+7d) | 2027-04-28 → 2027-05-05 (+7d) |  | -80d → -86d |  |
| CON | **Construction Works** |  | 2027-05-26 → 2027-05-30 (+4d) |  |  |  |
| INF | **Infrastructure Networks** |  | 2027-05-26 → 2027-05-30 (+4d) |  |  |  |
| EW | **Earthworks** |  | 2026-10-27 → 2026-11-03 (+7d) |  |  |  |
| EW | **Earthworks** |  | 2026-10-27 → 2026-11-03 (+7d) |  |  |  |
| CO-EW-110_R | Embankments Works Upto Design Level for Earthworks(Remaining) |  | 2026-10-27 → 2026-11-01 A (+5d) | 91% → 100% | -72.5d → none | CO-EW-200_R SS+10d, CO-EW-220_R SS, CO-EW-220_R FF, CO-EW-110 → CO-EW-200_R SS+10d, CO-EW-220_R SS, CO-EW-110 |
| CO-EW-200_R | Excavation Works Upto Design Level for Earthworks-P1(Remaining) |  | 2026-10-27 → 2026-11-03 (+7d) |  |  |  |
| CO-EW-210_R | Excavation Works Upto Design Level for Earthworks-P2(Remaining) |  | 2026-10-27 → 2026-11-03 (+7d) |  |  |  |
| CO-EW-220_R | Excavation Works Upto Design Level for Earthworks-P3(Remaining) |  | 2026-10-27 → 2026-11-03 (+7d) |  |  |  |
| MH25-MH12 | **FROM MH-25:MH-12** |  | 2026-12-22 → 2026-12-14 (-8d) |  |  |  |
| ML | **Main Line Sections** |  | 2026-11-12 → 2026-11-14 (+2d) |  |  |  |
| CO-SD-ML-100 | Trench Excavation and Bedding Works for Main Lines of Storm Drainage Network |  |  | 10% → 16% |  |  |
| CO-SD-ML-120 | Pipes Laying Works for Main Lines of Storm Drainage Network |  | 2026-11-07 → 2026-11-08 (+1d) | 5% → 10% | -71.03d → -69.9d |  |
| CO-SD-ML-130 | Trench Backfilling and Compaction Works for Main Lines of Storm Drainage Network |  | 2026-11-12 → 2026-11-14 (+2d) | 3% → 6% | -71.03d → -69.9d |  |
| MH | **Manholes** |  | 2026-11-29 → 2026-11-18 (-11d) |  |  |  |
| CO-SD-MH-180 | Trench Excavation and Bedding Works for Manholes of Storm Drainage Network |  | 2026-11-08 → 2026-11-09 (+1d) | 20% → 42% | -68.81d → -61.69d |  |
| CO-SD-MH-190 | Install RC Footing Works for Manholes of Storm Drainage Network | 2026-11-08 → 2026-10-29 A (-10d) | 2026-11-16 → 2026-11-10 (-6d) | 0% → 42% | -68.81d → -60.5d | CO-SD-MH-180, PRO-R25-SD-DL-100 → CO-SD-MH-180 SS, PRO-R25-SD-DL-100 SS, CO-SD-MH-180 FF, PRO-R25-SD-DL-100 FF |
| CO-SD-MH-200 | Install RC Wall Rings & Slab Works for Manholes of Storm Drainage Network | 2026-11-16 → 2026-10-31 A (-16d) | 2026-11-21 → 2026-11-10 (-11d) | 0% → 42% | -68.81d → -60.5d | CO-SD-MH-190, PRO-R25-SD-DL-100 → CO-SD-MH-190 SS, PRO-R25-SD-DL-100 SS, CO-SD-MH-190 FF, PRO-R25-SD-DL-100 FF |
| CO-SD-MH-220 | Backfilling Works for Manholes of Storm Drainage Network | 2026-11-21 → 2026-11-11 (-10d) | 2026-11-29 → 2026-11-18 (-11d) |  | -68.81d → -60.5d |  |
| CB | **Catch Basin Sections** | 2026-11-08 → 2026-11-09 (+1d) | 2026-12-22 → 2026-12-14 (-8d) |  |  |  |
| CO-SD-CB-140 | Trench Excavation and Bedding Works for Catch Basins of Storm Drainage Network | 2026-11-08 → 2026-11-09 (+1d) | 2026-11-19 → 2026-11-21 (+2d) |  | -60.81d → -61.69d |  |
| CO-SD-CB-150 | Installation and Pipes Laying Connection Works for Catch Basins of Storm Drainage Network | 2026-11-29 → 2026-11-21 (-8d) | 2026-12-10 → 2026-12-02 (-8d) |  | -68.81d → -61.69d |  |
| CO-SD-CB-170 | Trench Backfilling and Compaction Works for Catch Basins of Storm Drainage Network | 2026-12-10 → 2026-12-02 (-8d) | 2026-12-22 → 2026-12-14 (-8d) |  | -68.81d → -61.69d |  |
| CB | **Catch Basin Sections** | 2026-12-22 → 2026-12-21 (-1d) |  |  |  |  |
| CO-SD-CB-180 | Trench Excavation and Bedding Works for Catch Basins of Storm Drainage Network | 2026-12-22 → 2026-12-21 (-1d) | 2027-01-02 → 2026-12-30 (-3d) |  | -68.81d → -67.5d |  |
| CO-SD-CB-190 | Installation and Pipes Laying Connection Works for Catch Basins of Storm Drainage Network | 2027-01-02 → 2026-12-31 (-2d) | 2027-01-12 → 2027-01-10 (-2d) |  | -68.81d → -67.5d |  |
| SW | **Sewage Network** |  | 2027-01-11 → 2027-01-10 (-1d) |  |  |  |
| 2 | **FROM MH-18:MH-10** |  | 2027-01-02 → 2026-11-30 (-33d) |  |  |  |
| ML | **Main Line Sections** |  | 2026-12-22 → 2026-11-25 (-27d) |  |  |  |
| CO-SW-ML-100 | Trench Excavation and Bedding Works for Main Lines of Sewage Network |  | 2026-11-15 → 2026-11-16 (+1d) | 7% → 44% | -71.03d → -69.9d |  |
| CO-SW-ML-120 | Pipes Laying Works for Main Lines of Sewage Network | 2026-11-15 → 2026-10-28 A (-18d) | 2026-11-29 → 2026-11-16 (-13d) | 0% → 32% | -71.03d → -53.5d | CO-SW-ML-100 → CO-SW-ML-100 SS, CO-SW-ML-100 FF |
| CO-SW-ML-130 | Trench Backfilling and Compaction Works for Main Lines of Sewage Network | 2026-11-29 → 2026-10-31 A (-29d) | 2026-12-22 → 2026-11-25 (-27d) | 0% → 12% | -68.03d → -45.5d | CO-SW-ML-120 → CO-SW-ML-120 SS, CO-SW-ML-120 FF |
| 1 | **Manholes** | 2026-11-29 → 2026-10-28 (-32d) | 2027-01-02 → 2026-11-30 (-33d) |  |  |  |
| CO-SW-MH-160 | Excavation Works for Main Line Manholes of Sewage Network | 2026-11-29 → 2026-10-28 A (-32d) | 2026-12-07 → 2026-11-16 (-21d) | 0% → 60% | -71.03d → -53.5d | CO-SW-ML-120, ENG-MT-SW-ML-A-100, PRO-SW-1DL-110 → CO-SW-ML-120 SS, ENG-MT-SW-ML-A-100, PRO-SW-1DL-110, CO-SW-ML-120 FF |
| CO-SW-MH-170 | Installation RC Footing Works for Main Line Manholes of Sewage Network | 2026-12-07 → 2026-10-29 A (-39d) | 2026-12-15 → 2026-11-16 (-29d) | 0% → 60% | -70.03d → -45.5d | CO-SW-MH-160, CO-SW-ML-120 FF → CO-SW-MH-160 SS, CO-SW-ML-120 FF, CO-SW-MH-160 FF |
| CO-SW-MH-180 | Install Grp Liner Wall Works for Main Line Manholes of Sewage Network | 2026-12-15 → 2026-10-31 A (-45d) | 2026-12-23 → 2026-11-16 (-37d) | 0% → 60% | -70.03d → -38.5d | CO-SW-MH-170 → CO-SW-MH-170 SS, CO-SW-MH-170 FF |

| ID | Task | Start | Finish | Complete | Total float | Predecessors |
| --- | --- | --- | --- | --- | --- | --- |
| CO-SW-MH-190 | Pouring Grp Liner Wall Works for Main Line Manholes of Sewage Network | 2026-12-23 → 2026-11-01 A (-52d) | 2026-12-28 → 2026-11-16 (-42d) | 0% → 60% | -67.03d → -31.5d | CO-SW-MH-180 → CO-SW-MH-180 SS, CO-SW-MH-180 FF |
| CO-SW-MH-200 | Backfilling Works for Main Line Manholes of Sewage Network | 2026-12-28 → 2026-11-26 (-32d) | 2027-01-02 → 2026-11-30 (-33d) |  | -67.03d → -39.5d |  |
| 1 | **FROM MH-10:MH-01** | 2026-11-15 → 2026-11-16 (+1d) | 2027-01-11 → 2027-01-10 (-1d) |  |  |  |
| ML | **Main Line Sections** | 2026-11-15 → 2026-11-16 (+1d) | 2026-12-14 → 2026-12-15 (+1d) |  |  |  |
| CO-SW-ML-140 | Trench Excavation and Bedding Works for Main Lines of Sewage Network | 2026-11-15 → 2026-11-16 (+1d) | 2026-11-22 → 2026-11-23 (+1d) |  | -69.03d → -69.9d |  |
| CO-SW-ML-150 | Pipes Laying Works for Main Lines of Sewage Network | 2026-11-22 → 2026-11-23 (+1d) | 2026-11-30 → 2026-12-01 (+1d) |  | -69.03d → -69.9d |  |
| CO-SW-ML-160 | Trench Backfilling and Compaction Works for Main Lines of Sewage Network | 2026-11-30 → 2026-12-01 (+1d) | 2026-12-14 → 2026-12-15 (+1d) |  | -69.03d → -69.9d |  |
| 1 | **Manholes** | 2026-12-07 → 2026-12-01 (-6d) | 2027-01-11 → 2027-01-10 (-1d) |  |  |  |
| CO-SW-MH-210 | Excavation Works for Main Line Manholes of Sewage Network | 2026-12-07 → 2026-12-01 (-6d) | 2026-12-16 → 2026-12-10 (-6d) |  | -71.03d → -65.9d |  |
| CO-SW-MH-220 | Installation RC Footing Works for Main Line Manholes of Sewage Network | 2026-12-16 → 2026-12-15 (-1d) | 2026-12-24 → 2026-12-23 (-1d) |  | -71.03d → -69.9d |  |
| CO-SW-MH-230 | Install Grp Liner Wall Works for Main Line Manholes of Sewage Network | 2026-12-24 → 2026-12-23 (-1d) | 2027-01-02 → 2026-12-31 (-2d) |  | -71.03d → -69.9d |  |
| CO-SW-MH-240 | Pouring Grp Liner Wall Works for Main Line Manholes of Sewage Network | 2027-01-02 → 2026-12-31 (-2d) | 2027-01-06 → 2027-01-05 (-1d) |  | -71.03d → -69.9d |  |
| CO-SW-MH-250 | Backfilling Works for Main Line Manholes of Sewage Network | 2027-01-06 → 2027-01-05 (-1d) | 2027-01-11 → 2027-01-10 (-1d) |  | -71.03d → -69.9d |  |
| PW | **Potable Water Network** |  | 2027-04-01 → 2027-03-08 (-24d) |  |  |  |
| ML | **Main Line Sections** |  | 2027-01-30 → 2027-01-17 (-13d) |  |  |  |
| CO-PW-ML-100 | Trench Excavation and Bedding Works for Main Lines of Potable Water Network |  | 2027-01-11 → 2027-01-10 (-1d) | 3% → 42% | -70.03d → -62.4d |  |
| CO-PW-ML-110 | Pipes Laying and accessories for Main Lines of Potable Water Network | 2027-01-11 → 2026-10-28 A (-75d) | 2027-01-20 → 2027-01-17 (-3d) | 0% → 9% | -70.03d → -67d | CO-PW-ML-100, PRO-R25-PW-DL-100_R FF → CO-PW-ML-100 SS, PRO-R25-PW-DL-100_R FF, CO-PW-ML-100 FF |
| CO-PW-ML-130 | Trench Backfilling and Compaction Works for Main Lines of Potable Water Network | 2027-01-20 → 2026-10-30 A (-82d) | 2027-01-30 → 2027-01-17 (-13d) | 0% → 7% | -68.03d → -57d | CO-PW-ML-110 → CO-PW-ML-110 SS |
| VC | **Valve Chamber** | 2027-02-08 → 2027-01-17 (-22d) | 2027-03-03 → 2027-02-04 (-27d) |  |  |  |
| CO-PW-VC-170 | Excavation Works for Main Line Valves and Valve Chambers of Potable Water Network | 2027-02-08 → 2027-01-17 (-22d) | 2027-02-10 → 2027-01-19 (-22d) |  | -75.5d → -57d |  |
| CO-PW-VC180 | Installation Works for Valve Chambers of Potable Water Network | 2027-02-10 → 2027-01-19 (-22d) | 2027-02-16 → 2027-01-24 (-23d) |  | -75.5d → -57d |  |
| CO-PW-VC-190 | Installation Works for Valves of Potable Water Network | 2027-02-17 → 2027-01-24 (-24d) | 2027-02-27 → 2027-02-01 (-26d) |  | -75.5d → -57d |  |
| CO-PW-VC-220 | Backfilling Works for Main Line Valves and Valve Chambers of Potable Water Network | 2027-02-28 → 2027-02-01 (-27d) | 2027-03-03 → 2027-02-04 (-27d) |  | -75.5d → -57d |  |
| FH | **Fire Hydrant** | 2027-03-04 → 2027-02-04 (-28d) | 2027-04-01 → 2027-03-08 (-24d) |  |  |  |
| CO-PW-FH-140 | Excavation Works for Fire Hydrants of Potable Water Network | 2027-03-04 → 2027-02-04 (-28d) | 2027-03-16 → 2027-02-14 (-30d) |  | -75.5d → -57d |  |
| CO-PW-FH-150 | Installation Works for Fire Hydrant of Potable Water Network | 2027-03-17 → 2027-02-15 (-30d) | 2027-03-24 → 2027-02-24 (-28d) |  | -75.5d → -57d |  |
| CO-PW-FH-160 | Trench Backfilling and Compaction Works for Fire Hydrants of Potable Water Network | 2027-03-25 → 2027-02-25 (-28d) | 2027-04-01 → 2027-03-08 (-24d) |  | -75.5d → -57d |  |
| IR | **Irrigation Network** | 2027-01-11 → 2027-01-10 (-1d) | 2027-03-29 → 2027-03-28 (-1d) |  |  |  |
| ML | **Main Line Pipes** | 2027-01-11 → 2027-01-10 (-1d) | 2027-03-29 → 2027-03-28 (-1d) |  |  |  |
| CO-IR-ML-100 | Trench Excavation and Bedding Works for Main Lines of Irrigation Network | 2027-01-11 → 2027-01-10 (-1d) | 2027-01-23 → 2027-01-21 (-2d) |  | -63.52d → -62.4d |  |
| CO-IR-ML-110 | Pipes Laying Works for Main Lines of Irrigation Network | 2027-01-23 → 2027-01-21 (-2d) | 2027-02-03 → 2027-02-01 (-2d) |  | -63.52d → -62.4d |  |
| CO-IR-ML-130 | Trench Backfilling and Compaction Works for Main Lines of Irrigation Network | 2027-03-04 → 2027-03-02 (-2d) | 2027-03-18 → 2027-03-17 (-1d) |  | -74.5d → -73.5d |  |
| CO-IR-ML-140 | Installation Works for Bulbblers And Sprinklers of Irrigation Network | 2027-03-20 → 2027-03-18 (-2d) | 2027-03-29 → 2027-03-28 (-1d) |  | -67.5d → -66.5d |  |
| TSE | **Treated Sewage Effluent (Tse)** | 2027-01-11 → 2027-01-10 (-1d) | 2027-03-29 → 2027-03-28 (-1d) |  |  |  |
| ML | **Main Line Pipes** | 2027-01-11 → 2027-01-10 (-1d) | 2027-03-29 → 2027-03-28 (-1d) |  |  |  |
| CO-TSE-ML-150 | Trench Excavation and Bedding Works for Main Lines of Treated Sewage Effluent (Tse) | 2027-01-11 → 2027-01-10 (-1d) | 2027-01-21 → 2027-01-20 (-1d) |  | -62.02d → -60.9d |  |
| CO-TSE-ML-160 | Pipes Laying Works for Main Lines of Treated Sewage Effluent (Tse) | 2027-01-23 → 2027-01-21 (-2d) | 2027-02-02 → 2027-02-01 (-1d) |  | -62.02d → -60.9d |  |
| CO-TSE-ML-180 | Trench Backfilling and Compaction Works for Treated Sewage Effluent (Tse) | 2027-03-04 → 2027-03-02 (-2d) | 2027-03-18 → 2027-03-17 (-1d) |  | -74.5d → -73.5d |  |
| CO-TSE-ML-190 | Installation Works for Valve and Washout Chambers of Treated Sewage Effluent (Tse) | 2027-03-20 → 2027-03-18 (-2d) | 2027-03-29 → 2027-03-28 (-1d) |  | -55.5d → -54.5d |  |
| MV | **Medium Voltage Network** | 2027-01-23 → 2027-01-30 (+7d) | 2027-03-23 → 2027-03-30 (+7d) |  |  |  |
| CW | **Cabling Works** | 2027-01-23 → 2027-01-30 (+7d) | 2027-03-23 → 2027-03-30 (+7d) |  |  |  |
| CO-MV-ML-250 | Trench Excavation and Bedding Works for Medium Voltage Network | 2027-01-23 → 2027-01-30 (+7d) | 2027-02-03 → 2027-02-11 (+8d) |  | -71.5d → -77.5d |  |
| CO-MV-ML-260 | Cable Laying Works for Medium Voltage Network | 2027-02-04 → 2027-02-13 (+9d) | 2027-02-27 → 2027-03-08 (+9d) |  | -71.5d → -77.5d |  |
| CO-MV-ML-270 | Trench Backfilling and Compaction Works for Medium Voltage Network | 2027-02-28 → 2027-03-13 (+13d) | 2027-03-23 → 2027-03-30 (+7d) |  | -71.5d → -77.5d |  |
| SL | **Street Lighting Network** | 2027-01-23 → 2027-01-30 (+7d) | 2027-04-20 → 2027-04-27 (+7d) |  |  |  |
| LP | **Lighting Poles Works** | 2027-01-23 → 2027-01-30 (+7d) | 2027-03-14 → 2027-03-21 (+7d) |  |  |  |
| CO-SL-LP-300 | Foundation Excavation Works for Lighting Poles of Street Lighting Network | 2027-01-23 → 2027-01-30 (+7d) | 2027-01-31 → 2027-02-07 (+7d) |  | -68.5d → -74.5d |  |
| CO-SL-LP-310 | Installation Works for Lighting Poles Foundation of Street Lighting Network | 2027-02-01 → 2027-02-08 (+7d) | 2027-02-10 → 2027-02-20 (+10d) |  | -68.5d → -74.5d |  |
| CO-SL-LP-320 | Installation Works for Lighting Poles of Street Lighting Network | 2027-02-10 → 2027-02-20 (+10d) | 2027-02-24 → 2027-03-06 (+10d) |  | -68.5d → -74.5d |  |
| CO-SL-LP-210 | Backfilling Works for Lighting Poles of Street Lighting Network | 2027-02-24 → 2027-03-06 (+10d) | 2027-03-14 → 2027-03-21 (+7d) |  | -68.5d → -74.5d |  |
| CW | **Cabling Works** | 2027-02-01 → 2027-02-08 (+7d) | 2027-03-08 → 2027-03-18 (+10d) |  |  |  |
| CO-SL-CL-250 | Trench Excavation and Bedding Works for Street Lighting Network | 2027-02-01 → 2027-02-08 (+7d) | 2027-02-09 → 2027-02-18 (+9d) |  | -65.5d → -71.5d |  |
| CO-SL-CL-260 | Cable Laying Works for Street Lighting Network | 2027-02-09 → 2027-02-18 (+9d) | 2027-02-20 → 2027-03-01 (+9d) |  | -65.5d → -71.5d |  |
| CO-SL-CL-270 | Trench Backfilling and Compaction Works for Street Lighting Network | 2027-02-24 → 2027-03-06 (+10d) | 2027-03-08 → 2027-03-18 (+10d) |  | -68.5d → -74.5d |  |
| DPB | **Distrubution Panel Boards** | 2027-03-24 → 2027-03-31 (+7d) | 2027-04-20 → 2027-04-27 (+7d) |  |  |  |
| CO-SL-DB-250 | Foundation Excavation Works For Panel Boards of Street Lighting Network | 2027-03-24 → 2027-03-31 (+7d) | 2027-03-30 → 2027-04-06 (+7d) |  | -70d → -76d |  |
| CO-SL-DB-260 | Installation Works for Panel Board Concrete Foundations of Street Lighting Network | 2027-03-31 → 2027-04-07 (+7d) | 2027-04-06 → 2027-04-13 (+7d) |  | -70d → -76d |  |
| CO-SL-DB-270 | Installation Works for Lighting Panel Boards of Street Lighting Network | 2027-04-07 → 2027-04-14 (+7d) | 2027-04-13 → 2027-04-20 (+7d) |  | -70d → -76d |  |
| CO-SL-DB-220 | A wall of concrete blocks to install the KWH meter of Street Lighting Network | 2027-04-14 → 2027-04-21 (+7d) | 2027-04-20 → 2027-04-27 (+7d) |  | -63d → -69d |  |
| TE | **Telecom Network** | 2027-02-04 → 2027-02-13 (+9d) | 2027-04-04 → 2027-04-11 (+7d) |  |  |  |
| PD | **Ducts Works** | 2027-02-04 → 2027-02-13 (+9d) | 2027-03-16 → 2027-03-23 (+7d) |  |  |  |
| CO-TE-DW-100 | Trench Excavation and Bedding Works for Ducts of Telecom Network | 2027-02-04 → 2027-02-13 (+9d) | 2027-02-09 → 2027-02-18 (+9d) |  | -71d → -77d |  |
| CO-TE-DW-110 | Pipes Laying Works for Ducts of Telecom Network | 2027-02-09 → 2027-02-18 (+9d) | 2027-02-15 → 2027-02-24 (+9d) |  | -71d → -77d |  |
| CO-TE-DW-130 | Trench Backfilling and Compaction Works for Ducts of Telecom Network | 2027-02-15 → 2027-02-24 (+9d) | 2027-02-27 → 2027-03-08 (+9d) |  | -70d → -76d |  |
| CO-TE-DW-120 | Pouring Road Crossing Concrete Encasement | 2027-02-28 → 2027-03-13 (+13d) | 2027-03-16 → 2027-03-23 (+7d) |  | -70d → -76d |  |
| MH | **Manholes Works** | 2027-02-15 → 2027-02-24 (+9d) | 2027-03-17 → 2027-03-24 (+7d) |  |  |  |
| CO-TE-MH-140 | Excavation Works for Manholes of Telecom Network | 2027-02-15 → 2027-02-24 (+9d) | 2027-02-22 → 2027-03-03 (+9d) |  | -71d → -77d |  |
| CO-TE-MH-150 | Installation Works for Manholes of Telecom Network | 2027-02-23 → 2027-03-04 (+9d) | 2027-03-06 → 2027-03-16 (+10d) |  | -71d → -77d |  |
| CO-TE-MH-160 | Backfilling Works for Manholes of Telecom Network | 2027-03-06 → 2027-03-17 (+11d) | 2027-03-17 → 2027-03-24 (+7d) |  | -71d → -77d |  |
| DD | **CCTV System Wroks** | 2027-03-18 → 2027-03-25 (+7d) | 2027-04-04 → 2027-04-11 (+7d) |  |  |  |

| ID | Task | Start | Finish | Total float |
| --- | --- | --- | --- | --- |
| CO-TE-CTV-100 | Digging and Pulling Trenches PVC ducts , Backfilling, Excavations, of Power Cable | 2027-03-18 → 2027-03-25 (+7d) | 2027-03-23 → 2027-03-30 (+7d) | -71d → -77d |
| CO-TE-CTV-110 | Installation of Network Cable Cat.6A from Network switch to CCTV Camera and ACS Device | 2027-03-24 → 2027-03-31 (+7d) | 2027-03-29 → 2027-04-05 (+7d) | -71d → -77d |
| CO-TE-CTV-130 | Installation of Access Control System | 2027-03-30 → 2027-04-06 (+7d) | 2027-04-04 → 2027-04-11 (+7d) | -71d → -77d |
| RD | **Road Works** | 2027-03-07 → 2027-03-15 (+8d) | 2027-05-09 → 2027-05-12 (+3d) |  |
| 3 | **ST+1000:ST+1531** | 2027-03-07 → 2027-03-15 (+8d) | 2027-04-12 → 2027-04-15 (+3d) |  |
| RD | **Pre-Bituminous Construction** | 2027-03-07 → 2027-03-15 (+8d) | 2027-04-12 → 2027-04-15 (+3d) |  |
| CO-RD-PB-140 | Subgrade Layer for Road Works | 2027-03-07 → 2027-03-15 (+8d) | 2027-03-27 → 2027-03-30 (+3d) | -74.5d → -77.5d |
| CO-RD-PB-150 | Aggregate Base Course Layer for Road Works | 2027-03-27 → 2027-03-30 (+3d) | 2027-04-12 → 2027-04-15 (+3d) | -74.5d → -77.5d |
| 2 | **ST+500:ST+1000** | 2027-03-28 → 2027-03-31 (+3d) | 2027-04-25 → 2027-04-28 (+3d) |  |
| RD | **Pre-Bituminous Construction** | 2027-03-28 → 2027-03-31 (+3d) | 2027-04-25 → 2027-04-28 (+3d) |  |
| CO-RD-PB-120 | Subgrade Layer for Road Works | 2027-03-28 → 2027-03-31 (+3d) | 2027-04-08 → 2027-04-12 (+4d) | -73.8d → -76.8d |
| CO-RD-PB-130 | Aggregate Base Course Layer for Road Works | 2027-04-12 → 2027-04-15 (+3d) | 2027-04-25 → 2027-04-28 (+3d) | -74.5d → -77.5d |
| 1 | **ST+01:ST+500** | 2027-04-08 → 2027-04-12 (+4d) | 2027-05-09 → 2027-05-12 (+3d) |  |
| RD | **Pre-Bituminous Construction** | 2027-04-08 → 2027-04-12 (+4d) | 2027-05-09 → 2027-05-12 (+3d) |  |
| CO-RD-PB-100 | Subgrade Layer for Road Works | 2027-04-08 → 2027-04-12 (+4d) | 2027-04-22 → 2027-04-26 (+4d) | -73.8d → -76.8d |
| CO-RD-PB-110 | Aggregate Base Course Layer for Road Works | 2027-04-25 → 2027-04-28 (+3d) | 2027-05-09 → 2027-05-12 (+3d) | -74.5d → -77.5d |
| 3 | **Finishes for Infrastructure Networks** | 2027-01-11 → 2027-01-10 (-1d) | 2027-05-26 → 2027-05-30 (+4d) |  |
| 11 | **Storm Drainage Network** |  | 2027-04-14 → 2027-04-21 (+7d) |  |
| TF | **Testing and Finishes** |  | 2027-04-14 → 2027-04-21 (+7d) |  |
| CO-SD-MH-TF-210 | Testing Works for Manholes of Storm Drainage Network | 2027-04-08 → 2027-04-15 (+7d) | 2027-04-14 → 2027-04-21 (+7d) | -74.5d → -80.5d |
| 10 | **Sewage Network** | 2027-01-11 → 2027-01-10 (-1d) | 2027-04-28 → 2027-03-04 (-55d) |  |
| TF | **Testing and Finishes** | 2027-01-11 → 2027-01-10 (-1d) | 2027-04-28 → 2027-03-04 (-55d) |  |
| CO-SW-TF-100 | Final Testing For Main Line of Sewage Network | 2027-01-11 → 2027-01-10 (-1d) | 2027-01-21 → 2027-01-20 (-1d) | -71.03d → -69.9d |
| CO-SW-TF-130 | Main Manhole Internal Finishes (Benching + Insulation) of Sewage Network | 2027-01-21 → 2027-01-20 (-1d) | 2027-02-17 → 2027-02-16 (-1d) | -35.02d → -33.9d |
| CO-SW-TF-110 | Install Manhole Cover Works for External Finishes of Sewage Network | 2027-04-15 → 2027-02-16 (-58d) | 2027-04-27 → 2027-03-03 (-55d) | -77.25d → -33.9d |
| CO-SW-TF-210 | Testing Works for Main Line Manholes of Sewage Network | 2027-04-24 → 2027-02-27 (-56d) | 2027-04-28 → 2027-03-04 (-55d) | -77.25d → -33.9d |
| 9 | **Potable Water Network** | 2027-04-03 → 2027-03-08 (-26d) | 2027-05-08 → 2027-04-27 (-11d) |  |
| TF | **Testing and Finishes** | 2027-04-03 → 2027-03-08 (-26d) | 2027-05-08 → 2027-04-27 (-11d) |  |
| CO-PW-TF-110 | Testing Work for Main Line of Potable Water Network | 2027-04-03 → 2027-03-08 (-26d) | 2027-04-14 → 2027-03-23 (-22d) | -75.5d → -57d |
| CO-PW-TF-120 | Fire Hydrant Finishies (S.Box + Safety + Marker Post ) of Potable Water Network | 2027-04-14 → 2027-03-24 (-21d) | 2027-04-26 → 2027-04-04 (-22d) | -75.5d → -57d |
| CO-PW-TF-100 | Final Finishes works and Covers for Valves and Valve Chambers of Potable Water Network | 2027-04-26 → 2027-04-15 (-11d) | 2027-05-08 → 2027-04-27 (-11d) | -75.5d → -66.75d |
| 13 | **Irrigation Network** | 2027-03-30 → 2027-03-29 (-1d) | 2027-04-12 → 2027-04-11 (-1d) |  |
| TF | **Testing and Finishes** | 2027-03-30 → 2027-03-29 (-1d) | 2027-04-12 → 2027-04-11 (-1d) |  |
| CO-IR-TF-160 | Final Testing (pressure tests) of Irrigation Network | 2027-03-30 → 2027-03-29 (-1d) | 2027-04-12 → 2027-04-11 (-1d) | -67.5d → -66.5d |
| 1 | **Treated Sewage Effluent (Tse)** | 2027-04-13 → 2027-04-12 (-1d) | 2027-04-26 → 2027-04-25 (-1d) |  |
| TF | **Testing and Finishes** | 2027-04-13 → 2027-04-12 (-1d) | 2027-04-26 → 2027-04-25 (-1d) |  |
| CO-TSE-TF-170 | Final Testing (pressure tests) of Treated Sewage Effluent (Tse) | 2027-04-13 → 2027-04-12 (-1d) | 2027-04-26 → 2027-04-25 (-1d) | -67.5d → -66.5d |
| 14 | **Medium Voltage Network** | 2027-04-06 → 2027-04-11 (+5d) | 2027-04-26 → 2027-05-02 (+6d) |  |
| TT | **Termination and Testing Works** | 2027-04-06 → 2027-04-11 (+5d) | 2027-04-26 → 2027-05-02 (+6d) |  |
| CO-MV-TF-220 | Termination Works of Medium Voltage Network | 2027-04-06 → 2027-04-11 (+5d) | 2027-04-26 → 2027-05-02 (+6d) | -79d → -83.5d |
| 12 | **Street Lighting Network** | 2027-04-14 → 2027-04-21 (+7d) | 2027-04-29 → 2027-05-06 (+7d) |  |
| TR | **Termination and Testing Works** | 2027-04-14 → 2027-04-21 (+7d) | 2027-04-29 → 2027-05-06 (+7d) |  |
| CO-SL-LP-330 | Installation Works for Lighting Fixtures With Drop Wire of Street Lighting Network | 2027-04-14 → 2027-04-21 (+7d) | 2027-04-21 → 2027-04-28 (+7d) | -70d → -76d |
| CO-SL-TF-200 | Testing Works for Lighting Poles of Street Lighting Network | 2027-04-22 → 2027-04-29 (+7d) | 2027-04-27 → 2027-05-04 (+7d) | -62d → -68d |
| CO-SL-TF-220 | Termination Works For Lighting Poles Cables of Street Lighting Network | 2027-04-22 → 2027-04-29 (+7d) | 2027-04-29 → 2027-05-06 (+7d) | -64d → -70d |
| CO-SL-TF-230 | Termination Works For Panel Board Cables of Street Lighting Network | 2027-04-22 → 2027-04-29 (+7d) | 2027-04-29 → 2027-05-06 (+7d) | -64d → -70d |
| CO-SL-TF-380 | Testing Works For Panel Board Cables of Street Lighting Network | 2027-04-22 → 2027-04-29 (+7d) | 2027-04-24 → 2027-05-01 (+7d) | -59d → -65d |
| ES | **Earthing System Works** | 2027-04-14 → 2027-04-21 (+7d) | 2027-04-21 → 2027-04-28 (+7d) |  |
| CO-SL-ES-220 | Install Earthing System Works for Lighting Poles of Street Lighting Network | 2027-04-14 → 2027-04-21 (+7d) | 2027-04-21 → 2027-04-28 (+7d) | -70d → -76d |
| CO-SL-ES-230 | Install Earthing System Works for Lighting Panel Boards of Street Lighting Network | 2027-04-14 → 2027-04-21 (+7d) | 2027-04-21 → 2027-04-28 (+7d) | -70d → -76d |
| 3 | **Telecom Network** | 2027-04-05 → 2027-04-12 (+7d) | 2027-05-03 → 2027-05-10 (+7d) |  |
| 1 | **Testing and Finishes** | 2027-04-05 → 2027-04-12 (+7d) | 2027-05-03 → 2027-05-10 (+7d) |  |
| CO-TE-CTV-TF-110 | Smart Card Printer | 2027-04-05 → 2027-04-12 (+7d) | 2027-04-08 → 2027-04-15 (+7d) | -71d → -77d |
| CO-TE-CTV-TF-120 | Card Issue Work Station | 2027-04-10 → 2027-04-17 (+7d) | 2027-04-13 → 2027-04-20 (+7d) | -71d → -77d |
| CO-TE-CTV-TF-130 | Photographic Camera with stand | 2027-04-14 → 2027-04-21 (+7d) | 2027-04-18 → 2027-04-25 (+7d) | -71d → -77d |
| CO-TE-CTV-TF-140 | Interface modules with CCTV, Fire and other systems | 2027-04-29 → 2027-05-06 (+7d) | 2027-05-03 → 2027-05-10 (+7d) | -80d → -86d |
| 2 | **Road Works** | 2027-03-27 → 2027-03-30 (+3d) | 2027-05-26 → 2027-05-30 (+4d) |  |
| 3 | **ST+1000:ST+1531** | 2027-03-27 → 2027-03-30 (+3d) | 2027-05-20 → 2027-05-24 (+4d) |  |
| 1 | **Bituminous Construction** | 2027-04-12 → 2027-04-15 (+3d) | 2027-04-28 → 2027-05-02 (+4d) |  |
| CO-RD-B-150 | Application of Prime Coat Layer for Road Works | 2027-04-12 → 2027-04-15 (+3d) | 2027-04-20 → 2027-04-24 (+4d) | -73.5d → -76.5d |
| CO-RD-B-160 | Bituminous Base Courses Layers for Road Works- | 2027-04-20 → 2027-04-24 (+4d) | 2027-04-28 → 2027-05-02 (+4d) | -73.5d → -76.5d |
| LS | **Pavement Works** | 2027-03-27 → 2027-03-30 (+3d) | 2027-04-22 → 2027-04-26 (+4d) |  |
| CO-RD-PV-160 | Fixing of Curbstone for Sidewalks Pavement | 2027-03-27 → 2027-03-30 (+3d) | 2027-04-10 → 2027-04-13 (+3d) | -73.7d → -76.7d |
| CO-RD-PV-170 | Fixing of Interlock Tiles for Sidewalks Pavement | 2027-04-10 → 2027-04-13 (+3d) | 2027-04-22 → 2027-04-26 (+4d) | -73.7d → -76.7d |
| TS | **Traffic Signs Boards and Roads Marking** | 2027-04-28 → 2027-05-02 (+4d) | 2027-05-20 → 2027-05-24 (+4d) |  |
| CO-RD-F-RM-180 | Application of Road Marking Works For Road Works | 2027-04-28 → 2027-05-02 (+4d) | 2027-05-06 → 2027-05-10 (+4d) | -70.5d → -73.5d |
| CO-RD-F-TS-120 | Installation Works of Traffic Signs Boards For Road Works | 2027-05-06 → 2027-05-10 (+4d) | 2027-05-20 → 2027-05-24 (+4d) | -70.5d → -73.5d |
| 1 | **ST+500:ST+1000** | 2027-04-10 → 2027-04-13 (+3d) | 2027-05-25 → 2027-05-29 (+4d) |  |
| 1 | **Bituminous Construction** | 2027-04-28 → 2027-05-02 (+4d) | 2027-05-08 → 2027-05-11 (+3d) |  |
| CO-RD-B-130 | Application of Prime Coat Layer for Road Works | 2027-04-28 → 2027-05-02 (+4d) | 2027-05-03 → 2027-05-06 (+3d) | -73.5d → -76.5d |

| ID | Task | Start | Finish | Complete | Total float | Predecessors | Other |
| --- | --- | --- | --- | --- | --- | --- | --- |
| CO-RD-B-140 | Bituminous Base Courses Layers for Road Works- | 2027-05-03 → 2027-05-06 (+3d) | 2027-05-08 → 2027-05-11 (+3d) |  | -73.5d → -76.5d |  |  |
| LS | **Pavement Works** | 2027-04-10 → 2027-04-13 (+3d) | 2027-05-05 → 2027-05-09 (+4d) |  |  |  |  |
| CO-RD-PV-140 | Fixing of Curbstone for Sidewalks Pavement | 2027-04-10 → 2027-04-13 (+3d) | 2027-04-22 → 2027-04-26 (+4d) |  | -73.7d → -76.7d |  |  |
| CO-RD-PV-150 | Fixing of Interlock Tiles for Sidewalks Pavement | 2027-04-22 → 2027-04-26 (+4d) | 2027-05-05 → 2027-05-09 (+4d) |  | -73.7d → -76.7d |  |  |
| TS | **Traffic Signs Boards and Roads Marking** | 2027-05-09 → 2027-05-12 (+3d) | 2027-05-25 → 2027-05-29 (+4d) |  |  |  |  |
| CO-RD-F-RM-170 | Application of Road Marking Works For Road Works | 2027-05-09 → 2027-05-12 (+3d) | 2027-05-20 → 2027-05-24 (+4d) |  | -74.5d → -77.5d |  |  |
| CO-RD-F-TS-110 | Installation Works of Traffic Signs Boards For Road Works | 2027-05-20 → 2027-05-24 (+4d) | 2027-05-25 → 2027-05-29 (+4d) |  | -74.5d → -77.5d |  |  |
| 2 | **ST+01:ST+500** | 2027-04-22 → 2027-04-26 (+4d) | 2027-05-26 → 2027-05-30 (+4d) |  |  |  |  |
| 1 | **Bituminous Construction** | 2027-05-09 → 2027-05-12 (+3d) | 2027-05-25 → 2027-05-29 (+4d) |  |  |  |  |
| CO-RD-B-110 | Application of Prime Coat Layer for Road Works | 2027-05-09 → 2027-05-12 (+3d) | 2027-05-20 → 2027-05-24 (+4d) |  | -74.5d → -77.5d |  |  |
| CO-RD-B-120 | Bituminous Base Courses Layers for Road Works- | 2027-05-20 → 2027-05-24 (+4d) | 2027-05-25 → 2027-05-29 (+4d) |  | -74.5d → -77.5d |  |  |
| LS | **Pavement Works** | 2027-04-22 → 2027-04-26 (+4d) | 2027-05-24 → 2027-05-27 (+3d) |  |  |  |  |
| CO-RD-PV-120 | Fixing of Curbstone for Sidewalks Pavement | 2027-04-22 → 2027-04-26 (+4d) | 2027-05-05 → 2027-05-09 (+4d) |  | -73.8d → -76.8d |  |  |
| CO-RD-PV-130 | Fixing of Interlock Tiles for Sidewalks Pavement | 2027-05-05 → 2027-05-09 (+4d) | 2027-05-24 → 2027-05-27 (+3d) |  | -73.8d → -76.8d |  |  |
| TS | **Traffic Signs Boards and Roads Marking** | 2027-05-25 → 2027-05-29 (+4d) | 2027-05-26 → 2027-05-30 (+4d) |  |  |  |  |
| CO-RD-F-RM-160 | Application of Road Marking Works For Road Works | 2027-05-25 → 2027-05-29 (+4d) | 2027-05-26 → 2027-05-30 (+4d) |  | -71.5d → -74.5d |  |  |
| CO-RD-F-TS-100 | Installation Works of Traffic Signs Boards For Road Works | 2027-05-25 → 2027-05-29 (+4d) | 2027-05-26 → 2027-05-30 (+4d) |  | -71.5d → -74.5d |  |  |
| GEN | **Superstructure Work** |  | 2027-05-11 → 2027-05-23 (+12d) |  |  |  |  |
| 4 | **Utility Buildings** |  | 2027-05-11 → 2027-05-23 (+12d) |  |  |  |  |
| 4 | **Pump Station** |  | 2027-05-11 → 2027-05-23 (+12d) |  |  |  |  |
| CO-UB-PS-100 | Excavation Work for for Pump station building |  |  |  |  |  | resources Unskilled Labor [160 h]; Excavator [80 h]; Skilled Labor [80 h]; Price → Price; Unskilled Labor [160 h]; Excavator [80 h]; Skilled Labor [80 h] |
| CO-UB-PS-110 | pouring P.C Conceret for Pump station building |  |  |  |  |  | resources Unskilled Labor [24 h]; Mason [24 h]; Price [72069.1 SAR] → Price [72069.1 SAR]; Unskilled Labor [24 h]; Mason [24 h] |
| CO-UB-PS-120 | Formwork for Foundation for Pump station building |  |  |  |  |  | resources Unskilled Labor [56 h]; Carpenter [112 h]; Price [72069.1 SAR] → Price [72069.1 SAR]; Unskilled Labor [56 h]; Carpenter [112 h] |
| CO-UB-PS-130 | Steel fixing for Foundation for Pump station building |  |  |  |  |  | resources Unskilled Labor [40 h]; Steel Fixer [120 h]; Price [72069.1 SAR] → Price [72069.1 SAR]; Unskilled Labor [40 h]; Steel Fixer [120 h] |
| CO-UB-PS-140 | pouring for Foundation for Pump station building |  |  |  |  |  | resources Unskilled Labor [8 h]; Mason [8 h]; Price [72069.1 SAR] → Price [72069.1 SAR]; Unskilled Labor [8 h]; Mason [8 h] |
| CO-UB-PS-150 | curing and deshuttering formwork Pump station building |  |  |  |  |  | resources Unskilled Labor [72 h]; Carpenter [48 h]; Price [72069.1 SAR] → Price [72069.1 SAR]; Unskilled Labor [72 h]; Carpenter [48 h] |
| CO-UB-PS-160 | Backfilling and compaction work for pump station |  |  |  |  |  | resources Unskilled Labor [80 h]; Excavator [40 h]; Skilled Labor [40 h]; Price [72069.1 SAR] → Price [72069.1 SAR]; Unskilled Labor [80 h]; Excavator [40 h]; Skilled Labor [40 h] |
| CO-UB-PS-170 | Formwork for Wall and columns for Pump station building |  |  |  |  |  | resources Unskilled Labor [96 h]; Carpenter [192 h]; Price [72069.1 SAR] → Price [72069.1 SAR]; Unskilled Labor [96 h]; Carpenter [192 h] |
| CO-UB-PS-180 | Steel fixing for Wall columns |  |  |  |  |  | resources Unskilled Labor [56 h]; Steel Fixer [168 h]; Price [72069.1 SAR] → Price [72069.1 SAR]; Unskilled Labor [56 h]; Steel Fixer [168 h] |
| CO-UB-PS-190 | pouring for Wall columns |  |  |  |  |  | resources Unskilled Labor [8 h]; Mason [8 h]; Price [72069.1 SAR] → Price [72069.1 SAR]; Unskilled Labor [8 h]; Mason [8 h] |
| CO-UB-PS-200 | curing and deshuttering formwork for Wall columns |  |  |  |  |  | resources Unskilled Labor [48 h]; Carpenter [32 h]; Price [72069.1 SAR] → Price [72069.1 SAR]; Unskilled Labor [48 h]; Carpenter [32 h] |
| CO-UB-PS-210 | Waterproofing for Walls columns |  |  |  |  |  | resources Unskilled Labor [40 h]; Mason [40 h]; Price [72069.1 SAR] → Price [72069.1 SAR]; Unskilled Labor [40 h]; Mason [40 h] |
| CO-UB-PS-220 | Formwork for pump roof |  |  |  |  |  | resources Unskilled Labor [96 h]; Carpenter [192 h]; Price [72069.1 SAR] → Price [72069.1 SAR]; Unskilled Labor [96 h]; Carpenter [192 h] |
| CO-UB-PS-230 | Steel fixing for pump roof |  |  |  |  |  | resources Unskilled Labor [80 h]; Steel Fixer [240 h]; Price [72069.1 SAR] → Price [72069.1 SAR]; Unskilled Labor [80 h]; Steel Fixer [240 h] |
| CO-UB-PS-240 | pouring for pump roof |  |  |  |  |  | resources Unskilled Labor [8 h]; Mason [8 h]; Price [72069.1 SAR] → Price [72069.1 SAR]; Unskilled Labor [8 h]; Mason [8 h] |
| CO-UB-PS-250 | curing and deshuttering formwork for pump roof |  |  |  |  |  | resources Unskilled Labor [48 h]; Carpenter [32 h]; Price [72069.1 SAR] → Price [72069.1 SAR]; Unskilled Labor [48 h]; Carpenter [32 h] |
| 2 | **Architectural work** | 2026-10-27 → 2026-11-03 (+7d) | 2026-12-06 → 2026-12-13 (+7d) |  |  |  |  |
| CO-UB-PS-260 | Executing Masonry Works for Pump station building | 2026-10-27 → 2026-11-03 (+7d) | 2026-11-01 → 2026-11-08 (+7d) |  | 32d → 26d |  | resources Unskilled Labor [192 h]; Mason [192 h]; Price [183776 SAR] → Price [183776 SAR]; Unskilled Labor [192 h]; Mason [192 h] |
| CO-UB-PS-270 | Executing Plastering Works for Pump station building | 2026-11-02 → 2026-11-09 (+7d) | 2026-11-07 → 2026-11-14 (+7d) |  | 32d → 26d |  | resources Unskilled Labor [112 h]; Mason [112 h]; Price [229720 SAR] → Price [229720 SAR]; Unskilled Labor [112 h]; Mason [112 h] |
| CO-UB-PS-280 | Executing Painting Works for Pump station building | 2026-11-08 → 2026-11-15 (+7d) | 2026-11-12 → 2026-11-19 (+7d) |  | 32d → 26d |  | resources Unskilled Labor [224 h]; Skilled Labor [224 h]; Price [227221 SAR] → Price [227221 SAR]; Unskilled Labor [224 h]; Skilled Labor [224 h] |
| CO-UB-PS-320 | Doors and windows Fixing &Stair Tiles | 2026-11-29 → 2026-12-06 (+7d) | 2026-12-06 → 2026-12-13 (+7d) |  | 36d → 30d |  | resources Unskilled Labor [56 h]; Carpenter [112 h]; Price [229720 SAR] → Price [229720 SAR]; Unskilled Labor [56 h]; Carpenter [112 h] |
| 3 | **Electrical work** | 2026-11-14 → 2026-11-21 (+7d) | 2027-05-05 → 2027-05-11 (+6d) |  |  |  |  |
| CO-UB-PS-290 | Lighting system for pump house | 2026-11-14 → 2026-11-21 (+7d) | 2026-11-18 → 2026-11-25 (+7d) |  | 32d → 26d |  | resources Unskilled Labor [96 h]; Electrical Technician [192 h]; Price [135130 SAR] → Price [135130 SAR]; Unskilled Labor [96 h]; Electrical Technician [192 h] |
| CO-UB-PS-300 | Wiring connection for pump house | 2026-11-19 → 2026-11-26 (+7d) | 2026-11-24 → 2026-12-01 (+7d) |  | 32d → 26d |  | resources Unskilled Labor [72 h]; Electrical Technician [144 h]; Price [54051.9 SAR] → Price [54051.9 SAR]; Unskilled Labor [72 h]; Electrical Technician [144 h] |
| CO-UB-PS-310 | Sockets and switches for pump house | 2026-11-25 → 2026-12-02 (+7d) | 2026-11-28 → 2026-12-05 (+7d) |  | 32d → 26d |  | resources Unskilled Labor [56 h]; Electrical Technician [112 h]; Price [81077.8 SAR] → Price [81077.8 SAR]; Unskilled Labor [56 h]; Electrical Technician [112 h] |
| CO-UB-PS-330 | Installation for Distribution boards for pump house | 2026-11-29 → 2026-12-06 (+7d) | 2026-12-07 → 2026-12-14 (+7d) |  | 32d → 26d |  | resources Unskilled Labor [96 h]; Electrical Technician [192 h]; Price [135130 SAR] → Price [135130 SAR]; Unskilled Labor [96 h]; Electrical Technician [192 h] |
| CO-UB-PS-370 | Executing Earthing and bonding for the entire system | 2027-04-27 → 2027-05-02 (+5d) | 2027-05-05 → 2027-05-11 (+6d) |  | -79d → -83.5d |  | resources Unskilled Labor [104 h]; Electrical Technician [208 h]; Price [135130 SAR] → Price [135130 SAR]; Unskilled Labor [104 h]; Electrical Technician [208 h] |
| 4 | **Mechanical work** | 2026-11-29 → 2026-12-06 (+7d) | 2027-05-11 → 2027-05-23 (+12d) |  |  |  |  |
| CO-UB-PS-340 | Executing HVAC System for Pump station building | 2026-11-29 → 2026-12-06 (+7d) | 2026-12-14 → 2026-12-21 (+7d) |  | 34d → 28d |  | resources Unskilled Labor [112 h]; Electrical Technician [224 h]; Price [162156 SAR] → Price [162156 SAR]; Unskilled Labor [112 h]; Electrical Technician [224 h] |
| CO-UB-PS-350 | Executing Fire Alarm System for Pump station building | 2026-11-29 → 2026-12-06 (+7d) | 2026-12-03 → 2026-12-10 (+7d) |  | 33d → 27d |  | resources Unskilled Labor [72 h]; Electrical Technician [144 h]; Price [324311 SAR] → Price [324311 SAR]; Unskilled Labor [72 h]; Electrical Technician [144 h] |
| CO-UB-PS-360 | Executing Fire fighting institution works(piping and wire installation) for Pump station building | 2026-12-05 → 2026-12-12 (+7d) | 2026-12-09 → 2026-12-16 (+7d) |  | 33d → 27d |  | resources Unskilled Labor [72 h]; Electrical Technician [144 h]; Price [405389 SAR] → Price [405389 SAR]; Unskilled Labor [72 h]; Electrical Technician [144 h] |
| CO-UB-PS-380 | Executing Fire fighting finishing works for Pump station building | 2026-12-10 → 2026-12-17 (+7d) | 2026-12-15 → 2026-12-22 (+7d) |  | 33d → 27d |  | resources Unskilled Labor [72 h]; Electrical Technician [144 h]; Price [162156 SAR] → Price [162156 SAR]; Unskilled Labor [72 h]; Electrical Technician [144 h] |
| CO-UB-PS-390 | Installation of pumps | 2027-05-06 → 2027-05-11 (+5d) | 2027-05-11 → 2027-05-23 (+12d) |  | -79d → -83.5d |  | resources Unskilled Labor [112 h]; Electrical Technician [224 h]; Price [567545 SAR] → Price [567545 SAR]; Unskilled Labor [112 h]; Electrical Technician [224 h] |
| 3 | **Lift Station** |  | 2027-01-17 → 2027-01-21 (+4d) |  |  |  |  |
| 1 | **Civil work** |  | 2026-11-23 → 2026-11-28 (+5d) |  |  |  |  |
| CO-UB-LS-220 | Excavation Work for for Lift Station |  |  |  |  |  | resources Unskilled Labor [144 h]; Excavator [72 h]; Skilled Labor [72 h]; Price → Price; Unskilled Labor [144 h]; Excavator [72 h]; Skilled Labor [72 h] |
| CO-UB-LS-230 | pouring P.C Conceret for Lift Station |  |  |  |  |  | resources Unskilled Labor [40 h]; Mason [40 h]; Price [42040.3 SAR] → Price [42040.3 SAR]; Unskilled Labor [40 h]; Mason [40 h] |
| CO-UB-LS-240 | Formwork for Foundation for Lift Station |  |  |  |  |  | resources Unskilled Labor [56 h]; Carpenter [112 h]; Price [58856.5 SAR] → Price [58856.5 SAR]; Unskilled Labor [56 h]; Carpenter [112 h] |
| CO-UB-LS-250 | Steel fixing for Foundation for Lift Station |  |  |  |  |  | resources Unskilled Labor [64 h]; Steel Fixer [192 h]; Price [42040.3 SAR] → Price [42040.3 SAR]; Unskilled Labor [64 h]; Steel Fixer [192 h] |
| CO-UB-LS-260 | pouring for Foundation for Lift Station |  |  |  |  |  | resources Unskilled Labor [8 h]; Mason [8 h]; Price [50448.4 SAR] → Price [50448.4 SAR]; Unskilled Labor [8 h]; Mason [8 h] |
| CO-UB-LS-270 | curing and deshuttering formwork Lift Station |  |  |  |  |  | resources Unskilled Labor [48 h]; Carpenter [32 h]; Price [8408.07 SAR] → Price [8408.07 SAR]; Unskilled Labor [48 h]; Carpenter [32 h] |
| CO-UB-LS-280 | Backfilling and compaction work for pump station |  |  |  |  |  | resources Unskilled Labor [96 h]; Excavator [48 h]; Skilled Labor [48 h]; Price [84080.7 SAR] → Price [84080.7 SAR]; Unskilled Labor [96 h]; Excavator [48 h]; Skilled Labor [48 h] |
| 2 | **Super structure** |  | 2026-11-23 → 2026-11-28 (+5d) |  |  |  |  |
| CO-UB-LS-290 | Formwork for Wall and columns for Lift Station |  | 2026-10-29 → 2026-11-05 (+7d) | 70% → 80% | 10.76d → 6.75d |  | resources Unskilled Labor [168 h]; Carpenter [112 h]; Price [84080.7 SAR] → Price [84080.7 SAR]; Unskilled Labor [168 h]; Carpenter [112 h] |
| CO-UB-LS-300 | Steel fixing for Wall columns |  | 2026-10-29 → 2026-11-05 (+7d) | 70% → 80% | 10.76d → 6.75d |  | resources Unskilled Labor [72 h]; Steel Fixer [216 h]; Price [84080.7 SAR] → Price [84080.7 SAR]; Unskilled Labor [72 h]; Steel Fixer [216 h] |
| CO-UB-LS-310 | pouring for Wall columns |  | 2026-10-29 → 2026-11-05 (+7d) | 50% → 75% | 10.76d → 6.75d |  | resources Unskilled Labor [8 h]; Mason [8 h]; Price [50448.4 SAR] → Price [50448.4 SAR]; Unskilled Labor [8 h]; Mason [8 h] |
| CO-UB-LS-330 | Waterproofing for Walls columns | 2026-11-01 → 2026-10-08 A (-24d) | 2026-11-05 → 2026-11-10 (+5d) | 0% → 50% | 10.76d → 6.75d | CO-UB-LS-320 → CO-UB-LS-320 SS, CO-UB-LS-320 FF | resources Unskilled Labor [32 h]; Mason [32 h]; Price [84080.7 SAR] → Price [84080.7 SAR]; Unskilled Labor [32 h]; Mason [32 h] |
| CO-UB-LS-320 | curing and deshuttering formwork for Wall columns |  | 2026-11-01 → 2026-11-08 (+7d) | 0% → 50% | 10.76d → 6.75d |  | resources Unskilled Labor [48 h]; Carpenter [32 h]; Price [8408.07 SAR] → Price [8408.07 SAR]; Unskilled Labor [48 h]; Carpenter [32 h] |
| CO-UB-LS-340 | Formwork for pump roof | 2026-11-05 → 2026-11-10 (+5d) | 2026-11-11 → 2026-11-16 (+5d) |  | 10.76d → 6.75d |  | resources Unskilled Labor [120 h]; Carpenter [80 h]; Price [84080.7 SAR] → Price [84080.7 SAR]; Unskilled Labor [120 h]; Carpenter [80 h] |
| CO-UB-LS-350 | Steel fixing for pump roof | 2026-11-11 → 2026-11-16 (+5d) | 2026-11-18 → 2026-11-23 (+5d) |  | 10.76d → 6.75d |  | resources Unskilled Labor [48 h]; Steel Fixer [144 h]; Price [84080.7 SAR] → Price [84080.7 SAR]; Unskilled Labor [48 h]; Steel Fixer [144 h] |

| ID | Task | Start | Finish | Complete | Total float | Predecessors | Other |
| --- | --- | --- | --- | --- | --- | --- | --- |
| CO-UB-LS-360 | pouring for pump roof | 2026-11-18 → 2026-11-23 (+5d) | 2026-11-19 → 2026-11-24 (+5d) |  | 10.76d → 6.75d |  | resources Unskilled Labor [8 h]; Mason [8 h]; Price [67264.5 SAR] → Price [67264.5 SAR]; Unskilled Labor [8 h]; Mason [8 h] |
| CO-UB-LS-370 | curing and deshuttering formwork for pump roof | 2026-11-19 → 2026-11-24 (+5d) | 2026-11-23 → 2026-11-28 (+5d) |  | 10.76d → 6.75d |  | resources Unskilled Labor [72 h]; Carpenter [48 h]; Price [8408.07 SAR] → Price [8408.07 SAR]; Unskilled Labor [72 h]; Carpenter [48 h] |
| 2 | **Architectural work** | 2026-11-23 → 2026-11-28 (+5d) | 2026-12-10 → 2026-12-15 (+5d) |  |  |  |  |
| CO-UB-LS-380 | Executing Masonry Works for Pump station building | 2026-11-23 → 2026-11-28 (+5d) | 2026-12-01 → 2026-12-06 (+5d) |  | 10.76d → 6.75d |  | resources Unskilled Labor [192 h]; Mason [192 h]; Price [357343 SAR] → Price [357343 SAR]; Unskilled Labor [192 h]; Mason [192 h] |
| CO-UB-LS-390 | Executing Plastering Works for Pump station building | 2026-12-01 → 2026-12-06 (+5d) | 2026-12-10 → 2026-12-15 (+5d) |  | 10.76d → 6.75d |  | resources Unskilled Labor [112 h]; Mason [112 h]; Price [357343 SAR] → Price [357343 SAR]; Unskilled Labor [112 h]; Mason [112 h] |
| 3 | **Electrical work** | 2026-12-10 → 2026-12-15 (+5d) | 2027-01-17 → 2027-01-21 (+4d) |  |  |  |  |
| CO-UB-LS-400 | Lighting system for pump house | 2026-12-10 → 2026-12-15 (+5d) | 2026-12-20 → 2026-12-24 (+4d) |  | 10.76d → 6.75d |  | resources Unskilled Labor [88 h]; Electrical Technician [176 h]; Price [147141 SAR] → Price [147141 SAR]; Unskilled Labor [88 h]; Electrical Technician [176 h] |
| CO-UB-LS-420 | Wiring connection for pump house | 2026-12-20 → 2026-12-24 (+4d) | 2026-12-27 → 2026-12-31 (+4d) |  | 10.76d → 6.75d |  | resources Unskilled Labor [72 h]; Electrical Technician [144 h]; Price [84080.7 SAR] → Price [84080.7 SAR]; Unskilled Labor [72 h]; Electrical Technician [144 h] |
| CO-UB-LS-440 | Sockets and switches for pump house | 2026-12-27 → 2026-12-31 (+4d) | 2027-01-03 → 2027-01-07 (+4d) |  | 10.76d → 6.75d |  | resources Unskilled Labor [64 h]; Electrical Technician [128 h]; Price [42040.3 SAR] → Price [42040.3 SAR]; Unskilled Labor [64 h]; Electrical Technician [128 h] |
| CO-UB-LS-460 | Installation for Distribution boards for pump house | 2027-01-03 → 2027-01-07 (+4d) | 2027-01-10 → 2027-01-14 (+4d) |  | 10.76d → 6.75d |  | resources Unskilled Labor [72 h]; Electrical Technician [144 h]; Price [105101 SAR] → Price [105101 SAR]; Unskilled Labor [72 h]; Electrical Technician [144 h] |
| CO-UB-LS-480 | Executing Earthing and bonding for the entire system | 2027-01-10 → 2027-01-14 (+4d) | 2027-01-17 → 2027-01-21 (+4d) |  | 10.76d → 6.75d |  | resources Unskilled Labor [64 h]; Electrical Technician [128 h]; Price [42040.3 SAR] → Price [42040.3 SAR]; Unskilled Labor [64 h]; Electrical Technician [128 h] |
| 4 | **Mechanical work** | 2026-12-10 → 2026-12-15 (+5d) | 2027-01-14 → 2027-01-19 (+5d) |  |  |  |  |
| CO-UB-LS-410 | Internal pipe installation | 2026-12-10 → 2026-12-15 (+5d) | 2026-12-20 → 2026-12-24 (+4d) |  | 12.76d → 8.75d |  | resources Unskilled Labor [64 h]; Plumber [64 h]; Price [210202 SAR] → Price [210202 SAR]; Unskilled Labor [64 h]; Plumber [64 h] |
| CO-UB-LS-430 | Guide rails & lifting chains installation | 2026-12-20 → 2026-12-24 (+4d) | 2026-12-28 → 2027-01-02 (+5d) |  | 12.76d → 8.75d |  | resources Unskilled Labor [56 h]; Plumber [56 h]; Price [168161 SAR] → Price [168161 SAR]; Unskilled Labor [56 h]; Plumber [56 h] |
| CO-UB-LS-450 | ExeValve installation | 2026-12-28 → 2027-01-02 (+5d) | 2027-01-05 → 2027-01-10 (+5d) |  | 12.76d → 8.75d |  | resources Unskilled Labor [72 h]; Plumber [72 h]; Price [210202 SAR] → Price [210202 SAR]; Unskilled Labor [72 h]; Plumber [72 h] |
| CO-UB-LS-470 | Installation of pumps | 2027-01-05 → 2027-01-10 (+5d) | 2027-01-14 → 2027-01-19 (+5d) |  | 12.76d → 8.75d |  | resources Unskilled Labor [64 h]; Plumber [64 h]; Price [252242 SAR] → Price [252242 SAR]; Unskilled Labor [64 h]; Plumber [64 h] |
| 5 | **Potable Water Tank** |  | 2026-12-29 → 2026-12-31 (+2d) |  |  |  |  |
| 2 | **Structural Work** | 2026-10-27 → 2026-11-01 (+5d) | 2026-11-14 → 2026-11-16 (+2d) |  |  |  |  |
| CO-UB-PWT-120 | Plain Concrete works | 2026-10-27 → 2026-11-01 A (+5d) | 2026-10-31 → 2026-11-01 A (+1d) | 0% → 100% | 24.9d → none | PRO-TSE-CV-1DL-50, PRO-TSE-CV-DL-60, CO-UB-PWT-110 → PRO-TSE-CV-1DL-50 SS, CO-UB-PWT-110 |  |
| CO-UB-PWT-130 | Form work for Tank Foundation | 2026-10-31 → 2026-11-03 (+3d) | 2026-11-05 → 2026-11-08 (+3d) |  | 24.9d → 22d | CO-UB-PWT-120 → CO-UB-PWT-120, PRO-TSE-CV-DL-60 |  |
| CO-UB-PWT-140 | Steel Reinforcement work for Tank Foundation | 2026-11-05 → 2026-11-09 (+4d) | 2026-11-12 → 2026-11-15 (+3d) |  | 24.9d → 22d |  |  |
| CO-UB-PWT-150 | Casting concrete for Tank Foundation | 2026-11-12 → 2026-11-16 (+4d) | 2026-11-14 → 2026-11-16 (+2d) |  | 24.9d → 22d |  |  |
| 3 | **Tank Shell Erection&Roof Installation** | 2026-11-14 → 2026-11-17 (+3d) | 2026-12-09 → 2026-12-12 (+3d) |  |  |  |  |
| CO-UB-PWT-160 | Bottom ring installation | 2026-11-14 → 2026-11-17 (+3d) | 2026-11-21 → 2026-11-23 (+2d) |  | 24.9d → 22d |  |  |
| CO-UB-PWT-170 | shell erection | 2026-11-21 → 2026-11-24 (+3d) | 2026-11-30 → 2026-12-02 (+2d) |  | 24.9d → 22d |  |  |
| CO-UB-PWT-180 | Aluminum dome / steel roof installation | 2026-11-30 → 2026-12-03 (+3d) | 2026-12-09 → 2026-12-12 (+3d) |  | 24.9d → 22d |  |  |
| 4 | **Mechanical Work&Accessories** | 2026-12-09 → 2026-12-13 (+4d) | 2026-12-29 → 2026-12-31 (+2d) |  |  |  |  |
| CO-UB-PWT-190 | Inlet / outlet piping connections | 2026-12-09 → 2026-12-13 (+4d) | 2026-12-16 → 2026-12-19 (+3d) |  | 24.9d → 22d |  |  |
| CO-UB-PWT-200 | installation Valves | 2026-12-16 → 2026-12-20 (+4d) | 2026-12-23 → 2026-12-26 (+3d) |  | 24.9d → 22d |  |  |
| CO-UB-PWT-210 | Ladders, platforms & handrails | 2026-12-23 → 2026-12-27 (+4d) | 2026-12-29 → 2026-12-31 (+2d) |  | 24.9d → 22d |  |  |
| 2 | **IrrigationTank** |  | 2026-12-15 → 2026-12-19 (+4d) |  |  |  |  |
| 2 | **Structural Work** | 2026-10-27 → 2026-11-01 (+5d) | 2026-11-12 → 2026-11-16 (+4d) |  |  |  |  |
| CO-UB-IRT-160 | Plain Concrete works | 2026-10-27 → 2026-11-01 A (+5d) | 2026-10-29 → 2026-11-01 A (+3d) | 0% → 100% | 36d → none |  |  |
| CO-UB-IRT-170 | Form work for Tank Foundation | 2026-10-31 → 2026-11-03 (+3d) | 2026-11-05 → 2026-11-09 (+4d) |  | 36d → 33d |  |  |
| CO-UB-IRT-180 | Steel Reinforcement work for Tank Foundation | 2026-11-07 → 2026-11-10 (+3d) | 2026-11-11 → 2026-11-15 (+4d) |  | 36d → 33d |  |  |
| CO-UB-IRT-190 | Casting concrete for Tank Foundation | 2026-11-12 → 2026-11-16 (+4d) | 2026-11-12 → 2026-11-16 (+4d) |  | 36d → 33d |  |  |
| 3 | **Tank Shell Erection&Roof Installation** | 2026-11-14 → 2026-11-17 (+3d) | 2026-12-03 → 2026-12-07 (+4d) |  |  |  |  |
| CO-UB-IRT-200 | Bottom ring installation | 2026-11-14 → 2026-11-17 (+3d) | 2026-11-19 → 2026-11-23 (+4d) |  | 36d → 33d |  |  |
| CO-UB-IRT-210 | shell erection | 2026-11-21 → 2026-11-24 (+3d) | 2026-11-26 → 2026-11-30 (+4d) |  | 36d → 33d |  |  |
| CO-UB-IRT-220 | Aluminum dome / steel roof installation | 2026-11-28 → 2026-12-01 (+3d) | 2026-12-03 → 2026-12-07 (+4d) |  | 36d → 33d |  |  |
| 4 | **Mechanical Work&Accessories** | 2026-12-05 → 2026-12-08 (+3d) | 2026-12-15 → 2026-12-19 (+4d) |  |  |  |  |
| CO-UB-IRT-230 | Inlet / outlet piping connections | 2026-12-05 → 2026-12-08 (+3d) | 2026-12-08 → 2026-12-12 (+4d) |  | 36d → 33d |  |  |
| CO-UB-IRT-240 | installation Valves | 2026-12-09 → 2026-12-13 (+4d) | 2026-12-13 → 2026-12-16 (+3d) |  | 36d → 33d |  |  |
| CO-UB-IRT-250 | Ladders, platforms & handrails | 2026-12-14 → 2026-12-17 (+3d) | 2026-12-15 → 2026-12-19 (+4d) |  | 36d → 33d |  |  |
| 1 | **Control Room** |  | 2027-01-16 → 2027-01-18 (+2d) |  |  |  |  |
| 5 | **Civil Work** |  | 2026-10-31 → 2026-11-03 (+3d) |  |  |  |  |
| CO-UB-CR-100 | Excavation Work For Control Room Foundation |  |  |  |  |  | resources Unskilled Labor [112 h]; Excavator [56 h]; Skilled Labor [56 h]; Price → Price; Unskilled Labor [112 h]; Excavator [56 h]; Skilled Labor [56 h] |
| CO-UB-CR-110 | Pouring for Plain Concrete |  |  |  |  |  | resources Unskilled Labor [40 h]; Mason [40 h]; Price [72069.1 SAR] → Price [72069.1 SAR]; Unskilled Labor [40 h]; Mason [40 h] |
| CO-UB-CR-120 | Pouring R.C Footing For Control Room |  |  |  |  |  | resources Unskilled Labor [168 h]; Mason [168 h]; Price [180173 SAR] → Price [180173 SAR]; Unskilled Labor [168 h]; Mason [168 h] |
| CO-UB-CR-130 | Pouring R.C Columns For Control Room |  |  |  |  |  | resources Unskilled Labor [96 h]; Mason [96 h]; Price [216207 SAR] → Price [216207 SAR]; Unskilled Labor [96 h]; Mason [96 h] |
| CO-UB-CR-140 | Pouring Beams and Slab For Control Room |  | 2026-10-31 → 2026-11-03 (+3d) | 50% → 85% | 29d → 27d |  | resources Unskilled Labor [80 h]; Mason [80 h]; Price [252242 SAR] → Price [252242 SAR]; Unskilled Labor [80 h]; Mason [80 h] |
| 6 | **Finishing Work** | 2026-11-01 → 2026-11-03 (+2d) | 2027-01-16 → 2027-01-18 (+2d) |  |  |  |  |
| 1 | **Architictural work** | 2026-11-01 → 2026-11-03 (+2d) | 2026-12-16 → 2026-12-19 (+3d) |  |  |  |  |
| CO-UB-CR-150 | Brick Work For Control Room | 2026-11-01 → 2026-11-03 (+2d) | 2026-11-10 → 2026-11-12 (+2d) |  | 29d → 27d |  | resources Unskilled Labor [320 h]; Mason [320 h]; Price [96092.2 SAR] → Price [96092.2 SAR]; Unskilled Labor [320 h]; Mason [320 h] |
| CO-UB-CR-160 | Thermal & Moisture Protection Work for Control Room | 2026-11-11 → 2026-11-14 (+3d) | 2026-11-18 → 2026-11-21 (+3d) |  | 29d → 27d |  | resources Unskilled Labor [56 h]; Mason [56 h]; Price [96092.2 SAR] → Price [96092.2 SAR]; Unskilled Labor [56 h]; Mason [56 h] |
| CO-UB-CR-200 | Install For Curtian Wall and Windows and Doors | 2026-11-19 → 2026-11-22 (+3d) | 2026-11-28 → 2026-11-30 (+2d) |  | 29d → 27d |  | resources Unskilled Labor [80 h]; Skilled Labor [160 h]; Price [96092.2 SAR] → Price [96092.2 SAR]; Unskilled Labor [80 h]; Skilled Labor [160 h] |
| CO-UB-CR-240 | External Finshing Work (Walls and Floor) | 2026-11-29 → 2026-12-01 (+2d) | 2026-12-07 → 2026-12-09 (+2d) |  | 29d → 27d |  | resources Unskilled Labor [80 h]; Skilled Labor [160 h]; Price [96092.2 SAR] → Price [96092.2 SAR]; Unskilled Labor [80 h]; Skilled Labor [160 h] |
| CO-UB-CR-250 | Internal Finshing Work (Walls,Floor and Ceiling) | 2026-12-08 → 2026-12-10 (+2d) | 2026-12-16 → 2026-12-19 (+3d) |  | 29d → 27d |  | resources Unskilled Labor [80 h]; Skilled Labor [160 h]; Price [96092.2 SAR] → Price [96092.2 SAR]; Unskilled Labor [80 h]; Skilled Labor [160 h] |
| 3 | **Mechanical Work** | 2026-11-11 → 2026-11-14 (+3d) | 2026-12-28 → 2026-12-30 (+2d) |  |  |  |  |
| 3 | **HVAC System** | 2026-11-11 → 2026-11-14 (+3d) | 2026-12-28 → 2026-12-30 (+2d) |  |  |  |  |
| CO-UB-CR-170 | Install of Refrigerant Piping ( fabricated metal ducts with flanges complete with supports, vanes, dampers ) | 2026-11-11 → 2026-11-14 (+3d) | 2026-11-15 → 2026-11-17 (+2d) |  | 42d → 40d |  | resources Unskilled Labor [32 h]; Electrical Technician [64 h]; Price [96092.2 SAR] → Price [96092.2 SAR]; Unskilled Labor [32 h]; Electrical Technician [64 h] |
| CO-UB-CR-260 | Install of Mini split actual capacity 2 Ton and Ducted split actual capacity 4 Ton | 2026-12-17 → 2026-12-20 (+3d) | 2026-12-24 → 2026-12-27 (+3d) |  | 40d → 38d |  | resources Unskilled Labor [56 h]; Electrical Technician [112 h]; Price [96092.2 SAR] → Price [96092.2 SAR]; Unskilled Labor [56 h]; Electrical Technician [112 h] |
| CO-UB-CR-310 | Install of Air Grills 150mm x150mm and Air Diffuser 600mm x 600mm | 2026-12-26 → 2026-12-28 (+2d) | 2026-12-28 → 2026-12-30 (+2d) |  | 40d → 38d |  | resources Unskilled Labor [24 h]; Electrical Technician [48 h]; Price [96092.2 SAR] → Price [96092.2 SAR]; Unskilled Labor [24 h]; Electrical Technician [48 h] |
| 4 | **Fire Fitting System** | 2026-11-16 → 2026-11-18 (+2d) | 2026-12-20 → 2026-12-22 (+2d) |  |  |  |  |
| CO-UB-CR-180 | Installation & Testing of 2 hours Fire rated system for closing the openings between rooms with help of Rock wool | 2026-11-16 → 2026-11-18 (+2d) | 2026-11-19 → 2026-11-22 (+3d) |  | 42d → 40d |  | resources Unskilled Labor [32 h]; Electrical Technician [64 h]; Price [96092.2 SAR] → Price [96092.2 SAR]; Unskilled Labor [32 h]; Electrical Technician [64 h] |
| CO-UB-CR-270 | Install Fire Extinguishers | 2026-12-17 → 2026-12-20 (+3d) | 2026-12-20 → 2026-12-22 (+2d) |  | 47d → 45d |  | resources Unskilled Labor [24 h]; Electrical Technician [48 h]; Price [96092.2 SAR] → Price [96092.2 SAR]; Unskilled Labor [24 h]; Electrical Technician [48 h] |
| 4 | **Electrical Work** | 2026-11-21 → 2026-11-23 (+2d) | 2027-01-10 → 2027-01-12 (+2d) |  |  |  |  |
| 1 | **LV Power** | 2026-12-17 → 2026-12-20 (+3d) | 2027-01-03 → 2027-01-05 (+2d) |  |  |  |  |
| CO-UB-CR-190 | Install of Distribution board For Control Room | 2026-12-17 → 2026-12-20 (+3d) | 2026-12-22 → 2026-12-24 (+2d) |  | 35d → 33d |  | resources Unskilled Labor [40 h]; Electrical Technician [80 h]; Price [43678.3 SAR] → Price [43678.3 SAR]; Unskilled Labor [40 h]; Electrical Technician [80 h] |
| CO-UB-CR-220 | Install of Earting Cable for Control Room | 2026-12-23 → 2026-12-26 (+3d) | 2026-12-28 → 2026-12-30 (+2d) |  | 35d → 33d |  | resources Unskilled Labor [40 h]; Electrical Technician [80 h]; Price [43678.3 SAR] → Price [43678.3 SAR]; Unskilled Labor [40 h]; Electrical Technician [80 h] |

| ID | Task | Start | Finish | Complete | Total float | Other |
| --- | --- | --- | --- | --- | --- | --- |
| CO-UB-CR-280 | Install of Socket outlet and LED Lighting | 2026-12-29 → 2026-12-31 (+2d) | 2027-01-03 → 2027-01-05 (+2d) |  | 35d → 33d | resources Unskilled Labor [40 h]; Electrical Technician [80 h]; Price [43678.3 SAR] → Price [43678.3 SAR]; Unskilled Labor [40 h]; Electrical Technician [80 h] |
| 3 | **Fire Detection And Alarm System** | 2026-11-21 → 2026-11-23 (+2d) | 2027-01-10 → 2027-01-12 (+2d) |  |  |  |
| CO-UB-CR-210 | Install of 2C x 1.5 Sqm FR Rated Armored - Cable For Loop Wiring | 2026-11-21 → 2026-11-23 (+2d) | 2026-11-25 → 2026-11-28 (+3d) |  | 42d → 40d | resources Unskilled Labor [40 h]; Electrical Technician [80 h]; Price [43678.3 SAR] → Price [43678.3 SAR]; Unskilled Labor [40 h]; Electrical Technician [80 h] |
| CO-UB-CR-230 | Install of Transmission Communication cable - Fiber Optics 12Core | 2026-11-26 → 2026-11-29 (+3d) | 2026-12-01 → 2026-12-03 (+2d) |  | 42d → 40d | resources Unskilled Labor [40 h]; Electrical Technician [80 h]; Price [43678.3 SAR] → Price [43678.3 SAR]; Unskilled Labor [40 h]; Electrical Technician [80 h] |
| CO-UB-CR-290 | Install of power supply system for fire alarm control panel | 2026-12-17 → 2026-12-20 (+3d) | 2026-12-22 → 2026-12-24 (+2d) |  | 29d → 27d | resources Unskilled Labor [40 h]; Electrical Technician [80 h]; Price [43678.3 SAR] → Price [43678.3 SAR]; Unskilled Labor [40 h]; Electrical Technician [80 h] |
| CO-UB-CR-300 | Install of Fire Alarm Control panel | 2026-12-23 → 2026-12-26 (+3d) | 2026-12-29 → 2026-12-31 (+2d) |  | 29d → 27d | resources Unskilled Labor [48 h]; Electrical Technician [96 h]; Price [43678.3 SAR] → Price [43678.3 SAR]; Unskilled Labor [48 h]; Electrical Technician [96 h] |
| CO-UB-CR-320 | Installation of the addressable manual call point with operation safety glass breaking | 2026-12-30 → 2027-01-02 (+3d) | 2027-01-02 → 2027-01-04 (+2d) |  | 29d → 27d | resources Unskilled Labor [24 h]; Electrical Technician [48 h]; Price [43678.3 SAR] → Price [43678.3 SAR]; Unskilled Labor [24 h]; Electrical Technician [48 h] |
| CO-UB-CR-330 | Install of the photoelectric heat & smoke detector | 2027-01-03 → 2027-01-05 (+2d) | 2027-01-05 → 2027-01-07 (+2d) |  | 29d → 27d | resources Unskilled Labor [24 h]; Electrical Technician [48 h]; Price [43678.3 SAR] → Price [43678.3 SAR]; Unskilled Labor [24 h]; Electrical Technician [48 h] |
| CO-UB-CR-340 | Install of Sounder With Beacon | 2027-01-03 → 2027-01-05 (+2d) | 2027-01-05 → 2027-01-07 (+2d) |  | 29d → 27d | resources Unskilled Labor [24 h]; Electrical Technician [48 h]; Price [43678.3 SAR] → Price [43678.3 SAR]; Unskilled Labor [24 h]; Electrical Technician [48 h] |
| CO-UB-CR-350 | Install of Addressable Control module | 2027-01-06 → 2027-01-09 (+3d) | 2027-01-10 → 2027-01-12 (+2d) |  | 29d → 27d | resources Unskilled Labor [32 h]; Electrical Technician [64 h]; Price [43678.3 SAR] → Price [43678.3 SAR]; Unskilled Labor [32 h]; Electrical Technician [64 h] |
| 2 | **Furnitures work** | 2027-01-11 → 2027-01-13 (+2d) | 2027-01-16 → 2027-01-18 (+2d) |  |  |  |
| CO-UB-CR-360 | Office Chairs,Tables and Stand | 2027-01-11 → 2027-01-13 (+2d) | 2027-01-16 → 2027-01-18 (+2d) |  | 29d → 27d | resources Unskilled Labor [40 h]; Skilled Labor [80 h]; Price [240230 SAR] → Price [240230 SAR]; Unskilled Labor [40 h]; Skilled Labor [80 h] |
| ML | **Softscape and Planting Works** | 2027-02-25 → 2027-03-07 (+10d) | 2027-04-18 → 2027-04-25 (+7d) |  |  |  |
| 1 | **Planting Beds Preparation** | 2027-02-25 → 2027-03-07 (+10d) | 2027-03-28 → 2027-04-04 (+7d) |  |  |  |
| CO-LS-PL-100 | Excavation of planting beds | 2027-02-25 → 2027-03-07 (+10d) | 2027-03-08 → 2027-03-18 (+10d) |  | -77.5d → -83.5d | resources Unskilled Labor [112 h]; Excavator [56 h]; Skilled Labor [56 h]; Price [144463 SAR] → Price [144463 SAR]; Unskilled Labor [112 h]; Excavator [56 h]; Skilled Labor [56 h] |
| CO-LS-PL-110 | Supply & placement of suitable topsoil | 2027-03-13 → 2027-03-20 (+7d) | 2027-03-20 → 2027-03-27 (+7d) |  | -77.5d → -83.5d | resources Unskilled Labor [40 h]; Skilled Labor [80 h]; Price [433390 SAR] → Price [433390 SAR]; Unskilled Labor [40 h]; Skilled Labor [80 h] |
| CO-LS-PL-120 | Soil improvement (fertilizer, compost, additives) | 2027-03-21 → 2027-03-28 (+7d) | 2027-03-28 → 2027-04-04 (+7d) |  | -77.5d → -83.5d | resources Unskilled Labor [40 h]; Skilled Labor [80 h]; Price [433390 SAR] → Price [433390 SAR]; Unskilled Labor [40 h]; Skilled Labor [80 h] |
| 2 | **Supports & Protection** | 2027-03-29 → 2027-04-05 (+7d) | 2027-04-04 → 2027-04-11 (+7d) |  |  |  |
| CO-LS-PL-130 | installation of plant supports / stakes | 2027-03-29 → 2027-04-05 (+7d) | 2027-03-31 → 2027-04-07 (+7d) |  | -77.5d → -83.5d | resources Unskilled Labor [40 h]; Skilled Labor [80 h]; Price [433390 SAR] → Price [433390 SAR]; Unskilled Labor [40 h]; Skilled Labor [80 h] |
| CO-LS-PL-140 | Ties and protection materials | 2027-04-01 → 2027-04-08 (+7d) | 2027-04-04 → 2027-04-11 (+7d) |  | -77.5d → -83.5d | resources Unskilled Labor [40 h]; Skilled Labor [80 h]; Price [577854 SAR] → Price [577854 SAR]; Unskilled Labor [40 h]; Skilled Labor [80 h] |
| 3 | **Plant Supply** | 2027-04-05 → 2027-04-12 (+7d) | 2027-04-07 → 2027-04-14 (+7d) |  |  |  |
| CO-LS-PL-150 | installation of trees | 2027-04-05 → 2027-04-12 (+7d) | 2027-04-07 → 2027-04-14 (+7d) |  | -77.5d → -83.5d | resources Unskilled Labor [40 h]; Skilled Labor [80 h]; Price [866781 SAR] → Price [866781 SAR]; Unskilled Labor [40 h]; Skilled Labor [80 h] |
| 4 | **Site Furnishings** | 2027-04-08 → 2027-04-15 (+7d) | 2027-04-18 → 2027-04-25 (+7d) |  |  |  |
| CO-LS-PL-160 | installation of Seating benches | 2027-04-08 → 2027-04-15 (+7d) | 2027-04-11 → 2027-04-18 (+7d) |  | -77.5d → -83.5d | resources Unskilled Labor [40 h]; Skilled Labor [80 h]; Price [345424 SAR] → Price [345424 SAR]; Unskilled Labor [40 h]; Skilled Labor [80 h] |
| CO-LS-PL-170 | tone boulders placement & fixing Works | 2027-04-12 → 2027-04-19 (+7d) | 2027-04-14 → 2027-04-21 (+7d) |  | -77.5d → -83.5d | resources Unskilled Labor [40 h]; Skilled Labor [80 h]; Price [345424 SAR] → Price [345424 SAR]; Unskilled Labor [40 h]; Skilled Labor [80 h] |
| CO-LS-PL-180 | Gravel Works | 2027-04-15 → 2027-04-22 (+7d) | 2027-04-18 → 2027-04-25 (+7d) |  | -77.5d → -83.5d | resources Unskilled Labor [40 h]; Skilled Labor [80 h]; Price [345424 SAR] → Price [345424 SAR]; Unskilled Labor [40 h]; Skilled Labor [80 h] |
| 1 | **Fence and Gaurd Room** |  | 2027-05-10 → 2027-04-19 (-21d) |  |  |  |
| 1 | **Gaurd Room Work** |  | 2027-03-15 → 2027-03-21 (+6d) |  |  |  |
| 1 | **Civil Work** |  | 2026-12-01 → 2026-12-07 (+6d) |  |  |  |
| A1000 | Excavation Work For Gaurd Room Foundation |  | 2026-10-29 → 2026-10-27 A (-2d) | 70% → 100% | -12.4d → none |  |
| A1010 | Pouring for Plain Concrete |  | 2026-10-29 → 2026-10-30 A (+1d) | 70% → 100% | -12.4d → none |  |
| A1020 | Pouring R.C Footing For Gaurd Room |  | 2026-11-09 → 2026-11-15 (+6d) | 10% → 92% | -12.4d → -17.5d |  |
| A1030 | Pouring R.C Columns For Gaurd Room | 2026-11-09 → 2026-11-16 (+7d) | 2026-11-21 → 2026-11-26 (+5d) |  | -12.4d → -17.5d |  |
| A1040 | Pouring Beams and Slab For Gaurd Room | 2026-11-21 → 2026-11-28 (+7d) | 2026-12-01 → 2026-12-07 (+6d) |  | -12.4d → -17.5d |  |
| 2 | **Finishing Work** | 2026-12-01 → 2026-12-08 (+7d) | 2027-03-15 → 2027-03-21 (+6d) |  |  |  |
| 1 | **Architictural work** | 2026-12-01 → 2026-12-08 (+7d) | 2027-01-24 → 2027-01-30 (+6d) |  |  |  |
| A1050 | Brick Work For Gaurd Room | 2026-12-01 → 2026-12-08 (+7d) | 2026-12-12 → 2026-12-17 (+5d) |  | -12.4d → -17.5d |  |
| A1060 | Thermal & Moisture Protection Work for Gaurd Room | 2026-12-12 → 2026-12-19 (+7d) | 2026-12-20 → 2026-12-26 (+6d) |  | -6.4d → -11.5d |  |
| A1070 | Install For Curtian Wall and Windows and Doors | 2026-12-27 → 2027-01-03 (+7d) | 2027-01-05 → 2027-01-11 (+6d) |  | -12.4d → -17.5d |  |
| A1080 | External Finshing Work (Walls and Floor) | 2027-01-05 → 2027-01-12 (+7d) | 2027-01-14 → 2027-01-20 (+6d) |  | -12.4d → -17.5d |  |
| A1090 | Internal Finshing Work (Walls,Floor and Ceiling) | 2027-01-14 → 2027-01-21 (+7d) | 2027-01-24 → 2027-01-30 (+6d) |  | -12.4d → -17.5d |  |
| 3 | **Mechanical Work** | 2026-12-12 → 2026-12-19 (+7d) | 2027-02-04 → 2027-02-11 (+7d) |  |  |  |
| 1 | **Sanitary Drainage & Plumbing System** | 2026-12-12 → 2026-12-19 (+7d) | 2026-12-27 → 2027-01-02 (+6d) |  |  |  |
| A1110 | Install Sanitary Piping System (UPVC) | 2026-12-12 → 2026-12-19 (+7d) | 2026-12-16 → 2026-12-22 (+6d) |  | -12.4d → -17.5d |  |
| A1120 | Install Base mounted flush tank water Western water closet system | 2026-12-16 → 2026-12-23 (+7d) | 2026-12-23 → 2026-12-29 (+6d) |  | -12.4d → -17.5d |  |
| A1130 | Install 1 meter length 10mm diameter Flexible Hose and Gate Valves and Slow Closing Valve | 2026-12-23 → 2026-12-30 (+7d) | 2026-12-27 → 2027-01-02 (+6d) |  | -12.4d → -17.5d |  |
| 2 | **Water Supply System** | 2026-12-12 → 2026-12-19 (+7d) | 2027-01-26 → 2027-02-01 (+6d) |  |  |  |
| A1240 | Install GRP water tanks capacity of each 1000 liter | 2026-12-12 → 2026-12-19 (+7d) | 2026-12-15 → 2026-12-21 (+6d) |  | -11.4d → -16.5d |  |
| A1140 | Install for Cold Water Pipe complete with joints, angles, reducer etc. | 2026-12-15 → 2026-12-22 (+7d) | 2026-12-21 → 2026-12-27 (+6d) |  | -11.4d → -16.5d |  |
| A1150 | Install for Hot Water Pipe complete with joints, angles, reducer etc. | 2026-12-21 → 2026-12-28 (+7d) | 2026-12-26 → 2026-12-31 (+5d) |  | -11.4d → -16.5d |  |
| A1160 | Install for Isolation Valve,Spray Head,Roof Drain,Floor Drain,Gully teap,Vend on Roof to exhaust air | 2026-12-26 → 2027-01-02 (+7d) | 2026-12-29 → 2027-01-04 (+6d) |  | 7.6d → 2.5d |  |
| A1170 | Install of Inspection chamber, size 800x900x1000 | 2026-12-29 → 2027-01-05 (+7d) | 2026-12-31 → 2027-01-06 (+6d) |  | 7.6d → 2.5d |  |
| A1180 | Install OF Electric Water Heater set with connection and Water meter complete with accessories | 2027-01-24 → 2027-01-31 (+7d) | 2027-01-26 → 2027-02-01 (+6d) |  | -12.4d → -17.5d |  |
| 3 | **HVAC System** | 2026-12-16 → 2026-12-23 (+7d) | 2027-02-04 → 2027-02-11 (+7d) |  |  |  |
| A1200 | Install of Refrigerant Piping ( fabricated metal ducts with flanges complete with supports, vanes, dampers ) | 2026-12-16 → 2026-12-23 (+7d) | 2026-12-21 → 2026-12-27 (+6d) |  | 6.6d → 1.5d |  |
| A1190 | Install of Mini split actual capacity 2 Ton and Ducted split actual capacity 4 Ton | 2027-01-24 → 2027-01-31 (+7d) | 2027-02-01 → 2027-02-07 (+6d) |  | 6.1d → 1d |  |
| A1210 | Install of Air Grills 150mm x150mm and Air Diffuser 600mm x 600mm | 2027-02-01 → 2027-02-08 (+7d) | 2027-02-04 → 2027-02-11 (+7d) |  | 6.1d → 1d |  |
| 4 | **Fire Fitting System** | 2026-12-21 → 2026-12-28 (+7d) | 2027-01-31 → 2027-02-06 (+6d) |  |  |  |
| A1220 | Installation & Testing of 2 hours Fire rated system for closing the openings between rooms with help of Rock wool | 2026-12-21 → 2026-12-28 (+7d) | 2026-12-28 → 2027-01-03 (+6d) |  | 6.6d → 1.5d |  |
| A1230 | Install Fire Extinguishers | 2027-01-24 → 2027-01-31 (+7d) | 2027-01-31 → 2027-02-06 (+6d) |  | 10.1d → 5d |  |
| 4 | **Electrical Work** | 2026-12-21 → 2026-12-28 (+7d) | 2027-03-07 → 2027-03-16 (+9d) |  |  |  |
| 1 | **LV Power** | 2026-12-21 → 2026-12-28 (+7d) | 2027-01-30 → 2027-02-04 (+5d) |  |  |  |
| A1250 | Install of Distribution board For Gaurd Room | 2026-12-21 → 2026-12-28 (+7d) | 2026-12-27 → 2027-01-02 (+6d) |  | 8.6d → 3.5d |  |
| A1270 | Install of Earting Cable for Gaurd Room | 2026-12-27 → 2027-01-03 (+7d) | 2027-01-02 → 2027-01-07 (+5d) |  | 8.6d → 3.5d |  |
| A1260 | Install of Socket outlet and LED Lighting | 2027-01-24 → 2027-01-31 (+7d) | 2027-01-30 → 2027-02-04 (+5d) |  | 11.1d → 6d |  |
| 3 | **Fire Detection And Alarm System** | 2026-12-28 → 2027-01-04 (+7d) | 2027-02-21 → 2027-03-01 (+8d) |  |  |  |
| A1340 | Install of 2C x 1.5 Sqm FR Rated Armored - Cable For Loop Wiring | 2026-12-28 → 2027-01-04 (+7d) | 2027-01-03 → 2027-01-09 (+6d) |  | 6.6d → 1.5d |  |
| A1350 | Install of Transmission Communication cable - Fiber Optics 12Core | 2027-01-03 → 2027-01-10 (+7d) | 2027-01-09 → 2027-01-14 (+5d) |  | 6.6d → 1.5d |  |
| A1360 | Install of power supply system for fire alarm control panel | 2027-01-24 → 2027-01-31 (+7d) | 2027-01-30 → 2027-02-04 (+5d) |  | -6.4d → -11.5d |  |
| A1280 | Install of Fire Alarm Control panel | 2027-01-30 → 2027-02-06 (+7d) | 2027-02-06 → 2027-02-14 (+8d) |  | -6.4d → -11.5d |  |

| ID | Task | Start | Finish | Complete | Total float | Predecessors |
| --- | --- | --- | --- | --- | --- | --- |
| A1290 | Installation of the addressable manual call point with operation safety glass breaking | 2027-02-06 → 2027-02-14 (+8d) | 2027-02-10 → 2027-02-18 (+8d) |  | -6.4d → -11.5d |  |
| A1300 | Install of the photoelectric heat & smoke detector | 2027-02-10 → 2027-02-18 (+8d) | 2027-02-15 → 2027-02-22 (+7d) |  | -6.4d → -11.5d |  |
| A1310 | Install of Sounder With Beacon | 2027-02-10 → 2027-02-18 (+8d) | 2027-02-15 → 2027-02-22 (+7d) |  | -6.4d → -11.5d |  |
| A1320 | Install of Addressable Control module | 2027-02-15 → 2027-02-23 (+8d) | 2027-02-21 → 2027-03-01 (+8d) |  | -6.4d → -11.5d |  |
| 2 | **Security System** | 2027-01-26 → 2027-02-02 (+7d) | 2027-03-07 → 2027-03-16 (+9d) |  |  |  |
| A1580 | Install 8 Port Industrial PoE Switch 10/100BaseT (0 deg to +70 deg. Celsius) | 2027-01-26 → 2027-02-02 (+7d) | 2027-02-01 → 2027-02-07 (+6d) |  | -12.4d → -17.5d |  |
| A1590 | Optical Fiber,48 Core Splice Closure | 2027-02-01 → 2027-02-08 (+7d) | 2027-02-04 → 2027-02-11 (+7d) |  | -11.4d → -16.5d |  |
| A1650 | Pole/Bollard mounted IP( PoE) and 12U rack dimension | 2027-02-01 → 2027-02-08 (+7d) | 2027-02-06 → 2027-02-14 (+8d) |  | -12.4d → -17.5d |  |
| A1600 | Boom Barrier at Security Guard Room | 2027-02-06 → 2027-02-14 (+8d) | 2027-02-14 → 2027-02-21 (+7d) |  | -12.4d → -17.5d |  |
| A1610 | Pedestrian turnstile at Security Guard Room | 2027-02-14 → 2027-02-22 (+8d) | 2027-02-21 → 2027-03-01 (+8d) |  | -12.4d → -17.5d |  |
| A1620 | Access Control Unit and Access Card Reader | 2027-02-21 → 2027-03-01 (+8d) | 2027-02-27 → 2027-03-07 (+8d) |  | -12.4d → -17.5d |  |
| A1630 | Magnetic Lock and Break Glass and Exit Push button | 2027-02-27 → 2027-03-07 (+8d) | 2027-03-06 → 2027-03-15 (+9d) |  | -12.4d → -17.5d |  |
| A1640 | Door Sensor and Biometrics Reader | 2027-03-02 → 2027-03-14 (+12d) | 2027-03-07 → 2027-03-16 (+9d) |  | -12.4d → -17.5d |  |
| 2 | **Furnitures work** | 2027-03-04 → 2027-03-15 (+11d) | 2027-03-15 → 2027-03-21 (+6d) |  |  |  |
| A1100 | Office Chairs,Tables and Stand | 2027-03-04 → 2027-03-15 (+11d) | 2027-03-15 → 2027-03-21 (+6d) |  | -12.4d → -17.5d |  |
| 2 | **Fence Work** |  | 2027-05-10 → 2027-04-19 (-21d) |  |  |  |
| 3 | **Electrical Work** | 2026-10-27 → 2026-11-03 (+7d) | 2027-01-11 → 2027-01-18 (+7d) |  |  |  |
| CO-SU-FE-N-EL-100 | Trench excavation to receive 2 nos 50mm diameter PVC Conduit | 2026-10-27 → 2026-11-03 (+7d) | 2026-11-04 → 2026-11-11 (+7d) |  | -43d → -42d |  |
| CO-SU-FE-N-EL-110 | Trench excavation to receive 3 nos 50mm diameter PVC Conduit | 2026-10-27 → 2026-11-03 (+7d) | 2026-11-04 → 2026-11-11 (+7d) |  | -43d → -42d |  |
| CO-SU-FE-N-EL-120 | Fixing of Control cable,CAT6A cable | 2026-11-05 → 2026-11-12 (+7d) | 2026-11-15 → 2026-11-22 (+7d) |  | -43d → -42d |  |
| CO-SU-FE-N-EL-130 | Install 800mm x 800mm x 800mm height concrete handhole | 2026-11-05 → 2026-11-12 (+7d) | 2026-11-15 → 2026-11-22 (+7d) |  | -43d → -42d |  |
| CO-SU-FE-N-EL-140 | Hot dipped galvanized cable conduits for CAT6A cable and Control Cables embedded to wall | 2026-11-05 → 2026-11-12 (+7d) | 2026-11-14 → 2026-11-21 (+7d) |  | -42d → -41d |  |
| CO-SU-FE-N-EL-150 | Fixing Earthing Work (Earth Pit,Grounding rod,Tinned Copper wire) | 2026-11-16 → 2026-11-23 (+7d) | 2026-11-24 → 2026-12-01 (+7d) |  | -43d → -42d |  |
| CO-SU-FE-N-EL-160 | Field Equipment Cabinet enclosed outdoor complete with precast concrete footing, | 2026-11-25 → 2026-12-02 (+7d) | 2026-12-03 → 2026-12-10 (+7d) |  | -43d → -42d |  |
| CO-SU-FE-N-EL-170 | Fence Lightining 400V, 3PH, 60Hz lighting control panel (LCP-02) | 2026-11-25 → 2026-12-02 (+7d) | 2026-12-03 → 2026-12-10 (+7d) |  | -43d → -42d |  |
| CO-SU-FE-N-EL-180 | Install of direct buried armored cable 4C-16mm2 ,10mm2 | 2026-12-05 → 2026-12-12 (+7d) | 2026-12-14 → 2026-12-21 (+7d) |  | -43d → -42d |  |
| CO-SU-FE-N-EL-190 | Install 16mm2,10mm2 CU/PVC wire | 2026-12-05 → 2026-12-12 (+7d) | 2026-12-14 → 2026-12-21 (+7d) |  | -43d → -42d |  |
| CO-SU-FE-N-EL-200 | FEC-CCTV ( 4C-16mm2 CU/XLPE/PVC direct buried armored cable,16mm2 CU/PVC wire | 2026-12-05 → 2026-12-12 (+7d) | 2026-12-13 → 2026-12-20 (+7d) |  | 17d → 11d |  |
| CO-SU-FE-N-EL-210 | Junction Box for lighting fixture | 2026-12-15 → 2026-12-22 (+7d) | 2026-12-23 → 2026-12-30 (+7d) |  | -43d → -42d |  |
| CO-SU-FE-N-EL-220 | IR Intrusion Detection System Quad Beams | 2026-12-24 → 2026-12-31 (+7d) | 2027-01-02 → 2027-01-09 (+7d) |  | 9d → 3d |  |
| CO-SU-FE-N-EL-230 | Install of 38W, 230V, 1PH, 60Hz fence, led linear uplight lighting, IP66 | 2026-12-24 → 2026-12-31 (+7d) | 2027-01-03 → 2027-01-10 (+7d) |  | 8d → 2d |  |
| CO-SU-FE-N-EL-240 | Install, fixings, testing and commissioning 80W LED | 2027-01-04 → 2027-01-11 (+7d) | 2027-01-11 → 2027-01-18 (+7d) |  | 8d → 2d |  |
| 4 | **Architictural work** |  | 2027-01-18 → 2026-12-28 (-21d) |  |  |  |
| CO-SU-FE-N-AR-110 | External plastering to walls and columns |  | 2026-11-01 → 2026-11-08 (+7d) |  | 4.49d → 21.49d |  |
| CO-SU-FE-N-AR-120 | Install 50mm thick random cut stone cladding |  | 2026-11-03 → 2026-11-10 (+7d) | 7% → 95% | 4.49d → 21.49d |  |
| CO-SU-FE-N-AR-130 | Install 2 coats of weatherproof paint at walls | 2026-11-03 → 2026-10-28 A (-6d) |  | 0% → 20% | 4.49d → 21.49d | CO-SU-FE-N-AR-120 → CO-SU-FE-N-AR-120 SS, CO-SU-FE-N-AR-120 FF |
| CO-SU-FE-N-AR-140 | Install Stone coping 500mm,525mm | 2026-11-10 → 2026-10-28 A (-13d) | 2026-11-15 → 2026-11-02 A (-13d) | 0% → 100% | 4.49d → none | CO-SU-FE-N-AR-130 → CO-SU-FE-N-AR-130 SS |
| CO-SU-FE-N-AR-150 | Install MODON Signage | 2027-01-10 → 2026-12-20 (-21d) | 2027-01-18 → 2026-12-28 (-21d) |  | -1.62d → 16.38d |  |
| 2 | **Western Fence P1 ( W01:W06 )** |  | 2027-03-15 → 2027-03-22 (+7d) |  |  |  |
| 1 | **Civil Work** |  | 2026-10-31 → 2026-11-07 (+7d) |  |  |  |
| CO-SU-FE-WP1-CI-180 | Pouring R.C Columns For Northern Fence |  | 2026-10-28 → 2026-11-04 (+7d) |  | -11d → -10d |  |
| CO-SU-FE-WP1-CI-190 | Pouring Beams For Northern Fence |  | 2026-10-31 → 2026-11-07 (+7d) |  | 27d → 37.15d |  |
| 5 | **Finishing Work** |  | 2027-03-15 → 2027-03-22 (+7d) |  |  |  |
| 3 | **Electrical Work** | 2026-11-05 → 2026-11-12 (+7d) | 2027-03-15 → 2027-03-22 (+7d) |  |  |  |
| CO-SU-FE-WP1-EL-260 | Trench excavation to receive 2 nos 50mm diameter PVC Conduit | 2026-11-05 → 2026-11-12 (+7d) | 2026-11-21 → 2026-11-28 (+7d) |  | -15d → -14d |  |
| CO-SU-FE-WP1-EL-320 | Trench excavation to receive 3 nos 50mm diameter PVC Conduit | 2026-11-05 → 2026-11-12 (+7d) | 2026-11-21 → 2026-11-28 (+7d) |  | -15d → -14d |  |
| CO-SU-FE-WP1-EL-300 | Fixing of Control cable,CAT6A cable | 2026-11-22 → 2026-11-29 (+7d) | 2026-12-07 → 2026-12-14 (+7d) |  | -15d → -14d |  |
| CO-SU-FE-WP1-EL-330 | Hot dipped galvanized cable conduits for CAT6A cable and Control Cables embedded to wall | 2026-11-22 → 2026-11-29 (+7d) | 2026-12-07 → 2026-12-14 (+7d) |  | -15d → -14d |  |
| CO-SU-FE-WP1-EL-310 | Install 800mm x 800mm x 800mm height concrete handhole | 2026-12-24 → 2026-12-31 (+7d) | 2027-01-09 → 2027-01-16 (+7d) |  | -43d → -42d |  |
| CO-SU-FE-WP1-EL-280 | Fixing Earthing Work (Earth Pit,Grounding rod,Tinned Copper wire) | 2027-01-10 → 2027-01-17 (+7d) | 2027-01-21 → 2027-01-28 (+7d) |  | -43d → -42d |  |
| CO-SU-FE-WP1-EL-340 | Field Equipment Cabinet enclosed outdoor complete with precast concrete footing, | 2027-01-23 → 2027-01-30 (+7d) | 2027-02-01 → 2027-02-09 (+8d) |  | -43d → -42d |  |
| CO-SU-FE-WP1-EL-350 | Fence Lightining 400V, 3PH, 60Hz lighting control panel (LCP-02) | 2027-01-23 → 2027-01-30 (+7d) | 2027-02-01 → 2027-02-09 (+8d) |  | -43d → -42d |  |
| CO-SU-FE-WP1-EL-360 | Install of direct buried armored cable 4C-16mm2 ,10mm2 | 2027-02-02 → 2027-02-09 (+7d) | 2027-02-11 → 2027-02-21 (+10d) |  | -43d → -42d |  |
| CO-SU-FE-WP1-EL-370 | Install 16mm2,10mm2 CU/PVC wire | 2027-02-02 → 2027-02-09 (+7d) | 2027-02-11 → 2027-02-21 (+10d) |  | -43d → -42d |  |
| CO-SU-FE-WP1-EL-390 | FEC-CCTV ( 4C-16mm2 CU/XLPE/PVC direct buried armored cable,16mm2 CU/PVC wire | 2027-02-02 → 2027-02-09 (+7d) | 2027-02-14 → 2027-02-22 (+8d) |  | -26d → -32d |  |
| CO-SU-FE-WP1-EL-250 | Junction Box for lighting fixture | 2027-02-13 → 2027-02-22 (+9d) | 2027-03-01 → 2027-03-13 (+12d) |  | -43d → -42d |  |
| CO-SU-FE-WP1-EL-290 | IR Intrusion Detection System Quad Beams | 2027-03-01 → 2027-03-14 (+13d) | 2027-03-07 → 2027-03-17 (+10d) |  | -36d → -42d |  |
| CO-SU-FE-WP1-EL-380 | Install of 38W, 230V, 1PH, 60Hz fence, led linear uplight lighting, IP66 | 2027-03-01 → 2027-03-14 (+13d) | 2027-03-07 → 2027-03-17 (+10d) |  | -33d → -39d |  |
| CO-SU-FE-WP1-EL-270 | Install, fixings, testing and commissioning 80W LED | 2027-03-07 → 2027-03-18 (+11d) | 2027-03-15 → 2027-03-22 (+7d) |  | -33d → -39d |  |
| 4 | **Architictural work** |  | 2027-01-27 → 2027-01-06 (-21d) |  |  |  |
| CO-SU-FE-WP1-AR-160 | Install Brick Work For Northern Fence |  | 2026-10-31 → 2026-11-07 (+7d) |  | -11d → -10d |  |
| CO-SU-FE-WP1-AR-170 | External plastering to walls and columns |  | 2026-11-03 → 2026-11-10 (+7d) | 13% → 20% | 50d → 48.8d |  |
| CO-SU-FE-WP1-AR-180 | Install 50mm thick random cut stone cladding |  | 2026-11-03 → 2026-11-10 (+7d) | 4% → 10% | 50d → 48.8d |  |
| CO-SU-FE-WP1-AR-190 | Install 2 coats of weatherproof paint at walls | 2026-11-03 → 2026-10-28 A (-6d) | 2026-11-10 → 2026-11-12 (+2d) | 0% → 85% | 50d → 48.8d | CO-SU-FE-WP1-AR-180 → CO-SU-FE-WP1-AR-180 SS, CO-SU-FE-WP1-AR-180 FF |
| CO-SU-FE-WP1-AR-200 | Install Stone coping 500mm,525mm | 2026-11-10 → 2026-11-12 (+2d) | 2026-11-15 → 2026-11-17 (+2d) |  | 50d → 48.8d |  |
| CO-SU-FE-WP1-AR-210 | Install MODON Signage | 2027-01-18 → 2026-12-28 (-21d) | 2027-01-27 → 2027-01-06 (-21d) |  | -1.62d → 16.38d |  |
| 3 | **Western Fence P2 ( W07:W12 )** |  | 2027-03-27 → 2027-04-03 (+7d) |  |  |  |
| 1 | **Civil Work** |  | 2026-10-31 → 2026-11-07 (+7d) |  |  |  |
| CO-SU-FE-WP2-CI-230 | Pouring R.C Columns For Northern Fence |  | 2026-10-27 → 2026-11-03 (+7d) |  | -1.62d → 16.38d |  |
| CO-SU-FE-WP2-CI-240 | Pouring Beams For Northern Fence |  | 2026-10-31 → 2026-11-07 (+7d) |  | 27d → 37.15d |  |

| ID | Task | Start | Finish | Complete | Total float | Predecessors |
| --- | --- | --- | --- | --- | --- | --- |
| 5 | **Finishing Work** |  | 2027-03-27 → 2027-04-03 (+7d) |  |  |  |
| 3 | **Electrical Work** | 2026-10-28 → 2026-11-04 (+7d) | 2027-03-27 → 2027-04-03 (+7d) |  |  |  |
| CO-SU-FE-WP2-EL-410 | Trench excavation to receive 2 nos 50mm diameter PVC Conduit | 2026-10-28 → 2026-11-04 (+7d) | 2026-11-02 → 2026-11-09 (+7d) |  | -1.62d → 16.38d |  |
| CO-SU-FE-WP2-EL-470 | Trench excavation to receive 3 nos 50mm diameter PVC Conduit | 2026-10-28 → 2026-11-04 (+7d) | 2026-11-04 → 2026-11-11 (+7d) |  | -1.62d → 16.38d |  |
| CO-SU-FE-WP2-EL-450 | Fixing of Control cable,CAT6A cable | 2026-11-04 → 2026-11-11 (+7d) | 2026-11-12 → 2026-11-19 (+7d) |  | -1.62d → 16.38d |  |
| CO-SU-FE-WP2-EL-460 | Install 800mm x 800mm x 800mm height concrete handhole | 2026-11-04 → 2026-11-11 (+7d) | 2026-11-12 → 2026-11-19 (+7d) |  | -1.43d → 16.57d |  |
| CO-SU-FE-WP2-EL-480 | Hot dipped galvanized cable conduits for CAT6A cable and Control Cables embedded to wall | 2026-11-04 → 2026-11-11 (+7d) | 2026-11-11 → 2026-11-18 (+7d) |  | -0.62d → 17.38d |  |
| CO-SU-FE-WP2-EL-430 | Fixing Earthing Work (Earth Pit,Grounding rod,Tinned Copper wire) | 2026-11-12 → 2026-11-19 (+7d) | 2026-11-19 → 2026-11-26 (+7d) |  | -1.62d → 16.38d |  |
| CO-SU-FE-WP2-EL-490 | Field Equipment Cabinet enclosed outdoor complete with precast concrete footing, | 2026-11-19 → 2026-11-26 (+7d) | 2026-11-24 → 2026-12-01 (+7d) |  | -1.62d → 16.38d |  |
| CO-SU-FE-WP2-EL-510 | Install of direct buried armored cable 4C-16mm2 ,10mm2 | 2026-11-24 → 2026-12-01 (+7d) | 2026-12-03 → 2026-12-10 (+7d) |  | -1.12d → 16.88d |  |
| CO-SU-FE-WP2-EL-520 | Install 16mm2,10mm2 CU/PVC wire | 2026-11-24 → 2026-12-01 (+7d) | 2026-12-03 → 2026-12-10 (+7d) |  | -1.12d → 16.88d |  |
| CO-SU-FE-WP2-EL-540 | FEC-CCTV ( 4C-16mm2 CU/XLPE/PVC direct buried armored cable,16mm2 CU/PVC wire | 2026-11-24 → 2026-12-01 (+7d) | 2026-12-03 → 2026-12-10 (+7d) |  | -1.62d → 16.38d |  |
| CO-SU-FE-WP2-EL-400 | Junction Box for lighting fixture | 2026-12-03 → 2026-12-10 (+7d) | 2026-12-07 → 2026-12-14 (+7d) |  | 12.88d → 16.88d |  |
| CO-SU-FE-WP2-EL-440 | IR Intrusion Detection System Quad Beams | 2027-03-07 → 2027-03-18 (+11d) | 2027-03-18 → 2027-03-25 (+7d) |  | -36d → -42d |  |
| CO-SU-FE-WP2-EL-530 | Install of 38W, 230V, 1PH, 60Hz fence, led linear uplight lighting, IP66 | 2027-03-07 → 2027-03-18 (+11d) | 2027-03-18 → 2027-03-25 (+7d) |  | -36d → -42d |  |
| CO-SU-FE-WP2-EL-420 | Install, fixings, testing and commissioning 80W LED | 2027-03-20 → 2027-03-27 (+7d) | 2027-03-27 → 2027-04-03 (+7d) |  | -36d → -42d |  |
| 4 | **Architictural work** |  | 2027-02-06 → 2027-01-16 (-21d) |  |  |  |
| CO-SU-FE-WP2-AR-220 | Install Brick Work For Northern Fence |  | 2026-10-28 → 2026-11-04 (+7d) |  | -1.62d → 16.38d |  |
| CO-SU-FE-WP2-AR-230 | External plastering to walls and columns | 2026-12-03 → 2026-10-28 A (-36d) | 2026-12-13 → 2026-12-10 (-3d) | 0% → 15% | -1.62d → 16.38d | CO-SU-FE-WP2-AR-220, CO-SU-FE-WP2-CI-240, CO-SU-FE-WP2-EL-540, CO-SU-FE-WP2-EL-520, CO-SU-FE-WP2-EL-510 → CO-SU-FE-WP2-AR-220 SS, CO-SU-FE-WP2-CI-240 SS, CO-SU-FE-WP2-EL-540 FF, CO-SU-FE-WP2-EL-520 FF, CO-SU-FE-WP2-EL-510 FF, CO-SU-FE-WP2-AR-220 FF, CO-SU-FE-WP2-CI-240 FF |
| CO-SU-FE-WP2-AR-240 | Install 50mm thick random cut stone cladding | 2026-12-13 → 2026-10-28 A (-46d) | 2026-12-22 → 2026-12-10 (-12d) | 0% → 15% | -1.62d → 16.38d | CO-SU-FE-WP2-AR-230 → CO-SU-FE-WP2-AR-230 SS, CO-SU-FE-WP2-AR-230 FF |
| CO-SU-FE-WP2-AR-250 | Install 2 coats of weatherproof paint at walls | 2026-12-22 → 2026-10-28 A (-55d) | 2026-12-31 → 2026-12-10 (-21d) | 0% → 85% | -1.62d → 16.38d | CO-SU-FE-WP2-AR-240 → CO-SU-FE-WP2-AR-240 SS, CO-SU-FE-WP2-AR-240 FF |
| CO-SU-FE-WP2-AR-260 | Install Stone coping 500mm,525mm | 2026-12-31 → 2026-12-10 (-21d) | 2027-01-10 → 2026-12-20 (-21d) |  | -1.62d → 16.38d |  |
| CO-SU-FE-WP2-AR-270 | Install MODON Signage | 2027-01-27 → 2027-01-06 (-21d) | 2027-02-06 → 2027-01-16 (-21d) |  | -1.62d → 16.38d |  |
| 4 | **Southern Fence S01:S05** |  | 2027-04-12 → 2027-04-11 (-1d) |  |  |  |
| 1 | **Civil Work** |  | 2026-10-29 → 2026-11-05 (+7d) |  |  |  |
| CO-SU-FE-S-CI-270 | Pouring R.C Footing For Northern Fence |  | 2026-10-28 → 2026-11-04 (+7d) |  | 5d → 10d |  |
| CO-SU-FE-S-CI-280 | Pouring R.C Columns For Northern Fence |  | 2026-10-28 → 2026-11-04 (+7d) |  | 5d → 10d |  |
| CO-SU-FE-S-CI-290 | Pouring Beams For Northern Fence |  | 2026-10-29 → 2026-11-05 (+7d) |  | 32.91d → 41.91d |  |
| 5 | **Finishing Work** |  | 2027-04-12 → 2027-04-11 (-1d) |  |  |  |
| 3 | **Electrical Work** | 2026-10-27 → 2026-11-03 (+7d) | 2027-04-12 → 2027-04-11 (-1d) |  |  |  |
| CO-SU-FE-S-EL-560 | Trench excavation to receive 2 nos 50mm diameter PVC Conduit | 2026-10-27 → 2026-11-03 (+7d) | 2026-11-12 → 2026-11-19 (+7d) |  | 5d → 10d |  |
| CO-SU-FE-S-EL-620 | Trench excavation to receive 3 nos 50mm diameter PVC Conduit | 2026-10-27 → 2026-11-03 (+7d) | 2026-11-12 → 2026-11-19 (+7d) |  | 5d → 10d |  |
| CO-SU-FE-S-EL-600 | Fixing of Control cable,CAT6A cable | 2026-11-14 → 2026-11-21 (+7d) | 2026-11-30 → 2026-12-07 (+7d) |  | 5d → 10d |  |
| CO-SU-FE-S-EL-610 | Install 800mm x 800mm x 800mm height concrete handhole | 2026-11-14 → 2026-11-21 (+7d) | 2026-11-30 → 2026-12-07 (+7d) |  | 5d → 10d |  |
| CO-SU-FE-S-EL-630 | Hot dipped galvanized cable conduits for CAT6A cable and Control Cables embedded to wall | 2026-11-14 → 2026-11-21 (+7d) | 2026-11-30 → 2026-12-07 (+7d) |  | 5d → 10d |  |
| CO-SU-FE-S-EL-580 | Fixing Earthing Work (Earth Pit,Grounding rod,Tinned Copper wire) | 2026-12-01 → 2026-12-08 (+7d) | 2026-12-07 → 2026-12-14 (+7d) |  | 5d → 10d |  |
| CO-SU-FE-S-EL-640 | Field Equipment Cabinet enclosed outdoor complete with precast concrete footing, | 2026-12-03 → 2026-12-10 (+7d) | 2026-12-07 → 2026-12-14 (+7d) |  | 5d → 10d |  |
| CO-SU-FE-S-EL-650 | Fence Lightining 400V, 3PH, 60Hz lighting control panel (LCP-02) | 2026-12-03 → 2026-12-10 (+7d) | 2026-12-07 → 2026-12-14 (+7d) |  | 5d → 10d |  |
| CO-SU-FE-S-EL-660 | Install of direct buried armored cable 4C-16mm2 ,10mm2 | 2026-12-03 → 2026-12-10 (+7d) | 2026-12-14 → 2026-12-21 (+7d) |  | 6d → 10d |  |
| CO-SU-FE-S-EL-670 | Install 16mm2,10mm2 CU/PVC wire | 2026-12-08 → 2026-12-15 (+7d) | 2026-12-14 → 2026-12-21 (+7d) |  | 6d → 10d |  |
| CO-SU-FE-S-EL-690 | FEC-CCTV ( 4C-16mm2 CU/XLPE/PVC direct buried armored cable,16mm2 CU/PVC wire | 2026-12-08 → 2026-12-15 (+7d) | 2026-12-15 → 2026-12-22 (+7d) |  | 5d → 13d |  |
| CO-SU-FE-S-EL-550 | Junction Box for lighting fixture | 2026-12-15 → 2026-12-22 (+7d) | 2026-12-22 → 2026-12-29 (+7d) |  | 6d → 10d |  |
| CO-SU-FE-S-EL-590 | IR Intrusion Detection System Quad Beams | 2027-03-16 → 2027-03-14 (-2d) | 2027-03-23 → 2027-03-21 (-2d) |  | -33d → -31d |  |
| CO-SU-FE-S-EL-680 | Install of 38W, 230V, 1PH, 60Hz fence, led linear uplight lighting, IP66 | 2027-03-28 → 2027-03-27 (-1d) | 2027-04-04 → 2027-04-03 (-1d) |  | -43d → -42d |  |
| CO-SU-FE-S-EL-570 | Install, fixings, testing and commissioning 80W LED | 2027-04-05 → 2027-04-04 (-1d) | 2027-04-12 → 2027-04-11 (-1d) |  | -43d → -42d |  |
| 4 | **Architictural work** |  | 2027-04-05 → 2027-04-03 (-2d) |  |  |  |
| CO-SU-FE-S-AR-280 | Install Brick Work For Northern Fence |  | 2026-10-31 → 2026-11-07 (+7d) |  | 5d → 10d |  |
| CO-SU-FE-S-AR-290 | External plastering to walls and columns | 2026-12-16 → 2026-10-28 A (-49d) |  | 0% → 15% | 5d → 13d | CO-SU-FE-S-AR-280, CO-SU-FE-S-CI-290, CO-SU-FE-S-EL-690, CO-SU-FE-S-EL-670, CO-SU-FE-S-EL-660 → CO-SU-FE-S-AR-280 SS, CO-SU-FE-S-CI-290 SS, CO-SU-FE-S-EL-690 FF, CO-SU-FE-S-EL-670 FF, CO-SU-FE-S-EL-660 FF, CO-SU-FE-S-AR-280 FF, CO-SU-FE-S-CI-290 FF |
| CO-SU-FE-S-AR-310 | Install 2 coats of weatherproof paint at walls | 2027-03-01 → 2026-10-28 A (-124d) | 2027-03-15 → 2027-03-13 (-2d) | 0% → 45% | -43d → -41d | CO-SU-FE-S-AR-300, CO-SU-FE-WP1-EL-250 → CO-SU-FE-S-AR-300 FF, CO-SU-FE-WP1-EL-250 FF |
| CO-SU-FE-S-AR-320 | Install Stone coping 500mm,525mm | 2027-03-16 → 2027-03-14 (-2d) | 2027-03-27 → 2027-03-24 (-3d) |  | -43d → -41d |  |
| CO-SU-FE-S-AR-330 | Install MODON Signage | 2027-03-28 → 2027-03-25 (-3d) | 2027-04-05 → 2027-04-03 (-2d) |  | -35d → -33d |  |
| 5 | **Eastern Fence P1 ( E01:E06 )** |  | 2027-04-17 → 2027-04-15 (-2d) |  |  |  |
| 1 | **Civil Work** |  | 2026-11-01 → 2026-11-08 (+7d) |  |  |  |
| CO-SU-FE-EP1-CI-330 | Pouring R.C Columns For Northern Fence |  | 2026-11-01 → 2026-11-08 (+7d) | 60% → 80% | 23.12d → 32.12d |  |
| CO-SU-FE-EP1-CI-340 | Pouring Beams For Northern Fence |  | 2026-11-01 → 2026-11-08 (+7d) | 45% → 70% | 31.12d → 40.12d |  |
| 5 | **Finishing Work** |  | 2027-04-17 → 2027-04-15 (-2d) |  |  |  |
| 3 | **Electrical Work** | 2026-11-01 → 2026-11-08 (+7d) | 2027-04-17 → 2027-04-15 (-2d) |  |  |  |
| CO-SU-FE-EP1-EL-710 | Trench excavation to receive 2 nos 50mm diameter PVC Conduit | 2026-11-01 → 2026-11-08 (+7d) | 2026-11-05 → 2026-11-12 (+7d) |  | 23.12d → 32.12d |  |
| CO-SU-FE-EP1-EL-770 | Trench excavation to receive 3 nos 50mm diameter PVC Conduit | 2026-11-01 → 2026-11-08 (+7d) | 2026-11-05 → 2026-11-12 (+7d) |  | 23.12d → 32.12d |  |
| CO-SU-FE-EP1-EL-750 | Fixing of Control cable,CAT6A cable | 2026-11-05 → 2026-11-12 (+7d) | 2026-11-10 → 2026-11-17 (+7d) |  | 23.12d → 32.12d |  |
| CO-SU-FE-EP1-EL-760 | Install 800mm x 800mm x 800mm height concrete handhole | 2026-11-05 → 2026-11-12 (+7d) | 2026-11-10 → 2026-11-17 (+7d) |  | 23.12d → 32.12d |  |
| CO-SU-FE-EP1-EL-780 | Hot dipped galvanized cable conduits for CAT6A cable and Control Cables embedded to wall | 2026-11-05 → 2026-11-12 (+7d) | 2026-11-10 → 2026-11-17 (+7d) |  | 23.12d → 32.12d |  |
| CO-SU-FE-EP1-EL-730 | Fixing Earthing Work (Earth Pit,Grounding rod,Tinned Copper wire) | 2026-11-10 → 2026-11-17 (+7d) | 2026-11-17 → 2026-11-24 (+7d) |  | 23.12d → 32.12d |  |
| CO-SU-FE-EP1-EL-790 | Field Equipment Cabinet enclosed outdoor complete with precast concrete footing, | 2026-11-17 → 2026-11-24 (+7d) | 2026-11-22 → 2026-11-29 (+7d) |  | 23.12d → 32.12d |  |
| CO-SU-FE-EP1-EL-800 | Fence Lightining 400V, 3PH, 60Hz lighting control panel (LCP-02) | 2026-11-17 → 2026-11-24 (+7d) | 2026-11-22 → 2026-11-29 (+7d) |  | 23.12d → 32.12d |  |
| CO-SU-FE-EP1-EL-810 | Install of direct buried armored cable 4C-16mm2 ,10mm2 | 2026-11-22 → 2026-11-29 (+7d) | 2026-11-26 → 2026-12-03 (+7d) |  | 23.12d → 32.12d |  |
| CO-SU-FE-EP1-EL-820 | Install 16mm2,10mm2 CU/PVC wire | 2026-11-22 → 2026-11-29 (+7d) | 2026-11-26 → 2026-12-03 (+7d) |  | 23.12d → 32.12d |  |
| CO-SU-FE-EP1-EL-840 | FEC-CCTV ( 4C-16mm2 CU/XLPE/PVC direct buried armored cable,16mm2 CU/PVC wire | 2026-11-22 → 2026-11-29 (+7d) | 2026-11-26 → 2026-12-03 (+7d) |  | 23.12d → 37.12d |  |
| CO-SU-FE-EP1-EL-700 | Junction Box for lighting fixture | 2026-12-23 → 2026-12-30 (+7d) | 2026-12-26 → 2027-01-02 (+7d) |  | 6d → 10d |  |
| CO-SU-FE-EP1-EL-740 | IR Intrusion Detection System Quad Beams | 2027-03-24 → 2027-03-22 (-2d) | 2027-03-28 → 2027-03-25 (-3d) |  | -30d → -28d |  |

| ID | Task | Start | Finish | Complete | Total float | Predecessors |
| --- | --- | --- | --- | --- | --- | --- |
| CO-SU-FE-EP1-EL-830 | Install of 38W, 230V, 1PH, 60Hz fence, led linear uplight lighting, IP66 | 2027-03-24 → 2027-03-22 (-2d) | 2027-03-28 → 2027-03-25 (-3d) |  | -30d → -28d |  |
| CO-SU-FE-EP1-EL-720 | Install, fixings, testing and commissioning 80W LED | 2027-04-13 → 2027-04-12 (-1d) | 2027-04-17 → 2027-04-15 (-2d) |  | -43d → -42d |  |
| 4 | **Architictural work** |  | 2027-04-08 → 2027-04-06 (-2d) |  |  |  |
| CO-SU-FE-EP1-AR-340 | Install Brick Work For Northern Fence |  | 2026-11-01 → 2026-11-08 (+7d) | 70% → 85% | 23.12d → 32.12d |  |
| CO-SU-FE-EP1-AR-360 | Install 50mm thick random cut stone cladding | 2026-12-06 → 2026-10-28 A (-39d) | 2026-12-17 → 2026-12-13 (-4d) | 0% → 20% | 23.12d → 37.12d | CO-SU-FE-EP1-AR-350, CO-SU-FE-EP1-EL-840 → CO-SU-FE-EP1-AR-350 FF, CO-SU-FE-EP1-EL-840 FF |
| CO-SU-FE-EP1-AR-370 | Install 2 coats of weatherproof paint at walls | 2026-12-17 → 2026-10-28 A (-50d) | 2026-12-29 → 2026-12-13 (-16d) | 0% → 50% | 23.12d → 37.12d | CO-SU-FE-EP1-AR-360 → CO-SU-FE-EP1-AR-360 SS, CO-SU-FE-EP1-AR-360 FF |
| CO-SU-FE-EP1-AR-350 | External plastering to walls and columns | 2026-11-26 → 2026-12-03 (+7d) | 2026-12-06 → 2026-12-13 (+7d) |  | 23.12d → 37.12d |  |
| CO-SU-FE-EP1-AR-380 | Install Stone coping 500mm,525mm | 2026-12-29 → 2026-12-13 (-16d) | 2027-01-10 → 2026-12-24 (-17d) |  | 23.12d → 37.12d |  |
| CO-SU-FE-EP1-AR-390 | Install MODON Signage | 2027-04-06 → 2027-04-04 (-2d) | 2027-04-08 → 2027-04-06 (-2d) |  | -35d → -33d |  |
| 6 | **Eastern Fence P2 ( E07:E13 )** |  | 2027-05-10 → 2027-04-19 (-21d) |  |  |  |
| 1 | **Civil Work** |  | 2026-11-04 → 2026-11-11 (+7d) |  |  |  |
| CO-SU-FE-EP2-CI-380 | Pouring R.C Columns For Northern Fence |  | 2026-11-01 → 2026-11-08 (+7d) | 70% → 85% | 48.38d → 46.38d |  |
| CO-SU-FE-EP2-CI-390 | Pouring Beams For Northern Fence |  | 2026-11-04 → 2026-11-11 (+7d) | 45% → 70% | 66.5d → 70.5d |  |
| 5 | **Finishing Work** |  | 2027-05-10 → 2027-04-19 (-21d) |  |  |  |
| 3 | **Electrical Work** | 2026-11-02 → 2026-11-09 (+7d) | 2027-05-10 → 2027-04-19 (-21d) |  |  |  |
| CO-SU-FE-EP2-EL-860 | Trench excavation to receive 2 nos 50mm diameter PVC Conduit | 2026-11-02 → 2026-11-09 (+7d) | 2026-11-07 → 2026-11-14 (+7d) |  | 48.38d → 52.38d |  |
| CO-SU-FE-EP2-EL-920 | Trench excavation to receive 3 nos 50mm diameter PVC Conduit | 2026-11-02 → 2026-11-09 (+7d) | 2026-11-07 → 2026-11-14 (+7d) |  | 48.38d → 52.38d |  |
| CO-SU-FE-EP2-EL-910 | Install 800mm x 800mm x 800mm height concrete handhole | 2026-11-07 → 2026-11-14 (+7d) | 2026-11-10 → 2026-11-17 (+7d) |  | 48.38d → 52.38d |  |
| CO-SU-FE-EP2-EL-930 | Hot dipped galvanized cable conduits for CAT6A cable and Control Cables embedded to wall | 2026-11-07 → 2026-11-14 (+7d) | 2026-11-10 → 2026-11-17 (+7d) |  | 48.38d → 52.38d |  |
| CO-SU-FE-EP2-EL-900 | Fixing of Control cable,CAT6A cable | 2026-12-27 → 2027-01-03 (+7d) | 2026-12-29 → 2027-01-05 (+7d) |  | 6d → 10d |  |
| CO-SU-FE-EP2-EL-880 | Fixing Earthing Work (Earth Pit,Grounding rod,Tinned Copper wire) | 2026-12-30 → 2027-01-06 (+7d) | 2027-01-02 → 2027-01-09 (+7d) |  | 6d → 10d |  |
| CO-SU-FE-EP2-EL-940 | Field Equipment Cabinet enclosed outdoor complete with precast concrete footing, | 2027-01-03 → 2027-01-10 (+7d) | 2027-01-06 → 2027-01-13 (+7d) |  | 6d → 10d |  |
| CO-SU-FE-EP2-EL-950 | Fence Lightining 400V, 3PH, 60Hz lighting control panel (LCP-02) | 2027-01-03 → 2027-01-10 (+7d) | 2027-01-06 → 2027-01-13 (+7d) |  | 6d → 10d |  |
| CO-SU-FE-EP2-EL-960 | Install of direct buried armored cable 4C-16mm2 ,10mm2 | 2027-01-07 → 2027-01-14 (+7d) | 2027-01-10 → 2027-01-17 (+7d) |  | 6d → 10d |  |
| CO-SU-FE-EP2-EL-970 | Install 16mm2,10mm2 CU/PVC wire | 2027-01-07 → 2027-01-14 (+7d) | 2027-01-10 → 2027-01-17 (+7d) |  | 6d → 10d |  |
| CO-SU-FE-EP2-EL-990 | FEC-CCTV ( 4C-16mm2 CU/XLPE/PVC direct buried armored cable,16mm2 CU/PVC wire | 2027-01-07 → 2027-01-14 (+7d) | 2027-01-13 → 2027-01-20 (+7d) |  | 6d → 10d |  |
| CO-SU-FE-EP2-EL-850 | Junction Box for lighting fixture | 2027-01-11 → 2027-01-18 (+7d) | 2027-01-13 → 2027-01-20 (+7d) |  | 6d → 10d |  |
| CO-SU-FE-EP2-EL-890 | IR Intrusion Detection System Quad Beams | 2027-05-03 → 2027-03-27 (-37d) | 2027-05-06 → 2027-03-29 (-38d) |  | -59.75d → -27d |  |
| CO-SU-FE-EP2-EL-980 | Install of 38W, 230V, 1PH, 60Hz fence, led linear uplight lighting, IP66 | 2027-05-03 → 2027-03-27 (-37d) | 2027-05-06 → 2027-03-29 (-38d) |  | -59.75d → -27d |  |
| CO-SU-FE-EP2-EL-870 | Install, fixings, testing and commissioning 80W LED | 2027-05-06 → 2027-04-17 (-19d) | 2027-05-10 → 2027-04-19 (-21d) |  | -59.75d → -42d |  |
| 4 | **Architictural work** |  | 2027-05-05 → 2027-04-08 (-27d) |  |  |  |
| CO-SU-FE-EP2-AR-400 | Install Brick Work For Northern Fence |  | 2026-11-02 → 2026-11-09 (+7d) | 70% → 80% | 48.38d → 46.38d |  |
| CO-SU-FE-EP2-AR-410 | External plastering to walls and columns | 2027-01-14 → 2026-10-28 A (-78d) | 2027-01-19 → 2027-01-20 (+1d) | 0% → 20% | 6d → 10d | CO-SU-FE-EP2-AR-400, CO-SU-FE-EP2-CI-390, CO-SU-FE-EP2-EL-990, CO-SU-FE-EP2-EL-970, CO-SU-FE-EP2-EL-960, CO-SU-FE-EP2-EL-850 → CO-SU-FE-EP2-AR-400 SS, CO-SU-FE-EP2-CI-390 SS, CO-SU-FE-EP2-EL-990 FF, CO-SU-FE-EP2-EL-970 FF, CO-SU-FE-EP2-EL-960 FF, CO-SU-FE-EP2-EL-850 FF, CO-SU-FE-EP2-AR-400 FF, CO-SU-FE-EP2-CI-390 FF |
| CO-SU-FE-EP2-AR-430 | Install 2 coats of weatherproof paint at walls | 2027-01-26 → 2026-10-28 A (-90d) | 2027-01-31 → 2027-01-26 (-5d) | 0% → 50% | 6d → 10d | CO-SU-FE-EP2-AR-420 → CO-SU-FE-EP2-AR-420 FF |
| CO-SU-FE-EP2-AR-420 | Install 50mm thick random cut stone cladding | 2027-01-20 → 2027-01-21 (+1d) | 2027-01-25 → 2027-01-26 (+1d) |  | 6d → 10d |  |
| CO-SU-FE-EP2-AR-440 | Install Stone coping 500mm,525mm | 2027-04-28 → 2027-03-04 (-55d) | 2027-05-03 → 2027-03-14 (-50d) |  | -59.75d → -16.4d |  |
| CO-SU-FE-EP2-AR-450 | Install MODON Signage | 2027-05-03 → 2027-04-07 (-26d) | 2027-05-05 → 2027-04-08 (-27d) |  | -55.75d → -33d |  |
| TC | **Testing and Comissioning** | 2026-10-27 → 2026-11-03 (+7d) | 2027-05-30 → 2027-06-06 (+7d) |  |  |  |
| INF | **Infrastructure Networks** | 2027-04-19 → 2027-04-26 (+7d) | 2027-05-30 → 2027-06-06 (+7d) |  |  |  |
| PW1 | **Irrigation Network** | 2027-05-12 → 2027-05-23 (+11d) | 2027-05-23 → 2027-05-29 (+6d) |  |  |  |
| T/C-IR | Testing and Commissioning of Irrigation Network | 2027-05-12 → 2027-05-23 (+11d) | 2027-05-23 → 2027-05-29 (+6d) |  | -79d → -83.5d |  |
| PW11 | **TSE Network** | 2027-04-29 → 2027-05-06 (+7d) | 2027-05-22 → 2027-05-29 (+7d) |  |  |  |
| T/C-TSE-10 | Testing and Commissioning of TSE Network | 2027-04-29 → 2027-05-06 (+7d) | 2027-05-22 → 2027-05-29 (+7d) |  | -70d → -76d |  |
| PW | **Potable Water Network** | 2027-05-12 → 2027-05-23 (+11d) | 2027-05-24 → 2027-05-30 (+6d) |  |  |  |
| T/C-PW | Testing and Commissioning of Potable Water Network | 2027-05-12 → 2027-05-23 (+11d) | 2027-05-24 → 2027-05-30 (+6d) |  | -79d → -83.5d |  |
| SW | **Sewage Network** | 2027-04-29 → 2027-05-06 (+7d) | 2027-05-02 → 2027-05-09 (+7d) |  |  |  |
| T/C-SW | Testing and Commissioning of Sewage Network | 2027-04-29 → 2027-05-06 (+7d) | 2027-05-02 → 2027-05-09 (+7d) |  | -77.5d → -83.5d |  |
| SD | **Storm Drainage Network** | 2027-04-19 → 2027-04-26 (+7d) | 2027-04-28 → 2027-05-05 (+7d) |  |  |  |
| T/C-SD | Testing and Commissioning of Storm Drainage Network | 2027-04-19 → 2027-04-26 (+7d) | 2027-04-28 → 2027-05-05 (+7d) |  | -77.5d → -83.5d |  |
| SL | **Street Lighting Network** | 2027-05-24 → 2027-05-29 (+5d) | 2027-05-30 → 2027-06-05 (+6d) |  |  |  |
| T/C-SL | Testing and Commissioning of Street Lighting Network | 2027-05-24 → 2027-05-29 (+5d) | 2027-05-30 → 2027-06-05 (+6d) |  | -79d → -83.5d |  |
| TE | **Telecom Network** | 2027-05-04 → 2027-05-11 (+7d) | 2027-05-06 → 2027-05-13 (+7d) |  |  |  |
| T/C-TE | Testing and Commissioning of Telecom Network | 2027-05-04 → 2027-05-11 (+7d) | 2027-05-06 → 2027-05-13 (+7d) |  | -80d → -86d |  |
| MV | **Medium Voltage Network** | 2027-05-04 → 2027-05-11 (+7d) | 2027-05-25 → 2027-06-01 (+7d) |  |  |  |
| T/C-MV | Testing and Commissioning of Medium Voltage Network | 2027-05-04 → 2027-05-11 (+7d) | 2027-05-25 → 2027-06-01 (+7d) |  | -80d → -86d |  |
| RD | **Road Works** | 2027-05-26 → 2027-06-02 (+7d) | 2027-05-30 → 2027-06-06 (+7d) |  |  |  |
| T/C-RD | Testing and Commissioning of Road Works | 2027-05-26 → 2027-06-02 (+7d) | 2027-05-30 → 2027-06-06 (+7d) |  | -75d → -81d |  |
| 1 | **Utility Buildings** | 2026-10-27 → 2026-11-03 (+7d) | 2027-05-23 → 2027-05-30 (+7d) |  |  |  |
| T/C-DPO | Testing and Commissioning of Storm Drainage Ponds | 2026-10-27 → 2026-11-03 (+7d) | 2026-10-27 → 2026-11-03 (+7d) |  | 85d → 79d |  |
| T/C-CTV | Testing and Commissioning of Guard Room and Fence | 2027-03-16 → 2027-03-22 (+6d) | 2027-03-16 → 2027-03-22 (+6d) |  | -12.4d → -17.5d |  |
| T/C-SPS | Testing and Commissioning of Sewage Pump Stations& soft scape and planting work | 2027-05-23 → 2027-05-30 (+7d) | 2027-05-23 → 2027-05-30 (+7d) |  | -66d → -72d |  |
| 1 | **Handing over and close out** | 2026-10-27 → 2026-11-03 (+7d) | 2027-06-08 → 2027-06-15 (+7d) |  |  |  |
| 2 | **As-Built** | 2026-10-27 → 2026-11-03 (+7d) | 2027-06-08 → 2027-06-15 (+7d) |  |  |  |
| HO-130 | Submission As-Built Drawing For Pond | 2026-10-27 → 2026-11-03 (+7d) | 2026-11-11 → 2026-11-18 (+7d) |  | 85d → 79d |  |
| HO-100 | Submission As-Built Drawing For Sewage Network | 2027-05-03 → 2027-05-10 (+7d) | 2027-05-24 → 2027-05-31 (+7d) |  | -67d → -73d |  |
| HO-160 | Submission As-Built Drawing For Telecom Network | 2027-05-08 → 2027-05-20 (+12d) | 2027-05-26 → 2027-06-02 (+7d) |  | -69d → -75d |  |
| HO-180 | Submission As-Built Drawing For Irrigation Network | 2027-05-24 → 2027-05-29 (+5d) | 2027-06-06 → 2027-06-12 (+6d) |  | -78d → -82.5d |  |
| HO-210 | Submission As-Built Drawing For Pump station | 2027-05-23 → 2027-05-30 (+7d) | 2027-05-23 → 2027-05-30 (+7d) |  | -66d → -72d |  |
| HO-190 | As-Built Drawing For Potable Water Network | 2027-05-25 → 2027-05-30 (+5d) | 2027-06-07 → 2027-06-13 (+6d) |  | -79d → -83.5d |  |
| HO-170 | Submission As-Built Drawing For Medium Voltage Network | 2027-05-26 → 2027-06-02 (+7d) | 2027-06-08 → 2027-06-15 (+7d) |  | -80d → -86d |  |

| ID | Task | Start | Finish | Total float |
| --- | --- | --- | --- | --- |
| HO-150 | Submission As-Built Drawing For Street Lighting Network | 2027-05-31 → 2027-06-05 (+5d) | 2027-06-07 → 2027-06-13 (+6d) | -79d → -83.5d |
| HO-140 | Submission As-Built Drawing For Roads Network | 2027-05-31 → 2027-06-07 (+7d) | 2027-06-02 → 2027-06-09 (+7d) | -75d → -81d |
| 1 | **De-Mobilization Works** | 2027-05-31 → 2027-06-05 (+5d) | 2027-06-05 → 2027-06-10 (+5d) |  |
| HO-230 | Remove Temporary Car Shades | 2027-05-31 → 2027-06-05 (+5d) | 2027-06-05 → 2027-06-10 (+5d) | -77d → -81.5d |
| 3 | **Handing Over** | 2027-05-31 → 2027-06-07 (+7d) | 2027-06-02 → 2027-06-09 (+7d) |  |
| HO-250 | Review B.O.Q Qty. to ensure compliance with the actual status | 2027-05-31 → 2027-06-07 (+7d) | 2027-06-02 → 2027-06-09 (+7d) | -75d → -81d |

## Version 8 (data date 2026-11-10, saved 2026-11-09, file MOD3-3147-BL0-R0-6UPDATE 10-11-2026.xer)

Note of the change: Renumber project folders 01–23 in order (after removing projects 12 and 25)

Last finish 2027-06-15 → 2027-06-21 (+6d). Complete tasks 346 → 367.

Changed:

| ID | Task | Start | Finish | Complete | Total float |
| --- | --- | --- | --- | --- | --- |
| MS | **Key Milestones** |  | 2027-06-15 → 2027-06-21 (+6d) |  |  |
| CM | **Contractual Milestones** |  | 2027-06-15 → 2027-06-21 (+6d) |  |  |
| MS-CF-SW | Completion of Construction Works for Sewage Network | 2027-03-04 → 2027-02-09 (-23d) | 2027-03-04 → 2027-02-09 (-23d) |  | -33.9d → -18.5d |
| MS-CF-SD | Completion of Construction Works for Storm Drainage Network | 2027-04-05 → 2027-03-31 (-5d) | 2027-04-05 → 2027-03-31 (-5d) |  | -66.5d → -61.69d |
| MS-CF-IR | Completion of Construction Works for Irrigation Network | 2027-04-11 → 2027-04-17 (+6d) | 2027-04-11 → 2027-04-17 (+6d) |  | -42d → -46.5d |
| MS-CF-TSE | Completion of Construction Works for Treated Sewage Effluent Network | 2027-04-25 → 2027-04-29 (+4d) | 2027-04-25 → 2027-04-29 (+4d) |  | -53.5d → -58d |
| MS-CF-PW | Completion of Construction Works for Potable Water Network | 2027-04-27 → 2027-05-03 (+6d) | 2027-04-27 → 2027-05-03 (+6d) |  | -55.75d → -61d |
| MS-CF-MV | Completion of Construction Works for Medium Voltage Network | 2027-05-02 → 2027-05-06 (+4d) | 2027-05-02 → 2027-05-06 (+4d) |  | -78.5d → -83d |
| MS-CF-SL | Completion of Construction Works for Street Lighting Network | 2027-05-06 → 2027-05-13 (+7d) | 2027-05-06 → 2027-05-13 (+7d) |  | -70d → -76d |
| MS-CF-TE | Completion of Construction Works for Telecom Network | 2027-05-10 → 2027-05-22 (+12d) | 2027-05-10 → 2027-05-22 (+12d) |  | -86d → -91d |
| MS-CF-RD | Completion of Construction Works for Road Works | 2027-05-30 → 2027-06-06 (+7d) | 2027-05-30 → 2027-06-06 (+7d) |  | -71.5d → -77.5d |
| MS-CF-PF | Project Completion Date | 2027-06-15 → 2027-06-21 (+6d) | 2027-06-15 → 2027-06-21 (+6d) |  | -86d → -91d |
| PROC | **Procurement Cycle** |  | 2027-05-05 → 2027-05-11 (+6d) |  |  |
| NLL | **Short Lead Time Items** |  | 2027-04-15 → 2027-04-21 (+6d) |  |  |
| INF | **Infrastructure Networks** |  | 2027-04-15 → 2027-04-21 (+6d) |  |  |
| RD | **Road Works** |  | 2026-11-03 → 2026-11-10 (+7d) |  |  |
| DL | **Material Delivery & Site Inspection** |  | 2026-11-03 → 2026-11-10 (+7d) |  |  |
| 1 | **Pre-Bituminous Construction** |  | 2026-11-03 → 2026-11-10 (+7d) |  |  |
| PRO-R25-RD-DL-100 | Material Delivery & Site Inspection for Subgrade of Road Works |  | 2026-11-03 → 2026-11-10 (+7d) |  | 26.5d → 20.5d |
| PRO-R25-RD-DL-110 | Material Delivery & Site Inspection for Aggregate Base Course of Road Works | 2026-11-03 → 2026-11-10 (+7d) | 2026-11-03 → 2026-11-10 (+7d) |  | 40d → 34d |
| 4 | **Bituminous Construction** | 2026-11-03 → 2026-11-10 (+7d) | 2026-11-03 → 2026-11-10 (+7d) |  |  |
| PRO-R25-RD-DL-160 | Material Delivery & Site Inspection for Prime Coat of Road Works | 2026-11-03 → 2026-11-10 (+7d) | 2026-11-03 → 2026-11-10 (+7d) |  | 55d → 49d |
| PRO-R25-RD-DL-170 | Material Delivery & Site Inspection for Bituminous Base & Wearing Courses of Road Works | 2026-11-03 → 2026-11-10 (+7d) | 2026-11-03 → 2026-11-10 (+7d) |  | 62d → 56d |
| 2 | **Pavement Works** | 2026-11-03 → 2026-11-10 (+7d) | 2026-11-03 → 2026-11-10 (+7d) |  |  |
| PRO-R25-RD-DL-120 | Material Delivery & Site Inspection of Interlock Tiles for Landscaping | 2026-11-03 → 2026-11-10 (+7d) | 2026-11-03 → 2026-11-10 (+7d) |  | 53d → 47d |
| PRO-R25-RD-DL-130 | Material Delivery & Site Inspection of Curbstones for Landscaping | 2026-11-03 → 2026-11-10 (+7d) | 2026-11-03 → 2026-11-10 (+7d) |  | 40.8d → 34.8d |
| 3 | **Traffic Signs Boards and Roads Marking** | 2026-11-03 → 2026-11-10 (+7d) | 2026-11-03 → 2026-11-10 (+7d) |  |  |
| PRO-R25-RD-DL-140 | Material Delivery & Site Inspection of Traffic Signs Boards For Road Works | 2026-11-03 → 2026-11-10 (+7d) | 2026-11-03 → 2026-11-10 (+7d) |  | 79d → 73d |
| PRO-R25-RD-DL-150 | Material Delivery & Site Inspection of Road Markings For Road Works | 2026-11-03 → 2026-11-10 (+7d) | 2026-11-03 → 2026-11-10 (+7d) |  | 72d → 66d |
| IR1 | **Softscape and Planting Works** | 2026-11-03 → 2026-11-10 (+7d) | 2027-03-15 → 2027-03-21 (+6d) |  |  |
| PO | **Issuance of Purchase Orders** | 2026-11-03 → 2026-11-10 (+7d) | 2026-11-09 → 2026-11-16 (+7d) |  |  |
| 1 | **Main Line Pipes** | 2026-11-03 → 2026-11-10 (+7d) | 2026-11-09 → 2026-11-16 (+7d) |  |  |
| PRO-IR-PO-140 | Issuance of Purchase Order for Softscape and Planting Works | 2026-11-03 → 2026-11-10 (+7d) | 2026-11-09 → 2026-11-16 (+7d) |  | -82.25d → -88.25d |
| PRO-IR-PO-150 | Issuance of Purchase Order for Site Furnishings (Seating Bench,Stone Boulders and Gravel) | 2026-11-03 → 2026-11-10 (+7d) | 2026-11-09 → 2026-11-16 (+7d) |  | -80d → -86d |
| MF | **Manufacturing of Material** | 2026-11-10 → 2026-11-17 (+7d) | 2027-02-07 → 2027-02-14 (+7d) |  |  |
| 1 | **Main Line Pipes** | 2026-11-10 → 2026-11-17 (+7d) | 2027-02-07 → 2027-02-14 (+7d) |  |  |
| PRO-IR-MF-140 | Manufacturing of Softscape and Planting Works | 2026-11-10 → 2026-11-17 (+7d) | 2027-02-07 → 2027-02-14 (+7d) |  | -97.5d → -104.5d |
| PRO-IR-MF-150 | Manufacturing of Valves for Site Furnishings (Seating Bench,Stone Boulders and Gravel) | 2026-11-10 → 2026-11-17 (+7d) | 2027-02-07 → 2027-02-14 (+7d) |  | -94.5d → -101.5d |
| 1DL | **1st Material Delivery & Site Inspection** | 2027-02-08 → 2027-02-15 (+7d) | 2027-02-16 → 2027-02-23 (+7d) |  |  |
| 1 | **Main Line Pipes** | 2027-02-08 → 2027-02-15 (+7d) | 2027-02-16 → 2027-02-23 (+7d) |  |  |
| PRO-IR-1DL-140 | 1ST Material Delivery for Softscape and Planting Works | 2027-02-08 → 2027-02-15 (+7d) | 2027-02-16 → 2027-02-23 (+7d) |  | -83.5d → -88d |
| PRO-IR-1DL-150 | 1ST Material Delivery for Site Furnishings (Seating Bench,Stone Boulders and Gravel) | 2027-02-08 → 2027-02-15 (+7d) | 2027-02-16 → 2027-02-23 (+7d) |  | -80.5d → -85d |
| DL | **Material Delivery & Site Inspection** | 2027-02-17 → 2027-02-23 (+6d) | 2027-03-15 → 2027-03-21 (+6d) |  |  |
| 1 | **Main Line Pipes** | 2027-02-17 → 2027-02-23 (+6d) | 2027-03-15 → 2027-03-21 (+6d) |  |  |
| PRO-R25-IR-DL-140 | Material Delivery & Site Inspection of Softscape and Planting Works | 2027-02-17 → 2027-02-23 (+6d) | 2027-03-07 → 2027-03-16 (+9d) |  | -83.5d → -88d |
| PRO-R25-IR-DL-150 | Material Delivery & Site Inspection of Site Furnishings (Seating Bench,Stone Boulders and Gravel) | 2027-02-17 → 2027-02-23 (+6d) | 2027-03-15 → 2027-03-21 (+6d) |  | -80.5d → -85d |
| SW | **Sewage Network** |  | 2027-01-09 → 2027-01-16 (+7d) |  |  |
| MF | **Manufacturing of Material** |  | 2026-12-02 → 2026-12-09 (+7d) |  |  |
| 3 | **Testing and Finishes** |  | 2026-12-02 → 2026-12-09 (+7d) |  |  |
| PRO-SW-MF-120 | Manufacturing of Manhole Covers for Sewage Network |  | 2026-12-02 → 2026-12-09 (+7d) |  | -3.5d → -10.5d |
| 1DL | **1st Material Delivery & Site Inspection** |  | 2026-12-09 → 2026-12-16 (+7d) |  |  |
| 3 | **Testing and Finishes** | 2026-12-03 → 2026-12-10 (+7d) | 2026-12-09 → 2026-12-16 (+7d) |  |  |
| PRO-SW-1DL-120 | 1ST Material Delivery for Manholes Covers of Sewage Network | 2026-12-03 → 2026-12-10 (+7d) | 2026-12-09 → 2026-12-16 (+7d) |  | -3.5d → -9.5d |
| DL | **Material Delivery & Site Inspection** |  | 2027-01-09 → 2027-01-16 (+7d) |  |  |
| 1 | **Main Line Sections** |  | 2026-11-03 → 2026-11-10 (+7d) |  |  |
| PRO-R25-SW-DL-110 | Material Delivery & Site Inspection of Manholes for Sewage Network |  | 2026-11-03 → 2026-11-10 (+7d) |  | -41.5d → -47.5d |
| 3 | **Testing and Finishes** | 2026-12-10 → 2026-12-17 (+7d) | 2027-01-09 → 2027-01-16 (+7d) |  |  |
| PRO-R25-SW-DL-120 | Material Delivery & Site Inspection of Manholes Covers for Sewage Network | 2026-12-10 → 2026-12-17 (+7d) | 2027-01-09 → 2027-01-16 (+7d) |  | -3.5d → -9.5d |
| SD | **Storm Drainage Network** |  | 2027-04-14 → 2027-04-20 (+6d) |  |  |
| MF | **Manufacturing of Material** |  | 2027-02-10 → 2026-10-10 (-123d) |  |  |
| 3 | **Testing and Finishes** | 2026-11-03 → 2026-10-03 (-31d) | 2027-02-10 → 2026-10-10 (-123d) |  |  |
| PRO-SD-MF-120 | Manufacturing of Materials for Manhole Covers of Storm Drainage Network | 2026-11-03 → 2026-10-03 A (-31d) | 2027-02-10 → 2026-10-10 A (-123d) | 0% → 100% | -78.38d → none |
| PRO-SD-MF-140 | Manufacturing of Materials for Catch Basin Covers of Storm Drainage Network | 2026-11-03 → 2026-10-03 A (-31d) | 2027-02-10 → 2026-10-10 A (-123d) | 0% → 100% | -83.5d → none |
| 1DL | **1st Material Delivery & Site Inspection** |  | 2027-02-20 → 2026-11-16 (-96d) |  |  |
| 3 | **Testing and Finishes** | 2027-02-11 → 2026-11-10 (-93d) | 2027-02-20 → 2026-11-16 (-96d) |  |  |
| PRO-SD-1DL-140 | 1ST Material Delivery for Manholes Covers of Storm Drainage Network | 2027-02-11 → 2026-11-10 (-93d) | 2027-02-20 → 2026-11-16 (-96d) |  | -66.75d → 12.5d |
| PRO-SD-1DL-150 | 1ST Material Delivery for Catch Basin Covers of Storm Drainage Network | 2027-02-11 → 2026-11-10 (-93d) | 2027-02-20 → 2026-11-16 (-96d) |  | -70.75d → 8.5d |
| DL | **Material Delivery & Site Inspection** |  | 2027-04-14 → 2027-04-20 (+6d) |  |  |
| 1 | **Main Line Sections** |  | 2026-11-03 → 2026-11-10 (+7d) |  |  |
| PRO-R25-SD-DL-100 | Material Delivery & Site Inspection of Manholes of Storm Drainage Network |  | 2026-11-03 → 2026-11-10 (+7d) |  | -61.69d → -67.69d |

| ID | Task | Start | Finish | Total float |
| --- | --- | --- | --- | --- |
| 2 | **Catch Basin Sections** |  | 2026-11-03 → 2026-11-10 (+7d) |  |
| PRO-R25-SD-DL-110 | Material Delivery & Site Inspection of Catch Basin Pipes for Storm Drainage Network |  | 2026-11-03 → 2026-11-10 (+7d) | -46.5d → -52.5d |
| PRO-R25-SD-DL-130 | Material Delivery & Site Inspection of Catch Basins for Storm Drainage Network |  | 2026-11-03 → 2026-11-10 (+7d) | -46.5d → -52.5d |
| 3 | **Testing and Finishes** | 2027-02-21 → 2026-11-17 (-96d) | 2027-04-14 → 2027-04-20 (+6d) |  |
| PRO-R25-SD-DL-150 | Material Delivery & Site Inspection of Catch Basin Covers for Storm Drainage Network | 2027-02-21 → 2026-11-17 (-96d) | 2027-03-23 → 2026-12-09 (-104d) | -70.75d → 8.5d |
| PRO-R25-SD-DL-140 | Material Delivery & Site Inspection of Manholes Covers for Storm Drainage Network | 2027-03-16 → 2027-03-21 (+5d) | 2027-04-14 → 2027-04-20 (+6d) | -80.5d → -85d |
| PW | **Potable Water Network** |  | 2027-04-15 → 2027-04-21 (+6d) |  |
| PO | **Issuance of Purchase Orders** |  | 2026-11-14 → 2026-11-21 (+7d) |  |
| 4 | **Testing and Finishes** | 2026-11-03 → 2026-11-10 (+7d) | 2026-11-14 → 2026-11-21 (+7d) |  |
| PRO-PW-PO-130 | Issuance of Purchase Order for Surface Box of Potable Water Network | 2026-11-03 → 2026-11-10 (+7d) | 2026-11-14 → 2026-11-21 (+7d) | -69.75d → -75.75d |
| MF | **Manufacturing of Material** |  | 2027-03-04 → 2027-03-15 (+11d) |  |
| 4 | **Testing and Finishes** | 2026-11-15 → 2026-11-22 (+7d) | 2027-03-04 → 2027-03-15 (+11d) |  |
| PRO-PW-MF-130 | Manufacturing for Surface Box of Potable Water Network | 2026-11-15 → 2026-11-22 (+7d) | 2027-03-04 → 2027-03-15 (+11d) | -83d → -90d |
| 1DL | **1st Material Delivery & Site Inspection** |  | 2027-03-16 → 2027-03-22 (+6d) |  |
| 1 | **Main Line Sections** |  | 2026-11-03 → 2026-11-10 (+7d) |  |
| PRO-PW-1DL-100_R | 1ST Material Delivery for Main Line Pipes of Potable Water Network(Remaining) |  | 2026-11-03 → 2026-11-10 (+7d) |  |
| 4 | **Testing and Finishes** | 2027-03-06 → 2027-03-16 (+10d) | 2027-03-16 → 2027-03-22 (+6d) |  |
| PRO-PW-1DL-130 | 1ST Material Delivery for Finishes of Potable Water Network | 2027-03-06 → 2027-03-16 (+10d) | 2027-03-16 → 2027-03-22 (+6d) | -66.75d → -72d |
| DL | **Material Delivery & Site Inspection** |  | 2027-04-15 → 2027-04-21 (+6d) |  |
| PRO-R25-PW-DL-110 | Material Delivery & Site Inspection of Valves for Potable Water Network |  | 2026-11-03 → 2026-11-10 (+7d) | 13.5d → 7.5d |
| 3 | **Fire Hydrant** |  | 2026-11-03 → 2026-11-10 (+7d) |  |
| PRO-R25-PW-DL-120 | Material Delivery & Site Inspection of Fire Hydrants for Potable Water Network |  | 2026-11-03 → 2026-11-10 (+7d) | 23.5d → 17.5d |
| 4 | **Testing and Finishes** | 2027-03-16 → 2027-03-23 (+7d) | 2027-04-15 → 2027-04-21 (+6d) |  |
| PRO-R25-PW-DL-130 | Material Delivery & Site Inspection for Finishes of Potable Water Network | 2027-03-16 → 2027-03-23 (+7d) | 2027-04-15 → 2027-04-21 (+6d) | -66.75d → -72d |
| IR | **Irrigation Network** |  | 2027-02-17 → 2027-02-23 (+6d) |  |
| PO | **Issuance of Purchase Orders** |  | 2026-11-09 → 2026-11-16 (+7d) |  |
| 1 | **Main Line Pipes** |  | 2026-11-09 → 2026-11-16 (+7d) |  |
| PRO-IR-PO-110 | Issuance of Purchase Order for Valves of Irrigation Network | 2026-11-03 → 2026-11-10 (+7d) | 2026-11-09 → 2026-11-16 (+7d) | -72.25d → -78.25d |
| MF | **Manufacturing of Material** |  | 2027-02-07 → 2027-02-14 (+7d) |  |
| 1 | **Main Line Pipes** |  | 2027-02-07 → 2027-02-14 (+7d) |  |
| PRO-IR-MF-110 | Manufacturing of Valves for Irrigation Network | 2026-11-10 → 2026-11-17 (+7d) | 2027-02-07 → 2027-02-14 (+7d) | -85.5d → -92.5d |
| 1DL | **1st Material Delivery & Site Inspection** |  | 2027-02-16 → 2027-02-23 (+7d) |  |
| 1 | **Main Line Pipes** |  | 2027-02-16 → 2027-02-23 (+7d) |  |
| PRO-IR-1DL-100 | 1ST Material Delivery for Main Line Pipes of Irrigation Network |  | 2026-11-07 → 2026-11-14 (+7d) | -7.5d → -13.5d |
| PRO-IR-1DL-110 | 1ST Material Delivery for Valves of Irrigation Network | 2027-02-08 → 2027-02-15 (+7d) | 2027-02-16 → 2027-02-23 (+7d) | -73.5d → -78d |
| DL | **Material Delivery & Site Inspection** | 2026-11-07 → 2026-11-14 (+7d) | 2027-02-17 → 2027-02-23 (+6d) |  |
| 1 | **Main Line Pipes** | 2026-11-07 → 2026-11-14 (+7d) | 2027-02-17 → 2027-02-23 (+6d) |  |
| PRO-R25-IR-DL-100 | Material Delivery & Site Inspection of Main Line Pipes for Irrigation Network | 2026-11-07 → 2026-11-14 (+7d) | 2026-11-07 → 2026-11-14 (+7d) | -7.5d → -13.5d |
| PRO-R25-IR-DL-110 | Material Delivery & Site Inspection of Valves for Irrigation Network | 2027-02-17 → 2027-02-23 (+6d) | 2027-02-17 → 2027-02-23 (+6d) | -73.5d → -78d |
| TSE | **Treated Sewage Effluent (Tse)** |  | 2027-02-17 → 2027-02-23 (+6d) |  |
| PO | **Issuance of Purchase Orders** |  | 2026-11-09 → 2026-11-16 (+7d) |  |
| 1 | **Main Line Pipes** |  | 2026-11-09 → 2026-11-16 (+7d) |  |
| PRO-TSE-PO-130 | Issuance of Purchase Order for Valves of Treated Sewage Effluent (Tse) | 2026-11-03 → 2026-11-10 (+7d) | 2026-11-09 → 2026-11-16 (+7d) | -71.25d → -77.25d |
| MF | **Manufacturing of Material** |  | 2027-02-07 → 2027-02-14 (+7d) |  |
| 1 | **Main Line Pipes** |  | 2027-02-07 → 2027-02-14 (+7d) |  |
| PRO-TSE-MF-130 | Manufacturing of Valves for Treated Sewage Effluent (Tse) | 2026-11-10 → 2026-11-17 (+7d) | 2027-02-07 → 2027-02-14 (+7d) | -84.5d → -91.5d |
| 1DL | **1st Material Delivery & Site Inspection** |  | 2027-02-16 → 2027-02-23 (+7d) |  |
| 1 | **Main Line Pipes** |  | 2027-02-16 → 2027-02-23 (+7d) |  |
| PRO-TSE-1DL-130 | 1ST Material Delivery for Valves of Treated Sewage Effluent (Tse) | 2027-02-08 → 2027-02-15 (+7d) | 2027-02-16 → 2027-02-23 (+7d) | -72.5d → -77d |
| DL | **Material Delivery & Site Inspection** |  | 2027-02-17 → 2027-02-23 (+6d) |  |
| 1 | **Main Line Pipes** |  | 2027-02-17 → 2027-02-23 (+6d) |  |
| PRO-R25-TSE-DL-120_R | Material Delivery & Site Inspection of Main Line Pipes for Treated Sewage Effluent (Tse)(Remaining) |  | 2026-11-03 → 2026-11-10 (+7d) | -2.5d → -8.5d |
| PRO-R25-TSE-DL-130 | Material Delivery & Site Inspection of Valves for Treated Sewage Effluent (Tse) | 2027-02-17 → 2027-02-23 (+6d) | 2027-02-17 → 2027-02-23 (+6d) | -72.5d → -77d |
| MV | **Medium Voltage Network** | 2026-11-03 → 2026-11-10 (+7d) | 2027-04-11 → 2027-04-15 (+4d) |  |
| PO | **Issuance of Purchase Orders** | 2026-11-03 → 2026-11-10 (+7d) | 2026-11-16 → 2026-11-23 (+7d) |  |
| 1 | **Cabling Works** | 2026-11-03 → 2026-11-10 (+7d) | 2026-11-16 → 2026-11-23 (+7d) |  |
| PRO-MV-PO-100 | Issuance of Purchase Order for Medium Voltage Cables of Medium Voltage Network | 2026-11-03 → 2026-11-10 (+7d) | 2026-11-16 → 2026-11-23 (+7d) | -76.25d → -82.25d |
| 3 | **Termination and Testing Works** | 2026-11-03 → 2026-11-10 (+7d) | 2026-11-16 → 2026-11-23 (+7d) |  |
| PRO-MV-PO-120 | Issuance of Purchase Order for Termination and Joints Kits of Medium Voltage Network | 2026-11-03 → 2026-11-10 (+7d) | 2026-11-16 → 2026-11-23 (+7d) | -83.75d → -89.75d |
| MF | **Manufacturing of Material** | 2026-11-17 → 2026-11-24 (+7d) | 2027-02-14 → 2027-02-21 (+7d) |  |
| 1 | **Cabling Works** | 2026-11-17 → 2026-11-24 (+7d) | 2027-01-15 → 2027-01-22 (+7d) |  |
| PRO-MV-MF-100 | Manufacturing of Medium Voltage Cables for Medium Voltage Network | 2026-11-17 → 2026-11-24 (+7d) | 2027-01-15 → 2027-01-22 (+7d) | -90.5d → -97.5d |
| 3 | **Termination and Testing Works** | 2026-11-17 → 2026-11-24 (+7d) | 2027-02-14 → 2027-02-21 (+7d) |  |
| PRO-MV-MF-110 | Manufacturing of Termination and Joints Kits for Medium Voltage Network | 2026-11-17 → 2026-11-24 (+7d) | 2027-02-14 → 2027-02-21 (+7d) | -99d → -106d |
| 1DL | **1st Material Delivery & Site Inspection** | 2027-01-16 → 2027-01-23 (+7d) | 2027-03-08 → 2027-03-16 (+8d) |  |
| 1 | **Cabling Works** | 2027-01-16 → 2027-01-23 (+7d) | 2027-01-28 → 2027-02-04 (+7d) |  |
| PRO-MV-1DL-100 | 1ST Material Delivery for Medium Voltage Cables of Medium Voltage Network | 2027-01-16 → 2027-01-23 (+7d) | 2027-01-28 → 2027-02-04 (+7d) | -77.5d → -83.5d |
| 3 | **Termination and Testing Works** | 2027-02-15 → 2027-02-22 (+7d) | 2027-03-08 → 2027-03-16 (+8d) |  |
| PRO-MV-1DL-120 | 1ST Material Delivery for Termination and Joints Kits of Medium Voltage Network | 2027-02-15 → 2027-02-22 (+7d) | 2027-03-08 → 2027-03-16 (+8d) | -83.5d → -88d |
| DL | **Material Delivery & Site Inspection** | 2027-01-30 → 2027-02-06 (+7d) | 2027-04-11 → 2027-04-15 (+4d) |  |

| ID | Task | Start | Finish | Total float |
| --- | --- | --- | --- | --- |
| 1 | **Cabling Works** | 2027-01-30 → 2027-02-06 (+7d) | 2027-01-30 → 2027-02-06 (+7d) |  |
| PRO-MV-DL-100 | Material Delivery & Site Inspection of Medium Voltage Cables for Medium Voltage Network | 2027-01-30 → 2027-02-06 (+7d) | 2027-01-30 → 2027-02-06 (+7d) | -77.5d → -83.5d |
| 3 | **Termination and Testing Works** | 2027-03-08 → 2027-03-17 (+9d) | 2027-04-11 → 2027-04-15 (+4d) |  |
| PRO-MV-DL-110 | Material Delivery & Site Inspection of Termination and Joints Kits for Medium Voltage Network | 2027-03-08 → 2027-03-17 (+9d) | 2027-04-11 → 2027-04-15 (+4d) | -83.5d → -88d |
| SL | **Low Voltage and Street Lighting Network** |  | 2026-12-20 → 2026-12-27 (+7d) |  |
| 1DL | **1st Material Delivery & Site Inspection** | 2026-11-03 → 2026-11-10 (+7d) | 2026-11-19 → 2026-11-26 (+7d) |  |
| 1 | **Cabling Works** | 2026-11-03 → 2026-11-10 (+7d) | 2026-11-09 → 2026-11-16 (+7d) |  |
| PRO-SL-1DL-100 | 1ST Material Delivery for Lighting Cables of Street Lighting Network | 2026-11-03 → 2026-11-10 (+7d) | 2026-11-09 → 2026-11-16 (+7d) | 5.5d → -0.5d |
| 2 | **Lighting Poles Works** | 2026-11-03 → 2026-11-10 (+7d) | 2026-11-09 → 2026-11-16 (+7d) |  |
| PRO-SL-1DL-110 | 1ST Material Delivery for Lighting Poles Foundations of Street Lighting Network | 2026-11-03 → 2026-11-10 (+7d) | 2026-11-09 → 2026-11-16 (+7d) | -23.5d → -29.5d |
| PRO-SL-1DL-120 | 1ST Material Delivery for Lighting Poles of Street Lighting Network | 2026-11-03 → 2026-11-10 (+7d) | 2026-11-09 → 2026-11-16 (+7d) | 10.5d → 4.5d |
| PRO-SL-1DL-140 | 1ST Material Delivery for Lighting Fixtures of Street Lighting Network | 2026-11-03 → 2026-11-10 (+7d) | 2026-11-09 → 2026-11-16 (+7d) | 54d → 48d |
| 3 | **Distribution Panel Board** | 2026-11-03 → 2026-11-10 (+7d) | 2026-11-09 → 2026-11-16 (+7d) |  |
| PRO-SL-1DL-160 | 1ST Material Delivery for Distrubution Panel Boards of Street Lighting Network | 2026-11-03 → 2026-11-10 (+7d) | 2026-11-09 → 2026-11-16 (+7d) | 42d → 36d |
| 5 | **Termination and Testing Works** | 2026-11-03 → 2026-11-10 (+7d) | 2026-11-19 → 2026-11-26 (+7d) |  |
| PRO-SL-1DL-130 | 1ST Material Delivery for Fuse Boxes of Street Lighting Network | 2026-11-03 → 2026-11-10 (+7d) | 2026-11-19 → 2026-11-26 (+7d) | 34d → 28d |
| PRO-SL-1DL-170 | 1ST Material Delivery for Cable Lugs of Street Lighting Network | 2026-11-03 → 2026-11-10 (+7d) | 2026-11-19 → 2026-11-26 (+7d) | 32d → 26d |
| 4 | **Earthing System Works** | 2026-11-03 → 2026-11-10 (+7d) | 2026-11-09 → 2026-11-16 (+7d) |  |
| PRO-SL-1DL-150 | 1ST Material Delivery for Lighting Earthing of Street Lighting Network | 2026-11-03 → 2026-11-10 (+7d) | 2026-11-09 → 2026-11-16 (+7d) | 54d → 48d |
| DL | **Material Delivery & Site Inspection** | 2026-11-10 → 2026-11-17 (+7d) | 2026-12-20 → 2026-12-27 (+7d) |  |
| 1 | **Cabling Works** | 2026-11-10 → 2026-11-17 (+7d) | 2026-11-10 → 2026-11-17 (+7d) |  |
| PRO-R25-SL-DL-100 | Material Delivery & Site Inspection of Lighting Cables for Street Lighting Network | 2026-11-10 → 2026-11-17 (+7d) | 2026-11-10 → 2026-11-17 (+7d) | 5.5d → -0.5d |
| 2 | **Lighting Poles Works** | 2026-11-10 → 2026-11-17 (+7d) | 2026-11-30 → 2026-12-07 (+7d) |  |
| PRO-R25-SL-DL-110 | Material Delivery & Site Inspection of Lighting Poles Foundations for Street Lighting Network | 2026-11-10 → 2026-11-17 (+7d) | 2026-11-30 → 2026-12-07 (+7d) | -23.5d → -29.5d |
| PRO-R25-SL-DL-120 | Material Delivery & Site Inspection of Lighting Poles for Street Lighting Network | 2026-11-10 → 2026-11-17 (+7d) | 2026-11-10 → 2026-11-17 (+7d) | 10.5d → 4.5d |
| PRO-R25-SL-DL-140 | Material Delivery & Site Inspection of Lighting Fixtures for Street Lighting Network | 2026-11-10 → 2026-11-17 (+7d) | 2026-11-10 → 2026-11-17 (+7d) | 54d → 48d |
| 3 | **Distribution Panel Board** | 2026-11-10 → 2026-11-17 (+7d) | 2026-11-10 → 2026-11-17 (+7d) |  |
| PRO-R25-SL-DL-160 | Material Delivery & Site Inspection of Distrubution Panel Boards for Street Lighting Network | 2026-11-10 → 2026-11-17 (+7d) | 2026-11-10 → 2026-11-17 (+7d) | 42d → 36d |
| 4 | **Termination and Testing Works** | 2026-11-21 → 2026-11-28 (+7d) | 2026-12-20 → 2026-12-27 (+7d) |  |
| PRO-R25-SL-DL-130 | Material Delivery & Site Inspection of Fuse Boxes for Street Lighting Network | 2026-11-21 → 2026-11-28 (+7d) | 2026-12-20 → 2026-12-27 (+7d) | 34d → 28d |
| PRO-R25-SL-DL-170 | Material Delivery & Site Inspection of Cable Lugs for Street Lighting Network | 2026-11-21 → 2026-11-28 (+7d) | 2026-12-20 → 2026-12-27 (+7d) | 32d → 26d |
| 5 | **Earthing System Works** | 2026-11-10 → 2026-11-17 (+7d) | 2026-11-10 → 2026-11-17 (+7d) |  |
| PRO-R25-SL-DL-150 | Material Delivery & Site Inspection of Lighting Earthing for Street Lighting Network | 2026-11-10 → 2026-11-17 (+7d) | 2026-11-10 → 2026-11-17 (+7d) | 54d → 48d |
| TE | **Telecom Network** | 2026-11-03 → 2026-11-10 (+7d) | 2027-02-23 → 2027-03-02 (+7d) |  |
| PO | **Issuance of Purchase Orders** | 2026-11-03 → 2026-11-10 (+7d) | 2026-11-09 → 2026-11-16 (+7d) |  |
| 1 | **Ducts Works** | 2026-11-03 → 2026-11-10 (+7d) | 2026-11-09 → 2026-11-16 (+7d) |  |
| PRO-TE-PO-100 | Issuance of Purchase Order for Ducts forTelecom Network | 2026-11-03 → 2026-11-10 (+7d) | 2026-11-09 → 2026-11-16 (+7d) | -52.75d → -58.75d |
| 3 | **Manholes Works** | 2026-11-03 → 2026-11-10 (+7d) | 2026-11-09 → 2026-11-16 (+7d) |  |
| PRO-TE-PO-110 | Issuance of Purchase Order for Manholes forTelecom Network | 2026-11-03 → 2026-11-10 (+7d) | 2026-11-09 → 2026-11-16 (+7d) | -70.75d → -76.75d |
| 2 | **CCTV System Wroks** | 2026-11-03 → 2026-11-10 (+7d) | 2026-11-09 → 2026-11-16 (+7d) |  |
| PRO-CTV-PO-100 | Issuance of Purchase Order for Civil and Finishes Works of CCTV Complete System | 2026-11-03 → 2026-11-10 (+7d) | 2026-11-09 → 2026-11-16 (+7d) | -56d → -62d |
| MF | **Manufacturing of Material** | 2026-11-10 → 2026-11-17 (+7d) | 2027-02-07 → 2027-02-14 (+7d) |  |
| 1 | **Ducts Works** | 2026-11-10 → 2026-11-17 (+7d) | 2027-01-08 → 2027-01-15 (+7d) |  |
| PRO-TE-MF-100 | Manufacturing of Ducts for Telecom Network | 2026-11-10 → 2026-11-17 (+7d) | 2027-01-08 → 2027-01-15 (+7d) | -63d → -70d |
| 3 | **Manholes Works** | 2026-11-10 → 2026-11-17 (+7d) | 2027-02-07 → 2027-02-14 (+7d) |  |
| PRO-TE-MF-110 | Manufacturing of Manholes for Telecom Network | 2026-11-10 → 2026-11-17 (+7d) | 2027-02-07 → 2027-02-14 (+7d) | -84d → -91d |
| 2 | **CCTV System Wroks** | 2026-11-10 → 2026-11-17 (+7d) | 2027-02-07 → 2027-02-14 (+7d) |  |
| PRO-CTV-MF-100 | Manufacturing of Civil and Finishes Works for CCTV Complete System | 2026-11-10 → 2026-11-17 (+7d) | 2027-02-07 → 2027-02-14 (+7d) | -67d → -74d |
| 1DL | **1st Material Delivery & Site Inspection** | 2027-01-09 → 2027-01-16 (+7d) | 2027-02-22 → 2027-03-01 (+7d) |  |
| 1 | **Ducts Works** | 2027-01-09 → 2027-01-16 (+7d) | 2027-01-14 → 2027-01-21 (+7d) |  |
| PRO-TE-1DL-100 | 1ST Material Delivery for Ducts of Telecom Network | 2027-01-09 → 2027-01-16 (+7d) | 2027-01-14 → 2027-01-21 (+7d) | -54d → -60d |
| 3 | **Manholes Works** | 2027-02-08 → 2027-02-15 (+7d) | 2027-02-16 → 2027-02-23 (+7d) |  |
| PRO-TE-1DL-110 | 1ST Material Delivery for Manholes of Telecom Network | 2027-02-08 → 2027-02-15 (+7d) | 2027-02-16 → 2027-02-23 (+7d) | -72d → -76.5d |
| 2 | **CCTV System Wroks** | 2027-02-08 → 2027-02-15 (+7d) | 2027-02-22 → 2027-03-01 (+7d) |  |
| PRO-CTV-1DL-100 | 1ST Material Delivery for Civil and Finishes Works of CCTV Complete System | 2027-02-08 → 2027-02-15 (+7d) | 2027-02-22 → 2027-03-01 (+7d) | -57d → -61.5d |
| DL | **Material Delivery & Site Inspection** | 2027-01-16 → 2027-01-23 (+7d) | 2027-02-23 → 2027-03-02 (+7d) |  |
| 1 | **Ducts Works** | 2027-01-16 → 2027-01-23 (+7d) | 2027-01-16 → 2027-01-23 (+7d) |  |
| PRO-R25-TE-DL-100 | Material Delivery & Site Inspection for Ducts of Telecom Network | 2027-01-16 → 2027-01-23 (+7d) | 2027-01-16 → 2027-01-23 (+7d) | -54d → -60d |
| 3 | **Manholes Works** | 2027-02-17 → 2027-02-23 (+6d) | 2027-02-17 → 2027-02-23 (+6d) |  |
| PRO-R25-TE-DL-110 | Material Delivery & Site Inspection of Manholes for Telecom Network | 2027-02-17 → 2027-02-23 (+6d) | 2027-02-17 → 2027-02-23 (+6d) | -72d → -76.5d |
| 2 | **CCTV System Wroks** | 2027-02-23 → 2027-03-02 (+7d) | 2027-02-23 → 2027-03-02 (+7d) |  |
| PRO-R25-CTV-DL-100 | Material Delivery & Site Inspection of for Civil and Finishes Works of CCTV Complete System | 2027-02-23 → 2027-03-02 (+7d) | 2027-02-23 → 2027-03-02 (+7d) | -57d → -61.5d |
| 1 | **Superstructure Works** |  | 2027-02-01 → 2027-02-08 (+7d) |  |
| 2 | **Manufacturing of Material** |  | 2027-01-31 → 2027-02-07 (+7d) |  |
| SL1211 | **Softscape and Planting Works** | 2026-11-03 → 2026-11-10 (+7d) | 2027-01-31 → 2027-02-07 (+7d) |  |
| PRO-FE-CV-MF-70 | Manufacturing of Civil Works for Softscape and Planting Works | 2026-11-03 → 2026-11-10 (+7d) | 2027-01-31 → 2027-02-07 (+7d) | -69.5d → -76.5d |
| 3 | **1st Material Delivery & Site Inspection** |  | 2026-11-03 → 2026-11-10 (+7d) |  |
| SL11 | **Storage Tank (TSE)** |  | 2026-11-03 → 2026-11-10 (+7d) |  |
| PRO-TSE-CV-1DL-50 | 1ST Material Delivery for Civil Works for Civil Works for Storage Tank (TSE) |  | 2026-11-03 → 2026-11-10 (+7d) | 22d → 16d |
| 4 | **Material Delivery & Site Inspection** |  | 2027-02-01 → 2027-02-08 (+7d) |  |

| ID | Task | Start | Finish | Complete | Total float | Predecessors |
| --- | --- | --- | --- | --- | --- | --- |
| SL11 | **Storage Tank (TSE)** | 2026-11-03 → 2026-11-10 (+7d) | 2026-11-03 → 2026-11-10 (+7d) |  |  |  |
| PRO-TSE-CV-DL-60 | Material Delivery & Site Inspection for Civil Works for Storage Tank (TSE) | 2026-11-03 → 2026-11-10 (+7d) | 2026-11-03 → 2026-11-10 (+7d) |  | 22d → 16d |  |
| SL1211 | **Softscape and Planting Works** | 2027-02-01 → 2027-02-08 (+7d) | 2027-02-01 → 2027-02-08 (+7d) |  |  |  |
| PRO-FE-CV-DL-90 | Material Delivery & Site Inspection for Softscape and Planting Works | 2027-02-01 → 2027-02-08 (+7d) | 2027-02-01 → 2027-02-08 (+7d) |  | -59.5d → -65.5d |  |
| LL | **Long Lead Time Items** |  | 2027-05-05 → 2027-05-11 (+6d) |  |  |  |
| 2 | **Infrastructure Networks** | 2026-11-03 → 2026-11-10 (+7d) | 2027-03-20 → 2027-03-25 (+5d) |  |  |  |
| 2 | **CCTV System Wroks of Telecom Network** | 2026-11-03 → 2026-11-10 (+7d) | 2027-03-20 → 2027-03-25 (+5d) |  |  |  |
| 3 | **Issuance of Purchase Orders** | 2026-11-03 → 2026-11-10 (+7d) | 2026-11-25 → 2026-12-02 (+7d) |  |  |  |
| PRO-CTV-LL-PO-10 | Issuance of Purchase Order for Low Current Works of CCTV Complete System with All Accessories | 2026-11-03 → 2026-11-10 (+7d) | 2026-11-25 → 2026-12-02 (+7d) |  | -70d → -76d |  |
| 1 | **Manufacturing of Material** | 2026-11-26 → 2026-12-03 (+7d) | 2027-02-23 → 2027-03-02 (+7d) |  |  |  |
| PRO-CTV-LL-MF-10 | Manufacturing of Low Current Works for CCTV Complete System with All Accessories | 2026-11-26 → 2026-12-03 (+7d) | 2027-02-23 → 2027-03-02 (+7d) |  | -83d → -90d |  |
| 2 | **Material Shipping/Custom Clearance/Delivery** | 2027-02-24 → 2027-03-03 (+7d) | 2027-03-20 → 2027-03-25 (+5d) |  |  |  |
| PRO-CTV-LL-SH/DL-10 | Material Delivery for Low Current Works of CCTV Complete System with All Accessories | 2027-02-24 → 2027-03-03 (+7d) | 2027-03-20 → 2027-03-25 (+5d) |  | -67.75d → -72.25d |  |
| 4 | **Material Site Inspection** | 2027-03-20 → 2027-03-25 (+5d) | 2027-03-20 → 2027-03-25 (+5d) |  |  |  |
| PRO-CTV-LL-MSI-10 | Material Site Inspection for Low Current Works of CCTV Complete System with All Accessories | 2027-03-20 → 2027-03-25 (+5d) | 2027-03-20 → 2027-03-25 (+5d) |  | -67.75d → -72.25d |  |
| 1 | **Superstructure Works** |  | 2027-05-05 → 2027-05-11 (+6d) |  |  |  |
| SL | **Pump Stations** |  | 2027-02-08 → 2027-02-17 (+9d) |  |  |  |
| 2 | **Manufacturing of Material** |  | 2026-11-24 → 2026-12-01 (+7d) |  |  |  |
| PRO-SPS-LL-MF-10 | Manufacturing of Electromechanical Works for Pump Stations |  | 2026-11-24 → 2026-12-01 (+7d) |  | -12.09d → -19.09d |  |
| 3 | **Material Shipping/Custom Clearance/Delivery** | 2026-11-24 → 2026-12-01 (+7d) | 2026-12-29 → 2027-01-05 (+7d) |  |  |  |
| PRO-SPS-LL-SH/DL-10 | Material Delivery for Electromechanical Works for Pump Stations | 2026-11-24 → 2026-12-01 (+7d) | 2026-12-29 → 2027-01-05 (+7d) |  | -10.09d → -16.09d |  |
| 4 | **Material Site Inspection** | 2026-12-29 → 2027-01-05 (+7d) | 2027-02-08 → 2027-02-17 (+9d) |  |  |  |
| PRO-SPS-LL-MSI-10 | Material Site Inspection for Electromechanical Works for Pump Stations | 2026-12-29 → 2027-01-05 (+7d) | 2027-02-08 → 2027-02-17 (+9d) |  | -10.09d → -16.09d |  |
| SL1 | **Lift Stations** |  | 2027-03-31 → 2027-04-07 (+7d) |  |  |  |
| 2 | **Manufacturing of Material** | 2026-11-03 → 2026-11-10 (+7d) | 2027-01-01 → 2027-01-08 (+7d) |  |  |  |
| PRO-LS-LL-MF-20 | Manufacturing of Electromechanical Works for Lift Stations | 2026-11-03 → 2026-11-10 (+7d) | 2027-01-01 → 2027-01-08 (+7d) |  | -66d → -73d |  |
| 3 | **Material Shipping/Custom Clearance/Delivery** | 2027-01-02 → 2027-01-09 (+7d) | 2027-02-04 → 2027-02-14 (+10d) |  |  |  |
| PRO-LS-LL-SH/DL-20 | Material Delivery for Electromechanical Works for Lift Stations | 2027-01-02 → 2027-01-09 (+7d) | 2027-02-04 → 2027-02-14 (+10d) |  | -56d → -62d |  |
| 4 | **Material Site Inspection** | 2027-02-06 → 2027-02-14 (+8d) | 2027-03-31 → 2027-04-07 (+7d) |  |  |  |
| PRO-LS-LL-MSI-20 | Material Site Inspection for Electromechanical Works for Lift Stations | 2027-02-06 → 2027-02-14 (+8d) | 2027-03-31 → 2027-04-07 (+7d) |  | -56d → -62d |  |
| SL2 | **Storage Tank (TSE)** | 2026-11-03 → 2026-11-10 (+7d) | 2027-05-05 → 2027-05-11 (+6d) |  |  |  |
| 1 | **Issuance of Purchase Orders** | 2026-11-03 → 2026-11-10 (+7d) | 2026-12-07 → 2026-12-14 (+7d) |  |  |  |
| PRO-TSE-LL-PO-30 | Issuance of Purchase Order for Electromechanical Works for Storage Tank (TSE) | 2026-11-03 → 2026-11-10 (+7d) | 2026-12-07 → 2026-12-14 (+7d) |  | -85.75d → -91.75d |  |
| 2 | **Manufacturing of Material** | 2026-12-08 → 2026-12-15 (+7d) | 2027-02-05 → 2027-02-12 (+7d) |  |  |  |
| PRO-TSE-LL-MF-30 | Manufacturing of Electromechanical Works for Storage Tank (TSE) | 2026-12-08 → 2026-12-15 (+7d) | 2027-02-05 → 2027-02-12 (+7d) |  | -101d → -108d |  |
| 3 | **Material Shipping/Custom Clearance/Delivery** | 2027-02-06 → 2027-02-13 (+7d) | 2027-03-22 → 2027-03-28 (+6d) |  |  |  |
| PRO-TSE-LL-SH/DL-30 | Material Delivery for Electromechanical Works for Storage Tank (TSE) | 2027-02-06 → 2027-02-13 (+7d) | 2027-03-22 → 2027-03-28 (+6d) |  | -86d → -91d |  |
| 4 | **Material Site Inspection** | 2027-03-23 → 2027-03-29 (+6d) | 2027-05-05 → 2027-05-11 (+6d) |  |  |  |
| PRO-TSE-LL-MSI-30 | Material Site Inspection for Electromechanical Works for Storage Tank (TSE) | 2027-03-23 → 2027-03-29 (+6d) | 2027-05-05 → 2027-05-11 (+6d) |  | -86d → -91d |  |
| CON | **Construction Works** |  | 2027-05-30 → 2027-06-06 (+7d) |  |  |  |
| INF | **Infrastructure Networks** |  | 2027-05-30 → 2027-06-06 (+7d) |  |  |  |
| EW | **Earthworks** |  | 2026-11-03 → 2026-11-10 (+7d) |  |  |  |
| EW | **Earthworks** |  | 2026-11-03 → 2026-11-10 (+7d) |  |  |  |
| CO-EW-200_R | Excavation Works Upto Design Level for Earthworks-P1(Remaining) |  | 2026-11-03 → 2026-11-10 (+7d) |  | -72.5d → -67.69d |  |
| CO-EW-210_R | Excavation Works Upto Design Level for Earthworks-P2(Remaining) |  | 2026-11-03 → 2026-11-10 (+7d) |  | -72.5d → -67.69d |  |
| CO-EW-220_R | Excavation Works Upto Design Level for Earthworks-P3(Remaining) |  | 2026-11-03 → 2026-11-10 (+7d) |  | -72.5d → -67.69d |  |
| SD | **Storm Drainage Network** |  | 2027-01-26 → 2027-01-21 (-5d) |  |  |  |
| MH25-MH12 | **FROM MH-25:MH-12** |  | 2026-12-14 → 2026-12-21 (+7d) |  |  |  |
| ML | **Main Line Sections** |  | 2026-11-14 → 2026-11-09 (-5d) |  |  |  |
| CO-SD-ML-100 | Trench Excavation and Bedding Works for Main Lines of Storm Drainage Network |  | 2026-11-07 A | 16% → 100% | -72.5d → none | CO-EW-200_R SS+10d, CO-EW-110_R SS, ENG-SH-SD-ML-A-110, ENG-MT-SD-ML-A-110, PRO-SD-1DL-110 SS, CO-EW-220_R SS, CO-EW-210_R SS, CO-EW-210_R FF → CO-EW-200_R SS+10d, CO-EW-110_R SS, ENG-SH-SD-ML-A-110, ENG-MT-SD-ML-A-110, PRO-SD-1DL-110 SS, CO-EW-220_R SS, CO-EW-210_R SS |
| CO-SD-ML-120 | Pipes Laying Works for Main Lines of Storm Drainage Network |  | 2026-11-08 A | 10% → 100% | -69.9d → none | CO-SD-ML-100 SS, PRO-R25-SD-DL-120 SS, CO-EW-210_R SS, CO-SD-ML-100 FF, CO-EW-210_R FF → CO-SD-ML-100 SS, PRO-R25-SD-DL-120 SS, CO-EW-210_R SS, CO-SD-ML-100 FF |
| CO-SD-ML-130 | Trench Backfilling and Compaction Works for Main Lines of Storm Drainage Network |  | 2026-11-14 → 2026-11-09 A (-5d) | 6% → 100% | -69.9d → none | CO-SD-ML-120 SS, CO-EW-210_R SS, CO-EW-220_R SS, PRO-R25-SD-DL-120 SS, CO-SD-ML-120 FF, CO-EW-210_R FF, CO-EW-220_R FF → CO-SD-ML-120 SS, CO-EW-210_R SS, CO-EW-220_R SS, PRO-R25-SD-DL-120 SS, CO-SD-ML-120 FF |
| MH | **Manholes** |  | 2026-11-18 → 2026-11-25 (+7d) |  |  |  |
| CO-SD-MH-180 | Trench Excavation and Bedding Works for Manholes of Storm Drainage Network |  | 2026-11-09 → 2026-11-16 (+7d) |  | -61.69d → -67.69d |  |
| CO-SD-MH-190 | Install RC Footing Works for Manholes of Storm Drainage Network |  | 2026-11-10 → 2026-11-17 (+7d) |  | -60.5d → -66.5d |  |
| CO-SD-MH-200 | Install RC Wall Rings & Slab Works for Manholes of Storm Drainage Network |  | 2026-11-10 → 2026-11-17 (+7d) |  | -60.5d → -66.5d |  |
| CO-SD-MH-220 | Backfilling Works for Manholes of Storm Drainage Network | 2026-11-11 → 2026-11-18 (+7d) | 2026-11-18 → 2026-11-25 (+7d) |  | -60.5d → -66.5d |  |
| CB | **Catch Basin Sections** | 2026-11-09 → 2026-11-16 (+7d) | 2026-12-14 → 2026-12-21 (+7d) |  |  |  |
| CO-SD-CB-140 | Trench Excavation and Bedding Works for Catch Basins of Storm Drainage Network | 2026-11-09 → 2026-11-16 (+7d) | 2026-11-21 → 2026-11-28 (+7d) |  | -61.69d → -67.69d |  |
| CO-SD-CB-150 | Installation and Pipes Laying Connection Works for Catch Basins of Storm Drainage Network | 2026-11-21 → 2026-11-28 (+7d) | 2026-12-02 → 2026-12-09 (+7d) |  | -61.69d → -67.69d |  |
| CO-SD-CB-170 | Trench Backfilling and Compaction Works for Catch Basins of Storm Drainage Network | 2026-12-02 → 2026-12-09 (+7d) | 2026-12-14 → 2026-12-21 (+7d) |  | -61.69d → -67.69d |  |
| MH25-MH121 | **FROM MH-12:MH-01** | 2026-11-08 → 2026-11-04 (-4d) | 2027-01-26 → 2027-01-21 (-5d) |  |  |  |
| ML | **Main Line Sections** | 2026-11-08 → 2026-11-04 (-4d) | 2027-01-02 → 2026-12-02 (-31d) |  |  |  |
| CO-SD-ML-140 | Trench Excavation and Bedding Works for Main Lines of Storm Drainage Network | 2026-11-08 → 2026-11-04 A (-4d) | 2026-11-23 → 2026-11-25 (+2d) | 0% → 15% | -72.5d → -60.5d | CO-SD-ML-100, PRO-R25-SW-DL-100, CO-SD-ML-120 SS, CO-EW-220_R, CO-EW-110_R → CO-SD-ML-100, PRO-R25-SW-DL-100, CO-SD-ML-120 SS, CO-EW-220_R SS, CO-EW-110_R, CO-EW-220_R FF |
| CO-SD-ML-150 | Pipes Laying Works for Main Lines of Storm Drainage Network | 2026-11-24 → 2026-11-05 A (-19d) | 2026-12-09 → 2026-11-25 (-14d) | 0% → 7% | -72.5d → -60.5d | CO-SD-ML-140, CO-SD-ML-120 → CO-SD-ML-140 SS, CO-SD-ML-120, CO-SD-ML-140 FF |
| CO-SD-ML-160 | Trench Backfilling and Compaction Works for Main Lines of Storm Drainage Network | 2026-12-10 → 2026-11-08 A (-32d) | 2027-01-02 → 2026-12-02 (-31d) | 0% → 3% | -60.5d → -34.5d | CO-SD-ML-150, CO-SD-ML-130 → CO-SD-ML-150 SS, CO-SD-ML-130, CO-SD-ML-150 FF |
| MH | **Manholes** | 2026-12-10 → 2026-11-26 (-14d) | 2027-01-16 → 2027-01-02 (-14d) |  |  |  |
| CO-SD-MH-230 | Trench Excavation and Bedding Works for Manholes of Storm Drainage Network | 2026-12-10 → 2026-11-26 (-14d) | 2026-12-20 → 2026-12-06 (-14d) |  | -72.5d → -60.5d |  |
| CO-SD-MH-240 | Install RC Footing Works for Manholes of Storm Drainage Network | 2026-12-21 → 2026-12-07 (-14d) | 2026-12-28 → 2026-12-14 (-14d) |  | -72.5d → -60.5d |  |
| CO-SD-MH-250 | Install RC Wall Rings & Slab Works for Manholes of Storm Drainage Network | 2026-12-29 → 2026-12-15 (-14d) | 2027-01-05 → 2026-12-22 (-14d) |  | -72.5d → -60.5d |  |

| ID | Task | Start | Finish | Complete | Total float | Predecessors |
| --- | --- | --- | --- | --- | --- | --- |
| CO-SD-MH-260 | Backfilling Works for Manholes of Storm Drainage Network | 2027-01-06 → 2026-12-23 (-14d) | 2027-01-16 → 2027-01-02 (-14d) |  | -72.5d → -60.5d |  |
| CB | **Catch Basin Sections** |  | 2027-01-26 → 2027-01-21 (-5d) |  |  |  |
| CO-SD-CB-180 | Trench Excavation and Bedding Works for Catch Basins of Storm Drainage Network |  | 2026-12-30 → 2026-12-31 (+1d) |  | -67.5d → -67.69d |  |
| CO-SD-CB-190 | Installation and Pipes Laying Connection Works for Catch Basins of Storm Drainage Network |  | 2027-01-10 → 2027-01-11 (+1d) |  | -67.5d → -67.69d |  |
| CO-SD-CB-200 | Trench Backfilling and Compaction Works for Catch Basins of Storm Drainage Network | 2027-01-17 → 2027-01-11 (-6d) | 2027-01-26 → 2027-01-21 (-5d) |  | -72.5d → -67.69d |  |
| SW | **Sewage Network** |  | 2027-01-10 → 2026-12-22 (-19d) |  |  |  |
| 2 | **FROM MH-18:MH-10** |  | 2026-11-30 → 2026-11-22 (-8d) |  |  |  |
| ML | **Main Line Sections** |  | 2026-11-25 → 2026-11-09 (-16d) |  |  |  |
| CO-SW-ML-100 | Trench Excavation and Bedding Works for Main Lines of Sewage Network |  | 2026-11-16 → 2026-11-05 A (-11d) | 44% → 100% | -69.9d → none |  |
| CO-SW-ML-120 | Pipes Laying Works for Main Lines of Sewage Network |  | 2026-11-16 → 2026-11-07 A (-9d) | 32% → 100% | -53.5d → none |  |
| CO-SW-ML-130 | Trench Backfilling and Compaction Works for Main Lines of Sewage Network |  | 2026-11-25 → 2026-11-09 A (-16d) | 12% → 100% | -45.5d → none |  |
| 1 | **Manholes** |  | 2026-11-30 → 2026-11-22 (-8d) |  |  |  |
| CO-SW-MH-160 | Excavation Works for Main Line Manholes of Sewage Network |  | 2026-11-16 → 2026-11-17 (+1d) |  | -53.5d → -54.5d |  |
| CO-SW-MH-170 | Installation RC Footing Works for Main Line Manholes of Sewage Network |  | 2026-11-16 → 2026-11-17 (+1d) |  | -45.5d → -46.5d |  |
| CO-SW-MH-180 | Install Grp Liner Wall Works for Main Line Manholes of Sewage Network |  | 2026-11-16 → 2026-11-17 (+1d) |  | -38.5d → -39.5d |  |
| CO-SW-MH-190 | Pouring Grp Liner Wall Works for Main Line Manholes of Sewage Network |  | 2026-11-16 → 2026-11-17 (+1d) |  | -31.5d → -32.5d |  |
| CO-SW-MH-200 | Backfilling Works for Main Line Manholes of Sewage Network | 2026-11-26 → 2026-11-18 (-8d) | 2026-11-30 → 2026-11-22 (-8d) |  | -39.5d → -32.5d |  |
| 1 | **FROM MH-10:MH-01** | 2026-11-16 → 2026-11-04 (-12d) | 2027-01-10 → 2026-12-22 (-19d) |  |  |  |
| ML | **Main Line Sections** | 2026-11-16 → 2026-11-04 (-12d) | 2026-12-15 → 2026-11-23 (-22d) |  |  |  |
| CO-SW-ML-140 | Trench Excavation and Bedding Works for Main Lines of Sewage Network | 2026-11-16 → 2026-11-04 A (-12d) | 2026-11-23 → 2026-11-16 (-7d) | 0% → 65% | -69.9d → -54.5d |  |
| CO-SW-ML-150 | Pipes Laying Works for Main Lines of Sewage Network | 2026-11-23 → 2026-11-07 A (-16d) | 2026-12-01 → 2026-11-17 (-14d) | 0% → 50% | -69.9d → -54.5d | CO-SW-ML-140, CO-SW-ML-120 SS → CO-SW-ML-140 SS, CO-SW-ML-120 SS, CO-SW-ML-140 FF |
| CO-SW-ML-160 | Trench Backfilling and Compaction Works for Main Lines of Sewage Network | 2026-12-01 → 2026-11-09 A (-22d) | 2026-12-15 → 2026-11-23 (-22d) | 0% → 50% | -69.9d → -51.5d | CO-SW-ML-150, CO-SW-ML-130 SS → CO-SW-ML-150 SS, CO-SW-ML-130 SS, CO-SW-ML-150 FF |
| 1 | **Manholes** | 2026-12-01 → 2026-11-18 (-13d) | 2027-01-10 → 2026-12-22 (-19d) |  |  |  |
| CO-SW-MH-210 | Excavation Works for Main Line Manholes of Sewage Network | 2026-12-01 → 2026-11-18 (-13d) | 2026-12-10 → 2026-11-26 (-14d) |  | -65.9d → -54.5d |  |
| CO-SW-MH-220 | Installation RC Footing Works for Main Line Manholes of Sewage Network | 2026-12-15 → 2026-11-28 (-17d) | 2026-12-23 → 2026-12-05 (-18d) |  | -69.9d → -54.5d |  |
| CO-SW-MH-230 | Install Grp Liner Wall Works for Main Line Manholes of Sewage Network | 2026-12-23 → 2026-12-06 (-17d) | 2026-12-31 → 2026-12-13 (-18d) |  | -69.9d → -54.5d |  |
| CO-SW-MH-240 | Pouring Grp Liner Wall Works for Main Line Manholes of Sewage Network | 2026-12-31 → 2026-12-14 (-17d) | 2027-01-05 → 2026-12-17 (-19d) |  | -69.9d → -54.5d |  |
| CO-SW-MH-250 | Backfilling Works for Main Line Manholes of Sewage Network | 2027-01-05 → 2026-12-19 (-17d) | 2027-01-10 → 2026-12-22 (-19d) |  | -69.9d → -54.5d |  |
| CO-PW-ML-100 | Trench Excavation and Bedding Works for Main Lines of Potable Water Network |  | 2027-01-10 → 2026-12-22 (-19d) |  | -62.4d → -47d |  |
| IR | **Irrigation Network** | 2027-01-10 → 2026-12-23 (-18d) | 2027-03-28 → 2027-04-03 (+6d) |  |  |  |
| ML | **Main Line Pipes** | 2027-01-10 → 2026-12-23 (-18d) | 2027-03-28 → 2027-04-03 (+6d) |  |  |  |
| CO-IR-ML-100 | Trench Excavation and Bedding Works for Main Lines of Irrigation Network | 2027-01-10 → 2026-12-23 (-18d) | 2027-01-21 → 2027-01-03 (-18d) |  | -62.4d → -47d |  |
| CO-IR-ML-110 | Pipes Laying Works for Main Lines of Irrigation Network | 2027-01-21 → 2027-01-17 (-4d) | 2027-02-01 → 2027-01-27 (-5d) |  | -62.4d → -58.5d |  |
| CO-IR-ML-120 | Installation Works for Main Line Valves of Irrigation Network | 2027-02-17 → 2027-02-23 (+6d) | 2027-03-02 → 2027-03-13 (+11d) |  | -73.5d → -78d |  |
| CO-IR-ML-130 | Trench Backfilling and Compaction Works for Main Lines of Irrigation Network | 2027-03-02 → 2027-03-13 (+11d) | 2027-03-17 → 2027-03-23 (+6d) |  | -73.5d → -78d |  |
| CO-IR-ML-140 | Installation Works for Bulbblers And Sprinklers of Irrigation Network | 2027-03-18 → 2027-03-23 (+5d) | 2027-03-28 → 2027-04-03 (+6d) |  | -66.5d → -71d |  |
| TSE | **Treated Sewage Effluent (Tse)** | 2027-01-10 → 2026-12-23 (-18d) | 2027-03-28 → 2027-04-03 (+6d) |  |  |  |
| ML | **Main Line Pipes** | 2027-01-10 → 2026-12-23 (-18d) | 2027-03-28 → 2027-04-03 (+6d) |  |  |  |
| CO-TSE-ML-150 | Trench Excavation and Bedding Works for Main Lines of Treated Sewage Effluent (Tse) | 2027-01-10 → 2026-12-23 (-18d) | 2027-01-20 → 2027-01-02 (-18d) |  | -60.9d → -45.5d |  |
| CO-TSE-ML-160 | Pipes Laying Works for Main Lines of Treated Sewage Effluent (Tse) | 2027-01-21 → 2027-01-17 (-4d) | 2027-02-01 → 2027-01-27 (-5d) |  | -60.9d → -57d |  |
| CO-TSE-ML-170 | Installation Works for Main Line Valves of Treated Sewage Effluent (Tse) | 2027-02-17 → 2027-02-23 (+6d) | 2027-03-01 → 2027-03-08 (+7d) |  | -72.5d → -77d |  |
| CO-TSE-ML-180 | Trench Backfilling and Compaction Works for Treated Sewage Effluent (Tse) | 2027-03-02 → 2027-03-13 (+11d) | 2027-03-17 → 2027-03-23 (+6d) |  | -73.5d → -78d |  |
| CO-TSE-ML-190 | Installation Works for Valve and Washout Chambers of Treated Sewage Effluent (Tse) | 2027-03-18 → 2027-03-23 (+5d) | 2027-03-28 → 2027-04-03 (+6d) |  | -54.5d → -59d |  |
| MV | **Medium Voltage Network** | 2027-01-30 → 2027-02-06 (+7d) | 2027-03-30 → 2027-04-06 (+7d) |  |  |  |
| CW | **Cabling Works** | 2027-01-30 → 2027-02-06 (+7d) | 2027-03-30 → 2027-04-06 (+7d) |  |  |  |
| CO-MV-ML-250 | Trench Excavation and Bedding Works for Medium Voltage Network | 2027-01-30 → 2027-02-06 (+7d) | 2027-02-11 → 2027-02-21 (+10d) |  | -77.5d → -83.5d |  |
| CO-MV-ML-260 | Cable Laying Works for Medium Voltage Network | 2027-02-13 → 2027-02-22 (+9d) | 2027-03-08 → 2027-03-18 (+10d) |  | -77.5d → -83.5d |  |
| CO-MV-ML-270 | Trench Backfilling and Compaction Works for Medium Voltage Network | 2027-03-13 → 2027-03-20 (+7d) | 2027-03-30 → 2027-04-06 (+7d) |  | -77.5d → -83.5d |  |
| SL | **Street Lighting Network** | 2027-01-30 → 2027-02-06 (+7d) | 2027-04-27 → 2027-05-04 (+7d) |  |  |  |
| LP | **Lighting Poles Works** | 2027-01-30 → 2027-02-06 (+7d) | 2027-03-21 → 2027-03-28 (+7d) |  |  |  |
| CO-SL-LP-300 | Foundation Excavation Works for Lighting Poles of Street Lighting Network | 2027-01-30 → 2027-02-06 (+7d) | 2027-02-07 → 2027-02-16 (+9d) |  | -74.5d → -80.5d |  |
| CO-SL-LP-310 | Installation Works for Lighting Poles Foundation of Street Lighting Network | 2027-02-08 → 2027-02-17 (+9d) | 2027-02-20 → 2027-03-01 (+9d) |  | -74.5d → -80.5d |  |
| CO-SL-LP-320 | Installation Works for Lighting Poles of Street Lighting Network | 2027-02-20 → 2027-03-01 (+9d) | 2027-03-06 → 2027-03-16 (+10d) |  | -74.5d → -80.5d |  |
| CO-SL-LP-210 | Backfilling Works for Lighting Poles of Street Lighting Network | 2027-03-06 → 2027-03-17 (+11d) | 2027-03-21 → 2027-03-28 (+7d) |  | -74.5d → -80.5d |  |
| CW | **Cabling Works** | 2027-02-08 → 2027-02-17 (+9d) | 2027-03-18 → 2027-03-25 (+7d) |  |  |  |
| CO-SL-CL-250 | Trench Excavation and Bedding Works for Street Lighting Network | 2027-02-08 → 2027-02-17 (+9d) | 2027-02-18 → 2027-02-27 (+9d) |  | -71.5d → -77.5d |  |
| CO-SL-CL-260 | Cable Laying Works for Street Lighting Network | 2027-02-18 → 2027-02-28 (+10d) | 2027-03-01 → 2027-03-13 (+12d) |  | -71.5d → -77.5d |  |
| CO-SL-CL-270 | Trench Backfilling and Compaction Works for Street Lighting Network | 2027-03-06 → 2027-03-17 (+11d) | 2027-03-18 → 2027-03-25 (+7d) |  | -74.5d → -80.5d |  |
| DPB | **Distrubution Panel Boards** | 2027-03-31 → 2027-04-07 (+7d) | 2027-04-27 → 2027-05-04 (+7d) |  |  |  |
| CO-SL-DB-250 | Foundation Excavation Works For Panel Boards of Street Lighting Network | 2027-03-31 → 2027-04-07 (+7d) | 2027-04-06 → 2027-04-13 (+7d) |  | -76d → -82d |  |
| CO-SL-DB-260 | Installation Works for Panel Board Concrete Foundations of Street Lighting Network | 2027-04-07 → 2027-04-14 (+7d) | 2027-04-13 → 2027-04-20 (+7d) |  | -76d → -82d |  |
| CO-SL-DB-270 | Installation Works for Lighting Panel Boards of Street Lighting Network | 2027-04-14 → 2027-04-21 (+7d) | 2027-04-20 → 2027-04-27 (+7d) |  | -76d → -82d |  |
| CO-SL-DB-220 | A wall of concrete blocks to install the KWH meter of Street Lighting Network | 2027-04-21 → 2027-04-28 (+7d) | 2027-04-27 → 2027-05-04 (+7d) |  | -69d → -75d |  |
| TE | **Telecom Network** | 2027-02-13 → 2027-02-22 (+9d) | 2027-04-11 → 2027-04-18 (+7d) |  |  |  |
| PD | **Ducts Works** | 2027-02-13 → 2027-02-22 (+9d) | 2027-03-23 → 2027-03-30 (+7d) |  |  |  |
| CO-TE-DW-100 | Trench Excavation and Bedding Works for Ducts of Telecom Network | 2027-02-13 → 2027-02-22 (+9d) | 2027-02-18 → 2027-02-27 (+9d) |  | -77d → -83d |  |
| CO-TE-DW-110 | Pipes Laying Works for Ducts of Telecom Network | 2027-02-18 → 2027-02-28 (+10d) | 2027-02-24 → 2027-03-06 (+10d) |  | -77d → -83d |  |
| CO-TE-DW-130 | Trench Backfilling and Compaction Works for Ducts of Telecom Network | 2027-02-24 → 2027-03-06 (+10d) | 2027-03-08 → 2027-03-18 (+10d) |  | -76d → -82d |  |
| CO-TE-DW-120 | Pouring Road Crossing Concrete Encasement | 2027-03-13 → 2027-03-20 (+7d) | 2027-03-23 → 2027-03-30 (+7d) |  | -76d → -82d |  |
| MH | **Manholes Works** | 2027-02-24 → 2027-03-06 (+10d) | 2027-03-24 → 2027-03-31 (+7d) |  |  |  |

| ID | Task | Start | Finish | Total float |
| --- | --- | --- | --- | --- |
| CO-TE-MH-140 | Excavation Works for Manholes of Telecom Network | 2027-02-24 → 2027-03-06 (+10d) | 2027-03-03 → 2027-03-15 (+12d) | -77d → -83d |
| CO-TE-MH-150 | Installation Works for Manholes of Telecom Network | 2027-03-04 → 2027-03-16 (+12d) | 2027-03-16 → 2027-03-23 (+7d) | -77d → -83d |
| CO-TE-MH-160 | Backfilling Works for Manholes of Telecom Network | 2027-03-17 → 2027-03-24 (+7d) | 2027-03-24 → 2027-03-31 (+7d) | -77d → -83d |
| DD | **CCTV System Wroks** | 2027-03-25 → 2027-04-01 (+7d) | 2027-04-11 → 2027-04-18 (+7d) |  |
| CO-TE-CTV-100 | Digging and Pulling Trenches PVC ducts , Backfilling, Excavations, of Power Cable | 2027-03-25 → 2027-04-01 (+7d) | 2027-03-30 → 2027-04-06 (+7d) | -77d → -83d |
| CO-TE-CTV-110 | Installation of Network Cable Cat.6A from Network switch to CCTV Camera and ACS Device | 2027-03-31 → 2027-04-07 (+7d) | 2027-04-05 → 2027-04-12 (+7d) | -77d → -83d |
| CO-TE-CTV-130 | Installation of Access Control System | 2027-04-06 → 2027-04-13 (+7d) | 2027-04-11 → 2027-04-18 (+7d) | -77d → -83d |
| RD | **Road Works** | 2027-03-15 → 2027-03-22 (+7d) | 2027-05-12 → 2027-05-25 (+13d) |  |
| 3 | **ST+1000:ST+1531** | 2027-03-15 → 2027-03-22 (+7d) | 2027-04-15 → 2027-04-22 (+7d) |  |
| RD | **Pre-Bituminous Construction** | 2027-03-15 → 2027-03-22 (+7d) | 2027-04-15 → 2027-04-22 (+7d) |  |
| CO-RD-PB-140 | Subgrade Layer for Road Works | 2027-03-15 → 2027-03-22 (+7d) | 2027-03-30 → 2027-04-06 (+7d) | -77.5d → -83.5d |
| CO-RD-PB-150 | Aggregate Base Course Layer for Road Works | 2027-03-30 → 2027-04-06 (+7d) | 2027-04-15 → 2027-04-22 (+7d) | -77.5d → -83.5d |
| 2 | **ST+500:ST+1000** | 2027-03-31 → 2027-04-07 (+7d) | 2027-04-28 → 2027-05-05 (+7d) |  |
| RD | **Pre-Bituminous Construction** | 2027-03-31 → 2027-04-07 (+7d) | 2027-04-28 → 2027-05-05 (+7d) |  |
| CO-RD-PB-120 | Subgrade Layer for Road Works | 2027-03-31 → 2027-04-07 (+7d) | 2027-04-12 → 2027-04-19 (+7d) | -76.8d → -82.8d |
| CO-RD-PB-130 | Aggregate Base Course Layer for Road Works | 2027-04-15 → 2027-04-22 (+7d) | 2027-04-28 → 2027-05-05 (+7d) | -77.5d → -83.5d |
| 1 | **ST+01:ST+500** | 2027-04-12 → 2027-04-19 (+7d) | 2027-05-12 → 2027-05-25 (+13d) |  |
| RD | **Pre-Bituminous Construction** | 2027-04-12 → 2027-04-19 (+7d) | 2027-05-12 → 2027-05-25 (+13d) |  |
| CO-RD-PB-100 | Subgrade Layer for Road Works | 2027-04-12 → 2027-04-19 (+7d) | 2027-04-26 → 2027-05-03 (+7d) | -76.8d → -82.8d |
| CO-RD-PB-110 | Aggregate Base Course Layer for Road Works | 2027-04-28 → 2027-05-05 (+7d) | 2027-05-12 → 2027-05-25 (+13d) | -77.5d → -83.5d |
| 3 | **Finishes for Infrastructure Networks** | 2027-01-10 → 2026-12-23 (-18d) | 2027-05-30 → 2027-06-06 (+7d) |  |
| 11 | **Storm Drainage Network** | 2027-01-27 → 2027-01-21 (-6d) | 2027-04-21 → 2027-04-27 (+6d) |  |
| TF | **Testing and Finishes** | 2027-01-27 → 2027-01-21 (-6d) | 2027-04-21 → 2027-04-27 (+6d) |  |
| CO-SD-ML-TF-100 | Testing Work for Pipes of Storm Drainage Network | 2027-01-27 → 2027-01-21 (-6d) | 2027-02-07 → 2027-02-02 (-5d) | -72.5d → -67.69d |
| CO-SD-CB-TF-130 | Catch Basin Internal Finishes (Benching ) for Storm Drainage Network | 2027-02-08 → 2027-02-02 (-6d) | 2027-02-22 → 2027-02-15 (-7d) | -72.5d → -67.69d |
| CO-SD-CB-TF-160 | Testing Works for Catch Basins of Storm Drainage Network | 2027-02-23 → 2027-02-15 (-8d) | 2027-03-13 → 2027-03-02 (-11d) | -72.5d → -67.69d |
| CO-SD-CB-TF-110 | Install Catch Basin Cover Works for External Finishes of Storm Drainage Network | 2027-03-14 → 2027-03-02 (-12d) | 2027-03-24 → 2027-03-20 (-4d) | -72.5d → -67.69d |
| CO-SD-MH-TF-120 | Main Manhole Internal Finishes (Benching ) for Storm Drainage Network | 2027-03-25 → 2027-03-20 (-5d) | 2027-04-05 → 2027-03-31 (-5d) | -72.5d → -67.69d |
| CO-SD-MH-TF-210 | Testing Works for Manholes of Storm Drainage Network | 2027-04-15 → 2027-04-20 (+5d) | 2027-04-21 → 2027-04-27 (+6d) | -80.5d → -85d |
| 10 | **Sewage Network** | 2027-01-10 → 2026-12-23 (-18d) | 2027-03-04 → 2027-02-09 (-23d) |  |
| TF | **Testing and Finishes** | 2027-01-10 → 2026-12-23 (-18d) | 2027-03-04 → 2027-02-09 (-23d) |  |
| CO-SW-TF-100 | Final Testing For Main Line of Sewage Network | 2027-01-10 → 2026-12-23 (-18d) | 2027-01-20 → 2027-01-02 (-18d) | -69.9d → -54.5d |
| CO-SW-TF-130 | Main Manhole Internal Finishes (Benching + Insulation) of Sewage Network | 2027-01-20 → 2027-01-03 (-17d) | 2027-02-16 → 2027-01-26 (-21d) | -33.9d → -18.5d |
| CO-SW-TF-110 | Install Manhole Cover Works for External Finishes of Sewage Network | 2027-02-16 → 2027-01-27 (-20d) | 2027-03-03 → 2027-02-07 (-24d) | -33.9d → -18.5d |
| CO-SW-TF-210 | Testing Works for Main Line Manholes of Sewage Network | 2027-02-27 → 2027-02-04 (-23d) | 2027-03-04 → 2027-02-09 (-23d) | -33.9d → -18.5d |
| 9 | **Potable Water Network** |  | 2027-04-27 → 2027-05-03 (+6d) |  |
| TF | **Testing and Finishes** |  | 2027-04-27 → 2027-05-03 (+6d) |  |
| CO-PW-TF-100 | Final Finishes works and Covers for Valves and Valve Chambers of Potable Water Network | 2027-04-15 → 2027-04-22 (+7d) | 2027-04-27 → 2027-05-03 (+6d) | -66.75d → -72d |
| 13 | **Irrigation Network** | 2027-03-29 → 2027-04-03 (+5d) | 2027-04-11 → 2027-04-17 (+6d) |  |
| TF | **Testing and Finishes** | 2027-03-29 → 2027-04-03 (+5d) | 2027-04-11 → 2027-04-17 (+6d) |  |
| CO-IR-TF-160 | Final Testing (pressure tests) of Irrigation Network | 2027-03-29 → 2027-04-03 (+5d) | 2027-04-11 → 2027-04-17 (+6d) | -66.5d → -71d |
| 1 | **Treated Sewage Effluent (Tse)** | 2027-04-12 → 2027-04-17 (+5d) | 2027-04-25 → 2027-04-29 (+4d) |  |
| TF | **Testing and Finishes** | 2027-04-12 → 2027-04-17 (+5d) | 2027-04-25 → 2027-04-29 (+4d) |  |
| CO-TSE-TF-170 | Final Testing (pressure tests) of Treated Sewage Effluent (Tse) | 2027-04-12 → 2027-04-17 (+5d) | 2027-04-25 → 2027-04-29 (+4d) | -66.5d → -71d |
| 14 | **Medium Voltage Network** | 2027-04-11 → 2027-04-17 (+6d) | 2027-05-02 → 2027-05-06 (+4d) |  |
| TT | **Termination and Testing Works** | 2027-04-11 → 2027-04-17 (+6d) | 2027-05-02 → 2027-05-06 (+4d) |  |
| CO-MV-TF-220 | Termination Works of Medium Voltage Network | 2027-04-11 → 2027-04-17 (+6d) | 2027-05-02 → 2027-05-06 (+4d) | -83.5d → -88d |
| 12 | **Street Lighting Network** | 2027-04-21 → 2027-04-28 (+7d) | 2027-05-06 → 2027-05-13 (+7d) |  |
| TR | **Termination and Testing Works** | 2027-04-21 → 2027-04-28 (+7d) | 2027-05-06 → 2027-05-13 (+7d) |  |
| CO-SL-LP-330 | Installation Works for Lighting Fixtures With Drop Wire of Street Lighting Network | 2027-04-21 → 2027-04-28 (+7d) | 2027-04-28 → 2027-05-05 (+7d) | -76d → -82d |
| CO-SL-TF-200 | Testing Works for Lighting Poles of Street Lighting Network | 2027-04-29 → 2027-05-06 (+7d) | 2027-05-04 → 2027-05-11 (+7d) | -68d → -74d |
| CO-SL-TF-220 | Termination Works For Lighting Poles Cables of Street Lighting Network | 2027-04-29 → 2027-05-06 (+7d) | 2027-05-06 → 2027-05-13 (+7d) | -70d → -76d |
| CO-SL-TF-230 | Termination Works For Panel Board Cables of Street Lighting Network | 2027-04-29 → 2027-05-06 (+7d) | 2027-05-06 → 2027-05-13 (+7d) | -70d → -76d |
| CO-SL-TF-380 | Testing Works For Panel Board Cables of Street Lighting Network | 2027-04-29 → 2027-05-06 (+7d) | 2027-05-01 → 2027-05-08 (+7d) | -65d → -71d |
| ES | **Earthing System Works** | 2027-04-21 → 2027-04-28 (+7d) | 2027-04-28 → 2027-05-05 (+7d) |  |
| CO-SL-ES-220 | Install Earthing System Works for Lighting Poles of Street Lighting Network | 2027-04-21 → 2027-04-28 (+7d) | 2027-04-28 → 2027-05-05 (+7d) | -76d → -82d |
| CO-SL-ES-230 | Install Earthing System Works for Lighting Panel Boards of Street Lighting Network | 2027-04-21 → 2027-04-28 (+7d) | 2027-04-28 → 2027-05-05 (+7d) | -76d → -82d |
| 3 | **Telecom Network** | 2027-04-12 → 2027-04-19 (+7d) | 2027-05-10 → 2027-05-22 (+12d) |  |
| 1 | **Testing and Finishes** | 2027-04-12 → 2027-04-19 (+7d) | 2027-05-10 → 2027-05-22 (+12d) |  |
| CO-TE-CTV-TF-110 | Smart Card Printer | 2027-04-12 → 2027-04-19 (+7d) | 2027-04-15 → 2027-04-22 (+7d) | -77d → -83d |
| CO-TE-CTV-TF-120 | Card Issue Work Station | 2027-04-17 → 2027-04-24 (+7d) | 2027-04-20 → 2027-04-27 (+7d) | -77d → -83d |
| CO-TE-CTV-TF-130 | Photographic Camera with stand | 2027-04-21 → 2027-04-28 (+7d) | 2027-04-25 → 2027-05-02 (+7d) | -77d → -83d |
| CO-TE-CTV-TF-140 | Interface modules with CCTV, Fire and other systems | 2027-05-06 → 2027-05-12 (+6d) | 2027-05-10 → 2027-05-22 (+12d) | -86d → -91d |
| 2 | **Road Works** | 2027-03-30 → 2027-04-06 (+7d) | 2027-05-30 → 2027-06-06 (+7d) |  |
| 3 | **ST+1000:ST+1531** | 2027-03-30 → 2027-04-06 (+7d) | 2027-05-24 → 2027-05-31 (+7d) |  |
| 1 | **Bituminous Construction** | 2027-04-15 → 2027-04-22 (+7d) | 2027-05-02 → 2027-05-09 (+7d) |  |
| CO-RD-B-150 | Application of Prime Coat Layer for Road Works | 2027-04-15 → 2027-04-22 (+7d) | 2027-04-24 → 2027-05-01 (+7d) | -76.5d → -82.5d |
| CO-RD-B-160 | Bituminous Base Courses Layers for Road Works- | 2027-04-24 → 2027-05-01 (+7d) | 2027-05-02 → 2027-05-09 (+7d) | -76.5d → -82.5d |
| LS | **Pavement Works** | 2027-03-30 → 2027-04-06 (+7d) | 2027-04-26 → 2027-05-03 (+7d) |  |
| CO-RD-PV-160 | Fixing of Curbstone for Sidewalks Pavement | 2027-03-30 → 2027-04-06 (+7d) | 2027-04-13 → 2027-04-20 (+7d) | -76.7d → -82.7d |

| ID | Task | Start | Finish | Total float |
| --- | --- | --- | --- | --- |
| CO-RD-PV-170 | Fixing of Interlock Tiles for Sidewalks Pavement | 2027-04-13 → 2027-04-20 (+7d) | 2027-04-26 → 2027-05-03 (+7d) | -76.7d → -82.7d |
| TS | **Traffic Signs Boards and Roads Marking** | 2027-05-02 → 2027-05-09 (+7d) | 2027-05-24 → 2027-05-31 (+7d) |  |
| CO-RD-F-RM-180 | Application of Road Marking Works For Road Works | 2027-05-02 → 2027-05-09 (+7d) | 2027-05-10 → 2027-05-23 (+13d) | -73.5d → -79.5d |
| CO-RD-F-TS-120 | Installation Works of Traffic Signs Boards For Road Works | 2027-05-10 → 2027-05-23 (+13d) | 2027-05-24 → 2027-05-31 (+7d) | -73.5d → -79.5d |
| 1 | **ST+500:ST+1000** | 2027-04-13 → 2027-04-20 (+7d) | 2027-05-29 → 2027-06-05 (+7d) |  |
| 1 | **Bituminous Construction** | 2027-05-02 → 2027-05-09 (+7d) | 2027-05-11 → 2027-05-24 (+13d) |  |
| CO-RD-B-130 | Application of Prime Coat Layer for Road Works | 2027-05-02 → 2027-05-09 (+7d) | 2027-05-06 → 2027-05-13 (+7d) | -76.5d → -82.5d |
| CO-RD-B-140 | Bituminous Base Courses Layers for Road Works- | 2027-05-06 → 2027-05-13 (+7d) | 2027-05-11 → 2027-05-24 (+13d) | -76.5d → -82.5d |
| LS | **Pavement Works** | 2027-04-13 → 2027-04-20 (+7d) | 2027-05-09 → 2027-05-22 (+13d) |  |
| CO-RD-PV-140 | Fixing of Curbstone for Sidewalks Pavement | 2027-04-13 → 2027-04-20 (+7d) | 2027-04-26 → 2027-05-03 (+7d) | -76.7d → -82.7d |
| CO-RD-PV-150 | Fixing of Interlock Tiles for Sidewalks Pavement | 2027-04-26 → 2027-05-03 (+7d) | 2027-05-09 → 2027-05-22 (+13d) | -76.7d → -82.7d |
| TS | **Traffic Signs Boards and Roads Marking** | 2027-05-12 → 2027-05-25 (+13d) | 2027-05-29 → 2027-06-05 (+7d) |  |
| CO-RD-F-RM-170 | Application of Road Marking Works For Road Works | 2027-05-12 → 2027-05-25 (+13d) | 2027-05-24 → 2027-05-31 (+7d) | -77.5d → -83.5d |
| CO-RD-F-TS-110 | Installation Works of Traffic Signs Boards For Road Works | 2027-05-24 → 2027-05-31 (+7d) | 2027-05-29 → 2027-06-05 (+7d) | -77.5d → -83.5d |
| 2 | **ST+01:ST+500** | 2027-04-26 → 2027-05-03 (+7d) | 2027-05-30 → 2027-06-06 (+7d) |  |
| 1 | **Bituminous Construction** | 2027-05-12 → 2027-05-25 (+13d) | 2027-05-29 → 2027-06-05 (+7d) |  |
| CO-RD-B-110 | Application of Prime Coat Layer for Road Works | 2027-05-12 → 2027-05-25 (+13d) | 2027-05-24 → 2027-05-31 (+7d) | -77.5d → -83.5d |
| CO-RD-B-120 | Bituminous Base Courses Layers for Road Works- | 2027-05-24 → 2027-05-31 (+7d) | 2027-05-29 → 2027-06-05 (+7d) | -77.5d → -83.5d |
| LS | **Pavement Works** | 2027-04-26 → 2027-05-03 (+7d) | 2027-05-27 → 2027-06-03 (+7d) |  |
| CO-RD-PV-120 | Fixing of Curbstone for Sidewalks Pavement | 2027-04-26 → 2027-05-03 (+7d) | 2027-05-09 → 2027-05-22 (+13d) | -76.8d → -82.8d |
| CO-RD-PV-130 | Fixing of Interlock Tiles for Sidewalks Pavement | 2027-05-09 → 2027-05-22 (+13d) | 2027-05-27 → 2027-06-03 (+7d) | -76.8d → -82.8d |
| TS | **Traffic Signs Boards and Roads Marking** | 2027-05-29 → 2027-06-05 (+7d) | 2027-05-30 → 2027-06-06 (+7d) |  |
| CO-RD-F-RM-160 | Application of Road Marking Works For Road Works | 2027-05-29 → 2027-06-05 (+7d) | 2027-05-30 → 2027-06-06 (+7d) | -74.5d → -80.5d |
| CO-RD-F-TS-100 | Installation Works of Traffic Signs Boards For Road Works | 2027-05-29 → 2027-06-05 (+7d) | 2027-05-30 → 2027-06-06 (+7d) | -74.5d → -80.5d |
| GEN | **Superstructure Work** |  | 2027-05-23 → 2027-05-27 (+4d) |  |
| 4 | **Utility Buildings** |  | 2027-05-23 → 2027-05-27 (+4d) |  |
| 4 | **Pump Station** |  | 2027-05-23 → 2027-05-27 (+4d) |  |
| 2 | **Architectural work** | 2026-11-03 → 2026-11-10 (+7d) | 2026-12-13 → 2026-12-20 (+7d) |  |
| CO-UB-PS-260 | Executing Masonry Works for Pump station building | 2026-11-03 → 2026-11-10 (+7d) | 2026-11-08 → 2026-11-15 (+7d) | 26d → 20d |
| CO-UB-PS-270 | Executing Plastering Works for Pump station building | 2026-11-09 → 2026-11-16 (+7d) | 2026-11-14 → 2026-11-21 (+7d) | 26d → 20d |
| CO-UB-PS-280 | Executing Painting Works for Pump station building | 2026-11-15 → 2026-11-22 (+7d) | 2026-11-19 → 2026-11-26 (+7d) | 26d → 20d |
| CO-UB-PS-320 | Doors and windows Fixing &Stair Tiles | 2026-12-06 → 2026-12-13 (+7d) | 2026-12-13 → 2026-12-20 (+7d) | 30d → 24d |
| 3 | **Electrical work** | 2026-11-21 → 2026-11-28 (+7d) | 2027-05-11 → 2027-05-22 (+11d) |  |
| CO-UB-PS-290 | Lighting system for pump house | 2026-11-21 → 2026-11-28 (+7d) | 2026-11-25 → 2026-12-02 (+7d) | 26d → 20d |
| CO-UB-PS-300 | Wiring connection for pump house | 2026-11-26 → 2026-12-03 (+7d) | 2026-12-01 → 2026-12-08 (+7d) | 26d → 20d |
| CO-UB-PS-310 | Sockets and switches for pump house | 2026-12-02 → 2026-12-09 (+7d) | 2026-12-05 → 2026-12-12 (+7d) | 26d → 20d |
| CO-UB-PS-330 | Installation for Distribution boards for pump house | 2026-12-06 → 2026-12-13 (+7d) | 2026-12-14 → 2026-12-21 (+7d) | 26d → 20d |
| CO-UB-PS-370 | Executing Earthing and bonding for the entire system | 2027-05-02 → 2027-05-08 (+6d) | 2027-05-11 → 2027-05-22 (+11d) | -83.5d → -88d |
| 4 | **Mechanical work** | 2026-12-06 → 2026-12-13 (+7d) | 2027-05-23 → 2027-05-27 (+4d) |  |
| CO-UB-PS-340 | Executing HVAC System for Pump station building | 2026-12-06 → 2026-12-13 (+7d) | 2026-12-21 → 2026-12-28 (+7d) | 28d → 22d |
| CO-UB-PS-350 | Executing Fire Alarm System for Pump station building | 2026-12-06 → 2026-12-13 (+7d) | 2026-12-10 → 2026-12-17 (+7d) | 27d → 21d |
| CO-UB-PS-360 | Executing Fire fighting institution works(piping and wire installation) for Pump station building | 2026-12-12 → 2026-12-19 (+7d) | 2026-12-16 → 2026-12-23 (+7d) | 27d → 21d |
| CO-UB-PS-380 | Executing Fire fighting finishing works for Pump station building | 2026-12-17 → 2026-12-24 (+7d) | 2026-12-22 → 2026-12-29 (+7d) | 27d → 21d |
| CO-UB-PS-390 | Installation of pumps | 2027-05-11 → 2027-05-23 (+12d) | 2027-05-23 → 2027-05-27 (+4d) | -83.5d → -88d |
| 3 | **Lift Station** |  | 2027-01-21 → 2027-01-28 (+7d) |  |
| 1 | **Civil work** |  | 2026-11-28 → 2026-12-05 (+7d) |  |
| 2 | **Super structure** |  | 2026-11-28 → 2026-12-05 (+7d) |  |
| CO-UB-LS-290 | Formwork for Wall and columns for Lift Station |  | 2026-11-05 → 2026-11-12 (+7d) | 6.75d → 0.75d |
| CO-UB-LS-300 | Steel fixing for Wall columns |  | 2026-11-05 → 2026-11-12 (+7d) | 6.75d → 0.75d |
| CO-UB-LS-310 | pouring for Wall columns |  | 2026-11-05 → 2026-11-12 (+7d) | 6.75d → 0.75d |
| CO-UB-LS-330 | Waterproofing for Walls columns |  | 2026-11-10 → 2026-11-17 (+7d) | 6.75d → 0.75d |
| CO-UB-LS-320 | curing and deshuttering formwork for Wall columns |  | 2026-11-08 → 2026-11-15 (+7d) | 6.75d → 0.75d |
| CO-UB-LS-340 | Formwork for pump roof | 2026-11-10 → 2026-11-17 (+7d) | 2026-11-16 → 2026-11-23 (+7d) | 6.75d → 0.75d |
| CO-UB-LS-350 | Steel fixing for pump roof | 2026-11-16 → 2026-11-23 (+7d) | 2026-11-23 → 2026-11-30 (+7d) | 6.75d → 0.75d |
| CO-UB-LS-360 | pouring for pump roof | 2026-11-23 → 2026-11-30 (+7d) | 2026-11-24 → 2026-12-01 (+7d) | 6.75d → 0.75d |
| CO-UB-LS-370 | curing and deshuttering formwork for pump roof | 2026-11-24 → 2026-12-01 (+7d) | 2026-11-28 → 2026-12-05 (+7d) | 6.75d → 0.75d |
| 2 | **Architectural work** | 2026-11-28 → 2026-12-05 (+7d) | 2026-12-15 → 2026-12-22 (+7d) |  |
| CO-UB-LS-380 | Executing Masonry Works for Pump station building | 2026-11-28 → 2026-12-05 (+7d) | 2026-12-06 → 2026-12-13 (+7d) | 6.75d → 0.75d |
| CO-UB-LS-390 | Executing Plastering Works for Pump station building | 2026-12-06 → 2026-12-13 (+7d) | 2026-12-15 → 2026-12-22 (+7d) | 6.75d → 0.75d |
| 3 | **Electrical work** | 2026-12-15 → 2026-12-22 (+7d) | 2027-01-21 → 2027-01-28 (+7d) |  |
| CO-UB-LS-400 | Lighting system for pump house | 2026-12-15 → 2026-12-22 (+7d) | 2026-12-24 → 2026-12-31 (+7d) | 6.75d → 0.75d |
| CO-UB-LS-420 | Wiring connection for pump house | 2026-12-24 → 2026-12-31 (+7d) | 2026-12-31 → 2027-01-07 (+7d) | 6.75d → 0.75d |
| CO-UB-LS-440 | Sockets and switches for pump house | 2026-12-31 → 2027-01-07 (+7d) | 2027-01-07 → 2027-01-14 (+7d) | 6.75d → 0.75d |
| CO-UB-LS-460 | Installation for Distribution boards for pump house | 2027-01-07 → 2027-01-14 (+7d) | 2027-01-14 → 2027-01-21 (+7d) | 6.75d → 0.75d |
| CO-UB-LS-480 | Executing Earthing and bonding for the entire system | 2027-01-14 → 2027-01-21 (+7d) | 2027-01-21 → 2027-01-28 (+7d) | 6.75d → 0.75d |
| 4 | **Mechanical work** | 2026-12-15 → 2026-12-22 (+7d) | 2027-01-19 → 2027-01-26 (+7d) |  |
| CO-UB-LS-410 | Internal pipe installation | 2026-12-15 → 2026-12-22 (+7d) | 2026-12-24 → 2026-12-31 (+7d) | 8.75d → 2.75d |
| CO-UB-LS-430 | Guide rails & lifting chains installation | 2026-12-24 → 2026-12-31 (+7d) | 2027-01-02 → 2027-01-09 (+7d) | 8.75d → 2.75d |
| CO-UB-LS-450 | ExeValve installation | 2027-01-02 → 2027-01-09 (+7d) | 2027-01-10 → 2027-01-17 (+7d) | 8.75d → 2.75d |
| CO-UB-LS-470 | Installation of pumps | 2027-01-10 → 2027-01-17 (+7d) | 2027-01-19 → 2027-01-26 (+7d) | 8.75d → 2.75d |

| ID | Task | Start | Finish | Total float |
| --- | --- | --- | --- | --- |
| 5 | **Potable Water Tank** |  | 2026-12-31 → 2027-01-07 (+7d) |  |
| 2 | **Structural Work** |  | 2026-11-16 → 2026-11-23 (+7d) |  |
| CO-UB-PWT-130 | Form work for Tank Foundation | 2026-11-03 → 2026-11-10 (+7d) | 2026-11-08 → 2026-11-15 (+7d) | 22d → 16d |
| CO-UB-PWT-140 | Steel Reinforcement work for Tank Foundation | 2026-11-09 → 2026-11-16 (+7d) | 2026-11-15 → 2026-11-22 (+7d) | 22d → 16d |
| CO-UB-PWT-150 | Casting concrete for Tank Foundation | 2026-11-16 → 2026-11-23 (+7d) | 2026-11-16 → 2026-11-23 (+7d) | 22d → 16d |
| 3 | **Tank Shell Erection&Roof Installation** | 2026-11-17 → 2026-11-24 (+7d) | 2026-12-12 → 2026-12-19 (+7d) |  |
| CO-UB-PWT-160 | Bottom ring installation | 2026-11-17 → 2026-11-24 (+7d) | 2026-11-23 → 2026-11-30 (+7d) | 22d → 16d |
| CO-UB-PWT-170 | shell erection | 2026-11-24 → 2026-12-01 (+7d) | 2026-12-02 → 2026-12-09 (+7d) | 22d → 16d |
| CO-UB-PWT-180 | Aluminum dome / steel roof installation | 2026-12-03 → 2026-12-10 (+7d) | 2026-12-12 → 2026-12-19 (+7d) | 22d → 16d |
| 4 | **Mechanical Work&Accessories** | 2026-12-13 → 2026-12-20 (+7d) | 2026-12-31 → 2027-01-07 (+7d) |  |
| CO-UB-PWT-190 | Inlet / outlet piping connections | 2026-12-13 → 2026-12-20 (+7d) | 2026-12-19 → 2026-12-26 (+7d) | 22d → 16d |
| CO-UB-PWT-200 | installation Valves | 2026-12-20 → 2026-12-27 (+7d) | 2026-12-26 → 2027-01-02 (+7d) | 22d → 16d |
| CO-UB-PWT-210 | Ladders, platforms & handrails | 2026-12-27 → 2027-01-03 (+7d) | 2026-12-31 → 2027-01-07 (+7d) | 22d → 16d |
| 2 | **IrrigationTank** |  | 2026-12-19 → 2026-12-26 (+7d) |  |
| 2 | **Structural Work** |  | 2026-11-16 → 2026-11-23 (+7d) |  |
| CO-UB-IRT-170 | Form work for Tank Foundation | 2026-11-03 → 2026-11-10 (+7d) | 2026-11-09 → 2026-11-16 (+7d) | 33d → 27d |
| CO-UB-IRT-180 | Steel Reinforcement work for Tank Foundation | 2026-11-10 → 2026-11-17 (+7d) | 2026-11-15 → 2026-11-22 (+7d) | 33d → 27d |
| CO-UB-IRT-190 | Casting concrete for Tank Foundation | 2026-11-16 → 2026-11-23 (+7d) | 2026-11-16 → 2026-11-23 (+7d) | 33d → 27d |
| 3 | **Tank Shell Erection&Roof Installation** | 2026-11-17 → 2026-11-24 (+7d) | 2026-12-07 → 2026-12-14 (+7d) |  |
| CO-UB-IRT-200 | Bottom ring installation | 2026-11-17 → 2026-11-24 (+7d) | 2026-11-23 → 2026-11-30 (+7d) | 33d → 27d |
| CO-UB-IRT-210 | shell erection | 2026-11-24 → 2026-12-01 (+7d) | 2026-11-30 → 2026-12-07 (+7d) | 33d → 27d |
| CO-UB-IRT-220 | Aluminum dome / steel roof installation | 2026-12-01 → 2026-12-08 (+7d) | 2026-12-07 → 2026-12-14 (+7d) | 33d → 27d |
| 4 | **Mechanical Work&Accessories** | 2026-12-08 → 2026-12-15 (+7d) | 2026-12-19 → 2026-12-26 (+7d) |  |
| CO-UB-IRT-230 | Inlet / outlet piping connections | 2026-12-08 → 2026-12-15 (+7d) | 2026-12-12 → 2026-12-19 (+7d) | 33d → 27d |
| CO-UB-IRT-240 | installation Valves | 2026-12-13 → 2026-12-20 (+7d) | 2026-12-16 → 2026-12-23 (+7d) | 33d → 27d |
| CO-UB-IRT-250 | Ladders, platforms & handrails | 2026-12-17 → 2026-12-24 (+7d) | 2026-12-19 → 2026-12-26 (+7d) | 33d → 27d |
| 1 | **Control Room** |  | 2027-01-18 → 2027-01-25 (+7d) |  |
| 5 | **Civil Work** |  | 2026-11-03 → 2026-11-10 (+7d) |  |
| CO-UB-CR-140 | Pouring Beams and Slab For Control Room |  | 2026-11-03 → 2026-11-10 (+7d) | 27d → 21d |
| 6 | **Finishing Work** | 2026-11-03 → 2026-11-10 (+7d) | 2027-01-18 → 2027-01-25 (+7d) |  |
| 1 | **Architictural work** | 2026-11-03 → 2026-11-10 (+7d) | 2026-12-19 → 2026-12-26 (+7d) |  |
| CO-UB-CR-150 | Brick Work For Control Room | 2026-11-03 → 2026-11-10 (+7d) | 2026-11-12 → 2026-11-19 (+7d) | 27d → 21d |
| CO-UB-CR-160 | Thermal & Moisture Protection Work for Control Room | 2026-11-14 → 2026-11-21 (+7d) | 2026-11-21 → 2026-11-28 (+7d) | 27d → 21d |
| CO-UB-CR-200 | Install For Curtian Wall and Windows and Doors | 2026-11-22 → 2026-11-29 (+7d) | 2026-11-30 → 2026-12-07 (+7d) | 27d → 21d |
| CO-UB-CR-240 | External Finshing Work (Walls and Floor) | 2026-12-01 → 2026-12-08 (+7d) | 2026-12-09 → 2026-12-16 (+7d) | 27d → 21d |
| CO-UB-CR-250 | Internal Finshing Work (Walls,Floor and Ceiling) | 2026-12-10 → 2026-12-17 (+7d) | 2026-12-19 → 2026-12-26 (+7d) | 27d → 21d |
| 3 | **Mechanical Work** | 2026-11-14 → 2026-11-21 (+7d) | 2026-12-30 → 2027-01-06 (+7d) |  |
| 3 | **HVAC System** | 2026-11-14 → 2026-11-21 (+7d) | 2026-12-30 → 2027-01-06 (+7d) |  |
| CO-UB-CR-170 | Install of Refrigerant Piping ( fabricated metal ducts with flanges complete with supports, vanes, dampers ) | 2026-11-14 → 2026-11-21 (+7d) | 2026-11-17 → 2026-11-24 (+7d) | 40d → 34d |
| CO-UB-CR-260 | Install of Mini split actual capacity 2 Ton and Ducted split actual capacity 4 Ton | 2026-12-20 → 2026-12-27 (+7d) | 2026-12-27 → 2027-01-03 (+7d) | 38d → 32d |
| CO-UB-CR-310 | Install of Air Grills 150mm x150mm and Air Diffuser 600mm x 600mm | 2026-12-28 → 2027-01-04 (+7d) | 2026-12-30 → 2027-01-06 (+7d) | 38d → 32d |
| 4 | **Fire Fitting System** | 2026-11-18 → 2026-11-25 (+7d) | 2026-12-22 → 2026-12-29 (+7d) |  |
| CO-UB-CR-180 | Installation & Testing of 2 hours Fire rated system for closing the openings between rooms with help of Rock wool | 2026-11-18 → 2026-11-25 (+7d) | 2026-11-22 → 2026-11-29 (+7d) | 40d → 34d |
| CO-UB-CR-270 | Install Fire Extinguishers | 2026-12-20 → 2026-12-27 (+7d) | 2026-12-22 → 2026-12-29 (+7d) | 45d → 39d |
| 4 | **Electrical Work** | 2026-11-23 → 2026-11-30 (+7d) | 2027-01-12 → 2027-01-19 (+7d) |  |
| 1 | **LV Power** | 2026-12-20 → 2026-12-27 (+7d) | 2027-01-05 → 2027-01-12 (+7d) |  |
| CO-UB-CR-190 | Install of Distribution board For Control Room | 2026-12-20 → 2026-12-27 (+7d) | 2026-12-24 → 2026-12-31 (+7d) | 33d → 27d |
| CO-UB-CR-220 | Install of Earting Cable for Control Room | 2026-12-26 → 2027-01-02 (+7d) | 2026-12-30 → 2027-01-06 (+7d) | 33d → 27d |
| CO-UB-CR-280 | Install of Socket outlet and LED Lighting | 2026-12-31 → 2027-01-07 (+7d) | 2027-01-05 → 2027-01-12 (+7d) | 33d → 27d |
| 3 | **Fire Detection And Alarm System** | 2026-11-23 → 2026-11-30 (+7d) | 2027-01-12 → 2027-01-19 (+7d) |  |
| CO-UB-CR-210 | Install of 2C x 1.5 Sqm FR Rated Armored - Cable For Loop Wiring | 2026-11-23 → 2026-11-30 (+7d) | 2026-11-28 → 2026-12-05 (+7d) | 40d → 34d |
| CO-UB-CR-230 | Install of Transmission Communication cable - Fiber Optics 12Core | 2026-11-29 → 2026-12-06 (+7d) | 2026-12-03 → 2026-12-10 (+7d) | 40d → 34d |
| CO-UB-CR-290 | Install of power supply system for fire alarm control panel | 2026-12-20 → 2026-12-27 (+7d) | 2026-12-24 → 2026-12-31 (+7d) | 27d → 21d |
| CO-UB-CR-300 | Install of Fire Alarm Control panel | 2026-12-26 → 2027-01-02 (+7d) | 2026-12-31 → 2027-01-07 (+7d) | 27d → 21d |
| CO-UB-CR-320 | Installation of the addressable manual call point with operation safety glass breaking | 2027-01-02 → 2027-01-09 (+7d) | 2027-01-04 → 2027-01-11 (+7d) | 27d → 21d |
| CO-UB-CR-330 | Install of the photoelectric heat & smoke detector | 2027-01-05 → 2027-01-12 (+7d) | 2027-01-07 → 2027-01-14 (+7d) | 27d → 21d |
| CO-UB-CR-340 | Install of Sounder With Beacon | 2027-01-05 → 2027-01-12 (+7d) | 2027-01-07 → 2027-01-14 (+7d) | 27d → 21d |
| CO-UB-CR-350 | Install of Addressable Control module | 2027-01-09 → 2027-01-16 (+7d) | 2027-01-12 → 2027-01-19 (+7d) | 27d → 21d |
| 2 | **Furnitures work** | 2027-01-13 → 2027-01-20 (+7d) | 2027-01-18 → 2027-01-25 (+7d) |  |
| CO-UB-CR-360 | Office Chairs,Tables and Stand | 2027-01-13 → 2027-01-20 (+7d) | 2027-01-18 → 2027-01-25 (+7d) | 27d → 21d |
| ML | **Softscape and Planting Works** | 2027-03-07 → 2027-03-16 (+9d) | 2027-04-25 → 2027-05-01 (+6d) |  |
| 1 | **Planting Beds Preparation** | 2027-03-07 → 2027-03-16 (+9d) | 2027-04-04 → 2027-04-10 (+6d) |  |
| CO-LS-PL-100 | Excavation of planting beds | 2027-03-07 → 2027-03-16 (+9d) | 2027-03-18 → 2027-03-24 (+6d) | -83.5d → -88d |
| CO-LS-PL-110 | Supply & placement of suitable topsoil | 2027-03-20 → 2027-03-24 (+4d) | 2027-03-27 → 2027-04-01 (+5d) | -83.5d → -88d |
| CO-LS-PL-120 | Soil improvement (fertilizer, compost, additives) | 2027-03-28 → 2027-04-01 (+4d) | 2027-04-04 → 2027-04-10 (+6d) | -83.5d → -88d |
| 2 | **Supports & Protection** | 2027-04-05 → 2027-04-10 (+5d) | 2027-04-11 → 2027-04-17 (+6d) |  |
| CO-LS-PL-130 | installation of plant supports / stakes | 2027-04-05 → 2027-04-10 (+5d) | 2027-04-07 → 2027-04-13 (+6d) | -83.5d → -88d |
| CO-LS-PL-140 | Ties and protection materials | 2027-04-08 → 2027-04-13 (+5d) | 2027-04-11 → 2027-04-17 (+6d) | -83.5d → -88d |
| 3 | **Plant Supply** | 2027-04-12 → 2027-04-17 (+5d) | 2027-04-14 → 2027-04-20 (+6d) |  |
| CO-LS-PL-150 | installation of trees | 2027-04-12 → 2027-04-17 (+5d) | 2027-04-14 → 2027-04-20 (+6d) | -83.5d → -88d |

| ID | Task | Start | Finish | Total float |
| --- | --- | --- | --- | --- |
| 4 | **Site Furnishings** | 2027-04-15 → 2027-04-20 (+5d) | 2027-04-25 → 2027-05-01 (+6d) |  |
| CO-LS-PL-160 | installation of Seating benches | 2027-04-15 → 2027-04-20 (+5d) | 2027-04-18 → 2027-04-24 (+6d) | -83.5d → -88d |
| CO-LS-PL-170 | tone boulders placement & fixing Works | 2027-04-19 → 2027-04-24 (+5d) | 2027-04-21 → 2027-04-27 (+6d) | -83.5d → -88d |
| CO-LS-PL-180 | Gravel Works | 2027-04-22 → 2027-04-27 (+5d) | 2027-04-25 → 2027-05-01 (+6d) | -83.5d → -88d |
| 1 | **Fence and Gaurd Room** |  | 2027-04-19 → 2027-04-26 (+7d) |  |
| 1 | **Gaurd Room Work** |  | 2027-03-21 → 2027-03-28 (+7d) |  |
| 1 | **Civil Work** |  | 2026-12-07 → 2026-12-14 (+7d) |  |
| A1020 | Pouring R.C Footing For Gaurd Room |  | 2026-11-15 → 2026-11-22 (+7d) | -17.5d → -23.5d |
| A1030 | Pouring R.C Columns For Gaurd Room | 2026-11-16 → 2026-11-23 (+7d) | 2026-11-26 → 2026-12-03 (+7d) | -17.5d → -23.5d |
| A1040 | Pouring Beams and Slab For Gaurd Room | 2026-11-28 → 2026-12-05 (+7d) | 2026-12-07 → 2026-12-14 (+7d) | -17.5d → -23.5d |
| 2 | **Finishing Work** | 2026-12-08 → 2026-12-15 (+7d) | 2027-03-21 → 2027-03-28 (+7d) |  |
| 1 | **Architictural work** | 2026-12-08 → 2026-12-15 (+7d) | 2027-01-30 → 2027-02-06 (+7d) |  |
| A1050 | Brick Work For Gaurd Room | 2026-12-08 → 2026-12-15 (+7d) | 2026-12-17 → 2026-12-24 (+7d) | -17.5d → -23.5d |
| A1060 | Thermal & Moisture Protection Work for Gaurd Room | 2026-12-19 → 2026-12-26 (+7d) | 2026-12-26 → 2027-01-02 (+7d) | -11.5d → -17.5d |
| A1070 | Install For Curtian Wall and Windows and Doors | 2027-01-03 → 2027-01-10 (+7d) | 2027-01-11 → 2027-01-18 (+7d) | -17.5d → -23.5d |
| A1080 | External Finshing Work (Walls and Floor) | 2027-01-12 → 2027-01-19 (+7d) | 2027-01-20 → 2027-01-27 (+7d) | -17.5d → -23.5d |
| A1090 | Internal Finshing Work (Walls,Floor and Ceiling) | 2027-01-21 → 2027-01-28 (+7d) | 2027-01-30 → 2027-02-06 (+7d) | -17.5d → -23.5d |
| 3 | **Mechanical Work** | 2026-12-19 → 2026-12-26 (+7d) | 2027-02-11 → 2027-02-21 (+10d) |  |
| 1 | **Sanitary Drainage & Plumbing System** | 2026-12-19 → 2026-12-26 (+7d) | 2027-01-02 → 2027-01-09 (+7d) |  |
| A1110 | Install Sanitary Piping System (UPVC) | 2026-12-19 → 2026-12-26 (+7d) | 2026-12-22 → 2026-12-29 (+7d) | -17.5d → -23.5d |
| A1120 | Install Base mounted flush tank water Western water closet system | 2026-12-23 → 2026-12-30 (+7d) | 2026-12-29 → 2027-01-05 (+7d) | -17.5d → -23.5d |
| A1130 | Install 1 meter length 10mm diameter Flexible Hose and Gate Valves and Slow Closing Valve | 2026-12-30 → 2027-01-06 (+7d) | 2027-01-02 → 2027-01-09 (+7d) | -17.5d → -23.5d |
| 2 | **Water Supply System** | 2026-12-19 → 2026-12-26 (+7d) | 2027-02-01 → 2027-02-09 (+8d) |  |
| A1240 | Install GRP water tanks capacity of each 1000 liter | 2026-12-19 → 2026-12-26 (+7d) | 2026-12-21 → 2026-12-28 (+7d) | -16.5d → -22.5d |
| A1140 | Install for Cold Water Pipe complete with joints, angles, reducer etc. | 2026-12-22 → 2026-12-29 (+7d) | 2026-12-27 → 2027-01-03 (+7d) | -16.5d → -22.5d |
| A1150 | Install for Hot Water Pipe complete with joints, angles, reducer etc. | 2026-12-28 → 2027-01-04 (+7d) | 2026-12-31 → 2027-01-07 (+7d) | -16.5d → -22.5d |
| A1160 | Install for Isolation Valve,Spray Head,Roof Drain,Floor Drain,Gully teap,Vend on Roof to exhaust air | 2027-01-02 → 2027-01-09 (+7d) | 2027-01-04 → 2027-01-11 (+7d) | 2.5d → -3.5d |
| A1170 | Install of Inspection chamber, size 800x900x1000 | 2027-01-05 → 2027-01-12 (+7d) | 2027-01-06 → 2027-01-13 (+7d) | 2.5d → -3.5d |
| A1180 | Install OF Electric Water Heater set with connection and Water meter complete with accessories | 2027-01-31 → 2027-02-07 (+7d) | 2027-02-01 → 2027-02-09 (+8d) | -17.5d → -23.5d |
| 3 | **HVAC System** | 2026-12-23 → 2026-12-30 (+7d) | 2027-02-11 → 2027-02-21 (+10d) |  |
| A1200 | Install of Refrigerant Piping ( fabricated metal ducts with flanges complete with supports, vanes, dampers ) | 2026-12-23 → 2026-12-30 (+7d) | 2026-12-27 → 2027-01-03 (+7d) | 1.5d → -4.5d |
| A1190 | Install of Mini split actual capacity 2 Ton and Ducted split actual capacity 4 Ton | 2027-01-31 → 2027-02-07 (+7d) | 2027-02-07 → 2027-02-16 (+9d) | 1d → -5d |
| A1210 | Install of Air Grills 150mm x150mm and Air Diffuser 600mm x 600mm | 2027-02-08 → 2027-02-17 (+9d) | 2027-02-11 → 2027-02-21 (+10d) | 1d → -5d |
| 4 | **Fire Fitting System** | 2026-12-28 → 2027-01-04 (+7d) | 2027-02-06 → 2027-02-15 (+9d) |  |
| A1220 | Installation & Testing of 2 hours Fire rated system for closing the openings between rooms with help of Rock wool | 2026-12-28 → 2027-01-04 (+7d) | 2027-01-03 → 2027-01-10 (+7d) | 1.5d → -4.5d |
| A1230 | Install Fire Extinguishers | 2027-01-31 → 2027-02-07 (+7d) | 2027-02-06 → 2027-02-15 (+9d) | 5d → -1d |
| 4 | **Electrical Work** | 2026-12-28 → 2027-01-04 (+7d) | 2027-03-16 → 2027-03-23 (+7d) |  |
| 1 | **LV Power** | 2026-12-28 → 2027-01-04 (+7d) | 2027-02-04 → 2027-02-14 (+10d) |  |
| A1250 | Install of Distribution board For Gaurd Room | 2026-12-28 → 2027-01-04 (+7d) | 2027-01-02 → 2027-01-09 (+7d) | 3.5d → -2.5d |
| A1270 | Install of Earting Cable for Gaurd Room | 2027-01-03 → 2027-01-10 (+7d) | 2027-01-07 → 2027-01-14 (+7d) | 3.5d → -2.5d |
| A1260 | Install of Socket outlet and LED Lighting | 2027-01-31 → 2027-02-07 (+7d) | 2027-02-04 → 2027-02-14 (+10d) | 6d → 0d |
| 3 | **Fire Detection And Alarm System** | 2027-01-04 → 2027-01-11 (+7d) | 2027-03-01 → 2027-03-13 (+12d) |  |
| A1340 | Install of 2C x 1.5 Sqm FR Rated Armored - Cable For Loop Wiring | 2027-01-04 → 2027-01-11 (+7d) | 2027-01-09 → 2027-01-16 (+7d) | 1.5d → -4.5d |
| A1350 | Install of Transmission Communication cable - Fiber Optics 12Core | 2027-01-10 → 2027-01-17 (+7d) | 2027-01-14 → 2027-01-21 (+7d) | 1.5d → -4.5d |
| A1360 | Install of power supply system for fire alarm control panel | 2027-01-31 → 2027-02-07 (+7d) | 2027-02-04 → 2027-02-14 (+10d) | -11.5d → -17.5d |
| A1280 | Install of Fire Alarm Control panel | 2027-02-06 → 2027-02-14 (+8d) | 2027-02-14 → 2027-02-22 (+8d) | -11.5d → -17.5d |
| A1290 | Installation of the addressable manual call point with operation safety glass breaking | 2027-02-14 → 2027-02-23 (+9d) | 2027-02-18 → 2027-02-27 (+9d) | -11.5d → -17.5d |
| A1300 | Install of the photoelectric heat & smoke detector | 2027-02-18 → 2027-02-28 (+10d) | 2027-02-22 → 2027-03-03 (+9d) | -11.5d → -17.5d |
| A1310 | Install of Sounder With Beacon | 2027-02-18 → 2027-02-28 (+10d) | 2027-02-22 → 2027-03-03 (+9d) | -11.5d → -17.5d |
| A1320 | Install of Addressable Control module | 2027-02-23 → 2027-03-04 (+9d) | 2027-03-01 → 2027-03-13 (+12d) | -11.5d → -17.5d |
| 2 | **Security System** | 2027-02-02 → 2027-02-09 (+7d) | 2027-03-16 → 2027-03-23 (+7d) |  |
| A1580 | Install 8 Port Industrial PoE Switch 10/100BaseT (0 deg to +70 deg. Celsius) | 2027-02-02 → 2027-02-09 (+7d) | 2027-02-07 → 2027-02-16 (+9d) | -17.5d → -23.5d |
| A1590 | Optical Fiber,48 Core Splice Closure | 2027-02-08 → 2027-02-17 (+9d) | 2027-02-11 → 2027-02-21 (+10d) | -16.5d → -22.5d |
| A1650 | Pole/Bollard mounted IP( PoE) and 12U rack dimension | 2027-02-08 → 2027-02-17 (+9d) | 2027-02-14 → 2027-02-22 (+8d) | -17.5d → -23.5d |
| A1600 | Boom Barrier at Security Guard Room | 2027-02-14 → 2027-02-23 (+9d) | 2027-02-21 → 2027-03-02 (+9d) | -17.5d → -23.5d |
| A1610 | Pedestrian turnstile at Security Guard Room | 2027-02-22 → 2027-03-02 (+8d) | 2027-03-01 → 2027-03-13 (+12d) | -17.5d → -23.5d |
| A1620 | Access Control Unit and Access Card Reader | 2027-03-01 → 2027-03-14 (+13d) | 2027-03-07 → 2027-03-17 (+10d) | -17.5d → -23.5d |
| A1630 | Magnetic Lock and Break Glass and Exit Push button | 2027-03-07 → 2027-03-18 (+11d) | 2027-03-15 → 2027-03-22 (+7d) | -17.5d → -23.5d |
| A1640 | Door Sensor and Biometrics Reader | 2027-03-14 → 2027-03-21 (+7d) | 2027-03-16 → 2027-03-23 (+7d) | -17.5d → -23.5d |
| 2 | **Furnitures work** | 2027-03-15 → 2027-03-22 (+7d) | 2027-03-21 → 2027-03-28 (+7d) |  |
| A1100 | Office Chairs,Tables and Stand | 2027-03-15 → 2027-03-22 (+7d) | 2027-03-21 → 2027-03-28 (+7d) | -17.5d → -23.5d |
| 2 | **Fence Work** |  | 2027-04-19 → 2027-04-26 (+7d) |  |
| 1 | **Northern Fence N01:N03** |  | 2027-01-18 → 2027-01-25 (+7d) |  |
| 5 | **Finishing Work** |  | 2027-01-18 → 2027-01-25 (+7d) |  |
| 3 | **Electrical Work** | 2026-11-03 → 2026-11-10 (+7d) | 2027-01-18 → 2027-01-25 (+7d) |  |
| CO-SU-FE-N-EL-100 | Trench excavation to receive 2 nos 50mm diameter PVC Conduit | 2026-11-03 → 2026-11-10 (+7d) | 2026-11-11 → 2026-11-18 (+7d) | -42d → -48d |
| CO-SU-FE-N-EL-110 | Trench excavation to receive 3 nos 50mm diameter PVC Conduit | 2026-11-03 → 2026-11-10 (+7d) | 2026-11-11 → 2026-11-18 (+7d) | -42d → -48d |
| CO-SU-FE-N-EL-120 | Fixing of Control cable,CAT6A cable | 2026-11-12 → 2026-11-19 (+7d) | 2026-11-22 → 2026-11-29 (+7d) | -42d → -48d |
| CO-SU-FE-N-EL-130 | Install 800mm x 800mm x 800mm height concrete handhole | 2026-11-12 → 2026-11-19 (+7d) | 2026-11-22 → 2026-11-29 (+7d) | -42d → -48d |
| CO-SU-FE-N-EL-140 | Hot dipped galvanized cable conduits for CAT6A cable and Control Cables embedded to wall | 2026-11-12 → 2026-11-19 (+7d) | 2026-11-21 → 2026-11-28 (+7d) | -41d → -47d |

| ID | Task | Start | Finish | Complete | Total float | Predecessors |
| --- | --- | --- | --- | --- | --- | --- |
| CO-SU-FE-N-EL-150 | Fixing Earthing Work (Earth Pit,Grounding rod,Tinned Copper wire) | 2026-11-23 → 2026-11-30 (+7d) | 2026-12-01 → 2026-12-08 (+7d) |  | -42d → -48d |  |
| CO-SU-FE-N-EL-160 | Field Equipment Cabinet enclosed outdoor complete with precast concrete footing, | 2026-12-02 → 2026-12-09 (+7d) | 2026-12-10 → 2026-12-17 (+7d) |  | -42d → -48d |  |
| CO-SU-FE-N-EL-170 | Fence Lightining 400V, 3PH, 60Hz lighting control panel (LCP-02) | 2026-12-02 → 2026-12-09 (+7d) | 2026-12-10 → 2026-12-17 (+7d) |  | -42d → -48d |  |
| CO-SU-FE-N-EL-180 | Install of direct buried armored cable 4C-16mm2 ,10mm2 | 2026-12-12 → 2026-12-19 (+7d) | 2026-12-21 → 2026-12-28 (+7d) |  | -42d → -48d |  |
| CO-SU-FE-N-EL-190 | Install 16mm2,10mm2 CU/PVC wire | 2026-12-12 → 2026-12-19 (+7d) | 2026-12-21 → 2026-12-28 (+7d) |  | -42d → -48d |  |
| CO-SU-FE-N-EL-200 | FEC-CCTV ( 4C-16mm2 CU/XLPE/PVC direct buried armored cable,16mm2 CU/PVC wire | 2026-12-12 → 2026-12-19 (+7d) | 2026-12-20 → 2026-12-27 (+7d) |  | 11d → 5d |  |
| CO-SU-FE-N-EL-210 | Junction Box for lighting fixture | 2026-12-22 → 2026-12-29 (+7d) | 2026-12-30 → 2027-01-06 (+7d) |  | -42d → -48d |  |
| CO-SU-FE-N-EL-220 | IR Intrusion Detection System Quad Beams | 2026-12-31 → 2027-01-07 (+7d) | 2027-01-09 → 2027-01-16 (+7d) |  | 3d → -3d |  |
| CO-SU-FE-N-EL-230 | Install of 38W, 230V, 1PH, 60Hz fence, led linear uplight lighting, IP66 | 2026-12-31 → 2027-01-07 (+7d) | 2027-01-10 → 2027-01-17 (+7d) |  | 2d → -4d |  |
| CO-SU-FE-N-EL-240 | Install, fixings, testing and commissioning 80W LED | 2027-01-11 → 2027-01-18 (+7d) | 2027-01-18 → 2027-01-25 (+7d) |  | 2d → -4d |  |
| 4 | **Architictural work** |  | 2026-12-28 → 2026-12-23 (-5d) |  |  |  |
| CO-SU-FE-N-AR-110 | External plastering to walls and columns |  | 2026-11-08 → 2026-11-05 A (-3d) | 40% → 100% | 21.49d → none |  |
| CO-SU-FE-N-AR-120 | Install 50mm thick random cut stone cladding |  |  | 95% → 80% | 21.49d → 16d |  |
| CO-SU-FE-N-AR-130 | Install 2 coats of weatherproof paint at walls |  | 2026-11-10 → 2026-11-09 A (-1d) | 20% → 100% | 21.49d → none | CO-SU-FE-N-AR-120 SS, CO-SU-FE-N-AR-120 FF → CO-SU-FE-N-AR-120 SS |
| CO-SU-FE-N-AR-150 | Install MODON Signage | 2026-12-20 → 2026-12-16 (-4d) | 2026-12-28 → 2026-12-23 (-5d) |  | 16.38d → 20d |  |
| 2 | **Western Fence P1 ( W01:W06 )** |  | 2027-03-22 → 2027-03-29 (+7d) |  |  |  |
| 1 | **Civil Work** |  | 2026-11-07 → 2026-11-12 (+5d) |  |  |  |
| CO-SU-FE-WP1-CI-180 | Pouring R.C Columns For Northern Fence |  | 2026-11-04 → 2026-11-11 (+7d) | 90% → 98% | -10d → -12d |  |
| CO-SU-FE-WP1-CI-190 | Pouring Beams For Northern Fence |  | 2026-11-07 → 2026-11-12 (+5d) | 87% → 90% | 37.15d → 40.93d |  |
| 5 | **Finishing Work** |  | 2027-03-22 → 2027-03-29 (+7d) |  |  |  |
| 3 | **Electrical Work** | 2026-11-12 → 2026-11-19 (+7d) | 2027-03-22 → 2027-03-29 (+7d) |  |  |  |
| CO-SU-FE-WP1-EL-260 | Trench excavation to receive 2 nos 50mm diameter PVC Conduit | 2026-11-12 → 2026-11-19 (+7d) | 2026-11-28 → 2026-12-05 (+7d) |  | -14d → -20d |  |
| CO-SU-FE-WP1-EL-320 | Trench excavation to receive 3 nos 50mm diameter PVC Conduit | 2026-11-12 → 2026-11-19 (+7d) | 2026-11-28 → 2026-12-05 (+7d) |  | -14d → -20d |  |
| CO-SU-FE-WP1-EL-300 | Fixing of Control cable,CAT6A cable | 2026-11-29 → 2026-12-06 (+7d) | 2026-12-14 → 2026-12-21 (+7d) |  | -14d → -20d |  |
| CO-SU-FE-WP1-EL-330 | Hot dipped galvanized cable conduits for CAT6A cable and Control Cables embedded to wall | 2026-11-29 → 2026-12-06 (+7d) | 2026-12-14 → 2026-12-21 (+7d) |  | -14d → -20d |  |
| CO-SU-FE-WP1-EL-310 | Install 800mm x 800mm x 800mm height concrete handhole | 2026-12-31 → 2027-01-07 (+7d) | 2027-01-16 → 2027-01-23 (+7d) |  | -42d → -48d |  |
| CO-SU-FE-WP1-EL-280 | Fixing Earthing Work (Earth Pit,Grounding rod,Tinned Copper wire) | 2027-01-17 → 2027-01-24 (+7d) | 2027-01-28 → 2027-02-04 (+7d) |  | -42d → -48d |  |
| CO-SU-FE-WP1-EL-340 | Field Equipment Cabinet enclosed outdoor complete with precast concrete footing, | 2027-01-30 → 2027-02-06 (+7d) | 2027-02-09 → 2027-02-18 (+9d) |  | -42d → -48d |  |
| CO-SU-FE-WP1-EL-350 | Fence Lightining 400V, 3PH, 60Hz lighting control panel (LCP-02) | 2027-01-30 → 2027-02-06 (+7d) | 2027-02-09 → 2027-02-18 (+9d) |  | -42d → -48d |  |
| CO-SU-FE-WP1-EL-360 | Install of direct buried armored cable 4C-16mm2 ,10mm2 | 2027-02-09 → 2027-02-18 (+9d) | 2027-02-21 → 2027-03-02 (+9d) |  | -42d → -48d |  |
| CO-SU-FE-WP1-EL-370 | Install 16mm2,10mm2 CU/PVC wire | 2027-02-09 → 2027-02-18 (+9d) | 2027-02-21 → 2027-03-02 (+9d) |  | -42d → -48d |  |
| CO-SU-FE-WP1-EL-390 | FEC-CCTV ( 4C-16mm2 CU/XLPE/PVC direct buried armored cable,16mm2 CU/PVC wire | 2027-02-09 → 2027-02-18 (+9d) | 2027-02-22 → 2027-03-03 (+9d) |  | -32d → -38d |  |
| CO-SU-FE-WP1-EL-250 | Junction Box for lighting fixture | 2027-02-22 → 2027-03-02 (+8d) | 2027-03-13 → 2027-03-20 (+7d) |  | -42d → -48d |  |
| CO-SU-FE-WP1-EL-290 | IR Intrusion Detection System Quad Beams | 2027-03-14 → 2027-03-21 (+7d) | 2027-03-17 → 2027-03-24 (+7d) |  | -42d → -48d |  |
| CO-SU-FE-WP1-EL-380 | Install of 38W, 230V, 1PH, 60Hz fence, led linear uplight lighting, IP66 | 2027-03-14 → 2027-03-21 (+7d) | 2027-03-17 → 2027-03-24 (+7d) |  | -39d → -45d |  |
| CO-SU-FE-WP1-EL-270 | Install, fixings, testing and commissioning 80W LED | 2027-03-18 → 2027-03-25 (+7d) | 2027-03-22 → 2027-03-29 (+7d) |  | -39d → -45d |  |
| 4 | **Architictural work** |  | 2027-01-06 → 2027-01-02 (-4d) |  |  |  |
| CO-SU-FE-WP1-AR-160 | Install Brick Work For Northern Fence |  | 2026-11-07 A | 90% → 100% | -10d → none | CO-SU-FE-WP1-CI-180 SS, CO-SU-FE-WP1-CI-180 FF → CO-SU-FE-WP1-CI-180 SS |
| CO-SU-FE-WP1-AR-170 | External plastering to walls and columns |  | 2026-11-10 → 2026-11-16 (+6d) | 20% → 50% | 48.8d → 49.78d |  |
| CO-SU-FE-WP1-AR-180 | Install 50mm thick random cut stone cladding |  | 2026-11-10 → 2026-11-16 (+6d) | 10% → 30% | 48.8d → 49.78d |  |
| CO-SU-FE-WP1-AR-190 | Install 2 coats of weatherproof paint at walls |  | 2026-11-12 → 2026-11-08 A (-4d) | 85% → 100% | 48.8d → none | CO-SU-FE-WP1-AR-180 SS, CO-SU-FE-WP1-AR-180 FF → CO-SU-FE-WP1-AR-180 SS |
| CO-SU-FE-WP1-AR-200 | Install Stone coping 500mm,525mm | 2026-11-12 → 2026-11-10 (-2d) | 2026-11-17 → 2026-11-15 (-2d) |  | 48.8d → 50.58d |  |
| CO-SU-FE-WP1-AR-210 | Install MODON Signage | 2026-12-28 → 2026-12-24 (-4d) | 2027-01-06 → 2027-01-02 (-4d) |  | 16.38d → 20d |  |
| 3 | **Western Fence P2 ( W07:W12 )** |  | 2027-04-03 → 2027-04-10 (+7d) |  |  |  |
| 1 | **Civil Work** |  | 2026-11-07 → 2026-11-12 (+5d) |  |  |  |
| CO-SU-FE-WP2-CI-230 | Pouring R.C Columns For Northern Fence |  | 2026-11-03 → 2026-11-10 (+7d) |  | 16.38d → 20d |  |
| CO-SU-FE-WP2-CI-240 | Pouring Beams For Northern Fence |  | 2026-11-07 → 2026-11-12 (+5d) |  | 37.15d → 40.93d |  |
| 5 | **Finishing Work** |  | 2027-04-03 → 2027-04-10 (+7d) |  |  |  |
| 3 | **Electrical Work** | 2026-11-04 → 2026-11-10 (+6d) | 2027-04-03 → 2027-04-10 (+7d) |  |  |  |
| CO-SU-FE-WP2-EL-410 | Trench excavation to receive 2 nos 50mm diameter PVC Conduit | 2026-11-04 → 2026-11-10 (+6d) | 2026-11-09 → 2026-11-14 (+5d) |  | 16.38d → 20d |  |
| CO-SU-FE-WP2-EL-470 | Trench excavation to receive 3 nos 50mm diameter PVC Conduit | 2026-11-04 → 2026-11-10 (+6d) | 2026-11-11 → 2026-11-16 (+5d) |  | 16.38d → 20d |  |
| CO-SU-FE-WP2-EL-450 | Fixing of Control cable,CAT6A cable | 2026-11-11 → 2026-11-17 (+6d) | 2026-11-19 → 2026-11-24 (+5d) |  | 16.38d → 20d |  |
| CO-SU-FE-WP2-EL-460 | Install 800mm x 800mm x 800mm height concrete handhole | 2026-11-11 → 2026-11-17 (+6d) | 2026-11-19 → 2026-11-24 (+5d) |  | 16.57d → 20.2d |  |
| CO-SU-FE-WP2-EL-480 | Hot dipped galvanized cable conduits for CAT6A cable and Control Cables embedded to wall | 2026-11-11 → 2026-11-17 (+6d) | 2026-11-18 → 2026-11-23 (+5d) |  | 17.38d → 21d |  |
| CO-SU-FE-WP2-EL-430 | Fixing Earthing Work (Earth Pit,Grounding rod,Tinned Copper wire) | 2026-11-19 → 2026-11-25 (+6d) | 2026-11-26 → 2026-12-01 (+5d) |  | 16.38d → 20d |  |
| CO-SU-FE-WP2-EL-490 | Field Equipment Cabinet enclosed outdoor complete with precast concrete footing, | 2026-11-26 → 2026-12-02 (+6d) | 2026-12-01 → 2026-12-06 (+5d) |  | 16.38d → 20d |  |
| CO-SU-FE-WP2-EL-510 | Install of direct buried armored cable 4C-16mm2 ,10mm2 | 2026-12-01 → 2026-12-07 (+6d) | 2026-12-10 → 2026-12-15 (+5d) |  | 16.88d → 20.5d |  |
| CO-SU-FE-WP2-EL-520 | Install 16mm2,10mm2 CU/PVC wire | 2026-12-01 → 2026-12-07 (+6d) | 2026-12-10 → 2026-12-15 (+5d) |  | 16.88d → 20.5d |  |
| CO-SU-FE-WP2-EL-540 | FEC-CCTV ( 4C-16mm2 CU/XLPE/PVC direct buried armored cable,16mm2 CU/PVC wire | 2026-12-01 → 2026-12-07 (+6d) | 2026-12-10 → 2026-12-15 (+5d) |  | 16.38d → 20d |  |
| CO-SU-FE-WP2-EL-400 | Junction Box for lighting fixture | 2026-12-10 → 2026-12-15 (+5d) | 2026-12-14 → 2026-12-19 (+5d) |  | 16.88d → 21.5d |  |
| CO-SU-FE-WP2-EL-440 | IR Intrusion Detection System Quad Beams | 2027-03-18 → 2027-03-25 (+7d) | 2027-03-25 → 2027-04-01 (+7d) |  | -42d → -48d |  |
| CO-SU-FE-WP2-EL-530 | Install of 38W, 230V, 1PH, 60Hz fence, led linear uplight lighting, IP66 | 2027-03-18 → 2027-03-25 (+7d) | 2027-03-25 → 2027-04-01 (+7d) |  | -42d → -48d |  |
| CO-SU-FE-WP2-EL-420 | Install, fixings, testing and commissioning 80W LED | 2027-03-27 → 2027-04-03 (+7d) | 2027-04-03 → 2027-04-10 (+7d) |  | -42d → -48d |  |
| 4 | **Architictural work** |  | 2027-01-16 → 2027-01-11 (-5d) |  |  |  |
| CO-SU-FE-WP2-AR-220 | Install Brick Work For Northern Fence |  | 2026-11-04 A | 90% → 100% | 16.38d → none | CO-SU-FE-WP2-CI-230 SS, CO-SU-FE-WP2-CI-230 FF → CO-SU-FE-WP2-CI-230 SS |
| CO-SU-FE-WP2-AR-230 | External plastering to walls and columns |  | 2026-12-10 → 2026-12-15 (+5d) | 15% → 50% | 16.38d → 20d |  |
| CO-SU-FE-WP2-AR-240 | Install 50mm thick random cut stone cladding |  | 2026-12-10 → 2026-12-15 (+5d) | 15% → 30% | 16.38d → 20d |  |
| CO-SU-FE-WP2-AR-250 | Install 2 coats of weatherproof paint at walls |  | 2026-12-10 → 2026-11-09 A (-31d) | 85% → 100% | 16.38d → none | CO-SU-FE-WP2-AR-240 SS, CO-SU-FE-WP2-AR-240 FF → CO-SU-FE-WP2-AR-240 SS |
| CO-SU-FE-WP2-AR-260 | Install Stone coping 500mm,525mm | 2026-12-10 → 2026-12-07 (-3d) | 2026-12-20 → 2026-12-15 (-5d) |  | 16.38d → 20d |  |
| CO-SU-FE-WP2-AR-270 | Install MODON Signage | 2027-01-06 → 2027-01-03 (-3d) | 2027-01-16 → 2027-01-11 (-5d) |  | 16.38d → 20d |  |

| ID | Task | Start | Finish | Complete | Total float | Predecessors |
| --- | --- | --- | --- | --- | --- | --- |
| 4 | **Southern Fence S01:S05** |  | 2027-04-11 → 2027-04-18 (+7d) |  |  |  |
| 1 | **Civil Work** |  | 2026-11-05 → 2026-11-12 (+7d) |  |  |  |
| CO-SU-FE-S-CI-270 | Pouring R.C Footing For Northern Fence |  | 2026-11-04 A | 85% → 100% | 10d → none |  |
| CO-SU-FE-S-CI-280 | Pouring R.C Columns For Northern Fence |  | 2026-11-04 → 2026-11-11 (+7d) |  | 10d → 13d |  |
| CO-SU-FE-S-CI-290 | Pouring Beams For Northern Fence |  | 2026-11-05 → 2026-11-12 (+7d) |  | 41.91d → 44.91d |  |
| 5 | **Finishing Work** |  | 2027-04-11 → 2027-04-18 (+7d) |  |  |  |
| 3 | **Electrical Work** | 2026-11-03 → 2026-11-10 (+7d) | 2027-04-11 → 2027-04-18 (+7d) |  |  |  |
| CO-SU-FE-S-EL-560 | Trench excavation to receive 2 nos 50mm diameter PVC Conduit | 2026-11-03 → 2026-11-10 (+7d) | 2026-11-19 → 2026-11-26 (+7d) |  | 10d → 13d |  |
| CO-SU-FE-S-EL-620 | Trench excavation to receive 3 nos 50mm diameter PVC Conduit | 2026-11-03 → 2026-11-10 (+7d) | 2026-11-19 → 2026-11-26 (+7d) |  | 10d → 13d |  |
| CO-SU-FE-S-EL-600 | Fixing of Control cable,CAT6A cable | 2026-11-21 → 2026-11-28 (+7d) | 2026-12-07 → 2026-12-14 (+7d) |  | 10d → 13d |  |
| CO-SU-FE-S-EL-610 | Install 800mm x 800mm x 800mm height concrete handhole | 2026-11-21 → 2026-11-28 (+7d) | 2026-12-07 → 2026-12-14 (+7d) |  | 10d → 13d |  |
| CO-SU-FE-S-EL-630 | Hot dipped galvanized cable conduits for CAT6A cable and Control Cables embedded to wall | 2026-11-21 → 2026-11-28 (+7d) | 2026-12-07 → 2026-12-14 (+7d) |  | 10d → 13d |  |
| CO-SU-FE-S-EL-580 | Fixing Earthing Work (Earth Pit,Grounding rod,Tinned Copper wire) | 2026-12-08 → 2026-12-15 (+7d) | 2026-12-14 → 2026-12-21 (+7d) |  | 10d → 13d |  |
| CO-SU-FE-S-EL-640 | Field Equipment Cabinet enclosed outdoor complete with precast concrete footing, | 2026-12-10 → 2026-12-17 (+7d) | 2026-12-14 → 2026-12-21 (+7d) |  | 10d → 13d |  |
| CO-SU-FE-S-EL-650 | Fence Lightining 400V, 3PH, 60Hz lighting control panel (LCP-02) | 2026-12-10 → 2026-12-17 (+7d) | 2026-12-14 → 2026-12-21 (+7d) |  | 10d → 13d |  |
| CO-SU-FE-S-EL-660 | Install of direct buried armored cable 4C-16mm2 ,10mm2 | 2026-12-10 → 2026-12-17 (+7d) | 2026-12-21 → 2026-12-28 (+7d) |  | 10d → 13d |  |
| CO-SU-FE-S-EL-670 | Install 16mm2,10mm2 CU/PVC wire | 2026-12-15 → 2026-12-22 (+7d) | 2026-12-21 → 2026-12-28 (+7d) |  | 10d → 13d |  |
| CO-SU-FE-S-EL-690 | FEC-CCTV ( 4C-16mm2 CU/XLPE/PVC direct buried armored cable,16mm2 CU/PVC wire | 2026-12-15 → 2026-12-22 (+7d) | 2026-12-22 → 2026-12-29 (+7d) |  | 13d → 19d |  |
| CO-SU-FE-S-EL-550 | Junction Box for lighting fixture | 2026-12-22 → 2026-12-29 (+7d) | 2026-12-29 → 2027-01-05 (+7d) |  | 10d → 13d |  |
| CO-SU-FE-S-EL-590 | IR Intrusion Detection System Quad Beams | 2027-03-14 → 2027-03-04 (-10d) | 2027-03-21 → 2027-03-16 (-5d) |  | -31d → -27d |  |
| CO-SU-FE-S-EL-680 | Install of 38W, 230V, 1PH, 60Hz fence, led linear uplight lighting, IP66 | 2027-03-27 → 2027-04-03 (+7d) | 2027-04-03 → 2027-04-10 (+7d) |  | -42d → -48d |  |
| CO-SU-FE-S-EL-570 | Install, fixings, testing and commissioning 80W LED | 2027-04-04 → 2027-04-11 (+7d) | 2027-04-11 → 2027-04-18 (+7d) |  | -42d → -48d |  |
| 4 | **Architictural work** |  | 2027-04-03 → 2027-03-29 (-5d) |  |  |  |
| CO-SU-FE-S-AR-280 | Install Brick Work For Northern Fence |  | 2026-11-07 → 2026-11-14 (+7d) |  | 10d → 13d |  |
| CO-SU-FE-S-AR-290 | External plastering to walls and columns |  | 2026-12-22 → 2026-12-29 (+7d) |  | 13d → 19d |  |
| CO-SU-FE-S-AR-310 | Install 2 coats of weatherproof paint at walls |  | 2027-03-13 → 2026-11-05 A (-128d) | 45% → 100% | -41d → none | CO-SU-FE-S-AR-300 FF, CO-SU-FE-WP1-EL-250 FF → CO-SU-FE-S-AR-300 SS |
| CO-SU-FE-S-AR-300 | Install 50mm thick random cut stone cladding | 2026-12-23 → 2026-11-04 A (-49d) |  | 0% → 10% | 13d → 19d | CO-SU-FE-S-AR-290 → CO-SU-FE-S-AR-290 SS, CO-SU-FE-S-AR-290 FF |
| CO-SU-FE-S-AR-320 | Install Stone coping 500mm,525mm | 2027-03-14 → 2027-03-04 (-10d) | 2027-03-24 → 2027-03-20 (-4d) |  | -41d → -37d | CO-SU-FE-S-AR-310 → CO-SU-FE-S-AR-310, CO-SU-FE-WP1-EL-250 FF |
| CO-SU-FE-S-AR-330 | Install MODON Signage | 2027-03-25 → 2027-03-21 (-4d) | 2027-04-03 → 2027-03-29 (-5d) |  | -33d → -29d |  |
| 5 | **Eastern Fence P1 ( E01:E06 )** |  | 2027-04-15 → 2027-04-22 (+7d) |  |  |  |
| 1 | **Civil Work** |  | 2026-11-08 → 2026-11-15 (+7d) |  |  |  |
| CO-SU-FE-EP1-CI-330 | Pouring R.C Columns For Northern Fence |  | 2026-11-08 → 2026-11-15 (+7d) | 80% → 98% | 32.12d → 35.12d |  |
| CO-SU-FE-EP1-CI-340 | Pouring Beams For Northern Fence |  | 2026-11-08 → 2026-11-15 (+7d) |  | 40.12d → 43.12d |  |
| 5 | **Finishing Work** |  | 2027-04-15 → 2027-04-22 (+7d) |  |  |  |
| 3 | **Electrical Work** | 2026-11-08 → 2026-11-15 (+7d) | 2027-04-15 → 2027-04-22 (+7d) |  |  |  |
| CO-SU-FE-EP1-EL-710 | Trench excavation to receive 2 nos 50mm diameter PVC Conduit | 2026-11-08 → 2026-11-15 (+7d) | 2026-11-12 → 2026-11-19 (+7d) |  | 32.12d → 35.12d |  |
| CO-SU-FE-EP1-EL-770 | Trench excavation to receive 3 nos 50mm diameter PVC Conduit | 2026-11-08 → 2026-11-15 (+7d) | 2026-11-12 → 2026-11-19 (+7d) |  | 32.12d → 35.12d |  |
| CO-SU-FE-EP1-EL-750 | Fixing of Control cable,CAT6A cable | 2026-11-12 → 2026-11-19 (+7d) | 2026-11-17 → 2026-11-24 (+7d) |  | 32.12d → 35.12d |  |
| CO-SU-FE-EP1-EL-760 | Install 800mm x 800mm x 800mm height concrete handhole | 2026-11-12 → 2026-11-19 (+7d) | 2026-11-17 → 2026-11-24 (+7d) |  | 32.12d → 35.12d |  |
| CO-SU-FE-EP1-EL-780 | Hot dipped galvanized cable conduits for CAT6A cable and Control Cables embedded to wall | 2026-11-12 → 2026-11-19 (+7d) | 2026-11-17 → 2026-11-24 (+7d) |  | 32.12d → 35.12d |  |
| CO-SU-FE-EP1-EL-730 | Fixing Earthing Work (Earth Pit,Grounding rod,Tinned Copper wire) | 2026-11-17 → 2026-11-24 (+7d) | 2026-11-24 → 2026-12-01 (+7d) |  | 32.12d → 35.12d |  |
| CO-SU-FE-EP1-EL-790 | Field Equipment Cabinet enclosed outdoor complete with precast concrete footing, | 2026-11-24 → 2026-12-01 (+7d) | 2026-11-29 → 2026-12-06 (+7d) |  | 32.12d → 35.12d |  |
| CO-SU-FE-EP1-EL-800 | Fence Lightining 400V, 3PH, 60Hz lighting control panel (LCP-02) | 2026-11-24 → 2026-12-01 (+7d) | 2026-11-29 → 2026-12-06 (+7d) |  | 32.12d → 35.12d |  |
| CO-SU-FE-EP1-EL-810 | Install of direct buried armored cable 4C-16mm2 ,10mm2 | 2026-11-29 → 2026-12-06 (+7d) | 2026-12-03 → 2026-12-10 (+7d) |  | 32.12d → 35.12d |  |
| CO-SU-FE-EP1-EL-820 | Install 16mm2,10mm2 CU/PVC wire | 2026-11-29 → 2026-12-06 (+7d) | 2026-12-03 → 2026-12-10 (+7d) |  | 32.12d → 35.12d |  |
| CO-SU-FE-EP1-EL-840 | FEC-CCTV ( 4C-16mm2 CU/XLPE/PVC direct buried armored cable,16mm2 CU/PVC wire | 2026-11-29 → 2026-12-06 (+7d) | 2026-12-03 → 2026-12-10 (+7d) |  | 37.12d → 49.12d |  |
| CO-SU-FE-EP1-EL-700 | Junction Box for lighting fixture | 2026-12-30 → 2027-01-06 (+7d) | 2027-01-02 → 2027-01-09 (+7d) |  | 10d → 13d |  |
| CO-SU-FE-EP1-EL-740 | IR Intrusion Detection System Quad Beams | 2027-03-22 → 2027-03-17 (-5d) | 2027-03-25 → 2027-03-21 (-4d) |  | -28d → -24d |  |
| CO-SU-FE-EP1-EL-830 | Install of 38W, 230V, 1PH, 60Hz fence, led linear uplight lighting, IP66 | 2027-03-22 → 2027-03-17 (-5d) | 2027-03-25 → 2027-03-21 (-4d) |  | -28d → -24d |  |
| CO-SU-FE-EP1-EL-720 | Install, fixings, testing and commissioning 80W LED | 2027-04-12 → 2027-04-19 (+7d) | 2027-04-15 → 2027-04-22 (+7d) |  | -42d → -48d |  |
| 4 | **Architictural work** |  | 2027-04-06 → 2027-04-01 (-5d) |  |  |  |
| CO-SU-FE-EP1-AR-340 | Install Brick Work For Northern Fence |  | 2026-11-08 → 2026-11-15 (+7d) | 85% → 90% | 32.12d → 35.12d |  |
| CO-SU-FE-EP1-AR-360 | Install 50mm thick random cut stone cladding |  | 2026-12-13 → 2026-12-10 (-3d) |  | 37.12d → 49.12d |  |
| CO-SU-FE-EP1-AR-370 | Install 2 coats of weatherproof paint at walls |  | 2026-12-13 → 2026-11-07 A (-36d) | 50% → 100% | 37.12d → none | CO-SU-FE-EP1-AR-360 SS, CO-SU-FE-EP1-AR-360 FF → CO-SU-FE-EP1-AR-360 SS |
| CO-SU-FE-EP1-AR-350 | External plastering to walls and columns | 2026-12-03 → 2026-11-04 A (-29d) | 2026-12-13 → 2026-12-10 (-3d) | 0% → 40% | 37.12d → 49.12d | CO-SU-FE-EP1-AR-340, CO-SU-FE-EP1-CI-340, CO-SU-FE-EP1-EL-840, CO-SU-FE-EP1-EL-820, CO-SU-FE-EP1-EL-810 → CO-SU-FE-EP1-AR-340 SS, CO-SU-FE-EP1-CI-340 SS, CO-SU-FE-EP1-EL-840 FF, CO-SU-FE-EP1-EL-820 FF, CO-SU-FE-EP1-EL-810 FF, CO-SU-FE-EP1-AR-340 FF, CO-SU-FE-EP1-CI-340 FF |
| CO-SU-FE-EP1-AR-380 | Install Stone coping 500mm,525mm | 2026-12-13 → 2026-11-05 A (-38d) | 2026-12-24 → 2026-11-09 A (-45d) | 0% → 100% | 37.12d → none |  |
| CO-SU-FE-EP1-AR-390 | Install MODON Signage | 2027-04-04 → 2027-03-30 (-5d) | 2027-04-06 → 2027-04-01 (-5d) |  | -33d → -29d |  |
| 6 | **Eastern Fence P2 ( E07:E13 )** |  | 2027-04-19 → 2027-04-26 (+7d) |  |  |  |
| 1 | **Civil Work** |  | 2026-11-11 → 2026-11-18 (+7d) |  |  |  |
| CO-SU-FE-EP2-CI-380 | Pouring R.C Columns For Northern Fence |  | 2026-11-08 → 2026-11-15 (+7d) | 85% → 95% | 46.38d → 44d |  |
| CO-SU-FE-EP2-CI-390 | Pouring Beams For Northern Fence |  | 2026-11-11 → 2026-11-18 (+7d) |  | 70.5d → 73.5d |  |
| 5 | **Finishing Work** |  | 2027-04-19 → 2027-04-26 (+7d) |  |  |  |
| 3 | **Electrical Work** | 2026-11-09 → 2026-11-12 (+3d) | 2027-04-19 → 2027-04-26 (+7d) |  |  |  |
| CO-SU-FE-EP2-EL-860 | Trench excavation to receive 2 nos 50mm diameter PVC Conduit | 2026-11-09 → 2026-11-12 (+3d) | 2026-11-14 → 2026-11-16 (+2d) |  | 52.38d → 59d |  |
| CO-SU-FE-EP2-EL-920 | Trench excavation to receive 3 nos 50mm diameter PVC Conduit | 2026-11-09 → 2026-11-12 (+3d) | 2026-11-14 → 2026-11-16 (+2d) |  | 52.38d → 59d |  |
| CO-SU-FE-EP2-EL-910 | Install 800mm x 800mm x 800mm height concrete handhole | 2026-11-14 → 2026-11-17 (+3d) | 2026-11-17 → 2026-11-19 (+2d) |  | 52.38d → 59d |  |
| CO-SU-FE-EP2-EL-930 | Hot dipped galvanized cable conduits for CAT6A cable and Control Cables embedded to wall | 2026-11-14 → 2026-11-17 (+3d) | 2026-11-17 → 2026-11-19 (+2d) |  | 52.38d → 59d |  |
| CO-SU-FE-EP2-EL-900 | Fixing of Control cable,CAT6A cable | 2027-01-03 → 2027-01-10 (+7d) | 2027-01-05 → 2027-01-12 (+7d) |  | 10d → 13d |  |
| CO-SU-FE-EP2-EL-880 | Fixing Earthing Work (Earth Pit,Grounding rod,Tinned Copper wire) | 2027-01-06 → 2027-01-13 (+7d) | 2027-01-09 → 2027-01-16 (+7d) |  | 10d → 13d |  |
| CO-SU-FE-EP2-EL-940 | Field Equipment Cabinet enclosed outdoor complete with precast concrete footing, | 2027-01-10 → 2027-01-17 (+7d) | 2027-01-13 → 2027-01-20 (+7d) |  | 10d → 13d |  |

| ID | Task | Start | Finish | Complete | Total float | Predecessors |
| --- | --- | --- | --- | --- | --- | --- |
| CO-SU-FE-EP2-EL-950 | Fence Lightining 400V, 3PH, 60Hz lighting control panel (LCP-02) | 2027-01-10 → 2027-01-17 (+7d) | 2027-01-13 → 2027-01-20 (+7d) |  | 10d → 13d |  |
| CO-SU-FE-EP2-EL-960 | Install of direct buried armored cable 4C-16mm2 ,10mm2 | 2027-01-14 → 2027-01-21 (+7d) | 2027-01-17 → 2027-01-24 (+7d) |  | 10d → 13d |  |
| CO-SU-FE-EP2-EL-970 | Install 16mm2,10mm2 CU/PVC wire | 2027-01-14 → 2027-01-21 (+7d) | 2027-01-17 → 2027-01-24 (+7d) |  | 10d → 13d |  |
| CO-SU-FE-EP2-EL-990 | FEC-CCTV ( 4C-16mm2 CU/XLPE/PVC direct buried armored cable,16mm2 CU/PVC wire | 2027-01-14 → 2027-01-21 (+7d) | 2027-01-20 → 2027-01-27 (+7d) |  | 10d → 13d |  |
| CO-SU-FE-EP2-EL-850 | Junction Box for lighting fixture | 2027-01-18 → 2027-01-25 (+7d) | 2027-01-20 → 2027-01-27 (+7d) |  | 10d → 13d |  |
| CO-SU-FE-EP2-EL-890 | IR Intrusion Detection System Quad Beams | 2027-03-27 → 2027-03-22 (-5d) | 2027-03-29 → 2027-03-24 (-5d) |  | -27d → -23d |  |
| CO-SU-FE-EP2-EL-980 | Install of 38W, 230V, 1PH, 60Hz fence, led linear uplight lighting, IP66 | 2027-03-27 → 2027-03-22 (-5d) | 2027-03-29 → 2027-03-24 (-5d) |  | -27d → -23d |  |
| CO-SU-FE-EP2-EL-870 | Install, fixings, testing and commissioning 80W LED | 2027-04-17 → 2027-04-24 (+7d) | 2027-04-19 → 2027-04-26 (+7d) |  | -42d → -48d |  |
| 4 | **Architictural work** |  | 2027-04-08 → 2027-04-04 (-4d) |  |  |  |
| CO-SU-FE-EP2-AR-400 | Install Brick Work For Northern Fence |  | 2026-11-09 → 2026-11-05 A (-4d) | 80% → 100% | 46.38d → none | CO-SU-FE-EP2-CI-380 SS, CO-SU-FE-EP2-CI-380 FF → CO-SU-FE-EP2-CI-380 SS |
| CO-SU-FE-EP2-AR-410 | External plastering to walls and columns |  | 2027-01-20 → 2027-01-27 (+7d) | 20% → 40% | 10d → 13d |  |
| CO-SU-FE-EP2-AR-430 | Install 2 coats of weatherproof paint at walls |  | 2027-01-26 → 2026-11-07 A (-80d) | 50% → 100% | 10d → none | CO-SU-FE-EP2-AR-420 FF → CO-SU-FE-EP2-AR-420 SS |
| CO-SU-FE-EP2-AR-440 | Install Stone coping 500mm,525mm | 2027-03-04 → 2026-11-04 A (-120d) | 2027-03-14 → 2026-11-09 A (-125d) | 0% → 100% | -16.4d → none | CO-SU-FE-EP2-AR-430, MS-CF-SW → CO-SU-FE-EP2-AR-430 |
| CO-SU-FE-EP2-AR-420 | Install 50mm thick random cut stone cladding | 2027-01-21 → 2026-11-05 A (-77d) | 2027-01-26 → 2027-01-27 (+1d) | 0% → 10% | 10d → 13d | CO-SU-FE-EP2-AR-410 → CO-SU-FE-EP2-AR-410 SS, CO-SU-FE-EP2-AR-410 FF |
| CO-SU-FE-EP2-AR-450 | Install MODON Signage | 2027-04-07 → 2027-04-03 (-4d) | 2027-04-08 → 2027-04-04 (-4d) |  | -33d → -29d | CO-SU-FE-EP2-AR-440, CO-SU-FE-EP1-AR-390 → CO-SU-FE-EP2-AR-440, CO-SU-FE-EP1-AR-390, MS-CF-SW |
| TC | **Testing and Comissioning** | 2026-11-03 → 2026-11-10 (+7d) | 2027-06-06 → 2027-06-12 (+6d) |  |  |  |
| INF | **Infrastructure Networks** | 2027-04-26 → 2027-05-01 (+5d) | 2027-06-06 → 2027-06-12 (+6d) |  |  |  |
| PW1 | **Irrigation Network** | 2027-05-23 → 2027-05-29 (+6d) | 2027-05-29 → 2027-06-02 (+4d) |  |  |  |
| T/C-IR | Testing and Commissioning of Irrigation Network | 2027-05-23 → 2027-05-29 (+6d) | 2027-05-29 → 2027-06-02 (+4d) |  | -83.5d → -88d |  |
| PW11 | **TSE Network** | 2027-05-06 → 2027-05-11 (+5d) | 2027-05-29 → 2027-06-03 (+5d) |  |  |  |
| T/C-TSE-10 | Testing and Commissioning of TSE Network | 2027-05-06 → 2027-05-11 (+5d) | 2027-05-29 → 2027-06-03 (+5d) |  | -76d → -80.5d |  |
| PW | **Potable Water Network** | 2027-05-23 → 2027-05-29 (+6d) | 2027-05-30 → 2027-06-03 (+4d) |  |  |  |
| T/C-PW | Testing and Commissioning of Potable Water Network | 2027-05-23 → 2027-05-29 (+6d) | 2027-05-30 → 2027-06-03 (+4d) |  | -83.5d → -88d |  |
| SW | **Sewage Network** | 2027-05-06 → 2027-05-11 (+5d) | 2027-05-09 → 2027-05-20 (+11d) |  |  |  |
| T/C-SW | Testing and Commissioning of Sewage Network | 2027-05-06 → 2027-05-11 (+5d) | 2027-05-09 → 2027-05-20 (+11d) |  | -83.5d → -88d |  |
| SD | **Storm Drainage Network** | 2027-04-26 → 2027-05-01 (+5d) | 2027-05-05 → 2027-05-11 (+6d) |  |  |  |
| T/C-SD | Testing and Commissioning of Storm Drainage Network | 2027-04-26 → 2027-05-01 (+5d) | 2027-05-05 → 2027-05-11 (+6d) |  | -83.5d → -88d |  |
| SL | **Street Lighting Network** | 2027-05-29 → 2027-06-03 (+5d) | 2027-06-05 → 2027-06-09 (+4d) |  |  |  |
| T/C-SL | Testing and Commissioning of Street Lighting Network | 2027-05-29 → 2027-06-03 (+5d) | 2027-06-05 → 2027-06-09 (+4d) |  | -83.5d → -88d |  |
| TE | **Telecom Network** | 2027-05-11 → 2027-05-23 (+12d) | 2027-05-13 → 2027-05-25 (+12d) |  |  |  |
| T/C-TE | Testing and Commissioning of Telecom Network | 2027-05-11 → 2027-05-23 (+12d) | 2027-05-13 → 2027-05-25 (+12d) |  | -86d → -91d |  |
| MV | **Medium Voltage Network** | 2027-05-11 → 2027-05-23 (+12d) | 2027-06-01 → 2027-06-07 (+6d) |  |  |  |
| T/C-MV | Testing and Commissioning of Medium Voltage Network | 2027-05-11 → 2027-05-23 (+12d) | 2027-06-01 → 2027-06-07 (+6d) |  | -86d → -91d |  |
| RD | **Road Works** | 2027-06-02 → 2027-06-08 (+6d) | 2027-06-06 → 2027-06-12 (+6d) |  |  |  |
| T/C-RD | Testing and Commissioning of Road Works | 2027-06-02 → 2027-06-08 (+6d) | 2027-06-06 → 2027-06-12 (+6d) |  | -81d → -86d |  |
| 1 | **Utility Buildings** | 2026-11-03 → 2026-11-10 (+7d) | 2027-05-30 → 2027-06-03 (+4d) |  |  |  |
| T/C-DPO | Testing and Commissioning of Storm Drainage Ponds | 2026-11-03 → 2026-11-10 (+7d) | 2026-11-03 → 2026-11-10 (+7d) |  | 79d → 73d |  |
| T/C-CTV | Testing and Commissioning of Guard Room and Fence | 2027-03-22 → 2027-03-29 (+7d) | 2027-03-22 → 2027-03-29 (+7d) |  | -17.5d → -23.5d |  |
| T/C-SPS | Testing and Commissioning of Sewage Pump Stations& soft scape and planting work | 2027-05-30 → 2027-06-03 (+4d) | 2027-05-30 → 2027-06-03 (+4d) |  | -72d → -76.5d |  |
| 1 | **Handing over and close out** | 2026-11-03 → 2026-11-10 (+7d) | 2027-06-15 → 2027-06-21 (+6d) |  |  |  |
| 2 | **As-Built** | 2026-11-03 → 2026-11-10 (+7d) | 2027-06-15 → 2027-06-21 (+6d) |  |  |  |
| HO-130 | Submission As-Built Drawing For Pond | 2026-11-03 → 2026-11-10 (+7d) | 2026-11-18 → 2026-11-25 (+7d) |  | 79d → 73d |  |
| HO-100 | Submission As-Built Drawing For Sewage Network | 2027-05-10 → 2027-05-20 (+10d) | 2027-05-31 → 2027-06-06 (+6d) |  | -73d → -77.5d |  |
| HO-160 | Submission As-Built Drawing For Telecom Network | 2027-05-20 → 2027-05-26 (+6d) | 2027-06-02 → 2027-06-08 (+6d) |  | -75d → -80d |  |
| HO-180 | Submission As-Built Drawing For Irrigation Network | 2027-05-29 → 2027-06-03 (+5d) | 2027-06-12 → 2027-06-16 (+4d) |  | -82.5d → -87d |  |
| HO-210 | Submission As-Built Drawing For Pump station | 2027-05-30 → 2027-06-03 (+4d) | 2027-05-30 → 2027-06-05 (+6d) |  | -72d → -76.5d |  |
| HO-190 | As-Built Drawing For Potable Water Network | 2027-05-30 → 2027-06-05 (+6d) | 2027-06-13 → 2027-06-17 (+4d) |  | -83.5d → -88d |  |
| HO-170 | Submission As-Built Drawing For Medium Voltage Network | 2027-06-02 → 2027-06-08 (+6d) | 2027-06-15 → 2027-06-21 (+6d) |  | -86d → -91d |  |
| HO-150 | Submission As-Built Drawing For Street Lighting Network | 2027-06-05 → 2027-06-10 (+5d) | 2027-06-13 → 2027-06-17 (+4d) |  | -83.5d → -88d |  |
| HO-140 | Submission As-Built Drawing For Roads Network | 2027-06-07 → 2027-06-13 (+6d) | 2027-06-09 → 2027-06-15 (+6d) |  | -81d → -86d |  |
| 1 | **De-Mobilization Works** | 2027-06-05 → 2027-06-10 (+5d) | 2027-06-10 → 2027-06-15 (+5d) |  |  |  |
| HO-230 | Remove Temporary Car Shades | 2027-06-05 → 2027-06-10 (+5d) | 2027-06-10 → 2027-06-15 (+5d) |  | -81.5d → -86d |  |
| 3 | **Handing Over** | 2027-06-07 → 2027-06-13 (+6d) | 2027-06-09 → 2027-06-15 (+6d) |  |  |  |
| HO-250 | Review B.O.Q Qty. to ensure compliance with the actual status | 2027-06-07 → 2027-06-13 (+6d) | 2027-06-09 → 2027-06-15 (+6d) |  | -81d → -86d |  |

## Version 9 (data date 2026-11-17, saved 2026-11-16, file MOD3-3147-BL0-R0-6UPDATE 17-11-2026.xer)

Last finish 2027-06-21 → 2027-06-27 (+6d). Complete tasks 367 → 380.

Changed:

| ID | Task | Start | Finish | Total float |
| --- | --- | --- | --- | --- |
| MS | **Key Milestones** |  | 2027-06-21 → 2027-06-27 (+6d) |  |
| CM | **Contractual Milestones** |  | 2027-06-21 → 2027-06-27 (+6d) |  |
| MS-CF-SW | Completion of Construction Works for Sewage Network | 2027-02-09 → 2027-02-04 (-5d) | 2027-02-09 → 2027-02-04 (-5d) | -18.5d → -15.5d |
| MS-CF-SD | Completion of Construction Works for Storm Drainage Network | 2027-03-31 → 2027-03-13 (-18d) | 2027-03-31 → 2027-03-13 (-18d) | -61.69d → -46.5d |
| MS-CF-IR | Completion of Construction Works for Irrigation Network | 2027-04-17 → 2027-04-21 (+4d) | 2027-04-17 → 2027-04-21 (+4d) | -46.5d → -51d |
| MS-CF-TSE | Completion of Construction Works for Treated Sewage Effluent Network | 2027-04-29 → 2027-05-05 (+6d) | 2027-04-29 → 2027-05-05 (+6d) | -58d → -62.5d |
| MS-CF-PW | Completion of Construction Works for Potable Water Network | 2027-05-03 → 2027-05-10 (+7d) | 2027-05-03 → 2027-05-10 (+7d) | -61d → -67d |
| MS-CF-MV | Completion of Construction Works for Medium Voltage Network | 2027-05-06 → 2027-05-12 (+6d) | 2027-05-06 → 2027-05-12 (+6d) | -83d → -87.75d |
| MS-CF-SL | Completion of Construction Works for Street Lighting Network | 2027-05-13 → 2027-05-26 (+13d) | 2027-05-13 → 2027-05-26 (+13d) | -76d → -82d |
| MS-CF-TE | Completion of Construction Works for Telecom Network | 2027-05-22 → 2027-05-27 (+5d) | 2027-05-22 → 2027-05-27 (+5d) | -91d → -95.5d |
| MS-CF-RD | Completion of Construction Works for Road Works | 2027-06-06 → 2027-06-13 (+7d) | 2027-06-06 → 2027-06-13 (+7d) | -77.5d → -83.5d |
| MS-CF-PF | Project Completion Date | 2027-06-21 → 2027-06-27 (+6d) | 2027-06-21 → 2027-06-27 (+6d) | -91d → -95.5d |
| PROC | **Procurement Cycle** |  | 2027-05-11 → 2027-05-23 (+12d) |  |
| NLL | **Short Lead Time Items** |  | 2027-04-21 → 2027-04-28 (+7d) |  |
| INF | **Infrastructure Networks** |  | 2027-04-21 → 2027-04-28 (+7d) |  |
| RD | **Road Works** |  | 2026-11-10 → 2026-11-17 (+7d) |  |
| DL | **Material Delivery & Site Inspection** |  | 2026-11-10 → 2026-11-17 (+7d) |  |
| 1 | **Pre-Bituminous Construction** |  | 2026-11-10 → 2026-11-17 (+7d) |  |
| PRO-R25-RD-DL-100 | Material Delivery & Site Inspection for Subgrade of Road Works |  | 2026-11-10 → 2026-11-17 (+7d) | 20.5d → 14.5d |
| PRO-R25-RD-DL-110 | Material Delivery & Site Inspection for Aggregate Base Course of Road Works | 2026-11-10 → 2026-11-17 (+7d) | 2026-11-10 → 2026-11-17 (+7d) | 34d → 28d |
| 4 | **Bituminous Construction** | 2026-11-10 → 2026-11-17 (+7d) | 2026-11-10 → 2026-11-17 (+7d) |  |
| PRO-R25-RD-DL-160 | Material Delivery & Site Inspection for Prime Coat of Road Works | 2026-11-10 → 2026-11-17 (+7d) | 2026-11-10 → 2026-11-17 (+7d) | 49d → 43d |
| PRO-R25-RD-DL-170 | Material Delivery & Site Inspection for Bituminous Base & Wearing Courses of Road Works | 2026-11-10 → 2026-11-17 (+7d) | 2026-11-10 → 2026-11-17 (+7d) | 56d → 50d |
| 2 | **Pavement Works** | 2026-11-10 → 2026-11-17 (+7d) | 2026-11-10 → 2026-11-17 (+7d) |  |
| PRO-R25-RD-DL-120 | Material Delivery & Site Inspection of Interlock Tiles for Landscaping | 2026-11-10 → 2026-11-17 (+7d) | 2026-11-10 → 2026-11-17 (+7d) | 47d → 41d |
| PRO-R25-RD-DL-130 | Material Delivery & Site Inspection of Curbstones for Landscaping | 2026-11-10 → 2026-11-17 (+7d) | 2026-11-10 → 2026-11-17 (+7d) | 34.8d → 28.8d |
| 3 | **Traffic Signs Boards and Roads Marking** | 2026-11-10 → 2026-11-17 (+7d) | 2026-11-10 → 2026-11-17 (+7d) |  |
| PRO-R25-RD-DL-140 | Material Delivery & Site Inspection of Traffic Signs Boards For Road Works | 2026-11-10 → 2026-11-17 (+7d) | 2026-11-10 → 2026-11-17 (+7d) | 73d → 67d |
| PRO-R25-RD-DL-150 | Material Delivery & Site Inspection of Road Markings For Road Works | 2026-11-10 → 2026-11-17 (+7d) | 2026-11-10 → 2026-11-17 (+7d) | 66d → 60d |
| IR1 | **Softscape and Planting Works** | 2026-11-10 → 2026-11-17 (+7d) | 2027-03-21 → 2027-03-25 (+4d) |  |
| PO | **Issuance of Purchase Orders** | 2026-11-10 → 2026-11-17 (+7d) | 2026-11-16 → 2026-11-23 (+7d) |  |
| 1 | **Main Line Pipes** | 2026-11-10 → 2026-11-17 (+7d) | 2026-11-16 → 2026-11-23 (+7d) |  |
| PRO-IR-PO-140 | Issuance of Purchase Order for Softscape and Planting Works | 2026-11-10 → 2026-11-17 (+7d) | 2026-11-16 → 2026-11-23 (+7d) | -88.25d → -94.25d |
| PRO-IR-PO-150 | Issuance of Purchase Order for Site Furnishings (Seating Bench,Stone Boulders and Gravel) | 2026-11-10 → 2026-11-17 (+7d) | 2026-11-16 → 2026-11-23 (+7d) | -86d → -92d |
| MF | **Manufacturing of Material** | 2026-11-17 → 2026-11-24 (+7d) | 2027-02-14 → 2027-02-21 (+7d) |  |
| 1 | **Main Line Pipes** | 2026-11-17 → 2026-11-24 (+7d) | 2027-02-14 → 2027-02-21 (+7d) |  |
| PRO-IR-MF-140 | Manufacturing of Softscape and Planting Works | 2026-11-17 → 2026-11-24 (+7d) | 2027-02-14 → 2027-02-21 (+7d) | -104.5d → -111.5d |
| PRO-IR-MF-150 | Manufacturing of Valves for Site Furnishings (Seating Bench,Stone Boulders and Gravel) | 2026-11-17 → 2026-11-24 (+7d) | 2027-02-14 → 2027-02-21 (+7d) | -101.5d → -108.5d |
| 1DL | **1st Material Delivery & Site Inspection** | 2027-02-15 → 2027-02-22 (+7d) | 2027-02-23 → 2027-03-02 (+7d) |  |
| 1 | **Main Line Pipes** | 2027-02-15 → 2027-02-22 (+7d) | 2027-02-23 → 2027-03-02 (+7d) |  |
| PRO-IR-1DL-140 | 1ST Material Delivery for Softscape and Planting Works | 2027-02-15 → 2027-02-22 (+7d) | 2027-02-23 → 2027-03-02 (+7d) | -88d → -92.5d |
| PRO-IR-1DL-150 | 1ST Material Delivery for Site Furnishings (Seating Bench,Stone Boulders and Gravel) | 2027-02-15 → 2027-02-22 (+7d) | 2027-02-23 → 2027-03-02 (+7d) | -85d → -89.5d |
| DL | **Material Delivery & Site Inspection** | 2027-02-23 → 2027-03-02 (+7d) | 2027-03-21 → 2027-03-25 (+4d) |  |
| 1 | **Main Line Pipes** | 2027-02-23 → 2027-03-02 (+7d) | 2027-03-21 → 2027-03-25 (+4d) |  |
| PRO-R25-IR-DL-140 | Material Delivery & Site Inspection of Softscape and Planting Works | 2027-02-23 → 2027-03-02 (+7d) | 2027-03-16 → 2027-03-21 (+5d) | -88d → -92.5d |
| PRO-R25-IR-DL-150 | Material Delivery & Site Inspection of Site Furnishings (Seating Bench,Stone Boulders and Gravel) | 2027-02-23 → 2027-03-02 (+7d) | 2027-03-21 → 2027-03-25 (+4d) | -85d → -89.5d |
| SW | **Sewage Network** |  | 2027-01-16 → 2027-01-23 (+7d) |  |
| MF | **Manufacturing of Material** |  | 2026-12-09 → 2026-12-16 (+7d) |  |
| 3 | **Testing and Finishes** |  | 2026-12-09 → 2026-12-16 (+7d) |  |
| PRO-SW-MF-120 | Manufacturing of Manhole Covers for Sewage Network |  | 2026-12-09 → 2026-12-16 (+7d) | -10.5d → -17.5d |
| 1DL | **1st Material Delivery & Site Inspection** |  | 2026-12-16 → 2026-12-23 (+7d) |  |
| 3 | **Testing and Finishes** | 2026-12-10 → 2026-12-17 (+7d) | 2026-12-16 → 2026-12-23 (+7d) |  |
| PRO-SW-1DL-120 | 1ST Material Delivery for Manholes Covers of Sewage Network | 2026-12-10 → 2026-12-17 (+7d) | 2026-12-16 → 2026-12-23 (+7d) | -9.5d → -15.5d |
| DL | **Material Delivery & Site Inspection** |  | 2027-01-16 → 2027-01-23 (+7d) |  |
| 1 | **Main Line Sections** |  | 2026-11-10 → 2026-11-17 (+7d) |  |
| PRO-R25-SW-DL-110 | Material Delivery & Site Inspection of Manholes for Sewage Network |  | 2026-11-10 → 2026-11-17 (+7d) | -47.5d → -31.5d |
| 3 | **Testing and Finishes** | 2026-12-17 → 2026-12-24 (+7d) | 2027-01-16 → 2027-01-23 (+7d) |  |
| PRO-R25-SW-DL-120 | Material Delivery & Site Inspection of Manholes Covers for Sewage Network | 2026-12-17 → 2026-12-24 (+7d) | 2027-01-16 → 2027-01-23 (+7d) | -9.5d → -15.5d |
| SD | **Storm Drainage Network** |  | 2027-04-20 → 2027-04-25 (+5d) |  |
| 1DL | **1st Material Delivery & Site Inspection** |  | 2026-11-16 → 2026-11-23 (+7d) |  |
| 3 | **Testing and Finishes** | 2026-11-10 → 2026-11-17 (+7d) | 2026-11-16 → 2026-11-23 (+7d) |  |
| PRO-SD-1DL-140 | 1ST Material Delivery for Manholes Covers of Storm Drainage Network | 2026-11-10 → 2026-11-17 (+7d) | 2026-11-16 → 2026-11-23 (+7d) | 12.5d → 6.5d |
| PRO-SD-1DL-150 | 1ST Material Delivery for Catch Basin Covers of Storm Drainage Network | 2026-11-10 → 2026-11-17 (+7d) | 2026-11-16 → 2026-11-23 (+7d) | 8.5d → 2.5d |
| DL | **Material Delivery & Site Inspection** |  | 2027-04-20 → 2027-04-25 (+5d) |  |
| 1 | **Main Line Sections** |  | 2026-11-10 → 2026-11-17 (+7d) |  |
| PRO-R25-SD-DL-100 | Material Delivery & Site Inspection of Manholes of Storm Drainage Network |  | 2026-11-10 → 2026-11-17 (+7d) | -67.69d → -48.5d |
| 2 | **Catch Basin Sections** |  | 2026-11-10 → 2026-11-17 (+7d) |  |
| PRO-R25-SD-DL-110 | Material Delivery & Site Inspection of Catch Basin Pipes for Storm Drainage Network |  | 2026-11-10 → 2026-11-17 (+7d) | -52.5d → -38.5d |
| PRO-R25-SD-DL-130 | Material Delivery & Site Inspection of Catch Basins for Storm Drainage Network |  | 2026-11-10 → 2026-11-17 (+7d) | -52.5d → -38.5d |
| 3 | **Testing and Finishes** | 2026-11-17 → 2026-11-24 (+7d) | 2027-04-20 → 2027-04-25 (+5d) |  |

| ID | Task | Start | Finish | Total float |
| --- | --- | --- | --- | --- |
| PRO-R25-SD-DL-150 | Material Delivery & Site Inspection of Catch Basin Covers for Storm Drainage Network | 2026-11-17 → 2026-11-24 (+7d) | 2026-12-09 → 2026-12-16 (+7d) | 8.5d → 2.5d |
| PRO-R25-SD-DL-140 | Material Delivery & Site Inspection of Manholes Covers for Storm Drainage Network | 2027-03-21 → 2027-03-27 (+6d) | 2027-04-20 → 2027-04-25 (+5d) | -85d → -89.5d |
| PW | **Potable Water Network** |  | 2027-04-21 → 2027-04-28 (+7d) |  |
| PO | **Issuance of Purchase Orders** |  | 2026-11-21 → 2026-11-28 (+7d) |  |
| 4 | **Testing and Finishes** | 2026-11-10 → 2026-11-17 (+7d) | 2026-11-21 → 2026-11-28 (+7d) |  |
| PRO-PW-PO-130 | Issuance of Purchase Order for Surface Box of Potable Water Network | 2026-11-10 → 2026-11-17 (+7d) | 2026-11-21 → 2026-11-28 (+7d) | -75.75d → -81.75d |
| MF | **Manufacturing of Material** |  | 2027-03-15 → 2027-03-22 (+7d) |  |
| 4 | **Testing and Finishes** | 2026-11-22 → 2026-11-29 (+7d) | 2027-03-15 → 2027-03-22 (+7d) |  |
| PRO-PW-MF-130 | Manufacturing for Surface Box of Potable Water Network | 2026-11-22 → 2026-11-29 (+7d) | 2027-03-15 → 2027-03-22 (+7d) | -90d → -97d |
| 1DL | **1st Material Delivery & Site Inspection** |  | 2027-03-22 → 2027-03-29 (+7d) |  |
| 1 | **Main Line Sections** |  | 2026-11-10 → 2026-11-17 (+7d) |  |
| PRO-PW-1DL-100_R | 1ST Material Delivery for Main Line Pipes of Potable Water Network(Remaining) |  | 2026-11-10 → 2026-11-17 (+7d) | -67d → -73d |
| 4 | **Testing and Finishes** | 2027-03-16 → 2027-03-23 (+7d) | 2027-03-22 → 2027-03-29 (+7d) |  |
| PRO-PW-1DL-130 | 1ST Material Delivery for Finishes of Potable Water Network | 2027-03-16 → 2027-03-23 (+7d) | 2027-03-22 → 2027-03-29 (+7d) | -72d → -78d |
| DL | **Material Delivery & Site Inspection** |  | 2027-04-21 → 2027-04-28 (+7d) |  |
| 1 | **Main Line Sections** |  | 2027-01-17 → 2027-01-24 (+7d) |  |
| PRO-R25-PW-DL-100_R | Material Delivery & Site Inspection of Main Line Pipes for Potable Water Network(Remaining) |  | 2027-01-17 → 2027-01-24 (+7d) | -67d → -73d |
| PRO-R25-PW-DL-110 | Material Delivery & Site Inspection of Valves for Potable Water Network |  | 2026-11-10 → 2026-11-17 (+7d) | 7.5d → 1.5d |
| 3 | **Fire Hydrant** |  | 2026-11-10 → 2026-11-17 (+7d) |  |
| PRO-R25-PW-DL-120 | Material Delivery & Site Inspection of Fire Hydrants for Potable Water Network |  | 2026-11-10 → 2026-11-17 (+7d) | 17.5d → 11.5d |
| 4 | **Testing and Finishes** | 2027-03-23 → 2027-03-30 (+7d) | 2027-04-21 → 2027-04-28 (+7d) |  |
| PRO-R25-PW-DL-130 | Material Delivery & Site Inspection for Finishes of Potable Water Network | 2027-03-23 → 2027-03-30 (+7d) | 2027-04-21 → 2027-04-28 (+7d) | -72d → -78d |
| IR | **Irrigation Network** |  | 2027-02-23 → 2027-03-02 (+7d) |  |
| PO | **Issuance of Purchase Orders** |  | 2026-11-16 → 2026-11-23 (+7d) |  |
| 1 | **Main Line Pipes** |  | 2026-11-16 → 2026-11-23 (+7d) |  |
| PRO-IR-PO-110 | Issuance of Purchase Order for Valves of Irrigation Network | 2026-11-10 → 2026-11-17 (+7d) | 2026-11-16 → 2026-11-23 (+7d) | -78.25d → -84.25d |
| MF | **Manufacturing of Material** |  | 2027-02-14 → 2027-02-21 (+7d) |  |
| 1 | **Main Line Pipes** |  | 2027-02-14 → 2027-02-21 (+7d) |  |
| PRO-IR-MF-110 | Manufacturing of Valves for Irrigation Network | 2026-11-17 → 2026-11-24 (+7d) | 2027-02-14 → 2027-02-21 (+7d) | -92.5d → -99.5d |
| 1DL | **1st Material Delivery & Site Inspection** |  | 2027-02-23 → 2027-03-02 (+7d) |  |
| 1 | **Main Line Pipes** |  | 2027-02-23 → 2027-03-02 (+7d) |  |
| PRO-IR-1DL-100 | 1ST Material Delivery for Main Line Pipes of Irrigation Network |  | 2026-11-14 → 2026-11-21 (+7d) | -13.5d → -19.5d |
| PRO-IR-1DL-110 | 1ST Material Delivery for Valves of Irrigation Network | 2027-02-15 → 2027-02-22 (+7d) | 2027-02-23 → 2027-03-02 (+7d) | -78d → -82.5d |
| DL | **Material Delivery & Site Inspection** | 2026-11-14 → 2026-11-21 (+7d) | 2027-02-23 → 2027-03-02 (+7d) |  |
| 1 | **Main Line Pipes** | 2026-11-14 → 2026-11-21 (+7d) | 2027-02-23 → 2027-03-02 (+7d) |  |
| PRO-R25-IR-DL-100 | Material Delivery & Site Inspection of Main Line Pipes for Irrigation Network | 2026-11-14 → 2026-11-21 (+7d) | 2026-11-14 → 2026-11-21 (+7d) | -13.5d → -19.5d |
| PRO-R25-IR-DL-110 | Material Delivery & Site Inspection of Valves for Irrigation Network | 2027-02-23 → 2027-03-02 (+7d) | 2027-02-23 → 2027-03-02 (+7d) | -78d → -82.5d |
| TSE | **Treated Sewage Effluent (Tse)** |  | 2027-02-23 → 2027-03-02 (+7d) |  |
| PO | **Issuance of Purchase Orders** |  | 2026-11-16 → 2026-11-23 (+7d) |  |
| 1 | **Main Line Pipes** |  | 2026-11-16 → 2026-11-23 (+7d) |  |
| PRO-TSE-PO-130 | Issuance of Purchase Order for Valves of Treated Sewage Effluent (Tse) | 2026-11-10 → 2026-11-17 (+7d) | 2026-11-16 → 2026-11-23 (+7d) | -77.25d → -83.25d |
| MF | **Manufacturing of Material** |  | 2027-02-14 → 2027-02-21 (+7d) |  |
| 1 | **Main Line Pipes** |  | 2027-02-14 → 2027-02-21 (+7d) |  |
| PRO-TSE-MF-130 | Manufacturing of Valves for Treated Sewage Effluent (Tse) | 2026-11-17 → 2026-11-24 (+7d) | 2027-02-14 → 2027-02-21 (+7d) | -91.5d → -98.5d |
| 1DL | **1st Material Delivery & Site Inspection** |  | 2027-02-23 → 2027-03-02 (+7d) |  |
| 1 | **Main Line Pipes** |  | 2027-02-23 → 2027-03-02 (+7d) |  |
| PRO-TSE-1DL-130 | 1ST Material Delivery for Valves of Treated Sewage Effluent (Tse) | 2027-02-15 → 2027-02-22 (+7d) | 2027-02-23 → 2027-03-02 (+7d) | -77d → -81.5d |
| DL | **Material Delivery & Site Inspection** |  | 2027-02-23 → 2027-03-02 (+7d) |  |
| 1 | **Main Line Pipes** |  | 2027-02-23 → 2027-03-02 (+7d) |  |
| PRO-R25-TSE-DL-120_R | Material Delivery & Site Inspection of Main Line Pipes for Treated Sewage Effluent (Tse)(Remaining) |  | 2026-11-10 → 2026-11-17 (+7d) | -8.5d → -14.5d |
| PRO-R25-TSE-DL-130 | Material Delivery & Site Inspection of Valves for Treated Sewage Effluent (Tse) | 2027-02-23 → 2027-03-02 (+7d) | 2027-02-23 → 2027-03-02 (+7d) | -77d → -81.5d |
| MV | **Medium Voltage Network** | 2026-11-10 → 2026-11-17 (+7d) | 2027-04-15 → 2027-04-21 (+6d) |  |
| PO | **Issuance of Purchase Orders** | 2026-11-10 → 2026-11-17 (+7d) | 2026-11-23 → 2026-11-30 (+7d) |  |
| 1 | **Cabling Works** | 2026-11-10 → 2026-11-17 (+7d) | 2026-11-23 → 2026-11-30 (+7d) |  |
| PRO-MV-PO-100 | Issuance of Purchase Order for Medium Voltage Cables of Medium Voltage Network | 2026-11-10 → 2026-11-17 (+7d) | 2026-11-23 → 2026-11-30 (+7d) | -82.25d → -88.25d |
| 3 | **Termination and Testing Works** | 2026-11-10 → 2026-11-17 (+7d) | 2026-11-23 → 2026-11-30 (+7d) |  |
| PRO-MV-PO-120 | Issuance of Purchase Order for Termination and Joints Kits of Medium Voltage Network | 2026-11-10 → 2026-11-17 (+7d) | 2026-11-23 → 2026-11-30 (+7d) | -89.75d → -95.75d |
| MF | **Manufacturing of Material** | 2026-11-24 → 2026-12-01 (+7d) | 2027-02-21 → 2027-02-28 (+7d) |  |
| 1 | **Cabling Works** | 2026-11-24 → 2026-12-01 (+7d) | 2027-01-22 → 2027-01-29 (+7d) |  |
| PRO-MV-MF-100 | Manufacturing of Medium Voltage Cables for Medium Voltage Network | 2026-11-24 → 2026-12-01 (+7d) | 2027-01-22 → 2027-01-29 (+7d) | -97.5d → -104.5d |
| 3 | **Termination and Testing Works** | 2026-11-24 → 2026-12-01 (+7d) | 2027-02-21 → 2027-02-28 (+7d) |  |
| PRO-MV-MF-110 | Manufacturing of Termination and Joints Kits for Medium Voltage Network | 2026-11-24 → 2026-12-01 (+7d) | 2027-02-21 → 2027-02-28 (+7d) | -106d → -113d |
| 1DL | **1st Material Delivery & Site Inspection** | 2027-01-23 → 2027-01-30 (+7d) | 2027-03-16 → 2027-03-22 (+6d) |  |
| 1 | **Cabling Works** | 2027-01-23 → 2027-01-30 (+7d) | 2027-02-04 → 2027-02-14 (+10d) |  |
| PRO-MV-1DL-100 | 1ST Material Delivery for Medium Voltage Cables of Medium Voltage Network | 2027-01-23 → 2027-01-30 (+7d) | 2027-02-04 → 2027-02-14 (+10d) | -83.5d → -89.5d |
| 3 | **Termination and Testing Works** | 2027-02-22 → 2027-03-01 (+7d) | 2027-03-16 → 2027-03-22 (+6d) |  |
| PRO-MV-1DL-120 | 1ST Material Delivery for Termination and Joints Kits of Medium Voltage Network | 2027-02-22 → 2027-03-01 (+7d) | 2027-03-16 → 2027-03-22 (+6d) | -88d → -92.75d |
| DL | **Material Delivery & Site Inspection** | 2027-02-06 → 2027-02-14 (+8d) | 2027-04-15 → 2027-04-21 (+6d) |  |
| 1 | **Cabling Works** | 2027-02-06 → 2027-02-14 (+8d) | 2027-02-06 → 2027-02-14 (+8d) |  |
| PRO-MV-DL-100 | Material Delivery & Site Inspection of Medium Voltage Cables for Medium Voltage Network | 2027-02-06 → 2027-02-14 (+8d) | 2027-02-06 → 2027-02-14 (+8d) | -83.5d → -89.5d |

| ID | Task | Start | Finish | Total float |
| --- | --- | --- | --- | --- |
| 3 | **Termination and Testing Works** | 2027-03-17 → 2027-03-22 (+5d) | 2027-04-15 → 2027-04-21 (+6d) |  |
| PRO-MV-DL-110 | Material Delivery & Site Inspection of Termination and Joints Kits for Medium Voltage Network | 2027-03-17 → 2027-03-22 (+5d) | 2027-04-15 → 2027-04-21 (+6d) | -88d → -92.75d |
| SL | **Low Voltage and Street Lighting Network** |  | 2026-12-27 → 2027-01-03 (+7d) |  |
| 1DL | **1st Material Delivery & Site Inspection** | 2026-11-10 → 2026-11-17 (+7d) | 2026-11-26 → 2026-12-03 (+7d) |  |
| 1 | **Cabling Works** | 2026-11-10 → 2026-11-17 (+7d) | 2026-11-16 → 2026-11-23 (+7d) |  |
| PRO-SL-1DL-100 | 1ST Material Delivery for Lighting Cables of Street Lighting Network | 2026-11-10 → 2026-11-17 (+7d) | 2026-11-16 → 2026-11-23 (+7d) | -0.5d → -6.5d |
| 2 | **Lighting Poles Works** | 2026-11-10 → 2026-11-17 (+7d) | 2026-11-16 → 2026-11-23 (+7d) |  |
| PRO-SL-1DL-110 | 1ST Material Delivery for Lighting Poles Foundations of Street Lighting Network | 2026-11-10 → 2026-11-17 (+7d) | 2026-11-16 → 2026-11-23 (+7d) | -29.5d → -35.5d |
| PRO-SL-1DL-120 | 1ST Material Delivery for Lighting Poles of Street Lighting Network | 2026-11-10 → 2026-11-17 (+7d) | 2026-11-16 → 2026-11-23 (+7d) | 4.5d → -1.5d |
| PRO-SL-1DL-140 | 1ST Material Delivery for Lighting Fixtures of Street Lighting Network | 2026-11-10 → 2026-11-17 (+7d) | 2026-11-16 → 2026-11-23 (+7d) | 48d → 42d |
| 3 | **Distribution Panel Board** | 2026-11-10 → 2026-11-17 (+7d) | 2026-11-16 → 2026-11-23 (+7d) |  |
| PRO-SL-1DL-160 | 1ST Material Delivery for Distrubution Panel Boards of Street Lighting Network | 2026-11-10 → 2026-11-17 (+7d) | 2026-11-16 → 2026-11-23 (+7d) | 36d → 30d |
| 5 | **Termination and Testing Works** | 2026-11-10 → 2026-11-17 (+7d) | 2026-11-26 → 2026-12-03 (+7d) |  |
| PRO-SL-1DL-130 | 1ST Material Delivery for Fuse Boxes of Street Lighting Network | 2026-11-10 → 2026-11-17 (+7d) | 2026-11-26 → 2026-12-03 (+7d) | 28d → 22d |
| PRO-SL-1DL-170 | 1ST Material Delivery for Cable Lugs of Street Lighting Network | 2026-11-10 → 2026-11-17 (+7d) | 2026-11-26 → 2026-12-03 (+7d) | 26d → 20d |
| 4 | **Earthing System Works** | 2026-11-10 → 2026-11-17 (+7d) | 2026-11-16 → 2026-11-23 (+7d) |  |
| PRO-SL-1DL-150 | 1ST Material Delivery for Lighting Earthing of Street Lighting Network | 2026-11-10 → 2026-11-17 (+7d) | 2026-11-16 → 2026-11-23 (+7d) | 48d → 42d |
| DL | **Material Delivery & Site Inspection** | 2026-11-17 → 2026-11-24 (+7d) | 2026-12-27 → 2027-01-03 (+7d) |  |
| 1 | **Cabling Works** | 2026-11-17 → 2026-11-24 (+7d) | 2026-11-17 → 2026-11-24 (+7d) |  |
| PRO-R25-SL-DL-100 | Material Delivery & Site Inspection of Lighting Cables for Street Lighting Network | 2026-11-17 → 2026-11-24 (+7d) | 2026-11-17 → 2026-11-24 (+7d) | -0.5d → -6.5d |
| 2 | **Lighting Poles Works** | 2026-11-17 → 2026-11-24 (+7d) | 2026-12-07 → 2026-12-14 (+7d) |  |
| PRO-R25-SL-DL-110 | Material Delivery & Site Inspection of Lighting Poles Foundations for Street Lighting Network | 2026-11-17 → 2026-11-24 (+7d) | 2026-12-07 → 2026-12-14 (+7d) | -29.5d → -35.5d |
| PRO-R25-SL-DL-120 | Material Delivery & Site Inspection of Lighting Poles for Street Lighting Network | 2026-11-17 → 2026-11-24 (+7d) | 2026-11-17 → 2026-11-24 (+7d) | 4.5d → -1.5d |
| PRO-R25-SL-DL-140 | Material Delivery & Site Inspection of Lighting Fixtures for Street Lighting Network | 2026-11-17 → 2026-11-24 (+7d) | 2026-11-17 → 2026-11-24 (+7d) | 48d → 42d |
| 3 | **Distribution Panel Board** | 2026-11-17 → 2026-11-24 (+7d) | 2026-11-17 → 2026-11-24 (+7d) |  |
| PRO-R25-SL-DL-160 | Material Delivery & Site Inspection of Distrubution Panel Boards for Street Lighting Network | 2026-11-17 → 2026-11-24 (+7d) | 2026-11-17 → 2026-11-24 (+7d) | 36d → 30d |
| 4 | **Termination and Testing Works** | 2026-11-28 → 2026-12-05 (+7d) | 2026-12-27 → 2027-01-03 (+7d) |  |
| PRO-R25-SL-DL-130 | Material Delivery & Site Inspection of Fuse Boxes for Street Lighting Network | 2026-11-28 → 2026-12-05 (+7d) | 2026-12-27 → 2027-01-03 (+7d) | 28d → 22d |
| PRO-R25-SL-DL-170 | Material Delivery & Site Inspection of Cable Lugs for Street Lighting Network | 2026-11-28 → 2026-12-05 (+7d) | 2026-12-27 → 2027-01-03 (+7d) | 26d → 20d |
| 5 | **Earthing System Works** | 2026-11-17 → 2026-11-24 (+7d) | 2026-11-17 → 2026-11-24 (+7d) |  |
| PRO-R25-SL-DL-150 | Material Delivery & Site Inspection of Lighting Earthing for Street Lighting Network | 2026-11-17 → 2026-11-24 (+7d) | 2026-11-17 → 2026-11-24 (+7d) | 48d → 42d |
| TE | **Telecom Network** | 2026-11-10 → 2026-11-17 (+7d) | 2027-03-02 → 2027-03-13 (+11d) |  |
| PO | **Issuance of Purchase Orders** | 2026-11-10 → 2026-11-17 (+7d) | 2026-11-16 → 2026-11-23 (+7d) |  |
| 1 | **Ducts Works** | 2026-11-10 → 2026-11-17 (+7d) | 2026-11-16 → 2026-11-23 (+7d) |  |
| PRO-TE-PO-100 | Issuance of Purchase Order for Ducts forTelecom Network | 2026-11-10 → 2026-11-17 (+7d) | 2026-11-16 → 2026-11-23 (+7d) | -58.75d → -64.75d |
| 3 | **Manholes Works** | 2026-11-10 → 2026-11-17 (+7d) | 2026-11-16 → 2026-11-23 (+7d) |  |
| PRO-TE-PO-110 | Issuance of Purchase Order for Manholes forTelecom Network | 2026-11-10 → 2026-11-17 (+7d) | 2026-11-16 → 2026-11-23 (+7d) | -76.75d → -82.75d |
| 2 | **CCTV System Wroks** | 2026-11-10 → 2026-11-17 (+7d) | 2026-11-16 → 2026-11-23 (+7d) |  |
| PRO-CTV-PO-100 | Issuance of Purchase Order for Civil and Finishes Works of CCTV Complete System | 2026-11-10 → 2026-11-17 (+7d) | 2026-11-16 → 2026-11-23 (+7d) | -62d → -68d |
| MF | **Manufacturing of Material** | 2026-11-17 → 2026-11-24 (+7d) | 2027-02-14 → 2027-02-21 (+7d) |  |
| 1 | **Ducts Works** | 2026-11-17 → 2026-11-24 (+7d) | 2027-01-15 → 2027-01-22 (+7d) |  |
| PRO-TE-MF-100 | Manufacturing of Ducts for Telecom Network | 2026-11-17 → 2026-11-24 (+7d) | 2027-01-15 → 2027-01-22 (+7d) | -70d → -77d |
| 3 | **Manholes Works** | 2026-11-17 → 2026-11-24 (+7d) | 2027-02-14 → 2027-02-21 (+7d) |  |
| PRO-TE-MF-110 | Manufacturing of Manholes for Telecom Network | 2026-11-17 → 2026-11-24 (+7d) | 2027-02-14 → 2027-02-21 (+7d) | -91d → -98d |
| 2 | **CCTV System Wroks** | 2026-11-17 → 2026-11-24 (+7d) | 2027-02-14 → 2027-02-21 (+7d) |  |
| PRO-CTV-MF-100 | Manufacturing of Civil and Finishes Works for CCTV Complete System | 2026-11-17 → 2026-11-24 (+7d) | 2027-02-14 → 2027-02-21 (+7d) | -74d → -81d |
| 1DL | **1st Material Delivery & Site Inspection** | 2027-01-16 → 2027-01-23 (+7d) | 2027-03-01 → 2027-03-08 (+7d) |  |
| 1 | **Ducts Works** | 2027-01-16 → 2027-01-23 (+7d) | 2027-01-21 → 2027-01-28 (+7d) |  |
| PRO-TE-1DL-100 | 1ST Material Delivery for Ducts of Telecom Network | 2027-01-16 → 2027-01-23 (+7d) | 2027-01-21 → 2027-01-28 (+7d) | -60d → -66d |
| 3 | **Manholes Works** | 2027-02-15 → 2027-02-22 (+7d) | 2027-02-23 → 2027-03-02 (+7d) |  |
| PRO-TE-1DL-110 | 1ST Material Delivery for Manholes of Telecom Network | 2027-02-15 → 2027-02-22 (+7d) | 2027-02-23 → 2027-03-02 (+7d) | -76.5d → -81d |
| 2 | **CCTV System Wroks** | 2027-02-15 → 2027-02-22 (+7d) | 2027-03-01 → 2027-03-08 (+7d) |  |
| PRO-CTV-1DL-100 | 1ST Material Delivery for Civil and Finishes Works of CCTV Complete System | 2027-02-15 → 2027-02-22 (+7d) | 2027-03-01 → 2027-03-08 (+7d) | -61.5d → -66d |
| DL | **Material Delivery & Site Inspection** | 2027-01-23 → 2027-01-30 (+7d) | 2027-03-02 → 2027-03-13 (+11d) |  |
| 1 | **Ducts Works** | 2027-01-23 → 2027-01-30 (+7d) | 2027-01-23 → 2027-01-30 (+7d) |  |
| PRO-R25-TE-DL-100 | Material Delivery & Site Inspection for Ducts of Telecom Network | 2027-01-23 → 2027-01-30 (+7d) | 2027-01-23 → 2027-01-30 (+7d) | -60d → -66d |
| 3 | **Manholes Works** | 2027-02-23 → 2027-03-02 (+7d) | 2027-02-23 → 2027-03-02 (+7d) |  |
| PRO-R25-TE-DL-110 | Material Delivery & Site Inspection of Manholes for Telecom Network | 2027-02-23 → 2027-03-02 (+7d) | 2027-02-23 → 2027-03-02 (+7d) | -76.5d → -81d |
| 2 | **CCTV System Wroks** | 2027-03-02 → 2027-03-13 (+11d) | 2027-03-02 → 2027-03-13 (+11d) |  |
| PRO-R25-CTV-DL-100 | Material Delivery & Site Inspection of for Civil and Finishes Works of CCTV Complete System | 2027-03-02 → 2027-03-13 (+11d) | 2027-03-02 → 2027-03-13 (+11d) | -61.5d → -66d |
| 1 | **Superstructure Works** |  | 2027-02-08 → 2027-02-15 (+7d) |  |
| 2 | **Manufacturing of Material** |  | 2027-02-07 → 2027-02-14 (+7d) |  |
| SL1211 | **Softscape and Planting Works** | 2026-11-10 → 2026-11-17 (+7d) | 2027-02-07 → 2027-02-14 (+7d) |  |
| PRO-FE-CV-MF-70 | Manufacturing of Civil Works for Softscape and Planting Works | 2026-11-10 → 2026-11-17 (+7d) | 2027-02-07 → 2027-02-14 (+7d) | -76.5d → -83.5d |
| 3 | **1st Material Delivery & Site Inspection** |  | 2026-11-10 → 2026-11-17 (+7d) |  |
| SL11 | **Storage Tank (TSE)** |  | 2026-11-10 → 2026-11-17 (+7d) |  |
| PRO-TSE-CV-1DL-50 | 1ST Material Delivery for Civil Works for Civil Works for Storage Tank (TSE) |  | 2026-11-10 → 2026-11-17 (+7d) | 16d → 10d |
| 4 | **Material Delivery & Site Inspection** |  | 2027-02-08 → 2027-02-15 (+7d) |  |
| SL11 | **Storage Tank (TSE)** | 2026-11-10 → 2026-11-17 (+7d) | 2026-11-10 → 2026-11-17 (+7d) |  |
| PRO-TSE-CV-DL-60 | Material Delivery & Site Inspection for Civil Works for Storage Tank (TSE) | 2026-11-10 → 2026-11-17 (+7d) | 2026-11-10 → 2026-11-17 (+7d) | 16d → 10d |

| ID | Task | Start | Finish | Complete | Total float | Predecessors |
| --- | --- | --- | --- | --- | --- | --- |
| SL1211 | **Softscape and Planting Works** | 2027-02-08 → 2027-02-15 (+7d) | 2027-02-08 → 2027-02-15 (+7d) |  |  |  |
| PRO-FE-CV-DL-90 | Material Delivery & Site Inspection for Softscape and Planting Works | 2027-02-08 → 2027-02-15 (+7d) | 2027-02-08 → 2027-02-15 (+7d) |  | -65.5d → -70d |  |
| LL | **Long Lead Time Items** |  | 2027-05-11 → 2027-05-23 (+12d) |  |  |  |
| 2 | **Infrastructure Networks** | 2026-11-10 → 2026-11-17 (+7d) | 2027-03-25 → 2027-03-31 (+6d) |  |  |  |
| 2 | **CCTV System Wroks of Telecom Network** | 2026-11-10 → 2026-11-17 (+7d) | 2027-03-25 → 2027-03-31 (+6d) |  |  |  |
| 3 | **Issuance of Purchase Orders** | 2026-11-10 → 2026-11-17 (+7d) | 2026-12-02 → 2026-12-09 (+7d) |  |  |  |
| PRO-CTV-LL-PO-10 | Issuance of Purchase Order for Low Current Works of CCTV Complete System with All Accessories | 2026-11-10 → 2026-11-17 (+7d) | 2026-12-02 → 2026-12-09 (+7d) |  | -76d → -82d |  |
| 1 | **Manufacturing of Material** | 2026-12-03 → 2026-12-10 (+7d) | 2027-03-02 → 2027-03-13 (+11d) |  |  |  |
| PRO-CTV-LL-MF-10 | Manufacturing of Low Current Works for CCTV Complete System with All Accessories | 2026-12-03 → 2026-12-10 (+7d) | 2027-03-02 → 2027-03-13 (+11d) |  | -90d → -97d |  |
| 2 | **Material Shipping/Custom Clearance/Delivery** | 2027-03-03 → 2027-03-14 (+11d) | 2027-03-25 → 2027-03-30 (+5d) |  |  |  |
| PRO-CTV-LL-SH/DL-10 | Material Delivery for Low Current Works of CCTV Complete System with All Accessories | 2027-03-03 → 2027-03-14 (+11d) | 2027-03-25 → 2027-03-30 (+5d) |  | -72.25d → -77d |  |
| 4 | **Material Site Inspection** | 2027-03-25 → 2027-03-31 (+6d) | 2027-03-25 → 2027-03-31 (+6d) |  |  |  |
| PRO-CTV-LL-MSI-10 | Material Site Inspection for Low Current Works of CCTV Complete System with All Accessories | 2027-03-25 → 2027-03-31 (+6d) | 2027-03-25 → 2027-03-31 (+6d) |  | -72.25d → -77d |  |
| 1 | **Superstructure Works** |  | 2027-05-11 → 2027-05-23 (+12d) |  |  |  |
| SL | **Pump Stations** |  | 2027-02-17 → 2027-02-25 (+8d) |  |  |  |
| 2 | **Manufacturing of Material** |  | 2026-12-01 → 2026-12-08 (+7d) |  |  |  |
| PRO-SPS-LL-MF-10 | Manufacturing of Electromechanical Works for Pump Stations |  | 2026-12-01 → 2026-12-08 (+7d) |  | -19.09d → -26.09d |  |
| 3 | **Material Shipping/Custom Clearance/Delivery** | 2026-12-01 → 2026-12-08 (+7d) | 2027-01-05 → 2027-01-12 (+7d) |  |  |  |
| PRO-SPS-LL-SH/DL-10 | Material Delivery for Electromechanical Works for Pump Stations | 2026-12-01 → 2026-12-08 (+7d) | 2027-01-05 → 2027-01-12 (+7d) |  | -16.09d → -22.09d |  |
| 4 | **Material Site Inspection** | 2027-01-05 → 2027-01-12 (+7d) | 2027-02-17 → 2027-02-25 (+8d) |  |  |  |
| PRO-SPS-LL-MSI-10 | Material Site Inspection for Electromechanical Works for Pump Stations | 2027-01-05 → 2027-01-12 (+7d) | 2027-02-17 → 2027-02-25 (+8d) |  | -16.09d → -22.09d |  |
| SL1 | **Lift Stations** |  | 2027-04-07 → 2027-04-14 (+7d) |  |  |  |
| 2 | **Manufacturing of Material** | 2026-11-10 → 2026-11-17 (+7d) | 2027-01-08 → 2027-01-15 (+7d) |  |  |  |
| PRO-LS-LL-MF-20 | Manufacturing of Electromechanical Works for Lift Stations | 2026-11-10 → 2026-11-17 (+7d) | 2027-01-08 → 2027-01-15 (+7d) |  | -73d → -80d |  |
| 3 | **Material Shipping/Custom Clearance/Delivery** | 2027-01-09 → 2027-01-16 (+7d) | 2027-02-14 → 2027-02-22 (+8d) |  |  |  |
| PRO-LS-LL-SH/DL-20 | Material Delivery for Electromechanical Works for Lift Stations | 2027-01-09 → 2027-01-16 (+7d) | 2027-02-14 → 2027-02-22 (+8d) |  | -62d → -68d |  |
| 4 | **Material Site Inspection** | 2027-02-14 → 2027-02-23 (+9d) | 2027-04-07 → 2027-04-14 (+7d) |  |  |  |
| PRO-LS-LL-MSI-20 | Material Site Inspection for Electromechanical Works for Lift Stations | 2027-02-14 → 2027-02-23 (+9d) | 2027-04-07 → 2027-04-14 (+7d) |  | -62d → -68d |  |
| SL2 | **Storage Tank (TSE)** | 2026-11-10 → 2026-11-17 (+7d) | 2027-05-11 → 2027-05-23 (+12d) |  |  |  |
| 1 | **Issuance of Purchase Orders** | 2026-11-10 → 2026-11-17 (+7d) | 2026-12-14 → 2026-12-21 (+7d) |  |  |  |
| PRO-TSE-LL-PO-30 | Issuance of Purchase Order for Electromechanical Works for Storage Tank (TSE) | 2026-11-10 → 2026-11-17 (+7d) | 2026-12-14 → 2026-12-21 (+7d) |  | -91.75d → -97.75d |  |
| 2 | **Manufacturing of Material** | 2026-12-15 → 2026-12-22 (+7d) | 2027-02-12 → 2027-02-19 (+7d) |  |  |  |
| PRO-TSE-LL-MF-30 | Manufacturing of Electromechanical Works for Storage Tank (TSE) | 2026-12-15 → 2026-12-22 (+7d) | 2027-02-12 → 2027-02-19 (+7d) |  | -108d → -115d |  |
| 3 | **Material Shipping/Custom Clearance/Delivery** | 2027-02-13 → 2027-02-20 (+7d) | 2027-03-28 → 2027-04-03 (+6d) |  |  |  |
| PRO-TSE-LL-SH/DL-30 | Material Delivery for Electromechanical Works for Storage Tank (TSE) | 2027-02-13 → 2027-02-20 (+7d) | 2027-03-28 → 2027-04-03 (+6d) |  | -91d → -95.5d |  |
| 4 | **Material Site Inspection** | 2027-03-29 → 2027-04-03 (+5d) | 2027-05-11 → 2027-05-23 (+12d) |  |  |  |
| PRO-TSE-LL-MSI-30 | Material Site Inspection for Electromechanical Works for Storage Tank (TSE) | 2027-03-29 → 2027-04-03 (+5d) | 2027-05-11 → 2027-05-23 (+12d) |  | -91d → -95.5d |  |
| CON | **Construction Works** |  | 2027-06-06 → 2027-06-13 (+7d) |  |  |  |
| INF | **Infrastructure Networks** |  | 2027-06-06 → 2027-06-13 (+7d) |  |  |  |
| EW | **Earthworks** |  | 2026-11-10 → 2026-11-17 (+7d) |  |  |  |
| EW | **Earthworks** |  | 2026-11-10 → 2026-11-17 (+7d) |  |  |  |
| CO-EW-200_R | Excavation Works Upto Design Level for Earthworks-P1(Remaining) |  | 2026-11-10 → 2026-11-17 (+7d) |  | -67.69d → -54d |  |
| CO-EW-210_R | Excavation Works Upto Design Level for Earthworks-P2(Remaining) |  | 2026-11-10 → 2026-11-17 (+7d) |  | -67.69d → -54d |  |
| CO-EW-220_R | Excavation Works Upto Design Level for Earthworks-P3(Remaining) |  | 2026-11-10 → 2026-11-17 (+7d) |  | -67.69d → -54d |  |
| SD | **Storm Drainage Network** |  | 2027-01-21 → 2027-01-03 (-18d) |  |  |  |
| MH25-MH12 | **FROM MH-25:MH-12** |  | 2026-12-21 → 2026-11-28 (-23d) |  |  |  |
| MH | **Manholes** |  | 2026-11-25 → 2026-11-16 (-9d) |  |  |  |
| CO-SD-MH-180 | Trench Excavation and Bedding Works for Manholes of Storm Drainage Network |  | 2026-11-16 A | 42% → 100% | -67.69d → none | CO-SD-ML-120 SS, ENG-MT-SD-ML-A-100, PRO-R25-SD-DL-100 SS, PRO-SD-MF-100, CO-EW-210_R SS, CO-EW-220_R SS, CO-EW-110_R SS, CO-SD-ML-120 FF, CO-EW-210_R FF, CO-EW-220_R FF, CO-EW-110_R FF → CO-SD-ML-120 SS, ENG-MT-SD-ML-A-100, PRO-R25-SD-DL-100 SS, PRO-SD-MF-100, CO-EW-210_R SS, CO-EW-220_R SS, CO-EW-110_R SS, CO-SD-ML-120 FF, CO-EW-110_R FF |
| CO-SD-MH-190 | Install RC Footing Works for Manholes of Storm Drainage Network |  | 2026-11-17 → 2026-11-16 A (-1d) | 42% → 100% | -66.5d → none | CO-SD-MH-180 SS, PRO-R25-SD-DL-100 SS, CO-SD-MH-180 FF, PRO-R25-SD-DL-100 FF → CO-SD-MH-180 SS, PRO-R25-SD-DL-100 SS, CO-SD-MH-180 FF |
| CO-SD-MH-200 | Install RC Wall Rings & Slab Works for Manholes of Storm Drainage Network |  | 2026-11-17 → 2026-11-16 A (-1d) | 42% → 100% | -66.5d → none | CO-SD-MH-190 SS, PRO-R25-SD-DL-100 SS, CO-SD-MH-190 FF, PRO-R25-SD-DL-100 FF → CO-SD-MH-190 SS, PRO-R25-SD-DL-100 SS, CO-SD-MH-190 FF |
| CO-SD-MH-220 | Backfilling Works for Manholes of Storm Drainage Network | 2026-11-18 → 2026-11-11 A (-7d) | 2026-11-25 → 2026-11-16 A (-9d) | 0% → 100% | -66.5d → none |  |
| CB | **Catch Basin Sections** | 2026-11-16 → 2026-11-11 (-5d) | 2026-12-21 → 2026-11-28 (-23d) |  |  |  |
| CO-SD-CB-140 | Trench Excavation and Bedding Works for Catch Basins of Storm Drainage Network | 2026-11-16 → 2026-11-11 A (-5d) |  | 0% → 4% | -67.69d → -48.5d | CO-SD-MH-180, ENG-MT-SD-CB-A-110, PRO-SD-1DL-120, PRO-SD-1DL-130, PRO-R25-SD-DL-100 → CO-SD-MH-180, ENG-MT-SD-CB-A-110, PRO-SD-1DL-120, PRO-SD-1DL-130, PRO-R25-SD-DL-100 SS, PRO-R25-SD-DL-100 FF |
| CO-SD-CB-150 | Installation and Pipes Laying Connection Works for Catch Basins of Storm Drainage Network | 2026-11-28 → 2026-11-11 A (-17d) | 2026-12-09 → 2026-11-28 (-11d) | 0% → 4% | -67.69d → -48.5d | CO-SD-CB-140, PRO-R25-SD-DL-110, PRO-R25-SD-DL-130, CO-SD-MH-220 → CO-SD-CB-140 SS, PRO-R25-SD-DL-110 SS, PRO-R25-SD-DL-130 SS, CO-SD-MH-220, CO-SD-CB-140 FF, PRO-R25-SD-DL-110 FF, PRO-R25-SD-DL-130 FF |
| CO-SD-CB-170 | Trench Backfilling and Compaction Works for Catch Basins of Storm Drainage Network | 2026-12-09 → 2026-11-11 A (-28d) | 2026-12-21 → 2026-11-28 (-23d) | 0% → 4% | -67.69d → -48.5d | CO-SD-CB-150, CO-SD-ML-130 FF, CO-SD-MH-220 → CO-SD-CB-150 SS, CO-SD-ML-130 FF, CO-SD-MH-220, CO-SD-CB-150 FF |
| MH25-MH121 | **FROM MH-12:MH-01** |  | 2027-01-21 → 2027-01-03 (-18d) |  |  |  |
| ML | **Main Line Sections** |  | 2026-12-02 → 2026-12-09 (+7d) |  |  |  |
| CO-SD-ML-140 | Trench Excavation and Bedding Works for Main Lines of Storm Drainage Network |  | 2026-11-25 → 2026-12-02 (+7d) |  | -60.5d → -52.5d |  |
| CO-SD-ML-150 | Pipes Laying Works for Main Lines of Storm Drainage Network |  | 2026-11-25 → 2026-12-02 (+7d) |  | -60.5d → -52.5d |  |
| CO-SD-ML-160 | Trench Backfilling and Compaction Works for Main Lines of Storm Drainage Network |  | 2026-12-02 → 2026-12-09 (+7d) |  | -34.5d → -40.5d |  |
| MH | **Manholes** | 2026-11-26 → 2026-11-11 (-15d) | 2027-01-02 → 2026-12-09 (-24d) |  |  |  |
| CO-SD-MH-230 | Trench Excavation and Bedding Works for Manholes of Storm Drainage Network | 2026-11-26 → 2026-11-11 A (-15d) | 2026-12-06 → 2026-12-02 (-4d) | 0% → 35% | -60.5d → -52.5d | CO-SD-ML-150, CO-SD-MH-180, PRO-R25-SD-DL-100 → CO-SD-ML-150 SS, CO-SD-MH-180, PRO-R25-SD-DL-100 SS, CO-SD-ML-150 FF, PRO-R25-SD-DL-100 FF |
| CO-SD-MH-240 | Install RC Footing Works for Manholes of Storm Drainage Network | 2026-12-07 → 2026-11-11 A (-26d) | 2026-12-14 → 2026-12-02 (-12d) | 0% → 35% | -60.5d → -36.5d | CO-SD-MH-230, CO-SD-MH-190, PRO-R25-SD-DL-100 → CO-SD-MH-230 SS, CO-SD-MH-190, PRO-R25-SD-DL-100 SS, CO-SD-MH-230 FF, PRO-R25-SD-DL-100 FF |
| CO-SD-MH-250 | Install RC Wall Rings & Slab Works for Manholes of Storm Drainage Network | 2026-12-15 → 2026-11-11 A (-34d) | 2026-12-22 → 2026-12-02 (-20d) | 0% → 35% | -60.5d → -36.5d | CO-SD-MH-240, CO-SD-MH-200 → CO-SD-MH-240 SS, CO-SD-MH-200, CO-SD-MH-240 FF |
| CO-SD-MH-260 | Backfilling Works for Manholes of Storm Drainage Network | 2026-12-23 → 2026-11-11 A (-42d) | 2027-01-02 → 2026-12-09 (-24d) | 0% → 35% | -60.5d → -40.5d | CO-SD-MH-250, CO-SD-ML-160 FF, CO-SD-MH-220 → CO-SD-MH-250 SS, CO-SD-ML-160 FF, CO-SD-MH-220, CO-SD-MH-250 FF |
| CB | **Catch Basin Sections** | 2026-12-21 → 2026-12-03 (-18d) | 2027-01-21 → 2027-01-03 (-18d) |  |  |  |
| CO-SD-CB-180 | Trench Excavation and Bedding Works for Catch Basins of Storm Drainage Network | 2026-12-21 → 2026-12-03 (-18d) | 2026-12-31 → 2026-12-13 (-18d) |  | -67.69d → -52.5d |  |
| CO-SD-CB-190 | Installation and Pipes Laying Connection Works for Catch Basins of Storm Drainage Network | 2026-12-31 → 2026-12-14 (-17d) | 2027-01-11 → 2026-12-23 (-19d) |  | -67.69d → -52.5d |  |
| CO-SD-CB-200 | Trench Backfilling and Compaction Works for Catch Basins of Storm Drainage Network | 2027-01-11 → 2026-12-24 (-18d) | 2027-01-21 → 2027-01-03 (-18d) |  | -67.69d → -52.5d |  |
| SW | **Sewage Network** |  | 2026-12-22 → 2026-11-30 (-22d) |  |  |  |

| ID | Task | Start | Finish | Complete | Total float | Predecessors |
| --- | --- | --- | --- | --- | --- | --- |
| 2 | **FROM MH-18:MH-10** |  | 2026-11-22 → 2026-11-16 (-6d) |  |  |  |
| 1 | **Manholes** |  | 2026-11-22 → 2026-11-16 (-6d) |  |  |  |
| CO-SW-MH-160 | Excavation Works for Main Line Manholes of Sewage Network |  | 2026-11-17 → 2026-11-16 A (-1d) | 60% → 100% | -54.5d → none |  |
| CO-SW-MH-170 | Installation RC Footing Works for Main Line Manholes of Sewage Network |  | 2026-11-17 → 2026-11-16 A (-1d) | 60% → 100% | -46.5d → none |  |
| CO-SW-MH-180 | Install Grp Liner Wall Works for Main Line Manholes of Sewage Network |  | 2026-11-17 → 2026-11-16 A (-1d) | 60% → 100% | -39.5d → none |  |
| CO-SW-MH-190 | Pouring Grp Liner Wall Works for Main Line Manholes of Sewage Network |  | 2026-11-17 → 2026-11-16 A (-1d) | 60% → 100% | -32.5d → none |  |
| CO-SW-MH-200 | Backfilling Works for Main Line Manholes of Sewage Network | 2026-11-18 → 2026-11-11 A (-7d) | 2026-11-22 → 2026-11-16 A (-6d) | 0% → 100% | -32.5d → none |  |
| 1 | **FROM MH-10:MH-01** |  | 2026-12-22 → 2026-11-30 (-22d) |  |  |  |
| ML | **Main Line Sections** |  | 2026-11-23 → 2026-11-30 (+7d) |  |  |  |
| CO-SW-ML-140 | Trench Excavation and Bedding Works for Main Lines of Sewage Network |  | 2026-11-16 → 2026-11-23 (+7d) | 65% → 72% | -54.5d → -35.5d |  |
| CO-SW-ML-150 | Pipes Laying Works for Main Lines of Sewage Network |  | 2026-11-17 → 2026-11-24 (+7d) | 50% → 72% | -54.5d → -35.5d |  |
| CO-SW-ML-160 | Trench Backfilling and Compaction Works for Main Lines of Sewage Network |  | 2026-11-23 → 2026-11-30 (+7d) | 50% → 61% | -51.5d → -35.5d |  |
| 1 | **Manholes** | 2026-11-18 → 2026-11-11 (-7d) | 2026-12-22 → 2026-11-30 (-22d) |  |  |  |
| CO-SW-MH-210 | Excavation Works for Main Line Manholes of Sewage Network | 2026-11-18 → 2026-11-11 A (-7d) | 2026-11-26 → 2026-11-25 (-1d) | 0% → 89% | -54.5d → -31.5d | CO-SW-ML-150, CO-SW-MH-160, PRO-R25-SW-DL-110 → CO-SW-ML-150 SS, CO-SW-MH-160, PRO-R25-SW-DL-110 SS, CO-SW-ML-150 FF, PRO-R25-SW-DL-110 FF |
| CO-SW-MH-220 | Installation RC Footing Works for Main Line Manholes of Sewage Network | 2026-11-28 → 2026-11-11 A (-17d) | 2026-12-05 → 2026-11-30 (-5d) | 0% → 89% | -54.5d → -35.5d | CO-SW-MH-210, CO-SW-MH-170, CO-SW-ML-160 → CO-SW-MH-210 SS, CO-SW-MH-170, CO-SW-ML-160 SS, CO-SW-MH-210 FF, CO-SW-ML-160 FF |
| CO-SW-MH-230 | Install Grp Liner Wall Works for Main Line Manholes of Sewage Network | 2026-12-06 → 2026-11-11 A (-25d) | 2026-12-13 → 2026-11-30 (-13d) | 0% → 89% | -54.5d → -35.5d | CO-SW-MH-220, CO-SW-MH-180 → CO-SW-MH-220 SS, CO-SW-MH-180, CO-SW-MH-220 FF |
| CO-SW-MH-240 | Pouring Grp Liner Wall Works for Main Line Manholes of Sewage Network | 2026-12-14 → 2026-11-11 A (-33d) | 2026-12-17 → 2026-11-30 (-17d) | 0% → 89% | -54.5d → -35.5d | CO-SW-MH-230, CO-SW-MH-190 → CO-SW-MH-230 SS, CO-SW-MH-190, CO-SW-MH-230 FF |
| CO-SW-MH-250 | Backfilling Works for Main Line Manholes of Sewage Network | 2026-12-19 → 2026-11-11 A (-38d) | 2026-12-22 → 2026-11-30 (-22d) | 0% → 50% | -54.5d → -35.5d | CO-SW-MH-240, CO-SW-ML-160, CO-SW-MH-200 → CO-SW-MH-240 SS, CO-SW-ML-160 SS, CO-SW-MH-200, CO-SW-MH-240 FF, CO-SW-ML-160 FF |
| PW | **Potable Water Network** |  | 2027-03-08 → 2027-03-18 (+10d) |  |  |  |
| ML | **Main Line Sections** |  | 2027-01-17 → 2027-01-24 (+7d) |  |  |  |
| CO-PW-ML-100 | Trench Excavation and Bedding Works for Main Lines of Potable Water Network |  | 2026-12-22 → 2026-11-30 (-22d) |  | -47d → -28d |  |
| CO-PW-ML-110 | Pipes Laying and accessories for Main Lines of Potable Water Network |  | 2027-01-17 → 2027-01-24 (+7d) |  | -67d → -73d |  |
| CO-PW-ML-130 | Trench Backfilling and Compaction Works for Main Lines of Potable Water Network |  | 2027-01-17 → 2027-01-24 (+7d) |  | -57d → -63d |  |
| VC | **Valve Chamber** | 2027-01-17 → 2027-01-24 (+7d) | 2027-02-04 → 2027-02-13 (+9d) |  |  |  |
| CO-PW-VC-170 | Excavation Works for Main Line Valves and Valve Chambers of Potable Water Network | 2027-01-17 → 2027-01-24 (+7d) | 2027-01-19 → 2027-01-26 (+7d) |  | -57d → -63d |  |
| CO-PW-VC180 | Installation Works for Valve Chambers of Potable Water Network | 2027-01-19 → 2027-01-26 (+7d) | 2027-01-24 → 2027-01-31 (+7d) |  | -57d → -63d |  |
| CO-PW-VC-190 | Installation Works for Valves of Potable Water Network | 2027-01-24 → 2027-01-31 (+7d) | 2027-02-01 → 2027-02-08 (+7d) |  | -57d → -63d |  |
| CO-PW-VC-220 | Backfilling Works for Main Line Valves and Valve Chambers of Potable Water Network | 2027-02-01 → 2027-02-08 (+7d) | 2027-02-04 → 2027-02-13 (+9d) |  | -57d → -63d |  |
| FH | **Fire Hydrant** | 2027-02-04 → 2027-02-13 (+9d) | 2027-03-08 → 2027-03-18 (+10d) |  |  |  |
| CO-PW-FH-140 | Excavation Works for Fire Hydrants of Potable Water Network | 2027-02-04 → 2027-02-13 (+9d) | 2027-02-14 → 2027-02-23 (+9d) |  | -57d → -63d |  |
| CO-PW-FH-150 | Installation Works for Fire Hydrant of Potable Water Network | 2027-02-15 → 2027-02-23 (+8d) | 2027-02-24 → 2027-03-06 (+10d) |  | -57d → -63d |  |
| CO-PW-FH-160 | Trench Backfilling and Compaction Works for Fire Hydrants of Potable Water Network | 2027-02-25 → 2027-03-07 (+10d) | 2027-03-08 → 2027-03-18 (+10d) |  | -57d → -63d |  |
| IR | **Irrigation Network** | 2026-12-23 → 2026-12-01 (-22d) | 2027-04-03 → 2027-04-07 (+4d) |  |  |  |
| ML | **Main Line Pipes** | 2026-12-23 → 2026-12-01 (-22d) | 2027-04-03 → 2027-04-07 (+4d) |  |  |  |
| CO-IR-ML-100 | Trench Excavation and Bedding Works for Main Lines of Irrigation Network | 2026-12-23 → 2026-12-01 (-22d) | 2027-01-03 → 2026-12-12 (-22d) |  | -47d → -28d |  |
| CO-IR-ML-110 | Pipes Laying Works for Main Lines of Irrigation Network | 2027-01-17 → 2027-01-24 (+7d) | 2027-01-27 → 2027-02-03 (+7d) |  | -58.5d → -64.5d |  |
| CO-IR-ML-120 | Installation Works for Main Line Valves of Irrigation Network | 2027-02-23 → 2027-03-02 (+7d) | 2027-03-13 → 2027-03-17 (+4d) |  | -78d → -82.5d |  |
| CO-IR-ML-130 | Trench Backfilling and Compaction Works for Main Lines of Irrigation Network | 2027-03-13 → 2027-03-18 (+5d) | 2027-03-23 → 2027-03-28 (+5d) |  | -78d → -82.5d |  |
| CO-IR-ML-140 | Installation Works for Bulbblers And Sprinklers of Irrigation Network | 2027-03-23 → 2027-03-29 (+6d) | 2027-04-03 → 2027-04-07 (+4d) |  | -71d → -75.5d |  |
| TSE | **Treated Sewage Effluent (Tse)** | 2026-12-23 → 2026-12-01 (-22d) | 2027-04-03 → 2027-04-07 (+4d) |  |  |  |
| ML | **Main Line Pipes** | 2026-12-23 → 2026-12-01 (-22d) | 2027-04-03 → 2027-04-07 (+4d) |  |  |  |
| CO-TSE-ML-150 | Trench Excavation and Bedding Works for Main Lines of Treated Sewage Effluent (Tse) | 2026-12-23 → 2026-12-01 (-22d) | 2027-01-02 → 2026-12-10 (-23d) |  | -45.5d → -26.5d |  |
| CO-TSE-ML-160 | Pipes Laying Works for Main Lines of Treated Sewage Effluent (Tse) | 2027-01-17 → 2027-01-24 (+7d) | 2027-01-27 → 2027-02-03 (+7d) |  | -57d → -63d |  |
| CO-TSE-ML-170 | Installation Works for Main Line Valves of Treated Sewage Effluent (Tse) | 2027-02-23 → 2027-03-02 (+7d) | 2027-03-08 → 2027-03-16 (+8d) |  | -77d → -81.5d |  |
| CO-TSE-ML-180 | Trench Backfilling and Compaction Works for Treated Sewage Effluent (Tse) | 2027-03-13 → 2027-03-18 (+5d) | 2027-03-23 → 2027-03-28 (+5d) |  | -78d → -82.5d |  |
| CO-TSE-ML-190 | Installation Works for Valve and Washout Chambers of Treated Sewage Effluent (Tse) | 2027-03-23 → 2027-03-29 (+6d) | 2027-04-03 → 2027-04-07 (+4d) |  | -59d → -63.5d |  |
| MV | **Medium Voltage Network** | 2027-02-06 → 2027-02-14 (+8d) | 2027-04-06 → 2027-04-13 (+7d) |  |  |  |
| CW | **Cabling Works** | 2027-02-06 → 2027-02-14 (+8d) | 2027-04-06 → 2027-04-13 (+7d) |  |  |  |
| CO-MV-ML-250 | Trench Excavation and Bedding Works for Medium Voltage Network | 2027-02-06 → 2027-02-14 (+8d) | 2027-02-21 → 2027-03-02 (+9d) |  | -83.5d → -89.5d |  |
| CO-MV-ML-260 | Cable Laying Works for Medium Voltage Network | 2027-02-22 → 2027-03-02 (+8d) | 2027-03-18 → 2027-03-25 (+7d) |  | -83.5d → -89.5d |  |
| CO-MV-ML-270 | Trench Backfilling and Compaction Works for Medium Voltage Network | 2027-03-20 → 2027-03-27 (+7d) | 2027-04-06 → 2027-04-13 (+7d) |  | -83.5d → -89.5d |  |
| SL | **Street Lighting Network** | 2027-02-06 → 2027-02-14 (+8d) | 2027-05-04 → 2027-05-11 (+7d) |  |  |  |
| LP | **Lighting Poles Works** | 2027-02-06 → 2027-02-14 (+8d) | 2027-03-28 → 2027-04-04 (+7d) |  |  |  |
| CO-SL-LP-300 | Foundation Excavation Works for Lighting Poles of Street Lighting Network | 2027-02-06 → 2027-02-14 (+8d) | 2027-02-16 → 2027-02-25 (+9d) |  | -80.5d → -86.5d |  |
| CO-SL-LP-310 | Installation Works for Lighting Poles Foundation of Street Lighting Network | 2027-02-17 → 2027-02-25 (+8d) | 2027-03-01 → 2027-03-13 (+12d) |  | -80.5d → -86.5d |  |
| CO-SL-LP-320 | Installation Works for Lighting Poles of Street Lighting Network | 2027-03-01 → 2027-03-14 (+13d) | 2027-03-16 → 2027-03-23 (+7d) |  | -80.5d → -86.5d |  |
| CO-SL-LP-210 | Backfilling Works for Lighting Poles of Street Lighting Network | 2027-03-17 → 2027-03-24 (+7d) | 2027-03-28 → 2027-04-04 (+7d) |  | -80.5d → -86.5d |  |
| CW | **Cabling Works** | 2027-02-17 → 2027-02-25 (+8d) | 2027-03-25 → 2027-04-01 (+7d) |  |  |  |
| CO-SL-CL-250 | Trench Excavation and Bedding Works for Street Lighting Network | 2027-02-17 → 2027-02-25 (+8d) | 2027-02-27 → 2027-03-08 (+9d) |  | -77.5d → -83.5d |  |
| CO-SL-CL-260 | Cable Laying Works for Street Lighting Network | 2027-02-28 → 2027-03-13 (+13d) | 2027-03-13 → 2027-03-20 (+7d) |  | -77.5d → -83.5d |  |
| CO-SL-CL-270 | Trench Backfilling and Compaction Works for Street Lighting Network | 2027-03-17 → 2027-03-24 (+7d) | 2027-03-25 → 2027-04-01 (+7d) |  | -80.5d → -86.5d |  |
| DPB | **Distrubution Panel Boards** | 2027-04-07 → 2027-04-14 (+7d) | 2027-05-04 → 2027-05-11 (+7d) |  |  |  |
| CO-SL-DB-250 | Foundation Excavation Works For Panel Boards of Street Lighting Network | 2027-04-07 → 2027-04-14 (+7d) | 2027-04-13 → 2027-04-20 (+7d) |  | -82d → -88d |  |
| CO-SL-DB-260 | Installation Works for Panel Board Concrete Foundations of Street Lighting Network | 2027-04-14 → 2027-04-21 (+7d) | 2027-04-20 → 2027-04-27 (+7d) |  | -82d → -88d |  |
| CO-SL-DB-270 | Installation Works for Lighting Panel Boards of Street Lighting Network | 2027-04-21 → 2027-04-28 (+7d) | 2027-04-27 → 2027-05-04 (+7d) |  | -82d → -88d |  |
| CO-SL-DB-220 | A wall of concrete blocks to install the KWH meter of Street Lighting Network | 2027-04-28 → 2027-05-05 (+7d) | 2027-05-04 → 2027-05-11 (+7d) |  | -75d → -81d |  |
| TE | **Telecom Network** | 2027-02-22 → 2027-03-02 (+8d) | 2027-04-18 → 2027-04-25 (+7d) |  |  |  |
| PD | **Ducts Works** | 2027-02-22 → 2027-03-02 (+8d) | 2027-03-30 → 2027-04-06 (+7d) |  |  |  |
| CO-TE-DW-100 | Trench Excavation and Bedding Works for Ducts of Telecom Network | 2027-02-22 → 2027-03-02 (+8d) | 2027-02-27 → 2027-03-08 (+9d) |  | -83d → -89d |  |
| CO-TE-DW-110 | Pipes Laying Works for Ducts of Telecom Network | 2027-02-28 → 2027-03-13 (+13d) | 2027-03-06 → 2027-03-16 (+10d) |  | -83d → -89d |  |

| ID | Task | Start | Finish | Total float |
| --- | --- | --- | --- | --- |
| CO-TE-DW-130 | Trench Backfilling and Compaction Works for Ducts of Telecom Network | 2027-03-06 → 2027-03-17 (+11d) | 2027-03-18 → 2027-03-25 (+7d) | -82d → -88d |
| CO-TE-DW-120 | Pouring Road Crossing Concrete Encasement | 2027-03-20 → 2027-03-27 (+7d) | 2027-03-30 → 2027-04-06 (+7d) | -82d → -88d |
| MH | **Manholes Works** | 2027-03-06 → 2027-03-17 (+11d) | 2027-03-31 → 2027-04-07 (+7d) |  |
| CO-TE-MH-140 | Excavation Works for Manholes of Telecom Network | 2027-03-06 → 2027-03-17 (+11d) | 2027-03-15 → 2027-03-22 (+7d) | -83d → -89d |
| CO-TE-MH-150 | Installation Works for Manholes of Telecom Network | 2027-03-16 → 2027-03-23 (+7d) | 2027-03-23 → 2027-03-30 (+7d) | -83d → -89d |
| CO-TE-MH-160 | Backfilling Works for Manholes of Telecom Network | 2027-03-24 → 2027-03-31 (+7d) | 2027-03-31 → 2027-04-07 (+7d) | -83d → -89d |
| DD | **CCTV System Wroks** | 2027-04-01 → 2027-04-08 (+7d) | 2027-04-18 → 2027-04-25 (+7d) |  |
| CO-TE-CTV-100 | Digging and Pulling Trenches PVC ducts , Backfilling, Excavations, of Power Cable | 2027-04-01 → 2027-04-08 (+7d) | 2027-04-06 → 2027-04-13 (+7d) | -83d → -89d |
| CO-TE-CTV-110 | Installation of Network Cable Cat.6A from Network switch to CCTV Camera and ACS Device | 2027-04-07 → 2027-04-14 (+7d) | 2027-04-12 → 2027-04-19 (+7d) | -83d → -89d |
| CO-TE-CTV-130 | Installation of Access Control System | 2027-04-13 → 2027-04-20 (+7d) | 2027-04-18 → 2027-04-25 (+7d) | -83d → -89d |
| RD | **Road Works** | 2027-03-22 → 2027-03-29 (+7d) | 2027-05-25 → 2027-06-01 (+7d) |  |
| 3 | **ST+1000:ST+1531** | 2027-03-22 → 2027-03-29 (+7d) | 2027-04-22 → 2027-04-29 (+7d) |  |
| RD | **Pre-Bituminous Construction** | 2027-03-22 → 2027-03-29 (+7d) | 2027-04-22 → 2027-04-29 (+7d) |  |
| CO-RD-PB-140 | Subgrade Layer for Road Works | 2027-03-22 → 2027-03-29 (+7d) | 2027-04-06 → 2027-04-13 (+7d) | -83.5d → -89.5d |
| CO-RD-PB-150 | Aggregate Base Course Layer for Road Works | 2027-04-06 → 2027-04-13 (+7d) | 2027-04-22 → 2027-04-29 (+7d) | -83.5d → -89.5d |
| 2 | **ST+500:ST+1000** | 2027-04-07 → 2027-04-14 (+7d) | 2027-05-05 → 2027-05-12 (+7d) |  |
| RD | **Pre-Bituminous Construction** | 2027-04-07 → 2027-04-14 (+7d) | 2027-05-05 → 2027-05-12 (+7d) |  |
| CO-RD-PB-120 | Subgrade Layer for Road Works | 2027-04-07 → 2027-04-14 (+7d) | 2027-04-19 → 2027-04-26 (+7d) | -82.8d → -88.8d |
| CO-RD-PB-130 | Aggregate Base Course Layer for Road Works | 2027-04-22 → 2027-04-29 (+7d) | 2027-05-05 → 2027-05-12 (+7d) | -83.5d → -89.5d |
| 1 | **ST+01:ST+500** | 2027-04-19 → 2027-04-26 (+7d) | 2027-05-25 → 2027-06-01 (+7d) |  |
| RD | **Pre-Bituminous Construction** | 2027-04-19 → 2027-04-26 (+7d) | 2027-05-25 → 2027-06-01 (+7d) |  |
| CO-RD-PB-100 | Subgrade Layer for Road Works | 2027-04-19 → 2027-04-26 (+7d) | 2027-05-03 → 2027-05-10 (+7d) | -82.8d → -88.8d |
| CO-RD-PB-110 | Aggregate Base Course Layer for Road Works | 2027-05-05 → 2027-05-12 (+7d) | 2027-05-25 → 2027-06-01 (+7d) | -83.5d → -89.5d |
| 3 | **Finishes for Infrastructure Networks** | 2026-12-23 → 2026-12-01 (-22d) | 2027-06-06 → 2027-06-13 (+7d) |  |
| 11 | **Storm Drainage Network** | 2027-01-21 → 2027-01-04 (-17d) | 2027-04-27 → 2027-05-02 (+5d) |  |
| TF | **Testing and Finishes** | 2027-01-21 → 2027-01-04 (-17d) | 2027-04-27 → 2027-05-02 (+5d) |  |
| CO-SD-ML-TF-100 | Testing Work for Pipes of Storm Drainage Network | 2027-01-21 → 2027-01-04 (-17d) | 2027-02-02 → 2027-01-14 (-19d) | -67.69d → -52.5d |
| CO-SD-CB-TF-130 | Catch Basin Internal Finishes (Benching ) for Storm Drainage Network | 2027-02-02 → 2027-01-16 (-17d) | 2027-02-15 → 2027-01-26 (-20d) | -67.69d → -52.5d |
| CO-SD-CB-TF-160 | Testing Works for Catch Basins of Storm Drainage Network | 2027-02-15 → 2027-01-27 (-19d) | 2027-03-02 → 2027-02-07 (-23d) | -67.69d → -52.5d |
| CO-SD-CB-TF-110 | Install Catch Basin Cover Works for External Finishes of Storm Drainage Network | 2027-03-02 → 2027-02-08 (-22d) | 2027-03-20 → 2027-02-22 (-26d) | -67.69d → -52.5d |
| CO-SD-MH-TF-120 | Main Manhole Internal Finishes (Benching ) for Storm Drainage Network | 2027-03-20 → 2027-02-23 (-25d) | 2027-03-31 → 2027-03-13 (-18d) | -67.69d → -52.5d |
| CO-SD-MH-TF-210 | Testing Works for Manholes of Storm Drainage Network | 2027-04-20 → 2027-04-26 (+6d) | 2027-04-27 → 2027-05-02 (+5d) | -85d → -89.5d |
| 10 | **Sewage Network** | 2026-12-23 → 2026-12-01 (-22d) | 2027-02-09 → 2027-02-04 (-5d) |  |
| TF | **Testing and Finishes** | 2026-12-23 → 2026-12-01 (-22d) | 2027-02-09 → 2027-02-04 (-5d) |  |
| CO-SW-TF-100 | Final Testing For Main Line of Sewage Network | 2026-12-23 → 2026-12-01 (-22d) | 2027-01-02 → 2026-12-10 (-23d) | -54.5d → -35.5d |
| CO-SW-TF-130 | Main Manhole Internal Finishes (Benching + Insulation) of Sewage Network | 2027-01-03 → 2026-12-12 (-22d) | 2027-01-26 → 2027-01-04 (-22d) | -18.5d → 0.5d |
| CO-SW-TF-110 | Install Manhole Cover Works for External Finishes of Sewage Network | 2027-01-27 → 2027-01-24 (-3d) | 2027-02-07 → 2027-02-03 (-4d) | -18.5d → -15.5d |
| CO-SW-TF-210 | Testing Works for Main Line Manholes of Sewage Network | 2027-02-04 → 2027-02-01 (-3d) | 2027-02-09 → 2027-02-04 (-5d) | -18.5d → -15.5d |
| 9 | **Potable Water Network** | 2027-03-08 → 2027-03-18 (+10d) | 2027-05-03 → 2027-05-10 (+7d) |  |
| TF | **Testing and Finishes** | 2027-03-08 → 2027-03-18 (+10d) | 2027-05-03 → 2027-05-10 (+7d) |  |
| CO-PW-TF-110 | Testing Work for Main Line of Potable Water Network | 2027-03-08 → 2027-03-18 (+10d) | 2027-03-23 → 2027-03-30 (+7d) | -57d → -63d |
| CO-PW-TF-120 | Fire Hydrant Finishies (S.Box + Safety + Marker Post ) of Potable Water Network | 2027-03-24 → 2027-03-31 (+7d) | 2027-04-04 → 2027-04-11 (+7d) | -57d → -63d |
| CO-PW-TF-100 | Final Finishes works and Covers for Valves and Valve Chambers of Potable Water Network | 2027-04-22 → 2027-04-29 (+7d) | 2027-05-03 → 2027-05-10 (+7d) | -72d → -78d |
| 13 | **Irrigation Network** | 2027-04-03 → 2027-04-08 (+5d) | 2027-04-17 → 2027-04-21 (+4d) |  |
| TF | **Testing and Finishes** | 2027-04-03 → 2027-04-08 (+5d) | 2027-04-17 → 2027-04-21 (+4d) |  |
| CO-IR-TF-160 | Final Testing (pressure tests) of Irrigation Network | 2027-04-03 → 2027-04-08 (+5d) | 2027-04-17 → 2027-04-21 (+4d) | -71d → -75.5d |
| 1 | **Treated Sewage Effluent (Tse)** | 2027-04-17 → 2027-04-22 (+5d) | 2027-04-29 → 2027-05-05 (+6d) |  |
| TF | **Testing and Finishes** | 2027-04-17 → 2027-04-22 (+5d) | 2027-04-29 → 2027-05-05 (+6d) |  |
| CO-TSE-TF-170 | Final Testing (pressure tests) of Treated Sewage Effluent (Tse) | 2027-04-17 → 2027-04-22 (+5d) | 2027-04-29 → 2027-05-05 (+6d) | -71d → -75.5d |
| 14 | **Medium Voltage Network** | 2027-04-17 → 2027-04-21 (+4d) | 2027-05-06 → 2027-05-12 (+6d) |  |
| TT | **Termination and Testing Works** | 2027-04-17 → 2027-04-21 (+4d) | 2027-05-06 → 2027-05-12 (+6d) |  |
| CO-MV-TF-220 | Termination Works of Medium Voltage Network | 2027-04-17 → 2027-04-21 (+4d) | 2027-05-06 → 2027-05-12 (+6d) | -88d → -92.75d |
| 12 | **Street Lighting Network** | 2027-04-28 → 2027-05-05 (+7d) | 2027-05-13 → 2027-05-26 (+13d) |  |
| TR | **Termination and Testing Works** | 2027-04-28 → 2027-05-05 (+7d) | 2027-05-13 → 2027-05-26 (+13d) |  |
| CO-SL-LP-330 | Installation Works for Lighting Fixtures With Drop Wire of Street Lighting Network | 2027-04-28 → 2027-05-05 (+7d) | 2027-05-05 → 2027-05-12 (+7d) | -82d → -88d |
| CO-SL-TF-200 | Testing Works for Lighting Poles of Street Lighting Network | 2027-05-06 → 2027-05-13 (+7d) | 2027-05-11 → 2027-05-24 (+13d) | -74d → -80d |
| CO-SL-TF-220 | Termination Works For Lighting Poles Cables of Street Lighting Network | 2027-05-06 → 2027-05-13 (+7d) | 2027-05-13 → 2027-05-26 (+13d) | -76d → -82d |
| CO-SL-TF-230 | Termination Works For Panel Board Cables of Street Lighting Network | 2027-05-06 → 2027-05-13 (+7d) | 2027-05-13 → 2027-05-26 (+13d) | -76d → -82d |
| CO-SL-TF-380 | Testing Works For Panel Board Cables of Street Lighting Network | 2027-05-06 → 2027-05-13 (+7d) | 2027-05-08 → 2027-05-20 (+12d) | -71d → -77d |
| ES | **Earthing System Works** | 2027-04-28 → 2027-05-05 (+7d) | 2027-05-05 → 2027-05-12 (+7d) |  |
| CO-SL-ES-220 | Install Earthing System Works for Lighting Poles of Street Lighting Network | 2027-04-28 → 2027-05-05 (+7d) | 2027-05-05 → 2027-05-12 (+7d) | -82d → -88d |
| CO-SL-ES-230 | Install Earthing System Works for Lighting Panel Boards of Street Lighting Network | 2027-04-28 → 2027-05-05 (+7d) | 2027-05-05 → 2027-05-12 (+7d) | -82d → -88d |
| 3 | **Telecom Network** | 2027-04-19 → 2027-04-26 (+7d) | 2027-05-22 → 2027-05-27 (+5d) |  |
| 1 | **Testing and Finishes** | 2027-04-19 → 2027-04-26 (+7d) | 2027-05-22 → 2027-05-27 (+5d) |  |
| CO-TE-CTV-TF-110 | Smart Card Printer | 2027-04-19 → 2027-04-26 (+7d) | 2027-04-22 → 2027-04-29 (+7d) | -83d → -89d |
| CO-TE-CTV-TF-120 | Card Issue Work Station | 2027-04-24 → 2027-05-01 (+7d) | 2027-04-27 → 2027-05-04 (+7d) | -83d → -89d |
| CO-TE-CTV-TF-130 | Photographic Camera with stand | 2027-04-28 → 2027-05-05 (+7d) | 2027-05-02 → 2027-05-09 (+7d) | -83d → -89d |
| CO-TE-CTV-TF-140 | Interface modules with CCTV, Fire and other systems | 2027-05-12 → 2027-05-23 (+11d) | 2027-05-22 → 2027-05-27 (+5d) | -91d → -95.5d |
| 2 | **Road Works** | 2027-04-06 → 2027-04-13 (+7d) | 2027-06-06 → 2027-06-13 (+7d) |  |
| 3 | **ST+1000:ST+1531** | 2027-04-06 → 2027-04-13 (+7d) | 2027-05-31 → 2027-06-07 (+7d) |  |

| ID | Task | Start | Finish | Total float |
| --- | --- | --- | --- | --- |
| 1 | **Bituminous Construction** | 2027-04-22 → 2027-04-29 (+7d) | 2027-05-09 → 2027-05-22 (+13d) |  |
| CO-RD-B-150 | Application of Prime Coat Layer for Road Works | 2027-04-22 → 2027-04-29 (+7d) | 2027-05-01 → 2027-05-08 (+7d) | -82.5d → -88.5d |
| CO-RD-B-160 | Bituminous Base Courses Layers for Road Works- | 2027-05-01 → 2027-05-08 (+7d) | 2027-05-09 → 2027-05-22 (+13d) | -82.5d → -88.5d |
| LS | **Pavement Works** | 2027-04-06 → 2027-04-13 (+7d) | 2027-05-03 → 2027-05-10 (+7d) |  |
| CO-RD-PV-160 | Fixing of Curbstone for Sidewalks Pavement | 2027-04-06 → 2027-04-13 (+7d) | 2027-04-20 → 2027-04-27 (+7d) | -82.7d → -88.7d |
| CO-RD-PV-170 | Fixing of Interlock Tiles for Sidewalks Pavement | 2027-04-20 → 2027-04-27 (+7d) | 2027-05-03 → 2027-05-10 (+7d) | -82.7d → -88.7d |
| TS | **Traffic Signs Boards and Roads Marking** | 2027-05-09 → 2027-05-22 (+13d) | 2027-05-31 → 2027-06-07 (+7d) |  |
| CO-RD-F-RM-180 | Application of Road Marking Works For Road Works | 2027-05-09 → 2027-05-22 (+13d) | 2027-05-23 → 2027-05-30 (+7d) | -79.5d → -85.5d |
| CO-RD-F-TS-120 | Installation Works of Traffic Signs Boards For Road Works | 2027-05-23 → 2027-05-30 (+7d) | 2027-05-31 → 2027-06-07 (+7d) | -79.5d → -85.5d |
| 1 | **ST+500:ST+1000** | 2027-04-20 → 2027-04-27 (+7d) | 2027-06-05 → 2027-06-12 (+7d) |  |
| 1 | **Bituminous Construction** | 2027-05-09 → 2027-05-22 (+13d) | 2027-05-24 → 2027-05-31 (+7d) |  |
| CO-RD-B-130 | Application of Prime Coat Layer for Road Works | 2027-05-09 → 2027-05-22 (+13d) | 2027-05-13 → 2027-05-26 (+13d) | -82.5d → -88.5d |
| CO-RD-B-140 | Bituminous Base Courses Layers for Road Works- | 2027-05-13 → 2027-05-26 (+13d) | 2027-05-24 → 2027-05-31 (+7d) | -82.5d → -88.5d |
| LS | **Pavement Works** | 2027-04-20 → 2027-04-27 (+7d) | 2027-05-22 → 2027-05-29 (+7d) |  |
| CO-RD-PV-140 | Fixing of Curbstone for Sidewalks Pavement | 2027-04-20 → 2027-04-27 (+7d) | 2027-05-03 → 2027-05-10 (+7d) | -82.7d → -88.7d |
| CO-RD-PV-150 | Fixing of Interlock Tiles for Sidewalks Pavement | 2027-05-03 → 2027-05-10 (+7d) | 2027-05-22 → 2027-05-29 (+7d) | -82.7d → -88.7d |
| TS | **Traffic Signs Boards and Roads Marking** | 2027-05-25 → 2027-06-01 (+7d) | 2027-06-05 → 2027-06-12 (+7d) |  |
| CO-RD-F-RM-170 | Application of Road Marking Works For Road Works | 2027-05-25 → 2027-06-01 (+7d) | 2027-05-31 → 2027-06-07 (+7d) | -83.5d → -89.5d |
| CO-RD-F-TS-110 | Installation Works of Traffic Signs Boards For Road Works | 2027-05-31 → 2027-06-07 (+7d) | 2027-06-05 → 2027-06-12 (+7d) | -83.5d → -89.5d |
| 2 | **ST+01:ST+500** | 2027-05-03 → 2027-05-10 (+7d) | 2027-06-06 → 2027-06-13 (+7d) |  |
| 1 | **Bituminous Construction** | 2027-05-25 → 2027-06-01 (+7d) | 2027-06-05 → 2027-06-12 (+7d) |  |
| CO-RD-B-110 | Application of Prime Coat Layer for Road Works | 2027-05-25 → 2027-06-01 (+7d) | 2027-05-31 → 2027-06-07 (+7d) | -83.5d → -89.5d |
| CO-RD-B-120 | Bituminous Base Courses Layers for Road Works- | 2027-05-31 → 2027-06-07 (+7d) | 2027-06-05 → 2027-06-12 (+7d) | -83.5d → -89.5d |
| LS | **Pavement Works** | 2027-05-03 → 2027-05-10 (+7d) | 2027-06-03 → 2027-06-10 (+7d) |  |
| CO-RD-PV-120 | Fixing of Curbstone for Sidewalks Pavement | 2027-05-03 → 2027-05-10 (+7d) | 2027-05-22 → 2027-05-29 (+7d) | -82.8d → -88.8d |
| CO-RD-PV-130 | Fixing of Interlock Tiles for Sidewalks Pavement | 2027-05-22 → 2027-05-29 (+7d) | 2027-06-03 → 2027-06-10 (+7d) | -82.8d → -88.8d |
| TS | **Traffic Signs Boards and Roads Marking** | 2027-06-05 → 2027-06-12 (+7d) | 2027-06-06 → 2027-06-13 (+7d) |  |
| CO-RD-F-RM-160 | Application of Road Marking Works For Road Works | 2027-06-05 → 2027-06-12 (+7d) | 2027-06-06 → 2027-06-13 (+7d) | -80.5d → -86.5d |
| CO-RD-F-TS-100 | Installation Works of Traffic Signs Boards For Road Works | 2027-06-05 → 2027-06-12 (+7d) | 2027-06-06 → 2027-06-13 (+7d) | -80.5d → -86.5d |
| GEN | **Superstructure Work** |  | 2027-05-27 → 2027-06-02 (+6d) |  |
| 4 | **Utility Buildings** |  | 2027-05-27 → 2027-06-02 (+6d) |  |
| 4 | **Pump Station** |  | 2027-05-27 → 2027-06-02 (+6d) |  |
| 2 | **Architectural work** | 2026-11-10 → 2026-11-17 (+7d) | 2026-12-20 → 2026-12-27 (+7d) |  |
| CO-UB-PS-260 | Executing Masonry Works for Pump station building | 2026-11-10 → 2026-11-17 (+7d) | 2026-11-15 → 2026-11-22 (+7d) | 20d → 14d |
| CO-UB-PS-270 | Executing Plastering Works for Pump station building | 2026-11-16 → 2026-11-23 (+7d) | 2026-11-21 → 2026-11-28 (+7d) | 20d → 14d |
| CO-UB-PS-280 | Executing Painting Works for Pump station building | 2026-11-22 → 2026-11-29 (+7d) | 2026-11-26 → 2026-12-03 (+7d) | 20d → 14d |
| CO-UB-PS-320 | Doors and windows Fixing &Stair Tiles | 2026-12-13 → 2026-12-20 (+7d) | 2026-12-20 → 2026-12-27 (+7d) | 24d → 18d |
| 3 | **Electrical work** | 2026-11-28 → 2026-12-05 (+7d) | 2027-05-22 → 2027-05-27 (+5d) |  |
| CO-UB-PS-290 | Lighting system for pump house | 2026-11-28 → 2026-12-05 (+7d) | 2026-12-02 → 2026-12-09 (+7d) | 20d → 14d |
| CO-UB-PS-300 | Wiring connection for pump house | 2026-12-03 → 2026-12-10 (+7d) | 2026-12-08 → 2026-12-15 (+7d) | 20d → 14d |
| CO-UB-PS-310 | Sockets and switches for pump house | 2026-12-09 → 2026-12-16 (+7d) | 2026-12-12 → 2026-12-19 (+7d) | 20d → 14d |
| CO-UB-PS-330 | Installation for Distribution boards for pump house | 2026-12-13 → 2026-12-20 (+7d) | 2026-12-21 → 2026-12-28 (+7d) | 20d → 14d |
| CO-UB-PS-370 | Executing Earthing and bonding for the entire system | 2027-05-08 → 2027-05-12 (+4d) | 2027-05-22 → 2027-05-27 (+5d) | -88d → -92.75d |
| 4 | **Mechanical work** | 2026-12-13 → 2026-12-20 (+7d) | 2027-05-27 → 2027-06-02 (+6d) |  |
| CO-UB-PS-340 | Executing HVAC System for Pump station building | 2026-12-13 → 2026-12-20 (+7d) | 2026-12-28 → 2027-01-04 (+7d) | 22d → 16d |
| CO-UB-PS-350 | Executing Fire Alarm System for Pump station building | 2026-12-13 → 2026-12-20 (+7d) | 2026-12-17 → 2026-12-24 (+7d) | 21d → 15d |
| CO-UB-PS-360 | Executing Fire fighting institution works(piping and wire installation) for Pump station building | 2026-12-19 → 2026-12-26 (+7d) | 2026-12-23 → 2026-12-30 (+7d) | 21d → 15d |
| CO-UB-PS-380 | Executing Fire fighting finishing works for Pump station building | 2026-12-24 → 2026-12-31 (+7d) | 2026-12-29 → 2027-01-05 (+7d) | 21d → 15d |
| CO-UB-PS-390 | Installation of pumps | 2027-05-23 → 2027-05-27 (+4d) | 2027-05-27 → 2027-06-02 (+6d) | -88d → -92.75d |
| 3 | **Lift Station** |  | 2027-01-28 → 2027-02-04 (+7d) |  |
| 1 | **Civil work** |  | 2026-12-05 → 2026-12-12 (+7d) |  |
| 2 | **Super structure** |  | 2026-12-05 → 2026-12-12 (+7d) |  |
| CO-UB-LS-290 | Formwork for Wall and columns for Lift Station |  | 2026-11-12 → 2026-11-19 (+7d) | 0.75d → -5.25d |
| CO-UB-LS-300 | Steel fixing for Wall columns |  | 2026-11-12 → 2026-11-19 (+7d) | 0.75d → -5.25d |
| CO-UB-LS-310 | pouring for Wall columns |  | 2026-11-12 → 2026-11-19 (+7d) | 0.75d → -5.25d |
| CO-UB-LS-330 | Waterproofing for Walls columns |  | 2026-11-17 → 2026-11-24 (+7d) | 0.75d → -5.25d |
| CO-UB-LS-320 | curing and deshuttering formwork for Wall columns |  | 2026-11-15 → 2026-11-22 (+7d) | 0.75d → -5.25d |
| CO-UB-LS-340 | Formwork for pump roof | 2026-11-17 → 2026-11-24 (+7d) | 2026-11-23 → 2026-11-30 (+7d) | 0.75d → -5.25d |
| CO-UB-LS-350 | Steel fixing for pump roof | 2026-11-23 → 2026-11-30 (+7d) | 2026-11-30 → 2026-12-07 (+7d) | 0.75d → -5.25d |
| CO-UB-LS-360 | pouring for pump roof | 2026-11-30 → 2026-12-07 (+7d) | 2026-12-01 → 2026-12-08 (+7d) | 0.75d → -5.25d |
| CO-UB-LS-370 | curing and deshuttering formwork for pump roof | 2026-12-01 → 2026-12-08 (+7d) | 2026-12-05 → 2026-12-12 (+7d) | 0.75d → -5.25d |
| 2 | **Architectural work** | 2026-12-05 → 2026-12-12 (+7d) | 2026-12-22 → 2026-12-29 (+7d) |  |
| CO-UB-LS-380 | Executing Masonry Works for Pump station building | 2026-12-05 → 2026-12-12 (+7d) | 2026-12-13 → 2026-12-20 (+7d) | 0.75d → -5.25d |
| CO-UB-LS-390 | Executing Plastering Works for Pump station building | 2026-12-13 → 2026-12-20 (+7d) | 2026-12-22 → 2026-12-29 (+7d) | 0.75d → -5.25d |
| 3 | **Electrical work** | 2026-12-22 → 2026-12-29 (+7d) | 2027-01-28 → 2027-02-04 (+7d) |  |
| CO-UB-LS-400 | Lighting system for pump house | 2026-12-22 → 2026-12-29 (+7d) | 2026-12-31 → 2027-01-07 (+7d) | 0.75d → -5.25d |
| CO-UB-LS-420 | Wiring connection for pump house | 2026-12-31 → 2027-01-07 (+7d) | 2027-01-07 → 2027-01-14 (+7d) | 0.75d → -5.25d |
| CO-UB-LS-440 | Sockets and switches for pump house | 2027-01-07 → 2027-01-14 (+7d) | 2027-01-14 → 2027-01-21 (+7d) | 0.75d → -5.25d |
| CO-UB-LS-460 | Installation for Distribution boards for pump house | 2027-01-14 → 2027-01-21 (+7d) | 2027-01-21 → 2027-01-28 (+7d) | 0.75d → -5.25d |
| CO-UB-LS-480 | Executing Earthing and bonding for the entire system | 2027-01-21 → 2027-01-28 (+7d) | 2027-01-28 → 2027-02-04 (+7d) | 0.75d → -5.25d |

| ID | Task | Start | Finish | Total float |
| --- | --- | --- | --- | --- |
| 4 | **Mechanical work** | 2026-12-22 → 2026-12-29 (+7d) | 2027-01-26 → 2027-02-02 (+7d) |  |
| CO-UB-LS-410 | Internal pipe installation | 2026-12-22 → 2026-12-29 (+7d) | 2026-12-31 → 2027-01-07 (+7d) | 2.75d → -3.25d |
| CO-UB-LS-430 | Guide rails & lifting chains installation | 2026-12-31 → 2027-01-07 (+7d) | 2027-01-09 → 2027-01-16 (+7d) | 2.75d → -3.25d |
| CO-UB-LS-450 | ExeValve installation | 2027-01-09 → 2027-01-16 (+7d) | 2027-01-17 → 2027-01-24 (+7d) | 2.75d → -3.25d |
| CO-UB-LS-470 | Installation of pumps | 2027-01-17 → 2027-01-24 (+7d) | 2027-01-26 → 2027-02-02 (+7d) | 2.75d → -3.25d |
| 5 | **Potable Water Tank** |  | 2027-01-07 → 2027-01-14 (+7d) |  |
| 2 | **Structural Work** |  | 2026-11-23 → 2026-11-30 (+7d) |  |
| CO-UB-PWT-130 | Form work for Tank Foundation | 2026-11-10 → 2026-11-17 (+7d) | 2026-11-15 → 2026-11-22 (+7d) | 16d → 10d |
| CO-UB-PWT-140 | Steel Reinforcement work for Tank Foundation | 2026-11-16 → 2026-11-23 (+7d) | 2026-11-22 → 2026-11-29 (+7d) | 16d → 10d |
| CO-UB-PWT-150 | Casting concrete for Tank Foundation | 2026-11-23 → 2026-11-30 (+7d) | 2026-11-23 → 2026-11-30 (+7d) | 16d → 10d |
| 3 | **Tank Shell Erection&Roof Installation** | 2026-11-24 → 2026-12-01 (+7d) | 2026-12-19 → 2026-12-26 (+7d) |  |
| CO-UB-PWT-160 | Bottom ring installation | 2026-11-24 → 2026-12-01 (+7d) | 2026-11-30 → 2026-12-07 (+7d) | 16d → 10d |
| CO-UB-PWT-170 | shell erection | 2026-12-01 → 2026-12-08 (+7d) | 2026-12-09 → 2026-12-16 (+7d) | 16d → 10d |
| CO-UB-PWT-180 | Aluminum dome / steel roof installation | 2026-12-10 → 2026-12-17 (+7d) | 2026-12-19 → 2026-12-26 (+7d) | 16d → 10d |
| 4 | **Mechanical Work&Accessories** | 2026-12-20 → 2026-12-27 (+7d) | 2027-01-07 → 2027-01-14 (+7d) |  |
| CO-UB-PWT-190 | Inlet / outlet piping connections | 2026-12-20 → 2026-12-27 (+7d) | 2026-12-26 → 2027-01-02 (+7d) | 16d → 10d |
| CO-UB-PWT-200 | installation Valves | 2026-12-27 → 2027-01-03 (+7d) | 2027-01-02 → 2027-01-09 (+7d) | 16d → 10d |
| CO-UB-PWT-210 | Ladders, platforms & handrails | 2027-01-03 → 2027-01-10 (+7d) | 2027-01-07 → 2027-01-14 (+7d) | 16d → 10d |
| 2 | **IrrigationTank** |  | 2026-12-26 → 2027-01-02 (+7d) |  |
| 2 | **Structural Work** |  | 2026-11-23 → 2026-11-30 (+7d) |  |
| CO-UB-IRT-170 | Form work for Tank Foundation | 2026-11-10 → 2026-11-17 (+7d) | 2026-11-16 → 2026-11-23 (+7d) | 27d → 21d |
| CO-UB-IRT-180 | Steel Reinforcement work for Tank Foundation | 2026-11-17 → 2026-11-24 (+7d) | 2026-11-22 → 2026-11-29 (+7d) | 27d → 21d |
| CO-UB-IRT-190 | Casting concrete for Tank Foundation | 2026-11-23 → 2026-11-30 (+7d) | 2026-11-23 → 2026-11-30 (+7d) | 27d → 21d |
| 3 | **Tank Shell Erection&Roof Installation** | 2026-11-24 → 2026-12-01 (+7d) | 2026-12-14 → 2026-12-21 (+7d) |  |
| CO-UB-IRT-200 | Bottom ring installation | 2026-11-24 → 2026-12-01 (+7d) | 2026-11-30 → 2026-12-07 (+7d) | 27d → 21d |
| CO-UB-IRT-210 | shell erection | 2026-12-01 → 2026-12-08 (+7d) | 2026-12-07 → 2026-12-14 (+7d) | 27d → 21d |
| CO-UB-IRT-220 | Aluminum dome / steel roof installation | 2026-12-08 → 2026-12-15 (+7d) | 2026-12-14 → 2026-12-21 (+7d) | 27d → 21d |
| 4 | **Mechanical Work&Accessories** | 2026-12-15 → 2026-12-22 (+7d) | 2026-12-26 → 2027-01-02 (+7d) |  |
| CO-UB-IRT-230 | Inlet / outlet piping connections | 2026-12-15 → 2026-12-22 (+7d) | 2026-12-19 → 2026-12-26 (+7d) | 27d → 21d |
| CO-UB-IRT-240 | installation Valves | 2026-12-20 → 2026-12-27 (+7d) | 2026-12-23 → 2026-12-30 (+7d) | 27d → 21d |
| CO-UB-IRT-250 | Ladders, platforms & handrails | 2026-12-24 → 2026-12-31 (+7d) | 2026-12-26 → 2027-01-02 (+7d) | 27d → 21d |
| 1 | **Control Room** |  | 2027-01-25 → 2027-02-01 (+7d) |  |
| 5 | **Civil Work** |  | 2026-11-10 → 2026-11-17 (+7d) |  |
| CO-UB-CR-140 | Pouring Beams and Slab For Control Room |  | 2026-11-10 → 2026-11-17 (+7d) | 21d → 15d |
| 6 | **Finishing Work** | 2026-11-10 → 2026-11-17 (+7d) | 2027-01-25 → 2027-02-01 (+7d) |  |
| 1 | **Architictural work** | 2026-11-10 → 2026-11-17 (+7d) | 2026-12-26 → 2027-01-02 (+7d) |  |
| CO-UB-CR-150 | Brick Work For Control Room | 2026-11-10 → 2026-11-17 (+7d) | 2026-11-19 → 2026-11-26 (+7d) | 21d → 15d |
| CO-UB-CR-160 | Thermal & Moisture Protection Work for Control Room | 2026-11-21 → 2026-11-28 (+7d) | 2026-11-28 → 2026-12-05 (+7d) | 21d → 15d |
| CO-UB-CR-200 | Install For Curtian Wall and Windows and Doors | 2026-11-29 → 2026-12-06 (+7d) | 2026-12-07 → 2026-12-14 (+7d) | 21d → 15d |
| CO-UB-CR-240 | External Finshing Work (Walls and Floor) | 2026-12-08 → 2026-12-15 (+7d) | 2026-12-16 → 2026-12-23 (+7d) | 21d → 15d |
| CO-UB-CR-250 | Internal Finshing Work (Walls,Floor and Ceiling) | 2026-12-17 → 2026-12-24 (+7d) | 2026-12-26 → 2027-01-02 (+7d) | 21d → 15d |
| 3 | **Mechanical Work** | 2026-11-21 → 2026-11-28 (+7d) | 2027-01-06 → 2027-01-13 (+7d) |  |
| 3 | **HVAC System** | 2026-11-21 → 2026-11-28 (+7d) | 2027-01-06 → 2027-01-13 (+7d) |  |
| CO-UB-CR-170 | Install of Refrigerant Piping ( fabricated metal ducts with flanges complete with supports, vanes, dampers ) | 2026-11-21 → 2026-11-28 (+7d) | 2026-11-24 → 2026-12-01 (+7d) | 34d → 28d |
| CO-UB-CR-260 | Install of Mini split actual capacity 2 Ton and Ducted split actual capacity 4 Ton | 2026-12-27 → 2027-01-03 (+7d) | 2027-01-03 → 2027-01-10 (+7d) | 32d → 26d |
| CO-UB-CR-310 | Install of Air Grills 150mm x150mm and Air Diffuser 600mm x 600mm | 2027-01-04 → 2027-01-11 (+7d) | 2027-01-06 → 2027-01-13 (+7d) | 32d → 26d |
| 4 | **Fire Fitting System** | 2026-11-25 → 2026-12-02 (+7d) | 2026-12-29 → 2027-01-05 (+7d) |  |
| CO-UB-CR-180 | Installation & Testing of 2 hours Fire rated system for closing the openings between rooms with help of Rock wool | 2026-11-25 → 2026-12-02 (+7d) | 2026-11-29 → 2026-12-06 (+7d) | 34d → 28d |
| CO-UB-CR-270 | Install Fire Extinguishers | 2026-12-27 → 2027-01-03 (+7d) | 2026-12-29 → 2027-01-05 (+7d) | 39d → 33d |
| 4 | **Electrical Work** | 2026-11-30 → 2026-12-07 (+7d) | 2027-01-19 → 2027-01-26 (+7d) |  |
| 1 | **LV Power** | 2026-12-27 → 2027-01-03 (+7d) | 2027-01-12 → 2027-01-19 (+7d) |  |
| CO-UB-CR-190 | Install of Distribution board For Control Room | 2026-12-27 → 2027-01-03 (+7d) | 2026-12-31 → 2027-01-07 (+7d) | 27d → 21d |
| CO-UB-CR-220 | Install of Earting Cable for Control Room | 2027-01-02 → 2027-01-09 (+7d) | 2027-01-06 → 2027-01-13 (+7d) | 27d → 21d |
| CO-UB-CR-280 | Install of Socket outlet and LED Lighting | 2027-01-07 → 2027-01-14 (+7d) | 2027-01-12 → 2027-01-19 (+7d) | 27d → 21d |
| 3 | **Fire Detection And Alarm System** | 2026-11-30 → 2026-12-07 (+7d) | 2027-01-19 → 2027-01-26 (+7d) |  |
| CO-UB-CR-210 | Install of 2C x 1.5 Sqm FR Rated Armored - Cable For Loop Wiring | 2026-11-30 → 2026-12-07 (+7d) | 2026-12-05 → 2026-12-12 (+7d) | 34d → 28d |
| CO-UB-CR-230 | Install of Transmission Communication cable - Fiber Optics 12Core | 2026-12-06 → 2026-12-13 (+7d) | 2026-12-10 → 2026-12-17 (+7d) | 34d → 28d |
| CO-UB-CR-290 | Install of power supply system for fire alarm control panel | 2026-12-27 → 2027-01-03 (+7d) | 2026-12-31 → 2027-01-07 (+7d) | 21d → 15d |
| CO-UB-CR-300 | Install of Fire Alarm Control panel | 2027-01-02 → 2027-01-09 (+7d) | 2027-01-07 → 2027-01-14 (+7d) | 21d → 15d |
| CO-UB-CR-320 | Installation of the addressable manual call point with operation safety glass breaking | 2027-01-09 → 2027-01-16 (+7d) | 2027-01-11 → 2027-01-18 (+7d) | 21d → 15d |
| CO-UB-CR-330 | Install of the photoelectric heat & smoke detector | 2027-01-12 → 2027-01-19 (+7d) | 2027-01-14 → 2027-01-21 (+7d) | 21d → 15d |
| CO-UB-CR-340 | Install of Sounder With Beacon | 2027-01-12 → 2027-01-19 (+7d) | 2027-01-14 → 2027-01-21 (+7d) | 21d → 15d |
| CO-UB-CR-350 | Install of Addressable Control module | 2027-01-16 → 2027-01-23 (+7d) | 2027-01-19 → 2027-01-26 (+7d) | 21d → 15d |
| 2 | **Furnitures work** | 2027-01-20 → 2027-01-27 (+7d) | 2027-01-25 → 2027-02-01 (+7d) |  |
| CO-UB-CR-360 | Office Chairs,Tables and Stand | 2027-01-20 → 2027-01-27 (+7d) | 2027-01-25 → 2027-02-01 (+7d) | 21d → 15d |
| ML | **Softscape and Planting Works** | 2027-03-16 → 2027-03-22 (+6d) | 2027-05-01 → 2027-05-05 (+4d) |  |
| 1 | **Planting Beds Preparation** | 2027-03-16 → 2027-03-22 (+6d) | 2027-04-10 → 2027-04-14 (+4d) |  |
| CO-LS-PL-100 | Excavation of planting beds | 2027-03-16 → 2027-03-22 (+6d) | 2027-03-24 → 2027-03-29 (+5d) | -88d → -92.5d |
| CO-LS-PL-110 | Supply & placement of suitable topsoil | 2027-03-24 → 2027-03-30 (+6d) | 2027-04-01 → 2027-04-06 (+5d) | -88d → -92.5d |
| CO-LS-PL-120 | Soil improvement (fertilizer, compost, additives) | 2027-04-01 → 2027-04-07 (+6d) | 2027-04-10 → 2027-04-14 (+4d) | -88d → -92.5d |

| ID | Task | Start | Finish | Complete | Total float | Predecessors |
| --- | --- | --- | --- | --- | --- | --- |
| 2 | **Supports & Protection** | 2027-04-10 → 2027-04-15 (+5d) | 2027-04-17 → 2027-04-21 (+4d) |  |  |  |
| CO-LS-PL-130 | installation of plant supports / stakes | 2027-04-10 → 2027-04-15 (+5d) | 2027-04-13 → 2027-04-18 (+5d) |  | -88d → -92.5d |  |
| CO-LS-PL-140 | Ties and protection materials | 2027-04-13 → 2027-04-19 (+6d) | 2027-04-17 → 2027-04-21 (+4d) |  | -88d → -92.5d |  |
| 3 | **Plant Supply** | 2027-04-17 → 2027-04-22 (+5d) | 2027-04-20 → 2027-04-25 (+5d) |  |  |  |
| CO-LS-PL-150 | installation of trees | 2027-04-17 → 2027-04-22 (+5d) | 2027-04-20 → 2027-04-25 (+5d) |  | -88d → -92.5d |  |
| 4 | **Site Furnishings** | 2027-04-20 → 2027-04-26 (+6d) | 2027-05-01 → 2027-05-05 (+4d) |  |  |  |
| CO-LS-PL-160 | installation of Seating benches | 2027-04-20 → 2027-04-26 (+6d) | 2027-04-24 → 2027-04-28 (+4d) |  | -88d → -92.5d |  |
| CO-LS-PL-170 | tone boulders placement & fixing Works | 2027-04-24 → 2027-04-29 (+5d) | 2027-04-27 → 2027-05-02 (+5d) |  | -88d → -92.5d |  |
| CO-LS-PL-180 | Gravel Works | 2027-04-27 → 2027-05-03 (+6d) | 2027-05-01 → 2027-05-05 (+4d) |  | -88d → -92.5d |  |
| 1 | **Fence and Gaurd Room** |  | 2027-04-26 → 2027-05-03 (+7d) |  |  |  |
| 1 | **Gaurd Room Work** |  | 2027-03-28 → 2027-03-23 (-5d) |  |  |  |
| 1 | **Civil Work** |  | 2026-12-14 → 2026-12-09 (-5d) |  |  |  |
| A1020 | Pouring R.C Footing For Gaurd Room |  | 2026-11-22 → 2026-11-29 (+7d) |  | -23.5d → -19.5d |  |
| A1030 | Pouring R.C Columns For Gaurd Room | 2026-11-23 → 2026-11-11 A (-12d) | 2026-12-03 → 2026-11-29 (-4d) | 0% → 50% | -23.5d → -19.5d | A1020 → A1020 SS, A1020 FF |
| A1040 | Pouring Beams and Slab For Gaurd Room | 2026-12-05 → 2026-11-30 (-5d) | 2026-12-14 → 2026-12-09 (-5d) |  | -23.5d → -19.5d |  |
| 2 | **Finishing Work** | 2026-12-15 → 2026-12-10 (-5d) | 2027-03-28 → 2027-03-23 (-5d) |  |  |  |
| 1 | **Architictural work** | 2026-12-15 → 2026-12-10 (-5d) | 2027-02-06 → 2027-02-01 (-5d) |  |  |  |
| A1050 | Brick Work For Gaurd Room | 2026-12-15 → 2026-12-10 (-5d) | 2026-12-24 → 2026-12-20 (-4d) |  | -23.5d → -19.5d |  |
| A1060 | Thermal & Moisture Protection Work for Gaurd Room | 2026-12-26 → 2026-12-21 (-5d) | 2027-01-02 → 2026-12-28 (-5d) |  | -17.5d → -13.5d |  |
| A1070 | Install For Curtian Wall and Windows and Doors | 2027-01-10 → 2027-01-05 (-5d) | 2027-01-18 → 2027-01-13 (-5d) |  | -23.5d → -19.5d |  |
| A1080 | External Finshing Work (Walls and Floor) | 2027-01-19 → 2027-01-14 (-5d) | 2027-01-27 → 2027-01-23 (-4d) |  | -23.5d → -19.5d |  |
| A1090 | Internal Finshing Work (Walls,Floor and Ceiling) | 2027-01-28 → 2027-01-24 (-4d) | 2027-02-06 → 2027-02-01 (-5d) |  | -23.5d → -19.5d |  |
| 3 | **Mechanical Work** | 2026-12-26 → 2026-12-21 (-5d) | 2027-02-21 → 2027-02-15 (-6d) |  |  |  |
| 1 | **Sanitary Drainage & Plumbing System** | 2026-12-26 → 2026-12-21 (-5d) | 2027-01-09 → 2027-01-04 (-5d) |  |  |  |
| A1110 | Install Sanitary Piping System (UPVC) | 2026-12-26 → 2026-12-21 (-5d) | 2026-12-29 → 2026-12-24 (-5d) |  | -23.5d → -19.5d |  |
| A1120 | Install Base mounted flush tank water Western water closet system | 2026-12-30 → 2026-12-26 (-4d) | 2027-01-05 → 2026-12-31 (-5d) |  | -23.5d → -19.5d |  |
| A1130 | Install 1 meter length 10mm diameter Flexible Hose and Gate Valves and Slow Closing Valve | 2027-01-06 → 2027-01-02 (-4d) | 2027-01-09 → 2027-01-04 (-5d) |  | -23.5d → -19.5d |  |
| 2 | **Water Supply System** | 2026-12-26 → 2026-12-21 (-5d) | 2027-02-09 → 2027-02-03 (-6d) |  |  |  |
| A1240 | Install GRP water tanks capacity of each 1000 liter | 2026-12-26 → 2026-12-21 (-5d) | 2026-12-28 → 2026-12-23 (-5d) |  | -22.5d → -18.5d |  |
| A1140 | Install for Cold Water Pipe complete with joints, angles, reducer etc. | 2026-12-29 → 2026-12-24 (-5d) | 2027-01-03 → 2026-12-29 (-5d) |  | -22.5d → -18.5d |  |
| A1150 | Install for Hot Water Pipe complete with joints, angles, reducer etc. | 2027-01-04 → 2026-12-30 (-5d) | 2027-01-07 → 2027-01-03 (-4d) |  | -22.5d → -18.5d |  |
| A1160 | Install for Isolation Valve,Spray Head,Roof Drain,Floor Drain,Gully teap,Vend on Roof to exhaust air | 2027-01-09 → 2027-01-04 (-5d) | 2027-01-11 → 2027-01-06 (-5d) |  | -3.5d → 0.5d |  |
| A1170 | Install of Inspection chamber, size 800x900x1000 | 2027-01-12 → 2027-01-07 (-5d) | 2027-01-13 → 2027-01-09 (-4d) |  | -3.5d → 0.5d |  |
| A1180 | Install OF Electric Water Heater set with connection and Water meter complete with accessories | 2027-02-07 → 2027-02-02 (-5d) | 2027-02-09 → 2027-02-03 (-6d) |  | -23.5d → -19.5d |  |
| 3 | **HVAC System** | 2026-12-30 → 2026-12-26 (-4d) | 2027-02-21 → 2027-02-15 (-6d) |  |  |  |
| A1200 | Install of Refrigerant Piping ( fabricated metal ducts with flanges complete with supports, vanes, dampers ) | 2026-12-30 → 2026-12-26 (-4d) | 2027-01-03 → 2026-12-29 (-5d) |  | -4.5d → -0.5d |  |
| A1190 | Install of Mini split actual capacity 2 Ton and Ducted split actual capacity 4 Ton | 2027-02-07 → 2027-02-02 (-5d) | 2027-02-16 → 2027-02-10 (-6d) |  | -5d → -1d |  |
| A1210 | Install of Air Grills 150mm x150mm and Air Diffuser 600mm x 600mm | 2027-02-17 → 2027-02-10 (-7d) | 2027-02-21 → 2027-02-15 (-6d) |  | -5d → -1d |  |
| 4 | **Fire Fitting System** | 2027-01-04 → 2026-12-30 (-5d) | 2027-02-15 → 2027-02-09 (-6d) |  |  |  |
| A1220 | Installation & Testing of 2 hours Fire rated system for closing the openings between rooms with help of Rock wool | 2027-01-04 → 2026-12-30 (-5d) | 2027-01-10 → 2027-01-05 (-5d) |  | -4.5d → -0.5d |  |
| A1230 | Install Fire Extinguishers | 2027-02-07 → 2027-02-02 (-5d) | 2027-02-15 → 2027-02-09 (-6d) |  | -1d → 3d |  |
| 4 | **Electrical Work** | 2027-01-04 → 2026-12-30 (-5d) | 2027-03-23 → 2027-03-18 (-5d) |  |  |  |
| 1 | **LV Power** | 2027-01-04 → 2026-12-30 (-5d) | 2027-02-14 → 2027-02-07 (-7d) |  |  |  |
| A1250 | Install of Distribution board For Gaurd Room | 2027-01-04 → 2026-12-30 (-5d) | 2027-01-09 → 2027-01-04 (-5d) |  | -2.5d → 1.5d |  |
| A1270 | Install of Earting Cable for Gaurd Room | 2027-01-10 → 2027-01-05 (-5d) | 2027-01-14 → 2027-01-10 (-4d) |  | -2.5d → 1.5d |  |
| A1260 | Install of Socket outlet and LED Lighting | 2027-02-07 → 2027-02-02 (-5d) | 2027-02-14 → 2027-02-07 (-7d) |  | 0d → 4d |  |
| 3 | **Fire Detection And Alarm System** | 2027-01-11 → 2027-01-06 (-5d) | 2027-03-13 → 2027-03-03 (-10d) |  |  |  |
| A1340 | Install of 2C x 1.5 Sqm FR Rated Armored - Cable For Loop Wiring | 2027-01-11 → 2027-01-06 (-5d) | 2027-01-16 → 2027-01-11 (-5d) |  | -4.5d → -0.5d |  |
| A1350 | Install of Transmission Communication cable - Fiber Optics 12Core | 2027-01-17 → 2027-01-12 (-5d) | 2027-01-21 → 2027-01-17 (-4d) |  | -4.5d → -0.5d |  |
| A1360 | Install of power supply system for fire alarm control panel | 2027-02-07 → 2027-02-02 (-5d) | 2027-02-14 → 2027-02-07 (-7d) |  | -17.5d → -13.5d |  |
| A1280 | Install of Fire Alarm Control panel | 2027-02-14 → 2027-02-08 (-6d) | 2027-02-22 → 2027-02-16 (-6d) |  | -17.5d → -13.5d |  |
| A1290 | Installation of the addressable manual call point with operation safety glass breaking | 2027-02-23 → 2027-02-17 (-6d) | 2027-02-27 → 2027-02-21 (-6d) |  | -17.5d → -13.5d |  |
| A1300 | Install of the photoelectric heat & smoke detector | 2027-02-28 → 2027-02-22 (-6d) | 2027-03-03 → 2027-02-25 (-6d) |  | -17.5d → -13.5d |  |
| A1310 | Install of Sounder With Beacon | 2027-02-28 → 2027-02-22 (-6d) | 2027-03-03 → 2027-02-25 (-6d) |  | -17.5d → -13.5d |  |
| A1320 | Install of Addressable Control module | 2027-03-04 → 2027-02-25 (-7d) | 2027-03-13 → 2027-03-03 (-10d) |  | -17.5d → -13.5d |  |
| 2 | **Security System** | 2027-02-09 → 2027-02-04 (-5d) | 2027-03-23 → 2027-03-18 (-5d) |  |  |  |
| A1580 | Install 8 Port Industrial PoE Switch 10/100BaseT (0 deg to +70 deg. Celsius) | 2027-02-09 → 2027-02-04 (-5d) | 2027-02-16 → 2027-02-10 (-6d) |  | -23.5d → -19.5d |  |
| A1590 | Optical Fiber,48 Core Splice Closure | 2027-02-17 → 2027-02-10 (-7d) | 2027-02-21 → 2027-02-15 (-6d) |  | -22.5d → -18.5d |  |
| A1650 | Pole/Bollard mounted IP( PoE) and 12U rack dimension | 2027-02-17 → 2027-02-10 (-7d) | 2027-02-22 → 2027-02-16 (-6d) |  | -23.5d → -19.5d |  |
| A1600 | Boom Barrier at Security Guard Room | 2027-02-23 → 2027-02-17 (-6d) | 2027-03-02 → 2027-02-24 (-6d) |  | -23.5d → -19.5d |  |
| A1610 | Pedestrian turnstile at Security Guard Room | 2027-03-02 → 2027-02-24 (-6d) | 2027-03-13 → 2027-03-03 (-10d) |  | -23.5d → -19.5d |  |
| A1620 | Access Control Unit and Access Card Reader | 2027-03-14 → 2027-03-04 (-10d) | 2027-03-17 → 2027-03-13 (-4d) |  | -23.5d → -19.5d |  |
| A1630 | Magnetic Lock and Break Glass and Exit Push button | 2027-03-18 → 2027-03-14 (-4d) | 2027-03-22 → 2027-03-17 (-5d) |  | -23.5d → -19.5d |  |
| A1640 | Door Sensor and Biometrics Reader | 2027-03-21 → 2027-03-16 (-5d) | 2027-03-23 → 2027-03-18 (-5d) |  | -23.5d → -19.5d |  |
| 2 | **Furnitures work** | 2027-03-22 → 2027-03-17 (-5d) | 2027-03-28 → 2027-03-23 (-5d) |  |  |  |
| A1100 | Office Chairs,Tables and Stand | 2027-03-22 → 2027-03-17 (-5d) | 2027-03-28 → 2027-03-23 (-5d) |  | -23.5d → -19.5d |  |
| 2 | **Fence Work** |  | 2027-04-26 → 2027-05-03 (+7d) |  |  |  |
| 1 | **Northern Fence N01:N03** |  | 2027-01-25 → 2027-02-01 (+7d) |  |  |  |
| 5 | **Finishing Work** |  | 2027-01-25 → 2027-02-01 (+7d) |  |  |  |
| 3 | **Electrical Work** | 2026-11-10 → 2026-11-17 (+7d) | 2027-01-25 → 2027-02-01 (+7d) |  |  |  |

| ID | Task | Start | Finish | Complete | Total float |
| --- | --- | --- | --- | --- | --- |
| CO-SU-FE-N-EL-100 | Trench excavation to receive 2 nos 50mm diameter PVC Conduit | 2026-11-10 → 2026-11-17 (+7d) | 2026-11-18 → 2026-11-25 (+7d) |  | -48d → -54d |
| CO-SU-FE-N-EL-110 | Trench excavation to receive 3 nos 50mm diameter PVC Conduit | 2026-11-10 → 2026-11-17 (+7d) | 2026-11-18 → 2026-11-25 (+7d) |  | -48d → -54d |
| CO-SU-FE-N-EL-120 | Fixing of Control cable,CAT6A cable | 2026-11-19 → 2026-11-26 (+7d) | 2026-11-29 → 2026-12-06 (+7d) |  | -48d → -54d |
| CO-SU-FE-N-EL-130 | Install 800mm x 800mm x 800mm height concrete handhole | 2026-11-19 → 2026-11-26 (+7d) | 2026-11-29 → 2026-12-06 (+7d) |  | -48d → -54d |
| CO-SU-FE-N-EL-140 | Hot dipped galvanized cable conduits for CAT6A cable and Control Cables embedded to wall | 2026-11-19 → 2026-11-26 (+7d) | 2026-11-28 → 2026-12-05 (+7d) |  | -47d → -53d |
| CO-SU-FE-N-EL-150 | Fixing Earthing Work (Earth Pit,Grounding rod,Tinned Copper wire) | 2026-11-30 → 2026-12-07 (+7d) | 2026-12-08 → 2026-12-15 (+7d) |  | -48d → -54d |
| CO-SU-FE-N-EL-160 | Field Equipment Cabinet enclosed outdoor complete with precast concrete footing, | 2026-12-09 → 2026-12-16 (+7d) | 2026-12-17 → 2026-12-24 (+7d) |  | -48d → -54d |
| CO-SU-FE-N-EL-170 | Fence Lightining 400V, 3PH, 60Hz lighting control panel (LCP-02) | 2026-12-09 → 2026-12-16 (+7d) | 2026-12-17 → 2026-12-24 (+7d) |  | -48d → -54d |
| CO-SU-FE-N-EL-180 | Install of direct buried armored cable 4C-16mm2 ,10mm2 | 2026-12-19 → 2026-12-26 (+7d) | 2026-12-28 → 2027-01-04 (+7d) |  | -48d → -54d |
| CO-SU-FE-N-EL-190 | Install 16mm2,10mm2 CU/PVC wire | 2026-12-19 → 2026-12-26 (+7d) | 2026-12-28 → 2027-01-04 (+7d) |  | -48d → -54d |
| CO-SU-FE-N-EL-200 | FEC-CCTV ( 4C-16mm2 CU/XLPE/PVC direct buried armored cable,16mm2 CU/PVC wire | 2026-12-19 → 2026-12-26 (+7d) | 2026-12-27 → 2027-01-03 (+7d) |  | 5d → -1d |
| CO-SU-FE-N-EL-210 | Junction Box for lighting fixture | 2026-12-29 → 2027-01-05 (+7d) | 2027-01-06 → 2027-01-13 (+7d) |  | -48d → -54d |
| CO-SU-FE-N-EL-220 | IR Intrusion Detection System Quad Beams | 2027-01-07 → 2027-01-14 (+7d) | 2027-01-16 → 2027-01-23 (+7d) |  | -3d → -9d |
| CO-SU-FE-N-EL-230 | Install of 38W, 230V, 1PH, 60Hz fence, led linear uplight lighting, IP66 | 2027-01-07 → 2027-01-14 (+7d) | 2027-01-17 → 2027-01-24 (+7d) |  | -4d → -10d |
| CO-SU-FE-N-EL-240 | Install, fixings, testing and commissioning 80W LED | 2027-01-18 → 2027-01-25 (+7d) | 2027-01-25 → 2027-02-01 (+7d) |  | -4d → -10d |
| 4 | **Architictural work** |  | 2026-12-23 → 2026-12-30 (+7d) |  |  |
| CO-SU-FE-N-AR-120 | Install 50mm thick random cut stone cladding |  | 2026-11-10 → 2026-11-17 (+7d) |  | 16d → 10d |
| CO-SU-FE-N-AR-150 | Install MODON Signage | 2026-12-16 → 2026-12-23 (+7d) | 2026-12-23 → 2026-12-30 (+7d) |  | 20d → 14d |
| 2 | **Western Fence P1 ( W01:W06 )** |  | 2027-03-29 → 2027-04-05 (+7d) |  |  |
| 1 | **Civil Work** |  | 2026-11-12 → 2026-11-16 (+4d) |  |  |
| CO-SU-FE-WP1-CI-180 | Pouring R.C Columns For Northern Fence |  | 2026-11-11 → 2026-11-16 A (+5d) | 98% → 100% | -12d → none |
| CO-SU-FE-WP1-CI-190 | Pouring Beams For Northern Fence |  | 2026-11-12 → 2026-11-16 A (+4d) | 90% → 100% | 40.93d → none |
| 5 | **Finishing Work** |  | 2027-03-29 → 2027-04-05 (+7d) |  |  |
| 3 | **Electrical Work** | 2026-11-19 → 2026-11-26 (+7d) | 2027-03-29 → 2027-04-05 (+7d) |  |  |
| CO-SU-FE-WP1-EL-260 | Trench excavation to receive 2 nos 50mm diameter PVC Conduit | 2026-11-19 → 2026-11-26 (+7d) | 2026-12-05 → 2026-12-12 (+7d) |  | -20d → -26d |
| CO-SU-FE-WP1-EL-320 | Trench excavation to receive 3 nos 50mm diameter PVC Conduit | 2026-11-19 → 2026-11-26 (+7d) | 2026-12-05 → 2026-12-12 (+7d) |  | -20d → -26d |
| CO-SU-FE-WP1-EL-300 | Fixing of Control cable,CAT6A cable | 2026-12-06 → 2026-12-13 (+7d) | 2026-12-21 → 2026-12-28 (+7d) |  | -20d → -26d |
| CO-SU-FE-WP1-EL-330 | Hot dipped galvanized cable conduits for CAT6A cable and Control Cables embedded to wall | 2026-12-06 → 2026-12-13 (+7d) | 2026-12-21 → 2026-12-28 (+7d) |  | -20d → -26d |
| CO-SU-FE-WP1-EL-310 | Install 800mm x 800mm x 800mm height concrete handhole | 2027-01-07 → 2027-01-14 (+7d) | 2027-01-23 → 2027-01-30 (+7d) |  | -48d → -54d |
| CO-SU-FE-WP1-EL-280 | Fixing Earthing Work (Earth Pit,Grounding rod,Tinned Copper wire) | 2027-01-24 → 2027-01-31 (+7d) | 2027-02-04 → 2027-02-14 (+10d) |  | -48d → -54d |
| CO-SU-FE-WP1-EL-340 | Field Equipment Cabinet enclosed outdoor complete with precast concrete footing, | 2027-02-06 → 2027-02-14 (+8d) | 2027-02-18 → 2027-02-27 (+9d) |  | -48d → -54d |
| CO-SU-FE-WP1-EL-350 | Fence Lightining 400V, 3PH, 60Hz lighting control panel (LCP-02) | 2027-02-06 → 2027-02-14 (+8d) | 2027-02-18 → 2027-02-27 (+9d) |  | -48d → -54d |
| CO-SU-FE-WP1-EL-360 | Install of direct buried armored cable 4C-16mm2 ,10mm2 | 2027-02-18 → 2027-02-28 (+10d) | 2027-03-02 → 2027-03-14 (+12d) |  | -48d → -54d |
| CO-SU-FE-WP1-EL-370 | Install 16mm2,10mm2 CU/PVC wire | 2027-02-18 → 2027-02-28 (+10d) | 2027-03-02 → 2027-03-14 (+12d) |  | -48d → -54d |
| CO-SU-FE-WP1-EL-390 | FEC-CCTV ( 4C-16mm2 CU/XLPE/PVC direct buried armored cable,16mm2 CU/PVC wire | 2027-02-18 → 2027-02-28 (+10d) | 2027-03-03 → 2027-03-15 (+12d) |  | -38d → -44d |
| CO-SU-FE-WP1-EL-250 | Junction Box for lighting fixture | 2027-03-02 → 2027-03-15 (+13d) | 2027-03-20 → 2027-03-27 (+7d) |  | -48d → -54d |
| CO-SU-FE-WP1-EL-290 | IR Intrusion Detection System Quad Beams | 2027-03-21 → 2027-03-28 (+7d) | 2027-03-24 → 2027-03-31 (+7d) |  | -48d → -54d |
| CO-SU-FE-WP1-EL-380 | Install of 38W, 230V, 1PH, 60Hz fence, led linear uplight lighting, IP66 | 2027-03-21 → 2027-03-28 (+7d) | 2027-03-24 → 2027-03-31 (+7d) |  | -45d → -51d |
| CO-SU-FE-WP1-EL-270 | Install, fixings, testing and commissioning 80W LED | 2027-03-25 → 2027-04-01 (+7d) | 2027-03-29 → 2027-04-05 (+7d) |  | -45d → -51d |
| 4 | **Architictural work** |  | 2027-01-02 → 2027-01-09 (+7d) |  |  |
| CO-SU-FE-WP1-AR-170 | External plastering to walls and columns |  | 2026-11-16 → 2026-11-23 (+7d) | 50% → 55% | 49.78d → 43.78d |
| CO-SU-FE-WP1-AR-180 | Install 50mm thick random cut stone cladding |  | 2026-11-16 → 2026-11-23 (+7d) | 30% → 40% | 49.78d → 43.78d |
| CO-SU-FE-WP1-AR-200 | Install Stone coping 500mm,525mm | 2026-11-10 → 2026-11-17 (+7d) | 2026-11-15 → 2026-11-22 (+7d) |  | 50.58d → 44.58d |
| CO-SU-FE-WP1-AR-210 | Install MODON Signage | 2026-12-24 → 2026-12-31 (+7d) | 2027-01-02 → 2027-01-09 (+7d) |  | 20d → 14d |
| 3 | **Western Fence P2 ( W07:W12 )** |  | 2027-04-10 → 2027-04-17 (+7d) |  |  |
| 1 | **Civil Work** |  | 2026-11-12 → 2026-11-16 (+4d) |  |  |
| CO-SU-FE-WP2-CI-230 | Pouring R.C Columns For Northern Fence |  | 2026-11-10 → 2026-11-16 A (+6d) | 90% → 100% | 20d → none |
| CO-SU-FE-WP2-CI-240 | Pouring Beams For Northern Fence |  | 2026-11-12 → 2026-11-16 A (+4d) | 90% → 100% | 40.93d → none |
| 5 | **Finishing Work** |  | 2027-04-10 → 2027-04-17 (+7d) |  |  |
| 3 | **Electrical Work** | 2026-11-10 → 2026-11-17 (+7d) | 2027-04-10 → 2027-04-17 (+7d) |  |  |
| CO-SU-FE-WP2-EL-410 | Trench excavation to receive 2 nos 50mm diameter PVC Conduit | 2026-11-10 → 2026-11-17 (+7d) | 2026-11-14 → 2026-11-21 (+7d) |  | 20d → 14d |
| CO-SU-FE-WP2-EL-470 | Trench excavation to receive 3 nos 50mm diameter PVC Conduit | 2026-11-10 → 2026-11-17 (+7d) | 2026-11-16 → 2026-11-23 (+7d) |  | 20d → 14d |
| CO-SU-FE-WP2-EL-450 | Fixing of Control cable,CAT6A cable | 2026-11-17 → 2026-11-24 (+7d) | 2026-11-24 → 2026-12-01 (+7d) |  | 20d → 14d |
| CO-SU-FE-WP2-EL-460 | Install 800mm x 800mm x 800mm height concrete handhole | 2026-11-17 → 2026-11-24 (+7d) | 2026-11-24 → 2026-12-01 (+7d) |  | 20.2d → 14.2d |
| CO-SU-FE-WP2-EL-480 | Hot dipped galvanized cable conduits for CAT6A cable and Control Cables embedded to wall | 2026-11-17 → 2026-11-24 (+7d) | 2026-11-23 → 2026-11-30 (+7d) |  | 21d → 15d |
| CO-SU-FE-WP2-EL-430 | Fixing Earthing Work (Earth Pit,Grounding rod,Tinned Copper wire) | 2026-11-25 → 2026-12-02 (+7d) | 2026-12-01 → 2026-12-08 (+7d) |  | 20d → 14d |
| CO-SU-FE-WP2-EL-490 | Field Equipment Cabinet enclosed outdoor complete with precast concrete footing, | 2026-12-02 → 2026-12-09 (+7d) | 2026-12-06 → 2026-12-13 (+7d) |  | 20d → 14d |
| CO-SU-FE-WP2-EL-510 | Install of direct buried armored cable 4C-16mm2 ,10mm2 | 2026-12-07 → 2026-12-14 (+7d) | 2026-12-15 → 2026-12-22 (+7d) |  | 20.5d → 14.5d |
| CO-SU-FE-WP2-EL-520 | Install 16mm2,10mm2 CU/PVC wire | 2026-12-07 → 2026-12-14 (+7d) | 2026-12-15 → 2026-12-22 (+7d) |  | 20.5d → 14.5d |
| CO-SU-FE-WP2-EL-540 | FEC-CCTV ( 4C-16mm2 CU/XLPE/PVC direct buried armored cable,16mm2 CU/PVC wire | 2026-12-07 → 2026-12-14 (+7d) | 2026-12-15 → 2026-12-22 (+7d) |  | 20d → 14d |
| CO-SU-FE-WP2-EL-400 | Junction Box for lighting fixture | 2026-12-15 → 2026-12-22 (+7d) | 2026-12-19 → 2026-12-26 (+7d) |  | 21.5d → 15.5d |
| CO-SU-FE-WP2-EL-440 | IR Intrusion Detection System Quad Beams | 2027-03-25 → 2027-04-01 (+7d) | 2027-04-01 → 2027-04-08 (+7d) |  | -48d → -54d |
| CO-SU-FE-WP2-EL-530 | Install of 38W, 230V, 1PH, 60Hz fence, led linear uplight lighting, IP66 | 2027-03-25 → 2027-04-01 (+7d) | 2027-04-01 → 2027-04-08 (+7d) |  | -48d → -54d |
| CO-SU-FE-WP2-EL-420 | Install, fixings, testing and commissioning 80W LED | 2027-04-03 → 2027-04-10 (+7d) | 2027-04-10 → 2027-04-17 (+7d) |  | -48d → -54d |
| 4 | **Architictural work** |  | 2027-01-11 → 2027-01-18 (+7d) |  |  |
| CO-SU-FE-WP2-AR-230 | External plastering to walls and columns |  | 2026-12-15 → 2026-12-22 (+7d) | 50% → 55% | 20d → 14d |
| CO-SU-FE-WP2-AR-240 | Install 50mm thick random cut stone cladding |  | 2026-12-15 → 2026-12-22 (+7d) | 30% → 35% | 20d → 14d |
| CO-SU-FE-WP2-AR-260 | Install Stone coping 500mm,525mm | 2026-12-07 → 2026-12-14 (+7d) | 2026-12-15 → 2026-12-22 (+7d) |  | 20d → 14d |
| CO-SU-FE-WP2-AR-270 | Install MODON Signage | 2027-01-03 → 2027-01-10 (+7d) | 2027-01-11 → 2027-01-18 (+7d) |  | 20d → 14d |
| 4 | **Southern Fence S01:S05** |  | 2027-04-18 → 2027-04-25 (+7d) |  |  |

| ID | Task | Start | Finish | Complete | Total float |
| --- | --- | --- | --- | --- | --- |
| 1 | **Civil Work** |  | 2026-11-12 → 2026-11-19 (+7d) |  |  |
| CO-SU-FE-S-CI-280 | Pouring R.C Columns For Northern Fence |  | 2026-11-11 → 2026-11-18 (+7d) | 75% → 98% | 13d → 7d |
| CO-SU-FE-S-CI-290 | Pouring Beams For Northern Fence |  | 2026-11-12 → 2026-11-19 (+7d) | 60% → 98% | 44.91d → 38.91d |
| 5 | **Finishing Work** |  | 2027-04-18 → 2027-04-25 (+7d) |  |  |
| 3 | **Electrical Work** | 2026-11-10 → 2026-11-17 (+7d) | 2027-04-18 → 2027-04-25 (+7d) |  |  |
| CO-SU-FE-S-EL-560 | Trench excavation to receive 2 nos 50mm diameter PVC Conduit | 2026-11-10 → 2026-11-17 (+7d) | 2026-11-26 → 2026-12-03 (+7d) |  | 13d → 7d |
| CO-SU-FE-S-EL-620 | Trench excavation to receive 3 nos 50mm diameter PVC Conduit | 2026-11-10 → 2026-11-17 (+7d) | 2026-11-26 → 2026-12-03 (+7d) |  | 13d → 7d |
| CO-SU-FE-S-EL-600 | Fixing of Control cable,CAT6A cable | 2026-11-28 → 2026-12-05 (+7d) | 2026-12-14 → 2026-12-21 (+7d) |  | 13d → 7d |
| CO-SU-FE-S-EL-610 | Install 800mm x 800mm x 800mm height concrete handhole | 2026-11-28 → 2026-12-05 (+7d) | 2026-12-14 → 2026-12-21 (+7d) |  | 13d → 7d |
| CO-SU-FE-S-EL-630 | Hot dipped galvanized cable conduits for CAT6A cable and Control Cables embedded to wall | 2026-11-28 → 2026-12-05 (+7d) | 2026-12-14 → 2026-12-21 (+7d) |  | 13d → 7d |
| CO-SU-FE-S-EL-580 | Fixing Earthing Work (Earth Pit,Grounding rod,Tinned Copper wire) | 2026-12-15 → 2026-12-22 (+7d) | 2026-12-21 → 2026-12-28 (+7d) |  | 13d → 7d |
| CO-SU-FE-S-EL-640 | Field Equipment Cabinet enclosed outdoor complete with precast concrete footing, | 2026-12-17 → 2026-12-24 (+7d) | 2026-12-21 → 2026-12-28 (+7d) |  | 13d → 7d |
| CO-SU-FE-S-EL-650 | Fence Lightining 400V, 3PH, 60Hz lighting control panel (LCP-02) | 2026-12-17 → 2026-12-24 (+7d) | 2026-12-21 → 2026-12-28 (+7d) |  | 13d → 7d |
| CO-SU-FE-S-EL-660 | Install of direct buried armored cable 4C-16mm2 ,10mm2 | 2026-12-17 → 2026-12-24 (+7d) | 2026-12-28 → 2027-01-04 (+7d) |  | 13d → 7d |
| CO-SU-FE-S-EL-670 | Install 16mm2,10mm2 CU/PVC wire | 2026-12-22 → 2026-12-29 (+7d) | 2026-12-28 → 2027-01-04 (+7d) |  | 13d → 7d |
| CO-SU-FE-S-EL-690 | FEC-CCTV ( 4C-16mm2 CU/XLPE/PVC direct buried armored cable,16mm2 CU/PVC wire | 2026-12-22 → 2026-12-29 (+7d) | 2026-12-29 → 2027-01-05 (+7d) |  | 19d → 13d |
| CO-SU-FE-S-EL-550 | Junction Box for lighting fixture | 2026-12-29 → 2027-01-05 (+7d) | 2027-01-05 → 2027-01-12 (+7d) |  | 13d → 7d |
| CO-SU-FE-S-EL-590 | IR Intrusion Detection System Quad Beams | 2027-03-04 → 2027-03-16 (+12d) | 2027-03-16 → 2027-03-23 (+7d) |  | -27d → -33d |
| CO-SU-FE-S-EL-680 | Install of 38W, 230V, 1PH, 60Hz fence, led linear uplight lighting, IP66 | 2027-04-03 → 2027-04-10 (+7d) | 2027-04-10 → 2027-04-17 (+7d) |  | -48d → -54d |
| CO-SU-FE-S-EL-570 | Install, fixings, testing and commissioning 80W LED | 2027-04-11 → 2027-04-18 (+7d) | 2027-04-18 → 2027-04-25 (+7d) |  | -48d → -54d |
| 4 | **Architictural work** |  | 2027-03-29 → 2027-04-05 (+7d) |  |  |
| CO-SU-FE-S-AR-280 | Install Brick Work For Northern Fence |  | 2026-11-14 → 2026-11-21 (+7d) |  | 13d → 7d |
| CO-SU-FE-S-AR-290 | External plastering to walls and columns |  | 2026-12-29 → 2027-01-05 (+7d) | 15% → 50% | 19d → 13d |
| CO-SU-FE-S-AR-300 | Install 50mm thick random cut stone cladding |  | 2026-12-29 → 2027-01-05 (+7d) |  | 19d → 13d |
| CO-SU-FE-S-AR-320 | Install Stone coping 500mm,525mm | 2027-03-04 → 2027-03-16 (+12d) | 2027-03-20 → 2027-03-27 (+7d) |  | -37d → -43d |
| CO-SU-FE-S-AR-330 | Install MODON Signage | 2027-03-21 → 2027-03-28 (+7d) | 2027-03-29 → 2027-04-05 (+7d) |  | -29d → -35d |
| 5 | **Eastern Fence P1 ( E01:E06 )** |  | 2027-04-22 → 2027-04-29 (+7d) |  |  |
| 1 | **Civil Work** |  | 2026-11-15 → 2026-11-22 (+7d) |  |  |
| CO-SU-FE-EP1-CI-330 | Pouring R.C Columns For Northern Fence |  | 2026-11-15 → 2026-11-22 (+7d) |  | 35.12d → 29.12d |
| CO-SU-FE-EP1-CI-340 | Pouring Beams For Northern Fence |  | 2026-11-15 → 2026-11-22 (+7d) |  | 43.12d → 37.12d |
| 5 | **Finishing Work** |  | 2027-04-22 → 2027-04-29 (+7d) |  |  |
| 3 | **Electrical Work** | 2026-11-15 → 2026-11-22 (+7d) | 2027-04-22 → 2027-04-29 (+7d) |  |  |
| CO-SU-FE-EP1-EL-710 | Trench excavation to receive 2 nos 50mm diameter PVC Conduit | 2026-11-15 → 2026-11-22 (+7d) | 2026-11-19 → 2026-11-26 (+7d) |  | 35.12d → 29.12d |
| CO-SU-FE-EP1-EL-770 | Trench excavation to receive 3 nos 50mm diameter PVC Conduit | 2026-11-15 → 2026-11-22 (+7d) | 2026-11-19 → 2026-11-26 (+7d) |  | 35.12d → 29.12d |
| CO-SU-FE-EP1-EL-750 | Fixing of Control cable,CAT6A cable | 2026-11-19 → 2026-11-26 (+7d) | 2026-11-24 → 2026-12-01 (+7d) |  | 35.12d → 29.12d |
| CO-SU-FE-EP1-EL-760 | Install 800mm x 800mm x 800mm height concrete handhole | 2026-11-19 → 2026-11-26 (+7d) | 2026-11-24 → 2026-12-01 (+7d) |  | 35.12d → 29.12d |
| CO-SU-FE-EP1-EL-780 | Hot dipped galvanized cable conduits for CAT6A cable and Control Cables embedded to wall | 2026-11-19 → 2026-11-26 (+7d) | 2026-11-24 → 2026-12-01 (+7d) |  | 35.12d → 29.12d |
| CO-SU-FE-EP1-EL-730 | Fixing Earthing Work (Earth Pit,Grounding rod,Tinned Copper wire) | 2026-11-24 → 2026-12-01 (+7d) | 2026-12-01 → 2026-12-08 (+7d) |  | 35.12d → 29.12d |
| CO-SU-FE-EP1-EL-790 | Field Equipment Cabinet enclosed outdoor complete with precast concrete footing, | 2026-12-01 → 2026-12-08 (+7d) | 2026-12-06 → 2026-12-13 (+7d) |  | 35.12d → 29.12d |
| CO-SU-FE-EP1-EL-800 | Fence Lightining 400V, 3PH, 60Hz lighting control panel (LCP-02) | 2026-12-01 → 2026-12-08 (+7d) | 2026-12-06 → 2026-12-13 (+7d) |  | 35.12d → 29.12d |
| CO-SU-FE-EP1-EL-810 | Install of direct buried armored cable 4C-16mm2 ,10mm2 | 2026-12-06 → 2026-12-13 (+7d) | 2026-12-10 → 2026-12-17 (+7d) |  | 35.12d → 29.12d |
| CO-SU-FE-EP1-EL-820 | Install 16mm2,10mm2 CU/PVC wire | 2026-12-06 → 2026-12-13 (+7d) | 2026-12-10 → 2026-12-17 (+7d) |  | 35.12d → 29.12d |
| CO-SU-FE-EP1-EL-840 | FEC-CCTV ( 4C-16mm2 CU/XLPE/PVC direct buried armored cable,16mm2 CU/PVC wire | 2026-12-06 → 2026-12-13 (+7d) | 2026-12-10 → 2026-12-17 (+7d) |  | 49.12d → 43.12d |
| CO-SU-FE-EP1-EL-700 | Junction Box for lighting fixture | 2027-01-06 → 2027-01-13 (+7d) | 2027-01-09 → 2027-01-16 (+7d) |  | 13d → 7d |
| CO-SU-FE-EP1-EL-740 | IR Intrusion Detection System Quad Beams | 2027-03-17 → 2027-03-24 (+7d) | 2027-03-21 → 2027-03-28 (+7d) |  | -24d → -30d |
| CO-SU-FE-EP1-EL-830 | Install of 38W, 230V, 1PH, 60Hz fence, led linear uplight lighting, IP66 | 2027-03-17 → 2027-03-24 (+7d) | 2027-03-21 → 2027-03-28 (+7d) |  | -24d → -30d |
| CO-SU-FE-EP1-EL-720 | Install, fixings, testing and commissioning 80W LED | 2027-04-19 → 2027-04-26 (+7d) | 2027-04-22 → 2027-04-29 (+7d) |  | -48d → -54d |
| 4 | **Architictural work** |  | 2027-04-01 → 2027-04-08 (+7d) |  |  |
| CO-SU-FE-EP1-AR-340 | Install Brick Work For Northern Fence |  | 2026-11-15 → 2026-11-22 (+7d) |  | 35.12d → 29.12d |
| CO-SU-FE-EP1-AR-360 | Install 50mm thick random cut stone cladding |  | 2026-12-10 → 2026-12-17 (+7d) |  | 49.12d → 43.12d |
| CO-SU-FE-EP1-AR-350 | External plastering to walls and columns |  | 2026-12-10 → 2026-12-17 (+7d) | 40% → 45% | 49.12d → 43.12d |
| CO-SU-FE-EP1-AR-390 | Install MODON Signage | 2027-03-30 → 2027-04-06 (+7d) | 2027-04-01 → 2027-04-08 (+7d) |  | -29d → -35d |
| 6 | **Eastern Fence P2 ( E07:E13 )** |  | 2027-04-26 → 2027-05-03 (+7d) |  |  |
| 1 | **Civil Work** |  | 2026-11-18 → 2026-11-25 (+7d) |  |  |
| CO-SU-FE-EP2-CI-380 | Pouring R.C Columns For Northern Fence |  | 2026-11-15 → 2026-11-22 (+7d) |  | 44d → 38d |
| CO-SU-FE-EP2-CI-390 | Pouring Beams For Northern Fence |  | 2026-11-18 → 2026-11-25 (+7d) |  | 73.5d → 67.5d |
| 5 | **Finishing Work** |  | 2027-04-26 → 2027-05-03 (+7d) |  |  |
| 3 | **Electrical Work** | 2026-11-12 → 2026-11-19 (+7d) | 2027-04-26 → 2027-05-03 (+7d) |  |  |
| CO-SU-FE-EP2-EL-860 | Trench excavation to receive 2 nos 50mm diameter PVC Conduit | 2026-11-12 → 2026-11-19 (+7d) | 2026-11-16 → 2026-11-23 (+7d) |  | 59d → 53d |
| CO-SU-FE-EP2-EL-920 | Trench excavation to receive 3 nos 50mm diameter PVC Conduit | 2026-11-12 → 2026-11-19 (+7d) | 2026-11-16 → 2026-11-23 (+7d) |  | 59d → 53d |
| CO-SU-FE-EP2-EL-910 | Install 800mm x 800mm x 800mm height concrete handhole | 2026-11-17 → 2026-11-24 (+7d) | 2026-11-19 → 2026-11-26 (+7d) |  | 59d → 53d |
| CO-SU-FE-EP2-EL-930 | Hot dipped galvanized cable conduits for CAT6A cable and Control Cables embedded to wall | 2026-11-17 → 2026-11-24 (+7d) | 2026-11-19 → 2026-11-26 (+7d) |  | 59d → 53d |
| CO-SU-FE-EP2-EL-900 | Fixing of Control cable,CAT6A cable | 2027-01-10 → 2027-01-17 (+7d) | 2027-01-12 → 2027-01-19 (+7d) |  | 13d → 7d |
| CO-SU-FE-EP2-EL-880 | Fixing Earthing Work (Earth Pit,Grounding rod,Tinned Copper wire) | 2027-01-13 → 2027-01-20 (+7d) | 2027-01-16 → 2027-01-23 (+7d) |  | 13d → 7d |
| CO-SU-FE-EP2-EL-940 | Field Equipment Cabinet enclosed outdoor complete with precast concrete footing, | 2027-01-17 → 2027-01-24 (+7d) | 2027-01-20 → 2027-01-27 (+7d) |  | 13d → 7d |
| CO-SU-FE-EP2-EL-950 | Fence Lightining 400V, 3PH, 60Hz lighting control panel (LCP-02) | 2027-01-17 → 2027-01-24 (+7d) | 2027-01-20 → 2027-01-27 (+7d) |  | 13d → 7d |
| CO-SU-FE-EP2-EL-960 | Install of direct buried armored cable 4C-16mm2 ,10mm2 | 2027-01-21 → 2027-01-28 (+7d) | 2027-01-24 → 2027-01-31 (+7d) |  | 13d → 7d |
| CO-SU-FE-EP2-EL-970 | Install 16mm2,10mm2 CU/PVC wire | 2027-01-21 → 2027-01-28 (+7d) | 2027-01-24 → 2027-01-31 (+7d) |  | 13d → 7d |
| CO-SU-FE-EP2-EL-990 | FEC-CCTV ( 4C-16mm2 CU/XLPE/PVC direct buried armored cable,16mm2 CU/PVC wire | 2027-01-21 → 2027-01-28 (+7d) | 2027-01-27 → 2027-02-03 (+7d) |  | 13d → 7d |
| CO-SU-FE-EP2-EL-850 | Junction Box for lighting fixture | 2027-01-25 → 2027-02-01 (+7d) | 2027-01-27 → 2027-02-03 (+7d) |  | 13d → 7d |

| ID | Task | Start | Finish | Complete | Total float |
| --- | --- | --- | --- | --- | --- |
| CO-SU-FE-EP2-EL-890 | IR Intrusion Detection System Quad Beams | 2027-03-22 → 2027-03-29 (+7d) | 2027-03-24 → 2027-03-31 (+7d) |  | -23d → -29d |
| CO-SU-FE-EP2-EL-980 | Install of 38W, 230V, 1PH, 60Hz fence, led linear uplight lighting, IP66 | 2027-03-22 → 2027-03-29 (+7d) | 2027-03-24 → 2027-03-31 (+7d) |  | -23d → -29d |
| CO-SU-FE-EP2-EL-870 | Install, fixings, testing and commissioning 80W LED | 2027-04-24 → 2027-05-01 (+7d) | 2027-04-26 → 2027-05-03 (+7d) |  | -48d → -54d |
| 4 | **Architictural work** |  | 2027-04-04 → 2027-04-11 (+7d) |  |  |
| CO-SU-FE-EP2-AR-410 | External plastering to walls and columns |  | 2027-01-27 → 2027-02-03 (+7d) | 40% → 45% | 13d → 7d |
| CO-SU-FE-EP2-AR-420 | Install 50mm thick random cut stone cladding |  | 2027-01-27 → 2027-02-03 (+7d) |  | 13d → 7d |
| CO-SU-FE-EP2-AR-450 | Install MODON Signage | 2027-04-03 → 2027-04-10 (+7d) | 2027-04-04 → 2027-04-11 (+7d) |  | -29d → -35d |
| TC | **Testing and Comissioning** | 2026-11-10 → 2026-11-17 (+7d) | 2027-06-12 → 2027-06-17 (+5d) |  |  |
| INF | **Infrastructure Networks** | 2027-05-01 → 2027-05-06 (+5d) | 2027-06-12 → 2027-06-17 (+5d) |  |  |
| PW1 | **Irrigation Network** | 2027-05-29 → 2027-06-02 (+4d) | 2027-06-02 → 2027-06-08 (+6d) |  |  |
| T/C-IR | Testing and Commissioning of Irrigation Network | 2027-05-29 → 2027-06-02 (+4d) | 2027-06-02 → 2027-06-08 (+6d) |  | -88d → -92.75d |
| PW11 | **TSE Network** | 2027-05-11 → 2027-05-23 (+12d) | 2027-06-03 → 2027-06-08 (+5d) |  |  |
| T/C-TSE-10 | Testing and Commissioning of TSE Network | 2027-05-11 → 2027-05-23 (+12d) | 2027-06-03 → 2027-06-08 (+5d) |  | -80.5d → -85d |
| PW | **Potable Water Network** | 2027-05-29 → 2027-06-02 (+4d) | 2027-06-03 → 2027-06-09 (+6d) |  |  |
| T/C-PW | Testing and Commissioning of Potable Water Network | 2027-05-29 → 2027-06-02 (+4d) | 2027-06-03 → 2027-06-09 (+6d) |  | -88d → -92.75d |
| SW | **Sewage Network** | 2027-05-11 → 2027-05-23 (+12d) | 2027-05-20 → 2027-05-25 (+5d) |  |  |
| T/C-SW | Testing and Commissioning of Sewage Network | 2027-05-11 → 2027-05-23 (+12d) | 2027-05-20 → 2027-05-25 (+5d) |  | -88d → -92.5d |
| SD | **Storm Drainage Network** | 2027-05-01 → 2027-05-06 (+5d) | 2027-05-11 → 2027-05-22 (+11d) |  |  |
| T/C-SD | Testing and Commissioning of Storm Drainage Network | 2027-05-01 → 2027-05-06 (+5d) | 2027-05-11 → 2027-05-22 (+11d) |  | -88d → -92.5d |
| SL | **Street Lighting Network** | 2027-06-03 → 2027-06-08 (+5d) | 2027-06-09 → 2027-06-15 (+6d) |  |  |
| T/C-SL | Testing and Commissioning of Street Lighting Network | 2027-06-03 → 2027-06-08 (+5d) | 2027-06-09 → 2027-06-15 (+6d) |  | -88d → -92.75d |
| TE | **Telecom Network** | 2027-05-23 → 2027-05-27 (+4d) | 2027-05-25 → 2027-05-31 (+6d) |  |  |
| T/C-TE | Testing and Commissioning of Telecom Network | 2027-05-23 → 2027-05-27 (+4d) | 2027-05-25 → 2027-05-31 (+6d) |  | -91d → -95.5d |
| MV | **Medium Voltage Network** | 2027-05-23 → 2027-05-27 (+4d) | 2027-06-07 → 2027-06-13 (+6d) |  |  |
| T/C-MV | Testing and Commissioning of Medium Voltage Network | 2027-05-23 → 2027-05-27 (+4d) | 2027-06-07 → 2027-06-13 (+6d) |  | -91d → -95.5d |
| RD | **Road Works** | 2027-06-08 → 2027-06-13 (+5d) | 2027-06-12 → 2027-06-17 (+5d) |  |  |
| T/C-RD | Testing and Commissioning of Road Works | 2027-06-08 → 2027-06-13 (+5d) | 2027-06-12 → 2027-06-17 (+5d) |  | -86d → -90.5d |
| 1 | **Utility Buildings** | 2026-11-10 → 2026-11-17 (+7d) | 2027-06-03 → 2027-06-09 (+6d) |  |  |
| T/C-DPO | Testing and Commissioning of Storm Drainage Ponds | 2026-11-10 → 2026-11-17 (+7d) | 2026-11-10 → 2026-11-17 (+7d) |  | 73d → 67d |
| T/C-CTV | Testing and Commissioning of Guard Room and Fence | 2027-03-29 → 2027-03-24 (-5d) | 2027-03-29 → 2027-03-24 (-5d) |  | -23.5d → -19.5d |
| T/C-SPS | Testing and Commissioning of Sewage Pump Stations& soft scape and planting work | 2027-06-03 → 2027-06-09 (+6d) | 2027-06-03 → 2027-06-09 (+6d) |  | -76.5d → -81d |
| 1 | **Handing over and close out** | 2026-11-10 → 2026-11-17 (+7d) | 2027-06-21 → 2027-06-27 (+6d) |  |  |
| 2 | **As-Built** | 2026-11-10 → 2026-11-17 (+7d) | 2027-06-21 → 2027-06-27 (+6d) |  |  |
| HO-130 | Submission As-Built Drawing For Pond | 2026-11-10 → 2026-11-17 (+7d) | 2026-11-25 → 2026-12-02 (+7d) |  | 73d → 67d |
| HO-100 | Submission As-Built Drawing For Sewage Network | 2027-05-20 → 2027-05-26 (+6d) | 2027-06-06 → 2027-06-10 (+4d) |  | -77.5d → -82d |
| HO-160 | Submission As-Built Drawing For Telecom Network | 2027-05-26 → 2027-05-31 (+5d) | 2027-06-08 → 2027-06-14 (+6d) |  | -80d → -84.5d |
| HO-180 | Submission As-Built Drawing For Irrigation Network | 2027-06-03 → 2027-06-08 (+5d) | 2027-06-16 → 2027-06-22 (+6d) |  | -87d → -91.75d |
| HO-210 | Submission As-Built Drawing For Pump station | 2027-06-03 → 2027-06-09 (+6d) | 2027-06-05 → 2027-06-09 (+4d) |  | -76.5d → -81d |
| HO-190 | As-Built Drawing For Potable Water Network | 2027-06-05 → 2027-06-09 (+4d) | 2027-06-17 → 2027-06-23 (+6d) |  | -88d → -92.75d |
| HO-170 | Submission As-Built Drawing For Medium Voltage Network | 2027-06-08 → 2027-06-13 (+5d) | 2027-06-21 → 2027-06-27 (+6d) |  | -91d → -95.5d |
| HO-150 | Submission As-Built Drawing For Street Lighting Network | 2027-06-10 → 2027-06-15 (+5d) | 2027-06-17 → 2027-06-23 (+6d) |  | -88d → -92.75d |
| HO-140 | Submission As-Built Drawing For Roads Network | 2027-06-13 → 2027-06-17 (+4d) | 2027-06-15 → 2027-06-21 (+6d) |  | -86d → -90.5d |
| 1 | **De-Mobilization Works** | 2027-06-10 → 2027-06-15 (+5d) | 2027-06-15 → 2027-06-21 (+6d) |  |  |
| HO-230 | Remove Temporary Car Shades | 2027-06-10 → 2027-06-15 (+5d) | 2027-06-15 → 2027-06-21 (+6d) |  | -86d → -90.75d |
| 3 | **Handing Over** | 2027-06-13 → 2027-06-17 (+4d) | 2027-06-15 → 2027-06-21 (+6d) |  |  |
| HO-250 | Review B.O.Q Qty. to ensure compliance with the actual status | 2027-06-13 → 2027-06-17 (+4d) | 2027-06-15 → 2027-06-21 (+6d) |  | -86d → -90.5d |

## Version 10 (data date 2026-11-24, saved 2026-11-24, file MOD3-3147-BL0-R0-6UPDATE 24-11-2026.xer)

Last finish 2027-06-27 → 2027-07-03 (+6d). Complete tasks 380 → 391.

Changed:

| ID | Task | Start | Finish | Complete | Total float |
| --- | --- | --- | --- | --- | --- |
| MS | **Key Milestones** |  | 2027-06-27 → 2027-07-03 (+6d) |  |  |
| CM | **Contractual Milestones** |  | 2027-06-27 → 2027-07-03 (+6d) |  |  |
| MS-CF-SW | Completion of Construction Works for Sewage Network | 2027-02-04 → 2027-02-14 (+10d) | 2027-02-04 → 2027-02-14 (+10d) |  | -15.5d → -18d |
| MS-CF-SD | Completion of Construction Works for Storm Drainage Network | 2027-03-13 → 2027-03-15 (+2d) | 2027-03-13 → 2027-03-15 (+2d) |  | -46.5d → -12d |
| MS-CF-IR | Completion of Construction Works for Irrigation Network | 2027-04-21 → 2027-04-27 (+6d) | 2027-04-21 → 2027-04-27 (+6d) |  | -51d → -55.75d |
| MS-CF-TSE | Completion of Construction Works for Treated Sewage Effluent Network | 2027-05-05 → 2027-05-11 (+6d) | 2027-05-05 → 2027-05-11 (+6d) |  | -62.5d → -67.25d |
| MS-CF-PW | Completion of Construction Works for Potable Water Network | 2027-05-10 → 2027-05-23 (+13d) | 2027-05-10 → 2027-05-23 (+13d) |  | -67d → -73d |
| MS-CF-MV | Completion of Construction Works for Medium Voltage Network | 2027-05-12 → 2027-05-24 (+12d) | 2027-05-12 → 2027-05-24 (+12d) |  | -87.75d → -92.25d |
| MS-CF-TE | Completion of Construction Works for Telecom Network | 2027-05-27 → 2027-06-02 (+6d) | 2027-05-27 → 2027-06-02 (+6d) |  | -95.5d → -100.25d |
| MS-CF-SL | Completion of Construction Works for Street Lighting Network | 2027-05-26 → 2027-06-02 (+7d) | 2027-05-26 → 2027-06-02 (+7d) |  | -82d → -88d |
| MS-CF-RD | Completion of Construction Works for Road Works | 2027-06-13 → 2027-06-20 (+7d) | 2027-06-13 → 2027-06-20 (+7d) |  | -83.5d → -89.5d |
| MS-CF-PF | Project Completion Date | 2027-06-27 → 2027-07-03 (+6d) | 2027-06-27 → 2027-07-03 (+6d) |  | -95.5d → -100.25d |
| PROC | **Procurement Cycle** |  | 2027-05-23 → 2027-05-29 (+6d) |  |  |
| NLL | **Short Lead Time Items** |  | 2027-04-28 → 2027-05-05 (+7d) |  |  |
| INF | **Infrastructure Networks** |  | 2027-04-28 → 2027-05-05 (+7d) |  |  |
| RD | **Road Works** |  | 2026-11-17 → 2026-11-24 (+7d) |  |  |
| DL | **Material Delivery & Site Inspection** |  | 2026-11-17 → 2026-11-24 (+7d) |  |  |
| 1 | **Pre-Bituminous Construction** |  | 2026-11-17 → 2026-11-24 (+7d) |  |  |
| PRO-R25-RD-DL-100 | Material Delivery & Site Inspection for Subgrade of Road Works |  | 2026-11-17 → 2026-11-24 (+7d) |  | 14.5d → 8.5d |
| PRO-R25-RD-DL-110 | Material Delivery & Site Inspection for Aggregate Base Course of Road Works | 2026-11-17 → 2026-11-24 (+7d) | 2026-11-17 → 2026-11-24 (+7d) |  | 28d → 22d |
| 4 | **Bituminous Construction** | 2026-11-17 → 2026-11-24 (+7d) | 2026-11-17 → 2026-11-24 (+7d) |  |  |
| PRO-R25-RD-DL-160 | Material Delivery & Site Inspection for Prime Coat of Road Works | 2026-11-17 → 2026-11-24 (+7d) | 2026-11-17 → 2026-11-24 (+7d) |  | 43d → 37d |
| PRO-R25-RD-DL-170 | Material Delivery & Site Inspection for Bituminous Base & Wearing Courses of Road Works | 2026-11-17 → 2026-11-24 (+7d) | 2026-11-17 → 2026-11-24 (+7d) |  | 50d → 44d |
| 2 | **Pavement Works** | 2026-11-17 → 2026-11-24 (+7d) | 2026-11-17 → 2026-11-24 (+7d) |  |  |
| PRO-R25-RD-DL-120 | Material Delivery & Site Inspection of Interlock Tiles for Landscaping | 2026-11-17 → 2026-11-24 (+7d) | 2026-11-17 → 2026-11-24 (+7d) |  | 41d → 35d |
| PRO-R25-RD-DL-130 | Material Delivery & Site Inspection of Curbstones for Landscaping | 2026-11-17 → 2026-11-24 (+7d) | 2026-11-17 → 2026-11-24 (+7d) |  | 28.8d → 22.8d |
| 3 | **Traffic Signs Boards and Roads Marking** | 2026-11-17 → 2026-11-24 (+7d) | 2026-11-17 → 2026-11-24 (+7d) |  |  |
| PRO-R25-RD-DL-140 | Material Delivery & Site Inspection of Traffic Signs Boards For Road Works | 2026-11-17 → 2026-11-24 (+7d) | 2026-11-17 → 2026-11-24 (+7d) |  | 67d → 61d |
| PRO-R25-RD-DL-150 | Material Delivery & Site Inspection of Road Markings For Road Works | 2026-11-17 → 2026-11-24 (+7d) | 2026-11-17 → 2026-11-24 (+7d) |  | 60d → 54d |
| IR1 | **Softscape and Planting Works** | 2026-11-17 → 2026-11-24 (+7d) | 2027-03-25 → 2027-03-31 (+6d) |  |  |
| PO | **Issuance of Purchase Orders** | 2026-11-17 → 2026-11-24 (+7d) | 2026-11-23 → 2026-11-30 (+7d) |  |  |
| 1 | **Main Line Pipes** | 2026-11-17 → 2026-11-24 (+7d) | 2026-11-23 → 2026-11-30 (+7d) |  |  |
| PRO-IR-PO-140 | Issuance of Purchase Order for Softscape and Planting Works | 2026-11-17 → 2026-11-24 (+7d) | 2026-11-23 → 2026-11-30 (+7d) |  | -94.25d → -89.75d |
| PRO-IR-PO-150 | Issuance of Purchase Order for Site Furnishings (Seating Bench,Stone Boulders and Gravel) | 2026-11-17 → 2026-11-24 (+7d) | 2026-11-23 → 2026-11-30 (+7d) |  | -92d → -86.75d |
| MF | **Manufacturing of Material** | 2026-11-24 → 2026-12-01 (+7d) | 2027-02-21 → 2027-02-28 (+7d) |  |  |
| 1 | **Main Line Pipes** | 2026-11-24 → 2026-12-01 (+7d) | 2027-02-21 → 2027-02-28 (+7d) |  |  |
| PRO-IR-MF-140 | Manufacturing of Softscape and Planting Works | 2026-11-24 → 2026-12-01 (+7d) | 2027-02-21 → 2027-02-28 (+7d) |  | -111.5d → -106d |
| PRO-IR-MF-150 | Manufacturing of Valves for Site Furnishings (Seating Bench,Stone Boulders and Gravel) | 2026-11-24 → 2026-12-01 (+7d) | 2027-02-21 → 2027-02-28 (+7d) |  | -108.5d → -103d |
| 1DL | **1st Material Delivery & Site Inspection** | 2027-02-22 → 2027-03-01 (+7d) | 2027-03-02 → 2027-03-13 (+11d) |  |  |
| 1 | **Main Line Pipes** | 2027-02-22 → 2027-03-01 (+7d) | 2027-03-02 → 2027-03-13 (+11d) |  |  |
| PRO-IR-1DL-140 | 1ST Material Delivery for Softscape and Planting Works | 2027-02-22 → 2027-03-01 (+7d) | 2027-03-02 → 2027-03-13 (+11d) |  | -92.5d → -86.75d |
| PRO-IR-1DL-150 | 1ST Material Delivery for Site Furnishings (Seating Bench,Stone Boulders and Gravel) | 2027-02-22 → 2027-03-01 (+7d) | 2027-03-02 → 2027-03-13 (+11d) |  | -89.5d → -83.75d |
| DL | **Material Delivery & Site Inspection** | 2027-03-02 → 2027-03-13 (+11d) | 2027-03-25 → 2027-03-31 (+6d) |  |  |
| 1 | **Main Line Pipes** | 2027-03-02 → 2027-03-13 (+11d) | 2027-03-25 → 2027-03-31 (+6d) |  |  |
| PRO-R25-IR-DL-140 | Material Delivery & Site Inspection of Softscape and Planting Works | 2027-03-02 → 2027-03-13 (+11d) | 2027-03-21 → 2027-03-27 (+6d) |  | -92.5d → -86.75d |
| PRO-R25-IR-DL-150 | Material Delivery & Site Inspection of Site Furnishings (Seating Bench,Stone Boulders and Gravel) | 2027-03-02 → 2027-03-13 (+11d) | 2027-03-25 → 2027-03-31 (+6d) |  | -89.5d → -83.75d |
| SW | **Sewage Network** |  | 2027-01-23 → 2027-01-30 (+7d) |  |  |
| MF | **Manufacturing of Material** |  | 2026-12-16 → 2026-12-23 (+7d) |  |  |
| 3 | **Testing and Finishes** |  | 2026-12-16 → 2026-12-23 (+7d) |  |  |
| PRO-SW-MF-120 | Manufacturing of Manhole Covers for Sewage Network |  | 2026-12-16 → 2026-12-23 (+7d) |  | -17.5d → -22d |
| 1DL | **1st Material Delivery & Site Inspection** |  | 2026-12-23 → 2026-12-30 (+7d) |  |  |
| 3 | **Testing and Finishes** | 2026-12-17 → 2026-12-24 (+7d) | 2026-12-23 → 2026-12-30 (+7d) |  |  |
| PRO-SW-1DL-120 | 1ST Material Delivery for Manholes Covers of Sewage Network | 2026-12-17 → 2026-12-24 (+7d) | 2026-12-23 → 2026-12-30 (+7d) |  | -15.5d → -19d |
| DL | **Material Delivery & Site Inspection** |  | 2027-01-23 → 2027-01-30 (+7d) |  |  |
| 1 | **Main Line Sections** |  | 2026-11-17 → 2026-11-24 (+7d) |  |  |
| PRO-R25-SW-DL-110 | Material Delivery & Site Inspection of Manholes for Sewage Network |  | 2026-11-17 → 2026-11-24 (+7d) | 30% → 90% | -31.5d → -37.5d |
| 3 | **Testing and Finishes** | 2026-12-24 → 2026-12-31 (+7d) | 2027-01-23 → 2027-01-30 (+7d) |  |  |
| PRO-R25-SW-DL-120 | Material Delivery & Site Inspection of Manholes Covers for Sewage Network | 2026-12-24 → 2026-12-31 (+7d) | 2027-01-23 → 2027-01-30 (+7d) |  | -15.5d → -19d |
| SD | **Storm Drainage Network** |  | 2027-04-25 → 2027-05-01 (+6d) |  |  |
| 1DL | **1st Material Delivery & Site Inspection** |  | 2026-11-23 → 2026-11-30 (+7d) |  |  |
| 3 | **Testing and Finishes** | 2026-11-17 → 2026-11-24 (+7d) | 2026-11-23 → 2026-11-30 (+7d) |  |  |
| PRO-SD-1DL-140 | 1ST Material Delivery for Manholes Covers of Storm Drainage Network | 2026-11-17 → 2026-11-24 (+7d) | 2026-11-23 → 2026-11-30 (+7d) |  | 6.5d → 11d |
| PRO-SD-1DL-150 | 1ST Material Delivery for Catch Basin Covers of Storm Drainage Network | 2026-11-17 → 2026-11-24 (+7d) | 2026-11-23 → 2026-11-30 (+7d) |  | 2.5d → 7d |
| DL | **Material Delivery & Site Inspection** |  | 2027-04-25 → 2027-05-01 (+6d) |  |  |
| PRO-R25-SD-DL-100 | Material Delivery & Site Inspection of Manholes of Storm Drainage Network |  | 2026-11-17 A | 92% → 100% | -48.5d → none |
| 2 | **Catch Basin Sections** |  | 2026-11-17 → 2026-11-24 (+7d) |  |  |
| PRO-R25-SD-DL-110 | Material Delivery & Site Inspection of Catch Basin Pipes for Storm Drainage Network |  | 2026-11-17 → 2026-11-24 (+7d) | 40% → 70% |  |
| PRO-R25-SD-DL-130 | Material Delivery & Site Inspection of Catch Basins for Storm Drainage Network |  | 2026-11-17 → 2026-11-24 (+7d) | 40% → 70% |  |
| 3 | **Testing and Finishes** | 2026-11-24 → 2026-12-01 (+7d) | 2027-04-25 → 2027-05-01 (+6d) |  |  |
| PRO-R25-SD-DL-150 | Material Delivery & Site Inspection of Catch Basin Covers for Storm Drainage Network | 2026-11-24 → 2026-12-01 (+7d) | 2026-12-16 → 2026-12-23 (+7d) |  | 2.5d → 7d |

| ID | Task | Start | Finish | Total float |
| --- | --- | --- | --- | --- |
| PRO-R25-SD-DL-140 | Material Delivery & Site Inspection of Manholes Covers for Storm Drainage Network | 2027-03-27 → 2027-03-31 (+4d) | 2027-04-25 → 2027-05-01 (+6d) | -89.5d → -83.75d |
| PW | **Potable Water Network** |  | 2027-04-28 → 2027-05-05 (+7d) |  |
| PO | **Issuance of Purchase Orders** |  | 2026-11-28 → 2026-12-05 (+7d) |  |
| 4 | **Testing and Finishes** | 2026-11-17 → 2026-11-24 (+7d) | 2026-11-28 → 2026-12-05 (+7d) |  |
| PRO-PW-PO-130 | Issuance of Purchase Order for Surface Box of Potable Water Network | 2026-11-17 → 2026-11-24 (+7d) | 2026-11-28 → 2026-12-05 (+7d) | -81.75d → -87.75d |
| MF | **Manufacturing of Material** |  | 2027-03-22 → 2027-03-29 (+7d) |  |
| 4 | **Testing and Finishes** | 2026-11-29 → 2026-12-06 (+7d) | 2027-03-22 → 2027-03-29 (+7d) |  |
| PRO-PW-MF-130 | Manufacturing for Surface Box of Potable Water Network | 2026-11-29 → 2026-12-06 (+7d) | 2027-03-22 → 2027-03-29 (+7d) | -97d → -104d |
| 1DL | **1st Material Delivery & Site Inspection** |  | 2027-03-29 → 2027-04-05 (+7d) |  |
| 1 | **Main Line Sections** |  | 2026-11-17 → 2026-11-24 (+7d) |  |
| PRO-PW-1DL-100_R | 1ST Material Delivery for Main Line Pipes of Potable Water Network(Remaining) |  | 2026-11-17 → 2026-11-24 (+7d) |  |
| 4 | **Testing and Finishes** | 2027-03-23 → 2027-03-30 (+7d) | 2027-03-29 → 2027-04-05 (+7d) |  |
| PRO-PW-1DL-130 | 1ST Material Delivery for Finishes of Potable Water Network | 2027-03-23 → 2027-03-30 (+7d) | 2027-03-29 → 2027-04-05 (+7d) | -78d → -84d |
| DL | **Material Delivery & Site Inspection** |  | 2027-04-28 → 2027-05-05 (+7d) |  |
| PRO-R25-PW-DL-110 | Material Delivery & Site Inspection of Valves for Potable Water Network |  | 2026-11-17 → 2026-11-24 (+7d) | 1.5d → -4.5d |
| 3 | **Fire Hydrant** |  | 2026-11-17 → 2026-11-24 (+7d) |  |
| PRO-R25-PW-DL-120 | Material Delivery & Site Inspection of Fire Hydrants for Potable Water Network |  | 2026-11-17 → 2026-11-24 (+7d) | 11.5d → 5.5d |
| 4 | **Testing and Finishes** | 2027-03-30 → 2027-04-06 (+7d) | 2027-04-28 → 2027-05-05 (+7d) |  |
| PRO-R25-PW-DL-130 | Material Delivery & Site Inspection for Finishes of Potable Water Network | 2027-03-30 → 2027-04-06 (+7d) | 2027-04-28 → 2027-05-05 (+7d) | -78d → -84d |
| IR | **Irrigation Network** |  | 2027-03-02 → 2027-03-13 (+11d) |  |
| PO | **Issuance of Purchase Orders** |  | 2026-11-23 → 2026-11-30 (+7d) |  |
| 1 | **Main Line Pipes** |  | 2026-11-23 → 2026-11-30 (+7d) |  |
| PRO-IR-PO-110 | Issuance of Purchase Order for Valves of Irrigation Network | 2026-11-17 → 2026-11-24 (+7d) | 2026-11-23 → 2026-11-30 (+7d) | -84.25d → -90.25d |
| MF | **Manufacturing of Material** |  | 2027-02-21 → 2027-02-28 (+7d) |  |
| 1 | **Main Line Pipes** |  | 2027-02-21 → 2027-02-28 (+7d) |  |
| PRO-IR-MF-110 | Manufacturing of Valves for Irrigation Network | 2026-11-24 → 2026-12-01 (+7d) | 2027-02-21 → 2027-02-28 (+7d) | -99.5d → -106.5d |
| 1DL | **1st Material Delivery & Site Inspection** |  | 2027-03-02 → 2027-03-13 (+11d) |  |
| 1 | **Main Line Pipes** |  | 2027-03-02 → 2027-03-13 (+11d) |  |
| PRO-IR-1DL-100 | 1ST Material Delivery for Main Line Pipes of Irrigation Network |  | 2026-11-21 → 2026-11-28 (+7d) | -19.5d → -25.5d |
| PRO-IR-1DL-110 | 1ST Material Delivery for Valves of Irrigation Network | 2027-02-22 → 2027-03-01 (+7d) | 2027-03-02 → 2027-03-13 (+11d) | -82.5d → -87.25d |
| DL | **Material Delivery & Site Inspection** | 2026-11-21 → 2026-11-28 (+7d) | 2027-03-02 → 2027-03-13 (+11d) |  |
| 1 | **Main Line Pipes** | 2026-11-21 → 2026-11-28 (+7d) | 2027-03-02 → 2027-03-13 (+11d) |  |
| PRO-R25-IR-DL-100 | Material Delivery & Site Inspection of Main Line Pipes for Irrigation Network | 2026-11-21 → 2026-11-28 (+7d) | 2026-11-21 → 2026-11-28 (+7d) | -19.5d → -25.5d |
| PRO-R25-IR-DL-110 | Material Delivery & Site Inspection of Valves for Irrigation Network | 2027-03-02 → 2027-03-13 (+11d) | 2027-03-02 → 2027-03-13 (+11d) | -82.5d → -87.25d |
| TSE | **Treated Sewage Effluent (Tse)** |  | 2027-03-02 → 2027-03-13 (+11d) |  |
| PO | **Issuance of Purchase Orders** |  | 2026-11-23 → 2026-11-30 (+7d) |  |
| 1 | **Main Line Pipes** |  | 2026-11-23 → 2026-11-30 (+7d) |  |
| PRO-TSE-PO-130 | Issuance of Purchase Order for Valves of Treated Sewage Effluent (Tse) | 2026-11-17 → 2026-11-24 (+7d) | 2026-11-23 → 2026-11-30 (+7d) | -83.25d → -89.25d |
| MF | **Manufacturing of Material** |  | 2027-02-21 → 2027-02-28 (+7d) |  |
| 1 | **Main Line Pipes** |  | 2027-02-21 → 2027-02-28 (+7d) |  |
| PRO-TSE-MF-130 | Manufacturing of Valves for Treated Sewage Effluent (Tse) | 2026-11-24 → 2026-12-01 (+7d) | 2027-02-21 → 2027-02-28 (+7d) | -98.5d → -105.5d |
| 1DL | **1st Material Delivery & Site Inspection** |  | 2027-03-02 → 2027-03-13 (+11d) |  |
| 1 | **Main Line Pipes** |  | 2027-03-02 → 2027-03-13 (+11d) |  |
| PRO-TSE-1DL-130 | 1ST Material Delivery for Valves of Treated Sewage Effluent (Tse) | 2027-02-22 → 2027-03-01 (+7d) | 2027-03-02 → 2027-03-13 (+11d) | -81.5d → -86.25d |
| DL | **Material Delivery & Site Inspection** |  | 2027-03-02 → 2027-03-13 (+11d) |  |
| 1 | **Main Line Pipes** |  | 2027-03-02 → 2027-03-13 (+11d) |  |
| PRO-R25-TSE-DL-120_R | Material Delivery & Site Inspection of Main Line Pipes for Treated Sewage Effluent (Tse)(Remaining) |  | 2026-11-17 → 2026-11-24 (+7d) | -14.5d → -20.5d |
| PRO-R25-TSE-DL-130 | Material Delivery & Site Inspection of Valves for Treated Sewage Effluent (Tse) | 2027-03-02 → 2027-03-13 (+11d) | 2027-03-02 → 2027-03-13 (+11d) | -81.5d → -86.25d |
| MV | **Medium Voltage Network** | 2026-11-17 → 2026-11-24 (+7d) | 2027-04-21 → 2027-04-27 (+6d) |  |
| PO | **Issuance of Purchase Orders** | 2026-11-17 → 2026-11-24 (+7d) | 2026-11-30 → 2026-12-07 (+7d) |  |
| 1 | **Cabling Works** | 2026-11-17 → 2026-11-24 (+7d) | 2026-11-30 → 2026-12-07 (+7d) |  |
| PRO-MV-PO-100 | Issuance of Purchase Order for Medium Voltage Cables of Medium Voltage Network | 2026-11-17 → 2026-11-24 (+7d) | 2026-11-30 → 2026-12-07 (+7d) | -88.25d → -94.25d |
| 3 | **Termination and Testing Works** | 2026-11-17 → 2026-11-24 (+7d) | 2026-11-30 → 2026-12-07 (+7d) |  |
| PRO-MV-PO-120 | Issuance of Purchase Order for Termination and Joints Kits of Medium Voltage Network | 2026-11-17 → 2026-11-24 (+7d) | 2026-11-30 → 2026-12-07 (+7d) | -95.75d → -101.75d |
| MF | **Manufacturing of Material** | 2026-12-01 → 2026-12-08 (+7d) | 2027-02-28 → 2027-03-07 (+7d) |  |
| 1 | **Cabling Works** | 2026-12-01 → 2026-12-08 (+7d) | 2027-01-29 → 2027-02-05 (+7d) |  |
| PRO-MV-MF-100 | Manufacturing of Medium Voltage Cables for Medium Voltage Network | 2026-12-01 → 2026-12-08 (+7d) | 2027-01-29 → 2027-02-05 (+7d) | -104.5d → -111.5d |
| 3 | **Termination and Testing Works** | 2026-12-01 → 2026-12-08 (+7d) | 2027-02-28 → 2027-03-07 (+7d) |  |
| PRO-MV-MF-110 | Manufacturing of Termination and Joints Kits for Medium Voltage Network | 2026-12-01 → 2026-12-08 (+7d) | 2027-02-28 → 2027-03-07 (+7d) | -113d → -120d |
| 1DL | **1st Material Delivery & Site Inspection** | 2027-01-30 → 2027-02-06 (+7d) | 2027-03-22 → 2027-03-28 (+6d) |  |
| 1 | **Cabling Works** | 2027-01-30 → 2027-02-06 (+7d) | 2027-02-14 → 2027-02-22 (+8d) |  |
| PRO-MV-1DL-100 | 1ST Material Delivery for Medium Voltage Cables of Medium Voltage Network | 2027-01-30 → 2027-02-06 (+7d) | 2027-02-14 → 2027-02-22 (+8d) | -89.5d → -95.5d |
| 3 | **Termination and Testing Works** | 2027-03-01 → 2027-03-08 (+7d) | 2027-03-22 → 2027-03-28 (+6d) |  |
| PRO-MV-1DL-120 | 1ST Material Delivery for Termination and Joints Kits of Medium Voltage Network | 2027-03-01 → 2027-03-08 (+7d) | 2027-03-22 → 2027-03-28 (+6d) | -92.75d → -97.25d |
| DL | **Material Delivery & Site Inspection** | 2027-02-14 → 2027-02-23 (+9d) | 2027-04-21 → 2027-04-27 (+6d) |  |
| 1 | **Cabling Works** | 2027-02-14 → 2027-02-23 (+9d) | 2027-02-14 → 2027-02-23 (+9d) |  |
| PRO-MV-DL-100 | Material Delivery & Site Inspection of Medium Voltage Cables for Medium Voltage Network | 2027-02-14 → 2027-02-23 (+9d) | 2027-02-14 → 2027-02-23 (+9d) | -89.5d → -95.5d |
| 3 | **Termination and Testing Works** | 2027-03-22 → 2027-03-28 (+6d) | 2027-04-21 → 2027-04-27 (+6d) |  |
| PRO-MV-DL-110 | Material Delivery & Site Inspection of Termination and Joints Kits for Medium Voltage Network | 2027-03-22 → 2027-03-28 (+6d) | 2027-04-21 → 2027-04-27 (+6d) | -92.75d → -97.25d |
| SL | **Low Voltage and Street Lighting Network** |  | 2027-01-03 → 2027-01-10 (+7d) |  |

| ID | Task | Start | Finish | Complete | Total float |
| --- | --- | --- | --- | --- | --- |
| 1DL | **1st Material Delivery & Site Inspection** | 2026-11-17 → 2026-11-24 (+7d) | 2026-12-03 → 2026-12-10 (+7d) |  |  |
| 1 | **Cabling Works** | 2026-11-17 → 2026-11-24 (+7d) | 2026-11-23 → 2026-11-30 (+7d) |  |  |
| PRO-SL-1DL-100 | 1ST Material Delivery for Lighting Cables of Street Lighting Network | 2026-11-17 → 2026-11-24 (+7d) | 2026-11-23 → 2026-11-30 (+7d) |  | -6.5d → -12.5d |
| 2 | **Lighting Poles Works** | 2026-11-17 → 2026-11-24 (+7d) | 2026-11-23 → 2026-11-30 (+7d) |  |  |
| PRO-SL-1DL-110 | 1ST Material Delivery for Lighting Poles Foundations of Street Lighting Network | 2026-11-17 → 2026-11-24 (+7d) | 2026-11-23 → 2026-11-30 (+7d) |  | -35.5d → -41.5d |
| PRO-SL-1DL-120 | 1ST Material Delivery for Lighting Poles of Street Lighting Network | 2026-11-17 → 2026-11-24 (+7d) | 2026-11-23 → 2026-11-30 (+7d) |  | -1.5d → -7.5d |
| PRO-SL-1DL-140 | 1ST Material Delivery for Lighting Fixtures of Street Lighting Network | 2026-11-17 → 2026-11-24 (+7d) | 2026-11-23 → 2026-11-30 (+7d) |  | 42d → 36d |
| 3 | **Distribution Panel Board** | 2026-11-17 → 2026-11-24 (+7d) | 2026-11-23 → 2026-11-30 (+7d) |  |  |
| PRO-SL-1DL-160 | 1ST Material Delivery for Distrubution Panel Boards of Street Lighting Network | 2026-11-17 → 2026-11-24 (+7d) | 2026-11-23 → 2026-11-30 (+7d) |  | 30d → 24d |
| 5 | **Termination and Testing Works** | 2026-11-17 → 2026-11-24 (+7d) | 2026-12-03 → 2026-12-10 (+7d) |  |  |
| PRO-SL-1DL-130 | 1ST Material Delivery for Fuse Boxes of Street Lighting Network | 2026-11-17 → 2026-11-24 (+7d) | 2026-12-03 → 2026-12-10 (+7d) |  | 22d → 16d |
| PRO-SL-1DL-170 | 1ST Material Delivery for Cable Lugs of Street Lighting Network | 2026-11-17 → 2026-11-24 (+7d) | 2026-12-03 → 2026-12-10 (+7d) |  | 20d → 14d |
| 4 | **Earthing System Works** | 2026-11-17 → 2026-11-24 (+7d) | 2026-11-23 → 2026-11-30 (+7d) |  |  |
| PRO-SL-1DL-150 | 1ST Material Delivery for Lighting Earthing of Street Lighting Network | 2026-11-17 → 2026-11-24 (+7d) | 2026-11-23 → 2026-11-30 (+7d) |  | 42d → 36d |
| DL | **Material Delivery & Site Inspection** | 2026-11-24 → 2026-12-01 (+7d) | 2027-01-03 → 2027-01-10 (+7d) |  |  |
| 1 | **Cabling Works** | 2026-11-24 → 2026-12-01 (+7d) | 2026-11-24 → 2026-12-01 (+7d) |  |  |
| PRO-R25-SL-DL-100 | Material Delivery & Site Inspection of Lighting Cables for Street Lighting Network | 2026-11-24 → 2026-12-01 (+7d) | 2026-11-24 → 2026-12-01 (+7d) |  | -6.5d → -12.5d |
| 2 | **Lighting Poles Works** | 2026-11-24 → 2026-12-01 (+7d) | 2026-12-14 → 2026-12-21 (+7d) |  |  |
| PRO-R25-SL-DL-110 | Material Delivery & Site Inspection of Lighting Poles Foundations for Street Lighting Network | 2026-11-24 → 2026-12-01 (+7d) | 2026-12-14 → 2026-12-21 (+7d) |  | -35.5d → -41.5d |
| PRO-R25-SL-DL-120 | Material Delivery & Site Inspection of Lighting Poles for Street Lighting Network | 2026-11-24 → 2026-12-01 (+7d) | 2026-11-24 → 2026-12-01 (+7d) |  | -1.5d → -7.5d |
| PRO-R25-SL-DL-140 | Material Delivery & Site Inspection of Lighting Fixtures for Street Lighting Network | 2026-11-24 → 2026-12-01 (+7d) | 2026-11-24 → 2026-12-01 (+7d) |  | 42d → 36d |
| 3 | **Distribution Panel Board** | 2026-11-24 → 2026-12-01 (+7d) | 2026-11-24 → 2026-12-01 (+7d) |  |  |
| PRO-R25-SL-DL-160 | Material Delivery & Site Inspection of Distrubution Panel Boards for Street Lighting Network | 2026-11-24 → 2026-12-01 (+7d) | 2026-11-24 → 2026-12-01 (+7d) |  | 30d → 24d |
| 4 | **Termination and Testing Works** | 2026-12-05 → 2026-12-12 (+7d) | 2027-01-03 → 2027-01-10 (+7d) |  |  |
| PRO-R25-SL-DL-130 | Material Delivery & Site Inspection of Fuse Boxes for Street Lighting Network | 2026-12-05 → 2026-12-12 (+7d) | 2027-01-03 → 2027-01-10 (+7d) |  | 22d → 16d |
| PRO-R25-SL-DL-170 | Material Delivery & Site Inspection of Cable Lugs for Street Lighting Network | 2026-12-05 → 2026-12-12 (+7d) | 2027-01-03 → 2027-01-10 (+7d) |  | 20d → 14d |
| 5 | **Earthing System Works** | 2026-11-24 → 2026-12-01 (+7d) | 2026-11-24 → 2026-12-01 (+7d) |  |  |
| PRO-R25-SL-DL-150 | Material Delivery & Site Inspection of Lighting Earthing for Street Lighting Network | 2026-11-24 → 2026-12-01 (+7d) | 2026-11-24 → 2026-12-01 (+7d) |  | 42d → 36d |
| TE | **Telecom Network** | 2026-11-17 → 2026-11-24 (+7d) | 2027-03-13 → 2027-03-17 (+4d) |  |  |
| PO | **Issuance of Purchase Orders** | 2026-11-17 → 2026-11-24 (+7d) | 2026-11-23 → 2026-11-30 (+7d) |  |  |
| 1 | **Ducts Works** | 2026-11-17 → 2026-11-24 (+7d) | 2026-11-23 → 2026-11-30 (+7d) |  |  |
| PRO-TE-PO-100 | Issuance of Purchase Order for Ducts forTelecom Network | 2026-11-17 → 2026-11-24 (+7d) | 2026-11-23 → 2026-11-30 (+7d) |  | -64.75d → -70.75d |
| 3 | **Manholes Works** | 2026-11-17 → 2026-11-24 (+7d) | 2026-11-23 → 2026-11-30 (+7d) |  |  |
| PRO-TE-PO-110 | Issuance of Purchase Order for Manholes forTelecom Network | 2026-11-17 → 2026-11-24 (+7d) | 2026-11-23 → 2026-11-30 (+7d) |  | -82.75d → -88.75d |
| 2 | **CCTV System Wroks** | 2026-11-17 → 2026-11-24 (+7d) | 2026-11-23 → 2026-11-30 (+7d) |  |  |
| PRO-CTV-PO-100 | Issuance of Purchase Order for Civil and Finishes Works of CCTV Complete System | 2026-11-17 → 2026-11-24 (+7d) | 2026-11-23 → 2026-11-30 (+7d) |  | -68d → -74d |
| MF | **Manufacturing of Material** | 2026-11-24 → 2026-12-01 (+7d) | 2027-02-21 → 2027-02-28 (+7d) |  |  |
| 1 | **Ducts Works** | 2026-11-24 → 2026-12-01 (+7d) | 2027-01-22 → 2027-01-29 (+7d) |  |  |
| PRO-TE-MF-100 | Manufacturing of Ducts for Telecom Network | 2026-11-24 → 2026-12-01 (+7d) | 2027-01-22 → 2027-01-29 (+7d) |  | -77d → -84d |
| 3 | **Manholes Works** | 2026-11-24 → 2026-12-01 (+7d) | 2027-02-21 → 2027-02-28 (+7d) |  |  |
| PRO-TE-MF-110 | Manufacturing of Manholes for Telecom Network | 2026-11-24 → 2026-12-01 (+7d) | 2027-02-21 → 2027-02-28 (+7d) |  | -98d → -105d |
| 2 | **CCTV System Wroks** | 2026-11-24 → 2026-12-01 (+7d) | 2027-02-21 → 2027-02-28 (+7d) |  |  |
| PRO-CTV-MF-100 | Manufacturing of Civil and Finishes Works for CCTV Complete System | 2026-11-24 → 2026-12-01 (+7d) | 2027-02-21 → 2027-02-28 (+7d) |  | -81d → -88d |
| 1DL | **1st Material Delivery & Site Inspection** | 2027-01-23 → 2027-01-30 (+7d) | 2027-03-08 → 2027-03-17 (+9d) |  |  |
| 1 | **Ducts Works** | 2027-01-23 → 2027-01-30 (+7d) | 2027-01-28 → 2027-02-04 (+7d) |  |  |
| PRO-TE-1DL-100 | 1ST Material Delivery for Ducts of Telecom Network | 2027-01-23 → 2027-01-30 (+7d) | 2027-01-28 → 2027-02-04 (+7d) |  | -66d → -72d |
| 3 | **Manholes Works** | 2027-02-22 → 2027-03-01 (+7d) | 2027-03-02 → 2027-03-13 (+11d) |  |  |
| PRO-TE-1DL-110 | 1ST Material Delivery for Manholes of Telecom Network | 2027-02-22 → 2027-03-01 (+7d) | 2027-03-02 → 2027-03-13 (+11d) |  | -81d → -85.75d |
| 2 | **CCTV System Wroks** | 2027-02-22 → 2027-03-01 (+7d) | 2027-03-08 → 2027-03-17 (+9d) |  |  |
| PRO-CTV-1DL-100 | 1ST Material Delivery for Civil and Finishes Works of CCTV Complete System | 2027-02-22 → 2027-03-01 (+7d) | 2027-03-08 → 2027-03-17 (+9d) |  | -66d → -70.75d |
| DL | **Material Delivery & Site Inspection** | 2027-01-30 → 2027-02-06 (+7d) | 2027-03-13 → 2027-03-17 (+4d) |  |  |
| 1 | **Ducts Works** | 2027-01-30 → 2027-02-06 (+7d) | 2027-01-30 → 2027-02-06 (+7d) |  |  |
| PRO-R25-TE-DL-100 | Material Delivery & Site Inspection for Ducts of Telecom Network | 2027-01-30 → 2027-02-06 (+7d) | 2027-01-30 → 2027-02-06 (+7d) |  | -66d → -72d |
| 3 | **Manholes Works** | 2027-03-02 → 2027-03-13 (+11d) | 2027-03-02 → 2027-03-13 (+11d) |  |  |
| PRO-R25-TE-DL-110 | Material Delivery & Site Inspection of Manholes for Telecom Network | 2027-03-02 → 2027-03-13 (+11d) | 2027-03-02 → 2027-03-13 (+11d) |  | -81d → -85.75d |
| 2 | **CCTV System Wroks** | 2027-03-13 → 2027-03-17 (+4d) | 2027-03-13 → 2027-03-17 (+4d) |  |  |
| PRO-R25-CTV-DL-100 | Material Delivery & Site Inspection of for Civil and Finishes Works of CCTV Complete System | 2027-03-13 → 2027-03-17 (+4d) | 2027-03-13 → 2027-03-17 (+4d) |  | -66d → -70.75d |
| 1 | **Superstructure Works** |  | 2027-02-15 → 2027-02-22 (+7d) |  |  |
| 2 | **Manufacturing of Material** |  | 2027-02-14 → 2027-02-21 (+7d) |  |  |
| SL1211 | **Softscape and Planting Works** | 2026-11-17 → 2026-11-24 (+7d) | 2027-02-14 → 2027-02-21 (+7d) |  |  |
| PRO-FE-CV-MF-70 | Manufacturing of Civil Works for Softscape and Planting Works | 2026-11-17 → 2026-11-24 (+7d) | 2027-02-14 → 2027-02-21 (+7d) |  | -83.5d → -78d |
| 3 | **1st Material Delivery & Site Inspection** |  | 2026-11-17 → 2026-11-24 (+7d) |  |  |
| SL11 | **Storage Tank (TSE)** |  | 2026-11-17 → 2026-11-24 (+7d) |  |  |
| PRO-TSE-CV-1DL-50 | 1ST Material Delivery for Civil Works for Civil Works for Storage Tank (TSE) |  | 2026-11-17 → 2026-11-24 (+7d) |  | 10d → 9d |
| 4 | **Material Delivery & Site Inspection** |  | 2027-02-15 → 2027-02-22 (+7d) |  |  |
| SL11 | **Storage Tank (TSE)** | 2026-11-17 → 2026-10-24 (-24d) | 2026-11-17 → 2026-10-24 (-24d) |  |  |
| PRO-TSE-CV-DL-60 | Material Delivery & Site Inspection for Civil Works for Storage Tank (TSE) | 2026-11-17 → 2026-10-24 A (-24d) | 2026-11-17 → 2026-10-24 A (-24d) | 0% → 100% | 10d → none |
| SL1211 | **Softscape and Planting Works** | 2027-02-15 → 2027-02-22 (+7d) | 2027-02-15 → 2027-02-22 (+7d) |  |  |
| PRO-FE-CV-DL-90 | Material Delivery & Site Inspection for Softscape and Planting Works | 2027-02-15 → 2027-02-22 (+7d) | 2027-02-15 → 2027-02-22 (+7d) |  | -70d → -64d |
| LL | **Long Lead Time Items** |  | 2027-05-23 → 2027-05-29 (+6d) |  |  |

| ID | Task | Start | Finish | Complete | Total float | Predecessors |
| --- | --- | --- | --- | --- | --- | --- |
| 2 | **Infrastructure Networks** | 2026-11-17 → 2026-11-24 (+7d) | 2027-03-31 → 2027-04-07 (+7d) |  |  |  |
| 2 | **CCTV System Wroks of Telecom Network** | 2026-11-17 → 2026-11-24 (+7d) | 2027-03-31 → 2027-04-07 (+7d) |  |  |  |
| 3 | **Issuance of Purchase Orders** | 2026-11-17 → 2026-11-24 (+7d) | 2026-12-09 → 2026-12-16 (+7d) |  |  |  |
| PRO-CTV-LL-PO-10 | Issuance of Purchase Order for Low Current Works of CCTV Complete System with All Accessories | 2026-11-17 → 2026-11-24 (+7d) | 2026-12-09 → 2026-12-16 (+7d) |  | -82d → -88d |  |
| 1 | **Manufacturing of Material** | 2026-12-10 → 2026-12-17 (+7d) | 2027-03-13 → 2027-03-20 (+7d) |  |  |  |
| PRO-CTV-LL-MF-10 | Manufacturing of Low Current Works for CCTV Complete System with All Accessories | 2026-12-10 → 2026-12-17 (+7d) | 2027-03-13 → 2027-03-20 (+7d) |  | -97d → -104d |  |
| 2 | **Material Shipping/Custom Clearance/Delivery** | 2027-03-14 → 2027-03-21 (+7d) | 2027-03-30 → 2027-04-06 (+7d) |  |  |  |
| PRO-CTV-LL-SH/DL-10 | Material Delivery for Low Current Works of CCTV Complete System with All Accessories | 2027-03-14 → 2027-03-21 (+7d) | 2027-03-30 → 2027-04-06 (+7d) |  | -77d → -83d |  |
| 4 | **Material Site Inspection** | 2027-03-31 → 2027-04-07 (+7d) | 2027-03-31 → 2027-04-07 (+7d) |  |  |  |
| PRO-CTV-LL-MSI-10 | Material Site Inspection for Low Current Works of CCTV Complete System with All Accessories | 2027-03-31 → 2027-04-07 (+7d) | 2027-03-31 → 2027-04-07 (+7d) |  | -77d → -83d |  |
| 1 | **Superstructure Works** |  | 2027-05-23 → 2027-05-29 (+6d) |  |  |  |
| SL | **Pump Stations** |  | 2027-02-25 → 2027-03-07 (+10d) |  |  |  |
| 2 | **Manufacturing of Material** |  | 2026-12-08 → 2026-12-15 (+7d) |  |  |  |
| PRO-SPS-LL-MF-10 | Manufacturing of Electromechanical Works for Pump Stations |  | 2026-12-08 → 2026-12-15 (+7d) | 46% → 80% | -26.09d → -33.09d |  |
| 3 | **Material Shipping/Custom Clearance/Delivery** | 2026-12-08 → 2026-12-15 (+7d) | 2027-01-12 → 2027-01-19 (+7d) |  |  |  |
| PRO-SPS-LL-SH/DL-10 | Material Delivery for Electromechanical Works for Pump Stations | 2026-12-08 → 2026-12-15 (+7d) | 2027-01-12 → 2027-01-19 (+7d) |  | -22.09d → -28.09d |  |
| 4 | **Material Site Inspection** | 2027-01-12 → 2027-01-19 (+7d) | 2027-02-25 → 2027-03-07 (+10d) |  |  |  |
| PRO-SPS-LL-MSI-10 | Material Site Inspection for Electromechanical Works for Pump Stations | 2027-01-12 → 2027-01-19 (+7d) | 2027-02-25 → 2027-03-07 (+10d) |  | -22.09d → -28.09d |  |
| SL1 | **Lift Stations** |  | 2027-04-14 → 2027-04-21 (+7d) |  |  |  |
| 2 | **Manufacturing of Material** | 2026-11-17 → 2026-11-24 (+7d) | 2027-01-15 → 2027-01-22 (+7d) |  |  |  |
| PRO-LS-LL-MF-20 | Manufacturing of Electromechanical Works for Lift Stations | 2026-11-17 → 2026-11-24 (+7d) | 2027-01-15 → 2027-01-22 (+7d) |  | -80d → -87d |  |
| 3 | **Material Shipping/Custom Clearance/Delivery** | 2027-01-16 → 2027-01-23 (+7d) | 2027-02-22 → 2027-03-03 (+9d) |  |  |  |
| PRO-LS-LL-SH/DL-20 | Material Delivery for Electromechanical Works for Lift Stations | 2027-01-16 → 2027-01-23 (+7d) | 2027-02-22 → 2027-03-03 (+9d) |  | -68d → -74d |  |
| 4 | **Material Site Inspection** | 2027-02-23 → 2027-03-04 (+9d) | 2027-04-14 → 2027-04-21 (+7d) |  |  |  |
| PRO-LS-LL-MSI-20 | Material Site Inspection for Electromechanical Works for Lift Stations | 2027-02-23 → 2027-03-04 (+9d) | 2027-04-14 → 2027-04-21 (+7d) |  | -68d → -74d |  |
| SL2 | **Storage Tank (TSE)** | 2026-11-17 → 2026-11-24 (+7d) | 2027-05-23 → 2027-05-29 (+6d) |  |  |  |
| 1 | **Issuance of Purchase Orders** | 2026-11-17 → 2026-11-24 (+7d) | 2026-12-21 → 2026-12-28 (+7d) |  |  |  |
| PRO-TSE-LL-PO-30 | Issuance of Purchase Order for Electromechanical Works for Storage Tank (TSE) | 2026-11-17 → 2026-11-24 (+7d) | 2026-12-21 → 2026-12-28 (+7d) |  | -97.75d → -103.75d |  |
| 2 | **Manufacturing of Material** | 2026-12-22 → 2026-12-29 (+7d) | 2027-02-19 → 2027-02-26 (+7d) |  |  |  |
| PRO-TSE-LL-MF-30 | Manufacturing of Electromechanical Works for Storage Tank (TSE) | 2026-12-22 → 2026-12-29 (+7d) | 2027-02-19 → 2027-02-26 (+7d) |  | -115d → -122d |  |
| 3 | **Material Shipping/Custom Clearance/Delivery** | 2027-02-20 → 2027-02-27 (+7d) | 2027-04-03 → 2027-04-08 (+5d) |  |  |  |
| PRO-TSE-LL-SH/DL-30 | Material Delivery for Electromechanical Works for Storage Tank (TSE) | 2027-02-20 → 2027-02-27 (+7d) | 2027-04-03 → 2027-04-08 (+5d) |  | -95.5d → -100.25d |  |
| 4 | **Material Site Inspection** | 2027-04-03 → 2027-04-08 (+5d) | 2027-05-23 → 2027-05-29 (+6d) |  |  |  |
| PRO-TSE-LL-MSI-30 | Material Site Inspection for Electromechanical Works for Storage Tank (TSE) | 2027-04-03 → 2027-04-08 (+5d) | 2027-05-23 → 2027-05-29 (+6d) |  | -95.5d → -100.25d |  |
| CON | **Construction Works** |  | 2027-06-13 → 2027-06-20 (+7d) |  |  |  |
| INF | **Infrastructure Networks** |  | 2027-06-13 → 2027-06-20 (+7d) |  |  |  |
| CO-EW-200_R | Excavation Works Upto Design Level for Earthworks-P1(Remaining) |  | 2026-11-17 A | 95% → 100% | -54d → none |  |
| CO-EW-210_R | Excavation Works Upto Design Level for Earthworks-P2(Remaining) |  | 2026-11-17 A | 95% → 100% | -54d → none |  |
| CO-EW-220_R | Excavation Works Upto Design Level for Earthworks-P3(Remaining) |  | 2026-11-17 A | 95% → 100% | -54d → none |  |
| SD | **Storm Drainage Network** |  | 2027-01-03 → 2027-01-05 (+2d) |  |  |  |
| MH25-MH12 | **FROM MH-25:MH-12** |  | 2026-11-28 → 2026-12-05 (+7d) |  |  |  |
| CB | **Catch Basin Sections** |  | 2026-11-28 → 2026-12-05 (+7d) |  |  |  |
| CO-SD-CB-140 | Trench Excavation and Bedding Works for Catch Basins of Storm Drainage Network |  | 2026-11-28 → 2026-12-05 (+7d) | 4% → 32% |  |  |
| CO-SD-CB-150 | Installation and Pipes Laying Connection Works for Catch Basins of Storm Drainage Network |  | 2026-11-28 → 2026-12-05 (+7d) | 4% → 32% |  |  |
| CO-SD-CB-170 | Trench Backfilling and Compaction Works for Catch Basins of Storm Drainage Network |  | 2026-11-28 → 2026-12-05 (+7d) | 4% → 32% |  |  |
| MH25-MH121 | **FROM MH-12:MH-01** |  | 2027-01-03 → 2027-01-05 (+2d) |  |  |  |
| ML | **Main Line Sections** |  | 2026-12-09 → 2026-12-16 (+7d) |  |  |  |
| CO-SD-ML-140 | Trench Excavation and Bedding Works for Main Lines of Storm Drainage Network |  | 2026-12-02 → 2026-12-09 (+7d) |  | -52.5d → -40.5d |  |
| CO-SD-ML-150 | Pipes Laying Works for Main Lines of Storm Drainage Network |  | 2026-12-02 → 2026-12-09 (+7d) | 7% → 15% | -52.5d → -40.5d |  |
| CO-SD-ML-160 | Trench Backfilling and Compaction Works for Main Lines of Storm Drainage Network |  | 2026-12-09 → 2026-12-16 (+7d) | 3% → 15% |  |  |
| MH | **Manholes** |  | 2026-12-09 → 2026-11-21 (-18d) |  |  |  |
| CO-SD-MH-230 | Trench Excavation and Bedding Works for Manholes of Storm Drainage Network |  | 2026-12-02 → 2026-11-18 A (-14d) | 35% → 100% | -52.5d → none | CO-SD-ML-150 SS, CO-SD-MH-180, PRO-R25-SD-DL-100 SS, CO-SD-ML-150 FF, PRO-R25-SD-DL-100 FF → CO-SD-MH-180, PRO-R25-SD-DL-100 SS, CO-SD-ML-150 SS, PRO-R25-SD-DL-100 FF |
| CO-SD-MH-240 | Install RC Footing Works for Manholes of Storm Drainage Network |  | 2026-12-02 → 2026-11-18 A (-14d) | 35% → 100% | -36.5d → none |  |
| CO-SD-MH-250 | Install RC Wall Rings & Slab Works for Manholes of Storm Drainage Network |  | 2026-12-02 → 2026-11-18 A (-14d) | 35% → 100% | -36.5d → none |  |
| CO-SD-MH-260 | Backfilling Works for Manholes of Storm Drainage Network |  | 2026-12-09 → 2026-11-21 A (-18d) | 35% → 100% | -40.5d → none | CO-SD-MH-250 SS, CO-SD-ML-160 FF, CO-SD-MH-220, CO-SD-MH-250 FF → CO-SD-MH-250 SS, CO-SD-ML-160 SS, CO-SD-MH-220, CO-SD-MH-250 FF |
| CB | **Catch Basin Sections** | 2026-12-03 → 2026-12-06 (+3d) | 2027-01-03 → 2027-01-05 (+2d) |  |  |  |
| CO-SD-CB-180 | Trench Excavation and Bedding Works for Catch Basins of Storm Drainage Network | 2026-12-03 → 2026-12-06 (+3d) | 2026-12-13 → 2026-12-15 (+2d) |  | -52.5d → -48.5d | CO-SD-MH-230, CO-SD-CB-140, CO-SD-CB-170 → CO-SD-CB-140, CO-SD-CB-170 |
| CO-SD-CB-190 | Installation and Pipes Laying Connection Works for Catch Basins of Storm Drainage Network | 2026-12-14 → 2026-12-16 (+2d) | 2026-12-23 → 2026-12-26 (+3d) |  | -52.5d → -48.5d |  |
| CO-SD-CB-200 | Trench Backfilling and Compaction Works for Catch Basins of Storm Drainage Network | 2026-12-24 → 2026-12-27 (+3d) | 2027-01-03 → 2027-01-05 (+2d) |  | -52.5d → -48.5d |  |
| SW | **Sewage Network** |  | 2026-11-30 → 2026-12-07 (+7d) |  |  |  |
| 1 | **FROM MH-10:MH-01** |  | 2026-11-30 → 2026-12-07 (+7d) |  |  |  |
| ML | **Main Line Sections** |  | 2026-11-30 → 2026-12-07 (+7d) |  |  |  |
| CO-SW-ML-140 | Trench Excavation and Bedding Works for Main Lines of Sewage Network |  | 2026-11-23 → 2026-11-30 (+7d) | 72% → 92% | -35.5d → -41.5d |  |
| CO-SW-ML-150 | Pipes Laying Works for Main Lines of Sewage Network |  | 2026-11-24 → 2026-12-01 (+7d) | 72% → 92% | -35.5d → -41.5d |  |
| CO-SW-ML-160 | Trench Backfilling and Compaction Works for Main Lines of Sewage Network |  | 2026-11-30 → 2026-12-07 (+7d) | 61% → 92% | -35.5d → -41.5d |  |
| 1 | **Manholes** |  | 2026-11-30 → 2026-12-07 (+7d) |  |  |  |
| CO-SW-MH-210 | Excavation Works for Main Line Manholes of Sewage Network |  | 2026-11-25 → 2026-12-02 (+7d) | 89% → 95% | -31.5d → -37.5d |  |
| CO-SW-MH-220 | Installation RC Footing Works for Main Line Manholes of Sewage Network |  | 2026-11-30 → 2026-12-07 (+7d) | 89% → 95% | -35.5d → -41.5d |  |
| CO-SW-MH-230 | Install Grp Liner Wall Works for Main Line Manholes of Sewage Network |  | 2026-11-30 → 2026-12-07 (+7d) | 89% → 95% | -35.5d → -41.5d |  |
| CO-SW-MH-240 | Pouring Grp Liner Wall Works for Main Line Manholes of Sewage Network |  | 2026-11-30 → 2026-12-07 (+7d) | 89% → 95% | -35.5d → -41.5d |  |

| ID | Task | Start | Finish | Complete | Total float |
| --- | --- | --- | --- | --- | --- |
| CO-SW-MH-250 | Backfilling Works for Main Line Manholes of Sewage Network |  | 2026-11-30 → 2026-12-07 (+7d) | 50% → 95% | -35.5d → -41.5d |
| CO-PW-ML-100 | Trench Excavation and Bedding Works for Main Lines of Potable Water Network |  | 2026-11-30 → 2026-12-07 (+7d) | 42% → 62% | -28d → -34d |
| CO-PW-ML-110 | Pipes Laying and accessories for Main Lines of Potable Water Network |  |  | 9% → 62% |  |
| CO-PW-ML-130 | Trench Backfilling and Compaction Works for Main Lines of Potable Water Network |  |  | 7% → 62% |  |
| IR | **Irrigation Network** | 2026-12-01 → 2026-12-08 (+7d) | 2027-04-07 → 2027-04-13 (+6d) |  |  |
| ML | **Main Line Pipes** | 2026-12-01 → 2026-12-08 (+7d) | 2027-04-07 → 2027-04-13 (+6d) |  |  |
| CO-IR-ML-100 | Trench Excavation and Bedding Works for Main Lines of Irrigation Network | 2026-12-01 → 2026-12-08 (+7d) | 2026-12-12 → 2026-12-19 (+7d) |  | -28d → -34d |
| CO-IR-ML-120 | Installation Works for Main Line Valves of Irrigation Network | 2027-03-02 → 2027-03-13 (+11d) | 2027-03-17 → 2027-03-23 (+6d) |  | -82.5d → -87.25d |
| CO-IR-ML-130 | Trench Backfilling and Compaction Works for Main Lines of Irrigation Network | 2027-03-18 → 2027-03-23 (+5d) | 2027-03-28 → 2027-04-03 (+6d) |  | -82.5d → -87.25d |
| CO-IR-ML-140 | Installation Works for Bulbblers And Sprinklers of Irrigation Network | 2027-03-29 → 2027-04-03 (+5d) | 2027-04-07 → 2027-04-13 (+6d) |  | -75.5d → -80.25d |
| TSE | **Treated Sewage Effluent (Tse)** | 2026-12-01 → 2026-12-08 (+7d) | 2027-04-07 → 2027-04-13 (+6d) |  |  |
| ML | **Main Line Pipes** | 2026-12-01 → 2026-12-08 (+7d) | 2027-04-07 → 2027-04-13 (+6d) |  |  |
| CO-TSE-ML-150 | Trench Excavation and Bedding Works for Main Lines of Treated Sewage Effluent (Tse) | 2026-12-01 → 2026-12-08 (+7d) | 2026-12-10 → 2026-12-17 (+7d) |  | -26.5d → -32.5d |
| CO-TSE-ML-170 | Installation Works for Main Line Valves of Treated Sewage Effluent (Tse) | 2027-03-02 → 2027-03-13 (+11d) | 2027-03-16 → 2027-03-22 (+6d) |  | -81.5d → -86.25d |
| CO-TSE-ML-180 | Trench Backfilling and Compaction Works for Treated Sewage Effluent (Tse) | 2027-03-18 → 2027-03-23 (+5d) | 2027-03-28 → 2027-04-03 (+6d) |  | -82.5d → -87.25d |
| CO-TSE-ML-190 | Installation Works for Valve and Washout Chambers of Treated Sewage Effluent (Tse) | 2027-03-29 → 2027-04-03 (+5d) | 2027-04-07 → 2027-04-13 (+6d) |  | -63.5d → -68.25d |
| MV | **Medium Voltage Network** | 2027-02-14 → 2027-02-23 (+9d) | 2027-04-13 → 2027-04-20 (+7d) |  |  |
| CW | **Cabling Works** | 2027-02-14 → 2027-02-23 (+9d) | 2027-04-13 → 2027-04-20 (+7d) |  |  |
| CO-MV-ML-250 | Trench Excavation and Bedding Works for Medium Voltage Network | 2027-02-14 → 2027-02-23 (+9d) | 2027-03-02 → 2027-03-14 (+12d) |  | -89.5d → -95.5d |
| CO-MV-ML-260 | Cable Laying Works for Medium Voltage Network | 2027-03-02 → 2027-03-15 (+13d) | 2027-03-25 → 2027-04-01 (+7d) |  | -89.5d → -95.5d |
| CO-MV-ML-270 | Trench Backfilling and Compaction Works for Medium Voltage Network | 2027-03-27 → 2027-04-03 (+7d) | 2027-04-13 → 2027-04-20 (+7d) |  | -89.5d → -95.5d |
| SL | **Street Lighting Network** | 2027-02-14 → 2027-02-23 (+9d) | 2027-05-11 → 2027-05-24 (+13d) |  |  |
| LP | **Lighting Poles Works** | 2027-02-14 → 2027-02-23 (+9d) | 2027-04-04 → 2027-04-11 (+7d) |  |  |
| CO-SL-LP-300 | Foundation Excavation Works for Lighting Poles of Street Lighting Network | 2027-02-14 → 2027-02-23 (+9d) | 2027-02-25 → 2027-03-07 (+10d) |  | -86.5d → -92.5d |
| CO-SL-LP-310 | Installation Works for Lighting Poles Foundation of Street Lighting Network | 2027-02-25 → 2027-03-07 (+10d) | 2027-03-13 → 2027-03-20 (+7d) |  | -86.5d → -92.5d |
| CO-SL-LP-320 | Installation Works for Lighting Poles of Street Lighting Network | 2027-03-14 → 2027-03-21 (+7d) | 2027-03-23 → 2027-03-30 (+7d) |  | -86.5d → -92.5d |
| CO-SL-LP-210 | Backfilling Works for Lighting Poles of Street Lighting Network | 2027-03-24 → 2027-03-31 (+7d) | 2027-04-04 → 2027-04-11 (+7d) |  | -86.5d → -92.5d |
| CW | **Cabling Works** | 2027-02-25 → 2027-03-07 (+10d) | 2027-04-01 → 2027-04-08 (+7d) |  |  |
| CO-SL-CL-250 | Trench Excavation and Bedding Works for Street Lighting Network | 2027-02-25 → 2027-03-07 (+10d) | 2027-03-08 → 2027-03-18 (+10d) |  | -83.5d → -89.5d |
| CO-SL-CL-260 | Cable Laying Works for Street Lighting Network | 2027-03-13 → 2027-03-20 (+7d) | 2027-03-20 → 2027-03-27 (+7d) |  | -83.5d → -89.5d |
| CO-SL-CL-270 | Trench Backfilling and Compaction Works for Street Lighting Network | 2027-03-24 → 2027-03-31 (+7d) | 2027-04-01 → 2027-04-08 (+7d) |  | -86.5d → -92.5d |
| DPB | **Distrubution Panel Boards** | 2027-04-14 → 2027-04-21 (+7d) | 2027-05-11 → 2027-05-24 (+13d) |  |  |
| CO-SL-DB-250 | Foundation Excavation Works For Panel Boards of Street Lighting Network | 2027-04-14 → 2027-04-21 (+7d) | 2027-04-20 → 2027-04-27 (+7d) |  | -88d → -94d |
| CO-SL-DB-260 | Installation Works for Panel Board Concrete Foundations of Street Lighting Network | 2027-04-21 → 2027-04-28 (+7d) | 2027-04-27 → 2027-05-04 (+7d) |  | -88d → -94d |
| CO-SL-DB-270 | Installation Works for Lighting Panel Boards of Street Lighting Network | 2027-04-28 → 2027-05-05 (+7d) | 2027-05-04 → 2027-05-11 (+7d) |  | -88d → -94d |
| CO-SL-DB-220 | A wall of concrete blocks to install the KWH meter of Street Lighting Network | 2027-05-05 → 2027-05-12 (+7d) | 2027-05-11 → 2027-05-24 (+13d) |  | -81d → -87d |
| TE | **Telecom Network** | 2027-03-02 → 2027-03-15 (+13d) | 2027-04-25 → 2027-05-02 (+7d) |  |  |
| PD | **Ducts Works** | 2027-03-02 → 2027-03-15 (+13d) | 2027-04-06 → 2027-04-13 (+7d) |  |  |
| CO-TE-DW-100 | Trench Excavation and Bedding Works for Ducts of Telecom Network | 2027-03-02 → 2027-03-15 (+13d) | 2027-03-08 → 2027-03-18 (+10d) |  | -89d → -95d |
| CO-TE-DW-110 | Pipes Laying Works for Ducts of Telecom Network | 2027-03-13 → 2027-03-20 (+7d) | 2027-03-16 → 2027-03-23 (+7d) |  | -89d → -95d |
| CO-TE-DW-130 | Trench Backfilling and Compaction Works for Ducts of Telecom Network | 2027-03-17 → 2027-03-24 (+7d) | 2027-03-25 → 2027-04-01 (+7d) |  | -88d → -94d |
| CO-TE-DW-120 | Pouring Road Crossing Concrete Encasement | 2027-03-27 → 2027-04-03 (+7d) | 2027-04-06 → 2027-04-13 (+7d) |  | -88d → -94d |
| MH | **Manholes Works** | 2027-03-17 → 2027-03-24 (+7d) | 2027-04-07 → 2027-04-14 (+7d) |  |  |
| CO-TE-MH-140 | Excavation Works for Manholes of Telecom Network | 2027-03-17 → 2027-03-24 (+7d) | 2027-03-22 → 2027-03-29 (+7d) |  | -89d → -95d |
| CO-TE-MH-150 | Installation Works for Manholes of Telecom Network | 2027-03-23 → 2027-03-30 (+7d) | 2027-03-30 → 2027-04-06 (+7d) |  | -89d → -95d |
| CO-TE-MH-160 | Backfilling Works for Manholes of Telecom Network | 2027-03-31 → 2027-04-07 (+7d) | 2027-04-07 → 2027-04-14 (+7d) |  | -89d → -95d |
| DD | **CCTV System Wroks** | 2027-04-08 → 2027-04-15 (+7d) | 2027-04-25 → 2027-05-02 (+7d) |  |  |
| CO-TE-CTV-100 | Digging and Pulling Trenches PVC ducts , Backfilling, Excavations, of Power Cable | 2027-04-08 → 2027-04-15 (+7d) | 2027-04-13 → 2027-04-20 (+7d) |  | -89d → -95d |
| CO-TE-CTV-110 | Installation of Network Cable Cat.6A from Network switch to CCTV Camera and ACS Device | 2027-04-14 → 2027-04-21 (+7d) | 2027-04-19 → 2027-04-26 (+7d) |  | -89d → -95d |
| CO-TE-CTV-130 | Installation of Access Control System | 2027-04-20 → 2027-04-27 (+7d) | 2027-04-25 → 2027-05-02 (+7d) |  | -89d → -95d |
| RD | **Road Works** | 2027-03-29 → 2027-04-05 (+7d) | 2027-06-01 → 2027-06-08 (+7d) |  |  |
| 3 | **ST+1000:ST+1531** | 2027-03-29 → 2027-04-05 (+7d) | 2027-04-29 → 2027-05-06 (+7d) |  |  |
| RD | **Pre-Bituminous Construction** | 2027-03-29 → 2027-04-05 (+7d) | 2027-04-29 → 2027-05-06 (+7d) |  |  |
| CO-RD-PB-140 | Subgrade Layer for Road Works | 2027-03-29 → 2027-04-05 (+7d) | 2027-04-13 → 2027-04-20 (+7d) |  | -89.5d → -95.5d |
| CO-RD-PB-150 | Aggregate Base Course Layer for Road Works | 2027-04-13 → 2027-04-20 (+7d) | 2027-04-29 → 2027-05-06 (+7d) |  | -89.5d → -95.5d |
| 2 | **ST+500:ST+1000** | 2027-04-14 → 2027-04-21 (+7d) | 2027-05-12 → 2027-05-25 (+13d) |  |  |
| RD | **Pre-Bituminous Construction** | 2027-04-14 → 2027-04-21 (+7d) | 2027-05-12 → 2027-05-25 (+13d) |  |  |
| CO-RD-PB-120 | Subgrade Layer for Road Works | 2027-04-14 → 2027-04-21 (+7d) | 2027-04-26 → 2027-05-03 (+7d) |  | -88.8d → -94.8d |
| CO-RD-PB-130 | Aggregate Base Course Layer for Road Works | 2027-04-29 → 2027-05-06 (+7d) | 2027-05-12 → 2027-05-25 (+13d) |  | -89.5d → -95.5d |
| 1 | **ST+01:ST+500** | 2027-04-26 → 2027-05-03 (+7d) | 2027-06-01 → 2027-06-08 (+7d) |  |  |
| RD | **Pre-Bituminous Construction** | 2027-04-26 → 2027-05-03 (+7d) | 2027-06-01 → 2027-06-08 (+7d) |  |  |
| CO-RD-PB-100 | Subgrade Layer for Road Works | 2027-04-26 → 2027-05-03 (+7d) | 2027-05-10 → 2027-05-23 (+13d) |  | -88.8d → -94.8d |
| CO-RD-PB-110 | Aggregate Base Course Layer for Road Works | 2027-05-12 → 2027-05-25 (+13d) | 2027-06-01 → 2027-06-08 (+7d) |  | -89.5d → -95.5d |
| 3 | **Finishes for Infrastructure Networks** | 2026-12-01 → 2026-12-08 (+7d) | 2027-06-13 → 2027-06-20 (+7d) |  |  |
| 11 | **Storm Drainage Network** | 2027-01-04 → 2027-01-06 (+2d) | 2027-05-02 → 2027-05-08 (+6d) |  |  |
| TF | **Testing and Finishes** | 2027-01-04 → 2027-01-06 (+2d) | 2027-05-02 → 2027-05-08 (+6d) |  |  |
| CO-SD-ML-TF-100 | Testing Work for Pipes of Storm Drainage Network | 2027-01-04 → 2027-01-06 (+2d) | 2027-01-14 → 2027-01-17 (+3d) |  | -52.5d → -44d |
| CO-SD-CB-TF-130 | Catch Basin Internal Finishes (Benching ) for Storm Drainage Network | 2027-01-16 → 2027-01-18 (+2d) | 2027-01-26 → 2027-01-28 (+2d) |  | -52.5d → -44d |
| CO-SD-CB-TF-160 | Testing Works for Catch Basins of Storm Drainage Network | 2027-01-27 → 2027-01-30 (+3d) | 2027-02-07 → 2027-02-10 (+3d) |  | -52.5d → -44d |
| CO-SD-CB-TF-110 | Install Catch Basin Cover Works for External Finishes of Storm Drainage Network | 2027-02-08 → 2027-02-10 (+2d) | 2027-02-22 → 2027-02-25 (+3d) |  | -52.5d → -44d |

| ID | Task | Start | Finish | Total float |
| --- | --- | --- | --- | --- |
| CO-SD-MH-TF-120 | Main Manhole Internal Finishes (Benching ) for Storm Drainage Network | 2027-02-23 → 2027-02-25 (+2d) | 2027-03-13 → 2027-03-15 (+2d) | -52.5d → -44d |
| CO-SD-MH-TF-210 | Testing Works for Manholes of Storm Drainage Network | 2027-04-26 → 2027-05-01 (+5d) | 2027-05-02 → 2027-05-08 (+6d) | -89.5d → -83.75d |
| 10 | **Sewage Network** | 2026-12-01 → 2026-12-08 (+7d) | 2027-02-04 → 2027-02-14 (+10d) |  |
| TF | **Testing and Finishes** | 2026-12-01 → 2026-12-08 (+7d) | 2027-02-04 → 2027-02-14 (+10d) |  |
| CO-SW-TF-100 | Final Testing For Main Line of Sewage Network | 2026-12-01 → 2026-12-08 (+7d) | 2026-12-10 → 2026-12-17 (+7d) | -35.5d → -41.5d |
| CO-SW-TF-130 | Main Manhole Internal Finishes (Benching + Insulation) of Sewage Network | 2026-12-12 → 2026-12-19 (+7d) | 2027-01-04 → 2027-01-11 (+7d) | 0.5d → -3d |
| CO-SW-TF-110 | Install Manhole Cover Works for External Finishes of Sewage Network | 2027-01-24 → 2027-01-31 (+7d) | 2027-02-03 → 2027-02-11 (+8d) | -15.5d → -19d |
| CO-SW-TF-210 | Testing Works for Main Line Manholes of Sewage Network | 2027-02-01 → 2027-02-08 (+7d) | 2027-02-04 → 2027-02-14 (+10d) | -15.5d → -19d |
| 9 | **Potable Water Network** |  | 2027-05-10 → 2027-05-23 (+13d) |  |
| TF | **Testing and Finishes** |  | 2027-05-10 → 2027-05-23 (+13d) |  |
| CO-PW-TF-100 | Final Finishes works and Covers for Valves and Valve Chambers of Potable Water Network | 2027-04-29 → 2027-05-06 (+7d) | 2027-05-10 → 2027-05-23 (+13d) | -78d → -84d |
| 13 | **Irrigation Network** | 2027-04-08 → 2027-04-13 (+5d) | 2027-04-21 → 2027-04-27 (+6d) |  |
| TF | **Testing and Finishes** | 2027-04-08 → 2027-04-13 (+5d) | 2027-04-21 → 2027-04-27 (+6d) |  |
| CO-IR-TF-160 | Final Testing (pressure tests) of Irrigation Network | 2027-04-08 → 2027-04-13 (+5d) | 2027-04-21 → 2027-04-27 (+6d) | -75.5d → -80.25d |
| 1 | **Treated Sewage Effluent (Tse)** | 2027-04-22 → 2027-04-27 (+5d) | 2027-05-05 → 2027-05-11 (+6d) |  |
| TF | **Testing and Finishes** | 2027-04-22 → 2027-04-27 (+5d) | 2027-05-05 → 2027-05-11 (+6d) |  |
| CO-TSE-TF-170 | Final Testing (pressure tests) of Treated Sewage Effluent (Tse) | 2027-04-22 → 2027-04-27 (+5d) | 2027-05-05 → 2027-05-11 (+6d) | -75.5d → -80.25d |
| 14 | **Medium Voltage Network** | 2027-04-21 → 2027-04-27 (+6d) | 2027-05-12 → 2027-05-24 (+12d) |  |
| TT | **Termination and Testing Works** | 2027-04-21 → 2027-04-27 (+6d) | 2027-05-12 → 2027-05-24 (+12d) |  |
| CO-MV-TF-220 | Termination Works of Medium Voltage Network | 2027-04-21 → 2027-04-27 (+6d) | 2027-05-12 → 2027-05-24 (+12d) | -92.75d → -97.25d |
| 12 | **Street Lighting Network** | 2027-05-05 → 2027-05-12 (+7d) | 2027-05-26 → 2027-06-02 (+7d) |  |
| TR | **Termination and Testing Works** | 2027-05-05 → 2027-05-12 (+7d) | 2027-05-26 → 2027-06-02 (+7d) |  |
| CO-SL-LP-330 | Installation Works for Lighting Fixtures With Drop Wire of Street Lighting Network | 2027-05-05 → 2027-05-12 (+7d) | 2027-05-12 → 2027-05-25 (+13d) | -88d → -94d |
| CO-SL-TF-200 | Testing Works for Lighting Poles of Street Lighting Network | 2027-05-13 → 2027-05-26 (+13d) | 2027-05-24 → 2027-05-31 (+7d) | -80d → -86d |
| CO-SL-TF-220 | Termination Works For Lighting Poles Cables of Street Lighting Network | 2027-05-13 → 2027-05-26 (+13d) | 2027-05-26 → 2027-06-02 (+7d) | -82d → -88d |
| CO-SL-TF-230 | Termination Works For Panel Board Cables of Street Lighting Network | 2027-05-13 → 2027-05-26 (+13d) | 2027-05-26 → 2027-06-02 (+7d) | -82d → -88d |
| CO-SL-TF-380 | Testing Works For Panel Board Cables of Street Lighting Network | 2027-05-13 → 2027-05-26 (+13d) | 2027-05-20 → 2027-05-27 (+7d) | -77d → -83d |
| ES | **Earthing System Works** | 2027-05-05 → 2027-05-12 (+7d) | 2027-05-12 → 2027-05-25 (+13d) |  |
| CO-SL-ES-220 | Install Earthing System Works for Lighting Poles of Street Lighting Network | 2027-05-05 → 2027-05-12 (+7d) | 2027-05-12 → 2027-05-25 (+13d) | -88d → -94d |
| CO-SL-ES-230 | Install Earthing System Works for Lighting Panel Boards of Street Lighting Network | 2027-05-05 → 2027-05-12 (+7d) | 2027-05-12 → 2027-05-25 (+13d) | -88d → -94d |
| 3 | **Telecom Network** | 2027-04-26 → 2027-05-03 (+7d) | 2027-05-27 → 2027-06-02 (+6d) |  |
| 1 | **Testing and Finishes** | 2027-04-26 → 2027-05-03 (+7d) | 2027-05-27 → 2027-06-02 (+6d) |  |
| CO-TE-CTV-TF-110 | Smart Card Printer | 2027-04-26 → 2027-05-03 (+7d) | 2027-04-29 → 2027-05-06 (+7d) | -89d → -95d |
| CO-TE-CTV-TF-120 | Card Issue Work Station | 2027-05-01 → 2027-05-08 (+7d) | 2027-05-04 → 2027-05-11 (+7d) | -89d → -95d |
| CO-TE-CTV-TF-130 | Photographic Camera with stand | 2027-05-05 → 2027-05-12 (+7d) | 2027-05-09 → 2027-05-22 (+13d) | -89d → -95d |
| CO-TE-CTV-TF-140 | Interface modules with CCTV, Fire and other systems | 2027-05-23 → 2027-05-29 (+6d) | 2027-05-27 → 2027-06-02 (+6d) | -95.5d → -100.25d |
| 2 | **Road Works** | 2027-04-13 → 2027-04-20 (+7d) | 2027-06-13 → 2027-06-20 (+7d) |  |
| 3 | **ST+1000:ST+1531** | 2027-04-13 → 2027-04-20 (+7d) | 2027-06-07 → 2027-06-14 (+7d) |  |
| 1 | **Bituminous Construction** | 2027-04-29 → 2027-05-06 (+7d) | 2027-05-22 → 2027-05-29 (+7d) |  |
| CO-RD-B-150 | Application of Prime Coat Layer for Road Works | 2027-04-29 → 2027-05-06 (+7d) | 2027-05-08 → 2027-05-20 (+12d) | -88.5d → -94.5d |
| CO-RD-B-160 | Bituminous Base Courses Layers for Road Works- | 2027-05-08 → 2027-05-20 (+12d) | 2027-05-22 → 2027-05-29 (+7d) | -88.5d → -94.5d |
| LS | **Pavement Works** | 2027-04-13 → 2027-04-20 (+7d) | 2027-05-10 → 2027-05-23 (+13d) |  |
| CO-RD-PV-160 | Fixing of Curbstone for Sidewalks Pavement | 2027-04-13 → 2027-04-20 (+7d) | 2027-04-27 → 2027-05-04 (+7d) | -88.7d → -94.7d |
| CO-RD-PV-170 | Fixing of Interlock Tiles for Sidewalks Pavement | 2027-04-27 → 2027-05-04 (+7d) | 2027-05-10 → 2027-05-23 (+13d) | -88.7d → -94.7d |
| TS | **Traffic Signs Boards and Roads Marking** | 2027-05-22 → 2027-05-29 (+7d) | 2027-06-07 → 2027-06-14 (+7d) |  |
| CO-RD-F-RM-180 | Application of Road Marking Works For Road Works | 2027-05-22 → 2027-05-29 (+7d) | 2027-05-30 → 2027-06-06 (+7d) | -85.5d → -91.5d |
| CO-RD-F-TS-120 | Installation Works of Traffic Signs Boards For Road Works | 2027-05-30 → 2027-06-06 (+7d) | 2027-06-07 → 2027-06-14 (+7d) | -85.5d → -91.5d |
| 1 | **ST+500:ST+1000** | 2027-04-27 → 2027-05-04 (+7d) | 2027-06-12 → 2027-06-19 (+7d) |  |
| 1 | **Bituminous Construction** | 2027-05-22 → 2027-05-29 (+7d) | 2027-05-31 → 2027-06-07 (+7d) |  |
| CO-RD-B-130 | Application of Prime Coat Layer for Road Works | 2027-05-22 → 2027-05-29 (+7d) | 2027-05-26 → 2027-06-02 (+7d) | -88.5d → -94.5d |
| CO-RD-B-140 | Bituminous Base Courses Layers for Road Works- | 2027-05-26 → 2027-06-02 (+7d) | 2027-05-31 → 2027-06-07 (+7d) | -88.5d → -94.5d |
| LS | **Pavement Works** | 2027-04-27 → 2027-05-04 (+7d) | 2027-05-29 → 2027-06-05 (+7d) |  |
| CO-RD-PV-140 | Fixing of Curbstone for Sidewalks Pavement | 2027-04-27 → 2027-05-04 (+7d) | 2027-05-10 → 2027-05-23 (+13d) | -88.7d → -94.7d |
| CO-RD-PV-150 | Fixing of Interlock Tiles for Sidewalks Pavement | 2027-05-10 → 2027-05-23 (+13d) | 2027-05-29 → 2027-06-05 (+7d) | -88.7d → -94.7d |
| TS | **Traffic Signs Boards and Roads Marking** | 2027-06-01 → 2027-06-08 (+7d) | 2027-06-12 → 2027-06-19 (+7d) |  |
| CO-RD-F-RM-170 | Application of Road Marking Works For Road Works | 2027-06-01 → 2027-06-08 (+7d) | 2027-06-07 → 2027-06-14 (+7d) | -89.5d → -95.5d |
| CO-RD-F-TS-110 | Installation Works of Traffic Signs Boards For Road Works | 2027-06-07 → 2027-06-14 (+7d) | 2027-06-12 → 2027-06-19 (+7d) | -89.5d → -95.5d |
| 2 | **ST+01:ST+500** | 2027-05-10 → 2027-05-23 (+13d) | 2027-06-13 → 2027-06-20 (+7d) |  |
| 1 | **Bituminous Construction** | 2027-06-01 → 2027-06-08 (+7d) | 2027-06-12 → 2027-06-19 (+7d) |  |
| CO-RD-B-110 | Application of Prime Coat Layer for Road Works | 2027-06-01 → 2027-06-08 (+7d) | 2027-06-07 → 2027-06-14 (+7d) | -89.5d → -95.5d |
| CO-RD-B-120 | Bituminous Base Courses Layers for Road Works- | 2027-06-07 → 2027-06-14 (+7d) | 2027-06-12 → 2027-06-19 (+7d) | -89.5d → -95.5d |
| LS | **Pavement Works** | 2027-05-10 → 2027-05-23 (+13d) | 2027-06-10 → 2027-06-17 (+7d) |  |
| CO-RD-PV-120 | Fixing of Curbstone for Sidewalks Pavement | 2027-05-10 → 2027-05-23 (+13d) | 2027-05-29 → 2027-06-05 (+7d) | -88.8d → -94.8d |
| CO-RD-PV-130 | Fixing of Interlock Tiles for Sidewalks Pavement | 2027-05-29 → 2027-06-05 (+7d) | 2027-06-10 → 2027-06-17 (+7d) | -88.8d → -94.8d |
| TS | **Traffic Signs Boards and Roads Marking** | 2027-06-12 → 2027-06-19 (+7d) | 2027-06-13 → 2027-06-20 (+7d) |  |
| CO-RD-F-RM-160 | Application of Road Marking Works For Road Works | 2027-06-12 → 2027-06-19 (+7d) | 2027-06-13 → 2027-06-20 (+7d) | -86.5d → -92.5d |
| CO-RD-F-TS-100 | Installation Works of Traffic Signs Boards For Road Works | 2027-06-12 → 2027-06-19 (+7d) | 2027-06-13 → 2027-06-20 (+7d) | -86.5d → -92.5d |
| GEN | **Superstructure Work** |  | 2027-06-02 → 2027-06-08 (+6d) |  |
| 4 | **Utility Buildings** |  | 2027-06-02 → 2027-06-08 (+6d) |  |
| 4 | **Pump Station** |  | 2027-06-02 → 2027-06-08 (+6d) |  |

| ID | Task | Start | Finish | Complete | Total float | Predecessors |
| --- | --- | --- | --- | --- | --- | --- |
| 2 | **Architectural work** | 2026-11-17 → 2026-11-24 (+7d) | 2026-12-27 → 2027-01-03 (+7d) |  |  |  |
| CO-UB-PS-260 | Executing Masonry Works for Pump station building | 2026-11-17 → 2026-11-24 (+7d) | 2026-11-22 → 2026-11-29 (+7d) |  | 14d → 8d |  |
| CO-UB-PS-270 | Executing Plastering Works for Pump station building | 2026-11-23 → 2026-11-30 (+7d) | 2026-11-28 → 2026-12-05 (+7d) |  | 14d → 8d |  |
| CO-UB-PS-280 | Executing Painting Works for Pump station building | 2026-11-29 → 2026-12-06 (+7d) | 2026-12-03 → 2026-12-10 (+7d) |  | 14d → 8d |  |
| CO-UB-PS-320 | Doors and windows Fixing &Stair Tiles | 2026-12-20 → 2026-12-27 (+7d) | 2026-12-27 → 2027-01-03 (+7d) |  | 18d → 12d |  |
| 3 | **Electrical work** | 2026-12-05 → 2026-12-12 (+7d) | 2027-05-27 → 2027-06-02 (+6d) |  |  |  |
| CO-UB-PS-290 | Lighting system for pump house | 2026-12-05 → 2026-12-12 (+7d) | 2026-12-09 → 2026-12-16 (+7d) |  | 14d → 8d |  |
| CO-UB-PS-300 | Wiring connection for pump house | 2026-12-10 → 2026-12-17 (+7d) | 2026-12-15 → 2026-12-22 (+7d) |  | 14d → 8d |  |
| CO-UB-PS-310 | Sockets and switches for pump house | 2026-12-16 → 2026-12-23 (+7d) | 2026-12-19 → 2026-12-26 (+7d) |  | 14d → 8d |  |
| CO-UB-PS-330 | Installation for Distribution boards for pump house | 2026-12-20 → 2026-12-27 (+7d) | 2026-12-28 → 2027-01-04 (+7d) |  | 14d → 8d |  |
| CO-UB-PS-370 | Executing Earthing and bonding for the entire system | 2027-05-12 → 2027-05-24 (+12d) | 2027-05-27 → 2027-06-02 (+6d) |  | -92.75d → -97.25d |  |
| 4 | **Mechanical work** | 2026-12-20 → 2026-12-27 (+7d) | 2027-06-02 → 2027-06-08 (+6d) |  |  |  |
| CO-UB-PS-340 | Executing HVAC System for Pump station building | 2026-12-20 → 2026-12-27 (+7d) | 2027-01-04 → 2027-01-11 (+7d) |  | 16d → 10d |  |
| CO-UB-PS-350 | Executing Fire Alarm System for Pump station building | 2026-12-20 → 2026-12-27 (+7d) | 2026-12-24 → 2026-12-31 (+7d) |  | 15d → 9d |  |
| CO-UB-PS-360 | Executing Fire fighting institution works(piping and wire installation) for Pump station building | 2026-12-26 → 2027-01-02 (+7d) | 2026-12-30 → 2027-01-06 (+7d) |  | 15d → 9d |  |
| CO-UB-PS-380 | Executing Fire fighting finishing works for Pump station building | 2026-12-31 → 2027-01-07 (+7d) | 2027-01-05 → 2027-01-12 (+7d) |  | 15d → 9d |  |
| CO-UB-PS-390 | Installation of pumps | 2027-05-27 → 2027-06-02 (+6d) | 2027-06-02 → 2027-06-08 (+6d) |  | -92.75d → -97.25d |  |
| 3 | **Lift Station** |  | 2027-02-04 → 2027-02-13 (+9d) |  |  |  |
| 1 | **Civil work** |  | 2026-12-12 → 2026-12-19 (+7d) |  |  |  |
| 2 | **Super structure** |  | 2026-12-12 → 2026-12-19 (+7d) |  |  |  |
| CO-UB-LS-290 | Formwork for Wall and columns for Lift Station |  | 2026-11-19 → 2026-11-26 (+7d) |  | -5.25d → -11.25d |  |
| CO-UB-LS-300 | Steel fixing for Wall columns |  | 2026-11-19 → 2026-11-26 (+7d) |  | -5.25d → -11.25d |  |
| CO-UB-LS-310 | pouring for Wall columns |  | 2026-11-19 → 2026-11-26 (+7d) |  | -5.25d → -11.25d |  |
| CO-UB-LS-330 | Waterproofing for Walls columns |  | 2026-11-24 → 2026-12-01 (+7d) |  | -5.25d → -11.25d |  |
| CO-UB-LS-320 | curing and deshuttering formwork for Wall columns |  | 2026-11-22 → 2026-11-29 (+7d) |  | -5.25d → -11.25d |  |
| CO-UB-LS-340 | Formwork for pump roof | 2026-11-24 → 2026-12-01 (+7d) | 2026-11-30 → 2026-12-07 (+7d) |  | -5.25d → -11.25d |  |
| CO-UB-LS-350 | Steel fixing for pump roof | 2026-11-30 → 2026-12-07 (+7d) | 2026-12-07 → 2026-12-14 (+7d) |  | -5.25d → -11.25d |  |
| CO-UB-LS-360 | pouring for pump roof | 2026-12-07 → 2026-12-14 (+7d) | 2026-12-08 → 2026-12-15 (+7d) |  | -5.25d → -11.25d |  |
| CO-UB-LS-370 | curing and deshuttering formwork for pump roof | 2026-12-08 → 2026-12-15 (+7d) | 2026-12-12 → 2026-12-19 (+7d) |  | -5.25d → -11.25d |  |
| 2 | **Architectural work** | 2026-12-12 → 2026-12-19 (+7d) | 2026-12-29 → 2027-01-05 (+7d) |  |  |  |
| CO-UB-LS-380 | Executing Masonry Works for Pump station building | 2026-12-12 → 2026-12-19 (+7d) | 2026-12-20 → 2026-12-27 (+7d) |  | -5.25d → -11.25d |  |
| CO-UB-LS-390 | Executing Plastering Works for Pump station building | 2026-12-20 → 2026-12-27 (+7d) | 2026-12-29 → 2027-01-05 (+7d) |  | -5.25d → -11.25d |  |
| 3 | **Electrical work** | 2026-12-29 → 2027-01-05 (+7d) | 2027-02-04 → 2027-02-13 (+9d) |  |  |  |
| CO-UB-LS-400 | Lighting system for pump house | 2026-12-29 → 2027-01-05 (+7d) | 2027-01-07 → 2027-01-14 (+7d) |  | -5.25d → -11.25d |  |
| CO-UB-LS-420 | Wiring connection for pump house | 2027-01-07 → 2027-01-14 (+7d) | 2027-01-14 → 2027-01-21 (+7d) |  | -5.25d → -11.25d |  |
| CO-UB-LS-440 | Sockets and switches for pump house | 2027-01-14 → 2027-01-21 (+7d) | 2027-01-21 → 2027-01-28 (+7d) |  | -5.25d → -11.25d |  |
| CO-UB-LS-460 | Installation for Distribution boards for pump house | 2027-01-21 → 2027-01-28 (+7d) | 2027-01-28 → 2027-02-04 (+7d) |  | -5.25d → -11.25d |  |
| CO-UB-LS-480 | Executing Earthing and bonding for the entire system | 2027-01-28 → 2027-02-04 (+7d) | 2027-02-04 → 2027-02-13 (+9d) |  | -5.25d → -11.25d |  |
| 4 | **Mechanical work** | 2026-12-29 → 2027-01-05 (+7d) | 2027-02-02 → 2027-02-09 (+7d) |  |  |  |
| CO-UB-LS-410 | Internal pipe installation | 2026-12-29 → 2027-01-05 (+7d) | 2027-01-07 → 2027-01-14 (+7d) |  | -3.25d → -9.25d |  |
| CO-UB-LS-430 | Guide rails & lifting chains installation | 2027-01-07 → 2027-01-14 (+7d) | 2027-01-16 → 2027-01-23 (+7d) |  | -3.25d → -9.25d |  |
| CO-UB-LS-450 | ExeValve installation | 2027-01-16 → 2027-01-23 (+7d) | 2027-01-24 → 2027-01-31 (+7d) |  | -3.25d → -9.25d |  |
| CO-UB-LS-470 | Installation of pumps | 2027-01-24 → 2027-01-31 (+7d) | 2027-02-02 → 2027-02-09 (+7d) |  | -3.25d → -9.25d |  |
| 5 | **Potable Water Tank** |  | 2027-01-14 → 2027-01-16 (+2d) |  |  |  |
| 2 | **Structural Work** |  | 2026-11-30 → 2026-12-01 (+1d) |  |  |  |
| CO-UB-PWT-130 | Form work for Tank Foundation | 2026-11-17 → 2026-11-18 A (+1d) | 2026-11-22 → 2026-11-29 (+7d) | 0% → 80% | 10d → 9d |  |
| CO-UB-PWT-140 | Steel Reinforcement work for Tank Foundation | 2026-11-23 → 2026-11-18 A (-5d) | 2026-11-29 → 2026-11-30 (+1d) | 0% → 80% | 10d → 9d | CO-UB-PWT-130 → CO-UB-PWT-130 SS |
| CO-UB-PWT-150 | Casting concrete for Tank Foundation | 2026-11-30 → 2026-12-01 (+1d) | 2026-11-30 → 2026-12-01 (+1d) |  | 10d → 9d |  |
| 3 | **Tank Shell Erection&Roof Installation** | 2026-12-01 → 2026-12-02 (+1d) | 2026-12-26 → 2026-12-27 (+1d) |  |  |  |
| CO-UB-PWT-160 | Bottom ring installation | 2026-12-01 → 2026-12-02 (+1d) | 2026-12-07 → 2026-12-08 (+1d) |  | 10d → 9d |  |
| CO-UB-PWT-170 | shell erection | 2026-12-08 → 2026-12-09 (+1d) | 2026-12-16 → 2026-12-17 (+1d) |  | 10d → 9d |  |
| CO-UB-PWT-180 | Aluminum dome / steel roof installation | 2026-12-17 → 2026-12-19 (+2d) | 2026-12-26 → 2026-12-27 (+1d) |  | 10d → 9d |  |
| 4 | **Mechanical Work&Accessories** | 2026-12-27 → 2026-12-28 (+1d) | 2027-01-14 → 2027-01-16 (+2d) |  |  |  |
| CO-UB-PWT-190 | Inlet / outlet piping connections | 2026-12-27 → 2026-12-28 (+1d) | 2027-01-02 → 2027-01-03 (+1d) |  | 10d → 9d |  |
| CO-UB-PWT-200 | installation Valves | 2027-01-03 → 2027-01-04 (+1d) | 2027-01-09 → 2027-01-10 (+1d) |  | 10d → 9d |  |
| CO-UB-PWT-210 | Ladders, platforms & handrails | 2027-01-10 → 2027-01-11 (+1d) | 2027-01-14 → 2027-01-16 (+2d) |  | 10d → 9d |  |
| CO-UB-IRT-170 | Form work for Tank Foundation | 2026-11-17 → 2026-11-18 A (+1d) | 2026-11-23 → 2026-11-30 (+7d) | 0% → 80% |  |  |
| CO-UB-IRT-180 | Steel Reinforcement work for Tank Foundation | 2026-11-24 → 2026-11-18 A (-6d) |  | 0% → 60% |  | CO-UB-IRT-170 → CO-UB-IRT-170 SS |
| 1 | **Control Room** |  | 2027-02-01 → 2027-02-09 (+8d) |  |  |  |
| 5 | **Civil Work** |  | 2026-11-17 → 2026-11-18 (+1d) |  |  |  |
| CO-UB-CR-140 | Pouring Beams and Slab For Control Room |  | 2026-11-17 → 2026-11-18 A (+1d) | 85% → 100% | 15d → none |  |
| 6 | **Finishing Work** | 2026-11-17 → 2026-11-24 (+7d) | 2027-02-01 → 2027-02-09 (+8d) |  |  |  |
| 1 | **Architictural work** | 2026-11-17 → 2026-11-24 (+7d) | 2027-01-02 → 2027-01-09 (+7d) |  |  |  |
| CO-UB-CR-150 | Brick Work For Control Room | 2026-11-17 → 2026-11-24 (+7d) | 2026-11-26 → 2026-12-03 (+7d) |  | 15d → 9d |  |
| CO-UB-CR-160 | Thermal & Moisture Protection Work for Control Room | 2026-11-28 → 2026-12-05 (+7d) | 2026-12-05 → 2026-12-12 (+7d) |  | 15d → 9d |  |
| CO-UB-CR-200 | Install For Curtian Wall and Windows and Doors | 2026-12-06 → 2026-12-13 (+7d) | 2026-12-14 → 2026-12-21 (+7d) |  | 15d → 9d |  |
| CO-UB-CR-240 | External Finshing Work (Walls and Floor) | 2026-12-15 → 2026-12-22 (+7d) | 2026-12-23 → 2026-12-30 (+7d) |  | 15d → 9d |  |
| CO-UB-CR-250 | Internal Finshing Work (Walls,Floor and Ceiling) | 2026-12-24 → 2026-12-31 (+7d) | 2027-01-02 → 2027-01-09 (+7d) |  | 15d → 9d |  |
| 3 | **Mechanical Work** | 2026-11-28 → 2026-12-05 (+7d) | 2027-01-13 → 2027-01-20 (+7d) |  |  |  |
| 3 | **HVAC System** | 2026-11-28 → 2026-12-05 (+7d) | 2027-01-13 → 2027-01-20 (+7d) |  |  |  |

| ID | Task | Start | Finish | Total float |
| --- | --- | --- | --- | --- |
| CO-UB-CR-170 | Install of Refrigerant Piping ( fabricated metal ducts with flanges complete with supports, vanes, dampers ) | 2026-11-28 → 2026-12-05 (+7d) | 2026-12-01 → 2026-12-08 (+7d) | 28d → 22d |
| CO-UB-CR-260 | Install of Mini split actual capacity 2 Ton and Ducted split actual capacity 4 Ton | 2027-01-03 → 2027-01-10 (+7d) | 2027-01-10 → 2027-01-17 (+7d) | 26d → 20d |
| CO-UB-CR-310 | Install of Air Grills 150mm x150mm and Air Diffuser 600mm x 600mm | 2027-01-11 → 2027-01-18 (+7d) | 2027-01-13 → 2027-01-20 (+7d) | 26d → 20d |
| 4 | **Fire Fitting System** | 2026-12-02 → 2026-12-09 (+7d) | 2027-01-05 → 2027-01-12 (+7d) |  |
| CO-UB-CR-180 | Installation & Testing of 2 hours Fire rated system for closing the openings between rooms with help of Rock wool | 2026-12-02 → 2026-12-09 (+7d) | 2026-12-06 → 2026-12-13 (+7d) | 28d → 22d |
| CO-UB-CR-270 | Install Fire Extinguishers | 2027-01-03 → 2027-01-10 (+7d) | 2027-01-05 → 2027-01-12 (+7d) | 33d → 27d |
| 4 | **Electrical Work** | 2026-12-07 → 2026-12-14 (+7d) | 2027-01-26 → 2027-02-02 (+7d) |  |
| 1 | **LV Power** | 2027-01-03 → 2027-01-10 (+7d) | 2027-01-19 → 2027-01-26 (+7d) |  |
| CO-UB-CR-190 | Install of Distribution board For Control Room | 2027-01-03 → 2027-01-10 (+7d) | 2027-01-07 → 2027-01-14 (+7d) | 21d → 15d |
| CO-UB-CR-220 | Install of Earting Cable for Control Room | 2027-01-09 → 2027-01-16 (+7d) | 2027-01-13 → 2027-01-20 (+7d) | 21d → 15d |
| CO-UB-CR-280 | Install of Socket outlet and LED Lighting | 2027-01-14 → 2027-01-21 (+7d) | 2027-01-19 → 2027-01-26 (+7d) | 21d → 15d |
| 3 | **Fire Detection And Alarm System** | 2026-12-07 → 2026-12-14 (+7d) | 2027-01-26 → 2027-02-02 (+7d) |  |
| CO-UB-CR-210 | Install of 2C x 1.5 Sqm FR Rated Armored - Cable For Loop Wiring | 2026-12-07 → 2026-12-14 (+7d) | 2026-12-12 → 2026-12-19 (+7d) | 28d → 22d |
| CO-UB-CR-230 | Install of Transmission Communication cable - Fiber Optics 12Core | 2026-12-13 → 2026-12-20 (+7d) | 2026-12-17 → 2026-12-24 (+7d) | 28d → 22d |
| CO-UB-CR-290 | Install of power supply system for fire alarm control panel | 2027-01-03 → 2027-01-10 (+7d) | 2027-01-07 → 2027-01-14 (+7d) | 15d → 9d |
| CO-UB-CR-300 | Install of Fire Alarm Control panel | 2027-01-09 → 2027-01-16 (+7d) | 2027-01-14 → 2027-01-21 (+7d) | 15d → 9d |
| CO-UB-CR-320 | Installation of the addressable manual call point with operation safety glass breaking | 2027-01-16 → 2027-01-23 (+7d) | 2027-01-18 → 2027-01-25 (+7d) | 15d → 9d |
| CO-UB-CR-330 | Install of the photoelectric heat & smoke detector | 2027-01-19 → 2027-01-26 (+7d) | 2027-01-21 → 2027-01-28 (+7d) | 15d → 9d |
| CO-UB-CR-340 | Install of Sounder With Beacon | 2027-01-19 → 2027-01-26 (+7d) | 2027-01-21 → 2027-01-28 (+7d) | 15d → 9d |
| CO-UB-CR-350 | Install of Addressable Control module | 2027-01-23 → 2027-01-30 (+7d) | 2027-01-26 → 2027-02-02 (+7d) | 15d → 9d |
| 2 | **Furnitures work** | 2027-01-27 → 2027-02-03 (+7d) | 2027-02-01 → 2027-02-09 (+8d) |  |
| CO-UB-CR-360 | Office Chairs,Tables and Stand | 2027-01-27 → 2027-02-03 (+7d) | 2027-02-01 → 2027-02-09 (+8d) | 15d → 9d |
| ML | **Softscape and Planting Works** | 2027-03-22 → 2027-03-27 (+5d) | 2027-05-05 → 2027-05-11 (+6d) |  |
| 1 | **Planting Beds Preparation** | 2027-03-22 → 2027-03-27 (+5d) | 2027-04-14 → 2027-04-20 (+6d) |  |
| CO-LS-PL-100 | Excavation of planting beds | 2027-03-22 → 2027-03-27 (+5d) | 2027-03-29 → 2027-04-04 (+6d) | -92.5d → -86.75d |
| CO-LS-PL-110 | Supply & placement of suitable topsoil | 2027-03-30 → 2027-04-04 (+5d) | 2027-04-06 → 2027-04-12 (+6d) | -92.5d → -86.75d |
| CO-LS-PL-120 | Soil improvement (fertilizer, compost, additives) | 2027-04-07 → 2027-04-12 (+5d) | 2027-04-14 → 2027-04-20 (+6d) | -92.5d → -86.75d |
| 2 | **Supports & Protection** | 2027-04-15 → 2027-04-20 (+5d) | 2027-04-21 → 2027-04-27 (+6d) |  |
| CO-LS-PL-130 | installation of plant supports / stakes | 2027-04-15 → 2027-04-20 (+5d) | 2027-04-18 → 2027-04-24 (+6d) | -92.5d → -86.75d |
| CO-LS-PL-140 | Ties and protection materials | 2027-04-19 → 2027-04-24 (+5d) | 2027-04-21 → 2027-04-27 (+6d) | -92.5d → -86.75d |
| 3 | **Plant Supply** | 2027-04-22 → 2027-04-27 (+5d) | 2027-04-25 → 2027-05-01 (+6d) |  |
| CO-LS-PL-150 | installation of trees | 2027-04-22 → 2027-04-27 (+5d) | 2027-04-25 → 2027-05-01 (+6d) | -92.5d → -86.75d |
| 4 | **Site Furnishings** | 2027-04-26 → 2027-05-01 (+5d) | 2027-05-05 → 2027-05-11 (+6d) |  |
| CO-LS-PL-160 | installation of Seating benches | 2027-04-26 → 2027-05-01 (+5d) | 2027-04-28 → 2027-05-04 (+6d) | -92.5d → -86.75d |
| CO-LS-PL-170 | tone boulders placement & fixing Works | 2027-04-29 → 2027-05-04 (+5d) | 2027-05-02 → 2027-05-08 (+6d) | -92.5d → -86.75d |
| CO-LS-PL-180 | Gravel Works | 2027-05-03 → 2027-05-08 (+5d) | 2027-05-05 → 2027-05-11 (+6d) | -92.5d → -86.75d |
| 1 | **Fence and Gaurd Room** |  | 2027-05-03 → 2027-05-10 (+7d) |  |
| 1 | **Gaurd Room Work** |  | 2027-03-23 → 2027-03-30 (+7d) |  |
| 1 | **Civil Work** |  | 2026-12-09 → 2026-12-16 (+7d) |  |
| A1020 | Pouring R.C Footing For Gaurd Room |  | 2026-11-29 → 2026-12-06 (+7d) | -19.5d → -25.5d |
| A1030 | Pouring R.C Columns For Gaurd Room |  | 2026-11-29 → 2026-12-06 (+7d) | -19.5d → -25.5d |
| A1040 | Pouring Beams and Slab For Gaurd Room | 2026-11-30 → 2026-12-07 (+7d) | 2026-12-09 → 2026-12-16 (+7d) | -19.5d → -25.5d |
| 2 | **Finishing Work** | 2026-12-10 → 2026-12-17 (+7d) | 2027-03-23 → 2027-03-30 (+7d) |  |
| 1 | **Architictural work** | 2026-12-10 → 2026-12-17 (+7d) | 2027-02-01 → 2027-02-09 (+8d) |  |
| A1050 | Brick Work For Gaurd Room | 2026-12-10 → 2026-12-17 (+7d) | 2026-12-20 → 2026-12-27 (+7d) | -19.5d → -25.5d |
| A1060 | Thermal & Moisture Protection Work for Gaurd Room | 2026-12-21 → 2026-12-28 (+7d) | 2026-12-28 → 2027-01-04 (+7d) | -13.5d → -19.5d |
| A1070 | Install For Curtian Wall and Windows and Doors | 2027-01-05 → 2027-01-12 (+7d) | 2027-01-13 → 2027-01-20 (+7d) | -19.5d → -25.5d |
| A1080 | External Finshing Work (Walls and Floor) | 2027-01-14 → 2027-01-21 (+7d) | 2027-01-23 → 2027-01-30 (+7d) | -19.5d → -25.5d |
| A1090 | Internal Finshing Work (Walls,Floor and Ceiling) | 2027-01-24 → 2027-01-31 (+7d) | 2027-02-01 → 2027-02-09 (+8d) | -19.5d → -25.5d |
| 3 | **Mechanical Work** | 2026-12-21 → 2026-12-28 (+7d) | 2027-02-15 → 2027-02-24 (+9d) |  |
| 1 | **Sanitary Drainage & Plumbing System** | 2026-12-21 → 2026-12-28 (+7d) | 2027-01-04 → 2027-01-11 (+7d) |  |
| A1110 | Install Sanitary Piping System (UPVC) | 2026-12-21 → 2026-12-28 (+7d) | 2026-12-24 → 2026-12-31 (+7d) | -19.5d → -25.5d |
| A1120 | Install Base mounted flush tank water Western water closet system | 2026-12-26 → 2027-01-02 (+7d) | 2026-12-31 → 2027-01-07 (+7d) | -19.5d → -25.5d |
| A1130 | Install 1 meter length 10mm diameter Flexible Hose and Gate Valves and Slow Closing Valve | 2027-01-02 → 2027-01-09 (+7d) | 2027-01-04 → 2027-01-11 (+7d) | -19.5d → -25.5d |
| 2 | **Water Supply System** | 2026-12-21 → 2026-12-28 (+7d) | 2027-02-03 → 2027-02-11 (+8d) |  |
| A1240 | Install GRP water tanks capacity of each 1000 liter | 2026-12-21 → 2026-12-28 (+7d) | 2026-12-23 → 2026-12-30 (+7d) | -18.5d → -24.5d |
| A1140 | Install for Cold Water Pipe complete with joints, angles, reducer etc. | 2026-12-24 → 2026-12-31 (+7d) | 2026-12-29 → 2027-01-05 (+7d) | -18.5d → -24.5d |
| A1150 | Install for Hot Water Pipe complete with joints, angles, reducer etc. | 2026-12-30 → 2027-01-06 (+7d) | 2027-01-03 → 2027-01-10 (+7d) | -18.5d → -24.5d |
| A1160 | Install for Isolation Valve,Spray Head,Roof Drain,Floor Drain,Gully teap,Vend on Roof to exhaust air | 2027-01-04 → 2027-01-11 (+7d) | 2027-01-06 → 2027-01-13 (+7d) | 0.5d → -5.5d |
| A1170 | Install of Inspection chamber, size 800x900x1000 | 2027-01-07 → 2027-01-14 (+7d) | 2027-01-09 → 2027-01-16 (+7d) | 0.5d → -5.5d |
| A1180 | Install OF Electric Water Heater set with connection and Water meter complete with accessories | 2027-02-02 → 2027-02-09 (+7d) | 2027-02-03 → 2027-02-11 (+8d) | -19.5d → -25.5d |
| 3 | **HVAC System** | 2026-12-26 → 2027-01-02 (+7d) | 2027-02-15 → 2027-02-24 (+9d) |  |
| A1200 | Install of Refrigerant Piping ( fabricated metal ducts with flanges complete with supports, vanes, dampers ) | 2026-12-26 → 2027-01-02 (+7d) | 2026-12-29 → 2027-01-05 (+7d) | -0.5d → -6.5d |
| A1190 | Install of Mini split actual capacity 2 Ton and Ducted split actual capacity 4 Ton | 2027-02-02 → 2027-02-09 (+7d) | 2027-02-10 → 2027-02-20 (+10d) | -1d → -7d |
| A1210 | Install of Air Grills 150mm x150mm and Air Diffuser 600mm x 600mm | 2027-02-10 → 2027-02-20 (+10d) | 2027-02-15 → 2027-02-24 (+9d) | -1d → -7d |
| 4 | **Fire Fitting System** | 2026-12-30 → 2027-01-06 (+7d) | 2027-02-09 → 2027-02-18 (+9d) |  |
| A1220 | Installation & Testing of 2 hours Fire rated system for closing the openings between rooms with help of Rock wool | 2026-12-30 → 2027-01-06 (+7d) | 2027-01-05 → 2027-01-12 (+7d) | -0.5d → -6.5d |
| A1230 | Install Fire Extinguishers | 2027-02-02 → 2027-02-09 (+7d) | 2027-02-09 → 2027-02-18 (+9d) | 3d → -3d |
| 4 | **Electrical Work** | 2026-12-30 → 2027-01-06 (+7d) | 2027-03-18 → 2027-03-25 (+7d) |  |
| 1 | **LV Power** | 2026-12-30 → 2027-01-06 (+7d) | 2027-02-07 → 2027-02-16 (+9d) |  |

| ID | Task | Start | Finish | Complete | Total float |
| --- | --- | --- | --- | --- | --- |
| A1250 | Install of Distribution board For Gaurd Room | 2026-12-30 → 2027-01-06 (+7d) | 2027-01-04 → 2027-01-11 (+7d) |  | 1.5d → -4.5d |
| A1270 | Install of Earting Cable for Gaurd Room | 2027-01-05 → 2027-01-12 (+7d) | 2027-01-10 → 2027-01-17 (+7d) |  | 1.5d → -4.5d |
| A1260 | Install of Socket outlet and LED Lighting | 2027-02-02 → 2027-02-09 (+7d) | 2027-02-07 → 2027-02-16 (+9d) |  | 4d → -2d |
| 3 | **Fire Detection And Alarm System** | 2027-01-06 → 2027-01-13 (+7d) | 2027-03-03 → 2027-03-15 (+12d) |  |  |
| A1340 | Install of 2C x 1.5 Sqm FR Rated Armored - Cable For Loop Wiring | 2027-01-06 → 2027-01-13 (+7d) | 2027-01-11 → 2027-01-18 (+7d) |  | -0.5d → -6.5d |
| A1350 | Install of Transmission Communication cable - Fiber Optics 12Core | 2027-01-12 → 2027-01-19 (+7d) | 2027-01-17 → 2027-01-24 (+7d) |  | -0.5d → -6.5d |
| A1360 | Install of power supply system for fire alarm control panel | 2027-02-02 → 2027-02-09 (+7d) | 2027-02-07 → 2027-02-16 (+9d) |  | -13.5d → -19.5d |
| A1280 | Install of Fire Alarm Control panel | 2027-02-08 → 2027-02-17 (+9d) | 2027-02-16 → 2027-02-25 (+9d) |  | -13.5d → -19.5d |
| A1290 | Installation of the addressable manual call point with operation safety glass breaking | 2027-02-17 → 2027-02-25 (+8d) | 2027-02-21 → 2027-03-02 (+9d) |  | -13.5d → -19.5d |
| A1300 | Install of the photoelectric heat & smoke detector | 2027-02-22 → 2027-03-02 (+8d) | 2027-02-25 → 2027-03-07 (+10d) |  | -13.5d → -19.5d |
| A1310 | Install of Sounder With Beacon | 2027-02-22 → 2027-03-02 (+8d) | 2027-02-25 → 2027-03-07 (+10d) |  | -13.5d → -19.5d |
| A1320 | Install of Addressable Control module | 2027-02-25 → 2027-03-07 (+10d) | 2027-03-03 → 2027-03-15 (+12d) |  | -13.5d → -19.5d |
| 2 | **Security System** | 2027-02-04 → 2027-02-13 (+9d) | 2027-03-18 → 2027-03-25 (+7d) |  |  |
| A1580 | Install 8 Port Industrial PoE Switch 10/100BaseT (0 deg to +70 deg. Celsius) | 2027-02-04 → 2027-02-13 (+9d) | 2027-02-10 → 2027-02-20 (+10d) |  | -19.5d → -25.5d |
| A1590 | Optical Fiber,48 Core Splice Closure | 2027-02-10 → 2027-02-20 (+10d) | 2027-02-15 → 2027-02-24 (+9d) |  | -18.5d → -24.5d |
| A1650 | Pole/Bollard mounted IP( PoE) and 12U rack dimension | 2027-02-10 → 2027-02-20 (+10d) | 2027-02-16 → 2027-02-25 (+9d) |  | -19.5d → -25.5d |
| A1600 | Boom Barrier at Security Guard Room | 2027-02-17 → 2027-02-25 (+8d) | 2027-02-24 → 2027-03-06 (+10d) |  | -19.5d → -25.5d |
| A1610 | Pedestrian turnstile at Security Guard Room | 2027-02-24 → 2027-03-06 (+10d) | 2027-03-03 → 2027-03-15 (+12d) |  | -19.5d → -25.5d |
| A1620 | Access Control Unit and Access Card Reader | 2027-03-04 → 2027-03-16 (+12d) | 2027-03-13 → 2027-03-20 (+7d) |  | -19.5d → -25.5d |
| A1630 | Magnetic Lock and Break Glass and Exit Push button | 2027-03-14 → 2027-03-21 (+7d) | 2027-03-17 → 2027-03-24 (+7d) |  | -19.5d → -25.5d |
| A1640 | Door Sensor and Biometrics Reader | 2027-03-16 → 2027-03-23 (+7d) | 2027-03-18 → 2027-03-25 (+7d) |  | -19.5d → -25.5d |
| 2 | **Furnitures work** | 2027-03-17 → 2027-03-24 (+7d) | 2027-03-23 → 2027-03-30 (+7d) |  |  |
| A1100 | Office Chairs,Tables and Stand | 2027-03-17 → 2027-03-24 (+7d) | 2027-03-23 → 2027-03-30 (+7d) |  | -19.5d → -25.5d |
| 2 | **Fence Work** |  | 2027-05-03 → 2027-05-10 (+7d) |  |  |
| 1 | **Northern Fence N01:N03** |  | 2027-02-01 → 2027-02-09 (+8d) |  |  |
| 5 | **Finishing Work** |  | 2027-02-01 → 2027-02-09 (+8d) |  |  |
| 3 | **Electrical Work** | 2026-11-17 → 2026-11-24 (+7d) | 2027-02-01 → 2027-02-09 (+8d) |  |  |
| CO-SU-FE-N-EL-100 | Trench excavation to receive 2 nos 50mm diameter PVC Conduit | 2026-11-17 → 2026-11-24 (+7d) | 2026-11-25 → 2026-12-02 (+7d) |  | -54d → -60d |
| CO-SU-FE-N-EL-110 | Trench excavation to receive 3 nos 50mm diameter PVC Conduit | 2026-11-17 → 2026-11-24 (+7d) | 2026-11-25 → 2026-12-02 (+7d) |  | -54d → -60d |
| CO-SU-FE-N-EL-120 | Fixing of Control cable,CAT6A cable | 2026-11-26 → 2026-12-03 (+7d) | 2026-12-06 → 2026-12-13 (+7d) |  | -54d → -60d |
| CO-SU-FE-N-EL-130 | Install 800mm x 800mm x 800mm height concrete handhole | 2026-11-26 → 2026-12-03 (+7d) | 2026-12-06 → 2026-12-13 (+7d) |  | -54d → -60d |
| CO-SU-FE-N-EL-140 | Hot dipped galvanized cable conduits for CAT6A cable and Control Cables embedded to wall | 2026-11-26 → 2026-12-03 (+7d) | 2026-12-05 → 2026-12-12 (+7d) |  | -53d → -59d |
| CO-SU-FE-N-EL-150 | Fixing Earthing Work (Earth Pit,Grounding rod,Tinned Copper wire) | 2026-12-07 → 2026-12-14 (+7d) | 2026-12-15 → 2026-12-22 (+7d) |  | -54d → -60d |
| CO-SU-FE-N-EL-160 | Field Equipment Cabinet enclosed outdoor complete with precast concrete footing, | 2026-12-16 → 2026-12-23 (+7d) | 2026-12-24 → 2026-12-31 (+7d) |  | -54d → -60d |
| CO-SU-FE-N-EL-170 | Fence Lightining 400V, 3PH, 60Hz lighting control panel (LCP-02) | 2026-12-16 → 2026-12-23 (+7d) | 2026-12-24 → 2026-12-31 (+7d) |  | -54d → -60d |
| CO-SU-FE-N-EL-180 | Install of direct buried armored cable 4C-16mm2 ,10mm2 | 2026-12-26 → 2027-01-02 (+7d) | 2027-01-04 → 2027-01-11 (+7d) |  | -54d → -60d |
| CO-SU-FE-N-EL-190 | Install 16mm2,10mm2 CU/PVC wire | 2026-12-26 → 2027-01-02 (+7d) | 2027-01-04 → 2027-01-11 (+7d) |  | -54d → -60d |
| CO-SU-FE-N-EL-200 | FEC-CCTV ( 4C-16mm2 CU/XLPE/PVC direct buried armored cable,16mm2 CU/PVC wire | 2026-12-26 → 2027-01-02 (+7d) | 2027-01-03 → 2027-01-10 (+7d) |  | -1d → -7d |
| CO-SU-FE-N-EL-210 | Junction Box for lighting fixture | 2027-01-05 → 2027-01-12 (+7d) | 2027-01-13 → 2027-01-20 (+7d) |  | -54d → -60d |
| CO-SU-FE-N-EL-220 | IR Intrusion Detection System Quad Beams | 2027-01-14 → 2027-01-21 (+7d) | 2027-01-23 → 2027-01-30 (+7d) |  | -9d → -15d |
| CO-SU-FE-N-EL-230 | Install of 38W, 230V, 1PH, 60Hz fence, led linear uplight lighting, IP66 | 2027-01-14 → 2027-01-21 (+7d) | 2027-01-24 → 2027-01-31 (+7d) |  | -10d → -16d |
| CO-SU-FE-N-EL-240 | Install, fixings, testing and commissioning 80W LED | 2027-01-25 → 2027-02-01 (+7d) | 2027-02-01 → 2027-02-09 (+8d) |  | -10d → -16d |
| 4 | **Architictural work** |  | 2026-12-30 → 2027-01-06 (+7d) |  |  |
| CO-SU-FE-N-AR-120 | Install 50mm thick random cut stone cladding |  | 2026-11-17 → 2026-11-24 (+7d) | 80% → 90% | 10d → 4d |
| CO-SU-FE-N-AR-150 | Install MODON Signage | 2026-12-23 → 2026-12-30 (+7d) | 2026-12-30 → 2027-01-06 (+7d) |  | 14d → 8d |
| 2 | **Western Fence P1 ( W01:W06 )** |  | 2027-04-05 → 2027-04-12 (+7d) |  |  |
| 5 | **Finishing Work** |  | 2027-04-05 → 2027-04-12 (+7d) |  |  |
| 3 | **Electrical Work** | 2026-11-26 → 2026-12-03 (+7d) | 2027-04-05 → 2027-04-12 (+7d) |  |  |
| CO-SU-FE-WP1-EL-260 | Trench excavation to receive 2 nos 50mm diameter PVC Conduit | 2026-11-26 → 2026-12-03 (+7d) | 2026-12-12 → 2026-12-19 (+7d) |  | -26d → -32d |
| CO-SU-FE-WP1-EL-320 | Trench excavation to receive 3 nos 50mm diameter PVC Conduit | 2026-11-26 → 2026-12-03 (+7d) | 2026-12-12 → 2026-12-19 (+7d) |  | -26d → -32d |
| CO-SU-FE-WP1-EL-300 | Fixing of Control cable,CAT6A cable | 2026-12-13 → 2026-12-20 (+7d) | 2026-12-28 → 2027-01-04 (+7d) |  | -26d → -32d |
| CO-SU-FE-WP1-EL-330 | Hot dipped galvanized cable conduits for CAT6A cable and Control Cables embedded to wall | 2026-12-13 → 2026-12-20 (+7d) | 2026-12-28 → 2027-01-04 (+7d) |  | -26d → -32d |
| CO-SU-FE-WP1-EL-310 | Install 800mm x 800mm x 800mm height concrete handhole | 2027-01-14 → 2027-01-21 (+7d) | 2027-01-30 → 2027-02-06 (+7d) |  | -54d → -60d |
| CO-SU-FE-WP1-EL-280 | Fixing Earthing Work (Earth Pit,Grounding rod,Tinned Copper wire) | 2027-01-31 → 2027-02-07 (+7d) | 2027-02-14 → 2027-02-22 (+8d) |  | -54d → -60d |
| CO-SU-FE-WP1-EL-340 | Field Equipment Cabinet enclosed outdoor complete with precast concrete footing, | 2027-02-14 → 2027-02-23 (+9d) | 2027-02-27 → 2027-03-08 (+9d) |  | -54d → -60d |
| CO-SU-FE-WP1-EL-350 | Fence Lightining 400V, 3PH, 60Hz lighting control panel (LCP-02) | 2027-02-14 → 2027-02-23 (+9d) | 2027-02-27 → 2027-03-08 (+9d) |  | -54d → -60d |
| CO-SU-FE-WP1-EL-360 | Install of direct buried armored cable 4C-16mm2 ,10mm2 | 2027-02-28 → 2027-03-13 (+13d) | 2027-03-14 → 2027-03-21 (+7d) |  | -54d → -60d |
| CO-SU-FE-WP1-EL-370 | Install 16mm2,10mm2 CU/PVC wire | 2027-02-28 → 2027-03-13 (+13d) | 2027-03-14 → 2027-03-21 (+7d) |  | -54d → -60d |
| CO-SU-FE-WP1-EL-390 | FEC-CCTV ( 4C-16mm2 CU/XLPE/PVC direct buried armored cable,16mm2 CU/PVC wire | 2027-02-28 → 2027-03-13 (+13d) | 2027-03-15 → 2027-03-22 (+7d) |  | -44d → -50d |
| CO-SU-FE-WP1-EL-250 | Junction Box for lighting fixture | 2027-03-15 → 2027-03-22 (+7d) | 2027-03-27 → 2027-04-03 (+7d) |  | -54d → -60d |
| CO-SU-FE-WP1-EL-290 | IR Intrusion Detection System Quad Beams | 2027-03-28 → 2027-04-04 (+7d) | 2027-03-31 → 2027-04-07 (+7d) |  | -54d → -60d |
| CO-SU-FE-WP1-EL-380 | Install of 38W, 230V, 1PH, 60Hz fence, led linear uplight lighting, IP66 | 2027-03-28 → 2027-04-04 (+7d) | 2027-03-31 → 2027-04-07 (+7d) |  | -51d → -57d |
| CO-SU-FE-WP1-EL-270 | Install, fixings, testing and commissioning 80W LED | 2027-04-01 → 2027-04-08 (+7d) | 2027-04-05 → 2027-04-12 (+7d) |  | -51d → -57d |
| 4 | **Architictural work** |  | 2027-01-09 → 2027-01-16 (+7d) |  |  |
| CO-SU-FE-WP1-AR-170 | External plastering to walls and columns |  | 2026-11-23 → 2026-11-30 (+7d) | 55% → 65% | 43.78d → 37.78d |
| CO-SU-FE-WP1-AR-180 | Install 50mm thick random cut stone cladding |  | 2026-11-23 → 2026-11-30 (+7d) | 40% → 50% | 43.78d → 37.78d |
| CO-SU-FE-WP1-AR-200 | Install Stone coping 500mm,525mm | 2026-11-17 → 2026-11-24 (+7d) | 2026-11-22 → 2026-11-29 (+7d) |  | 44.58d → 38.58d |
| CO-SU-FE-WP1-AR-210 | Install MODON Signage | 2026-12-31 → 2027-01-07 (+7d) | 2027-01-09 → 2027-01-16 (+7d) |  | 14d → 8d |
| 3 | **Western Fence P2 ( W07:W12 )** |  | 2027-04-17 → 2027-04-24 (+7d) |  |  |
| 5 | **Finishing Work** |  | 2027-04-17 → 2027-04-24 (+7d) |  |  |

| ID | Task | Start | Finish | Complete | Total float |
| --- | --- | --- | --- | --- | --- |
| 3 | **Electrical Work** | 2026-11-17 → 2026-11-24 (+7d) | 2027-04-17 → 2027-04-24 (+7d) |  |  |
| CO-SU-FE-WP2-EL-410 | Trench excavation to receive 2 nos 50mm diameter PVC Conduit | 2026-11-17 → 2026-11-24 (+7d) | 2026-11-21 → 2026-11-28 (+7d) |  | 14d → 8d |
| CO-SU-FE-WP2-EL-470 | Trench excavation to receive 3 nos 50mm diameter PVC Conduit | 2026-11-17 → 2026-11-24 (+7d) | 2026-11-23 → 2026-11-30 (+7d) |  | 14d → 8d |
| CO-SU-FE-WP2-EL-450 | Fixing of Control cable,CAT6A cable | 2026-11-24 → 2026-12-01 (+7d) | 2026-12-01 → 2026-12-08 (+7d) |  | 14d → 8d |
| CO-SU-FE-WP2-EL-460 | Install 800mm x 800mm x 800mm height concrete handhole | 2026-11-24 → 2026-12-01 (+7d) | 2026-12-01 → 2026-12-08 (+7d) |  | 14.2d → 8.2d |
| CO-SU-FE-WP2-EL-480 | Hot dipped galvanized cable conduits for CAT6A cable and Control Cables embedded to wall | 2026-11-24 → 2026-12-01 (+7d) | 2026-11-30 → 2026-12-07 (+7d) |  | 15d → 9d |
| CO-SU-FE-WP2-EL-430 | Fixing Earthing Work (Earth Pit,Grounding rod,Tinned Copper wire) | 2026-12-02 → 2026-12-09 (+7d) | 2026-12-08 → 2026-12-15 (+7d) |  | 14d → 8d |
| CO-SU-FE-WP2-EL-490 | Field Equipment Cabinet enclosed outdoor complete with precast concrete footing, | 2026-12-09 → 2026-12-16 (+7d) | 2026-12-13 → 2026-12-20 (+7d) |  | 14d → 8d |
| CO-SU-FE-WP2-EL-510 | Install of direct buried armored cable 4C-16mm2 ,10mm2 | 2026-12-14 → 2026-12-21 (+7d) | 2026-12-22 → 2026-12-29 (+7d) |  | 14.5d → 8.5d |
| CO-SU-FE-WP2-EL-520 | Install 16mm2,10mm2 CU/PVC wire | 2026-12-14 → 2026-12-21 (+7d) | 2026-12-22 → 2026-12-29 (+7d) |  | 14.5d → 8.5d |
| CO-SU-FE-WP2-EL-540 | FEC-CCTV ( 4C-16mm2 CU/XLPE/PVC direct buried armored cable,16mm2 CU/PVC wire | 2026-12-14 → 2026-12-21 (+7d) | 2026-12-22 → 2026-12-29 (+7d) |  | 14d → 8d |
| CO-SU-FE-WP2-EL-400 | Junction Box for lighting fixture | 2026-12-22 → 2026-12-29 (+7d) | 2026-12-26 → 2027-01-02 (+7d) |  | 15.5d → 9.5d |
| CO-SU-FE-WP2-EL-440 | IR Intrusion Detection System Quad Beams | 2027-04-01 → 2027-04-08 (+7d) | 2027-04-08 → 2027-04-15 (+7d) |  | -54d → -60d |
| CO-SU-FE-WP2-EL-530 | Install of 38W, 230V, 1PH, 60Hz fence, led linear uplight lighting, IP66 | 2027-04-01 → 2027-04-08 (+7d) | 2027-04-08 → 2027-04-15 (+7d) |  | -54d → -60d |
| CO-SU-FE-WP2-EL-420 | Install, fixings, testing and commissioning 80W LED | 2027-04-10 → 2027-04-17 (+7d) | 2027-04-17 → 2027-04-24 (+7d) |  | -54d → -60d |
| 4 | **Architictural work** |  | 2027-01-18 → 2027-01-25 (+7d) |  |  |
| CO-SU-FE-WP2-AR-230 | External plastering to walls and columns |  | 2026-12-22 → 2026-12-29 (+7d) | 55% → 60% | 14d → 8d |
| CO-SU-FE-WP2-AR-240 | Install 50mm thick random cut stone cladding |  | 2026-12-22 → 2026-12-29 (+7d) | 35% → 50% | 14d → 8d |
| CO-SU-FE-WP2-AR-260 | Install Stone coping 500mm,525mm | 2026-12-14 → 2026-12-21 (+7d) | 2026-12-22 → 2026-12-29 (+7d) |  | 14d → 8d |
| CO-SU-FE-WP2-AR-270 | Install MODON Signage | 2027-01-10 → 2027-01-17 (+7d) | 2027-01-18 → 2027-01-25 (+7d) |  | 14d → 8d |
| 4 | **Southern Fence S01:S05** |  | 2027-04-25 → 2027-05-02 (+7d) |  |  |
| 1 | **Civil Work** |  | 2026-11-19 → 2026-11-26 (+7d) |  |  |
| CO-SU-FE-S-CI-280 | Pouring R.C Columns For Northern Fence |  | 2026-11-18 → 2026-11-25 (+7d) |  | 7d → 1d |
| CO-SU-FE-S-CI-290 | Pouring Beams For Northern Fence |  | 2026-11-19 → 2026-11-26 (+7d) |  | 38.91d → 32.91d |
| 5 | **Finishing Work** |  | 2027-04-25 → 2027-05-02 (+7d) |  |  |
| 3 | **Electrical Work** | 2026-11-17 → 2026-11-24 (+7d) | 2027-04-25 → 2027-05-02 (+7d) |  |  |
| CO-SU-FE-S-EL-560 | Trench excavation to receive 2 nos 50mm diameter PVC Conduit | 2026-11-17 → 2026-11-24 (+7d) | 2026-12-03 → 2026-12-10 (+7d) |  | 7d → 1d |
| CO-SU-FE-S-EL-620 | Trench excavation to receive 3 nos 50mm diameter PVC Conduit | 2026-11-17 → 2026-11-24 (+7d) | 2026-12-03 → 2026-12-10 (+7d) |  | 7d → 1d |
| CO-SU-FE-S-EL-600 | Fixing of Control cable,CAT6A cable | 2026-12-05 → 2026-12-12 (+7d) | 2026-12-21 → 2026-12-28 (+7d) |  | 7d → 1d |
| CO-SU-FE-S-EL-610 | Install 800mm x 800mm x 800mm height concrete handhole | 2026-12-05 → 2026-12-12 (+7d) | 2026-12-21 → 2026-12-28 (+7d) |  | 7d → 1d |
| CO-SU-FE-S-EL-630 | Hot dipped galvanized cable conduits for CAT6A cable and Control Cables embedded to wall | 2026-12-05 → 2026-12-12 (+7d) | 2026-12-21 → 2026-12-28 (+7d) |  | 7d → 1d |
| CO-SU-FE-S-EL-580 | Fixing Earthing Work (Earth Pit,Grounding rod,Tinned Copper wire) | 2026-12-22 → 2026-12-29 (+7d) | 2026-12-28 → 2027-01-04 (+7d) |  | 7d → 1d |
| CO-SU-FE-S-EL-640 | Field Equipment Cabinet enclosed outdoor complete with precast concrete footing, | 2026-12-24 → 2026-12-31 (+7d) | 2026-12-28 → 2027-01-04 (+7d) |  | 7d → 1d |
| CO-SU-FE-S-EL-650 | Fence Lightining 400V, 3PH, 60Hz lighting control panel (LCP-02) | 2026-12-24 → 2026-12-31 (+7d) | 2026-12-28 → 2027-01-04 (+7d) |  | 7d → 1d |
| CO-SU-FE-S-EL-660 | Install of direct buried armored cable 4C-16mm2 ,10mm2 | 2026-12-24 → 2026-12-31 (+7d) | 2027-01-04 → 2027-01-11 (+7d) |  | 7d → 1d |
| CO-SU-FE-S-EL-670 | Install 16mm2,10mm2 CU/PVC wire | 2026-12-29 → 2027-01-05 (+7d) | 2027-01-04 → 2027-01-11 (+7d) |  | 7d → 1d |
| CO-SU-FE-S-EL-690 | FEC-CCTV ( 4C-16mm2 CU/XLPE/PVC direct buried armored cable,16mm2 CU/PVC wire | 2026-12-29 → 2027-01-05 (+7d) | 2027-01-05 → 2027-01-12 (+7d) |  | 13d → 7d |
| CO-SU-FE-S-EL-550 | Junction Box for lighting fixture | 2027-01-05 → 2027-01-12 (+7d) | 2027-01-12 → 2027-01-19 (+7d) |  | 7d → 1d |
| CO-SU-FE-S-EL-590 | IR Intrusion Detection System Quad Beams | 2027-03-16 → 2027-03-23 (+7d) | 2027-03-23 → 2027-03-30 (+7d) |  | -33d → -39d |
| CO-SU-FE-S-EL-680 | Install of 38W, 230V, 1PH, 60Hz fence, led linear uplight lighting, IP66 | 2027-04-10 → 2027-04-17 (+7d) | 2027-04-17 → 2027-04-24 (+7d) |  | -54d → -60d |
| CO-SU-FE-S-EL-570 | Install, fixings, testing and commissioning 80W LED | 2027-04-18 → 2027-04-25 (+7d) | 2027-04-25 → 2027-05-02 (+7d) |  | -54d → -60d |
| 4 | **Architictural work** |  | 2027-04-05 → 2027-04-12 (+7d) |  |  |
| CO-SU-FE-S-AR-280 | Install Brick Work For Northern Fence |  | 2026-11-21 → 2026-11-28 (+7d) | 75% → 80% | 7d → 1d |
| CO-SU-FE-S-AR-290 | External plastering to walls and columns |  | 2027-01-05 → 2027-01-12 (+7d) | 50% → 60% | 13d → 7d |
| CO-SU-FE-S-AR-300 | Install 50mm thick random cut stone cladding |  | 2027-01-05 → 2027-01-12 (+7d) | 10% → 30% | 13d → 7d |
| CO-SU-FE-S-AR-320 | Install Stone coping 500mm,525mm | 2027-03-16 → 2027-03-23 (+7d) | 2027-03-27 → 2027-04-03 (+7d) |  | -43d → -49d |
| CO-SU-FE-S-AR-330 | Install MODON Signage | 2027-03-28 → 2027-04-04 (+7d) | 2027-04-05 → 2027-04-12 (+7d) |  | -35d → -41d |
| 5 | **Eastern Fence P1 ( E01:E06 )** |  | 2027-04-29 → 2027-05-06 (+7d) |  |  |
| 1 | **Civil Work** |  | 2026-11-22 → 2026-11-29 (+7d) |  |  |
| CO-SU-FE-EP1-CI-330 | Pouring R.C Columns For Northern Fence |  | 2026-11-22 → 2026-11-29 (+7d) |  | 29.12d → 23.12d |
| CO-SU-FE-EP1-CI-340 | Pouring Beams For Northern Fence |  | 2026-11-22 → 2026-11-29 (+7d) |  | 37.12d → 31.12d |
| 5 | **Finishing Work** |  | 2027-04-29 → 2027-05-06 (+7d) |  |  |
| 3 | **Electrical Work** | 2026-11-22 → 2026-11-29 (+7d) | 2027-04-29 → 2027-05-06 (+7d) |  |  |
| CO-SU-FE-EP1-EL-710 | Trench excavation to receive 2 nos 50mm diameter PVC Conduit | 2026-11-22 → 2026-11-29 (+7d) | 2026-11-26 → 2026-12-03 (+7d) |  | 29.12d → 23.12d |
| CO-SU-FE-EP1-EL-770 | Trench excavation to receive 3 nos 50mm diameter PVC Conduit | 2026-11-22 → 2026-11-29 (+7d) | 2026-11-26 → 2026-12-03 (+7d) |  | 29.12d → 23.12d |
| CO-SU-FE-EP1-EL-750 | Fixing of Control cable,CAT6A cable | 2026-11-26 → 2026-12-03 (+7d) | 2026-12-01 → 2026-12-08 (+7d) |  | 29.12d → 23.12d |
| CO-SU-FE-EP1-EL-760 | Install 800mm x 800mm x 800mm height concrete handhole | 2026-11-26 → 2026-12-03 (+7d) | 2026-12-01 → 2026-12-08 (+7d) |  | 29.12d → 23.12d |
| CO-SU-FE-EP1-EL-780 | Hot dipped galvanized cable conduits for CAT6A cable and Control Cables embedded to wall | 2026-11-26 → 2026-12-03 (+7d) | 2026-12-01 → 2026-12-08 (+7d) |  | 29.12d → 23.12d |
| CO-SU-FE-EP1-EL-730 | Fixing Earthing Work (Earth Pit,Grounding rod,Tinned Copper wire) | 2026-12-01 → 2026-12-08 (+7d) | 2026-12-08 → 2026-12-15 (+7d) |  | 29.12d → 23.12d |
| CO-SU-FE-EP1-EL-790 | Field Equipment Cabinet enclosed outdoor complete with precast concrete footing, | 2026-12-08 → 2026-12-15 (+7d) | 2026-12-13 → 2026-12-20 (+7d) |  | 29.12d → 23.12d |
| CO-SU-FE-EP1-EL-800 | Fence Lightining 400V, 3PH, 60Hz lighting control panel (LCP-02) | 2026-12-08 → 2026-12-15 (+7d) | 2026-12-13 → 2026-12-20 (+7d) |  | 29.12d → 23.12d |
| CO-SU-FE-EP1-EL-810 | Install of direct buried armored cable 4C-16mm2 ,10mm2 | 2026-12-13 → 2026-12-20 (+7d) | 2026-12-17 → 2026-12-24 (+7d) |  | 29.12d → 23.12d |
| CO-SU-FE-EP1-EL-820 | Install 16mm2,10mm2 CU/PVC wire | 2026-12-13 → 2026-12-20 (+7d) | 2026-12-17 → 2026-12-24 (+7d) |  | 29.12d → 23.12d |
| CO-SU-FE-EP1-EL-840 | FEC-CCTV ( 4C-16mm2 CU/XLPE/PVC direct buried armored cable,16mm2 CU/PVC wire | 2026-12-13 → 2026-12-20 (+7d) | 2026-12-17 → 2026-12-24 (+7d) |  | 43.12d → 37.12d |
| CO-SU-FE-EP1-EL-700 | Junction Box for lighting fixture | 2027-01-13 → 2027-01-20 (+7d) | 2027-01-16 → 2027-01-23 (+7d) |  | 7d → 1d |
| CO-SU-FE-EP1-EL-740 | IR Intrusion Detection System Quad Beams | 2027-03-24 → 2027-03-31 (+7d) | 2027-03-28 → 2027-04-04 (+7d) |  | -30d → -36d |
| CO-SU-FE-EP1-EL-830 | Install of 38W, 230V, 1PH, 60Hz fence, led linear uplight lighting, IP66 | 2027-03-24 → 2027-03-31 (+7d) | 2027-03-28 → 2027-04-04 (+7d) |  | -30d → -36d |
| CO-SU-FE-EP1-EL-720 | Install, fixings, testing and commissioning 80W LED | 2027-04-26 → 2027-05-03 (+7d) | 2027-04-29 → 2027-05-06 (+7d) |  | -54d → -60d |
| 4 | **Architictural work** |  | 2027-04-08 → 2027-04-15 (+7d) |  |  |
| CO-SU-FE-EP1-AR-340 | Install Brick Work For Northern Fence |  | 2026-11-22 → 2026-11-29 (+7d) |  | 29.12d → 23.12d |

| ID | Task | Start | Finish | Complete | Total float | Predecessors |
| --- | --- | --- | --- | --- | --- | --- |
| CO-SU-FE-EP1-AR-360 | Install 50mm thick random cut stone cladding |  | 2026-12-17 → 2026-12-24 (+7d) |  | 43.12d → 37.12d |  |
| CO-SU-FE-EP1-AR-350 | External plastering to walls and columns |  | 2026-12-17 → 2026-12-24 (+7d) | 45% → 50% | 43.12d → 37.12d |  |
| CO-SU-FE-EP1-AR-390 | Install MODON Signage | 2027-04-06 → 2027-04-13 (+7d) | 2027-04-08 → 2027-04-15 (+7d) |  | -35d → -41d |  |
| 6 | **Eastern Fence P2 ( E07:E13 )** |  | 2027-05-03 → 2027-05-10 (+7d) |  |  |  |
| 1 | **Civil Work** |  | 2026-11-25 → 2026-12-02 (+7d) |  |  |  |
| CO-SU-FE-EP2-CI-380 | Pouring R.C Columns For Northern Fence |  | 2026-11-22 → 2026-11-29 (+7d) |  | 38d → 32d |  |
| CO-SU-FE-EP2-CI-390 | Pouring Beams For Northern Fence |  | 2026-11-25 → 2026-12-02 (+7d) |  | 67.5d → 61.5d |  |
| 5 | **Finishing Work** |  | 2027-05-03 → 2027-05-10 (+7d) |  |  |  |
| 3 | **Electrical Work** | 2026-11-19 → 2026-11-26 (+7d) | 2027-05-03 → 2027-05-10 (+7d) |  |  |  |
| CO-SU-FE-EP2-EL-860 | Trench excavation to receive 2 nos 50mm diameter PVC Conduit | 2026-11-19 → 2026-11-26 (+7d) | 2026-11-23 → 2026-11-30 (+7d) |  | 53d → 47d |  |
| CO-SU-FE-EP2-EL-920 | Trench excavation to receive 3 nos 50mm diameter PVC Conduit | 2026-11-19 → 2026-11-26 (+7d) | 2026-11-23 → 2026-11-30 (+7d) |  | 53d → 47d |  |
| CO-SU-FE-EP2-EL-910 | Install 800mm x 800mm x 800mm height concrete handhole | 2026-11-24 → 2026-12-01 (+7d) | 2026-11-26 → 2026-12-03 (+7d) |  | 53d → 47d |  |
| CO-SU-FE-EP2-EL-930 | Hot dipped galvanized cable conduits for CAT6A cable and Control Cables embedded to wall | 2026-11-24 → 2026-12-01 (+7d) | 2026-11-26 → 2026-12-03 (+7d) |  | 53d → 47d |  |
| CO-SU-FE-EP2-EL-900 | Fixing of Control cable,CAT6A cable | 2027-01-17 → 2027-01-24 (+7d) | 2027-01-19 → 2027-01-26 (+7d) |  | 7d → 1d |  |
| CO-SU-FE-EP2-EL-880 | Fixing Earthing Work (Earth Pit,Grounding rod,Tinned Copper wire) | 2027-01-20 → 2027-01-27 (+7d) | 2027-01-23 → 2027-01-30 (+7d) |  | 7d → 1d |  |
| CO-SU-FE-EP2-EL-940 | Field Equipment Cabinet enclosed outdoor complete with precast concrete footing, | 2027-01-24 → 2027-01-31 (+7d) | 2027-01-27 → 2027-02-03 (+7d) |  | 7d → 1d |  |
| CO-SU-FE-EP2-EL-950 | Fence Lightining 400V, 3PH, 60Hz lighting control panel (LCP-02) | 2027-01-24 → 2027-01-31 (+7d) | 2027-01-27 → 2027-02-03 (+7d) |  | 7d → 1d |  |
| CO-SU-FE-EP2-EL-960 | Install of direct buried armored cable 4C-16mm2 ,10mm2 | 2027-01-28 → 2027-02-04 (+7d) | 2027-01-31 → 2027-02-07 (+7d) |  | 7d → 1d |  |
| CO-SU-FE-EP2-EL-970 | Install 16mm2,10mm2 CU/PVC wire | 2027-01-28 → 2027-02-04 (+7d) | 2027-01-31 → 2027-02-07 (+7d) |  | 7d → 1d |  |
| CO-SU-FE-EP2-EL-990 | FEC-CCTV ( 4C-16mm2 CU/XLPE/PVC direct buried armored cable,16mm2 CU/PVC wire | 2027-01-28 → 2027-02-04 (+7d) | 2027-02-03 → 2027-02-11 (+8d) |  | 7d → 1d |  |
| CO-SU-FE-EP2-EL-850 | Junction Box for lighting fixture | 2027-02-01 → 2027-02-08 (+7d) | 2027-02-03 → 2027-02-11 (+8d) |  | 7d → 1d |  |
| CO-SU-FE-EP2-EL-890 | IR Intrusion Detection System Quad Beams | 2027-03-29 → 2027-04-05 (+7d) | 2027-03-31 → 2027-04-07 (+7d) |  | -29d → -35d |  |
| CO-SU-FE-EP2-EL-980 | Install of 38W, 230V, 1PH, 60Hz fence, led linear uplight lighting, IP66 | 2027-03-29 → 2027-04-05 (+7d) | 2027-03-31 → 2027-04-07 (+7d) |  | -29d → -35d |  |
| CO-SU-FE-EP2-EL-870 | Install, fixings, testing and commissioning 80W LED | 2027-05-01 → 2027-05-08 (+7d) | 2027-05-03 → 2027-05-10 (+7d) |  | -54d → -60d |  |
| 4 | **Architictural work** |  | 2027-04-11 → 2027-04-18 (+7d) |  |  |  |
| CO-SU-FE-EP2-AR-410 | External plastering to walls and columns |  | 2027-02-03 → 2027-02-11 (+8d) | 45% → 50% | 7d → 1d |  |
| CO-SU-FE-EP2-AR-420 | Install 50mm thick random cut stone cladding |  | 2027-02-03 → 2027-02-11 (+8d) |  | 7d → 1d |  |
| CO-SU-FE-EP2-AR-450 | Install MODON Signage | 2027-04-10 → 2027-04-17 (+7d) | 2027-04-11 → 2027-04-18 (+7d) |  | -35d → -41d |  |
| TC | **Testing and Comissioning** |  | 2027-06-17 → 2027-06-23 (+6d) |  |  |  |
| INF | **Infrastructure Networks** | 2027-05-06 → 2026-11-17 (-170d) | 2027-06-17 → 2027-06-23 (+6d) |  |  |  |
| PW1 | **Irrigation Network** | 2027-06-02 → 2027-06-08 (+6d) | 2027-06-08 → 2027-06-14 (+6d) |  |  |  |
| T/C-IR | Testing and Commissioning of Irrigation Network | 2027-06-02 → 2027-06-08 (+6d) | 2027-06-08 → 2027-06-14 (+6d) |  | -92.75d → -97.25d |  |
| PW11 | **TSE Network** | 2027-05-23 → 2027-05-11 (-12d) | 2027-06-08 → 2027-06-03 (-5d) |  |  |  |
| T/C-TSE-10 | Testing and Commissioning of TSE Network | 2027-05-23 → 2027-05-11 (-12d) | 2027-06-08 → 2027-06-03 (-5d) |  | -85d → -80.75d |  |
| PW | **Potable Water Network** | 2027-06-02 → 2027-06-08 (+6d) | 2027-06-09 → 2027-06-15 (+6d) |  |  |  |
| T/C-PW | Testing and Commissioning of Potable Water Network | 2027-06-02 → 2027-06-08 (+6d) | 2027-06-09 → 2027-06-15 (+6d) |  | -92.75d → -97.25d |  |
| SW | **Sewage Network** | 2027-05-23 → 2026-11-18 (-186d) | 2027-05-25 → 2027-05-04 (-21d) |  |  |  |
| T/C-SW | Testing and Commissioning of Sewage Network | 2027-05-23 → 2026-11-18 A (-186d) | 2027-05-25 → 2027-05-04 (-21d) | 0% → 70% | -92.5d → -78.75d | T/C-SD, CO-SW-TF-100, CO-SW-TF-210 SS+2d, MS-CF-SW, CO-SW-TF-130, CO-SW-TF-110, CO-SW-TF-210 FF+1d → T/C-SD SS, CO-SW-TF-100 FF, MS-CF-SW FF, CO-SW-TF-130 FF, CO-SW-TF-110 FF, CO-SW-TF-210 FF+1d |
| SD | **Storm Drainage Network** | 2027-05-06 → 2026-11-17 (-170d) | 2027-05-22 → 2027-05-11 (-11d) |  |  |  |
| T/C-SD | Testing and Commissioning of Storm Drainage Network | 2027-05-06 → 2026-11-17 A (-170d) | 2027-05-22 → 2027-05-11 (-11d) | 0% → 15% | -92.5d → -86.75d | CO-SD-ML-TF-100, CO-SD-CB-TF-160, CO-SD-MH-TF-210, CO-SD-PO-110-P2, MS-CF-SD, CO-LS-PL-180, CO-SD-CB-TF-130, CO-SD-CB-TF-110, CO-SD-MH-TF-120 → CO-SD-ML-TF-100 FF, CO-SD-CB-TF-160 FF, CO-SD-MH-TF-210 FF, CO-SD-PO-110-P2 SS, CO-LS-PL-180 FF, CO-SD-CB-TF-130 FF, CO-SD-CB-TF-110 FF, CO-SD-MH-TF-120 FF |
| SL | **Street Lighting Network** | 2027-06-08 → 2027-06-14 (+6d) | 2027-06-15 → 2027-06-21 (+6d) |  |  |  |
| T/C-SL | Testing and Commissioning of Street Lighting Network | 2027-06-08 → 2027-06-14 (+6d) | 2027-06-15 → 2027-06-21 (+6d) |  | -92.75d → -97.25d |  |
| TE | **Telecom Network** | 2027-05-27 → 2027-06-02 (+6d) | 2027-05-31 → 2027-06-06 (+6d) |  |  |  |
| T/C-TE | Testing and Commissioning of Telecom Network | 2027-05-27 → 2027-06-02 (+6d) | 2027-05-31 → 2027-06-06 (+6d) |  | -95.5d → -100.25d |  |
| MV | **Medium Voltage Network** | 2027-05-27 → 2027-06-02 (+6d) | 2027-06-13 → 2027-06-19 (+6d) |  |  |  |
| T/C-MV | Testing and Commissioning of Medium Voltage Network | 2027-05-27 → 2027-06-02 (+6d) | 2027-06-13 → 2027-06-19 (+6d) |  | -95.5d → -100.25d |  |
| RD | **Road Works** | 2027-06-13 → 2027-06-19 (+6d) | 2027-06-17 → 2027-06-23 (+6d) |  |  |  |
| T/C-RD | Testing and Commissioning of Road Works | 2027-06-13 → 2027-06-19 (+6d) | 2027-06-17 → 2027-06-23 (+6d) |  | -90.5d → -95.5d |  |
| 1 | **Utility Buildings** |  | 2027-06-09 → 2027-06-08 (-1d) |  |  |  |
| T/C-DPO | Testing and Commissioning of Storm Drainage Ponds | 2026-11-17 A | 2026-11-17 A | 0% → 100% | 67d → none |  |
| T/C-CTV | Testing and Commissioning of Guard Room and Fence | 2027-03-24 → 2027-03-31 (+7d) | 2027-03-24 → 2027-03-31 (+7d) |  | -19.5d → -25.5d |  |
| T/C-SPS | Testing and Commissioning of Sewage Pump Stations& soft scape and planting work | 2027-06-09 → 2027-06-08 (-1d) | 2027-06-09 → 2027-06-08 (-1d) |  | -81d → -80.25d |  |
| 1 | **Handing over and close out** | 2026-11-17 → 2026-11-24 (+7d) | 2027-06-27 → 2027-07-03 (+6d) |  |  |  |
| 2 | **As-Built** | 2026-11-17 → 2026-11-24 (+7d) | 2027-06-27 → 2027-07-03 (+6d) |  |  |  |
| HO-130 | Submission As-Built Drawing For Pond | 2026-11-17 → 2026-11-24 (+7d) | 2026-12-02 → 2026-12-09 (+7d) |  | 67d → 61d |  |
| HO-100 | Submission As-Built Drawing For Sewage Network | 2027-05-26 → 2027-05-04 (-22d) | 2027-06-10 → 2027-05-26 (-15d) |  | -82d → -68.75d |  |
| HO-160 | Submission As-Built Drawing For Telecom Network | 2027-05-31 → 2027-06-06 (+6d) | 2027-06-14 → 2027-06-20 (+6d) |  | -84.5d → -89.25d |  |
| HO-210 | Submission As-Built Drawing For Pump station | 2027-06-09 → 2027-06-08 (-1d) |  |  | -81d → -80.25d |  |
| HO-180 | Submission As-Built Drawing For Irrigation Network | 2027-06-08 → 2027-06-14 (+6d) | 2027-06-22 → 2027-06-28 (+6d) |  | -91.75d → -96.25d |  |
| HO-190 | As-Built Drawing For Potable Water Network | 2027-06-09 → 2027-06-15 (+6d) | 2027-06-23 → 2027-06-29 (+6d) |  | -92.75d → -97.25d |  |
| HO-170 | Submission As-Built Drawing For Medium Voltage Network | 2027-06-13 → 2027-06-19 (+6d) | 2027-06-27 → 2027-07-03 (+6d) |  | -95.5d → -100.25d |  |
| HO-150 | Submission As-Built Drawing For Street Lighting Network | 2027-06-15 → 2027-06-21 (+6d) | 2027-06-23 → 2027-06-29 (+6d) |  | -92.75d → -97.25d |  |
| HO-140 | Submission As-Built Drawing For Roads Network | 2027-06-17 → 2027-06-23 (+6d) | 2027-06-21 → 2027-06-27 (+6d) |  | -90.5d → -95.5d |  |
| 1 | **De-Mobilization Works** | 2027-06-15 → 2027-06-21 (+6d) | 2027-06-21 → 2027-06-27 (+6d) |  |  |  |
| HO-230 | Remove Temporary Car Shades | 2027-06-15 → 2027-06-21 (+6d) | 2027-06-21 → 2027-06-27 (+6d) |  | -90.75d → -95.25d |  |
| 3 | **Handing Over** | 2027-06-17 → 2027-06-23 (+6d) | 2027-06-21 → 2027-06-27 (+6d) |  |  |  |
| HO-250 | Review B.O.Q Qty. to ensure compliance with the actual status | 2027-06-17 → 2027-06-23 (+6d) | 2027-06-21 → 2027-06-27 (+6d) |  | -90.5d → -95.5d |  |
