# 20 READY BUILT FACTORIES 900 m2 IN HAIL

How a schedule from Primavera P6 changed from version to version. A marks actual dates.

## Version 8 (data date 2026-10-19, saved 2026-10-18, file 02.HAL1-05-009  Updated.xer)

Note of the change: Renumber project folders 01–23 in order (after removing projects 12 and 25)

| ID | WBS | Task | Duration | Start | Finish | Predecessors | Complete | Total float |
| --- | --- | --- | --- | --- | --- | --- | --- | --- |
|  | 1 | **PROJECT MILESTONES** |  | 2025-12-04 | 2026-11-02 |  |  |  |
|  | 1 | **CONTRACTUAL MILESTONES** |  | 2025-12-04 | 2026-11-02 |  |  |  |
| HAL-PMS-MMS-0010 |  | Project Start Date | 0d | 2025-12-04 A | 2025-12-04 A |  | 100% |  |
| HAL-PMS-MMS-0030 |  | Completion of Site Suvey Works | 0d | 2025-12-04 A | 2025-12-04 A | HAL-C-GEN-10 | 100% |  |
| HAL-PMS-MMS-0040 |  | Completion of Time Schedule submission | 0d | 2025-12-22 A | 2025-12-22 A | HAL-PRE-SUB-0012 | 100% |  |
| HAL-PMS-MMS-0050 |  | Completion of Plans (PEP,PQP,HSE, Procurement Plan) | 0d | 2025-12-31 A | 2025-12-31 A | HAL-PRE-SUB-0015 | 100% |  |
| HAL-PMS-MMS-0020 |  | Completion of Mobilization Works | 0d | 2026-01-05 A | 2026-01-05 A | HAL-MOB-SO.0020, HAL-MOB-SO.0020 FF | 100% |  |
| HAL-PMS-MMS-0070 |  | Completion of Site levelling, local roads & parkings | 0d | 2026-01-05 A | 2026-01-05 A | HAL-C-GEN-180 | 100% |  |
| HAL-PMS-MMS-0080 |  | Network start | 0d | 2026-05-05 A | 2026-05-05 A | HAL-C-ENV-F-212 SS | 100% |  |
| HAL-PMS-MMS-0060 |  | Completion of Engineering and Materials | 0d | 2026-10-19 | 2026-10-19 | HAL-E-SS-EX-1050 |  | 2.75d |
| HAL-PMS-MMS-0110 |  | Competion of Testing and Commissioning | 0d | 2026-10-21 | 2026-10-21 | HAL-C-TC-E-3656 |  | 10.05d |
| HAL-PMS-MMS-0090 |  | Completion of Construction | 0d | 2026-10-31 | 2026-10-31 | HAL-C-EX-R-1440 |  | 2d |
| HAL-PMS-MMS-0100 |  | Project Completion Date | 0d | 2026-11-02 | 2026-11-02 | HAL-FH-1020, HAL-PMS-MMS-0090, HAL-PMS-MMS-0110, HAL-FH-1020 FF |  | 0d |
|  | 3 | **DISCIPLINE MILESTONES** |  | 2025-12-28 | 2026-10-31 |  |  |  |
|  | 6 | **900 SQM FACTORIES** |  | 2025-12-28 | 2026-10-31 |  |  |  |
| HAL-PMS-DMS-2360 |  | Construction Start | 0d | 2025-12-28 A | 2025-12-28 A | HAL-C-GEN-10 SS | 100% |  |
| HAL-PMS-DMS-2310 |  | Completion of Civil works | 0d | 2026-10-19 | 2026-10-19 | HAL-PMS-DMS-2360, HAL-C-B-A-200, HAL-C-C-A-320, HAL-C-E-SS-0130 |  | 5.75d |
| HAL-PMS-DMS-2330 |  | Completion of Mechanical works | 0d | 2026-10-24 | 2026-10-24 | HAL-PMS-DMS-2310, HAL-C-E-M-370 |  | 6.55d |
| HAL-PMS-DMS-2320 |  | Completion of Electrical works | 0d | 2026-10-27 | 2026-10-27 | HAL-PMS-DMS-2340, HAL-C-E-E-420 |  | 2.75d |
| HAL-PMS-DMS-2340 |  | Completion of Architectural works | 0d | 2026-10-27 | 2026-10-27 | HAL-PMS-DMS-2330, HAL-C-B-A-850, HAL-C-C-A-1670, HAL-C-A-A-1260, HAL-C-E-A-340 |  | 2.75d |
| HAL-PMS-DMS-2370 |  | Construction Finish | 0d | 2026-10-31 | 2026-10-31 | HAL-C-EX-R-1440 |  | 0d |
|  | 1 | **SITE INFRASTRUCTURE** |  | 2026-10-19 | 2026-10-31 |  |  |  |
| HAL-PMS-DMS-2460 |  | Completion of Environmentall works | 0d | 2026-10-19 | 2026-10-19 | HAL-C-ENV-SW-616 |  | 10.75d |
| HAL-PMS-DMS-2450 |  | Completion of External works | 0d | 2026-10-31 | 2026-10-31 | HAL-C-EX-M-1391, HAL-C-EX-R-1440 |  | 0d |
|  | 2 | **MOBILIZATION** |  | 2025-12-04 | 2026-01-05 |  |  |  |
|  | 3 | **SITE FACILITIES AND OFFICES** |  | 2025-12-04 | 2026-01-05 |  |  |  |
| HAL-MOB-SO.0010 |  | Site Survey | 2d | 2025-12-04 A | 2025-12-04 A | HAL-PMS-MMS-0010 SS | 100% |  |
| HAL-MOB-SO.0011 |  | Site Layout Plan Prep | 2d | 2025-12-04 A | 2025-12-06 A | HAL-PMS-MMS-0010, HAL-MOB-SO.0010 | 100% |  |
| HAL-MOB-SO.0014 |  | Clear and Grub for Offices and Access Roads | 2d | 2025-12-04 A | 2025-12-08 A | HAL-MOB-SO.0012 SS+3d | 100% |  |
| HAL-MOB-SO.0012 |  | Site Layout Plan Submittal | 2d | 2025-12-06 A | 2025-12-07 A | HAL-MOB-SO.0011 | 100% |  |
| HAL-MOB-SO.0013 |  | Site Layout Plan Owner Approval | 2d | 2025-12-06 A | 2025-12-08 A | HAL-MOB-SO.0012 | 100% |  |
| HAL-MOB-SO.0019 |  | Mobilization of Manpower | 2d | 2025-12-16 A | 2026-01-04 A | HAL-MOB-SO.0018 | 100% |  |
| HAL-MOB-SO.0015 |  | Construct Site Offices | 4d | 2025-12-18 A | 2025-12-25 A | HAL-MOB-SO.0014, HAL-MOB-SO.0013 | 100% |  |
| HAL-MOB-SO.0016 |  | Electrical Works and Connections | 4d | 2025-12-23 A | 2025-12-24 A | HAL-MOB-SO.0015 | 100% |  |
| HAL-MOB-SO.0020 |  | Mobilization of Equipment | 2d | 2025-12-23 A | 2026-01-04 A | HAL-MOB-SO.0019 SS | 100% |  |
| HAL-MOB-SO.0018 |  | Install Project Signs | 4d | 2025-12-24 A | 2026-01-05 A | HAL-MOB-SO.0017 | 100% |  |
| HAL-MOB-SO.0017 |  | Site Utilities | 4d | 2025-12-27 A | 2026-01-04 A | HAL-MOB-SO.0016 | 100% |  |
|  | 2 | **PRELIMINARY SUBMITTALS** |  | 2025-12-10 | 2025-12-31 |  |  |  |
|  | 1 | **PREPARATION AND SUBMITTALS** |  | 2025-12-10 | 2025-12-21 |  |  |  |
| HAL-PRE-SUB-0014 |  | Communication Plan | 2d | 2025-12-10 A | 2025-12-10 A | HAL-PRE-SUB-0013 SS, HAL-PRE-SUB-0013 | 100% |  |
| HAL-PRE-SUB-0013 |  | Risk Management plan | 2d | 2025-12-15 A | 2025-12-15 A | HAL-PRE-SUB-0011 SS, HAL-PRE-SUB-0012 | 100% |  |
| HAL-PRE-SUB-0015 |  | Quality Control Plan | 2d | 2025-12-15 A | 2025-12-15 A | HAL-PRE-SUB-0014 | 100% |  |
| HAL-PRE-SUB-0011 |  | Health & Safety Plan | 2d | 2025-12-17 A | 2025-12-17 A | HAL-PRE-SUB-0010 | 100% |  |
| HAL-PRE-SUB-0012 |  | Baseline Schedule | 2d | 2025-12-18 A | 2025-12-18 A | HAL-PRE-SUB-0010, HAL-PRE-SUB-0011 | 100% |  |
| HAL-PRE-SUB-0010 |  | Project Execution Plan | 2d | 2025-12-21 A | 2025-12-21 A | HAL-MOB-SO.0015 | 100% |  |
|  | 2 | **REVIEW AND APPROVALS** |  | 2025-12-10 | 2025-12-31 |  |  |  |
| HAL-PRE-SUB-1013 |  | Communication Plan | 10d | 2025-12-10 A | 2025-12-10 A | HAL-PRE-SUB-1012 SS, HAL-PRE-SUB-0014 | 100% |  |
| HAL-PRE-SUB-1012 |  | Risk Management plan | 10d | 2025-12-15 A | 2025-12-28 A | HAL-PRE-SUB-1011 SS, HAL-PRE-SUB-0013 | 100% |  |
| HAL-PRE-SUB-1014 |  | Quality Control Plan | 10d | 2025-12-15 A | 2025-12-28 A | HAL-PRE-SUB-0015 | 100% |  |
| HAL-PRE-SUB-1011 |  | Health & Safety Plan | 10d | 2025-12-17 A | 2025-12-31 A | HAL-PRE-SUB-0011 | 100% |  |
| HAL-PRE-SUB-1015 |  | Baseline Schedule | 10d | 2025-12-18 A | 2025-12-22 A | HAL-PRE-SUB-1010, HAL-PRE-SUB-0012 | 100% |  |
| HAL-PRE-SUB-1010 |  | Project Execution Plan | 10d | 2025-12-21 A | 2025-12-22 A | HAL-PRE-SUB-0010 | 100% |  |
|  | 3 | **ENGINEERING (3%)** |  | 2025-12-08 | 2026-08-16 |  |  |  |
|  | 1 | **SHOP DRAWINGS** |  | 2025-12-11 | 2026-03-29 |  |  |  |
|  | 1 | **PREPARATION AND SUBMITTAL** |  | 2025-12-11 | 2026-02-07 |  |  |  |
|  | 5 | **STRUCTURAL** |  | 2025-12-24 | 2026-02-02 |  |  |  |
| HAL-E-SS-C-830 |  | SECTIONS | 1.62d | 2025-12-24 A | 2025-12-24 A | HAL-E-SS-C-820 | 100% |  |
| HAL-E-SS-C-840 |  | EXTERNAL WALL SECTION DETAILS | 0.62d | 2025-12-24 A | 2025-12-24 A | HAL-E-SS-C-830 | 100% |  |
| HAL-E-SS-C-750 |  | FOUNDATION LAYOUT | 4d | 2025-12-30 A | 2025-12-30 A | HAL-E-SS-R-780 | 100% |  |
| HAL-E-SS-C-820 |  | COLUMNS AND AXIS LAYOUT | 2d | 2026-01-01 A | 2026-01-01 A | HAL-E-SS-C-810 | 100% |  |
| HAL-E-SS-C-860 |  | TYPICAL STRUCTURAL SECTION DETAILS | 2d | 2026-01-01 A | 2026-01-01 A | HAL-E-SS-C-850 | 100% |  |
| HAL-E-SS-C-870 |  | STRUCTURAL SCHEDULE | 1.62d | 2026-01-01 A | 2026-01-01 A | HAL-E-SS-C-860 | 100% |  |
| HAL-E-SS-C-780 |  | TIE BEAM @ 4500mm EL. | 2d | 2026-01-08 A | 2026-01-08 A | HAL-E-SS-C-770 | 100% |  |
| HAL-E-SS-C-880 |  | PUMP SHED AND GRP WATER TANK STRUCTURAL DETAILS (1-2) | 2d | 2026-01-22 A | 2026-01-22 A | HAL-E-SS-C-870 | 100% |  |
| HAL-E-SS-C-890 |  | PUMP SHED AND GRP WATER TANK STRUCTURAL DETAILS (2-2) | 2d | 2026-01-22 A | 2026-01-22 A | HAL-E-SS-C-880 | 100% |  |
| HAL-E-SS-C-760 |  | GRADE BEAM / SLAB ON GRADE LAYOUT | 3d | 2026-01-28 A | 2026-01-28 A | HAL-E-SS-C-750 | 100% |  |
| HAL-E-SS-C-770 |  | BASE PLATE LAYOUT | 2d | 2026-02-02 A | 2026-02-02 A | HAL-E-SS-C-760 | 100% |  |
| HAL-E-SS-C-790 |  | ROOF FRAMING LAYOUT | 2d | 2026-02-02 A | 2026-02-02 A | HAL-E-SS-C-780 | 100% |  |
| HAL-E-SS-C-800 |  | PURLINS FRAMING LAYOUT | 2d | 2026-02-02 A | 2026-02-02 A | HAL-E-SS-C-790 | 100% |  |
| HAL-E-SS-C-810 |  | ROOF SHEETING LAYOUT | 2d | 2026-02-02 A | 2026-02-02 A | HAL-E-SS-C-800 | 100% |  |

| ID | WBS | Task | Duration | Start | Finish | Predecessors | Complete |
| --- | --- | --- | --- | --- | --- | --- | --- |
| HAL-E-SS-C-850 |  | BASE PLATE DETAILS | 2d | 2026-02-02 A | 2026-02-02 A | HAL-E-SS-C-840 | 100% |
|  | 2 | **ARCHITECTURAL** |  | 2025-12-23 | 2026-02-04 |  |  |
| HAL-E-SS-A-830 |  | GROUND FLOOR LAYOUT PLAN | 2d | 2025-12-23 A | 2025-12-23 A | HAL-E-SS-C-800 | 100% |
| HAL-E-SS-A-840 |  | GROUND FLOOR ENLARGED LAYOUT PLAN | 1.12d | 2025-12-23 A | 2025-12-23 A | HAL-E-SS-A-830 | 100% |
| HAL-E-SS-A-850 |  | SKYLIGHT DISTRIBUTION - ROOF LAYOUT PLAN | 2d | 2025-12-23 A | 2025-12-23 A | HAL-E-SS-A-840 | 100% |
| HAL-E-SS-A-1170 |  | ELEVATIONS (SHEET 01 0F 02) | 2d | 2025-12-24 A | 2025-12-24 A | HAL-E-SS-A-850 | 100% |
| HAL-E-SS-A-860 |  | ELEVATIONS (SHEET 01 0F 02) | 2d | 2025-12-24 A | 2025-12-24 A | HAL-E-SS-A-850 | 100% |
| HAL-E-SS-A-870 |  | BUILDING SECTIONS | 1.62d | 2025-12-24 A | 2025-12-24 A | HAL-E-SS-A-860 | 100% |
| HAL-E-SS-A-880 |  | WALL SECTIONS | 2d | 2025-12-24 A | 2025-12-24 A | HAL-E-SS-A-870 | 100% |
| HAL-E-SS-A-890 |  | CEILING LAYOUT PLAN | 2d | 2026-01-11 A | 2026-01-11 A | HAL-E-SS-A-880 | 100% |
| HAL-E-SS-A-900 |  | FINISHING LAYOUT PLAN | 1.62d | 2026-01-11 A | 2026-01-11 A | HAL-E-SS-A-890 | 100% |
| HAL-E-SS-A-910 |  | TOILET DETAILS | 1.5d | 2026-01-11 A | 2026-01-11 A | HAL-E-SS-A-900 | 100% |
| HAL-E-SS-A-930 |  | MISCELLANEOUS DETAILS - 01 | 2d | 2026-01-21 A | 2026-01-21 A | HAL-E-SS-A-920 | 100% |
| HAL-E-SS-A-940 |  | MISCELLANEOUS DETAILS - 02 | 1.5d | 2026-01-21 A | 2026-01-21 A | HAL-E-SS-A-930 | 100% |
| HAL-E-SS-A-950 |  | SIGNAGE LOCATION PLAN | 2d | 2026-01-21 A | 2026-01-21 A | HAL-E-SS-A-940 | 100% |
| HAL-E-SS-A-960 |  | SIGNAGE DESIGN DETAILS | 2d | 2026-01-21 A | 2026-01-21 A | HAL-E-SS-A-950 | 100% |
| HAL-E-SS-A-920 |  | DOORS & WINDOWS SCHEDULE | 1.5d | 2026-02-04 A | 2026-02-04 A | HAL-E-SS-A-910 | 100% |
|  | 3 | **MECHANICAL** |  | 2026-01-14 | 2026-02-03 |  |  |
| HAL-E-SS-M-600 |  | TYPICAL GROUND FLOOR PLAN-PLUMBING- DRAINAGE | 4d | 2026-01-14 A | 2026-01-14 A | HAL-E-SS-A-840 | 100% |
| HAL-E-SS-M-610 |  | TOILETS DETAILS PLUMBING-DRAINAGE | 2d | 2026-01-17 A | 2026-01-19 A | HAL-E-SS-M-600 | 100% |
| HAL-E-SS-M-630 |  | GROUND FLOOR WATER SUPPLY PLAN | 1.5d | 2026-01-17 A | 2026-01-17 A | HAL-E-SS-M-620 | 100% |
| HAL-E-SS-M-640 |  | TOILET DETAILS PLUMBING-WATER | 1.5d | 2026-01-17 A | 2026-01-17 A | HAL-E-SS-M-630 | 100% |
| HAL-E-SS-M-680 |  | GENERAL MISELLANEOUS DETAILS PLUMBING | 2d | 2026-01-17 A | 2026-01-17 A | HAL-E-SS-M-670 | 100% |
| HAL-E-SS-M-690 |  | SCHEDULE- PLUMBING | 4d | 2026-01-17 A | 2026-01-17 A | HAL-E-SS-M-680 | 100% |
| HAL-E-SS-M-750 |  | GENERAL-INSTRUMENTATION & CONTROL | 2d | 2026-01-17 A | 2026-01-17 A | HAL-E-SS-M-740 | 100% |
| HAL-E-SS-M-770 |  | TYPICAL GROUND FLOOR PLAN FIREFIGHTING | 2d | 2026-01-17 A | 2026-01-17 A | HAL-E-SS-M-760 | 100% |
| HAL-E-SS-M-800 |  | MISCELLANEOUS DETAILS | 2d | 2026-01-17 A | 2026-01-17 A | HAL-E-SS-M-790 | 100% |
| HAL-E-SS-M-620 |  | TYPICAL ROOF PLUMBING PLAN | 2d | 2026-01-20 A | 2026-01-20 A | HAL-E-SS-M-610 | 100% |
| HAL-E-SS-M-650 |  | SCHEMATIC RISER DIAGRAM PLUMBING-DRAINAGE | 1.62d | 2026-01-20 A | 2026-01-20 A | HAL-E-SS-M-640 | 100% |
| HAL-E-SS-M-660 |  | SCHEMATIC RISER DIAGRAM PLUMBING-WATER | 1.5d | 2026-01-20 A | 2026-01-20 A | HAL-E-SS-M-650 | 100% |
| HAL-E-SS-M-670 |  | GENERAL MISELLANEOUS DETAILS PLUMBING | 2d | 2026-01-20 A | 2026-01-20 A | HAL-E-SS-M-660 | 100% |
| HAL-E-SS-M-720 |  | SCHEDULES | 2d | 2026-01-20 A | 2026-01-20 A | HAL-E-SS-M-710 | 100% |
| HAL-E-SS-M-760 |  | GENERAL MISCELLANEOUS DETAILS - HVAC | 1.62d | 2026-01-20 A | 2026-01-20 A | HAL-E-SS-M-750 | 100% |
| HAL-E-SS-M-780 |  | SCHEMATIC RISER DIAGRAM FIREFIGHTING | 2d | 2026-01-20 A | 2026-01-20 A | HAL-E-SS-M-770 | 100% |
| HAL-E-SS-M-790 |  | GENERAL-MISCELLANEOUS DETAILS- FIRE FIGHTING | 4d | 2026-01-20 A | 2026-01-20 A | HAL-E-SS-M-780 | 100% |
| HAL-E-SS-M-700 |  | PUMP ROOM LAYOUT | 2d | 2026-02-01 A | 2026-02-01 A | HAL-E-SS-M-690 | 100% |
| HAL-E-SS-M-710 |  | PUMP ROOM 3D & SECTIONS VIEW | 1.62d | 2026-02-01 A | 2026-02-01 A | HAL-E-SS-M-700 | 100% |
| HAL-E-SS-M-730 |  | GROUND FLOOR PLAN-HVAC SYSTEM | 1.5d | 2026-02-03 A | 2026-02-03 A | HAL-E-SS-M-720 | 100% |
| HAL-E-SS-M-740 |  | TYPICAL ROOF HVAC PLAN | 1.5d | 2026-02-03 A | 2026-02-03 A | HAL-E-SS-M-730 | 100% |
|  | 4 | **ELECTRICAL** |  | 2025-12-22 | 2026-02-07 |  |  |
| HAL-E-SS-E-1150 |  | GROUND FLOOR LIGHTING PLAN | 2d | 2025-12-22 A | 2025-12-22 A | HAL-E-SS-E-1140 | 100% |
| HAL-E-SS-E-940 |  | GROUND FLOOR POWER PLAN | 4d | 2025-12-22 A | 2025-12-22 A | HAL-E-SS-M-600 | 100% |
| HAL-E-SS-E-1000 |  | ROOF FLOOR LIGHTING PLAN | 2d | 2025-12-24 A | 2025-12-24 A | HAL-E-SS-E-990 | 100% |
| HAL-E-SS-E-1140 |  | POWER FOR MECHANICAL | 2d | 2025-12-24 A | 2025-12-24 A | HAL-E-SS-E-1130 | 100% |
| HAL-E-SS-E-950 |  | GROUND FLOOR POWER FOR MECHANICAL | 2d | 2025-12-24 A | 2025-12-24 A | HAL-E-SS-E-940 | 100% |
| HAL-E-SS-E-1070 |  | POWER RISER DIAGRAM | 2d | 2026-01-10 A | 2026-01-10 A | HAL-E-SS-E-1060 | 100% |
| HAL-E-SS-E-1030 |  | GROUND FLOOR CCTV PLAN | 2d | 2026-01-13 A | 2026-01-13 A | HAL-E-SS-E-1020 | 100% |
| HAL-E-SS-E-1040 |  | GROUND FLOOR DATA & TELECOM PLAN | 2d | 2026-01-13 A | 2026-01-13 A | HAL-E-SS-E-1030 | 100% |
| HAL-E-SS-E-1060 |  | ROOF FLOOR LIGHTENING PLAN | 2d | 2026-01-13 A | 2026-01-13 A | HAL-E-SS-E-1050 | 100% |
| HAL-E-SS-E-1110 |  | SCHEDULES | 2d | 2026-01-13 A | 2026-01-13 A | HAL-E-SS-E-1100 | 100% |
| HAL-E-SS-E-1130 |  | GROUND FLOOR POWER PLAN | 2d | 2026-01-13 A | 2026-01-13 A | HAL-E-SS-E-1120 | 100% |
| HAL-E-SS-E-960 |  | ROOF FLOOR POWER FOR MECHANICAL | 2d | 2026-01-13 A | 2026-01-13 A | HAL-E-SS-E-950 | 100% |
| HAL-E-SS-E-990 |  | GROUND FLOOR LIGHTING PLAN | 1.5d | 2026-01-13 A | 2026-01-13 A | HAL-E-SS-E-980 | 100% |
| HAL-E-SS-E-1020 |  | GROUND FLOOR FIRE ALARM PLAN | 2d | 2026-01-21 A | 2026-01-21 A | HAL-E-SS-E-1010 | 100% |
| HAL-E-SS-E-1050 |  | GROUND FLOOR GROUNDING PLAN | 2d | 2026-01-21 A | 2026-01-21 A | HAL-E-SS-E-1040 | 100% |
| HAL-E-SS-E-1080 |  | FIRE ALARM RISER DIAGRAM | 2d | 2026-01-21 A | 2026-01-21 A | HAL-E-SS-E-1070 | 100% |
| HAL-E-SS-E-1160 |  | GROUND FLOOR GROUNDING PLAN | 2d | 2026-01-21 A | 2026-01-21 A | HAL-E-SS-E-1150 | 100% |
| HAL-E-SS-E-1090 |  | DATA & TELECOME RISER DIAGRAM | 2d | 2026-02-04 A | 2026-02-04 A | HAL-E-SS-E-1080 | 100% |
| HAL-E-SS-E-1100 |  | ACCESS CONTROL RISER DIAGRAM | 2d | 2026-02-04 A | 2026-02-04 A | HAL-E-SS-E-1090 | 100% |
| HAL-E-SS-E-1170 |  | RISER DIAGRAM | 2d | 2026-02-04 A | 2026-02-04 A | HAL-E-SS-E-1160 | 100% |
| HAL-E-SS-E-1010 |  | GOUND FLOOR ACCESS CONTROL | 1.62d | 2026-02-05 A | 2026-02-05 A | HAL-E-SS-E-1000 | 100% |
| HAL-E-SS-E-1120 |  | ELECTRICAL DETAILS | 2d | 2026-02-07 A | 2026-02-07 A | HAL-E-SS-E-1110 | 100% |
| HAL-E-SS-E-1180 |  | ELECTRICAL DETAILS | 2d | 2026-02-07 A | 2026-02-07 A | HAL-E-SS-E-1170 | 100% |
| HAL-E-SS-E-970 |  | ROOF FLOOR POWER | 1.62d | 2026-02-07 A | 2026-02-07 A | HAL-E-SS-E-960 | 100% |
| HAL-E-SS-E-980 |  | PV SYSTEM CALCULATION | 1.5d | 2026-02-07 A | 2026-02-07 A | HAL-E-SS-E-970 | 100% |
|  | 1 | **ROAD DRAWINGS** |  | 2025-12-11 | 2026-02-04 |  |  |
| HAL-E-SS-R-780 |  | TOPOGRAPHIC SURVEY-CONTOURS MAP | 2d | 2025-12-11 A | 2025-12-11 A | HAL-E-SS-R-770 | 100% |
| HAL-E-SS-R-730 |  | GRADING LAYOUT PLAN | 2d | 2025-12-18 A | 2025-12-18 A | HAL-MOB-SO.0016 | 100% |
| HAL-E-SS-R-740 |  | ROAD LAYOUT PLAN | 2d | 2026-01-14 A | 2026-01-14 A | HAL-E-SS-R-730 | 100% |
| HAL-E-SS-R-820 |  | SWEPT PATH LAYOUT PLAN | 2d | 2026-01-14 A | 2026-02-04 A | HAL-E-SS-R-810 | 100% |

| ID | WBS | Task | Duration | Start | Finish | Predecessors | Complete |
| --- | --- | --- | --- | --- | --- | --- | --- |
| HAL-E-SS-R-840 |  | ROAD STANDARD DETAILS-TYPICAL PAVEMENT DETAILS | 2d | 2026-01-14 A | 2026-01-14 A | HAL-E-SS-R-830 | 100% |
| HAL-E-SS-R-850 |  | ROAD STANDARD DETAILS-TYPICAL CURB DETAILS | 2d | 2026-01-14 A | 2026-01-14 A | HAL-E-SS-R-840 | 100% |
| HAL-E-SS-R-860 |  | ROAD STANDARD DETAILS-ROAD SIGN DETAILS | 2d | 2026-01-14 A | 2026-01-14 A | HAL-E-SS-R-850 | 100% |
| HAL-E-SS-R-870 |  | ROAD STANDARD DETAILS-ROAD MARKING DETAILS | 1.12d | 2026-01-14 A | 2026-01-14 A | HAL-E-SS-R-860 | 100% |
| HAL-E-SS-R-750 |  | TYPICAL CROSS SECTIONS - KEY PLAN | 2d | 2026-01-18 A | 2026-01-18 A | HAL-E-SS-R-740 | 100% |
| HAL-E-SS-R-760 |  | TYPICAL CROSS SECTIONS | 2d | 2026-01-18 A | 2026-01-18 A | HAL-E-SS-R-750 | 100% |
| HAL-E-SS-R-880 |  | GENERAL SITE PLAN - OVERALL | 2d | 2026-01-18 A | 2026-01-18 A | HAL-E-SS-R-870 | 100% |
| HAL-E-SS-R-890 |  | SITE SETTING-OUT PLAN - OVERALL | 2d | 2026-01-18 A | 2026-01-18 A | HAL-E-SS-R-880 | 100% |
| HAL-E-SS-R-770 |  | ROAD PROFILES | 2d | 2026-01-20 A | 2026-01-20 A | HAL-E-SS-R-760 | 100% |
| HAL-E-SS-R-800 |  | ALIGNMENT & CURB SETTING OUT TABLES | 2d | 2026-01-20 A | 2026-01-20 A | HAL-E-SS-R-790 | 100% |
| HAL-E-SS-R-810 |  | ALIGNMNET GEOMETRIC DATA | 2d | 2026-01-20 A | 2026-01-20 A | HAL-E-SS-R-800 | 100% |
| HAL-E-SS-R-920 |  | GENERAL SOFTSCAPE LAYOUT | 4d | 2026-01-20 A | 2026-01-20 A | HAL-E-SS-R-910 | 100% |
| HAL-E-SS-R-790 |  | ALIGNMENT & CURB SETTING OUT | 5d | 2026-01-21 A | 2026-01-21 A | HAL-E-SS-R-780 | 100% |
| HAL-E-SS-R-830 |  | SIGNING & MARKING LAYOUT PLAN | 1.62d | 2026-01-21 A | 2026-01-21 A | HAL-E-SS-R-820 | 100% |
| HAL-E-SS-R-900 |  | GENERAL LANDSCAPE LAYOUT | 2d | 2026-01-21 A | 2026-01-21 A | HAL-E-SS-R-890 | 100% |
| HAL-E-SS-R-910 |  | GENERAL HARDSCAPE LAYOUT | 4d | 2026-01-21 A | 2026-01-21 A | HAL-E-SS-R-900 | 100% |
| HAL-E-SS-R-930 |  | PUMP ROOM DETAILS | 1.62d | 2026-01-22 A | 2026-01-22 A | HAL-E-SS-R-920 | 100% |
| HAL-E-SS-R-940 |  | GENERAL DETAILS | 2d | 2026-02-04 A | 2026-02-04 A | HAL-E-SS-R-930 | 100% |
| HAL-E-SS-R-950 |  | LANDSCAPE DETAILS | 2d | 2026-02-04 A | 2026-02-04 A | HAL-E-SS-R-940 | 100% |
| HAL-E-SS-R-960 |  | LANDSCAPE SCHEDULES | 2d | 2026-02-04 A | 2026-02-04 A | HAL-E-SS-R-950 | 100% |
|  | 6 | **EXTERNAL** |  | 2026-01-17 | 2026-01-28 |  |  |
| HAL-E-SS-EX-1000 |  | WASHOUT CHAMBER DETAILS | 2d | 2026-01-17 A | 2026-01-17 A | HAL-E-SS-EX-990 | 100% |
| HAL-E-SS-EX-1010 |  | AIR RELEASE VALVE CHAMBER DETAILS | 2d | 2026-01-17 A | 2026-01-17 A | HAL-E-SS-EX-1000 | 100% |
| HAL-E-SS-EX-1020 |  | THRUST BLOCK DETAILS (SHEET 1 OF 4) | 2d | 2026-01-17 A | 2026-01-17 A | HAL-E-SS-EX-1010 | 100% |
| HAL-E-SS-EX-1030 |  | THRUST BLOCK DETAILS (SHEET 2 OF 4) | 2d | 2026-01-17 A | 2026-01-17 A | HAL-E-SS-EX-1020 SS | 100% |
| HAL-E-SS-EX-1040 |  | THRUST BLOCK DETAILS (SHEET 3 OF 4) | 2d | 2026-01-17 A | 2026-01-17 A | HAL-E-SS-EX-1030 SS | 100% |
| HAL-E-SS-EX-1050 |  | THRUST BLOCK DETAILS (SHEET 4 OF 4) | 2d | 2026-01-17 A | 2026-01-17 A | HAL-E-SS-EX-1040 SS | 100% |
| HAL-E-SS-EX-760 |  | DOUBLE VALVE CHAMBER DETAILS | 2d | 2026-01-17 A | 2026-01-17 A | HAL-E-SS-EX-750 | 100% |
| HAL-E-SS-EX-800 |  | FLOW METER REINFORCEMENT DETAILS | 2d | 2026-01-17 A | 2026-01-17 A | HAL-E-SS-EX-790 | 100% |
| HAL-E-SS-EX-810 |  | THRUST BLOCK DETAILS (SHEET 1 OF 4) | 2d | 2026-01-17 A | 2026-01-17 A | HAL-E-SS-EX-800 | 100% |
| HAL-E-SS-EX-820 |  | THRUST BLOCK DETAILS (SHEET 2 OF 4) | 2d | 2026-01-17 A | 2026-01-17 A | HAL-E-SS-EX-810 SS | 100% |
| HAL-E-SS-EX-830 |  | THRUST BLOCK DETAILS (SHEET 3 OF 4) | 2d | 2026-01-17 A | 2026-01-17 A | HAL-E-SS-EX-820 SS | 100% |
| HAL-E-SS-EX-840 |  | THRUST BLOCK DETAILS (SHEET 4 OF 4) | 2d | 2026-01-17 A | 2026-01-17 A | HAL-E-SS-EX-830 SS | 100% |
| HAL-E-SS-EX-870 |  | GENERAL NOTES | 2d | 2026-01-17 A | 2026-01-17 A | HAL-E-SS-EX-860 | 100% |
| HAL-E-SS-EX-880 |  | PIPE TRENCHES DETAILS (1) | 2d | 2026-01-17 A | 2026-01-17 A | HAL-E-SS-EX-870 | 100% |
| HAL-E-SS-EX-890 |  | PIPE TRENCHES DETAILS (2) | 2d | 2026-01-17 A | 2026-01-17 A | HAL-E-SS-EX-880 | 100% |
| HAL-E-SS-EX-910 |  | CAST IN PLACE MANHOLE DETAILS FOR DEPTH < 6000MM (TYPE-B) | 2d | 2026-01-17 A | 2026-01-17 A | HAL-E-SS-EX-900 SS | 100% |
| HAL-E-SS-EX-930 |  | BACKDROP DETAIL OF PRECAST MANHOLE DEPTH FROM 3000MM TO 6000MM | 2d | 2026-01-17 A | 2026-01-17 A | HAL-E-SS-EX-920 SS | 100% |
| HAL-E-SS-EX-940 |  | PRECAST MANHOLE DETAILS | 2d | 2026-01-17 A | 2026-01-17 A | HAL-E-SS-EX-930 | 100% |
| HAL-E-SS-EX-960 |  | PIPE TRENCH DETAILS | 2d | 2026-01-17 A | 2026-01-17 A | HAL-E-SS-EX-950 | 100% |
| HAL-E-SS-EX-970 |  | BURIED GATE VALVE DETAILS | 2d | 2026-01-17 A | 2026-01-17 A | HAL-E-SS-EX-960 | 100% |
| HAL-E-SS-EX-990 |  | DOUBLE VALVE CHAMBER DETAILS | 2d | 2026-01-17 A | 2026-01-17 A | HAL-E-SS-EX-980 | 100% |
| HAL-E-SS-EX-730 |  | PIPE TRENCH DETAILS | 2d | 2026-01-20 A | 2026-01-20 A | HAL-E-SS-EX-720 | 100% |
| HAL-E-SS-EX-740 |  | BURIED GATE VALVE DETAILS | 2d | 2026-01-20 A | 2026-01-20 A | HAL-E-SS-EX-730 | 100% |
| HAL-E-SS-EX-750 |  | SINGLE VALVE CHAMBER DETAILS | 2d | 2026-01-21 A | 2026-01-21 A | HAL-E-SS-EX-740 | 100% |
| HAL-E-SS-EX-770 |  | WASHOUT CHAMBER DETAILS | 2d | 2026-01-21 A | 2026-01-21 A | HAL-E-SS-EX-760 | 100% |
| HAL-E-SS-EX-780 |  | AIR RELEASE VALVE CHAMBER DETAILS | 2d | 2026-01-21 A | 2026-01-21 A | HAL-E-SS-EX-770 | 100% |
| HAL-E-SS-EX-900 |  | CAST IN PLACE MANHOLE DETAILS FOR DEPTH < 6000MM (TYPE-A) | 2d | 2026-01-21 A | 2026-01-21 A | HAL-E-SS-EX-890 | 100% |
| HAL-E-SS-EX-920 |  | BACKDROP DETAIL OF PRECAST MANHOLE DEPTH < 3000MM | 2d | 2026-01-21 A | 2026-01-21 A | HAL-E-SS-EX-910 SS | 100% |
| HAL-E-SS-EX-980 |  | SINGLE VALVE CHAMBER DETAILS | 1.5d | 2026-01-21 A | 2026-01-21 A | HAL-E-SS-EX-970 | 100% |
| HAL-E-SS-EX-690 |  | POTABLE WATER NETWORK | 3.62d | 2026-01-28 A | 2026-01-28 A | HAL-E-SS-R-730, HAL-E-SS-A-830 | 100% |
| HAL-E-SS-EX-700 |  | FIRE FIGHTING WATER NETWORK | 1.5d | 2026-01-28 A | 2026-01-28 A | HAL-E-SS-EX-690 | 100% |
| HAL-E-SS-EX-710 |  | POTABLE WATER NETWORK PROFILES | 2d | 2026-01-28 A | 2026-01-28 A | HAL-E-SS-EX-700 | 100% |
| HAL-E-SS-EX-720 |  | FIRE FIGHTING NETWORK PROFILE | 1.62d | 2026-01-28 A | 2026-01-28 A | HAL-E-SS-EX-710 | 100% |
| HAL-E-SS-EX-790 |  | FLOW METER DETAILS | 1.5d | 2026-01-28 A | 2026-01-28 A | HAL-E-SS-EX-780 | 100% |
| HAL-E-SS-EX-850 |  | SEWAGE NETWORK | 2d | 2026-01-28 A | 2026-01-28 A | HAL-E-SS-EX-840 | 100% |
| HAL-E-SS-EX-860 |  | SEWAGE NETWORK PROFILES | 2d | 2026-01-28 A | 2026-01-28 A | HAL-E-SS-EX-850 | 100% |
| HAL-E-SS-EX-950 |  | IRRIGATION NETWORK LAYOUT SHEET 1 OF 1 | 2d | 2026-01-28 A | 2026-01-28 A | HAL-E-SS-EX-940 | 100% |
|  | 2 | **REVIEW AND APPROVAL** |  | 2025-12-11 | 2026-03-29 |  |  |
|  | 5 | **STRUCTURAL** |  | 2025-12-24 | 2026-03-29 |  |  |
| HAL-E-SA-C-830 |  | SECTIONS | 0.62d | 2025-12-24 A | 2026-01-17 A | HAL-E-SS-C-830 | 100% |
| HAL-E-SA-C-840 |  | EXTERNAL WALL SECTION DETAILS | 2d | 2025-12-24 A | 2026-01-17 A | HAL-E-SS-C-840 | 100% |
| HAL-E-SA-C-750 |  | FOUNDATION LAYOUT | 2d | 2025-12-30 A | 2026-01-08 A | HAL-E-SS-C-750 | 100% |
| HAL-E-SA-C-820 |  | COLUMNS AND AXIS LAYOUT | 2d | 2026-01-01 A | 2026-01-08 A | HAL-E-SS-C-820 | 100% |
| HAL-E-SA-C-860 |  | TYPICAL STRUCTURAL SECTION DETAILS | 1.62d | 2026-01-01 A | 2026-01-04 A | HAL-E-SS-C-860 | 100% |
| HAL-E-SA-C-870 |  | STRUCTURAL SCHEDULE | 1.5d | 2026-01-01 A | 2026-01-08 A | HAL-E-SS-C-870 | 100% |
| HAL-E-SA-C-780 |  | TIE BEAM @ 4500mm EL. | 2d | 2026-01-08 A | 2026-02-28 A | HAL-E-SS-C-780 | 100% |
| HAL-E-SA-C-880 |  | PUMP SHED AND GRP WATER TANK STRUCTURAL DETAILS (1-2) | 2d | 2026-01-22 A | 2026-02-12 A | HAL-E-SS-C-880 | 100% |
| HAL-E-SA-C-890 |  | PUMP SHED AND GRP WATER TANK STRUCTURAL DETAILS (2-2) | 2d | 2026-01-22 A | 2026-02-12 A | HAL-E-SS-C-890 | 100% |
| HAL-E-SA-C-760 |  | GRADE BEAM / SLAB ON GRADE LAYOUT | 2d | 2026-01-28 A | 2026-03-29 A | HAL-E-SS-C-760 | 100% |

| ID | WBS | Task | Duration | Start | Finish | Predecessors | Complete |
| --- | --- | --- | --- | --- | --- | --- | --- |
| HAL-E-SA-C-770 |  | BASE PLATE LAYOUT | 2d | 2026-02-02 A | 2026-02-05 A | HAL-E-SS-C-770 | 100% |
| HAL-E-SA-C-790 |  | ROOF FRAMING LAYOUT | 2d | 2026-02-02 A | 2026-02-05 A | HAL-E-SS-C-790 | 100% |
| HAL-E-SA-C-800 |  | PURLINS FRAMING LAYOUT | 2d | 2026-02-02 A | 2026-02-05 A | HAL-E-SS-C-800 | 100% |
| HAL-E-SA-C-810 |  | ROOF SHEETING LAYOUT | 1.62d | 2026-02-02 A | 2026-02-05 A | HAL-E-SA-C-800, HAL-E-SS-C-810 | 100% |
| HAL-E-SA-C-850 |  | BASE PLATE DETAILS | 2d | 2026-02-02 A | 2026-02-05 A | HAL-E-SS-C-850 | 100% |
|  | 2 | **ARCHITECTURAL** |  | 2025-12-23 | 2026-03-04 |  |  |
| HAL-E-SA-A-830 |  | GROUND FLOOR LAYOUT PLAN | 1.12d | 2025-12-23 A | 2025-12-24 A | HAL-E-SS-A-830 | 100% |
| HAL-E-SA-A-840 |  | GROUND FLOOR ENLARGED LAYOUT PLAN | 2d | 2025-12-23 A | 2025-12-24 A | HAL-E-SS-A-840 | 100% |
| HAL-E-SA-A-850 |  | SKYLIGHT DISTRIBUTION - ROOF LAYOUT PLAN | 1.62d | 2025-12-23 A | 2026-01-24 A | HAL-E-SS-A-850 | 100% |
| HAL-E-SA-A-1170 |  | BUILDING SECTIONS | 5d | 2025-12-24 A | 2026-01-17 A | HAL-E-SS-A-1170 | 100% |
| HAL-E-SA-A-860 |  | ELEVATIONS (SHEET 01 0F 02) | 2d | 2025-12-24 A | 2026-01-15 A | HAL-E-SS-A-860 | 100% |
| HAL-E-SA-A-870 |  | ELEVATIONS (SHEET 01 0F 02) | 2d | 2025-12-24 A | 2026-01-15 A | HAL-E-SS-A-870 | 100% |
| HAL-E-SA-A-880 |  | WALL SECTIONS | 2d | 2025-12-24 A | 2026-01-17 A | HAL-E-SS-A-880 | 100% |
| HAL-E-SA-A-890 |  | CEILING LAYOUT PLAN | 1.62d | 2026-01-11 A | 2026-03-04 A | HAL-E-SS-A-890 | 100% |
| HAL-E-SA-A-900 |  | FINISHING LAYOUT PLAN | 1.5d | 2026-01-11 A | 2026-01-17 A | HAL-E-SS-A-900 | 100% |
| HAL-E-SA-A-910 |  | TOILET DETAILS | 2d | 2026-01-11 A | 2026-01-18 A | HAL-E-SS-A-910 | 100% |
| HAL-E-SA-A-930 |  | MISCELLANEOUS DETAILS - 01 | 2d | 2026-01-21 A | 2026-01-26 A | HAL-E-SS-A-930 | 100% |
| HAL-E-SA-A-940 |  | MISCELLANEOUS DETAILS - 02 | 1.62d | 2026-01-21 A | 2026-01-26 A | HAL-E-SS-A-940 | 100% |
| HAL-E-SA-A-950 |  | SIGNAGE LOCATION PLAN | 2d | 2026-01-21 A | 2026-01-28 A | HAL-E-SS-A-950 | 100% |
| HAL-E-SA-A-960 |  | SIGNAGE DESIGN DETAILS | 2d | 2026-01-21 A | 2026-01-28 A | HAL-E-SS-A-960 | 100% |
| HAL-E-SA-A-920 |  | DOORS & WINDOWS SCHEDULE | 1.5d | 2026-02-04 A | 2026-02-08 A | HAL-E-SS-A-920 | 100% |
|  | 3 | **MECHANICAL** |  | 2026-01-14 | 2026-03-02 |  |  |
| HAL-E-SA-M-600 |  | TYPICAL GROUND FLOOR PLAN-PLUMBING- DRAINAGE | 2d | 2026-01-14 A | 2026-03-02 A | HAL-E-SS-M-600 | 100% |
| HAL-E-SA-M-610 |  | TOILETS DETAILS PLUMBING-DRAINAGE | 2d | 2026-01-17 A | 2026-01-17 A | HAL-E-SS-M-610 | 100% |
| HAL-E-SA-M-630 |  | GROUND FLOOR WATER SUPPLY PLAN | 2d | 2026-01-17 A | 2026-01-20 A | HAL-E-SS-M-630 | 100% |
| HAL-E-SA-M-640 |  | TOILET DETAILS PLUMBING-WATER | 1.62d | 2026-01-17 A | 2026-01-17 A | HAL-E-SS-M-640 | 100% |
| HAL-E-SA-M-680 |  | GENERAL MISELLANEOUS DETAILS PLUMBING | 2d | 2026-01-17 A | 2026-01-17 A | HAL-E-SS-M-680 | 100% |
| HAL-E-SA-M-690 |  | SCHEDULE- PLUMBING | 2d | 2026-01-17 A | 2026-01-17 A | HAL-E-SS-M-690 | 100% |
| HAL-E-SA-M-720 |  | SCHEDULES | 2d | 2026-01-17 A | 2026-01-17 A | HAL-E-SS-M-720 | 100% |
| HAL-E-SA-M-750 |  | GENERAL-INSTRUMENTATION & CONTROL | 2d | 2026-01-17 A | 2026-01-17 A | HAL-E-SS-M-750 | 100% |
| HAL-E-SA-M-770 |  | TYPICAL GROUND FLOOR PLAN FIREFIGHTING | 2d | 2026-01-17 A | 2026-01-28 A | HAL-E-SS-M-770 | 100% |
| HAL-E-SA-M-800 |  | MISCELLANEOUS DETAILS | 2d | 2026-01-17 A | 2026-01-17 A | HAL-E-SS-M-800 | 100% |
| HAL-E-SA-M-620 |  | TYPICAL ROOF PLUMBING PLAN | 1.62d | 2026-01-20 A | 2026-01-20 A | HAL-E-SS-M-620 | 100% |
| HAL-E-SA-M-650 |  | SCHEMATIC RISER DIAGRAM PLUMBING-DRAINAGE | 1.5d | 2026-01-20 A | 2026-01-20 A | HAL-E-SS-M-650 | 100% |
| HAL-E-SA-M-660 |  | SCHEMATIC RISER DIAGRAM PLUMBING-WATER | 2d | 2026-01-20 A | 2026-01-20 A | HAL-E-SS-M-660 | 100% |
| HAL-E-SA-M-670 |  | GENERAL MISELLANEOUS DETAILS PLUMBING | 2d | 2026-01-20 A | 2026-01-20 A | HAL-E-SS-M-670 | 100% |
| HAL-E-SA-M-760 |  | GENERAL MISCELLANEOUS DETAILS - HVAC | 2d | 2026-01-20 A | 2026-01-20 A | HAL-E-SS-M-760 | 100% |
| HAL-E-SA-M-780 |  | SCHEMATIC RISER DIAGRAM FIREFIGHTING | 4d | 2026-01-20 A | 2026-01-20 A | HAL-E-SS-M-780 | 100% |
| HAL-E-SA-M-790 |  | GENERAL-MISCELLANEOUS DETAILS- FIRE FIGHTING | 2d | 2026-01-20 A | 2026-01-20 A | HAL-E-SS-M-790 | 100% |
| HAL-E-SA-M-700 |  | PUMP ROOM LAYOUT | 1.62d | 2026-02-01 A | 2026-02-04 A | HAL-E-SS-M-700 | 100% |
| HAL-E-SA-M-710 |  | PUMP ROOM 3D & SECTIONS VIEW | 1.5d | 2026-02-01 A | 2026-02-04 A | HAL-E-SS-M-710 | 100% |
| HAL-E-SA-M-730 |  | GROUND FLOOR PLAN-HVAC SYSTEM | 1.5d | 2026-02-03 A | 2026-02-12 A | HAL-E-SS-M-730 | 100% |
| HAL-E-SA-M-740 |  | TYPICAL ROOF HVAC PLAN | 1.62d | 2026-02-03 A | 2026-02-05 A | HAL-E-SS-M-740 | 100% |
|  | 4 | **ELECTRICAL** |  | 2025-12-22 | 2026-03-29 |  |  |
| HAL-E-SA-E-1150 |  | GROUND FLOOR LIGHTING PLAN | 2d | 2025-12-22 A | 2026-01-14 A | HAL-E-SS-E-1150 | 100% |
| HAL-E-SA-E-940 |  | GROUND FLOOR POWER PLAN | 2d | 2025-12-22 A | 2026-01-14 A | HAL-E-SS-E-940 | 100% |
| HAL-E-SA-E-1000 |  | ROOF FLOOR LIGHTING PLAN | 2d | 2025-12-24 A | 2026-01-15 A | HAL-E-SS-E-1000 | 100% |
| HAL-E-SA-E-1140 |  | POWER FOR MECHANICAL | 2d | 2025-12-24 A | 2026-01-15 A | HAL-E-SS-E-1140 | 100% |
| HAL-E-SA-E-950 |  | GROUND FLOOR POWER FOR MECHANICAL | 2d | 2025-12-24 A | 2026-01-15 A | HAL-E-SS-E-950, HAL-E-SA-E-940 | 100% |
| HAL-E-SA-E-1030 |  | GROUND FLOOR CCTV PLAN | 2d | 2026-01-13 A | 2026-01-14 A | HAL-E-SS-E-1030 | 100% |
| HAL-E-SA-E-1040 |  | GROUND FLOOR DATA & TELECOM PLAN | 2d | 2026-01-13 A | 2026-01-14 A | HAL-E-SS-E-1040 | 100% |
| HAL-E-SA-E-1070 |  | POWER RISER DIAGRAM | 2d | 2026-01-13 A | 2026-01-14 A | HAL-E-SS-E-1070 | 100% |
| HAL-E-SA-E-1110 |  | SCHEDULES | 2d | 2026-01-13 A | 2026-01-14 A | HAL-E-SS-E-1110 | 100% |
| HAL-E-SA-E-1130 |  | GROUND FLOOR POWER PLAN | 2d | 2026-01-13 A | 2026-01-14 A | HAL-E-SS-E-1130 | 100% |
| HAL-E-SA-E-960 |  | ROOF FLOOR POWER FOR MECHANICAL | 1.62d | 2026-01-13 A | 2026-01-15 A | HAL-E-SS-E-960 | 100% |
| HAL-E-SA-E-990 |  | GROUND FLOOR LIGHTING PLAN | 1.62d | 2026-01-13 A | 2026-01-14 A | HAL-E-SS-E-990 | 100% |
| HAL-E-SA-E-1060 |  | ROOF FLOOR LIGHTENING PLAN | 2d | 2026-01-15 A | 2026-01-15 A | HAL-E-SS-E-1060 | 100% |
| HAL-E-SA-E-1020 |  | GROUND FLOOR FIRE ALARM PLAN | 2d | 2026-01-21 A | 2026-03-29 A | HAL-E-SS-E-1020 | 100% |
| HAL-E-SA-E-1050 |  | GROUND FLOOR GROUNDING PLAN | 2d | 2026-01-21 A | 2026-02-01 A | HAL-E-SS-E-1050 | 100% |
| HAL-E-SA-E-1080 |  | FIRE ALARM RISER DIAGRAM | 2d | 2026-01-21 A | 2026-03-29 A | HAL-E-SS-E-1080 | 100% |
| HAL-E-SA-E-1160 |  | GROUND FLOOR GROUNDING PLAN | 2d | 2026-01-21 A | 2026-02-01 A | HAL-E-SS-E-1160 | 100% |
| HAL-E-SA-E-1090 |  | DATA & TELECOME RISER DIAGRAM | 2d | 2026-02-04 A | 2026-02-04 A | HAL-E-SS-E-1090 | 100% |
| HAL-E-SA-E-1100 |  | ACCESS CONTROL RISER DIAGRAM | 2d | 2026-02-04 A | 2026-02-04 A | HAL-E-SS-E-1100 | 100% |
| HAL-E-SA-E-1170 |  | RISER DIAGRAM | 2d | 2026-02-04 A | 2026-02-04 A | HAL-E-SS-E-1170 | 100% |
| HAL-E-SA-E-1010 |  | GOUND FLOOR ACCESS CONTROL | 2d | 2026-02-05 A | 2026-02-05 A | HAL-E-SS-E-1010 | 100% |
| HAL-E-SA-E-1120 |  | ELECTRICAL DETAILS | 2d | 2026-02-07 A | 2026-02-28 A | HAL-E-SS-E-1120 | 100% |
| HAL-E-SA-E-1180 |  | ELECTRICAL DETAILS | 2d | 2026-02-07 A | 2026-02-28 A | HAL-E-SS-E-1180 | 100% |
| HAL-E-SA-E-970 |  | ROOF FLOOR POWER | 1.5d | 2026-02-07 A | 2026-02-28 A | HAL-E-SS-E-970 | 100% |
| HAL-E-SA-E-980 |  | PV SYSTEM CALCULATION | 2d | 2026-02-07 A | 2026-02-28 A | HAL-E-SS-E-980 | 100% |
|  | 1 | **ROAD DRAWINGS** |  | 2025-12-11 | 2026-02-28 |  |  |

| ID | WBS | Task | Duration | Start | Finish | Predecessors | Complete |
| --- | --- | --- | --- | --- | --- | --- | --- |
| HAL-E-SA-R-780 |  | TOPOGRAPHIC SURVEY-CONTOURS MAP | 2d | 2025-12-11 A | 2025-12-13 A | HAL-E-SS-R-780 | 100% |
| HAL-E-SA-R-730 |  | GRADING LAYOUT PLAN | 2d | 2025-12-18 A | 2026-01-04 A | HAL-E-SS-R-730 | 100% |
| HAL-E-SA-R-740 |  | ROAD LAYOUT PLAN | 2d | 2026-01-14 A | 2026-01-22 A | HAL-E-SS-R-740 | 100% |
| HAL-E-SA-R-840 |  | ROAD STANDARD DETAILS-TYPICAL PAVEMENT DETAILS | 2d | 2026-01-14 A | 2026-01-18 A | HAL-E-SS-R-840 | 100% |
| HAL-E-SA-R-850 |  | ROAD STANDARD DETAILS-TYPICAL CURB DETAILS | 2d | 2026-01-14 A | 2026-01-18 A | HAL-E-SS-R-850 | 100% |
| HAL-E-SA-R-860 |  | ROAD STANDARD DETAILS-ROAD SIGN DETAILS | 2d | 2026-01-14 A | 2026-01-18 A | HAL-E-SS-R-860 | 100% |
| HAL-E-SA-R-870 |  | ROAD STANDARD DETAILS-ROAD MARKING DETAILS | 2d | 2026-01-14 A | 2026-01-18 A | HAL-E-SS-R-870 | 100% |
| HAL-E-SA-R-750 |  | TYPICAL CROSS SECTIONS - KEY PLAN | 2d | 2026-01-18 A | 2026-01-22 A | HAL-E-SS-R-750 | 100% |
| HAL-E-SA-R-760 |  | TYPICAL CROSS SECTIONS | 2d | 2026-01-18 A | 2026-01-22 A | HAL-E-SS-R-760 | 100% |
| HAL-E-SA-R-880 |  | GENERAL SITE PLAN - OVERALL | 2d | 2026-01-18 A | 2026-01-18 A | HAL-E-SS-R-880 | 100% |
| HAL-E-SA-R-890 |  | SITE SETTING-OUT PLAN - OVERALL | 2d | 2026-01-18 A | 2026-01-18 A | HAL-E-SS-R-890 | 100% |
| HAL-E-SA-R-770 |  | ROAD PROFILES | 2d | 2026-01-20 A | 2026-01-22 A | HAL-E-SS-R-770 | 100% |
| HAL-E-SA-R-800 |  | ALIGNMENT & CURB SETTING OUT TABLES | 2d | 2026-01-20 A | 2026-01-21 A | HAL-E-SS-R-800 | 100% |
| HAL-E-SA-R-810 |  | ALIGNMNET GEOMETRIC DATA | 2d | 2026-01-20 A | 2026-01-22 A | HAL-E-SS-R-810 | 100% |
| HAL-E-SA-R-920 |  | GENERAL SOFTSCAPE LAYOUT | 2d | 2026-01-20 A | 2026-01-20 A | HAL-E-SS-R-920 | 100% |
| HAL-E-SA-R-790 |  | ALIGNMENT & CURB SETTING OUT | 2d | 2026-01-21 A | 2026-01-21 A | HAL-E-SS-R-790 | 100% |
| HAL-E-SA-R-830 |  | SIGNING & MARKING LAYOUT PLAN | 1.5d | 2026-01-21 A | 2026-01-22 A | HAL-E-SS-R-830 | 100% |
| HAL-E-SA-R-900 |  | GENERAL LANDSCAPE LAYOUT | 2d | 2026-01-21 A | 2026-01-22 A | HAL-E-SS-R-900 | 100% |
| HAL-E-SA-R-910 |  | GENERAL HARDSCAPE LAYOUT | 4d | 2026-01-21 A | 2026-01-22 A | HAL-E-SS-R-910 | 100% |
| HAL-E-SA-R-930 |  | PUMP ROOM DETAILS | 2d | 2026-01-22 A | 2026-02-28 A | HAL-E-SS-R-930 | 100% |
| HAL-E-SA-R-820 |  | SWEPT PATH LAYOUT PLAN | 2d | 2026-02-04 A | 2026-02-07 A | HAL-E-SS-R-820 | 100% |
| HAL-E-SA-R-940 |  | GENERAL DETAILS | 2d | 2026-02-04 A | 2026-02-08 A | HAL-E-SS-R-940 | 100% |
| HAL-E-SA-R-950 |  | LANDSCAPE DETAILS | 2d | 2026-02-04 A | 2026-02-12 A | HAL-E-SS-R-950 | 100% |
| HAL-E-SA-R-960 |  | LANDSCAPE SCHEDULES | 2d | 2026-02-04 A | 2026-02-12 A | HAL-E-SS-R-960 | 100% |
|  | 6 | **EXTERNAL** |  | 2026-01-17 | 2026-03-29 |  |  |
| HAL-E-SA-EX-1000 |  | WASHOUT CHAMBER DETAILS | 2d | 2026-01-17 A | 2026-01-17 A | HAL-E-SA-EX-990 | 100% |
| HAL-E-SA-EX-1010 |  | AIR RELEASE VALVE CHAMBER DETAILS | 2d | 2026-01-17 A | 2026-01-17 A | HAL-E-SA-EX-1000 | 100% |
| HAL-E-SA-EX-1020 |  | THRUST BLOCK DETAILS (SHEET 1 OF 4) | 2d | 2026-01-17 A | 2026-01-17 A | HAL-E-SA-EX-1010 | 100% |
| HAL-E-SA-EX-1030 |  | THRUST BLOCK DETAILS (SHEET 2 OF 4) | 2d | 2026-01-17 A | 2026-01-17 A | HAL-E-SA-EX-1020 | 100% |
| HAL-E-SA-EX-1040 |  | THRUST BLOCK DETAILS (SHEET 3 OF 4) | 2d | 2026-01-17 A | 2026-01-17 A | HAL-E-SA-EX-1030 | 100% |
| HAL-E-SA-EX-1050 |  | THRUST BLOCK DETAILS (SHEET 4 OF 4) | 2d | 2026-01-17 A | 2026-01-17 A | HAL-E-SA-EX-1040, HAL-E-SS-EX-1050 | 100% |
| HAL-E-SA-EX-760 |  | DOUBLE VALVE CHAMBER DETAILS | 2d | 2026-01-17 A | 2026-01-17 A | HAL-E-SS-EX-760 | 100% |
| HAL-E-SA-EX-800 |  | FLOW METER REINFORCEMENT DETAILS | 4d | 2026-01-17 A | 2026-01-17 A | HAL-E-SS-EX-800 | 100% |
| HAL-E-SA-EX-810 |  | THRUST BLOCK DETAILS (SHEET 1 OF 4) | 4d | 2026-01-17 A | 2026-01-17 A | HAL-E-SS-EX-810 | 100% |
| HAL-E-SA-EX-820 |  | THRUST BLOCK DETAILS (SHEET 2 OF 4) | 2d | 2026-01-17 A | 2026-01-17 A | HAL-E-SA-EX-810, HAL-E-SS-EX-820 | 100% |
| HAL-E-SA-EX-830 |  | THRUST BLOCK DETAILS (SHEET 3 OF 4) | 4d | 2026-01-17 A | 2026-01-17 A | HAL-E-SS-EX-830 | 100% |
| HAL-E-SA-EX-840 |  | THRUST BLOCK DETAILS (SHEET 4 OF 4) | 4d | 2026-01-17 A | 2026-01-17 A | HAL-E-SS-EX-840 | 100% |
| HAL-E-SA-EX-870 |  | GENERAL NOTES | 2d | 2026-01-17 A | 2026-01-17 A | HAL-E-SS-EX-870 | 100% |
| HAL-E-SA-EX-880 |  | PIPE TRENCHES DETAILS (1) | 2d | 2026-01-17 A | 2026-01-17 A | HAL-E-SS-EX-880 | 100% |
| HAL-E-SA-EX-890 |  | PIPE TRENCHES DETAILS (2) | 2d | 2026-01-17 A | 2026-01-17 A | HAL-E-SS-EX-890 | 100% |
| HAL-E-SA-EX-910 |  | CAST IN PLACE MANHOLE DETAILS FOR DEPTH < 6000MM (TYPE-B) | 2d | 2026-01-17 A | 2026-01-17 A | HAL-E-SS-EX-910 | 100% |
| HAL-E-SA-EX-920 |  | BACKDROP DETAIL OF PRECAST MANHOLE DEPTH FROM 3000MM TO 6000MM | 2d | 2026-01-17 A | 2026-01-17 A | HAL-E-SS-EX-920 | 100% |
| HAL-E-SA-EX-940 |  | PRECAST MANHOLE DETAILS | 2d | 2026-01-17 A | 2026-01-17 A | HAL-E-SS-EX-940 | 100% |
| HAL-E-SA-EX-960 |  | PIPE TRENCH DETAILS | 2d | 2026-01-17 A | 2026-01-17 A | HAL-E-SS-EX-960, HAL-E-SA-EX-940, HAL-E-SA-EX-930, HAL-E-SA-EX-920, HAL-E-SA-EX-910, HAL-E-SA-EX-900 | 100% |
| HAL-E-SA-EX-970 |  | BURIED GATE VALVE DETAILS | 2d | 2026-01-17 A | 2026-01-17 A | HAL-E-SS-EX-970 | 100% |
| HAL-E-SA-EX-990 |  | DOUBLE VALVE CHAMBER DETAILS | 2d | 2026-01-17 A | 2026-01-17 A | HAL-E-SA-EX-980, HAL-E-SA-EX-950, HAL-E-SA-EX-960 | 100% |
| HAL-E-SA-EX-730 |  | PIPE TRENCH DETAILS | 1.5d | 2026-01-20 A | 2026-01-20 A | HAL-E-SS-EX-730 | 100% |
| HAL-E-SA-EX-740 |  | BURIED GATE VALVE DETAILS | 1.5d | 2026-01-20 A | 2026-01-20 A | HAL-E-SS-EX-740 | 100% |
| HAL-E-SA-EX-750 |  | SINGLE VALVE CHAMBER DETAILS | 1.5d | 2026-01-21 A | 2026-01-21 A | HAL-E-SS-EX-750 | 100% |
| HAL-E-SA-EX-770 |  | WASHOUT CHAMBER DETAILS | 2d | 2026-01-21 A | 2026-01-28 A | HAL-E-SS-EX-770 | 100% |
| HAL-E-SA-EX-780 |  | AIR RELEASE VALVE CHAMBER DETAILS | 2d | 2026-01-21 A | 2026-01-28 A | HAL-E-SS-EX-780 | 100% |
| HAL-E-SA-EX-900 |  | CAST IN PLACE MANHOLE DETAILS FOR DEPTH < 6000MM (TYPE-A) | 2d | 2026-01-21 A | 2026-01-28 A | HAL-E-SS-EX-900 | 100% |
| HAL-E-SA-EX-930 |  | BACKDROP DETAIL OF PRECAST MANHOLE DEPTH < 3000MM | 2d | 2026-01-21 A | 2026-01-28 A | HAL-E-SS-EX-930 | 100% |
| HAL-E-SA-EX-980 |  | SINGLE VALVE CHAMBER DETAILS | 2d | 2026-01-21 A | 2026-01-21 A | HAL-E-SA-EX-970 | 100% |
| HAL-E-SA-EX-690 |  | POTABLE WATER NETWORK | 2d | 2026-01-28 A | 2026-02-05 A | HAL-E-SS-EX-690 | 100% |
| HAL-E-SA-EX-700 |  | FIRE FIGHTING WATER NETWORK | 2d | 2026-01-28 A | 2026-02-05 A | HAL-E-SS-EX-700 | 100% |
| HAL-E-SA-EX-710 |  | POTABLE WATER NETWORK PROFILES | 1.62d | 2026-01-28 A | 2026-02-05 A | HAL-E-SS-EX-710 | 100% |
| HAL-E-SA-EX-720 |  | FIRE FIGHTING NETWORK PROFILE | 1.5d | 2026-01-28 A | 2026-02-05 A | HAL-E-SS-EX-720 | 100% |
| HAL-E-SA-EX-790 |  | FLOW METER DETAILS | 2d | 2026-01-28 A | 2026-02-05 A | HAL-E-SS-EX-790 | 100% |
| HAL-E-SA-EX-850 |  | SEWAGE NETWORK | 2d | 2026-01-28 A | 2026-02-05 A | HAL-E-SS-EX-850 | 100% |
| HAL-E-SA-EX-860 |  | SEWAGE NETWORK PROFILES | 2d | 2026-01-28 A | 2026-02-05 A | HAL-E-SS-EX-860 | 100% |
| HAL-E-SA-EX-950 |  | IRRIGATION NETWORK LAYOUT SHEET 1 OF 1 | 2d | 2026-01-28 A | 2026-03-29 A | HAL-E-SS-EX-950 | 100% |
|  | 4 | **PRE QUALIFACTION FOR MATERIALS** |  | 2025-12-08 | 2026-03-29 |  |  |
|  | 1 | **PREPARATION AND SUBMITTAL** |  | 2025-12-16 | 2026-03-15 |  |  |
|  | 6 | **STRUCTURAL** |  | 2025-12-16 | 2026-01-03 |  |  |
| HAL-E-PS-C-0020 |  | Concrete mix | 2d | 2025-12-16 A | 2025-12-16 A | HAL-E-PS-C-0010 | 100% |
| HAL-E-PS-C-0030 |  | Polyethylene sheet | 2d | 2025-12-29 A | 2025-12-29 A | HAL-E-PS-C-0020 | 100% |
| HAL-E-PS-C-0040 |  | Bitumen paint | 2d | 2025-12-29 A | 2025-12-29 A | HAL-E-PS-C-0030 | 100% |
| HAL-E-PS-C-0050 |  | Rebar | 2d | 2025-12-29 A | 2025-12-29 A | HAL-E-PS-C-0040 | 100% |
| HAL-E-PS-C-0010 |  | Anti termite | 2d | 2026-01-03 A | 2026-01-03 A | HAL-MOB-SO.0016 | 100% |

| ID | WBS | Task | Duration | Start | Finish | Predecessors | Complete |
| --- | --- | --- | --- | --- | --- | --- | --- |
|  | 1 | **ARCHITECTURAL** |  | 2025-12-18 | 2026-03-15 |  |  |
| HAL-E-PS-A-0020 |  | PES -Steel Structure | 2d | 2025-12-18 A | 2025-12-18 A | HAL-E-PS-C-0010, HAL-E-PS-C-0050 | 100% |
| HAL-E-PS-A-0050 |  | Steel ladder | 2d | 2025-12-18 A | 2025-12-18 A | HAL-E-PS-A-0040 | 100% |
| HAL-E-PS-A-0120 |  | Doors | 2d | 2026-01-03 A | 2026-01-03 A | HAL-E-PS-A-0070 | 100% |
| HAL-E-PS-A-0180 |  | Internl paint | 2d | 2026-01-08 A | 2026-01-08 A | HAL-E-PS-A-0170 | 100% |
| HAL-E-PS-A-0060 |  | Steel gratings | 2d | 2026-02-05 A | 2026-02-05 A | HAL-E-PS-A-0050 | 100% |
| HAL-E-PS-A-0070 |  | Steel rails | 2d | 2026-02-05 A | 2026-02-05 A | HAL-E-PS-A-0060 | 100% |
| HAL-E-PS-A-0190 |  | Gypsum board | 2d | 2026-02-05 A | 2026-02-05 A | HAL-E-PS-A-0180 | 100% |
| HAL-E-PS-A-0130 |  | Windows | 2d | 2026-02-09 A | 2026-02-09 A | HAL-E-PS-A-0120 | 100% |
| HAL-E-PS-A-0200 |  | Aluminum Composite Panel | 1.12d | 2026-02-09 A | 2026-02-09 A | HAL-E-PS-A-0190 | 100% |
| HAL-E-PS-A-0140 |  | Ceramic tiles | 2d | 2026-02-26 A | 2026-02-26 A | HAL-E-PS-A-0130 | 100% |
| HAL-E-PS-A-0150 |  | Granite strip | 2d | 2026-02-26 A | 2026-02-26 A | HAL-E-PS-A-0140 | 100% |
| HAL-E-PS-A-0040 |  | Concrete masonry unit (CMU) | 2d | 2026-03-15 A | 2026-03-15 A | HAL-E-PS-C-0020 | 100% |
| HAL-E-PS-A-0170 |  | Epoxy paint | 2d | 2026-03-15 A | 2026-03-15 A | HAL-E-PS-A-0150 | 100% |
| HAL-E-PS-A-0230 |  | Steel fence and gates | 2d | 2026-03-15 A | 2026-03-15 A | HAL-E-PS-A-0200 | 100% |
| HAL-E-PS-A-0240 |  | Identification sign; ID01 & ID02 | 2d | 2026-03-15 A | 2026-03-15 A | HAL-E-PS-A-0230 | 100% |
|  | 2 | **MECHANICAL** |  | 2025-12-24 | 2026-01-29 |  |  |
| HAL-E-PS-M-0030 |  | PPR pipes | 2d | 2025-12-24 A | 2025-12-24 A | HAL-E-PS-M-0010 | 100% |
| HAL-E-PS-M-0150 |  | Capped connection | 2d | 2025-12-24 A | 2025-12-24 A | HAL-E-PS-M-0140 | 100% |
| HAL-E-PS-M-0160 |  | UPVC pipes | 2d | 2025-12-24 A | 2025-12-24 A | HAL-E-PS-M-0150 | 100% |
| HAL-E-PS-M-0210 |  | Western water closet | 2d | 2025-12-24 A | 2025-12-24 A | HAL-E-PS-M-0200 | 100% |
| HAL-E-PS-M-0240 |  | Lavatory / wash basin | 1.12d | 2025-12-24 A | 2025-12-24 A | HAL-E-PS-M-0230 | 100% |
| HAL-E-PS-M-0270 |  | Fire pumps | 2d | 2025-12-27 A | 2025-12-27 A | HAL-E-PS-M-0260 | 100% |
| HAL-E-PS-M-0320 |  | Booster pump | 2d | 2025-12-27 A | 2025-12-27 A | HAL-E-PS-M-0280 | 100% |
| HAL-E-PS-M-0070 |  | U/G HDPE pipes | 2d | 2025-12-28 A | 2025-12-28 A | HAL-E-PS-M-0060 | 100% |
| HAL-E-PS-M-0330 |  | GRP tank | 2d | 2025-12-28 A | 2025-12-28 A | HAL-E-PS-M-0320 | 100% |
| HAL-E-PS-M-0190 |  | Gully trap | 2d | 2025-12-30 A | 2025-12-30 A | HAL-E-PS-M-0180 | 100% |
| HAL-E-PS-M-0080 |  | Warning tapes | 2d | 2026-01-01 A | 2026-01-01 A | HAL-E-PS-M-0060 | 100% |
| HAL-E-PS-M-0200 |  | Electric water heater | 2d | 2026-01-03 A | 2026-01-03 A | HAL-E-PS-M-0190 | 100% |
| HAL-E-PS-M-0140 |  | Ball valve | 2d | 2026-01-05 A | 2026-01-05 A | HAL-E-PS-M-0120 | 100% |
| HAL-E-PS-M-0340 |  | Water supply valves | 2d | 2026-01-07 A | 2026-01-07 A | HAL-E-PS-M-0330 | 100% |
| HAL-E-PS-M-0010 |  | Seamless black steel or ERW pipes | 2d | 2026-01-08 A | 2026-01-08 A | HAL-E-PS-C-0020 | 100% |
| HAL-E-PS-M-0230 |  | Toilet Fittings | 2d | 2026-01-08 A | 2026-01-08 A | HAL-E-PS-M-0220 | 100% |
| HAL-E-PS-M-0220 |  | Bib tap | 2d | 2026-01-11 A | 2026-01-11 A | HAL-E-PS-M-0210 | 100% |
| HAL-E-PS-M-0350 |  | Water tap | 2d | 2026-01-11 A | 2026-01-11 A | HAL-E-PS-M-0340 | 100% |
| HAL-E-PS-M-0170 |  | Roof vent caps | 2d | 2026-01-12 A | 2026-01-12 A | HAL-E-PS-M-0160 | 100% |
| HAL-E-PS-M-0180 |  | Floor drain | 2d | 2026-01-12 A | 2026-01-12 A | HAL-E-PS-M-0170 | 100% |
| HAL-E-PS-M-0090 |  | Fire hose cabinet | 2d | 2026-01-14 A | 2026-01-14 A | HAL-E-PS-M-0070 | 100% |
| HAL-E-PS-M-0100 |  | Automatic air release valve | 2d | 2026-01-19 A | 2026-01-19 A | HAL-E-PS-M-0090 | 100% |
| HAL-E-PS-M-0110 |  | OS & Y gate valve | 2d | 2026-01-19 A | 2026-01-19 A | HAL-E-PS-M-0100 | 100% |
| HAL-E-PS-M-0120 |  | Fire alarm check valve | 2d | 2026-01-19 A | 2026-01-19 A | HAL-E-PS-M-0110 | 100% |
| HAL-E-PS-M-0280 |  | Fire fighting valves | 2d | 2026-01-19 A | 2026-01-19 A | HAL-E-PS-M-0270 | 100% |
| HAL-E-PS-M-0060 |  | Exhaust diffuser | 2d | 2026-01-27 A | 2026-01-27 A | HAL-E-PS-M-0050 | 100% |
| HAL-E-PS-M-0040 |  | HVAC duct | 2d | 2026-01-28 A | 2026-01-28 A | HAL-E-PS-M-0030 | 100% |
| HAL-E-PS-M-0050 |  | Flexible duct | 2d | 2026-01-28 A | 2026-01-28 A | HAL-E-PS-M-0040 | 100% |
| HAL-E-PS-M-0250 |  | Inline exhaust fans | 2d | 2026-01-29 A | 2026-01-29 A | HAL-E-PS-M-0240 | 100% |
| HAL-E-PS-M-0260 |  | Wall propeller type exhaust fans | 2d | 2026-01-29 A | 2026-01-29 A | HAL-E-PS-M-0250 | 100% |
|  | 3 | **ELECTRICAL** |  | 2025-12-21 | 2026-03-15 |  |  |
| HAL-E-PS-E-0010 |  | PVC conduits | 2d | 2025-12-21 A | 2025-12-21 A | HAL-E-PS-M-0010 | 100% |
| HAL-E-PS-E-0070 |  | Low Voltage cables | 2d | 2025-12-24 A | 2025-12-24 A | HAL-E-PS-E-0060 | 100% |
| HAL-E-PS-E-0020 |  | Wires | 2d | 2026-01-01 A | 2026-01-01 A | HAL-E-PS-E-0010 | 100% |
| HAL-E-PS-E-0030 |  | Cable Tray | 2d | 2026-01-03 A | 2026-01-03 A | HAL-E-PS-E-0020 | 100% |
| HAL-E-PS-E-0050 |  | Wiring devices | 2d | 2026-01-03 A | 2026-01-03 A | HAL-E-PS-E-0040 | 100% |
| HAL-E-PS-E-0060 |  | HDPE ducts | 2d | 2026-01-03 A | 2026-01-03 A | HAL-E-PS-E-0050 | 100% |
| HAL-E-PS-E-0250 |  | Solar system | 2d | 2026-01-03 A | 2026-01-03 A | HAL-E-PS-E-0240 | 100% |
| HAL-E-PS-E-0120 |  | Suspended High Bay LED lights | 2d | 2026-01-11 A | 2026-01-11 A | HAL-E-PS-E-0110 | 100% |
| HAL-E-PS-E-0130 |  | Flood lights | 2d | 2026-01-11 A | 2026-01-11 A | HAL-E-PS-E-0120 | 100% |
| HAL-E-PS-E-0140 |  | Recessed mounted LED downlight | 2d | 2026-01-11 A | 2026-01-11 A | HAL-E-PS-E-0130 | 100% |
| HAL-E-PS-E-0150 |  | LED Emergency Lights wall mounted | 2d | 2026-01-11 A | 2026-01-11 A | HAL-E-PS-E-0140 | 100% |
| HAL-E-PS-E-0160 |  | LED Emergency Exit Light | 2d | 2026-01-11 A | 2026-01-11 A | HAL-E-PS-E-0150, HAL-E-SS-R-900 | 100% |
| HAL-E-PS-E-0200 |  | Street Lighting poles | 4d | 2026-01-11 A | 2026-01-11 A | HAL-E-PS-E-0180, HAL-E-SS-C-890 | 100% |
| HAL-E-PS-E-0220 |  | Surface mounted lights | 2d | 2026-01-11 A | 2026-01-11 A | HAL-E-PS-E-0210 | 100% |
| HAL-E-PS-E-0180 |  | Fire alarm system | 2d | 2026-01-19 A | 2026-01-20 A | HAL-E-PS-E-0170, HAL-E-PS-M-0210 | 100% |
| HAL-E-PS-E-0040 |  | Grounding system | 2d | 2026-01-24 A | 2026-01-24 A | HAL-E-PS-E-0030 | 100% |
| HAL-E-PS-E-0170 |  | Wall mounted, duplex, telephone and data outlet | 2d | 2026-01-24 A | 2026-01-24 A | HAL-E-PS-E-0160 | 100% |
| HAL-E-PS-E-0230 |  | CCTV System | 2d | 2026-01-24 A | 2026-01-24 A | HAL-E-PS-E-0220, HAL-E-SS-M-680, HAL-E-SS-EX-780 | 100% |
| HAL-E-PS-E-0240 |  | Access control system | 1.62d | 2026-02-02 A | 2026-02-02 A | HAL-E-PS-E-0230, HAL-E-SS-R-960 | 100% |
| HAL-E-PS-E-0260 |  | Main program system & controller | 2d | 2026-02-04 A | 2026-02-04 A | HAL-E-PS-E-0250 | 100% |
| HAL-E-PS-E-0270 |  | PLC controller | 2d | 2026-02-04 A | 2026-02-04 A | HAL-E-PS-E-0260 | 100% |
| HAL-E-PS-E-0080 |  | Main distribution board (MDB) | 2d | 2026-02-12 A | 2026-02-14 A | HAL-E-PS-E-0070 | 100% |

| ID | WBS | Task | Duration | Start | Finish | Predecessors | Complete |
| --- | --- | --- | --- | --- | --- | --- | --- |
| HAL-E-PS-E-0090 |  | Lighting panel board | 5d | 2026-02-12 A | 2026-02-14 A | HAL-E-PS-E-0080 | 100% |
| HAL-E-PS-E-0100 |  | PP-AC panel | 2d | 2026-02-12 A | 2026-02-14 A | HAL-E-PS-E-0090 | 100% |
| HAL-E-PS-E-0210 |  | Distribution board for pump room | 2d | 2026-02-12 A | 2026-02-14 A | HAL-E-PS-E-0200 | 100% |
| HAL-E-PS-E-0110 |  | Disconnect switches | 2d | 2026-03-15 A | 2026-03-15 A | HAL-E-PS-E-0100 | 100% |
|  | 4 | **EXTERNAL** |  | 2026-03-02 | 2026-03-15 |  |  |
| HAL-E-PS-EX-0010 |  | Asphalt works | 2d | 2026-03-02 A | 2026-03-02 A | HAL-E-PS-E-0220 | 100% |
| HAL-E-PS-EX-0030 |  | Road markings | 2d | 2026-03-09 A | 2026-03-09 A | HAL-E-PS-EX-0020 | 100% |
| HAL-E-PS-EX-0040 |  | Road signs | 2d | 2026-03-09 A | 2026-03-09 A | HAL-E-PS-EX-0030 | 100% |
| HAL-E-PS-EX-0020 |  | Concrete parking bumper | 2d | 2026-03-15 A | 2026-03-15 A | HAL-E-PS-EX-0010 | 100% |
| HAL-E-PS-EX-0060 |  | Interlock tiles | 2d | 2026-03-15 A | 2026-03-15 A | HAL-E-PS-EX-0040 | 100% |
| HAL-E-PS-EX-0070 |  | Curbstones | 2d | 2026-03-15 A | 2026-03-15 A | HAL-E-PS-EX-0060 | 100% |
| HAL-E-PS-EX-0080 |  | Gravel bedding | 2d | 2026-03-15 A | 2026-03-15 A | HAL-E-PS-EX-0070 | 100% |
|  | 5 | **ENVIRONMETAL** |  | 2025-12-24 | 2025-12-28 |  |  |
| HAL-E-PS-EN-0020 |  | Directly buried gate valve for fire system | 2d | 2025-12-24 A | 2025-12-24 A | HAL-E-PS-EN-0010 | 100% |
| HAL-E-PS-EN-0040 |  | Directly buried gate valve for water system | 2d | 2025-12-24 A | 2025-12-24 A | HAL-E-PS-EN-0030 | 100% |
| HAL-E-PS-EN-0050 |  | Air valve | 2d | 2025-12-24 A | 2025-12-24 A | HAL-E-PS-EN-0040 | 100% |
| HAL-E-PS-EN-0060 |  | Washout valve | 2d | 2025-12-24 A | 2025-12-24 A | HAL-E-PS-EN-0050 | 100% |
| HAL-E-PS-EN-0070 |  | Gate valve | 2d | 2025-12-24 A | 2025-12-24 A | HAL-E-PS-EN-0060 | 100% |
| HAL-E-PS-EN-0080 |  | GRP pipes | 2d | 2025-12-24 A | 2025-12-24 A | HAL-E-PS-EN-0070 | 100% |
| HAL-E-PS-EN-0010 |  | HDPE pipes for fire system | 2d | 2025-12-28 A | 2025-12-28 A | HAL-E-PS-M-0010 | 100% |
| HAL-E-PS-EN-0030 |  | HDPE pipes for water supply system | 2d | 2025-12-28 A | 2025-12-28 A | HAL-E-PS-EN-0020 | 100% |
|  | 2 | **REVIEW AND APPROVAL** |  | 2025-12-08 | 2026-03-29 |  |  |
|  | 6 | **STRUCTURAL** |  | 2025-12-16 | 2026-01-04 |  |  |
| HAL-E-PA-C-0020 |  | Concrete mix | 5d | 2025-12-16 A | 2025-12-17 A | HAL-E-PS-C-0020 | 100% |
| HAL-E-PA-C-0030 |  | Polyethylene sheet | 2d | 2025-12-29 A | 2025-12-30 A | HAL-E-PS-C-0030 | 100% |
| HAL-E-PA-C-0040 |  | Bitumen paint | 2d | 2025-12-29 A | 2025-12-30 A | HAL-E-PS-C-0040 | 100% |
| HAL-E-PA-C-0050 |  | Rebar | 2d | 2025-12-29 A | 2025-12-30 A | HAL-E-PS-C-0050 | 100% |
| HAL-E-PA-C-0010 |  | Anti termite | 5d | 2026-01-03 A | 2026-01-04 A | HAL-E-PS-C-0010 | 100% |
|  | 1 | **ARCHITECTURAL** |  | 2025-12-18 | 2026-03-29 |  |  |
| HAL-E-PA-A-0020 |  | PES -Steel Structure | 2d | 2025-12-18 A | 2025-12-20 A | HAL-E-PS-A-0020 | 100% |
| HAL-E-PA-A-0050 |  | Steel ladder | 2d | 2025-12-18 A | 2025-12-20 A | HAL-E-PS-A-0050 | 100% |
| HAL-E-PA-A-0120 |  | Doors | 2d | 2026-01-03 A | 2026-01-04 A | HAL-E-PS-A-0120 | 100% |
| HAL-E-PA-A-0180 |  | Internl paint | 2d | 2026-01-08 A | 2026-01-10 A | HAL-E-PS-A-0180 | 100% |
| HAL-E-PA-A-0060 |  | Steel gratings | 2d | 2026-02-05 A | 2026-03-29 A | HAL-E-PS-A-0060 | 100% |
| HAL-E-PA-A-0070 |  | Steel rails | 2d | 2026-02-05 A | 2026-03-29 A | HAL-E-PS-A-0070 | 100% |
| HAL-E-PA-A-0190 |  | Gypsum board | 2d | 2026-02-05 A | 2026-02-07 A | HAL-E-PS-A-0190 | 100% |
| HAL-E-PA-A-0130 |  | Windows | 2d | 2026-02-09 A | 2026-03-21 A | HAL-E-PS-A-0130 | 100% |
| HAL-E-PA-A-0200 |  | Aluminum Composite Panel | 2.62d | 2026-02-09 A | 2026-02-21 A | HAL-E-PS-A-0200 | 100% |
| HAL-E-PA-A-0140 |  | Ceramic tiles | 2d | 2026-02-26 A | 2026-03-03 A | HAL-E-PS-A-0140 | 100% |
| HAL-E-PA-A-0150 |  | Granite strip | 2d | 2026-02-26 A | 2026-03-03 A | HAL-E-PS-A-0150 | 100% |
| HAL-E-PA-A-0040 |  | Concrete masonry unit (CMU) | 2d | 2026-03-15 A | 2026-03-29 A | HAL-E-PS-A-0040 | 100% |
| HAL-E-PA-A-0170 |  | Epoxy paint | 2d | 2026-03-15 A | 2026-03-29 A | HAL-E-PS-A-0170 | 100% |
| HAL-E-PA-A-0230 |  | Steel fence and gates | 2d | 2026-03-15 A | 2026-03-29 A | HAL-E-PS-A-0230 | 100% |
| HAL-E-PA-A-0240 |  | Identification sign; ID01 & ID02 | 2d | 2026-03-15 A | 2026-03-29 A | HAL-E-PS-A-0240 | 100% |
|  | 2 | **MECHANICAL** |  | 2025-12-08 | 2026-01-31 |  |  |
| HAL-E-PA-M-0010 |  | Seamless black steel or ERW pipes | 2d | 2025-12-08 A | 2026-01-10 A | HAL-E-PS-M-0010 | 100% |
| HAL-E-PA-M-0030 |  | PPR pipes | 2d | 2025-12-24 A | 2025-12-25 A | HAL-E-PS-M-0030 | 100% |
| HAL-E-PA-M-0150 |  | Capped connection | 2d | 2025-12-24 A | 2025-12-25 A | HAL-E-PS-M-0150 | 100% |
| HAL-E-PA-M-0160 |  | UPVC pipes | 2d | 2025-12-24 A | 2025-12-25 A | HAL-E-PS-M-0160 | 100% |
| HAL-E-PA-M-0210 |  | Western water closet | 2d | 2025-12-24 A | 2025-12-25 A | HAL-E-PS-M-0210 | 100% |
| HAL-E-PA-M-0240 |  | Lavatory / wash basin | 2d | 2025-12-24 A | 2025-12-25 A | HAL-E-PS-M-0240 | 100% |
| HAL-E-PA-M-0270 |  | Fire pumps | 2d | 2025-12-27 A | 2025-12-28 A | HAL-E-PS-M-0270 | 100% |
| HAL-E-PA-M-0330 |  | Booster pump | 2d | 2025-12-27 A | 2025-12-28 A | HAL-E-PS-M-0320 | 100% |
| HAL-E-PA-M-0070 |  | U/G HDPE pipes | 2d | 2025-12-28 A | 2025-12-29 A | HAL-E-PS-M-0070 | 100% |
| HAL-E-PA-M-0340 |  | GRP tank | 2d | 2025-12-28 A | 2025-12-31 A | HAL-E-PS-M-0330 | 100% |
| HAL-E-PA-M-0190 |  | Gully trap | 2d | 2025-12-30 A | 2025-12-31 A | HAL-E-PS-M-0190 | 100% |
| HAL-E-PA-M-0080 |  | Warning tapes | 2d | 2026-01-01 A | 2026-01-04 A | HAL-E-PS-M-0080 | 100% |
| HAL-E-PA-M-0200 |  | Electric water heater | 2d | 2026-01-03 A | 2026-01-04 A | HAL-E-PS-M-0200 | 100% |
| HAL-E-PA-M-0140 |  | Ball valve | 2d | 2026-01-05 A | 2026-01-06 A | HAL-E-PS-M-0140 | 100% |
| HAL-E-PA-M-0350 |  | Water supply valves | 2d | 2026-01-07 A | 2026-01-08 A | HAL-E-PS-M-0340 | 100% |
| HAL-E-PA-M-0230 |  | Toilet Fittings | 2d | 2026-01-08 A | 2026-01-10 A | HAL-E-PS-M-0230 | 100% |
| HAL-E-PA-M-0220 |  | Bib tap | 2d | 2026-01-11 A | 2026-01-12 A | HAL-E-PS-M-0220 | 100% |
| HAL-E-PA-M-0320 |  | Water tap | 2d | 2026-01-11 A | 2026-01-12 A | HAL-E-PS-M-0350 | 100% |
| HAL-E-PA-M-0170 |  | Roof vent caps | 2d | 2026-01-12 A | 2026-01-13 A | HAL-E-PS-M-0170 | 100% |
| HAL-E-PA-M-0180 |  | Floor drain | 2d | 2026-01-12 A | 2026-01-13 A | HAL-E-PS-M-0180 | 100% |
| HAL-E-PA-M-0090 |  | Fire hose cabinet | 2d | 2026-01-14 A | 2026-01-15 A | HAL-E-PS-M-0090 | 100% |
| HAL-E-PA-M-0100 |  | Automatic air release valve | 2d | 2026-01-19 A | 2026-01-19 A | HAL-E-PS-M-0100 | 100% |
| HAL-E-PA-M-0110 |  | OS & Y gate valve | 2d | 2026-01-19 A | 2026-01-19 A | HAL-E-PS-M-0110 | 100% |
| HAL-E-PA-M-0120 |  | Fire alarm check valve | 2d | 2026-01-19 A | 2026-01-19 A | HAL-E-PS-M-0120 | 100% |
| HAL-E-PA-M-0280 |  | Fire fighting valves | 2d | 2026-01-19 A | 2026-01-19 A | HAL-E-PS-M-0280 | 100% |

| ID | WBS | Task | Duration | Start | Finish | Predecessors | Complete |
| --- | --- | --- | --- | --- | --- | --- | --- |
| HAL-E-PA-M-0060 |  | Exhaust diffuser | 2d | 2026-01-27 A | 2026-01-28 A | HAL-E-PS-M-0060 | 100% |
| HAL-E-PA-M-0040 |  | HVAC duct | 2d | 2026-01-28 A | 2026-01-29 A | HAL-E-PS-M-0040 | 100% |
| HAL-E-PA-M-0050 |  | Flexible duct | 2d | 2026-01-28 A | 2026-01-29 A | HAL-E-PS-M-0050 | 100% |
| HAL-E-PA-M-0250 |  | Inline exhaust fans | 2d | 2026-01-29 A | 2026-01-31 A | HAL-E-PS-M-0250 | 100% |
| HAL-E-PA-M-0260 |  | Wall propeller type exhaust fans | 2d | 2026-01-29 A | 2026-01-31 A | HAL-E-PS-M-0260 | 100% |
|  | 3 | **ELECTRICAL** |  | 2025-12-21 | 2026-03-29 |  |  |
| HAL-E-PA-E-0010 |  | PVC conduits | 2d | 2025-12-21 A | 2025-12-22 A | HAL-E-PS-E-0010 | 100% |
| HAL-E-PA-E-0070 |  | Low Voltage cables | 2d | 2025-12-24 A | 2025-12-25 A | HAL-E-PS-E-0070 | 100% |
| HAL-E-PA-E-0020 |  | Wires | 2d | 2026-01-01 A | 2026-01-03 A | HAL-E-PS-E-0020 | 100% |
| HAL-E-PA-E-0030 |  | Cable Tray | 2d | 2026-01-03 A | 2026-01-04 A | HAL-E-PS-E-0030 | 100% |
| HAL-E-PA-E-0050 |  | Wiring devices | 2d | 2026-01-03 A | 2026-01-04 A | HAL-E-PS-E-0050 | 100% |
| HAL-E-PA-E-0060 |  | HDPE ducts | 2d | 2026-01-03 A | 2026-01-04 A | HAL-E-PS-E-0060 | 100% |
| HAL-E-PA-E-0250 |  | Solar system | 2d | 2026-01-03 A | 2026-01-04 A | HAL-E-PS-E-0250 | 100% |
| HAL-E-PA-E-0120 |  | Suspended High Bay LED lights | 2d | 2026-01-11 A | 2026-01-12 A | HAL-E-PS-E-0120 | 100% |
| HAL-E-PA-E-0130 |  | Flood lights | 2d | 2026-01-11 A | 2026-01-12 A | HAL-E-PS-E-0130 | 100% |
| HAL-E-PA-E-0140 |  | Recessed mounted LED downlight | 2d | 2026-01-11 A | 2026-01-12 A | HAL-E-PS-E-0140 | 100% |
| HAL-E-PA-E-0150 |  | LED Emergency Lights wall mounted | 2d | 2026-01-11 A | 2026-01-12 A | HAL-E-PS-E-0150 | 100% |
| HAL-E-PA-E-0160 |  | LED Emergency Exit Light | 2d | 2026-01-11 A | 2026-01-12 A | HAL-E-PS-E-0160 | 100% |
| HAL-E-PA-E-0200 |  | Street Lighting poles | 2d | 2026-01-11 A | 2026-01-12 A | HAL-E-PS-E-0200 | 100% |
| HAL-E-PA-E-0220 |  | Surface mounted lights | 2d | 2026-01-11 A | 2026-01-12 A | HAL-E-PS-E-0220 | 100% |
| HAL-E-PA-E-0180 |  | Fire alarm system | 2d | 2026-01-20 A | 2026-01-20 A | HAL-E-PS-E-0180 | 100% |
| HAL-E-PA-E-0170 |  | Wall mounted, duplex, telephone and data outlet | 2d | 2026-01-24 A | 2026-03-29 A | HAL-E-PS-E-0170 | 100% |
| HAL-E-PA-E-0230 |  | CCTV System | 2d | 2026-01-24 A | 2026-02-04 A | HAL-E-PS-E-0230 | 100% |
| HAL-E-PA-E-0040 |  | Grounding system | 2d | 2026-01-24 A | 2026-01-25 A | HAL-E-PS-E-0040 | 100% |
| HAL-E-PA-E-0240 |  | Access control system | 2d | 2026-02-02 A | 2026-02-03 A | HAL-E-PS-E-0240 | 100% |
| HAL-E-PA-E-0260 |  | Main program system & controller | 2d | 2026-02-04 A | 2026-02-05 A | HAL-E-PS-E-0260 | 100% |
| HAL-E-PA-E-0270 |  | PLC controller | 2d | 2026-02-04 A | 2026-02-05 A | HAL-E-PS-E-0270 | 100% |
| HAL-E-PA-E-0080 |  | Main distribution board (MDB) | 2d | 2026-02-14 A | 2026-02-14 A | HAL-E-PS-E-0080 | 100% |
| HAL-E-PA-E-0090 |  | Lighting panel board | 2d | 2026-02-14 A | 2026-02-14 A | HAL-E-PS-E-0090 | 100% |
| HAL-E-PA-E-0100 |  | PP-AC panel | 2d | 2026-02-14 A | 2026-02-14 A | HAL-E-PS-E-0100 | 100% |
| HAL-E-PA-E-0210 |  | Distribution board for pump room | 2d | 2026-02-14 A | 2026-02-14 A | HAL-E-PS-E-0210 | 100% |
| HAL-E-PA-E-0110 |  | Disconnect switches | 2d | 2026-03-15 A | 2026-03-29 A | HAL-E-PS-E-0110 | 100% |
|  | 4 | **EXTERNAL** |  | 2026-03-02 | 2026-03-29 |  |  |
| HAL-E-PA-EX-0010 |  | Asphalt works | 2d | 2026-03-02 A | 2026-03-02 A | HAL-E-PS-EX-0010 | 100% |
| HAL-E-PA-EX-0030 |  | Road markings | 2d | 2026-03-09 A | 2026-03-10 A | HAL-E-PS-EX-0030 | 100% |
| HAL-E-PA-EX-0040 |  | Road signs | 2d | 2026-03-09 A | 2026-03-10 A | HAL-E-PS-EX-0040 | 100% |
| HAL-E-PA-EX-0020 |  | Concrete parking bumper | 2d | 2026-03-15 A | 2026-03-29 A | HAL-E-PS-EX-0020 | 100% |
| HAL-E-PA-EX-0060 |  | Interlock tiles | 2d | 2026-03-15 A | 2026-03-29 A | HAL-E-PS-EX-0060 | 100% |
| HAL-E-PA-EX-0070 |  | Curbstones | 2d | 2026-03-15 A | 2026-03-29 A | HAL-E-PS-EX-0070 | 100% |
| HAL-E-PA-EX-0080 |  | Gravel bedding | 2d | 2026-03-15 A | 2026-03-29 A | HAL-E-PS-EX-0080 | 100% |
|  | 5 | **ENVIRONMETAL** |  | 2025-12-28 | 2025-12-29 |  |  |
| HAL-E-PA-EN-0010 |  | HDPE pipes for fire system | 2d | 2025-12-28 A | 2025-12-29 A | HAL-E-PS-EN-0010 | 100% |
| HAL-E-PA-EN-0020 |  | Directly buried gate valve for fire system | 2d | 2025-12-28 A | 2025-12-29 A | HAL-E-PS-EN-0020 | 100% |
| HAL-E-PA-EN-0030 |  | HDPE pipes for water supply system | 2d | 2025-12-28 A | 2025-12-29 A | HAL-E-PS-EN-0030 | 100% |
| HAL-E-PA-EN-0040 |  | Directly buried gate valve for water system | 2d | 2025-12-28 A | 2025-12-29 A | HAL-E-PS-EN-0040 | 100% |
| HAL-E-PA-EN-0050 |  | Air valve | 2d | 2025-12-28 A | 2025-12-29 A | HAL-E-PS-EN-0050 | 100% |
| HAL-E-PA-EN-0060 |  | Washout valve | 2d | 2025-12-28 A | 2025-12-29 A | HAL-E-PS-EN-0060 | 100% |
| HAL-E-PA-EN-0070 |  | Gate valve | 2d | 2025-12-28 A | 2025-12-29 A | HAL-E-PS-EN-0070 | 100% |
| HAL-E-PA-EN-0080 |  | GRP pipes | 2d | 2025-12-28 A | 2025-12-29 A | HAL-E-PS-EN-0080 | 100% |
|  | 2 | **MATERIAL SUBMITTAL** |  | 2025-12-18 | 2026-08-16 |  |  |
|  | 1 | **PREPARATION AND SUBMITTAL** |  | 2025-12-18 | 2026-08-15 |  |  |
|  | 6 | **STRUCTURAL** |  | 2025-12-18 | 2026-01-05 |  |  |
| HAL-E-MS-C-0020 |  | Concrete mix | 2d | 2025-12-18 A | 2025-12-18 A | HAL-E-PA-C-0020 | 100% |
| HAL-E-MS-C-0030 |  | Polyethylene sheet | 2d | 2025-12-31 A | 2025-12-31 A | HAL-E-PA-C-0030 | 100% |
| HAL-E-MS-C-0040 |  | Bitumen paint | 2d | 2025-12-31 A | 2025-12-31 A | HAL-E-PA-C-0040 | 100% |
| HAL-E-MS-C-0050 |  | Rebar | 2d | 2025-12-31 A | 2025-12-31 A | HAL-E-PA-C-0050 | 100% |
| HAL-E-MS-C-0010 |  | Anti termite | 2d | 2026-01-05 A | 2026-01-05 A | HAL-E-PA-C-0010 | 100% |
|  | 1 | **ARCHITECTURAL** |  | 2025-12-21 | 2026-03-24 |  |  |
| HAL-E-MS-A-0030 |  | Steel ladder | 2d | 2025-12-21 A | 2026-01-01 A | HAL-E-PA-A-0050 | 100% |
| HAL-E-MS-A-1700 |  | PES -Steel Structure | 2d | 2025-12-21 A | 2026-01-01 A | HAL-E-PA-A-0020 | 100% |
| HAL-E-MS-A-0100 |  | Doors | 2d | 2026-01-05 A | 2026-01-05 A | HAL-E-PA-A-0120 | 100% |
| HAL-E-MS-A-0160 |  | Internl paint | 2d | 2026-01-11 A | 2026-01-11 A | HAL-E-PA-A-0180 | 100% |
| HAL-E-MS-A-0040 |  | Steel gratings | 2d | 2026-02-05 A | 2026-02-05 A | HAL-E-PA-A-0060 | 100% |
| HAL-E-MS-A-0050 |  | Steel rails | 2d | 2026-02-05 A | 2026-02-05 A | HAL-E-PA-A-0070 | 100% |
| HAL-E-MS-A-0170 |  | Gypsum board | 2d | 2026-02-08 A | 2026-02-08 A | HAL-E-PA-A-0190 | 100% |
| HAL-E-MS-A-0120 |  | Ceramic tiles | 2d | 2026-03-05 A | 2026-03-05 A | HAL-E-PA-A-0140 | 100% |
| HAL-E-MS-A-0130 |  | Granite strip | 2d | 2026-03-05 A | 2026-03-05 A | HAL-E-PA-A-0150 | 100% |
| HAL-E-MS-A-0020 |  | Concrete masonry unit (CMU) | 2d | 2026-03-10 A | 2026-03-10 A | HAL-E-PA-A-0040 | 100% |
| HAL-E-MS-A-0110 |  | Windows | 2d | 2026-03-11 A | 2026-03-11 A | HAL-E-PA-A-0130 | 100% |
| HAL-E-MS-A-1720 |  | Aluminum Composite Panel | 2d | 2026-03-11 A | 2026-03-11 A | HAL-E-PA-A-0200 | 100% |

| ID | WBS | Task | Duration | Start | Finish | Predecessors | Complete |
| --- | --- | --- | --- | --- | --- | --- | --- |
| HAL-E-MS-A-0150 |  | Epoxy paint | 1.12d | 2026-03-24 A | 2026-03-24 A | HAL-E-PA-A-0170 | 100% |
| HAL-E-MS-A-1750 |  | Steel fence and gates | 2d | 2026-03-24 A | 2026-03-24 A | HAL-E-PA-A-0230 | 100% |
| HAL-E-MS-A-1760 |  | Identification sign; ID01 & ID02 | 2d | 2026-03-24 A | 2026-03-24 A | HAL-E-PA-A-0240 | 100% |
|  | 2 | **MECHANICAL** |  | 2025-12-27 | 2026-02-01 |  |  |
| HAL-E-MS-M-0080 |  | PPR pipes | 2d | 2025-12-27 A | 2025-12-27 A | HAL-E-PA-M-0030 | 100% |
| HAL-E-MS-M-0100 |  | Capped connection | 2d | 2025-12-27 A | 2025-12-27 A | HAL-E-PA-M-0150 | 100% |
| HAL-E-MS-M-0110 |  | UPVC pipes | 2d | 2025-12-27 A | 2025-12-27 A | HAL-E-PA-M-0160 | 100% |
| HAL-E-MS-M-0160 |  | Western water closet | 2d | 2025-12-27 A | 2025-12-27 A | HAL-E-PA-M-0210 | 100% |
| HAL-E-MS-M-0190 |  | Lavatory / wash basin | 2d | 2025-12-27 A | 2025-12-27 A | HAL-E-PA-M-0240 | 100% |
| HAL-E-MS-M-0250 |  | Fire pumps | 2d | 2025-12-29 A | 2025-12-29 A | HAL-E-PA-M-0270 | 100% |
| HAL-E-MS-M-0310 |  | Booster pump | 4d | 2025-12-29 A | 2025-12-29 A | HAL-E-PA-M-0330 | 100% |
| HAL-E-MS-M-0010 |  | U/G HDPE pipes | 2d | 2025-12-30 A | 2025-12-30 A | HAL-E-PA-M-0070 | 100% |
| HAL-E-MS-M-0140 |  | Gully trap | 2d | 2026-01-01 A | 2026-01-01 A | HAL-E-PA-M-0190 | 100% |
| HAL-E-MS-M-0320 |  | GRP tank | 1.12d | 2026-01-05 A | 2026-01-05 A | HAL-E-PA-M-0340 | 100% |
| HAL-E-MS-M-0340 |  | Warning tapes | 2d | 2026-01-06 A | 2026-01-06 A | HAL-E-PA-M-0080 | 100% |
| HAL-E-MS-M-0090 |  | Ball valve | 2d | 2026-01-07 A | 2026-01-07 A | HAL-E-PA-M-0140 | 100% |
| HAL-E-MS-M-0330 |  | Water supply valves | 2d | 2026-01-10 A | 2026-01-10 A | HAL-E-PA-M-0350 | 100% |
| HAL-E-MS-M-0020 |  | Seamless black steel or ERW pipes | 2d | 2026-01-11 A | 2026-01-11 A | HAL-E-PA-M-0010 | 100% |
| HAL-E-MS-M-0150 |  | Electric water heater | 2d | 2026-01-11 A | 2026-01-11 A | HAL-E-PA-M-0200 | 100% |
| HAL-E-MS-M-0180 |  | Toilet Fittings | 1.62d | 2026-01-11 A | 2026-01-11 A | HAL-E-PA-M-0230 | 100% |
| HAL-E-MS-M-0170 |  | Bib tap | 2d | 2026-01-13 A | 2026-01-13 A | HAL-E-PA-M-0220 | 100% |
| HAL-E-MS-M-3410 |  | Water tap | 2d | 2026-01-13 A | 2026-01-13 A | HAL-E-PA-M-0320 | 100% |
| HAL-E-MS-M-0120 |  | Roof vent caps | 2d | 2026-01-14 A | 2026-01-14 A | HAL-E-PA-M-0170 | 100% |
| HAL-E-MS-M-0130 |  | Floor drain | 2d | 2026-01-14 A | 2026-01-14 A | HAL-E-PA-M-0180 | 100% |
| HAL-E-MS-M-0030 |  | Fire hose cabinet | 2d | 2026-01-17 A | 2026-01-17 A | HAL-E-PA-M-0090 | 100% |
| HAL-E-MS-M-0040 |  | Automatic air release valve | 2d | 2026-01-21 A | 2026-01-21 A | HAL-E-PA-M-0100 | 100% |
| HAL-E-MS-M-0050 |  | OS & Y gate valve | 2d | 2026-01-21 A | 2026-01-21 A | HAL-E-PA-M-0110 | 100% |
| HAL-E-MS-M-0060 |  | Fire alarm check valve | 2d | 2026-01-21 A | 2026-01-21 A | HAL-E-PA-M-0120 | 100% |
| HAL-E-MS-M-0270 |  | Fire fighting valves | 2d | 2026-01-21 A | 2026-01-21 A | HAL-E-PA-M-0280 | 100% |
| HAL-E-MS-M-0240 |  | Exhaust diffuser | 2d | 2026-01-29 A | 2026-01-29 A | HAL-E-PA-M-0060 | 100% |
| HAL-E-MS-M-0220 |  | HVAC duct | 2d | 2026-01-31 A | 2026-01-31 A | HAL-E-PA-M-0040 | 100% |
| HAL-E-MS-M-0230 |  | Flexible duct | 2d | 2026-01-31 A | 2026-01-31 A | HAL-E-PA-M-0050 | 100% |
| HAL-E-MS-M-0200 |  | Inline exhaust fans | 2d | 2026-02-01 A | 2026-02-01 A | HAL-E-PA-M-0250 | 100% |
| HAL-E-MS-M-0210 |  | Wall propeller type exhaust fans | 2d | 2026-02-01 A | 2026-02-01 A | HAL-E-PA-M-0260 | 100% |
|  | 3 | **ELECTRICAL** |  | 2025-12-23 | 2026-03-24 |  |  |
| HAL-E-MS-E-0040 |  | PVC conduits | 2d | 2025-12-23 A | 2025-12-23 A | HAL-E-PA-E-0010 | 100% |
| HAL-E-MS-E-0010 |  | Low Voltage cables | 2d | 2025-12-27 A | 2025-12-27 A | HAL-E-PA-E-0070 | 100% |
| HAL-E-MS-E-0050 |  | Wires | 2d | 2025-12-27 A | 2025-12-27 A | HAL-E-PA-E-0020 | 100% |
| HAL-E-MS-E-0250 |  | Solar system | 4d | 2026-01-05 A | 2026-01-05 A | HAL-E-PA-E-0250 | 100% |
| HAL-E-MS-E-0140 |  | Wiring devices | 2d | 2026-01-06 A | 2026-01-06 A | HAL-E-PA-E-0050 | 100% |
| HAL-E-MS-E-0160 |  | HDPE ducts | 2d | 2026-01-06 A | 2026-01-06 A | HAL-E-PA-E-0060 | 100% |
| HAL-E-MS-E-210 |  | Cable Tray | 2d | 2026-01-06 A | 2026-01-06 A | HAL-E-PA-E-0030 | 100% |
| HAL-E-MS-E-0060 |  | Suspended High Bay LED lights | 2d | 2026-01-13 A | 2026-01-13 A | HAL-E-PA-E-0120 | 100% |
| HAL-E-MS-E-0070 |  | Flood lights | 2d | 2026-01-13 A | 2026-01-13 A | HAL-E-PA-E-0130 | 100% |
| HAL-E-MS-E-0080 |  | Recessed mounted LED downlight | 2d | 2026-01-13 A | 2026-01-13 A | HAL-E-PA-E-0140 | 100% |
| HAL-E-MS-E-0090 |  | LED Emergency Lights wall mounted | 2d | 2026-01-13 A | 2026-01-13 A | HAL-E-PA-E-0150 | 100% |
| HAL-E-MS-E-0100 |  | LED Emergency Exit Light | 2d | 2026-01-13 A | 2026-01-13 A | HAL-E-PA-E-0160 | 100% |
| HAL-E-MS-E-0170 |  | Street Lighting poles | 2d | 2026-01-13 A | 2026-01-13 A | HAL-E-PA-E-0200 | 100% |
| HAL-E-MS-E-0190 |  | Surface mounted lights | 2d | 2026-01-13 A | 2026-01-13 A | HAL-E-PA-E-0220 | 100% |
| HAL-E-MS-E-0130 |  | Fire alarm system | 2d | 2026-01-21 A | 2026-01-21 A | HAL-E-PA-E-0180 | 100% |
| HAL-E-MS-E-0120 |  | Grounding system | 2d | 2026-01-29 A | 2026-01-29 A | HAL-E-PA-E-0040 | 100% |
| HAL-E-MS-E-0240 |  | Access control system | 2d | 2026-02-04 A | 2026-02-04 A | HAL-E-PA-E-0240 | 100% |
| HAL-E-MS-E-0260 |  | Main program system & controller | 2d | 2026-02-10 A | 2026-02-10 A | HAL-E-PA-E-0260 | 100% |
| HAL-E-MS-E-0270 |  | PLC controller | 1d | 2026-02-10 A | 2026-02-10 A | HAL-E-PA-E-0270 | 100% |
| HAL-E-MS-E-0020 |  | Main distribution board (MDB) | 2d | 2026-02-15 A | 2026-02-15 A | HAL-E-PA-E-0080 | 100% |
| HAL-E-MS-E-0180 |  | Distribution board for pump room | 2d | 2026-02-15 A | 2026-02-15 A | HAL-E-PA-E-0210 | 100% |
| HAL-E-MS-E-190 |  | Lighting panel board | 2d | 2026-02-15 A | 2026-02-15 A | HAL-E-PA-E-0090 | 100% |
| HAL-E-MS-E-200 |  | PP-AC panel | 2d | 2026-02-15 A | 2026-02-15 A | HAL-E-PA-E-0100 | 100% |
| HAL-E-MS-E-0230 |  | CCTV System | 2d | 2026-02-16 A | 2026-02-16 A | HAL-E-PA-E-0230 | 100% |
| HAL-E-MS-E-0110 |  | Wall mounted, duplex, telephone and data outlet | 2d | 2026-03-12 A | 2026-03-12 A | HAL-E-PA-E-0170 | 100% |
| HAL-E-MS-E-0030 |  | Disconnect switches | 1.62d | 2026-03-24 A | 2026-03-24 A | HAL-E-PA-E-0110 | 100% |
|  | 4 | **EXTERNAL** |  | 2026-03-02 | 2026-08-15 |  |  |
| HAL-E-MS-EX-0010 |  | Asphalt works | 2d | 2026-03-02 A | 2026-03-02 A | HAL-E-PA-EX-0010 | 100% |
| HAL-E-MS-EX-0040 |  | Road signs | 2d | 2026-04-16 A | 2026-04-16 A | HAL-E-PA-EX-0040 | 100% |
| HAL-E-MS-EX-0020 |  | Concrete parking bumper | 2d | 2026-05-20 A | 2026-05-20 A | HAL-E-PA-EX-0020 | 100% |
| HAL-E-MS-EX-0060 |  | Interlock tiles | 2d | 2026-05-20 A | 2026-05-20 A | HAL-E-PA-EX-0060 | 100% |
| HAL-E-MS-EX-0070 |  | Curbstones | 2d | 2026-05-20 A | 2026-05-20 A | HAL-E-PA-EX-0070 | 100% |
| HAL-E-MS-EX-0030 |  | Road markings | 2d | 2026-08-15 A | 2026-08-15 A | HAL-E-PA-EX-0030 | 100% |
| HAL-E-MS-EX-0080 |  | Gravel bedding | 2d | 2026-08-15 A | 2026-08-15 A | HAL-E-PA-EX-0080 | 100% |
|  | 5 | **ENVIRONMETAL** |  | 2025-12-27 | 2026-01-24 |  |  |

| ID | WBS | Task | Duration | Start | Finish | Predecessors | Complete |
| --- | --- | --- | --- | --- | --- | --- | --- |
| HAL-E-MS-EN-0080 |  | GRP pipes | 2d | 2025-12-27 A | 2025-12-27 A | HAL-E-PA-EN-0080 | 100% |
| HAL-E-MS-EN-0010 |  | HDPE pipes for fire system | 2d | 2025-12-30 A | 2025-12-30 A | HAL-E-PA-EN-0010 | 100% |
| HAL-E-MS-EN-0030 |  | HDPE pipes for water supply system | 2d | 2025-12-30 A | 2025-12-30 A | HAL-E-PA-EN-0030 | 100% |
| HAL-E-MS-EN-0020 |  | Directly buried gate valve for fire system | 2d | 2026-01-24 A | 2026-01-24 A | HAL-E-PA-EN-0020 | 100% |
| HAL-E-MS-EN-0040 |  | Directly buried gate valve for water system | 2d | 2026-01-24 A | 2026-01-24 A | HAL-E-PA-EN-0040 | 100% |
| HAL-E-MS-EN-0050 |  | Air valve | 2d | 2026-01-24 A | 2026-01-24 A | HAL-E-PA-EN-0050 | 100% |
| HAL-E-MS-EN-0060 |  | Washout valve | 2d | 2026-01-24 A | 2026-01-24 A | HAL-E-PA-EN-0060 | 100% |
| HAL-E-MS-EN-0070 |  | Gate valve | 2d | 2026-01-24 A | 2026-01-24 A | HAL-E-PA-EN-0070 | 100% |
|  | 2 | **REVIEW AND APPROVAL** |  | 2025-12-18 | 2026-08-16 |  |  |
|  | 6 | **STRUCTURAL** |  | 2025-12-18 | 2026-01-05 |  |  |
| HAL-E-MA-C-0020 |  | Concrete mix | 5d | 2025-12-18 A | 2025-12-21 A | HAL-E-MS-C-0020 | 100% |
| HAL-E-MA-C-0030 |  | Polyethylene sheet | 5d | 2025-12-31 A | 2025-12-31 A | HAL-E-MS-C-0030 | 100% |
| HAL-E-MA-C-0040 |  | Bitumen paint | 5d | 2025-12-31 A | 2025-12-31 A | HAL-E-MS-C-0040 | 100% |
| HAL-E-MA-C-0050 |  | Rebar | 5d | 2025-12-31 A | 2025-12-31 A | HAL-E-MS-C-0050 | 100% |
| HAL-E-MA-C-0010 |  | Anti termite | 5d | 2026-01-05 A | 2026-01-05 A | HAL-E-MS-C-0010 | 100% |
|  | 1 | **ARCHITECTURAL** |  | 2025-12-21 | 2026-03-29 |  |  |
| HAL-E-MA-A-0030 |  | Steel ladder | 5d | 2025-12-21 A | 2025-12-22 A | HAL-E-MS-A-0030 | 100% |
| HAL-E-MA-A-1700 |  | PES -Steel Structure | 5d | 2025-12-21 A | 2025-12-22 A | HAL-E-MS-A-1700 | 100% |
| HAL-E-MA-A-0100 |  | Doors | 5d | 2026-01-05 A | 2026-01-05 A | HAL-E-MS-A-0100 | 100% |
| HAL-E-MA-A-0160 |  | Internl paint | 5d | 2026-01-11 A | 2026-01-15 A | HAL-E-MS-A-0160 | 100% |
| HAL-E-MA-A-0170 |  | Gypsum board | 7d | 2026-02-08 A | 2026-02-11 A | HAL-E-MS-A-0170 | 100% |
| HAL-E-MA-A-0120 |  | Ceramic tiles | 4.12d | 2026-03-05 A | 2026-03-07 A | HAL-E-MS-A-0120 | 100% |
| HAL-E-MA-A-0130 |  | Granite strip | 4.12d | 2026-03-05 A | 2026-03-07 A | HAL-E-MS-A-0130 | 100% |
| HAL-E-MA-A-0020 |  | Concrete masonry unit (CMU) | 5d | 2026-03-10 A | 2026-03-10 A | HAL-E-MS-A-0020 | 100% |
| HAL-E-MA-A-0110 |  | Windows | 4.62d | 2026-03-11 A | 2026-03-25 A | HAL-E-MS-A-0110 | 100% |
| HAL-E-MA-A-1720 |  | Aluminum Composite Panel | 7d | 2026-03-11 A | 2026-03-25 A | HAL-E-MS-A-1720 | 100% |
| HAL-E-MA-A-0040 |  | Steel gratings | 5d | 2026-03-24 A | 2026-03-29 A | HAL-E-MS-A-0040 | 100% |
| HAL-E-MA-A-0050 |  | Steel rails | 5d | 2026-03-24 A | 2026-03-29 A | HAL-E-MS-A-0050 | 100% |
| HAL-E-MA-A-0150 |  | Epoxy paint | 4.62d | 2026-03-24 A | 2026-03-29 A | HAL-E-MS-A-0150 | 100% |
| HAL-E-MA-A-1750 |  | Steel fence and gates | 7d | 2026-03-24 A | 2026-03-29 A | HAL-E-MS-A-1750 | 100% |
| HAL-E-MA-A-1760 |  | Identification sign; ID01 & ID02 | 7d | 2026-03-24 A | 2026-03-29 A | HAL-E-MS-A-1760 | 100% |
|  | 2 | **MECHANICAL** |  | 2025-12-27 | 2026-02-16 |  |  |
| HAL-E-MA-M-0080 |  | PPR pipes | 5d | 2025-12-27 A | 2025-12-29 A | HAL-E-MS-M-0080 | 100% |
| HAL-E-MA-M-0100 |  | Capped connection | 5d | 2025-12-27 A | 2025-12-29 A | HAL-E-MS-M-0100 | 100% |
| HAL-E-MA-M-0110 |  | UPVC pipes | 5d | 2025-12-27 A | 2025-12-31 A | HAL-E-MS-M-0110 | 100% |
| HAL-E-MA-M-0160 |  | Western water closet | 3.88d | 2025-12-27 A | 2025-12-31 A | HAL-E-MS-M-0160, HAL-E-MA-M-0050, HAL-E-MA-M-0060 | 100% |
| HAL-E-MA-M-0190 |  | Lavatory / wash basin | 4.75d | 2025-12-27 A | 2025-12-31 A | HAL-E-MS-M-0190 | 100% |
| HAL-E-MA-M-0250 |  | Fire pumps | 6.62d | 2025-12-29 A | 2026-01-04 A | HAL-E-MS-M-0250 | 100% |
| HAL-E-MA-M-0310 |  | Booster pump | 4.62d | 2025-12-29 A | 2026-01-04 A | HAL-E-MS-M-0310 | 100% |
| HAL-E-MA-M-0010 |  | U/G HDPE pipes | 5d | 2025-12-30 A | 2026-01-04 A | HAL-E-MS-M-0010 | 100% |
| HAL-E-MA-M-0140 |  | Gully trap | 4.12d | 2026-01-01 A | 2026-01-04 A | HAL-E-MS-M-0140 | 100% |
| HAL-E-MA-M-0150 |  | Electric water heater | 4.12d | 2026-01-05 A | 2026-01-05 A | HAL-E-MS-M-0150 | 100% |
| HAL-E-MA-M-0320 |  | GRP tank | 4.62d | 2026-01-05 A | 2026-01-05 A | HAL-E-MS-M-0320 | 100% |
| HAL-E-MA-M-0340 |  | Warning tapes | 5d | 2026-01-06 A | 2026-01-07 A | HAL-E-MS-M-0340 | 100% |
| HAL-E-MA-M-0090 |  | Ball valve | 5d | 2026-01-07 A | 2026-01-08 A | HAL-E-MS-M-0090 | 100% |
| HAL-E-MA-M-0330 |  | Water supply valves | 6.62d | 2026-01-10 A | 2026-01-17 A | HAL-E-MS-M-0330, HAL-E-MA-M-0200, HAL-E-MA-M-0270 | 100% |
| HAL-E-MA-M-0020 |  | Seamless black steel or ERW pipes | 5d | 2026-01-11 A | 2026-01-18 A | HAL-E-MS-M-0020 | 100% |
| HAL-E-MA-M-0180 |  | Toilet Fittings | 4.25d | 2026-01-11 A | 2026-01-17 A | HAL-E-MS-M-0180 | 100% |
| HAL-E-MA-M-0170 |  | Bib tap | 4.75d | 2026-01-13 A | 2026-01-18 A | HAL-E-MS-M-0170 | 100% |
| HAL-E-MA-M-3410 |  | Water tap | 5d | 2026-01-13 A | 2026-01-18 A | HAL-E-MS-M-3410 | 100% |
| HAL-E-MA-M-0120 |  | Roof vent caps | 4.12d | 2026-01-14 A | 2026-01-18 A | HAL-E-MS-M-0120 | 100% |
| HAL-E-MA-M-0130 |  | Floor drain | 4.12d | 2026-01-14 A | 2026-01-18 A | HAL-E-MS-M-0130, HAL-E-MA-M-0040 | 100% |
| HAL-E-MA-M-0030 |  | Fire hose cabinet | 5d | 2026-01-17 A | 2026-01-19 A | HAL-E-MS-M-0030 | 100% |
| HAL-E-MA-M-0040 |  | Automatic air release valve | 5d | 2026-01-21 A | 2026-01-29 A | HAL-E-MS-M-0040 | 100% |
| HAL-E-MA-M-0050 |  | OS & Y gate valve | 5d | 2026-01-21 A | 2026-01-29 A | HAL-E-MS-M-0050 | 100% |
| HAL-E-MA-M-0060 |  | Fire alarm check valve | 5d | 2026-01-21 A | 2026-01-29 A | HAL-E-MS-M-0060 | 100% |
| HAL-E-MA-M-0270 |  | Fire fighting valves | 3.75d | 2026-01-21 A | 2026-01-29 A | HAL-E-MS-M-0270 | 100% |
| HAL-E-MA-M-0240 |  | Exhaust diffuser | 5d | 2026-01-29 A | 2026-02-16 A | HAL-E-MS-M-0240 | 100% |
| HAL-E-MA-M-0220 |  | HVAC duct | 5d | 2026-01-31 A | 2026-02-03 A | HAL-E-MS-M-0220 | 100% |
| HAL-E-MA-M-0230 |  | Flexible duct | 5d | 2026-01-31 A | 2026-02-03 A | HAL-E-MS-M-0230 | 100% |
| HAL-E-MA-M-0200 |  | Inline exhaust fans | 4.62d | 2026-02-01 A | 2026-02-02 A | HAL-E-MS-M-0200 | 100% |
| HAL-E-MA-M-0210 |  | Wall propeller type exhaust fans | 3.88d | 2026-02-01 A | 2026-02-02 A | HAL-E-MS-M-0210 | 100% |
|  | 3 | **ELECTRICAL** |  | 2025-12-23 | 2026-03-29 |  |  |
| HAL-E-MA-E-0040 |  | PVC conduits | 5d | 2025-12-23 A | 2025-12-25 A | HAL-E-MS-E-0040 | 100% |
| HAL-E-MA-E-0010 |  | Low Voltage cables | 5d | 2025-12-27 A | 2026-01-04 A | HAL-E-MS-E-0010 | 100% |
| HAL-E-MA-E-0050 |  | Wires | 5d | 2025-12-27 A | 2026-01-04 A | HAL-E-MS-E-0050 | 100% |
| HAL-E-MA-E-0250 |  | Solar system | 2d | 2026-01-05 A | 2026-01-29 A | HAL-E-MS-E-0250 | 100% |
| HAL-E-MA-E-0140 |  | Wiring devices | 5d | 2026-01-06 A | 2026-01-07 A | HAL-E-MS-E-0140 | 100% |
| HAL-E-MA-E-0160 |  | HDPE ducts | 5d | 2026-01-06 A | 2026-01-07 A | HAL-E-MS-E-0160 | 100% |
| HAL-E-MA-E-210 |  | Cable Tray | 5d | 2026-01-06 A | 2026-01-07 A | HAL-E-MS-E-210 | 100% |

| ID | WBS | Task | Duration | Start | Finish | Predecessors | Complete |
| --- | --- | --- | --- | --- | --- | --- | --- |
| HAL-E-MA-E-0060 |  | Suspended High Bay LED lights | 5d | 2026-01-13 A | 2026-01-14 A | HAL-E-MS-E-0060 | 100% |
| HAL-E-MA-E-0070 |  | Flood lights | 5d | 2026-01-13 A | 2026-01-14 A | HAL-E-MS-E-0070 | 100% |
| HAL-E-MA-E-0080 |  | Recessed mounted LED downlight | 4.12d | 2026-01-13 A | 2026-01-14 A | HAL-E-MS-E-0080 | 100% |
| HAL-E-MA-E-0090 |  | LED Emergency Lights wall mounted | 4.12d | 2026-01-13 A | 2026-01-14 A | HAL-E-MS-E-0090 | 100% |
| HAL-E-MA-E-0100 |  | LED Emergency Exit Light | 7d | 2026-01-13 A | 2026-01-14 A | HAL-E-MS-E-0100 | 100% |
| HAL-E-MA-E-0170 |  | Street Lighting poles | 4d | 2026-01-13 A | 2026-01-14 A | HAL-E-MS-E-0170 | 100% |
| HAL-E-MA-E-0190 |  | Surface mounted lights | 4.12d | 2026-01-13 A | 2026-01-14 A | HAL-E-MS-E-0190 | 100% |
| HAL-E-MA-E-0130 |  | Fire alarm system | 4.12d | 2026-01-21 A | 2026-01-29 A | HAL-E-MS-E-0130 | 100% |
| HAL-E-MA-E-0120 |  | Grounding system | 5d | 2026-01-29 A | 2026-01-31 A | HAL-E-MS-E-0120 | 100% |
| HAL-E-MA-E-0240 |  | Access control system | 2d | 2026-02-04 A | 2026-02-04 A | HAL-E-MS-E-0240, HAL-E-SS-E-1040, HAL-E-SS-M-710 | 100% |
| HAL-E-MA-E-0260 |  | Main program system & controller | 2d | 2026-02-10 A | 2026-02-28 A | HAL-E-MS-E-0260 | 100% |
| HAL-E-MA-E-0270 |  | PLC controller | 2d | 2026-02-10 A | 2026-02-28 A | HAL-E-MS-E-0270 | 100% |
| HAL-E-MA-E-0020 |  | Main distribution board (MDB) | 5d | 2026-02-15 A | 2026-03-12 A | HAL-E-MS-E-0020 | 100% |
| HAL-E-MA-E-0180 |  | Distribution board for pump room | 5.5d | 2026-02-15 A | 2026-03-12 A | HAL-E-MS-E-0180 | 100% |
| HAL-E-MA-E-190 |  | Lighting panel board | 5d | 2026-02-15 A | 2026-03-12 A | HAL-E-MS-E-190 | 100% |
| HAL-E-MA-E-200 |  | PP-AC panel | 4.12d | 2026-02-15 A | 2026-03-12 A | HAL-E-MS-E-200 | 100% |
| HAL-E-MA-E-0230 |  | CCTV System | 2d | 2026-02-16 A | 2026-02-28 A | HAL-E-MS-E-0230 | 100% |
| HAL-E-MA-E-0110 |  | Wall mounted, duplex, telephone and data outlet | 3.88d | 2026-03-12 A | 2026-03-12 A | HAL-E-MS-E-0110 | 100% |
| HAL-E-MA-E-0030 |  | Disconnect switches | 3.62d | 2026-03-24 A | 2026-03-29 A | HAL-E-MS-E-0030 | 100% |
|  | 4 | **EXTERNAL** |  | 2026-03-24 | 2026-08-16 |  |  |
| HAL-E-MA-EX-0010 |  | Asphalt works | 4.38d | 2026-03-24 A | 2026-03-29 A | HAL-E-MS-EX-0010 | 100% |
| HAL-E-MA-EX-0040 |  | Road signs | 6.62d | 2026-04-16 A | 2026-06-29 A | HAL-E-MS-EX-0040 | 100% |
| HAL-E-MA-EX-0020 |  | Concrete parking bumper | 4.62d | 2026-05-31 A | 2026-06-06 A | HAL-E-MS-EX-0020 | 100% |
| HAL-E-MA-EX-0060 |  | Interlock tiles | 6.62d | 2026-05-31 A | 2026-06-06 A | HAL-E-MS-EX-0060 | 100% |
| HAL-E-MA-EX-0070 |  | Curbstones | 6.62d | 2026-05-31 A | 2026-06-06 A | HAL-E-MS-EX-0070 | 100% |
| HAL-E-MA-EX-0030 |  | Road markings | 4.62d | 2026-08-15 A | 2026-08-16 A | HAL-E-MS-EX-0030 | 100% |
| HAL-E-MA-EX-0080 |  | Gravel bedding | 3.62d | 2026-08-15 A | 2026-08-16 A | HAL-E-MS-EX-0080 | 100% |
|  | 5 | **ENVIRONMETAL** |  | 2025-12-29 | 2026-01-29 |  |  |
| HAL-E-MA-EN-0080 |  | GRP pipes | 4.12d | 2025-12-29 A | 2025-12-29 A | HAL-E-MS-EN-0080 | 100% |
| HAL-E-MA-EN-0010 |  | HDPE pipes for fire system | 5d | 2025-12-30 A | 2026-01-04 A | HAL-E-MS-EN-0010 | 100% |
| HAL-E-MA-EN-0030 |  | HDPE pipes for water supply system | 5d | 2025-12-30 A | 2026-01-04 A | HAL-E-MS-EN-0030 | 100% |
| HAL-E-MA-EN-0020 |  | Directly buried gate valve for fire system | 5d | 2026-01-24 A | 2026-01-29 A | HAL-E-MS-EN-0020 | 100% |
| HAL-E-MA-EN-0040 |  | Directly buried gate valve for water system | 5d | 2026-01-24 A | 2026-01-29 A | HAL-E-MS-EN-0040 | 100% |
| HAL-E-MA-EN-0050 |  | Air valve | 5d | 2026-01-24 A | 2026-01-29 A | HAL-E-MS-EN-0050 | 100% |
| HAL-E-MA-EN-0060 |  | Washout valve | 4.62d | 2026-01-24 A | 2026-01-29 A | HAL-E-MS-EN-0060 | 100% |
| HAL-E-MA-EN-0070 |  | Gate valve | 4.12d | 2026-01-24 A | 2026-01-29 A | HAL-E-MS-EN-0070 | 100% |
|  | 3 | **METHOD STATEMENTS** |  | 2025-12-18 | 2026-08-09 |  |  |
|  | 1 | **PREPARATION AND SUBMITTAL** |  | 2025-12-18 | 2026-08-08 |  |  |
| HAL-E-MT-C-0010 |  | Method Statement for Structural Works | 7d | 2025-12-18 A | 2026-06-29 A | HAL-E-MS-C-0010 | 100% |
| HAL-E-MT-E-0040 |  | Method Statement for Electrical Works | 9d | 2026-01-14 A | 2026-08-08 A | HAL-E-MT-M-0030 | 100% |
| HAL-E-MT-M-0030 |  | Method Statement for Mechanical Works | 6.12d | 2026-01-28 A | 2026-08-08 A | HAL-E-MT-A-0020 | 100% |
| HAL-E-MT-A-0020 |  | Method Statement for Architectural Works | 7d | 2026-05-02 A | 2026-08-08 A | HAL-E-MT-C-0010 | 100% |
| HAL-E-MT-ENV-0060 |  | Method Statement for Environmental Works | 7d | 2026-05-02 A | 2026-06-29 A | HAL-E-MT-EX-0050 | 100% |
| HAL-E-MT-EX-0050 |  | Method Statement for External Works | 7d | 2026-05-02 A | 2026-08-08 A | HAL-E-MT-E-0040 | 100% |
|  | 2 | **REVIEW AND APPROVAL** |  | 2025-12-18 | 2026-08-09 |  |  |
| HAL-E-MT-C-1010 |  | Method Statement for Structural Works | 10d | 2025-12-18 A | 2026-06-30 A | HAL-E-MT-C-0010 | 100% |
| HAL-E-MT-E-1040 |  | Method Statement for Electrical Works | 10d | 2026-01-14 A | 2026-08-09 A | HAL-E-MT-M-1030, HAL-E-MT-E-0040 | 100% |
| HAL-E-MT-M-1030 |  | Method Statement for Mechanical Works | 10d | 2026-02-01 A | 2026-08-09 A | HAL-E-MT-A-1020, HAL-E-MT-M-0030 | 100% |
| HAL-E-MT-A-1020 |  | Method Statement for Architectural Works | 11.12d | 2026-05-02 A | 2026-08-09 A | HAL-E-MT-C-1010, HAL-E-MT-A-0020 | 100% |
| HAL-E-MT-ENV-1060 |  | Method Statement for Environmental Works | 10d | 2026-05-02 A | 2026-06-30 A | HAL-E-MT-EX-1050, HAL-E-MT-ENV-0060 | 100% |
| HAL-E-MT-EX-1050 |  | Method Statement for External Works | 10d | 2026-05-02 A | 2026-08-09 A | HAL-E-MT-E-1040, HAL-E-MT-EX-0050, HAL-E-MT-ENV-0060 | 100% |
|  | 3 | **STAGING** |  | 2025-12-18 | 2026-08-09 |  |  |
| HAL-E-MT-C-2010 |  | Method Statement for Structural Works | 1d | 2025-12-18 A | 2026-07-15 A | HAL-E-MT-C-1010 | 100% |
| HAL-E-MT-E-2040 |  | Method Statement for Electrical Works | 1d | 2026-01-14 A | 2026-08-09 A | HAL-E-MT-E-1040, HAL-E-MT-M-2030 | 100% |
| HAL-E-MT-M-2030 |  | Method Statement for Mechanical Works | 1d | 2026-02-01 A | 2026-08-09 A | HAL-E-MT-M-1030, HAL-E-MT-A-2020 | 100% |
| HAL-E-MT-A-2020 |  | Method Statement for Architectural Works | 1d | 2026-05-02 A | 2026-08-09 A | HAL-E-MT-A-1020 | 100% |
| HAL-E-MT-ENV-2060 |  | Method Statement for Environmental Works | 1d | 2026-05-02 A | 2026-07-13 A | HAL-E-MT-ENV-1060, HAL-E-MT-EX-2050 | 100% |
| HAL-E-MT-EX-2050 |  | Method Statement for External Works | 1d | 2026-05-02 A | 2026-08-09 A | HAL-E-MT-EX-1050 | 100% |
|  | 4 | **PROCUREMENT (27%)** |  | 2025-12-15 | 2026-10-15 |  |  |
|  | 2 | **LONG LEAD MATERIALS** |  | 2025-12-15 | 2026-09-15 |  |  |
|  | 1 | **ARCHITECTURAL** |  | 2025-12-15 | 2026-07-11 |  |  |
|  | 1 | **PO ISSUE** |  | 2025-12-15 | 2026-02-24 |  |  |
| HAL-E-PO-A-1700 |  | PES -Steel Structure | 5d | 2025-12-15 A | 2025-12-15 A | HAL-E-MA-A-1700 | 100% |
| HAL-P-PO-A-190 |  | Windows | 4.5d | 2026-02-05 A | 2026-02-05 A | HAL-E-MA-A-0110 | 100% |
| HAL-P-PO-A-180 |  | Doors | 5d | 2026-02-24 A | 2026-02-24 A | HAL-E-MA-A-0100 | 100% |
|  | 2 | **MANUFACTURING** |  | 2025-12-16 | 2026-07-11 |  |  |
| HAL-E-MF-A-1700 |  | PES -Steel Structure | 45d | 2025-12-16 A | 2026-05-20 A | HAL-E-PO-A-1700 | 100% |
| HAL-P-MF-A-190 |  | Windows | 80d | 2026-02-05 A | 2026-07-11 A | HAL-P-PO-A-190 | 100% |
| HAL-P-MF-A-180 |  | Doors | 91.12d | 2026-02-24 A | 2026-07-11 A | HAL-P-PO-A-180 | 100% |
|  | 4 | **DELIVERY TO SITE** |  | 2026-03-05 | 2026-07-11 |  |  |

| ID | WBS | Task | Duration | Start | Finish | Predecessors | Complete |
| --- | --- | --- | --- | --- | --- | --- | --- |
| HAL-E-DL-A-1700 |  | PES -Steel Structure | 7d | 2026-03-05 A | 2026-05-21 A | HAL-E-MF-A-1700 | 100% |
| HAL-P-DL-A-180 |  | Doors | 7d | 2026-05-13 A | 2026-07-11 A | HAL-P-MF-A-180 | 100% |
| HAL-P-DL-A-190 |  | Windows | 7d | 2026-07-05 A | 2026-07-11 A | HAL-P-MF-A-190 | 100% |
|  | 5 | **STAGING TIME** |  | 2026-03-05 | 2026-07-11 |  |  |
| HAL-E-ST-A-1700 |  | PES -Steel Structure | 2d | 2026-03-05 A | 2026-05-21 A | HAL-E-DL-A-1700 | 100% |
| HAL-P-ST-A-180 |  | Doors | 7d | 2026-05-13 A | 2026-07-11 A | HAL-P-DL-A-180 | 100% |
| HAL-P-ST-A-190 |  | Windows | 7d | 2026-07-05 A | 2026-07-11 A | HAL-P-DL-A-190 | 100% |
|  | 3 | **ELECTRICAL** |  | 2026-01-29 | 2026-09-15 |  |  |
|  | 1 | **PO ISSUE** |  | 2026-01-29 | 2026-03-16 |  |  |
| HAL-P-PO-E-200 |  | Suspended High Bay LED lights | 5d | 2026-01-29 A | 2026-01-29 A | HAL-E-MA-E-0060, HAL-P-PO-E-2000 | 100% |
| HAL-P-PO-E-210 |  | Flood lights | 7d | 2026-01-29 A | 2026-01-29 A | HAL-E-MA-E-0070, HAL-P-PO-E-200 | 100% |
| HAL-P-PO-E-220 |  | Recessed mounted LED downlight | 5d | 2026-01-29 A | 2026-01-29 A | HAL-E-MA-E-0080, HAL-P-PO-E-210 | 100% |
| HAL-P-PO-E-230 |  | LED Emergency Lights wall mounted | 5d | 2026-01-29 A | 2026-01-29 A | HAL-E-MA-E-0090, HAL-P-PO-E-220 | 100% |
| HAL-P-PO-E-240 |  | LED Emergency Exit Light | 5d | 2026-01-29 A | 2026-01-29 A | HAL-E-MA-E-0100, HAL-P-PO-E-230 | 100% |
| HAL-P-PO-E-280 |  | Surface mounted lights | 5d | 2026-01-29 A | 2026-01-29 A | HAL-E-MA-E-0190, HAL-P-PO-E-270 | 100% |
| HAL-P-PO-E-0260 |  | Main program system & controller | 5d | 2026-02-04 A | 2026-02-04 A | HAL-E-MA-E-0260 | 100% |
| HAL-P-PO-E-0270 |  | PLC controller | 5d | 2026-02-04 A | 2026-02-04 A | HAL-E-MA-E-0270 | 100% |
| HAL-P-PO-E-260 |  | Street Lighting poles | 5d | 2026-02-09 A | 2026-02-09 A | HAL-E-MA-E-0170, HAL-P-PO-E-250 | 100% |
| HAL-P-PO-E-250 |  | Fire alarm system | 5d | 2026-02-11 A | 2026-02-11 A | HAL-E-MA-E-0130, HAL-P-PO-E-240 | 100% |
| HAL-P-PO-E-0250 |  | Solar system | 5d | 2026-02-19 A | 2026-02-19 A | HAL-E-MA-E-0250 | 100% |
| HAL-P-PO-E-0230 |  | CCTV System | 5d | 2026-03-16 A | 2026-03-16 A | HAL-E-MA-E-0230 | 100% |
| HAL-P-PO-E-0240 |  | Access control system | 5d | 2026-03-16 A | 2026-03-16 A | HAL-E-MA-E-0240 | 100% |
| HAL-P-PO-E-190 |  | Main distribution board (MDB) | 4.12d | 2026-03-16 A | 2026-03-16 A | HAL-E-MA-E-0020 | 100% |
| HAL-P-PO-E-1900 |  | Lighting panel board | 5d | 2026-03-16 A | 2026-03-16 A | HAL-E-MA-E-190, HAL-E-MA-E-190 FF, HAL-P-PO-E-190 | 100% |
| HAL-P-PO-E-2000 |  | PP-AC panel | 5d | 2026-03-16 A | 2026-03-16 A | HAL-E-MA-E-200, HAL-E-MA-E-200 FF, HAL-P-PO-E-1900 | 100% |
| HAL-P-PO-E-270 |  | Distribution board for pump room | 5d | 2026-03-16 A | 2026-03-16 A | HAL-E-MA-E-0180, HAL-P-PO-E-260 | 100% |
|  | 2 | **MANUFACTURING** |  | 2026-01-29 | 2026-09-15 |  |  |
| HAL-P-MF-E-200 |  | Suspended High Bay LED lights | 92d | 2026-01-29 A | 2026-05-18 A | HAL-P-PO-E-200 | 100% |
| HAL-P-MF-E-210 |  | Flood lights | 90d | 2026-01-29 A | 2026-05-18 A | HAL-P-PO-E-210 | 100% |
| HAL-P-MF-E-220 |  | Recessed mounted LED downlight | 90d | 2026-01-29 A | 2026-05-18 A | HAL-P-PO-E-220 | 100% |
| HAL-P-MF-E-230 |  | LED Emergency Lights wall mounted | 90d | 2026-01-29 A | 2026-05-18 A | HAL-P-PO-E-230 | 100% |
| HAL-P-MF-E-240 |  | LED Emergency Exit Light | 90d | 2026-01-29 A | 2026-05-18 A | HAL-P-PO-E-240 | 100% |
| HAL-P-MF-E-280 |  | Surface mounted lights | 90d | 2026-01-29 A | 2026-05-18 A | HAL-P-PO-E-280 | 100% |
| HAL-P-MF-E-0260 |  | Main program system & controller | 80d | 2026-02-04 A | 2026-07-16 A | HAL-P-PO-E-0260 | 100% |
| HAL-P-MF-E-0270 |  | PLC controller | 80d | 2026-02-04 A | 2026-07-12 A | HAL-P-PO-E-0270 | 100% |
| HAL-P-MF-E-260 |  | Street Lighting poles | 90d | 2026-02-09 A | 2026-07-21 A | HAL-P-PO-E-260 | 100% |
| HAL-P-MF-E-250 |  | Fire alarm system | 90d | 2026-02-11 A | 2026-05-24 A | HAL-P-PO-E-250 | 100% |
| HAL-P-MF-E-0250 |  | Solar system | 100d | 2026-02-19 A | 2026-07-04 A | HAL-P-PO-E-0250 | 100% |
| HAL-P-MF-E-0230 |  | CCTV System | 90d | 2026-03-16 A | 2026-09-15 A | HAL-P-PO-E-0230 | 100% |
| HAL-P-MF-E-0240 |  | Access control system | 60d | 2026-03-16 A | 2026-09-15 A | HAL-P-PO-E-0240 | 100% |
| HAL-P-MF-E-190 |  | Main distribution board (MDB) | 91.12d | 2026-03-16 A | 2026-07-13 A | HAL-P-PO-E-190 | 100% |
| HAL-P-MF-E-1900 |  | Lighting panel board | 92d | 2026-03-16 A | 2026-07-13 A | HAL-P-PO-E-1900 | 100% |
| HAL-P-MF-E-2000 |  | PP-AC panel | 90d | 2026-03-16 A | 2026-07-13 A | HAL-P-PO-E-2000 | 100% |
| HAL-P-MF-E-270 |  | Distribution board for pump room | 90d | 2026-03-16 A | 2026-07-13 A | HAL-P-PO-E-270 | 100% |
|  | 3 | **CUSTOM CLEARANCE** |  |  |  |  |  |
|  | 4 | **DELIVERY TO SITE** |  | 2026-05-18 | 2026-09-15 |  |  |
| HAL-P-DL-E-200 |  | Suspended High Bay LED lights | 7d | 2026-05-18 A | 2026-05-18 A | HAL-P-MF-E-200 | 100% |
| HAL-P-DL-E-210 |  | Flood lights | 7d | 2026-05-18 A | 2026-05-18 A | HAL-P-MF-E-210 | 100% |
| HAL-P-DL-E-220 |  | Recessed mounted LED downlight | 7d | 2026-05-18 A | 2026-05-18 A | HAL-P-MF-E-220 | 100% |
| HAL-P-DL-E-230 |  | LED Emergency Lights wall mounted | 7d | 2026-05-18 A | 2026-05-18 A | HAL-P-MF-E-230 | 100% |
| HAL-P-DL-E-240 |  | LED Emergency Exit Light | 7d | 2026-05-18 A | 2026-05-18 A | HAL-P-MF-E-240 | 100% |
| HAL-P-DL-E-280 |  | Surface mounted lights | 7d | 2026-05-18 A | 2026-05-18 A | HAL-P-MF-E-280 | 100% |
| HAL-P-DL-E-250 |  | Fire alarm system | 7d | 2026-05-24 A | 2026-05-24 A | HAL-P-MF-E-250 | 100% |
| HAL-P-DL-E-0250 |  | Solar system | 7d | 2026-07-05 A | 2026-07-05 A | HAL-P-MF-E-0250 | 100% |
| HAL-P-DL-E-190 |  | Main distribution board (MDB) | 7d | 2026-07-14 A | 2026-07-14 A | HAL-P-MF-E-190 | 100% |
| HAL-P-DL-E-1900 |  | Lighting panel board | 7d | 2026-07-14 A | 2026-07-14 A | HAL-P-MF-E-1900 | 100% |
| HAL-P-DL-E-2000 |  | PP-AC panel | 7d | 2026-07-14 A | 2026-07-14 A | HAL-P-MF-E-2000 | 100% |
| HAL-P-DL-E-270 |  | Distribution board for pump room | 7d | 2026-07-14 A | 2026-07-14 A | HAL-P-MF-E-270 | 100% |
| HAL-P-DL-E-0260 |  | Main program system & controller | 7d | 2026-07-16 A | 2026-07-16 A | HAL-P-DL-E-0250, HAL-P-MF-E-0260 | 100% |
| HAL-P-DL-E-0270 |  | PLC controller | 7d | 2026-07-16 A | 2026-07-16 A | HAL-P-DL-E-0260, HAL-P-MF-E-0270 | 100% |
| HAL-P-DL-E-260 |  | Street Lighting poles | 7d | 2026-07-21 A | 2026-07-21 A | HAL-P-MF-E-260 | 100% |
| HAL-P-DL-E-0230 |  | CCTV System | 7d | 2026-09-15 A | 2026-09-15 A | HAL-P-MF-E-0230 | 100% |
| HAL-P-DL-E-0240 |  | Access control system | 7d | 2026-09-15 A | 2026-09-15 A | HAL-P-MF-E-0240 | 100% |
|  | 5 | **STAGING TIME** |  | 2026-05-18 | 2026-09-15 |  |  |
| HAL-P-ST-E-200 |  | Suspended High Bay LED lights | 7d | 2026-05-18 A | 2026-05-18 A | HAL-P-DL-E-200, HAL-P-ST-E-190 | 100% |
| HAL-P-ST-E-210 |  | Flood lights | 7d | 2026-05-18 A | 2026-05-18 A | HAL-P-DL-E-210 | 100% |
| HAL-P-ST-E-220 |  | Recessed mounted LED downlight | 7d | 2026-05-18 A | 2026-05-18 A | HAL-P-DL-E-220, HAL-P-ST-E-200, HAL-E-ST-E-200, HAL-E-ST-E-190, HAL-P-ST-E-190 | 100% |
| HAL-P-ST-E-230 |  | LED Emergency Lights wall mounted | 7d | 2026-05-18 A | 2026-05-18 A | HAL-P-DL-E-230 | 100% |
| HAL-P-ST-E-240 |  | LED Emergency Exit Light | 7d | 2026-05-18 A | 2026-05-18 A | HAL-P-DL-E-240 | 100% |
| HAL-P-ST-E-280 |  | Surface mounted lights | 7d | 2026-05-18 A | 2026-05-18 A | HAL-P-DL-E-280 | 100% |

| ID | WBS | Task | Duration | Start | Finish | Predecessors | Complete |
| --- | --- | --- | --- | --- | --- | --- | --- |
| HAL-P-ST-E-250 |  | Fire alarm system | 7d | 2026-05-24 A | 2026-05-24 A | HAL-P-DL-E-250 | 100% |
| HAL-E-ST-E-0250 |  | Solar system | 7d | 2026-07-05 A | 2026-07-05 A | HAL-P-DL-E-0250 | 100% |
| HAL-E-ST-E-190 |  | Lighting panel board | 7d | 2026-07-14 A | 2026-07-14 A | HAL-P-DL-E-1900 | 100% |
| HAL-E-ST-E-200 |  | PP-AC panel | 7d | 2026-07-14 A | 2026-07-14 A | HAL-P-DL-E-2000 | 100% |
| HAL-P-ST-E-190 |  | Main distribution board (MDB) | 7d | 2026-07-14 A | 2026-07-14 A | HAL-P-DL-E-190 | 100% |
| HAL-P-ST-E-270 |  | Distribution board for pump room | 7d | 2026-07-14 A | 2026-07-14 A | HAL-P-DL-E-270, HAL-E-ST-E-0230 | 100% |
| HAL-E-ST-E-0260 |  | Main program system & controller | 7d | 2026-07-16 A | 2026-07-16 A | HAL-E-ST-E-0250, HAL-P-DL-E-0260 | 100% |
| HAL-E-ST-E-0270 |  | PLC controller | 7d | 2026-07-16 A | 2026-07-16 A | HAL-E-ST-E-0260, HAL-P-DL-E-0270 | 100% |
| HAL-P-ST-E-260 |  | Street Lighting poles | 7d | 2026-07-21 A | 2026-07-21 A | HAL-P-DL-E-260, HAL-P-ST-E-240, HAL-P-ST-E-230, HAL-P-ST-E-220, HAL-P-ST-E-210 | 100% |
| HAL-E-ST-E-0230 |  | CCTV System | 7d | 2026-09-15 A | 2026-09-15 A | HAL-P-DL-E-0230 | 100% |
| HAL-E-ST-E-0240 |  | Access control system | 7d | 2026-09-15 A | 2026-09-15 A | HAL-E-ST-E-0230, HAL-P-DL-E-0240 | 100% |
|  | 2 | **MECHANICAL** |  | 2026-01-17 | 2026-08-09 |  |  |
|  | 1 | **PO ISSUE** |  | 2026-01-17 | 2026-06-28 |  |  |
| HAL-P-PO-M-410 |  | GRP tank | 7d | 2026-01-17 A | 2026-01-17 A | HAL-E-MA-M-0320, HAL-P-PO-M-400 | 100% |
| HAL-P-PO-M-340 |  | Seamless black steel or ERW pipes | 5d | 2026-01-29 A | 2026-01-29 A | HAL-E-MA-M-0020 | 100% |
| HAL-P-PO-M-350 |  | Fire hose cabinet | 5d | 2026-01-29 A | 2026-01-29 A | HAL-E-MA-M-0030, HAL-P-PO-M-340 | 100% |
| HAL-P-PO-M-380 |  | Fire pumps | 5d | 2026-01-29 A | 2026-01-29 A | HAL-E-MA-M-0250, HAL-P-PO-M-370 | 100% |
| HAL-P-PO-M-370 |  | Wall propeller type exhaust fans | 5d | 2026-02-11 A | 2026-02-11 A | HAL-E-MA-M-0210, HAL-P-PO-M-360 | 100% |
| HAL-P-PO-M-400 |  | Booster pump | 5d | 2026-02-12 A | 2026-02-12 A | HAL-E-MA-M-0310, HAL-P-PO-M-380 | 100% |
| HAL-P-PO-M-360 |  | Western water closet | 5d | 2026-06-28 A | 2026-06-28 A | HAL-E-MA-M-0160, HAL-P-PO-M-350 | 100% |
|  | 2 | **MANUFACTURING** |  | 2026-01-17 | 2026-08-08 |  |  |
| HAL-P-MF-M-410 |  | GRP tank | 102d | 2026-01-17 A | 2026-04-19 A | HAL-P-PO-M-410 | 100% |
| HAL-P-MF-M-340 |  | Seamless black steel or ERW pipes | 141.12d | 2026-01-29 A | 2026-05-13 A | HAL-P-PO-M-340 | 100% |
| HAL-P-MF-M-350 |  | Fire hose cabinet | 121.12d | 2026-01-29 A | 2026-06-01 A | HAL-P-PO-M-350 | 100% |
| HAL-P-MF-M-380 |  | Fire pumps | 100d | 2026-01-29 A | 2026-08-08 A | HAL-P-PO-M-380 | 100% |
| HAL-P-MF-M-370 |  | Wall propeller type exhaust fans | 80d | 2026-02-11 A | 2026-06-27 A | HAL-P-PO-M-370 | 100% |
| HAL-P-MF-M-400 |  | Booster pump | 80d | 2026-02-12 A | 2026-08-08 A | HAL-P-PO-M-400 | 100% |
| HAL-P-MF-M-360 |  | Western water closet | 30d | 2026-06-28 A | 2026-07-25 A | HAL-P-PO-M-360 | 100% |
|  | 4 | **DELIVERY TO SITE** |  | 2026-04-20 | 2026-08-09 |  |  |
| HAL-P-DL-M-410 |  | GRP tank | 7d | 2026-04-20 A | 2026-04-20 A | HAL-P-MF-M-410 | 100% |
| HAL-P-DL-M-340 |  | Seamless black steel or ERW pipes | 7d | 2026-05-13 A | 2026-05-13 A | HAL-P-MF-M-340 | 100% |
| HAL-P-DL-M-350 |  | Fire hose cabinet | 7d | 2026-06-02 A | 2026-06-02 A | HAL-P-MF-M-350 | 100% |
| HAL-P-DL-M-370 |  | Wall propeller type exhaust fans | 7d | 2026-06-27 A | 2026-06-27 A | HAL-P-MF-M-370 | 100% |
| HAL-P-DL-M-360 |  | Western water closet | 7d | 2026-07-25 A | 2026-07-25 A | HAL-P-MF-M-360, HAL-P-ST-E-280, HAL-P-ST-E-270 | 100% |
| HAL-P-DL-M-380 |  | Fire pumps | 7d | 2026-08-09 A | 2026-08-09 A | HAL-P-MF-M-380 | 100% |
| HAL-P-DL-M-400 |  | Booster pump | 7d | 2026-08-09 A | 2026-08-09 A | HAL-P-MF-M-400 | 100% |
|  | 5 | **STAGING TIME** |  | 2026-04-20 | 2026-08-09 |  |  |
| HAL-P-ST-M-410 |  | GRP tank | 7d | 2026-04-20 A | 2026-04-20 A | HAL-P-DL-M-410 | 100% |
| HAL-P-ST-M-340 |  | Seamless black steel or ERW pipes | 7d | 2026-05-13 A | 2026-05-13 A | HAL-P-DL-M-340 | 100% |
| HAL-P-ST-M-350 |  | Fire hose cabinet | 7d | 2026-06-02 A | 2026-06-02 A | HAL-P-DL-M-350 | 100% |
| HAL-P-ST-M-370 |  | Wall propeller type exhaust fans | 7d | 2026-06-27 A | 2026-06-27 A | HAL-P-DL-M-370 | 100% |
| HAL-P-ST-M-360 |  | Western water closet | 7d | 2026-07-25 A | 2026-07-25 A | HAL-P-DL-M-360, HAL-P-ST-M-380, HAL-P-ST-M-400 | 100% |
| HAL-P-ST-M-380 |  | Fire pumps | 7d | 2026-08-09 A | 2026-08-09 A | HAL-P-DL-M-380 | 100% |
| HAL-P-ST-M-400 |  | Booster pump | 7d | 2026-08-09 A | 2026-08-09 A | HAL-P-DL-M-400, HAL-P-ST-M-370 | 100% |
|  | 1 | **SHORT LEAD MATERIALS** |  | 2025-12-15 | 2026-10-15 |  |  |
|  | 6 | **STRUCTURAL** |  | 2025-12-24 | 2026-02-21 |  |  |
|  | 1 | **PO ISSUE** |  | 2025-12-24 | 2026-01-20 |  |  |
| HAL-P-PO-C-60 |  | Concrete mix | 2d | 2025-12-24 A | 2025-12-24 A | HAL-E-MA-C-0020 | 100% |
| HAL-P-PO-C-70 |  | Polyethylene sheet | 2d | 2026-01-03 A | 2026-01-03 A | HAL-E-MA-C-0030 | 100% |
| HAL-P-PO-C-50 |  | Anti termite | 2d | 2026-01-06 A | 2026-01-06 A | HAL-E-MA-C-0010 | 100% |
| HAL-P-PO-C-90 |  | Rebar | 2d | 2026-01-17 A | 2026-01-17 A | HAL-E-MA-C-0050 | 100% |
| HAL-P-PO-C-80 |  | Bitumen paint | 2d | 2026-01-20 A | 2026-01-20 A | HAL-E-MA-C-0040 | 100% |
|  | 4 | **MANUFACTURING** |  | 2025-12-25 | 2026-02-18 |  |  |
| HAL-P-MF-C-60 |  | Concrete mix | 2d | 2025-12-25 A | 2026-02-18 A | HAL-P-PO-C-60 | 100% |
| HAL-P-MF-C-70 |  | Polyethylene sheet | 2d | 2026-01-04 A | 2026-02-05 A | HAL-P-PO-C-70 SS | 100% |
| HAL-P-MF-C-50 |  | Anti termite | 2d | 2026-01-07 A | 2026-02-18 A | HAL-P-PO-C-50 | 100% |
| HAL-P-MF-C-90 |  | Rebar | 2d | 2026-01-18 A | 2026-02-18 A | HAL-P-PO-C-90 | 100% |
| HAL-P-MF-C-80 |  | Bitumen paint | 2d | 2026-01-21 A | 2026-01-27 A | HAL-P-PO-C-80 | 100% |
|  | 2 | **DELIVERY** |  | 2026-01-05 | 2026-02-21 |  |  |
| HAL-P-DL-C-70 |  | Polyethylene sheet | 2d | 2026-01-05 A | 2026-02-07 A | HAL-P-MF-C-70 | 100% |
| HAL-P-DL-C-50 |  | Anti termite | 2d | 2026-01-11 A | 2026-02-19 A | HAL-P-MF-C-50 | 100% |
| HAL-P-DL-C-60 |  | Concrete mix -1 | 2d | 2026-01-11 A | 2026-02-07 A | HAL-P-MF-C-60 | 100% |
| HAL-P-DL-C-90 |  | Rebar-1 | 2d | 2026-01-18 A | 2026-02-07 A | HAL-P-MF-C-90 | 100% |
| HAL-P-DL-C-80 |  | Bitumen paint | 2d | 2026-01-28 A | 2026-01-28 A | HAL-P-MF-C-80 | 100% |
| HAL-P-DL-C-120 |  | Rebar-2 | 2d | 2026-02-07 A | 2026-02-08 A | HAL-P-DL-C-90, HAL-P-DL-C-100 | 100% |
| HAL-P-DL-C-100 |  | Concrete mix -2 | 2d | 2026-02-10 A | 2026-02-10 A | HAL-P-DL-C-60, HAL-P-PO-E-190 | 100% |
| HAL-P-DL-C-130 |  | Rebar-3 | 2d | 2026-02-10 A | 2026-02-21 A | HAL-P-DL-C-120 | 100% |
| HAL-P-DL-C-110 |  | Concrete mix -3 | 2d | 2026-02-19 A | 2026-02-21 A | HAL-P-DL-C-100 | 100% |
|  | 3 | **STAGING TIME** |  | 2026-01-05 | 2026-02-21 |  |  |
| HAL-P-ST-C-70 |  | Polyethylene sheet | 1d | 2026-01-05 A | 2026-02-07 A | HAL-P-DL-C-70 | 100% |

| ID | WBS | Task | Duration | Start | Finish | Predecessors | Complete |
| --- | --- | --- | --- | --- | --- | --- | --- |
| HAL-P-ST-C-50 |  | Anti termite | 1d | 2026-01-11 A | 2026-02-19 A | HAL-P-DL-C-50 | 100% |
| HAL-P-ST-C-60 |  | Concrete mix | 1d | 2026-01-11 A | 2026-02-21 A | HAL-P-DL-C-60 | 100% |
| HAL-P-ST-C-90 |  | Rebar | 1d | 2026-01-18 A | 2026-02-21 A | HAL-P-DL-C-90 | 100% |
| HAL-P-ST-C-80 |  | Bitumen paint | 1d | 2026-01-28 A | 2026-01-28 A | HAL-P-DL-C-80 | 100% |
|  | 1 | **ARCHITECTURAL** |  | 2025-12-15 | 2026-10-01 |  |  |
|  | 1 | **PO ISSUE** |  | 2025-12-15 | 2026-09-22 |  |  |
| HAL-P-PO-A-210 |  | Steel ladder | 5d | 2025-12-15 A | 2025-12-15 A | HAL-E-MA-A-0030, HAL-P-PO-A-200 | 100% |
| HAL-P-PO-A-230 |  | Steel rails | 5d | 2025-12-15 A | 2025-12-15 A | HAL-E-MA-A-0050, HAL-P-PO-A-220 | 100% |
| HAL-P-PO-A-1720 |  | Aluminum Composite Panel | 5d | 2026-02-05 A | 2026-02-05 A | HAL-E-MA-A-1720, HAL-E-MA-A-1720 FF, HAL-P-PO-A-330 | 100% |
| HAL-P-PO-A-200 |  | Concrete masonry unit (CMU) | 5d | 2026-05-18 A | 2026-05-18 A | HAL-E-MA-A-0020 | 100% |
| HAL-P-PO-A-220 |  | Steel gratings | 4.12d | 2026-06-04 A | 2026-06-04 A | HAL-E-MA-A-0040, HAL-P-PO-A-210 | 100% |
| HAL-P-PO-A-280 |  | Ceramic tiles | 5d | 2026-06-22 A | 2026-06-22 A | HAL-E-MA-A-0120 | 100% |
| HAL-P-PO-A-290 |  | Granite strip | 5d | 2026-06-22 A | 2026-06-22 A | HAL-E-MA-A-0130, HAL-P-PO-A-280 | 100% |
| HAL-P-PO-A-310 |  | Epoxy paint | 5d | 2026-06-22 A | 2026-06-22 A | HAL-E-MA-A-0150 | 100% |
| HAL-P-PO-A-320 |  | Internl paint | 5d | 2026-06-22 A | 2026-06-22 A | HAL-E-MA-A-0160, HAL-P-PO-A-310 | 100% |
| HAL-P-PO-A-330 |  | Gypsum board | 5d | 2026-08-13 A | 2026-08-13 A | HAL-E-MA-A-0170, HAL-P-PO-A-320 | 100% |
| HAL-E-PO-A-1750 |  | Steel fence and gates | 5d | 2026-09-22 A | 2026-09-22 A | HAL-E-MA-A-1750, HAL-E-MA-A-1750 FF | 100% |
| HAL-P-PO-A-1760 |  | Identification sign; ID01 & ID02 | 5d | 2026-09-22 A | 2026-09-22 A | HAL-E-MA-A-1760, HAL-E-MA-A-1760 FF, HAL-E-PO-A-1750, HAL-P-DL-C-130, HAL-P-DL-C-110 | 100% |
|  | 4 | **MANUFACTURING** |  | 2025-12-15 | 2026-10-01 |  |  |
| HAL-P-MF-A-210 |  | Steel ladder | 81.12d | 2025-12-15 A | 2026-05-21 A | HAL-P-PO-A-210 | 100% |
| HAL-P-MF-A-230 |  | Steel rails | 80d | 2025-12-15 A | 2026-05-21 A | HAL-P-PO-A-230 | 100% |
| HAL-P-MF-A-1720 |  | Aluminum Composite Panel | 20d | 2026-02-05 A | 2026-07-11 A | HAL-P-PO-A-1720 | 100% |
| HAL-P-MF-A-200 |  | Concrete masonry unit (CMU) | 71.12d | 2026-05-18 A | 2026-05-20 A | HAL-P-PO-A-200 | 100% |
| HAL-P-MF-A-220 |  | Steel gratings | 20d | 2026-06-04 A | 2026-09-14 A | HAL-P-PO-A-220 | 100% |
| HAL-P-MF-A-280 |  | Ceramic tiles | 20d | 2026-06-22 A | 2026-06-24 A | HAL-P-PO-A-280 | 100% |
| HAL-P-MF-A-290 |  | Granite strip | 20d | 2026-06-22 A | 2026-06-24 A | HAL-P-PO-A-290 | 100% |
| HAL-P-MF-A-310 |  | Epoxy paint | 20d | 2026-06-27 A | 2026-07-18 A | HAL-P-PO-A-310 | 100% |
| HAL-P-MF-A-320 |  | Internl paint | 20d | 2026-06-27 A | 2026-07-18 A | HAL-P-PO-A-320 | 100% |
| HAL-P-MF-A-330 |  | Gypsum board | 10d | 2026-08-13 A | 2026-08-16 A | HAL-P-PO-A-330 | 100% |
| HAL-E-MF-A-1750 |  | Steel fence and gates | 5d | 2026-09-22 A | 2026-10-01 A | HAL-E-PO-A-1750 | 100% |
| HAL-P-MF-A-1760 |  | Identification sign; ID01 & ID02 | 5d | 2026-09-22 A | 2026-10-01 A | HAL-P-PO-A-1760 | 100% |
|  | 2 | **DELIVERY** |  | 2026-05-21 | 2026-10-01 |  |  |
| HAL-P-DL-A-200 |  | Concrete masonry unit (CMU) | 7d | 2026-05-21 A | 2026-05-21 A | HAL-P-MF-A-200 | 100% |
| HAL-P-DL-A-210 |  | Steel ladder | 7d | 2026-05-21 A | 2026-05-21 A | HAL-P-MF-A-210 | 100% |
| HAL-P-DL-A-230 |  | Steel rails | 7d | 2026-05-21 A | 2026-05-21 A | HAL-P-MF-A-230 | 100% |
| HAL-P-DL-A-280 |  | Ceramic tiles | 7d | 2026-06-24 A | 2026-06-24 A | HAL-P-MF-A-280 | 100% |
| HAL-P-DL-A-290 |  | Granite strip | 7d | 2026-06-24 A | 2026-06-24 A | HAL-P-MF-A-290 | 100% |
| HAL-P-DL-A-1720 |  | Aluminum Composite Panel | 7d | 2026-07-05 A | 2026-07-11 A | HAL-P-MF-A-1720 | 100% |
| HAL-P-DL-A-310 |  | Epoxy paint | 7d | 2026-07-18 A | 2026-07-18 A | HAL-P-MF-A-310 | 100% |
| HAL-P-DL-A-320 |  | Internl paint | 7d | 2026-07-18 A | 2026-07-18 A | HAL-P-MF-A-320 | 100% |
| HAL-P-DL-A-330 |  | Gypsum board | 7d | 2026-08-16 A | 2026-08-16 A | HAL-P-MF-A-330 | 100% |
| HAL-P-DL-A-220 |  | Steel gratings | 7d | 2026-09-15 A | 2026-09-15 A | HAL-P-MF-A-220 | 100% |
| HAL-P-DL-A-1750 |  | Steel fence and gates | 7d | 2026-10-01 A | 2026-10-01 A | HAL-E-MF-A-1750 | 100% |
| HAL-P-DL-A-1760 |  | Identification sign; ID01 & ID02 | 1d | 2026-10-01 A | 2026-10-01 A | HAL-P-MF-A-1760 | 100% |
|  | 3 | **STAGING TIME** |  | 2026-05-21 | 2026-10-01 |  |  |
| HAL-P-ST-A-200 |  | Concrete masonry unit (CMU) | 7d | 2026-05-21 A | 2026-05-21 A | HAL-P-DL-A-200 | 100% |
| HAL-P-ST-A-210 |  | Steel ladder | 7d | 2026-05-21 A | 2026-05-21 A | HAL-P-DL-A-210 | 100% |
| HAL-P-ST-A-230 |  | Steel rails | 7d | 2026-05-21 A | 2026-05-21 A | HAL-P-DL-A-230 | 100% |
| HAL-P-ST-A-280 |  | Ceramic tiles | 7d | 2026-06-24 A | 2026-06-24 A | HAL-P-DL-A-280 | 100% |
| HAL-P-ST-A-290 |  | Granite strip | 7d | 2026-06-24 A | 2026-06-24 A | HAL-P-DL-A-290 | 100% |
| HAL-P-ST-A-1720 |  | Aluminum Composite Panel | 7d | 2026-07-05 A | 2026-07-11 A | HAL-P-DL-A-1720 | 100% |
| HAL-P-ST-A-310 |  | Epoxy paint | 7d | 2026-07-18 A | 2026-07-18 A | HAL-P-DL-A-310, HAL-P-ST-A-210 | 100% |
| HAL-P-ST-A-320 |  | Internl paint | 7d | 2026-07-18 A | 2026-07-18 A | HAL-P-DL-A-320 | 100% |
| HAL-P-ST-A-330 |  | Gypsum board | 7d | 2026-08-16 A | 2026-08-16 A | HAL-P-DL-A-330, HAL-P-ST-A-290, HAL-P-ST-A-230, HAL-P-ST-A-220 | 100% |
| HAL-P-ST-A-220 |  | Steel gratings | 1d | 2026-09-15 A | 2026-09-15 A | HAL-P-DL-A-220 | 100% |
| HAL-E-ST-A-1750 |  | Steel fence and gates | 1d | 2026-10-01 A | 2026-10-01 A | HAL-P-DL-A-1750 | 100% |
| HAL-P-ST-A-1760 |  | Identification sign; ID01 & ID02 | 1d | 2026-10-01 A | 2026-10-01 A | HAL-P-DL-A-1760, HAL-P-ST-A-320, HAL-P-ST-A-310, HAL-P-ST-A-280 | 100% |
|  | 2 | **MECHANICAL** |  | 2026-01-29 | 2026-09-15 |  |  |
|  | 1 | **PO ISSUE** |  | 2026-01-29 | 2026-06-28 |  |  |
| HAL-P-PO-M-390 |  | Fire fighting valves | 5d | 2026-01-29 A | 2026-01-29 A | HAL-E-MA-M-0270, HAL-P-PO-M-590 | 100% |
| HAL-P-PO-M-440 |  | Automatic air release valve | 5d | 2026-01-29 A | 2026-01-29 A | HAL-E-MA-M-0040, HAL-P-PO-M-660 | 100% |
| HAL-P-PO-M-450 |  | OS & Y gate valve | 5d | 2026-01-29 A | 2026-01-29 A | HAL-E-MA-M-0050, HAL-P-PO-M-440 | 100% |
| HAL-P-PO-M-460 |  | Fire alarm check valve | 5d | 2026-01-29 A | 2026-01-29 A | HAL-E-MA-M-0060, HAL-P-PO-M-450 | 100% |
| HAL-P-PO-M-590 |  | Inline exhaust fans | 5d | 2026-02-11 A | 2026-02-11 A | HAL-E-MA-M-0200, HAL-P-PO-M-580 | 100% |
| HAL-P-PO-M-430 |  | U/G HDPE pipes | 5d | 2026-02-24 A | 2026-02-24 A | HAL-E-MA-M-0010, HAL-P-PO-M-620 | 100% |
| HAL-P-PO-M-510 |  | UPVC pipes | 4.12d | 2026-02-24 A | 2026-02-24 A | HAL-E-MA-M-0110, HAL-P-PO-M-500 | 100% |
| HAL-P-PO-M-540 |  | Gully trap | 5d | 2026-02-24 A | 2026-02-24 A | HAL-E-MA-M-0140, HAL-P-PO-M-530 | 100% |
| HAL-P-PO-M-660 |  | Warning tapes | 5d | 2026-03-29 A | 2026-03-29 A | HAL-E-MA-M-0340, HAL-P-PO-M-430 | 100% |
| HAL-P-PO-M-530 |  | Floor drain | 5d | 2026-04-06 A | 2026-04-06 A | HAL-E-MA-M-0130, HAL-P-PO-M-520 | 100% |
| HAL-P-PO-M-420 |  | Water supply valves | 4.25d | 2026-05-02 A | 2026-05-02 A | HAL-E-MA-M-0330 | 100% |

| ID | WBS | Task | Duration | Start | Finish | Predecessors | Complete |
| --- | --- | --- | --- | --- | --- | --- | --- |
| HAL-P-PO-M-480 |  | PPR pipes | 5d | 2026-05-02 A | 2026-05-02 A | HAL-E-MA-M-0080 | 100% |
| HAL-P-PO-M-600 |  | HVAC duct | 5d | 2026-06-13 A | 2026-06-13 A | HAL-E-MA-M-0220, HAL-P-PO-M-480 | 100% |
| HAL-P-PO-M-610 |  | Flexible duct | 4.12d | 2026-06-13 A | 2026-06-13 A | HAL-E-MA-M-0230, HAL-P-PO-M-600 | 100% |
| HAL-P-PO-M-620 |  | Exhaust diffuser | 5d | 2026-06-13 A | 2026-06-13 A | HAL-E-MA-M-0240, HAL-P-PO-M-610 | 100% |
| HAL-P-PO-M-3410 |  | Water tap | 5d | 2026-06-28 A | 2026-06-28 A | HAL-E-MA-M-3410, HAL-E-MA-M-3410 FF | 100% |
| HAL-P-PO-M-490 |  | Ball valve | 5d | 2026-06-28 A | 2026-06-28 A | HAL-E-MA-M-0090 | 100% |
| HAL-P-PO-M-500 |  | Capped connection | 5d | 2026-06-28 A | 2026-06-28 A | HAL-E-MA-M-0100, HAL-P-PO-M-490 | 100% |
| HAL-P-PO-M-520 |  | Roof vent caps | 5d | 2026-06-28 A | 2026-06-28 A | HAL-E-MA-M-0120, HAL-P-PO-M-510 | 100% |
| HAL-P-PO-M-550 |  | Electric water heater | 5d | 2026-06-28 A | 2026-06-28 A | HAL-E-MA-M-0150, HAL-P-PO-M-540 | 100% |
| HAL-P-PO-M-560 |  | Bib tap | 5d | 2026-06-28 A | 2026-06-28 A | HAL-E-MA-M-0170, HAL-P-PO-M-550 | 100% |
| HAL-P-PO-M-570 |  | Toilet Fittings | 5d | 2026-06-28 A | 2026-06-28 A | HAL-E-MA-M-0180 | 100% |
| HAL-P-PO-M-580 |  | Lavatory / wash basin | 5d | 2026-06-28 A | 2026-06-28 A | HAL-E-MA-M-0190, HAL-P-PO-M-560 | 100% |
|  | 4 | **MANUFACTURING** |  | 2026-01-29 | 2026-09-14 |  |  |
| HAL-P-MF-M-390 |  | Fire fighting valves | 80d | 2026-01-29 A | 2026-06-13 A | HAL-P-PO-M-390 | 100% |
| HAL-P-MF-M-440 |  | Automatic air release valve | 20d | 2026-01-29 A | 2026-06-13 A | HAL-P-PO-M-440 | 100% |
| HAL-P-MF-M-450 |  | OS & Y gate valve | 20d | 2026-01-29 A | 2026-06-13 A | HAL-P-PO-M-450 | 100% |
| HAL-P-MF-M-460 |  | Fire alarm check valve | 20d | 2026-01-29 A | 2026-06-13 A | HAL-P-PO-M-460 | 100% |
| HAL-P-MF-M-590 |  | Inline exhaust fans | 20d | 2026-02-11 A | 2026-06-27 A | HAL-P-PO-M-590 | 100% |
| HAL-P-MF-M-430 |  | U/G HDPE pipes | 80d | 2026-02-24 A | 2026-02-28 A | HAL-P-PO-M-430 | 100% |
| HAL-P-MF-M-510 |  | UPVC pipes | 81.12d | 2026-02-24 A | 2026-02-28 A | HAL-P-PO-M-510 | 100% |
| HAL-P-MF-M-540 |  | Gully trap | 80d | 2026-02-24 A | 2026-02-28 A | HAL-P-PO-M-540 | 100% |
| HAL-P-MF-M-660 |  | Warning tapes | 20d | 2026-03-29 A | 2026-07-23 A | HAL-P-PO-M-660 | 100% |
| HAL-P-MF-M-530 |  | Floor drain | 20d | 2026-04-06 A | 2026-06-06 A | HAL-P-PO-M-530 | 100% |
| HAL-P-MF-M-420 |  | Water supply valves | 81.12d | 2026-05-02 A | 2026-06-13 A | HAL-P-PO-M-420 | 100% |
| HAL-P-MF-M-480 |  | PPR pipes | 81.12d | 2026-05-02 A | 2026-05-07 A | HAL-P-PO-M-480 | 100% |
| HAL-P-MF-M-600 |  | HVAC duct | 81.12d | 2026-06-13 A | 2026-06-14 A | HAL-P-PO-M-600 | 100% |
| HAL-P-MF-M-610 |  | Flexible duct | 81.12d | 2026-06-13 A | 2026-06-14 A | HAL-P-PO-M-610 | 100% |
| HAL-P-MF-M-620 |  | Exhaust diffuser | 20d | 2026-06-13 A | 2026-06-14 A | HAL-P-PO-M-620 | 100% |
| HAL-P-MF-M-490 |  | Ball valve | 20d | 2026-06-28 A | 2026-07-25 A | HAL-P-PO-M-490 | 100% |
| HAL-P-MF-M-520 |  | Roof vent caps | 20d | 2026-06-28 A | 2026-07-25 A | HAL-P-PO-M-520 | 100% |
| HAL-P-MF-M-550 |  | Electric water heater | 20d | 2026-06-28 A | 2026-07-25 A | HAL-P-PO-M-550 | 100% |
| HAL-P-MF-M-570 |  | Toilet Fittings | 20d | 2026-06-28 A | 2026-07-25 A | HAL-P-PO-M-570 | 100% |
| HAL-P-MF-M-580 |  | Lavatory / wash basin | 20d | 2026-06-28 A | 2026-07-25 A | HAL-P-PO-M-580 | 100% |
| HAL-P-MF-M-3410 |  | Water tap | 10d | 2026-08-02 A | 2026-09-01 A | HAL-P-PO-M-3410 | 100% |
| HAL-P-MF-M-500 |  | Capped connection | 10d | 2026-08-08 A | 2026-09-01 A | HAL-P-PO-M-500 | 100% |
| HAL-P-MF-M-560 |  | Bib tap | 10d | 2026-08-19 A | 2026-09-14 A | HAL-P-PO-M-560 | 100% |
|  | 2 | **DELIVERY** |  | 2026-03-01 | 2026-09-15 |  |  |
| HAL-P-DL-M-430 |  | U/G HDPE pipes | 7d | 2026-03-01 A | 2026-03-01 A | HAL-P-MF-M-430 | 100% |
| HAL-P-DL-M-510 |  | UPVC pipes | 7d | 2026-03-01 A | 2026-03-01 A | HAL-P-MF-M-510 | 100% |
| HAL-P-DL-M-540 |  | Gully trap | 7d | 2026-03-01 A | 2026-03-01 A | HAL-P-MF-M-540, HAL-P-ST-A-1760, HAL-P-ST-A-330, HAL-E-ST-A-1750 | 100% |
| HAL-P-DL-M-480 |  | PPR pipes | 7d | 2026-05-09 A | 2026-05-09 A | HAL-P-MF-M-480 | 100% |
| HAL-P-DL-M-390 |  | Fire fighting valves | 7d | 2026-05-13 A | 2026-06-13 A | HAL-P-MF-M-390, HAL-P-ST-M-350 | 100% |
| HAL-P-DL-M-420 |  | Water supply valves | 7d | 2026-05-13 A | 2026-06-13 A | HAL-P-MF-M-420, HAL-P-ST-A-1720 | 100% |
| HAL-P-DL-M-440 |  | Automatic air release valve | 7d | 2026-05-13 A | 2026-06-13 A | HAL-P-MF-M-440 | 100% |
| HAL-P-DL-M-450 |  | OS & Y gate valve | 7d | 2026-05-13 A | 2026-06-13 A | HAL-P-MF-M-450 | 100% |
| HAL-P-DL-M-460 |  | Fire alarm check valve | 7d | 2026-05-13 A | 2026-06-13 A | HAL-P-MF-M-460 | 100% |
| HAL-P-DL-M-530 |  | Floor drain | 7d | 2026-06-06 A | 2026-06-06 A | HAL-P-MF-M-530 | 100% |
| HAL-P-DL-M-600 |  | HVAC duct | 7d | 2026-06-14 A | 2026-06-14 A | HAL-P-MF-M-600 | 100% |
| HAL-P-DL-M-610 |  | Flexible duct | 7d | 2026-06-14 A | 2026-06-14 A | HAL-P-MF-M-610 | 100% |
| HAL-P-DL-M-620 |  | Exhaust diffuser | 7d | 2026-06-14 A | 2026-06-14 A | HAL-P-MF-M-620 | 100% |
| HAL-P-DL-M-590 |  | Inline exhaust fans | 7d | 2026-06-27 A | 2026-06-27 A | HAL-P-MF-M-590 | 100% |
| HAL-P-DL-M-580 |  | Lavatory / wash basin | 1d | 2026-06-28 A | 2026-07-25 A | HAL-P-MF-M-580 | 100% |
| HAL-P-DL-M-490 |  | Ball valve | 7d | 2026-07-25 A | 2026-07-25 A | HAL-P-MF-M-490 | 100% |
| HAL-P-DL-M-520 |  | Roof vent caps | 7d | 2026-07-25 A | 2026-07-25 A | HAL-P-MF-M-520 | 100% |
| HAL-P-DL-M-550 |  | Electric water heater | 7d | 2026-07-25 A | 2026-07-25 A | HAL-P-MF-M-550 | 100% |
| HAL-P-DL-M-570 |  | Toilet Fittings | 5d | 2026-07-25 A | 2026-07-25 A | HAL-P-MF-M-570 | 100% |
| HAL-P-DL-M-660 |  | Warning tapes | 7d | 2026-07-25 A | 2026-07-25 A | HAL-P-MF-M-660 | 100% |
| HAL-P-DL-M-3410 |  | Water tap | 7d | 2026-09-02 A | 2026-09-02 A | HAL-P-MF-M-3410 | 100% |
| HAL-P-DL-M-500 |  | Capped connection | 7d | 2026-09-02 A | 2026-09-02 A | HAL-P-MF-M-500 | 100% |
| HAL-P-DL-M-560 |  | Bib tap | 7d | 2026-09-15 A | 2026-09-15 A | HAL-P-MF-M-560 | 100% |
|  | 3 | **STAGING TIME** |  | 2026-03-01 | 2026-09-15 |  |  |
| HAL-P-ST-M-430 |  | U/G HDPE pipes | 7d | 2026-03-01 A | 2026-03-01 A | HAL-P-DL-M-430 | 100% |
| HAL-P-ST-M-510 |  | UPVC pipes | 7d | 2026-03-01 A | 2026-03-01 A | HAL-P-DL-M-510, HAL-P-ST-M-490, HAL-P-ST-M-620 | 100% |
| HAL-P-ST-M-540 |  | Gully trap | 7d | 2026-03-01 A | 2026-03-01 A | HAL-P-DL-M-540, HAL-P-ST-M-520, HAL-P-ST-M-570 | 100% |
| HAL-P-ST-M-480 |  | PPR pipes | 7d | 2026-05-09 A | 2026-05-09 A | HAL-P-DL-M-480 | 100% |
| HAL-P-ST-M-390 |  | Fire fighting valves | 7d | 2026-05-13 A | 2026-06-13 A | HAL-P-DL-M-390 | 100% |
| HAL-P-ST-M-420 |  | Water supply valves | 7d | 2026-05-13 A | 2026-06-13 A | HAL-P-DL-M-420, HAL-P-ST-M-540, HAL-P-ST-M-460, HAL-P-ST-M-530, HAL-P-ST-M-450 | 100% |
| HAL-P-ST-M-530 |  | Floor drain | 7d | 2026-06-06 A | 2026-06-06 A | HAL-P-DL-M-530 | 100% |
| HAL-P-ST-M-440 |  | Automatic air release valve | 7d | 2026-06-13 A | 2026-06-13 A | HAL-P-DL-M-440 | 100% |
| HAL-P-ST-M-450 |  | OS & Y gate valve | 7d | 2026-06-13 A | 2026-06-13 A | HAL-P-DL-M-450 | 100% |

| ID | WBS | Task | Duration | Start | Finish | Predecessors | Complete |
| --- | --- | --- | --- | --- | --- | --- | --- |
| HAL-P-ST-M-460 |  | Fire alarm check valve | 7d | 2026-06-13 A | 2026-06-13 A | HAL-P-DL-M-460, HAL-P-ST-M-440 | 100% |
| HAL-P-ST-M-600 |  | HVAC duct | 7d | 2026-06-14 A | 2026-06-14 A | HAL-P-DL-M-600 | 100% |
| HAL-P-ST-M-610 |  | Flexible duct | 7d | 2026-06-14 A | 2026-06-14 A | HAL-P-DL-M-610 | 100% |
| HAL-P-ST-M-620 |  | Exhaust diffuser | 7d | 2026-06-14 A | 2026-06-14 A | HAL-P-DL-M-620 | 100% |
| HAL-P-ST-M-590 |  | Inline exhaust fans | 7d | 2026-06-27 A | 2026-06-27 A | HAL-P-DL-M-590 | 100% |
| HAL-P-ST-M-490 |  | Ball valve | 7d | 2026-07-25 A | 2026-07-25 A | HAL-P-DL-M-490, HAL-P-ST-M-610, HAL-P-ST-M-600, HAL-P-ST-M-480 | 100% |
| HAL-P-ST-M-520 |  | Roof vent caps | 7d | 2026-07-25 A | 2026-07-25 A | HAL-P-DL-M-520, HAL-P-ST-M-500 | 100% |
| HAL-P-ST-M-550 |  | Electric water heater | 7d | 2026-07-25 A | 2026-07-25 A | HAL-P-DL-M-550 | 100% |
| HAL-P-ST-M-570 |  | Toilet Fittings | 5d | 2026-07-25 A | 2026-07-25 A | HAL-P-DL-M-570 | 100% |
| HAL-P-ST-M-580 |  | Lavatory / wash basin | 7d | 2026-07-25 A | 2026-07-25 A | HAL-P-DL-M-580 | 100% |
| HAL-P-ST-M-660 |  | Warning tapes | 7d | 2026-07-25 A | 2026-07-25 A | HAL-P-DL-M-660 | 100% |
| HAL-P-ST-M-3410 |  | Water tap | 7d | 2026-09-02 A | 2026-09-02 A | HAL-P-DL-M-3410 | 100% |
| HAL-P-ST-M-500 |  | Capped connection | 7d | 2026-09-02 A | 2026-09-02 A | HAL-P-DL-M-500 | 100% |
| HAL-P-ST-M-560 |  | Bib tap | 7d | 2026-09-15 A | 2026-09-15 A | HAL-P-DL-M-560 | 100% |
|  | 3 | **ELECTRICAL** |  | 2026-01-29 | 2026-10-01 |  |  |
|  | 1 | **PO ISSUE** |  | 2026-01-29 | 2026-07-27 |  |  |
| HAL-P-PO-E-350 |  | Wiring devices | 5d | 2026-01-29 A | 2026-01-29 A | HAL-E-MA-E-0140, HAL-P-PO-E-340 | 100% |
| HAL-P-PO-E-340 |  | Grounding system | 4.12d | 2026-03-04 A | 2026-03-04 A | HAL-E-MA-E-0120, HAL-P-PO-E-2100 | 100% |
| HAL-P-PO-E-310 |  | PVC conduits | 5d | 2026-03-11 A | 2026-03-11 A | HAL-E-MA-E-0040 | 100% |
| HAL-P-PO-E-320 |  | Wires | 5d | 2026-06-01 A | 2026-06-01 A | HAL-E-MA-E-0050, HAL-P-PO-E-310 | 100% |
| HAL-P-PO-E-330 |  | Wall mounted, duplex, telephone and data outlet | 5d | 2026-06-03 A | 2026-06-03 A | HAL-E-MA-E-0110, HAL-P-PO-E-300 | 100% |
| HAL-P-PO-E-370 |  | HDPE ducts | 5d | 2026-06-03 A | 2026-06-03 A | HAL-E-MA-E-0160, HAL-P-PO-E-350 | 100% |
| HAL-P-PO-E-290 |  | Low Voltage cables | 5d | 2026-06-16 A | 2026-06-16 A | HAL-E-MA-E-0010, HAL-P-PO-E-370 | 100% |
| HAL-P-PO-E-2100 |  | Cable Tray | 5d | 2026-07-27 A | 2026-07-27 A | HAL-E-MA-E-210, HAL-P-PO-E-320 | 100% |
| HAL-P-PO-E-300 |  | Disconnect switches | 5d | 2026-07-27 A | 2026-07-27 A | HAL-E-MA-E-0030, HAL-P-PO-E-290 | 100% |
|  | 4 | **MANUFACTURING** |  | 2026-01-29 | 2026-10-01 |  |  |
| HAL-P-MF-E-350 |  | Wiring devices | 82d | 2026-01-29 A | 2026-06-02 A | HAL-P-PO-E-350 | 100% |
| HAL-P-MF-E-340 |  | Grounding system | 80d | 2026-03-04 A | 2026-05-02 A | HAL-P-PO-E-340 | 100% |
| HAL-P-MF-E-310 |  | PVC conduits | 40d | 2026-03-11 A | 2026-05-11 A | HAL-P-PO-E-310 | 100% |
| HAL-P-MF-E-320 |  | Wires | 81.12d | 2026-06-01 A | 2026-06-03 A | HAL-P-PO-E-320 | 100% |
| HAL-P-MF-E-330 |  | Wall mounted, duplex, telephone and data outlet | 30d | 2026-06-03 A | 2026-10-01 A | HAL-P-PO-E-330 | 100% |
| HAL-P-MF-E-370 |  | HDPE ducts | 80d | 2026-06-03 A | 2026-06-04 A | HAL-P-PO-E-370 | 100% |
| HAL-P-MF-E-290 |  | Low Voltage cables | 20d | 2026-06-16 A | 2026-07-16 A | HAL-P-PO-E-290 | 100% |
| HAL-P-MF-E-2100 |  | Cable Tray | 20d | 2026-07-27 A | 2026-08-16 A | HAL-P-PO-E-2100 | 100% |
| HAL-P-MF-E-300 |  | Disconnect switches | 20d | 2026-07-27 A | 2026-08-16 A | HAL-P-PO-E-300 | 100% |
|  | 2 | **DELIVERY** |  | 2026-03-12 | 2026-10-01 |  |  |
| HAL-P-DL-E-310 |  | PVC conduits | 7d | 2026-03-12 A | 2026-03-12 A | HAL-P-MF-E-310 | 100% |
| HAL-P-DL-E-340 |  | Grounding system | 7d | 2026-04-04 A | 2026-05-02 A | HAL-P-MF-E-340 | 100% |
| HAL-P-DL-E-350 |  | Wiring devices | 7d | 2026-06-03 A | 2026-06-03 A | HAL-P-MF-E-350 | 100% |
| HAL-P-DL-E-320 |  | Wires | 7d | 2026-06-04 A | 2026-06-04 A | HAL-P-MF-E-320 | 100% |
| HAL-P-DL-E-370 |  | HDPE ducts | 7d | 2026-06-04 A | 2026-06-04 A | HAL-P-MF-E-370 | 100% |
| HAL-P-DL-E-290 |  | Low Voltage cables | 7d | 2026-07-16 A | 2026-07-16 A | HAL-P-MF-E-290 | 100% |
| HAL-P-DL-E-2100 |  | Cable Tray | 7d | 2026-08-16 A | 2026-08-16 A | HAL-P-MF-E-2100 | 100% |
| HAL-P-DL-E-300 |  | Disconnect switches | 7d | 2026-08-16 A | 2026-08-16 A | HAL-P-MF-E-300 | 100% |
| HAL-P-DL-E-330 |  | Wall mounted, duplex, telephone and data outlet | 7d | 2026-10-01 A | 2026-10-01 A | HAL-P-MF-E-330 | 100% |
|  | 3 | **STAGING TIME** |  | 2026-03-12 | 2026-10-01 |  |  |
| HAL-P-ST-E-310 |  | PVC conduits | 7d | 2026-03-12 A | 2026-03-12 A | HAL-P-DL-E-310 | 100% |
| HAL-P-ST-E-340 |  | Grounding system | 7d | 2026-04-04 A | 2026-05-02 A | HAL-P-DL-E-340 | 100% |
| HAL-P-ST-E-350 |  | Wiring devices | 7d | 2026-06-03 A | 2026-06-03 A | HAL-P-DL-E-350 | 100% |
| HAL-P-ST-E-320 |  | Wires | 7d | 2026-06-04 A | 2026-06-04 A | HAL-P-DL-E-320 | 100% |
| HAL-P-ST-E-370 |  | HDPE ducts | 7d | 2026-06-04 A | 2026-06-04 A | HAL-P-DL-E-370 | 100% |
| HAL-P-ST-E-290 |  | Low Voltage cables | 7d | 2026-07-16 A | 2026-07-16 A | HAL-P-DL-E-290 | 100% |
| HAL-P-ST-E-2100 |  | Cable Tray | 7d | 2026-08-16 A | 2026-08-16 A | HAL-P-DL-E-2100 | 100% |
| HAL-P-ST-E-300 |  | Disconnect switches | 7d | 2026-08-16 A | 2026-08-16 A | HAL-P-DL-E-300 | 100% |
| HAL-P-ST-E-330 |  | Wall mounted, duplex, telephone and data outlet | 7d | 2026-10-01 A | 2026-10-01 A | HAL-P-DL-E-330 | 100% |
|  | 4 | **EXTERNAL** |  | 2026-06-17 | 2026-10-15 |  |  |
|  | 1 | **PO ISSUE** |  | 2026-06-17 | 2026-10-12 |  |  |
| HAL-P-PO-EX-80 |  | Asphalt works | 5d | 2026-06-17 A | 2026-06-17 A | HAL-E-MA-EX-0010 | 100% |
| HAL-P-PO-EX-150 |  | Gravel bedding | 5d | 2026-06-23 A | 2026-06-23 A | HAL-E-MA-EX-0080 | 100% |
| HAL-P-PO-EX-130 |  | Interlock tiles | 5d | 2026-07-24 A | 2026-07-24 A | HAL-E-MA-EX-0060 | 100% |
| HAL-P-PO-EX-140 |  | Curbstones | 5d | 2026-07-24 A | 2026-07-24 A | HAL-E-MA-EX-0070 | 100% |
| HAL-P-PO-EX-110 |  | Road signs | 5d | 2026-08-06 A | 2026-08-06 A | HAL-E-MA-EX-0040 SS | 100% |
| HAL-P-PO-EX-90 |  | Concrete parking bumper | 5d | 2026-08-16 A | 2026-08-16 A | HAL-E-MA-EX-0020 | 100% |
| HAL-P-PO-EX-100 |  | Road markings | 5d | 2026-10-12 A | 2026-10-12 A | HAL-E-MA-EX-0030 SS | 100% |
|  | 4 | **MANUFACTURING** |  | 2026-06-17 | 2026-10-14 |  |  |
| HAL-P-MF-EX-80 |  | Asphalt works | 80d | 2026-06-17 A | 2026-06-20 A | HAL-P-PO-EX-80 | 100% |
| HAL-P-MF-EX-150 |  | Gravel bedding | 30d | 2026-06-25 A | 2026-06-27 A | HAL-P-PO-EX-150 | 100% |
| HAL-P-MF-EX-130 |  | Interlock tiles | 25d | 2026-07-24 A | 2026-07-25 A | HAL-P-PO-EX-130 | 100% |
| HAL-P-MF-EX-140 |  | Curbstones | 25d | 2026-07-24 A | 2026-07-25 A | HAL-P-PO-EX-140 | 100% |
| HAL-P-MF-EX-110 |  | Road signs | 25d | 2026-08-06 A | 2026-08-08 A | HAL-P-PO-EX-110 | 100% |

| ID | WBS | Task | Duration | Start | Finish | Predecessors | Complete |
| --- | --- | --- | --- | --- | --- | --- | --- |
| HAL-P-MF-EX-90 |  | Concrete parking bumper | 25d | 2026-08-16 A | 2026-09-17 A | HAL-P-PO-EX-90 | 100% |
| HAL-P-MF-EX-100 |  | Road markings | 10d | 2026-10-12 A | 2026-10-14 A | HAL-P-PO-EX-100 | 100% |
|  | 2 | **DELIVERY** |  | 2026-06-20 | 2026-10-15 |  |  |
| HAL-P-DL-EX-80 |  | Asphalt works | 7d | 2026-06-20 A | 2026-06-20 A | HAL-P-MF-EX-80 | 100% |
| HAL-P-DL-EX-150 |  | Gravel bedding | 2d | 2026-06-27 A | 2026-06-27 A | HAL-P-MF-EX-150 | 100% |
| HAL-P-DL-EX-130 |  | Interlock tiles | 2d | 2026-07-25 A | 2026-07-25 A | HAL-P-MF-EX-130 | 100% |
| HAL-P-DL-EX-140 |  | Curbstones | 2d | 2026-07-25 A | 2026-07-25 A | HAL-P-MF-EX-140 | 100% |
| HAL-P-DL-EX-110 |  | Road signs | 2d | 2026-08-08 A | 2026-08-08 A | HAL-P-MF-EX-110 | 100% |
| HAL-P-DL-EX-90 |  | Concrete parking bumper | 2d | 2026-09-19 A | 2026-09-19 A | HAL-P-MF-EX-90 | 100% |
| HAL-P-DL-EX-100 |  | Road markings | 2d | 2026-10-15 A | 2026-10-15 A | HAL-P-MF-EX-100 | 100% |
|  | 3 | **STAGING TIME** |  | 2026-06-27 | 2026-10-15 |  |  |
| HAL-P-ST-EX-150 |  | Gravel bedding | 7d | 2026-06-27 A | 2026-06-27 A | HAL-P-DL-EX-150, HAL-P-ST-EX-90 | 100% |
| HAL-P-ST-EX-130 |  | Interlock tiles | 7d | 2026-07-25 A | 2026-07-25 A | HAL-P-DL-EX-130 | 100% |
| HAL-P-ST-EX-140 |  | Curbstones | 7d | 2026-07-25 A | 2026-07-25 A | HAL-P-DL-EX-140 | 100% |
| HAL-P-ST-EX-110 |  | Road signs | 7d | 2026-08-08 A | 2026-08-08 A | HAL-P-DL-EX-110 | 100% |
| HAL-P-ST-EX-90 |  | Concrete parking bumper | 7d | 2026-09-19 A | 2026-09-19 A | HAL-P-DL-EX-90 | 100% |
| HAL-P-ST-EX-80 |  | Asphalt works | 1d | 2026-10-10 A | 2026-10-10 A | HAL-P-DL-EX-80 | 100% |
| HAL-P-ST-EX-100 |  | Road markings | 1d | 2026-10-15 A | 2026-10-15 A | HAL-P-DL-EX-100 | 100% |
|  | 5 | **ENVIRONMENTAL** |  | 2026-02-24 | 2026-08-02 |  |  |
|  | 1 | **PO ISSUE** |  | 2026-02-24 | 2026-02-24 |  |  |
| HAL-P-PO-EN-100 |  | HDPE pipes for fire system | 5d | 2026-02-24 A | 2026-02-24 A | HAL-E-MA-EN-0010 | 100% |
| HAL-P-PO-EN-110 |  | Directly buried gate valve for fire system | 5d | 2026-02-24 A | 2026-02-24 A | HAL-E-MA-EN-0020, HAL-P-PO-EN-100 | 100% |
| HAL-P-PO-EN-120 |  | HDPE pipes for water supply system | 5d | 2026-02-24 A | 2026-02-24 A | HAL-E-MA-EN-0030, HAL-P-PO-EN-110 | 100% |
| HAL-P-PO-EN-140 |  | Air valve | 5d | 2026-02-24 A | 2026-02-24 A | HAL-E-MA-EN-0050, HAL-P-PO-EN-130 | 100% |
| HAL-P-PO-EN-150 |  | Washout valve | 5d | 2026-02-24 A | 2026-02-24 A | HAL-E-MA-EN-0060, HAL-P-PO-EN-140 | 100% |
| HAL-P-PO-EN-160 |  | Gate valve | 5d | 2026-02-24 A | 2026-02-24 A | HAL-E-MA-EN-0070, HAL-P-PO-EN-150 | 100% |
| HAL-P-PO-EN-170 |  | GRP pipes | 5d | 2026-02-24 A | 2026-02-24 A | HAL-E-MA-EN-0080, HAL-P-PO-EN-160 | 100% |
| HAL-P-PO-EN-130 |  | Directly buried gate valve for water system | 0.88d | 2026-02-24 A | 2026-02-24 A | HAL-E-MA-EN-0040, HAL-P-PO-EN-120 | 100% |
|  | 4 | **MANUFACTURING** |  | 2026-02-24 | 2026-08-01 |  |  |
| HAL-P-MF-EN-100 |  | HDPE pipes for fire system | 80d | 2026-02-24 A | 2026-02-28 A | HAL-P-PO-EN-100 | 100% |
| HAL-P-MF-EN-110 |  | Directly buried gate valve for fire system | 30d | 2026-02-24 A | 2026-08-01 A | HAL-P-PO-EN-110 | 100% |
| HAL-P-MF-EN-120 |  | HDPE pipes for water supply system | 80d | 2026-02-24 A | 2026-02-28 A | HAL-P-PO-EN-120 | 100% |
| HAL-P-MF-EN-130 |  | Directly buried gate valve for water system | 30d | 2026-02-24 A | 2026-08-01 A | HAL-P-PO-EN-130 | 100% |
| HAL-P-MF-EN-140 |  | Air valve | 80d | 2026-02-24 A | 2026-05-13 A | HAL-P-PO-EN-140 | 100% |
| HAL-P-MF-EN-160 |  | Gate valve | 30d | 2026-02-24 A | 2026-08-01 A | HAL-P-PO-EN-160 | 100% |
| HAL-P-MF-EN-170 |  | GRP pipes | 80d | 2026-02-24 A | 2026-02-28 A | HAL-P-PO-EN-170 | 100% |
| HAL-P-MF-EN-150 |  | Washout valve | 30d | 2026-02-24 A | 2026-08-01 A | HAL-P-PO-EN-150 | 100% |
|  | 2 | **DELIVERY** |  | 2026-03-01 | 2026-08-02 |  |  |
| HAL-P-DL-EN-100 |  | HDPE pipes for fire system | 7d | 2026-03-01 A | 2026-03-01 A | HAL-P-MF-EN-100 | 100% |
| HAL-P-DL-EN-120 |  | HDPE pipes for water supply system | 7d | 2026-03-01 A | 2026-03-01 A | HAL-P-MF-EN-120 | 100% |
| HAL-P-DL-EN-170 |  | GRP pipes | 7d | 2026-03-01 A | 2026-03-01 A | HAL-P-MF-EN-170 | 100% |
| HAL-P-DL-EN-140 |  | Air valve | 7d | 2026-05-13 A | 2026-05-13 A | HAL-P-MF-EN-140 | 100% |
| HAL-P-DL-EN-110 |  | Directly buried gate valve for fire system | 7d | 2026-08-02 A | 2026-08-02 A | HAL-P-MF-EN-110 | 100% |
| HAL-P-DL-EN-130 |  | Directly buried gate valve for water system | 7d | 2026-08-02 A | 2026-08-02 A | HAL-P-MF-EN-130 | 100% |
| HAL-P-DL-EN-150 |  | Washout valve | 7d | 2026-08-02 A | 2026-08-02 A | HAL-P-MF-EN-150 | 100% |
| HAL-P-DL-EN-160 |  | Gate valve | 7d | 2026-08-02 A | 2026-08-02 A | HAL-P-MF-EN-160 | 100% |
|  | 3 | **STAGING TIME** |  | 2026-03-01 | 2026-08-02 |  |  |
| HAL-P-ST-EN-100 |  | HDPE pipes for fire system | 7d | 2026-03-01 A | 2026-03-01 A | HAL-P-DL-EN-100 | 100% |
| HAL-P-ST-EN-120 |  | HDPE pipes for water supply system | 7d | 2026-03-01 A | 2026-03-01 A | HAL-P-DL-EN-120 | 100% |
| HAL-P-ST-EN-170 |  | GRP pipes | 7d | 2026-03-01 A | 2026-03-01 A | HAL-P-DL-EN-170 | 100% |
| HAL-P-ST-EN-140 |  | Air valve | 7d | 2026-05-13 A | 2026-05-13 A | HAL-P-DL-EN-140 | 100% |
| HAL-P-ST-EN-110 |  | Directly buried gate valve for fire system | 7d | 2026-08-02 A | 2026-08-02 A | HAL-P-DL-EN-110 | 100% |
| HAL-P-ST-EN-130 |  | Directly buried gate valve for water system | 7d | 2026-08-02 A | 2026-08-02 A | HAL-P-DL-EN-130, HAL-P-ST-EN-110 | 100% |
| HAL-P-ST-EN-150 |  | Washout valve | 7d | 2026-08-02 A | 2026-08-02 A | HAL-P-DL-EN-150 | 100% |
| HAL-P-ST-EN-160 |  | Gate valve | 7d | 2026-08-02 A | 2026-08-02 A | HAL-P-DL-EN-160 | 100% |
|  | 5 | **CONSTRUCTION (60%)** |  | 2025-12-22 | 2026-11-01 |  |  |
|  | 1 | **RBF 900 SQM FACTORIES** |  | 2025-12-22 | 2026-10-27 |  |  |
|  | 2 | **SITE WORKS** |  | 2025-12-22 | 2026-09-24 |  |  |
| HAL-C-GEN-10 |  | Initial Site Survey and Setting out | 10d | 2025-12-22 A | 2025-12-25 A | HAL-MOB-SO.0016 | 100% |
| HAL-C-GEN-77 |  | Excavation to the target grading level | 7d | 2025-12-27 A | 2026-01-31 A | HAL-C-GEN-10, HAL-PMS-DMS-2360 | 100% |
| HAL-C-GEN-1440 |  | Relocating of existing Tress | 5d | 2026-01-18 A | 2026-01-21 A | HAL-C-GEN-99 | 100% |
| HAL-C-GEN-99 |  | Demolition of existing structure | 14.12d | 2026-04-09 A | 2026-04-11 A | HAL-C-GEN-88 | 100% |
| HAL-C-GEN-88 |  | Demolition of existing curbstone,side walk & steel fence | 12d | 2026-06-17 A | 2026-06-20 A | HAL-C-GEN-10 | 100% |
| HAL-C-GEN-78 |  | Backfilling to reach target level | 5d | 2026-08-22 A | 2026-08-29 A | HAL-C-GEN-77, HAL-C-GEN-180, HAL-MOB-SO.0020 | 100% |
| HAL-C-GEN-620 |  | Block Wall | 10d | 2026-09-22 A | 2026-09-24 A | HAL-C-GEN-1440 | 100% |
|  | 4 | **BLOCK B** |  | 2025-12-28 | 2026-10-22 |  |  |
|  | 1 | **STRUCTURAL** |  | 2025-12-28 | 2026-07-16 |  |  |
|  | 1 | **FOOTING** |  | 2025-12-28 | 2026-01-28 |  |  |
| HAL-C-B-S-160 |  | Excavation for footings | 7d | 2025-12-28 A | 2026-01-07 A | HAL-C-GEN-78, HAL-C-GEN-88, HAL-E-SA-C-750, HAL-E-SA-R-730, HAL-E-SA-R-740, HAL-E-SA-R-750, HAL-E-SA-R-760, HAL-E-SA-R-770, HAL-E-SA-R-780, HAL-PRE-SUB-1015, HAL-PRE-SUB-1014, HAL-PRE-SUB-1013 | 100% |
| HAL-C-B-S-777 |  | Anti Termite Below Footings | 1d | 2026-01-10 A | 2026-01-10 A | HAL-C-B-S-160, HAL-P-ST-C-50 | 100% |

| ID | WBS | Task | Duration | Start | Finish | Predecessors | Complete | Total float |
| --- | --- | --- | --- | --- | --- | --- | --- | --- |
| HAL-C-B-S-537 |  | Lean Concrete Below Footings | 2d | 2026-01-11 A | 2026-01-11 A | HAL-C-B-S-687, HAL-P-ST-C-60, HAL-E-SA-R-790, HAL-E-SA-R-800, HAL-E-SA-R-810, HAL-E-SA-R-820 | 100% |  |
| HAL-C-B-S-687 |  | Vapour Barrier for Footings | 1d | 2026-01-11 A | 2026-01-11 A | HAL-C-B-S-777, HAL-P-ST-C-70 | 100% |  |
| HAL-C-B-S-597 |  | Formwork for Footings | 3.5d | 2026-01-13 A | 2026-01-21 A | HAL-C-B-S-587 | 100% |  |
| HAL-C-B-S-587 |  | Rebar for Footings | 4d | 2026-01-20 A | 2026-01-27 A | HAL-C-B-S-537, HAL-E-MT-C-2010, HAL-P-ST-C-90 | 100% |  |
| HAL-C-B-S-547 |  | Pouring Concrete for Footings | 1d | 2026-01-28 A | 2026-01-28 A | HAL-C-B-S-597 | 100% |  |
|  | 2 | **COLUMN NECK** |  | 2026-01-29 | 2026-04-06 |  |  |  |
| HAL-C-B-S-637 |  | Rebar for column neck | 2d | 2026-01-29 A | 2026-02-03 A | HAL-C-B-S-547, HAL-E-SA-R-830, HAL-E-SA-R-840, HAL-E-SA-R-850, HAL-E-SA-R-860, HAL-E-SA-R-870, HAL-E-SA-R-880, HAL-E-SA-R-890, HAL-E-SA-R-900 | 100% |  |
| HAL-C-B-S-647 |  | Formwork for column neck | 2d | 2026-02-03 A | 2026-02-05 A | HAL-C-B-S-637, HAL-E-MT-C-2010, HAL-E-SA-M-600, HAL-E-SA-M-610, HAL-E-SA-M-620, HAL-E-SA-M-630, HAL-E-SA-M-640, HAL-E-SA-A-830, HAL-E-SA-A-840, HAL-E-SA-A-850, HAL-E-SA-A-860, HAL-E-SA-A-1170, HAL-E-SA-A-870, HAL-E-SA-A-880, HAL-E-SA-A-890, HAL-E-SA-C-840, HAL-E-SA-C-850, HAL-E-SA-C-860, HAL-E-SA-C-870, HAL-E-SA-C-880, HAL-E-SA-C-890, HAL-E-SA-C-750, HAL-E-SA-C-760, HAL-E-SA-C-770, HAL-E-SA-C-780, HAL-E-SA-C-790, HAL-E-SA-C-800, HAL-E-SA-C-810, HAL-E-SA-C-820, HAL-E-SA-C-830 | 100% |  |
| HAL-C-B-S-677 |  | Damp proof /Bitumin paint on Footings & column neck | 2d | 2026-02-07 A | 2026-03-03 A | HAL-C-B-S-627, HAL-P-ST-C-80 | 100% |  |
| HAL-C-B-S-627 |  | Pouring Concrete for column neck | 1d | 2026-02-10 A | 2026-03-02 A | HAL-C-B-S-647 | 100% |  |
| HAL-C-B-S-737 |  | Backfilling / Compaction up to Bottom of Grade Beams | 14d | 2026-02-14 A | 2026-04-06 A | HAL-C-B-S-677, HAL-E-SA-EX-690, HAL-E-SA-EX-700, HAL-E-SA-EX-710, HAL-E-SA-EX-720, HAL-E-SA-EX-730, HAL-E-SA-EX-740, HAL-E-SA-EX-750, HAL-E-SA-EX-760, HAL-E-SA-EX-770, HAL-E-SA-EX-780 | 100% |  |
|  | 3 | **GRADE BEAM** |  | 2026-04-14 | 2026-05-07 |  |  |  |
| HAL-C-B-S-557 |  | Lean Concrete Below Grade Beams | 2d | 2026-04-14 A | 2026-04-14 A | HAL-C-B-S-707, HAL-E-MT-E-2040, HAL-E-SA-R-910, HAL-E-SA-R-920, HAL-E-SA-R-930, HAL-E-SA-R-940, HAL-E-SA-R-950, HAL-E-SA-R-960 | 100% |  |
| HAL-C-B-S-707 |  | Vapour barrier for Grade Beams | 2d | 2026-04-14 A | 2026-04-14 A | HAL-C-B-S-787 | 100% |  |
| HAL-C-B-S-787 |  | Anti Termite Below Grade Beams | 1d | 2026-04-14 A | 2026-04-14 A | HAL-C-B-S-737, HAL-E-SA-C-760, HAL-E-SA-E-940, HAL-E-SA-E-950, HAL-E-SA-E-960, HAL-E-SA-E-970, HAL-E-SA-E-980, HAL-E-SA-E-990, HAL-E-SA-E-1000, HAL-E-SA-E-1010, HAL-E-SA-E-1020, HAL-E-SA-E-1030, HAL-E-SA-E-1040, HAL-E-SA-M-650, HAL-E-SA-M-660, HAL-E-SA-M-670, HAL-E-SA-M-680, HAL-E-SA-M-690, HAL-E-SA-M-700, HAL-E-SA-M-710, HAL-E-SA-A-900, HAL-E-SA-A-910, HAL-E-SA-A-920, HAL-E-SA-A-930, HAL-E-SA-A-940, HAL-E-SA-A-950, HAL-E-SA-A-960 | 100% |  |
| HAL-C-B-S-607 |  | Rebar for Grade Beams | 5d | 2026-04-15 A | 2026-04-29 A | HAL-C-B-S-557, HAL-E-SA-C-860, HAL-E-SA-C-870 | 100% |  |
| HAL-C-B-S-617 |  | Formwork for Grade Beams | 2d | 2026-04-15 A | 2026-04-29 A | HAL-C-B-S-607, HAL-E-SA-EX-790, HAL-E-SA-EX-800, HAL-E-SA-EX-830, HAL-E-SA-EX-840, HAL-E-SA-EX-810, HAL-E-SA-EX-850, HAL-E-SA-EX-820, HAL-E-SA-EX-860, HAL-E-SA-EX-870, HAL-E-SA-EX-880, HAL-E-SA-EX-890 | 100% |  |
| HAL-C-B-S-767 |  | Anchor bolts installation | 2d | 2026-04-25 A | 2026-04-29 A | HAL-C-B-S-617 SS, HAL-E-SA-C-770, HAL-E-SA-C-850 | 100% |  |
| HAL-C-B-S-567 |  | Pouring Concrete for Grade Beams | 1d | 2026-04-29 A | 2026-04-29 A | HAL-C-B-S-617, HAL-C-B-S-767 | 100% |  |
| HAL-C-B-S-717 |  | Damp proof /Bitumin paint on Grade Beams | 2d | 2026-05-06 A | 2026-05-07 A | HAL-C-B-S-567 | 100% |  |
|  | 5 | **SLAB ON GRADE** |  | 2026-05-09 | 2026-06-20 |  |  |  |
| HAL-C-B-S-747 |  | Backfilling / Compaction for Slab on Grade | 12d | 2026-05-09 A | 2026-05-20 A | HAL-C-B-S-717, HAL-E-SA-E-1050, HAL-E-SA-E-1060, HAL-E-SA-E-1070, HAL-E-SA-E-1080, HAL-E-SA-E-1090, HAL-E-SA-E-1100, HAL-E-SA-E-1110, HAL-E-SA-M-720, HAL-E-SA-M-730, HAL-E-SA-M-740, HAL-E-SA-M-750, HAL-E-SA-M-760, HAL-E-SA-M-770, HAL-E-SA-M-780, HAL-E-SA-M-790, HAL-E-SA-M-800 | 100% |  |
| HAL-C-B-S-577 |  | Pouring Concrete for Ground Slab | 4d | 2026-06-01 A | 2026-06-04 A | HAL-C-B-S-727 | 100% |  |
| HAL-C-B-S-697 |  | Anti Termite Treatment below Ground Slab | 1d | 2026-06-01 A | 2026-06-04 A | HAL-C-B-S-747, HAL-C-B-S-747 FF, HAL-E-MT-ENV-2060, HAL-E-SA-E-1120, HAL-E-SA-E-1130, HAL-E-SA-E-1140, HAL-E-SA-E-1150, HAL-E-SA-E-1160, HAL-E-SA-E-1170, HAL-E-SA-E-1180 | 100% |  |
| HAL-C-B-S-727 |  | Vapour barrier for below Ground Slab | 2d | 2026-06-01 A | 2026-06-04 A | HAL-C-B-S-697 | 100% |  |
| HAL-C-B-S-757 |  | Concrete pad | 7d | 2026-06-17 A | 2026-06-20 A | HAL-C-B-A-200 | 100% |  |
|  | 4 | **COLUMNS & BEAMS** |  | 2026-02-28 | 2026-07-16 |  |  |  |
| HAL-C-B-S-6101 |  | Rebar for Tie Beams | 4d | 2026-02-28 A | 2026-03-02 A | HAL-C-B-S-5103, HAL-E-SA-C-780 | 100% |  |
| HAL-C-B-S-6102 |  | Formwork for Tie Beams | 2d | 2026-03-02 A | 2026-03-04 A | HAL-C-B-S-6101 | 100% |  |
| HAL-C-B-S-6103 |  | Pouring Concrete for Tie Beams | 1d | 2026-03-05 A | 2026-03-05 A | HAL-C-B-S-6102 | 100% |  |
| HAL-C-B-S-5101 |  | Rebar for column | 7d | 2026-06-01 A | 2026-06-04 A | HAL-C-B-S-747, HAL-E-SA-C-820, HAL-C-B-M-510 | 100% |  |
| HAL-C-B-S-5102 |  | Formwork for column | 4d | 2026-06-09 A | 2026-06-11 A | HAL-C-B-S-5101, HAL-E-SA-EX-1050 | 100% |  |
| HAL-C-B-S-5103 |  | Pouring Concrete for column | 1d | 2026-06-13 A | 2026-06-13 A | HAL-C-B-S-5102 | 100% |  |
| HAL-C-B-S-6113 |  | Rebar for Beams | 4d | 2026-07-08 A | 2026-07-16 A | HAL-C-B-S-6103, HAL-E-SA-C-830, HAL-E-SA-C-840 | 100% |  |
| HAL-C-B-S-6123 |  | Formwork for Beams | 2d | 2026-07-08 A | 2026-07-16 A | HAL-C-B-S-6113, HAL-C-B-S-6113 FF | 100% |  |
| HAL-C-B-S-6133 |  | Pouring Concrete for Beams | 1d | 2026-07-11 A | 2026-07-16 A | HAL-C-B-S-6123, HAL-C-B-S-6123 FF | 100% |  |
|  | 5 | **STRUCTURAL STEEL** |  | 2026-05-16 | 2026-08-15 |  |  |  |
| HAL-C-B-SS-150 |  | Installation of columns | 3d | 2026-05-16 A | 2026-05-20 A | HAL-E-SA-C-790, HAL-E-ST-A-1700, HAL-C-B-S-717 | 100% |  |
| HAL-C-B-SS-160 |  | Installation of raft and purlins | 5d | 2026-05-16 A | 2026-05-20 A | HAL-C-B-SS-150, HAL-E-SA-C-800 | 100% |  |
| HAL-C-A1-SS-1030 |  | Steel members for external platform | 5d | 2026-05-25 A | 2026-05-31 A | HAL-C-B-SS-1030 | 100% |  |
| HAL-C-B-SS-1030 |  | Steel members for office area | 5d | 2026-05-25 A | 2026-05-31 A | HAL-C-B-SS-160 | 100% |  |
| HAL-C-B-SS-1020 |  | Intumescent paint to steel works | 5d | 2026-06-13 A | 2026-06-22 A | HAL-C-B-S-747, HAL-E-ST-A-1700, HAL-C-B-SS-160 | 100% |  |
| HAL-C-B-SS-190 |  | Installation of roof sheet | 7d | 2026-06-22 A | 2026-06-30 A | HAL-C-B-A-170, HAL-C-B-SS-1020, HAL-C-B-S-6133, HAL-E-SA-C-810 | 100% |  |
| HAL-C-A1-SS-1040 |  | Epoxy paint for external platform | 5d | 2026-07-28 A | 2026-07-30 A | HAL-C-A1-SS-1030 | 100% |  |
| HAL-C-B-SS-180 |  | Installation of wall sandwich panel | 5d | 2026-08-01 A | 2026-08-13 A | HAL-C-B-A-200 | 100% |  |
| HAL-C-A1-SS-1020 |  | Epoxy paint to steel members at office area | 5d | 2026-08-13 A | 2026-08-15 A | HAL-C-B-SS-1030 | 100% |  |
|  | 2 | **ARCHITECTURAL** |  | 2026-06-17 | 2026-10-22 |  |  |  |
|  | 1 | **MASONARY WORKS** |  | 2026-06-17 | 2026-07-05 |  |  |  |
| HAL-C-B-A-170 |  | Block work at factory area | 10d | 2026-06-17 A | 2026-07-05 A | HAL-C-B-S-577, HAL-C-B-SS-160, HAL-E-SA-A-830, HAL-E-SA-A-840, HAL-E-SA-A-860, HAL-E-SA-A-870, HAL-E-MT-A-2020, HAL-P-ST-A-200, HAL-C-A1-SS-1040, HAL-C-A1-SS-1020, HAL-P-ST-E-370 | 100% |  |
| HAL-C-B-A-200 |  | Block work at office area | 7d | 2026-06-17 A | 2026-07-05 A | HAL-C-B-A-170, HAL-C-B-SS-190, HAL-C-B-SS-1030 | 100% |  |
| HAL-C-B-A-620 |  | Block work at toilet area | 7d | 2026-06-17 A | 2026-07-05 A | HAL-C-B-A-200, HAL-P-ST-E-320 | 100% |  |
|  | 5 | **WALL FINISHES** |  | 2026-08-02 | 2026-10-19 |  |  |  |
| HAL-C-B-A-630 |  | Internal Wall Plaster | 15d | 2026-08-02 A | 2026-08-13 A | HAL-C-B-A-620, HAL-C-B-E-413, HAL-E-SA-A-1170, HAL-E-SA-A-880, HAL-C-B-S-757, HAL-P-ST-E-350, HAL-P-ST-E-340 | 100% |  |
| HAL-C-B-A-680 |  | Paint to Plaster (Primer, Putty & First Coat) | 7d | 2026-08-25 A | 2026-10-19 | HAL-C-B-A-700, HAL-P-ST-A-320 | 90% | 9.35d |
|  | 2 | **CIELING FINISHES** |  | 2026-09-19 | 2026-09-24 |  |  |  |
| HAL-C-B-A-690 |  | Installation of Ceiling Gypsum Board | 5d | 2026-09-19 A | 2026-09-24 A | HAL-C-B-A-670, HAL-C-B-S-757, HAL-E-SA-A-890, HAL-P-ST-A-330 | 100% |  |
|  | 6 | **FLOOR FINISHES** |  | 2026-09-08 | 2026-10-15 |  |  |  |
| HAL-C-B-A-700 |  | Tiles for Office Area | 2d | 2026-09-08 A | 2026-09-10 A | HAL-C-B-A-690, HAL-P-ST-M-3410, HAL-P-ST-M-560, HAL-P-ST-M-420 | 100% |  |
| HAL-C-B-A-670 |  | Tiles for Toilet | 7d | 2026-09-22 A | 2026-09-24 A | HAL-C-B-A-810, HAL-E-SA-A-900, HAL-E-SA-A-910, HAL-P-ST-A-280, HAL-P-ST-E-330, HAL-P-ST-E-300, HAL-P-ST-E-290 | 100% |  |
| HAL-C-B-A-830 |  | Granite strip | 2d | 2026-09-22 A | 2026-09-24 A | HAL-C-B-A-700, HAL-P-ST-A-290, HAL-P-ST-M-580 | 100% |  |
| HAL-C-B-A-850 |  | Epoxy paint | 7d | 2026-09-24 A | 2026-10-15 A | HAL-C-B-A-960, HAL-P-ST-A-310 | 100% |  |
|  | 3 | **DOORS & WINDOWS** |  | 2026-07-29 | 2026-09-26 |  |  |  |
| HAL-C-B-A-1010 |  | Window (CW1) | 7d | 2026-07-29 A | 2026-09-24 A | HAL-C-B-SS-180, HAL-P-ST-A-190 | 100% |  |
| HAL-C-B-A-960 |  | Skylight fixtures installation | 7d | 2026-08-08 A | 2026-08-15 A | HAL-C-B-A-950, HAL-E-SA-A-850 | 100% |  |
| HAL-C-B-A-640 |  | Roll up Shutter Door | 1d | 2026-08-13 A | 2026-08-15 A | HAL-C-B-A-1010, HAL-E-SA-A-920, HAL-E-SA-A-930, HAL-E-SA-A-940, HAL-P-ST-A-180 | 100% |  |
| HAL-C-B-A-650 |  | Supply and install (D5) 1000*2200mm single leaf steel door with door | 1d | 2026-08-26 A | 2026-09-10 A | HAL-C-B-A-640 | 100% |  |
| HAL-C-B-A-950 |  | Supply and install fire rated 45 min (D2) 1200*2200 mm single leaf steel door | 1d | 2026-08-26 A | 2026-09-10 A | HAL-C-B-A-940 | 100% |  |
| HAL-C-B-A-710 |  | Supply and install (D4) 800*2200 mm single leaf aluminum door with door | 1d | 2026-09-14 A | 2026-09-26 A | HAL-C-B-A-650 | 100% |  |
| HAL-C-B-A-720 |  | Supply and install (D7) 1000*2200 mm single leaf aluminum door with door | 1d | 2026-09-14 A | 2026-09-26 A | HAL-C-B-A-710 | 100% |  |
| HAL-C-B-A-940 |  | Supply and install (D3) 1000*2200 mm single leaf aluminum door with door | 1d | 2026-09-14 A | 2026-09-26 A | HAL-C-B-A-720, HAL-P-ST-EN-130 | 100% |  |

| ID | WBS | Task | Duration | Start | Finish | Predecessors | Complete | Total float |
| --- | --- | --- | --- | --- | --- | --- | --- | --- |
|  | 4 | **WATER PROOFING WORKS** |  | 2026-08-11 | 2026-08-13 |  |  |  |
| HAL-C-B-A-810 |  | Waterproofing membrane for toilets | 4d | 2026-08-11 A | 2026-08-13 A | HAL-C-B-M-510, HAL-C-B-A-630, HAL-C-B-A-960 | 100% |  |
|  | 7 | **METAL WORKS** |  | 2026-08-17 | 2026-10-22 |  |  |  |
| HAL-C-B-A-740 |  | Steel Ladder | 2d | 2026-08-17 A | 2026-08-29 A | HAL-C-B-A-830, HAL-P-ST-A-210 | 100% |  |
| HAL-C-B-A-760 |  | Aluminium composite panel | 5d | 2026-09-05 A | 2026-10-03 A | HAL-C-B-A-840 SS, HAL-P-ST-A-1720 | 100% |  |
| HAL-C-B-A-750 |  | Galvanised Steel Gratings | 2d | 2026-10-06 A | 2026-10-07 A | HAL-C-B-A-760, HAL-P-ST-A-220 | 100% |  |
| HAL-C-B-A-840 |  | Steel railing works | 4d | 2026-10-19 | 2026-10-22 | HAL-C-B-A-740, HAL-P-ST-A-230, HAL-P-ST-EX-150, HAL-P-DL-EX-140, HAL-P-ST-EX-140, HAL-P-ST-EX-130, HAL-P-DL-EX-110, HAL-P-DL-EX-100, HAL-P-DL-EX-90 |  | 8.75d |
|  | 8 | **SPECIALTIES** |  | 2026-09-22 | 2026-10-21 |  |  |  |
| HAL-C-B-A-770 |  | Installation of fittings | 5d | 2026-09-22 A | 2026-09-24 A | HAL-C-B-A-750 SS, HAL-P-ST-M-570 | 100% |  |
| HAL-C-B-A-1000 |  | Identification sign; ID01 & ID02 | 3d | 2026-10-19 | 2026-10-21 | HAL-C-B-A-770, HAL-E-SA-A-950, HAL-E-SA-A-960, HAL-P-ST-A-1760 |  | 9.75d |
| HAL-C-B-A-790 |  | Furniture Installation | 1d | 2026-10-19 | 2026-10-19 | HAL-C-B-A-1000 SS |  | 9.75d |
|  | 3 | **MECHANICAL** |  | 2026-04-25 | 2026-09-24 |  |  |  |
|  | 1 | **HVAC** |  | 2026-07-11 | 2026-09-24 |  |  |  |
|  | 1 | **FIRST STAGE** |  | 2026-07-11 | 2026-08-02 |  |  |  |
| HAL-C-B-M-450 |  | Installation of HVAC Ducts | 2d | 2026-07-11 A | 2026-08-02 A | HAL-C-B-M-470, HAL-E-SA-M-730, HAL-E-SA-M-740, HAL-P-ST-M-600, HAL-P-ST-M-610 | 100% |  |
| HAL-C-B-M-480 |  | Installation of Duct insulation | 2d | 2026-07-11 A | 2026-08-02 A | HAL-C-B-M-450 | 100% |  |
|  | 2 | **SECOND STAGE** |  | 2026-08-02 | 2026-09-24 |  |  |  |
| HAL-C-B-M-440 |  | Installation of Exhaust Fans | 2d | 2026-08-02 A | 2026-08-02 A | HAL-C-B-A-680, HAL-P-ST-M-590 | 100% |  |
| HAL-C-B-M-470 |  | Installation of Wall Propeller Type Exhaust Fan | 4d | 2026-09-02 A | 2026-09-12 A | HAL-C-B-M-440, HAL-E-SA-M-750, HAL-E-SA-M-760, HAL-P-ST-M-370 | 100% |  |
| HAL-C-B-M-650 |  | Supply, install, test and commission door grilles & exhaust louvers | 2d | 2026-09-02 A | 2026-09-12 A | HAL-C-B-M-460 | 100% |  |
| HAL-C-B-M-460 |  | Installation of Diffuser | 2d | 2026-09-16 A | 2026-09-24 A | HAL-C-B-M-480, HAL-P-ST-M-620 | 100% |  |
|  | 2 | **FIRE FIGHTING SYSTEM** |  | 2026-06-24 | 2026-09-12 |  |  |  |
|  | 1 | **FIRST STAGE** |  | 2026-06-24 | 2026-08-08 |  |  |  |
| HAL-C-B-M-610 |  | Installation of Fire Fighting Pipes (Seamless Black Steel) | 7d | 2026-06-24 A | 2026-08-08 A | HAL-C-B-A-680, HAL-E-SA-M-770, HAL-E-SA-M-790, HAL-E-SA-M-800, HAL-E-SA-M-780, HAL-P-ST-M-340 | 100% |  |
| HAL-C-B-M-620 |  | Installation of Fire Fighting Valve | 5d | 2026-06-24 A | 2026-08-08 A | HAL-C-B-M-610, HAL-P-ST-M-390, HAL-P-ST-M-460, HAL-P-ST-M-450, HAL-P-ST-M-440 | 100% |  |
|  | 2 | **SECOND STAGE** |  | 2026-07-11 | 2026-09-12 |  |  |  |
| HAL-C-B-M-630 |  | Installation of Fire Hose Cabinet | 3d | 2026-07-11 A | 2026-09-12 A | HAL-C-B-M-620, HAL-P-ST-M-350 | 100% |  |
| HAL-C-B-M-680 |  | Supply, install, test and commission Fire Department Connection(FDC) | 3d | 2026-07-11 A | 2026-08-08 A | HAL-C-B-M-650 | 100% |  |
|  | 3 | **SEWER AND DRAINAGE SYSTEM** |  | 2026-04-25 | 2026-09-22 |  |  |  |
|  | 1 | **FIRST STAGE** |  | 2026-04-25 | 2026-08-08 |  |  |  |
| HAL-C-B-M-510 |  | Installation of Sanitary Waste / Drainage Pipes | 4d | 2026-04-25 A | 2026-05-16 A | HAL-C-B-S-717, HAL-E-SA-M-600, HAL-E-SA-M-610, HAL-E-SA-M-650, HAL-E-MT-M-2030 | 100% |  |
| HAL-C-B-M-530 |  | Installation of Floor Drain | 2d | 2026-06-17 A | 2026-08-08 A | HAL-C-B-M-510, HAL-C-B-A-670, HAL-E-SA-M-620, HAL-P-ST-M-530 | 100% |  |
| HAL-C-B-M-690 |  | Installation of Trench drain | 5d | 2026-06-17 A | 2026-08-08 A | HAL-C-B-M-530 | 100% |  |
|  | 2 | **SECOND STAGE** |  | 2026-08-05 | 2026-09-22 |  |  |  |
| HAL-C-B-M-550 |  | Installation of Roof Vent Cap | 2d | 2026-08-05 A | 2026-09-05 A | HAL-C-B-M-540, HAL-P-ST-M-520 | 100% |  |
| HAL-C-B-M-490 |  | Installation of Electric Water Heater | 2d | 2026-08-06 A | 2026-08-06 A | HAL-C-B-M-690, HAL-P-ST-M-550 | 100% |  |
| HAL-C-B-M-540 |  | Installation of Water Tap | 2d | 2026-08-25 A | 2026-09-16 A | HAL-C-B-M-520, HAL-C-B-M-580, HAL-P-ST-M-3410 | 100% |  |
| HAL-C-B-M-500 |  | Installation of Sanitary Fixture and Accessories | 4d | 2026-09-16 A | 2026-09-22 A | HAL-C-B-M-490, HAL-P-ST-M-360, HAL-C-B-A-850 | 100% |  |
| HAL-C-B-M-520 |  | Installation of Lavotary /Wash Basin | 2d | 2026-09-16 A | 2026-09-22 A | HAL-C-B-M-490, HAL-C-B-M-500, HAL-P-ST-M-580 | 100% |  |
| HAL-C-B-M-580 |  | Installation of Bib Tap | 2d | 2026-09-16 A | 2026-09-22 A | HAL-C-B-M-500, HAL-C-B-M-520, HAL-P-ST-M-560 | 100% |  |
|  | 4 | **WATER SUPPLY SYSTEM** |  | 2026-07-14 | 2026-08-06 |  |  |  |
|  | 1 | **FIRST STAGE** |  | 2026-07-14 | 2026-08-06 |  |  |  |
| HAL-C-B-M-600 |  | Installation of Water Supply Pipes | 4d | 2026-07-14 A | 2026-08-06 A | HAL-C-B-A-680, HAL-E-SA-M-630, HAL-E-SA-M-640, HAL-E-SA-M-660, HAL-P-ST-M-480 | 100% |  |
| HAL-C-B-M-590 |  | Installation of Water Supply Valve | 2d | 2026-08-01 A | 2026-08-06 A | HAL-C-B-M-600, HAL-E-SA-M-670, HAL-E-SA-M-680, HAL-E-SA-M-690, HAL-P-ST-M-490, HAL-P-ST-M-420 | 100% |  |
|  | 2 | **SECOND STAGE** |  | 2026-08-01 | 2026-08-06 |  |  |  |
| HAL-C-B-M-640 |  | Capped connection | 5d | 2026-08-01 A | 2026-08-06 A | HAL-C-B-M-590, HAL-P-ST-M-500 | 100% |  |
|  | 4 | **ELECTRICAL** |  | 2026-04-25 | 2026-10-21 |  |  |  |
|  | 1 | **FIRST STAGE** |  | 2026-04-25 | 2026-10-19 |  |  |  |
| HAL-C-B-E-343 |  | Installation of Earthing and Grounding | 4d | 2026-04-25 A | 2026-10-19 | HAL-C-B-E-453 SS, HAL-E-SA-E-1050, HAL-E-SA-E-1060, HAL-E-SA-E-1070, HAL-P-ST-E-340 | 95% | 9.95d |
| HAL-C-B-E-413 |  | Installation of Sleeves & Power outlet | 8d | 2026-04-25 A | 2026-09-10 A | HAL-C-B-A-620, HAL-E-SA-E-940, HAL-E-SA-E-950, HAL-E-SA-E-960, HAL-E-SA-E-970, HAL-E-MT-E-2040, HAL-P-ST-E-310 | 100% |  |
| HAL-C-B-E-373 |  | Installation of Conduits and wiring outlets - Fire Alarm System | 4d | 2026-06-13 A | 2026-06-20 A | HAL-C-B-E-433 | 100% |  |
| HAL-C-B-E-393 |  | Installation of Conduites for Lighting Fixture | 4d | 2026-06-13 A | 2026-06-20 A | HAL-C-B-E-363, HAL-E-SA-E-990, HAL-E-SA-E-1000 | 100% |  |
| HAL-C-B-E-463 |  | Installation of Wires | 4d | 2026-06-24 A | 2026-09-22 A | HAL-C-B-E-393, HAL-P-ST-E-320 | 100% |  |
| HAL-C-B-E-453 |  | Installation of LV Cables | 4d | 2026-09-05 A | 2026-10-15 A | HAL-C-B-E-443, HAL-P-ST-E-290, HAL-C-B-M-680 | 100% |  |
|  | 2 | **SECOND STAGE** |  | 2026-06-17 | 2026-10-21 |  |  |  |
| HAL-C-B-E-503 |  | Installation of Access Control System | 4d | 2026-06-17 A | 2026-10-20 | HAL-E-SA-E-1010, HAL-E-SA-E-1100, HAL-E-ST-E-0240 | 70% | 8.55d |
| HAL-C-B-E-720 |  | Installation of CCTV System | 7d | 2026-06-17 A | 2026-10-12 A | HAL-C-B-E-483 SS, HAL-E-SA-E-1030, HAL-E-ST-E-0230 | 100% |  |
| HAL-C-B-E-473 |  | Installation of LP-1 Panel | 2d | 2026-08-04 A | 2026-09-10 A | HAL-C-B-E-423, HAL-E-ST-E-190 | 100% |  |
| HAL-C-B-E-443 |  | Installation of Telephone Cabinet | 2d | 2026-08-13 A | 2026-10-01 A | HAL-C-B-E-483, HAL-E-SA-E-1040, HAL-E-SA-E-1090, HAL-P-ST-E-330 | 100% |  |
| HAL-C-B-E-730 |  | Installation of Solar power plant | 7d | 2026-08-22 A | 2026-10-01 A | HAL-E-SA-E-980, HAL-E-ST-E-0250 | 100% |  |
| HAL-C-B-E-403 |  | Installation of Wiring Devices | 4d | 2026-09-05 A | 2026-10-15 A | HAL-C-B-E-413, HAL-P-ST-E-350 | 100% |  |
| HAL-C-B-E-433 |  | Installation of Disconnect Switches | 2d | 2026-09-05 A | 2026-10-15 A | HAL-C-B-E-403, HAL-P-ST-E-300 | 100% |  |
| HAL-C-B-E-483 |  | Installation of PP-AC panel | 2d | 2026-09-05 A | 2026-10-15 A | HAL-C-B-E-473, HAL-E-ST-E-200 | 100% |  |
| HAL-C-B-E-423 |  | Installation of Main Distribution Board | 2d | 2026-09-16 A | 2026-10-15 A | HAL-C-B-E-383, HAL-P-ST-E-190 | 100% |  |
| HAL-C-B-E-353 |  | Installation of Fire Alarm Control Panel | 4d | 2026-09-24 A | 2026-10-15 A | HAL-C-B-E-373, HAL-E-SA-E-1020, HAL-P-ST-E-250, HAL-C-B-E-730 | 100% |  |
| HAL-C-B-E-363 |  | Installation of Fire Detectors & Accessories | 4d | 2026-09-24 A | 2026-10-12 A | HAL-C-B-E-353, HAL-E-SA-E-1080 | 100% |  |
| HAL-C-B-E-383 |  | Installation of Lighting fixtures | 4d | 2026-09-24 A | 2026-10-15 A | HAL-C-B-E-463, HAL-P-ST-E-200, HAL-P-ST-E-210, HAL-P-ST-E-220, HAL-P-ST-E-230, HAL-P-ST-E-240 | 100% |  |
| HAL-C-B-E-513 |  | Monitor Modules for Fire Alarm | 2d | 2026-09-24 A | 2026-10-21 | HAL-C-B-E-503, HAL-E-SA-E-1110, HAL-E-SA-E-1120 | 50% | 8.55d |
| HAL-C-B-E-523 |  | Line Isolator Modules for Fire Alarm | 2d | 2026-09-24 A | 2026-10-15 A | HAL-C-B-E-513 | 100% |  |
| HAL-C-B-E-533 |  | Firewarning flash light with sounder; wall mounted, Weather proof | 2d | 2026-09-24 A | 2026-10-01 A | HAL-C-B-E-523 | 100% |  |

| ID | WBS | Task | Duration | Start | Finish | Predecessors | Complete | Total float |
| --- | --- | --- | --- | --- | --- | --- | --- | --- |
|  | 8 | **BLOCK C** |  | 2026-01-04 | 2026-10-27 |  |  |  |
|  | 1 | **STRUCTURAL** |  | 2026-01-04 | 2026-06-20 |  |  |  |
|  | 1 | **FOOTING** |  | 2026-01-04 | 2026-02-03 |  |  |  |
| HAL-C-C-S-250 |  | Excavation for footings | 7d | 2026-01-04 A | 2026-01-12 A | HAL-C-B-S-160, HAL-PMS-MMS-0030, HAL-PMS-MMS-0020, HAL-PMS-MMS-0050, HAL-PMS-MMS-0040 | 100% |  |
| HAL-C-C-S-1057 |  | Lean Concrete Below Footings | 2d | 2026-01-18 A | 2026-01-18 A | HAL-C-C-S-1207 | 100% |  |
| HAL-C-C-S-1207 |  | Vapour Barrier for Footings | 1d | 2026-01-18 A | 2026-01-18 A | HAL-C-C-S-1297 | 100% |  |
| HAL-C-C-S-1297 |  | Anti Termite Below Footings | 1d | 2026-01-18 A | 2026-01-18 A | HAL-C-C-S-250 | 100% |  |
| HAL-C-C-S-1117 |  | Formwork for Footings | 3.12d | 2026-01-21 A | 2026-01-27 A | HAL-C-C-S-1107 | 100% |  |
| HAL-C-C-S-1107 |  | Rebar for Footings | 4d | 2026-01-25 A | 2026-02-02 A | HAL-C-C-S-1057 | 100% |  |
| HAL-C-C-S-1067 |  | Pouring Concrete for Footings | 1d | 2026-02-03 A | 2026-02-03 A | HAL-C-C-S-1117 | 100% |  |
|  | 2 | **COLUMN NECK** |  | 2026-01-29 | 2026-03-18 |  |  |  |
| HAL-C-C-S-1157 |  | Rebar for column neck | 2d | 2026-01-29 A | 2026-02-07 A | HAL-C-C-S-1067 | 100% |  |
| HAL-C-C-S-1167 |  | Formwork for column neck | 2d | 2026-02-10 A | 2026-02-11 A | HAL-C-C-S-1157 | 100% |  |
| HAL-C-C-S-1147 |  | Pouring Concrete for column neck | 0.82d | 2026-02-12 A | 2026-03-02 A | HAL-C-C-S-1167 | 100% |  |
| HAL-C-C-S-1197 |  | Damp proof /Bitumin paint on Footings & column neck | 1.3d | 2026-02-15 A | 2026-03-03 A | HAL-C-C-S-1147 | 100% |  |
| HAL-C-C-S-1257 |  | Backfilling / Compaction up to Bottom of Grade Beams | 12d | 2026-02-17 A | 2026-03-18 A | HAL-C-C-S-1197 | 100% |  |
|  | 3 | **GRADE BEAM** |  | 2026-03-07 | 2026-04-04 |  |  |  |
| HAL-C-C-S-1077 |  | Lean Concrete Below Grade Beams | 2d | 2026-03-07 A | 2026-03-24 A | HAL-C-C-S-1227 | 100% |  |
| HAL-C-C-S-1227 |  | Vapour barrier for Grade Beams | 2d | 2026-03-07 A | 2026-03-24 A | HAL-C-C-S-1307 | 100% |  |
| HAL-C-C-S-1307 |  | Anti Termite Below Grade Beams | 1d | 2026-03-07 A | 2026-03-24 A | HAL-C-C-S-1257 | 100% |  |
| HAL-C-C-S-1127 |  | Rebar for Grade Beams | 5d | 2026-03-16 A | 2026-03-28 A | HAL-C-C-S-1077 | 100% |  |
| HAL-C-C-S-1137 |  | Formwork for Grade Beams | 2d | 2026-03-26 A | 2026-03-29 A | HAL-C-C-S-1127 | 100% |  |
| HAL-C-C-S-1287 |  | Anchor bolts installation | 2d | 2026-03-28 A | 2026-03-29 A | HAL-C-C-S-1137 SS | 100% |  |
| HAL-C-C-S-1087 |  | Pouring Concrete for Grade Beams | 1d | 2026-03-29 A | 2026-03-29 A | HAL-C-C-S-1137, HAL-C-C-S-1287 | 100% |  |
| HAL-C-C-S-1237 |  | Damp proof /Bitumin paint on Grade Beams | 2d | 2026-04-04 A | 2026-04-04 A | HAL-C-C-S-1087 | 100% |  |
|  | 5 | **SLAB ON GRADE** |  | 2026-04-13 | 2026-06-20 |  |  |  |
| HAL-C-C-S-1267 |  | Backfilling / Compaction for Slab on Grade | 12d | 2026-04-13 A | 2026-04-19 A | HAL-C-C-S-1237 | 100% |  |
| HAL-C-C-S-1217 |  | Anti Termite Treatment below Ground Slab | 1d | 2026-05-09 A | 2026-05-12 A | HAL-C-C-S-1267 | 100% |  |
| HAL-C-C-S-1247 |  | Vapour barrier for below Ground Slab | 2d | 2026-05-09 A | 2026-05-12 A | HAL-C-C-S-1217 | 100% |  |
| HAL-C-C-S-1097 |  | Pouring Concrete for Ground Slab | 4d | 2026-05-10 A | 2026-05-13 A | HAL-C-C-S-1247 | 100% |  |
| HAL-C-C-S-1277 |  | Concrete pad | 7d | 2026-06-17 A | 2026-06-20 A | HAL-C-C-A-320 | 100% |  |
|  | 4 | **COLUMNS & BEAMS** |  | 2026-02-28 | 2026-06-20 |  |  |  |
| HAL-C-C-S-6101 |  | Rebar for Tie Beams | 4d | 2026-02-28 A | 2026-03-02 A | HAL-C-C-S-5103 | 100% |  |
| HAL-C-C-S-6102 |  | Formwork for Tie Beams | 2d | 2026-03-02 A | 2026-03-04 A | HAL-C-C-S-6101 | 100% |  |
| HAL-C-C-S-6103 |  | Pouring Concrete for Tie Beams | 1d | 2026-03-05 A | 2026-03-05 A | HAL-C-C-S-6102 | 100% |  |
| HAL-C-C-S-5101 |  | Rebar for column | 7d | 2026-04-27 A | 2026-05-24 A | HAL-C-C-S-1267, HAL-C-C-M-1130 | 100% |  |
| HAL-C-C-S-6113 |  | Rebar for Beams | 4d | 2026-04-30 A | 2026-06-17 A | HAL-C-C-S-6103 | 100% |  |
| HAL-C-C-S-5102 |  | Formwork for column | 4d | 2026-05-17 A | 2026-05-24 A | HAL-C-C-S-5101 | 100% |  |
| HAL-C-C-S-5103 |  | Pouring Concrete for column | 1d | 2026-05-23 A | 2026-05-31 A | HAL-C-C-S-5102 | 100% |  |
| HAL-C-C-S-6123 |  | Formwork for Beams | 2d | 2026-06-17 A | 2026-06-18 A | HAL-C-C-S-6113, HAL-C-C-S-6113 FF | 100% |  |
| HAL-C-C-S-6133 |  | Pouring Concrete for Beams | 1d | 2026-06-20 A | 2026-06-20 A | HAL-C-C-S-6123, HAL-C-C-S-6123 FF | 100% |  |
|  | 5 | **STRUCTURAL STEEL** |  | 2026-04-25 | 2026-08-06 |  |  |  |
| HAL-C-C-SS-270 |  | Installation of columns | 3d | 2026-04-25 A | 2026-04-26 A | HAL-C-B-SS-150 | 100% |  |
| HAL-C-C-SS-280 |  | Installation of raft and purlins | 5d | 2026-04-26 A | 2026-04-30 A | HAL-C-C-SS-270 | 100% |  |
| HAL-C-C-SS-1030 |  | Steel members for external platform | 5d | 2026-05-02 A | 2026-05-25 A | HAL-C-C-SS-1850 | 100% |  |
| HAL-C-C-SS-1850 |  | Steel members for office area | 5d | 2026-05-02 A | 2026-05-25 A | HAL-C-C-SS-1840, HAL-C-C-SS-280 | 100% |  |
| HAL-C-C-SS-1840 |  | Intumescent paint to steel works | 5d | 2026-05-09 A | 2026-05-31 A | HAL-C-C-SS-280 | 100% |  |
| HAL-C-C-SS-310 |  | Installation of roof sheet | 7d | 2026-06-03 A | 2026-06-04 A | HAL-C-C-A-290, HAL-C-C-SS-1840, HAL-C-C-S-6133 | 100% |  |
| HAL-C-C-SS-300 |  | Installation of wall sandwich panel | 5d | 2026-06-27 A | 2026-07-30 A | HAL-C-C-A-320 | 100% |  |
| HAL-C-C-SS-1040 |  | Epoxy paint for external platform | 5d | 2026-07-18 A | 2026-07-19 A | HAL-C-C-SS-1030, HAL-C-C-SS-1030 FF | 100% |  |
| HAL-C-C-SS-1020 |  | Epoxy paint to steel members at office area | 5d | 2026-08-01 A | 2026-08-06 A | HAL-C-C-SS-1850 | 100% |  |
|  | 2 | **ARCHITECTURAL** |  | 2026-05-31 | 2026-10-27 |  |  |  |
|  | 1 | **MASONARY WORKS** |  | 2026-05-31 | 2026-06-24 |  |  |  |
| HAL-C-C-A-1440 |  | Block work at toilet area | 7d | 2026-05-31 A | 2026-06-24 A | HAL-C-C-A-320 | 100% |  |
| HAL-C-C-A-290 |  | Block work at factory area | 10d | 2026-05-31 A | 2026-06-24 A | HAL-C-C-SS-280, HAL-C-C-S-1097, HAL-C-B-A-170, HAL-C-C-SS-1040, HAL-C-C-SS-1020 | 100% |  |
| HAL-C-C-A-320 |  | Block work at office area | 7d | 2026-05-31 A | 2026-06-24 A | HAL-C-C-SS-310, HAL-C-C-SS-1850 | 100% |  |
|  | 5 | **WALL FINISHES** |  | 2026-07-05 | 2026-10-19 |  |  |  |
| HAL-C-C-A-1450 |  | Internal Wall Plaster | 15d | 2026-07-05 A | 2026-07-16 A | HAL-C-C-A-1440, HAL-C-C-E-873, HAL-C-C-S-1277 | 100% |  |
| HAL-C-C-A-1500 |  | Paint to Plaster (Primer, Putty & First Coat) | 7d | 2026-07-22 A | 2026-10-19 | HAL-C-C-A-1520 | 90% | 9.35d |
|  | 2 | **CIELING FINISHES** |  | 2026-08-31 | 2026-10-15 |  |  |  |
| HAL-C-C-A-1510 |  | Installation of Ceiling Gypsum Board | 5d | 2026-08-31 A | 2026-10-15 A | HAL-C-C-A-1490, HAL-C-C-S-1277 | 100% |  |
|  | 6 | **FLOOR FINISHES** |  | 2026-07-21 | 2026-10-15 |  |  |  |
| HAL-C-C-A-1490 |  | Tiles for Toilet | 7d | 2026-07-21 A | 2026-08-02 A | HAL-C-C-A-1630 | 100% |  |
| HAL-C-C-A-1520 |  | Tiles for Office Area | 2d | 2026-08-09 A | 2026-08-13 A | HAL-C-C-A-1510 | 100% |  |
| HAL-C-C-A-1650 |  | Granite strip | 2d | 2026-08-29 A | 2026-08-31 A | HAL-C-C-A-1830, HAL-C-C-A-1520 | 100% |  |
| HAL-C-C-A-1670 |  | Epoxy paint | 7d | 2026-09-03 A | 2026-10-15 A | HAL-C-C-A-1610 | 100% |  |
|  | 3 | **DOORS & WINDOWS** |  | 2026-07-11 | 2026-09-10 |  |  |  |
| HAL-C-C-A-1830 |  | Window (CW1) | 7d | 2026-07-11 A | 2026-09-10 A | HAL-C-C-SS-300 | 100% |  |
| HAL-C-C-A-1780 |  | Skylight fixtures installation | 1d | 2026-07-27 A | 2026-08-05 A | HAL-C-C-A-1770 | 100% |  |
| HAL-C-C-A-1460 |  | Roll up Shutter Door | 1d | 2026-07-29 A | 2026-08-06 A | HAL-C-C-A-1830 | 100% |  |

| ID | WBS | Task | Duration | Start | Finish | Predecessors | Complete | Total float |
| --- | --- | --- | --- | --- | --- | --- | --- | --- |
| HAL-C-C-A-1470 |  | Supply and install (D5) 1000*2200mm single leaf steel door with door | 1d | 2026-08-09 A | 2026-09-10 A | HAL-C-C-A-1460 | 100% |  |
| HAL-C-C-A-1770 |  | Supply and install fire rated 45 min (D2) 1200*2200 mm single leaf steel door | 1d | 2026-08-09 A | 2026-09-10 A | HAL-C-C-A-1760 | 100% |  |
| HAL-C-C-A-1530 |  | Supply and install (D4) 800*2200 mm single leaf aluminum door with door | 1d | 2026-08-23 A | 2026-09-06 A | HAL-C-C-A-1470 | 100% |  |
| HAL-C-C-A-1540 |  | Supply and install (D7) 1000*2200 mm single leaf aluminum door with door | 1d | 2026-08-23 A | 2026-09-06 A | HAL-C-C-A-1530 | 100% |  |
| HAL-C-C-A-1760 |  | Supply and install (D3) 1000*2200 mm single leaf aluminum door with door | 1d | 2026-08-23 A | 2026-09-06 A | HAL-C-C-A-1540 | 100% |  |
|  | 4 | **WATER PROOFING WORKS** |  | 2026-07-18 | 2026-07-18 |  |  |  |
| HAL-C-C-A-1630 |  | Waterproofing membrane for toilets | 4d | 2026-07-18 A | 2026-07-18 A | HAL-C-C-M-1130, HAL-C-C-A-1450, HAL-C-C-A-1780 | 100% |  |
|  | 7 | **METAL WORKS** |  | 2026-07-29 | 2026-10-22 |  |  |  |
| HAL-C-C-A-1580 |  | Aluminium composite panel | 5d | 2026-07-29 A | 2026-10-03 A | HAL-C-C-A-1660 | 100% |  |
| HAL-C-C-A-1560 |  | Steel Ladder | 2d | 2026-08-17 A | 2026-08-29 A | HAL-C-C-A-1650 | 100% |  |
| HAL-C-C-A-1570 |  | Galvanised Steel Gratings | 2d | 2026-10-06 A | 2026-10-07 A | HAL-C-C-A-1580 | 100% |  |
| HAL-C-C-A-1660 |  | Steel railing works | 4d | 2026-10-19 | 2026-10-22 | HAL-C-C-A-1560 |  | 2.75d |
|  | 8 | **SPECIALTIES** |  | 2026-09-22 | 2026-10-27 |  |  |  |
| HAL-C-C-A-1590 |  | Installation of fittings | 5d | 2026-09-22 A | 2026-09-24 A | HAL-C-C-A-1570 | 100% |  |
| HAL-C-C-A-1820 |  | Identification sign; ID01 & ID02 | 3d | 2026-10-24 | 2026-10-26 | HAL-C-C-A-1590 |  | 2.75d |
| HAL-C-C-A-1610 |  | Furniture Installation | 1d | 2026-10-27 | 2026-10-27 | HAL-C-C-A-1820 |  | 2.75d |
|  | 3 | **MECHANICAL** |  | 2026-04-01 | 2026-09-24 |  |  |  |
|  | 1 | **HVAC** |  | 2026-06-23 | 2026-09-22 |  |  |  |
|  | 1 | **FIRST STAGE** |  | 2026-06-23 | 2026-08-01 |  |  |  |
| HAL-C-C-M-1070 |  | Installation of HVAC Ducts | 2d | 2026-06-23 A | 2026-08-01 A | HAL-C-C-M-1090 | 100% |  |
| HAL-C-C-M-1100 |  | Installation of Duct insulation | 2d | 2026-06-23 A | 2026-08-01 A | HAL-C-C-M-1070 | 100% |  |
|  | 2 | **SECOND STAGE** |  | 2026-07-27 | 2026-09-22 |  |  |  |
| HAL-C-C-M-1060 |  | Installation of Exhaust Fans | 2d | 2026-07-27 A | 2026-07-27 A | HAL-C-C-A-1500 | 100% |  |
| HAL-C-C-M-1270 |  | Supply, install, test and commission door grilles & exhaust louvers | 2d | 2026-09-02 A | 2026-09-10 A | HAL-C-C-M-1080 | 100% |  |
| HAL-C-C-M-1090 |  | Installation of Wall Propeller Type Exhaust Fan | 4d | 2026-09-15 A | 2026-09-20 A | HAL-C-C-M-1060 | 100% |  |
| HAL-C-C-M-1080 |  | Installation of Diffuser | 2d | 2026-09-16 A | 2026-09-22 A | HAL-C-C-M-1100 | 100% |  |
|  | 2 | **FIRE FIGHTING SYSTEM** |  | 2026-05-23 | 2026-08-22 |  |  |  |
|  | 1 | **FIRST STAGE** |  | 2026-05-23 | 2026-08-06 |  |  |  |
| HAL-C-C-M-1230 |  | Installation of Fire Fighting Pipes (Seamless Black Steel) | 7d | 2026-05-23 A | 2026-08-06 A | HAL-C-C-A-1500 | 100% |  |
| HAL-C-C-M-1240 |  | Installation of Fire Fighting Valve | 5d | 2026-06-11 A | 2026-08-06 A | HAL-C-C-M-1230 | 100% |  |
|  | 2 | **SECOND STAGE** |  | 2026-06-11 | 2026-08-22 |  |  |  |
| HAL-C-C-M-1250 |  | Installation of Fire Hose Cabinet | 3d | 2026-06-11 A | 2026-08-22 A | HAL-C-C-M-1240 | 100% |  |
| HAL-C-C-M-1300 |  | Supply, install, test and commission Fire Department Connection(FDC) | 3d | 2026-06-11 A | 2026-08-04 A | HAL-C-C-M-1270 | 100% |  |
|  | 3 | **SEWER AND DRAINAGE SYSTEM** |  | 2026-04-01 | 2026-09-24 |  |  |  |
|  | 1 | **FIRST STAGE** |  | 2026-04-01 | 2026-08-04 |  |  |  |
| HAL-C-C-M-1130 |  | Installation of Sanitary Waste / Drainage Pipes | 4d | 2026-04-01 A | 2026-04-19 A | HAL-C-C-S-1237 | 100% |  |
| HAL-C-C-M-1150 |  | Installation of Floor Drain | 2d | 2026-06-11 A | 2026-08-04 A | HAL-C-C-M-1130, HAL-C-C-A-1490 | 100% |  |
| HAL-C-C-M-1310 |  | Installation of Trench drain | 5d | 2026-06-11 A | 2026-08-04 A | HAL-C-C-M-1150 | 100% |  |
|  | 2 | **SECOND STAGE** |  | 2026-07-11 | 2026-09-24 |  |  |  |
| HAL-C-C-M-1170 |  | Installation of Roof Vent Cap | 2d | 2026-07-11 A | 2026-08-22 A | HAL-C-C-M-1160 | 100% |  |
| HAL-C-C-M-1110 |  | Installation of Electric Water Heater | 2d | 2026-08-04 A | 2026-08-04 A | HAL-C-C-M-1310 | 100% |  |
| HAL-C-C-M-1160 |  | Installation of Water Tap | 2d | 2026-08-24 A | 2026-09-16 A | HAL-C-C-M-1140, HAL-C-C-M-1200 | 100% |  |
| HAL-C-C-M-1120 |  | Installation of Sanitary Fixture and Accessories | 4d | 2026-09-17 A | 2026-09-24 A | HAL-C-C-M-1110 | 100% |  |
| HAL-C-C-M-1140 |  | Installation of Lavotary /Wash Basin | 2d | 2026-09-17 A | 2026-09-24 A | HAL-C-C-M-1110, HAL-C-C-M-1120 | 100% |  |
| HAL-C-C-M-1200 |  | Installation of Bib Tap | 2d | 2026-09-17 A | 2026-09-24 A | HAL-C-C-M-1120, HAL-C-C-M-1140 | 100% |  |
|  | 4 | **WATER SUPPLY SYSTEM** |  | 2026-06-24 | 2026-08-04 |  |  |  |
|  | 1 | **FIRST STAGE** |  | 2026-06-24 | 2026-08-04 |  |  |  |
| HAL-C-C-M-1220 |  | Installation of Water Supply Pipes | 4d | 2026-06-24 A | 2026-08-04 A | HAL-C-C-A-1500 | 100% |  |
| HAL-C-C-M-1210 |  | Installation of Water Supply Valve | 2d | 2026-08-01 A | 2026-08-04 A | HAL-C-C-M-1220 | 100% |  |
|  | 2 | **SECOND STAGE** |  | 2026-07-04 | 2026-08-04 |  |  |  |
| HAL-C-C-M-1260 |  | Capped connection | 5d | 2026-07-04 A | 2026-08-04 A | HAL-C-C-M-1210 | 100% |  |
|  | 4 | **ELECTRICAL** |  | 2026-04-01 | 2026-10-19 |  |  |  |
|  | 1 | **FIRST STAGE** |  | 2026-04-01 | 2026-10-12 |  |  |  |
| HAL-C-C-E-803 |  | Installation of Earthing and Grounding | 4d | 2026-04-01 A | 2026-10-12 A | HAL-C-C-E-913 SS | 100% |  |
| HAL-C-C-E-873 |  | Installation of Sleeves & Power outlet | 8d | 2026-04-01 A | 2026-07-11 A | HAL-C-C-A-1440 | 100% |  |
| HAL-C-C-E-853 |  | Installation of Conduites for Lighting Fixture | 4d | 2026-05-19 A | 2026-06-02 A | HAL-C-C-E-823 | 100% |  |
| HAL-C-C-E-833 |  | Installation of Conduits and wiring outlets - Fire Alarm System | 4d | 2026-05-20 A | 2026-06-02 A | HAL-C-C-E-893 | 100% |  |
| HAL-C-C-E-923 |  | Installation of Wires | 4d | 2026-06-25 A | 2026-08-29 A | HAL-C-C-E-853 | 100% |  |
| HAL-C-C-E-913 |  | Installation of LV Cables | 2d | 2026-09-05 A | 2026-10-12 A | HAL-C-C-E-903 SS | 100% |  |
|  | 2 | **SECOND STAGE** |  | 2026-06-17 | 2026-10-19 |  |  |  |
| HAL-C-C-E-1340 |  | Installation of CCTV System | 2d | 2026-06-17 A | 2026-10-12 A | HAL-C-C-E-943 | 100% |  |
| HAL-C-C-E-963 |  | Installation of Access Control System | 2d | 2026-06-17 A | 2026-10-19 | HAL-C-C-E-903 | 70% | 10.55d |
| HAL-C-C-E-933 |  | Installation of LP-1 Panel | 2d | 2026-07-25 A | 2026-09-10 A | HAL-C-C-E-883 | 100% |  |
| HAL-C-C-E-903 |  | Installation of Telephone Cabinet | 2d | 2026-07-29 A | 2026-10-01 A | HAL-C-C-E-943 | 100% |  |
| HAL-C-C-E-1350 |  | Installation of Solar power plant | 7d | 2026-08-12 A | 2026-10-01 A | HAL-C-B-E-730 | 100% |  |
| HAL-C-C-E-863 |  | Installation of Wiring Devices | 4d | 2026-08-29 A | 2026-09-24 A | HAL-C-C-E-873 | 100% |  |
| HAL-C-C-E-893 |  | Installation of Disconnect Switches | 2d | 2026-08-29 A | 2026-09-24 A | HAL-C-C-E-863 | 100% |  |
| HAL-C-C-E-943 |  | Installation of PP-AC panel | 2d | 2026-09-01 A | 2026-10-12 A | HAL-C-C-E-933 | 100% |  |
| HAL-C-C-E-883 |  | Installation of Main Distribution Board | 2d | 2026-09-03 A | 2026-10-12 A | HAL-C-C-E-843 | 100% |  |
| HAL-C-C-E-843 |  | Installation of Lighting fixtures | 4d | 2026-09-10 A | 2026-10-12 A | HAL-C-C-E-923 | 100% |  |

| ID | WBS | Task | Duration | Start | Finish | Predecessors | Complete | Total float |
| --- | --- | --- | --- | --- | --- | --- | --- | --- |
| HAL-C-C-E-823 |  | Installation of Fire Detectors & Accessories | 4d | 2026-09-16 A | 2026-10-12 A | HAL-C-C-E-813 SS | 100% |  |
| HAL-C-C-E-973 |  | Monitor Modules for Fire Alarm | 2d | 2026-09-22 A | 2026-10-19 | HAL-C-C-E-963 SS | 50% | 10.75d |
| HAL-C-C-E-993 |  | Firewarning flash light with sounder; wall mounted, Weather proof | 2d | 2026-09-22 A | 2026-09-24 A | HAL-C-C-E-983 SS | 100% |  |
| HAL-C-C-E-813 |  | Installation of Fire Alarm Control Panel | 4d | 2026-09-24 A | 2026-10-12 A | HAL-C-C-E-833, HAL-C-B-E-353 | 100% |  |
| HAL-C-C-E-983 |  | Line Isolator Modules for Fire Alarm | 2d | 2026-09-24 A | 2026-10-12 A | HAL-C-C-E-973 SS | 100% |  |
|  | 3 | **BLOCK A** |  | 2026-02-03 | 2026-10-26 |  |  |  |
|  | 1 | **STRUCTURAL** |  | 2026-02-03 | 2026-08-26 |  |  |  |
|  | 1 | **FOOTING** |  | 2026-02-03 | 2026-05-25 |  |  |  |
| HAL-C-A-S-210 |  | Excavation for footings | 6.12d | 2026-02-03 A | 2026-05-16 A | HAL-C-C-S-250 | 100% |  |
| HAL-C-A-S-1037 |  | Anti Termite Below Footings | 1d | 2026-02-10 A | 2026-05-20 A | HAL-C-A-S-210 | 100% |  |
| HAL-C-A-S-797 |  | Lean Concrete Below Footings | 2d | 2026-02-10 A | 2026-05-20 A | HAL-C-A-S-947 | 100% |  |
| HAL-C-A-S-947 |  | Vapour Barrier for Footings | 1d | 2026-02-10 A | 2026-05-20 A | HAL-C-A-S-1037 | 100% |  |
| HAL-C-A-S-857 |  | Formwork for Footings | 4d | 2026-02-17 A | 2026-05-24 A | HAL-C-A-S-847 | 100% |  |
| HAL-C-A-S-847 |  | Rebar for Footings | 6d | 2026-02-18 A | 2026-05-24 A | HAL-C-A-S-797 | 100% |  |
| HAL-C-A-S-807 |  | Pouring Concrete for Footings | 1d | 2026-02-25 A | 2026-05-25 A | HAL-C-A-S-857 | 100% |  |
|  | 2 | **COLUMN NECK** |  | 2026-02-24 | 2026-06-22 |  |  |  |
| HAL-C-A-S-897 |  | Rebar for column neck | 2d | 2026-02-24 A | 2026-05-24 A | HAL-C-A-S-807 | 100% |  |
| HAL-C-A-S-907 |  | Formwork for column neck | 2d | 2026-02-28 A | 2026-06-02 A | HAL-C-A-S-897 | 100% |  |
| HAL-C-A-S-887 |  | Pouring Concrete for column neck | 1d | 2026-03-02 A | 2026-06-02 A | HAL-C-A-S-907 | 100% |  |
| HAL-C-A-S-937 |  | Damp proof /Bitumin paint on Footings & column neck | 2d | 2026-03-28 A | 2026-06-04 A | HAL-C-A-S-887 | 100% |  |
| HAL-C-A-S-997 |  | Backfilling / Compaction up to Bottom of Grade Beams | 12d | 2026-03-29 A | 2026-06-22 A | HAL-C-A-S-937 | 100% |  |
|  | 3 | **GRADE BEAM** |  | 2026-06-13 | 2026-06-30 |  |  |  |
| HAL-C-A-S-1047 |  | Anti Termite Below Grade Beams | 1d | 2026-06-13 A | 2026-06-14 A | HAL-C-A-S-997 | 100% |  |
| HAL-C-A-S-817 |  | Lean Concrete Below Grade Beams | 2d | 2026-06-13 A | 2026-06-14 A | HAL-C-A-S-967 | 100% |  |
| HAL-C-A-S-967 |  | Vapour barrier for Grade Beams | 2d | 2026-06-13 A | 2026-06-14 A | HAL-C-A-S-1047 | 100% |  |
| HAL-C-A-S-1027 |  | Anchor bolts installation | 2d | 2026-06-17 A | 2026-06-23 A | HAL-C-A-S-877 SS | 100% |  |
| HAL-C-A-S-867 |  | Rebar for Grade Beams | 5d | 2026-06-17 A | 2026-06-23 A | HAL-C-A-S-817 | 100% |  |
| HAL-C-A-S-877 |  | Formwork for Grade Beams | 2d | 2026-06-17 A | 2026-06-23 A | HAL-C-A-S-867 | 100% |  |
| HAL-C-A-S-827 |  | Pouring Concrete for Grade Beams | 1d | 2026-06-24 A | 2026-06-24 A | HAL-C-A-S-877, HAL-C-A-S-1027 | 100% |  |
| HAL-C-A-S-977 |  | Damp proof /Bitumin paint on Grade Beams | 5d | 2026-06-25 A | 2026-06-30 A | HAL-C-A-S-827 | 100% |  |
|  | 5 | **SLAB ON GRADE** |  | 2026-06-17 | 2026-08-26 |  |  |  |
| HAL-C-A-S-1017 |  | Concrete pad | 7d | 2026-06-17 A | 2026-06-20 A | HAL-C-A-A-260 | 100% |  |
| HAL-C-A-S-1007 |  | Backfilling / Compaction for Slab on Grade | 12d | 2026-07-01 A | 2026-07-16 A | HAL-C-A-S-977 | 100% |  |
| HAL-C-A-S-837 |  | Pouring Concrete for Ground Slab | 4d | 2026-08-23 A | 2026-08-26 A | HAL-C-A-S-987 | 100% |  |
| HAL-C-A-S-957 |  | Anti Termite Treatment below Ground Slab | 1d | 2026-08-23 A | 2026-08-26 A | HAL-C-A-S-1007 | 100% |  |
| HAL-C-A-S-987 |  | Vapour barrier for below Ground Slab | 2d | 2026-08-23 A | 2026-08-26 A | HAL-C-A-S-957 | 100% |  |
|  | 4 | **COLUMNS & BEAMS** |  | 2026-03-28 | 2026-08-15 |  |  |  |
| HAL-C-A-S-6101 |  | Rebar for Tie Beams | 4d | 2026-03-28 A | 2026-03-31 A | HAL-C-A-S-5103 | 100% |  |
| HAL-C-A-S-6102 |  | Formwork for Tie Beams | 2d | 2026-03-29 A | 2026-04-01 A | HAL-C-A-S-6101 | 100% |  |
| HAL-C-A-S-6103 |  | Pouring Concrete for Tie Beams | 1d | 2026-04-02 A | 2026-04-02 A | HAL-C-A-S-6102 | 100% |  |
| HAL-C-A-S-5101 |  | Rebar for column | 7d | 2026-07-20 A | 2026-07-23 A | HAL-C-A-S-1007 | 100% |  |
| HAL-C-A-S-5102 |  | Formwork for column | 4d | 2026-07-27 A | 2026-08-01 A | HAL-C-A-S-5101 | 100% |  |
| HAL-C-A-S-5103 |  | Pouring Concrete for column | 1d | 2026-07-28 A | 2026-08-01 A | HAL-C-A-S-5102 | 100% |  |
| HAL-C-A-S-6113 |  | Rebar for Beams | 4d | 2026-08-01 A | 2026-08-13 A | HAL-C-A-S-6103 | 100% |  |
| HAL-C-A-S-6123 |  | Formwork for Beams | 2d | 2026-08-11 A | 2026-08-15 A | HAL-C-A-S-6113, HAL-C-A-S-6113 FF | 100% |  |
| HAL-C-A-S-6133 |  | Pouring Concrete for Beams | 1d | 2026-08-15 A | 2026-08-15 A | HAL-C-A-S-6123, HAL-C-A-S-6123 FF | 100% |  |
|  | 5 | **STRUCTURAL STEEL** |  | 2026-06-13 | 2026-09-14 |  |  |  |
| HAL-C-A-SS-1030 |  | Steel members for external platform | 5d | 2026-06-13 A | 2026-07-23 A | HAL-C-A-A-1440 | 100% |  |
| HAL-C-A-A-210 |  | Installation of columns | 3d | 2026-07-02 A | 2026-07-08 A | HAL-C-A-S-837 | 100% |  |
| HAL-C-A-A-220 |  | Installation of raft and purlins | 5d | 2026-07-02 A | 2026-07-09 A | HAL-C-A-A-210 | 100% |  |
| HAL-C-A-A-1440 |  | Steel members for office area | 5d | 2026-07-20 A | 2026-07-23 A | HAL-C-A-A-1430, HAL-C-A-A-220 | 100% |  |
| HAL-C-A-A-1430 |  | Intumescent paint to steel works | 5d | 2026-07-25 A | 2026-08-02 A | HAL-E-ST-A-1700, HAL-C-A-A-220 | 100% |  |
| HAL-C-A-A-250 |  | Installation of roof sheet | 5d | 2026-08-01 A | 2026-08-09 A | HAL-C-A-A-230, HAL-C-A-A-1430, HAL-C-A-S-6133, HAL-C-A-SS-1020 | 100% |  |
| HAL-C-A-SS-1040 |  | Epoxy paint for external platform | 5d | 2026-08-03 A | 2026-08-06 A | HAL-C-A-SS-1030, HAL-C-A-SS-1030 FF | 100% |  |
| HAL-C-A-A-240 |  | Installation of wall sandwich panel | 5d | 2026-08-19 A | 2026-08-29 A | HAL-C-A-A-260 | 100% |  |
| HAL-C-A-SS-1020 |  | Epoxy paint to steel members at office area | 5d | 2026-09-13 A | 2026-09-14 A | HAL-C-A-A-1440 | 100% |  |
|  | 2 | **ARCHITECTURAL** |  | 2026-08-01 | 2026-10-26 |  |  |  |
|  | 1 | **MASONARY WORKS** |  | 2026-08-01 | 2026-08-15 |  |  |  |
| HAL-C-A-A-1030 |  | Block work at toilet area | 7d | 2026-08-01 A | 2026-08-15 A | HAL-C-A-A-260 | 100% |  |
| HAL-C-A-A-230 |  | Block work at factory area | 12d | 2026-08-01 A | 2026-08-15 A | HAL-C-A-S-837 | 100% |  |
| HAL-C-A-A-260 |  | Block work at office area | 8d | 2026-08-01 A | 2026-08-15 A | HAL-C-A-A-230 SS+3d | 100% |  |
|  | 5 | **WALL FINISHES** |  | 2026-09-08 | 2026-10-19 |  |  |  |
| HAL-C-A-A-1040 |  | Internal Wall Plaster | 15d | 2026-09-08 A | 2026-09-12 A | HAL-C-A-A-1030, HAL-C-A-E-643 SS, HAL-C-A-S-1017 | 100% |  |
| HAL-C-A-A-1090 |  | Paint to Plaster (Primer, Putty & First Coat) | 7d | 2026-09-15 A | 2026-10-19 | HAL-C-A-A-1110 | 90% | 9.35d |
|  | 2 | **CIELING FINISHES** |  | 2026-09-17 | 2026-10-15 |  |  |  |
| HAL-C-A-A-1100 |  | Installation of Ceiling Gypsum Board | 5d | 2026-09-17 A | 2026-10-15 A | HAL-C-A-A-1080, HAL-C-A-S-1017 | 100% |  |
|  | 6 | **FLOOR FINISHES** |  | 2026-09-16 | 2026-10-15 |  |  |  |
| HAL-C-A-A-1080 |  | Tiles for Toilet | 7d | 2026-09-16 A | 2026-09-19 A | HAL-C-A-A-1220, HAL-P-ST-EX-110 | 100% |  |
| HAL-C-A-A-1110 |  | Tiles for Office Area | 2d | 2026-09-24 A | 2026-09-26 A | HAL-C-A-A-1100 | 100% |  |
| HAL-C-A-A-1240 |  | Granite strip | 2d | 2026-09-24 A | 2026-10-03 A | HAL-C-A-A-1420, HAL-C-A-A-1110 | 100% |  |

| ID | WBS | Task | Duration | Start | Finish | Predecessors | Complete | Total float |
| --- | --- | --- | --- | --- | --- | --- | --- | --- |
| HAL-C-A-A-1260 |  | Epoxy paint | 7d | 2026-09-24 A | 2026-10-15 A | HAL-C-A-A-1240 | 100% |  |
|  | 3 | **DOORS & WINDOWS** |  | 2026-08-13 | 2026-10-15 |  |  |  |
| HAL-C-A-A-1370 |  | Skylight fixtures installation | 1d | 2026-08-13 A | 2026-08-22 A | HAL-C-A-A-1360 | 100% |  |
| HAL-C-A-A-1050 |  | Roll up Shutter Door | 1d | 2026-08-17 A | 2026-09-20 A | HAL-C-A-A-1420 | 100% |  |
| HAL-C-A-A-1420 |  | Window (CW1) | 7d | 2026-09-08 A | 2026-09-24 A | HAL-C-A-A-240 | 100% |  |
| HAL-C-A-A-1060 |  | Supply and install (D5) 1000*2200mm single leaf steel door with door | 1d | 2026-09-17 A | 2026-09-19 A | HAL-C-A-A-1050 | 100% |  |
| HAL-C-A-A-1360 |  | Supply and install fire rated 45 min (D2) 1200*2200 mm single leaf steel door | 1d | 2026-09-17 A | 2026-09-19 A | HAL-C-A-A-1350 | 100% |  |
| HAL-C-A-A-1120 |  | Supply and install (D4) 800*2200 mm single leaf aluminum door with door | 1d | 2026-09-24 A | 2026-10-15 A | HAL-C-A-A-1060 | 100% |  |
| HAL-C-A-A-1130 |  | Supply and install (D7) 1000*2200 mm single leaf aluminum door with door | 1d | 2026-09-24 A | 2026-10-15 A | HAL-C-A-A-1120 | 100% |  |
| HAL-C-A-A-1350 |  | Supply and install (D3) 1000*2200 mm single leaf aluminum door with door | 1d | 2026-09-24 A | 2026-10-15 A | HAL-C-A-A-1130 | 100% |  |
|  | 4 | **WATER PROOFING WORKS** |  | 2026-09-14 | 2026-09-15 |  |  |  |
| HAL-C-A-A-1220 |  | Waterproofing membrane for toilets | 4d | 2026-09-14 A | 2026-09-15 A | HAL-C-A-M-820, HAL-C-A-A-1040, HAL-C-A-A-1370 | 100% |  |
|  | 7 | **METAL WORKS** |  | 2026-08-18 | 2026-10-22 |  |  |  |
| HAL-C-A-A-1150 |  | Steel Ladder | 2d | 2026-08-18 A | 2026-08-29 A | HAL-C-A-A-1240 | 100% |  |
| HAL-C-A-A-1170 |  | Aluminium composite panel | 5d | 2026-09-14 A | 2026-10-03 A | HAL-C-A-A-1250 | 100% |  |
| HAL-C-A-A-1160 |  | Galvanised Steel Gratings | 2d | 2026-10-10 A | 2026-10-11 A | HAL-C-A-A-1170 SS | 100% |  |
| HAL-C-A-A-1250 |  | Steel railing works | 4d | 2026-10-19 | 2026-10-22 | HAL-C-A-A-1150 SS |  | 5.75d |
|  | 8 | **SPECIALTIES** |  | 2026-09-22 | 2026-10-26 |  |  |  |
| HAL-C-A-A-1180 |  | Installation of fittings | 4d | 2026-09-22 A | 2026-09-24 A | HAL-C-A-A-1160 SS | 100% |  |
| HAL-C-A-A-1200 |  | Furniture Installation | 1d | 2026-10-24 | 2026-10-24 | HAL-C-A-A-1410 SS |  | 6.75d |
| HAL-C-A-A-1410 |  | Identification sign; ID01 & ID02 | 3d | 2026-10-24 | 2026-10-26 | HAL-C-A-A-1180 SS |  | 5.75d |
|  | 3 | **MECHANICAL** |  | 2026-07-11 | 2026-10-08 |  |  |  |
|  | 1 | **HVAC** |  | 2026-08-06 | 2026-10-04 |  |  |  |
|  | 1 | **FIRST STAGE** |  | 2026-08-06 | 2026-09-16 |  |  |  |
| HAL-C-A-M-760 |  | Installation of HVAC Ducts | 2d | 2026-08-06 A | 2026-09-16 A | HAL-C-A-M-780 | 100% |  |
| HAL-C-A-M-790 |  | Installation of Duct insulation | 2d | 2026-08-06 A | 2026-09-16 A | HAL-C-A-M-760 | 100% |  |
|  | 2 | **SECOND STAGE** |  | 2026-09-10 | 2026-10-04 |  |  |  |
| HAL-C-A-M-780 |  | Installation of Wall Propeller Type Exhaust Fan | 4d | 2026-09-10 A | 2026-09-12 A | HAL-C-A-M-750 | 100% |  |
| HAL-C-A-M-750 |  | Installation of Exhaust Fans | 2d | 2026-09-16 A | 2026-09-17 A | HAL-C-A-A-1090 | 100% |  |
| HAL-C-A-M-770 |  | Installation of Diffuser | 2d | 2026-09-16 A | 2026-10-04 A | HAL-C-A-M-790 | 100% |  |
| HAL-C-A-M-960 |  | Supply, install, test and commission door grilles & exhaust louvers | 2d | 2026-09-16 A | 2026-10-04 A | HAL-C-A-M-770 | 100% |  |
|  | 2 | **FIRE FIGHTING SYSTEM** |  | 2026-08-06 | 2026-09-24 |  |  |  |
|  | 1 | **FIRST STAGE** |  | 2026-08-06 | 2026-09-17 |  |  |  |
| HAL-C-A-M-920 |  | Installation of Fire Fighting Pipes (Seamless Black Steel) | 7d | 2026-08-06 A | 2026-09-17 A | HAL-C-A-A-1090 | 100% |  |
| HAL-C-A-M-930 |  | Installation of Fire Fighting Valve | 5d | 2026-08-06 A | 2026-09-05 A | HAL-C-A-M-920 | 100% |  |
|  | 2 | **SECOND STAGE** |  | 2026-09-17 | 2026-09-24 |  |  |  |
| HAL-C-A-M-990 |  | Supply, install, test and commission Fire Department Connection(FDC) | 3d | 2026-09-17 A | 2026-09-19 A | HAL-C-A-M-960 SS | 100% |  |
| HAL-C-A-M-940 |  | Installation of Fire Hose Cabinet | 3d | 2026-09-22 A | 2026-09-24 A | HAL-C-A-M-930 | 100% |  |
|  | 3 | **SEWER AND DRAINAGE SYSTEM** |  | 2026-07-11 | 2026-10-08 |  |  |  |
|  | 1 | **FIRST STAGE** |  | 2026-07-11 | 2026-08-06 |  |  |  |
| HAL-C-A-M-1000 |  | Installation of Trench drain | 5d | 2026-07-11 A | 2026-08-06 A | HAL-C-A-M-840 | 100% |  |
| HAL-C-A-M-820 |  | Installation of Sanitary Waste / Drainage Pipes | 4d | 2026-07-11 A | 2026-08-06 A | HAL-C-A-S-977 | 100% |  |
| HAL-C-A-M-840 |  | Installation of Floor Drain | 2d | 2026-07-11 A | 2026-08-06 A | HAL-C-A-M-820, HAL-C-A-A-1080 | 100% |  |
|  | 2 | **SECOND STAGE** |  | 2026-07-11 | 2026-10-08 |  |  |  |
| HAL-C-A-M-860 |  | Installation of Roof Vent Cap | 2d | 2026-07-11 A | 2026-09-10 A | HAL-C-A-M-850 | 100% |  |
| HAL-C-A-M-800 |  | Installation of Electric Water Heater | 2d | 2026-09-05 A | 2026-09-10 A | HAL-C-A-M-1000 | 100% |  |
| HAL-C-A-M-810 |  | Installation of Sanitary Fixture and Accessories | 4d | 2026-10-04 A | 2026-10-08 A | HAL-C-A-M-800 | 100% |  |
| HAL-C-A-M-830 |  | Installation of Lavotary /Wash Basin | 2d | 2026-10-04 A | 2026-10-08 A | HAL-C-A-M-800, HAL-C-A-M-810 | 100% |  |
| HAL-C-A-M-850 |  | Installation of Water Tap | 2d | 2026-10-04 A | 2026-10-08 A | HAL-C-A-M-830, HAL-C-A-M-890 | 100% |  |
| HAL-C-A-M-890 |  | Installation of Bib Tap | 2d | 2026-10-04 A | 2026-10-08 A | HAL-C-A-M-810, HAL-C-A-M-830 | 100% |  |
|  | 4 | **WATER SUPPLY SYSTEM** |  | 2026-09-03 | 2026-09-12 |  |  |  |
|  | 1 | **FIRST STAGE** |  | 2026-09-03 | 2026-09-12 |  |  |  |
| HAL-C-A-M-910 |  | Installation of Water Supply Pipes | 4d | 2026-09-03 A | 2026-09-10 A | HAL-C-A-A-1090 | 100% |  |
| HAL-C-A-M-900 |  | Installation of Water Supply Valve | 2d | 2026-09-10 A | 2026-09-12 A | HAL-C-A-M-910 | 100% |  |
|  | 2 | **SECOND STAGE** |  | 2026-09-12 | 2026-09-12 |  |  |  |
| HAL-C-A-M-950 |  | Capped connection | 5d | 2026-09-12 A | 2026-09-12 A | HAL-C-A-M-900 | 100% |  |
|  | 4 | **ELECTRICAL** |  | 2026-06-17 | 2026-10-20 |  |  |  |
|  | 1 | **FIRST STAGE** |  | 2026-06-17 | 2026-10-20 |  |  |  |
| HAL-C-A-E-573 |  | Installation of Earthing and Grounding | 4d | 2026-06-17 A | 2026-10-20 | HAL-C-A-E-683 SS | 90% | 9.95d |
| HAL-C-A-E-643 |  | Installation of Sleeves & Power outlet | 8d | 2026-06-17 A | 2026-09-15 A | HAL-C-A-A-1030 | 100% |  |
| HAL-C-A-E-603 |  | Installation of Conduits and wiring outlets - Fire Alarm System | 4d | 2026-08-11 A | 2026-09-24 A | HAL-C-A-E-663 SS | 100% |  |
| HAL-C-A-E-623 |  | Installation of Conduites for Lighting Fixture | 4d | 2026-08-11 A | 2026-09-24 A | HAL-C-A-E-603 | 100% |  |
| HAL-C-A-E-693 |  | Installation of Wires | 4d | 2026-08-22 A | 2026-09-24 A | HAL-C-A-E-623 | 100% |  |
| HAL-C-A-E-683 |  | Installation of LV Cables | 2d | 2026-09-22 A | 2026-10-17 A | HAL-C-A-E-673 SS | 100% |  |
|  | 2 | **SECOND STAGE** |  | 2026-08-22 | 2026-10-20 |  |  |  |
| HAL-C-A-E-1030 |  | Installation of CCTV System | 2d | 2026-08-22 A | 2026-10-17 A | HAL-C-A-E-643, HAL-C-A-E-713 SS | 100% |  |
| HAL-C-A-E-1040 |  | Installation of Solar power plant | 2d | 2026-08-22 A | 2026-10-12 A | HAL-C-C-E-1350 | 100% |  |
| HAL-C-A-E-733 |  | Installation of Access Control System | 2d | 2026-08-22 A | 2026-10-20 | HAL-C-A-E-593 SS, HAL-C-A-M-990 SS | 70% | 9.85d |
| HAL-C-A-E-703 |  | Installation of LP-1 Panel | 2d | 2026-09-10 A | 2026-10-01 A | HAL-C-A-E-653 SS | 100% |  |
| HAL-C-A-E-613 |  | Installation of Lighting fixtures | 2d | 2026-09-22 A | 2026-10-20 | HAL-C-A-E-693 SS | 80% | 9.95d |

| ID | WBS | Task | Duration | Start | Finish | Predecessors | Complete | Total float |
| --- | --- | --- | --- | --- | --- | --- | --- | --- |
| HAL-C-A-E-763 |  | Firewarning flash light with sounder; wall mounted, Weather proof | 2d | 2026-09-22 A | 2026-09-24 A | HAL-C-A-E-753 SS | 100% |  |
| HAL-C-A-E-583 |  | Installation of Fire Alarm Control Panel | 4d | 2026-09-24 A | 2026-10-17 A | HAL-C-A-E-603 SS | 100% |  |
| HAL-C-A-E-633 |  | Installation of Wiring Devices | 4d | 2026-09-24 A | 2026-10-17 A | HAL-C-A-E-643, HAL-C-A-A-1090 | 100% |  |
| HAL-C-A-E-663 |  | Installation of Disconnect Switches | 2d | 2026-09-24 A | 2026-10-17 A | HAL-C-A-E-633 | 100% |  |
| HAL-C-A-E-743 |  | Monitor Modules for Fire Alarm | 2d | 2026-09-24 A | 2026-10-20 | HAL-C-A-E-733 SS | 50% | 10.05d |
| HAL-C-A-E-753 |  | Line Isolator Modules for Fire Alarm | 2d | 2026-09-24 A | 2026-10-17 A | HAL-C-A-E-743 SS | 100% |  |
| HAL-C-A-E-593 |  | Installation of Fire Detectors & Accessories | 4d | 2026-10-01 A | 2026-10-17 A | HAL-C-A-E-583 SS, HAL-C-A-M-950 SS | 100% |  |
| HAL-C-A-E-673 |  | Installation of Telephone Cabinet | 2d | 2026-10-01 A | 2026-10-12 A | HAL-C-A-E-713 SS | 100% |  |
| HAL-C-A-E-653 |  | Installation of Main Distribution Board | 2d | 2026-10-07 A | 2026-10-17 A | HAL-C-A-E-693 SS | 100% |  |
| HAL-C-A-E-713 |  | Installation of PP-AC panel | 2d | 2026-10-07 A | 2026-10-17 A | HAL-C-A-E-703 SS | 100% |  |
|  | 6 | **BLOCK D** |  | 2026-01-17 | 2026-10-26 |  |  |  |
|  | 1 | **STRUCTURAL** |  | 2026-01-17 | 2026-07-08 |  |  |  |
|  | 1 | **FOOTING** |  | 2026-01-17 | 2026-02-19 |  |  |  |
| HAL-C-D-S-210 |  | Excavation for footings | 7d | 2026-01-17 A | 2026-02-04 A | HAL-C-A-S-210, HAL-PMS-MMS-0070 | 100% |  |
| HAL-C-D-S-1037 |  | Anti Termite Below Footings | 1d | 2026-02-10 A | 2026-02-10 A | HAL-C-D-S-210 | 100% |  |
| HAL-C-D-S-797 |  | Lean Concrete Below Footings | 2d | 2026-02-10 A | 2026-02-10 A | HAL-C-D-S-947 | 100% |  |
| HAL-C-D-S-947 |  | Vapour Barrier for Footings | 1d | 2026-02-10 A | 2026-02-10 A | HAL-C-D-S-1037 | 100% |  |
| HAL-C-D-S-857 |  | Formwork for Footings | 6d | 2026-02-11 A | 2026-02-14 A | HAL-C-D-S-847 | 100% |  |
| HAL-C-D-S-847 |  | Rebar for Footings | 4d | 2026-02-12 A | 2026-02-18 A | HAL-C-D-S-797 | 100% |  |
| HAL-C-D-S-807 |  | Pouring Concrete for Footings | 1d | 2026-02-19 A | 2026-02-19 A | HAL-C-D-S-857 | 100% |  |
|  | 2 | **COLUMN NECK** |  | 2026-02-12 | 2026-03-25 |  |  |  |
| HAL-C-D-S-897 |  | Rebar for column neck | 2d | 2026-02-12 A | 2026-02-18 A | HAL-C-D-S-807 | 100% |  |
| HAL-C-D-S-907 |  | Formwork for column neck | 2d | 2026-02-21 A | 2026-03-02 A | HAL-C-D-S-897 | 100% |  |
| HAL-C-D-S-887 |  | Pouring Concrete for column neck | 1d | 2026-02-25 A | 2026-03-02 A | HAL-C-D-S-907 | 100% |  |
| HAL-C-D-S-937 |  | Damp proof /Bitumin paint on Footings & column neck | 2d | 2026-02-28 A | 2026-03-03 A | HAL-C-D-S-887 | 100% |  |
| HAL-C-D-S-997 |  | Backfilling / Compaction up to Bottom of Grade Beams | 12d | 2026-03-04 A | 2026-03-25 A | HAL-C-D-S-937 | 100% |  |
|  | 3 | **GRADE BEAM** |  | 2026-03-28 | 2026-04-22 |  |  |  |
| HAL-C-D-S-1047 |  | Anti Termite Below Grade Beams | 1d | 2026-03-28 A | 2026-03-28 A | HAL-C-D-S-997 | 100% |  |
| HAL-C-D-S-817 |  | Lean Concrete Below Grade Beams | 2d | 2026-03-28 A | 2026-03-28 A | HAL-C-D-S-967 | 100% |  |
| HAL-C-D-S-967 |  | Vapour barrier for Grade Beams | 2d | 2026-03-28 A | 2026-03-28 A | HAL-C-D-S-1047 | 100% |  |
| HAL-C-D-S-867 |  | Rebar for Grade Beams | 5d | 2026-04-02 A | 2026-04-16 A | HAL-C-D-S-817, HAL-PMS-MMS-0060 | 100% |  |
| HAL-C-D-S-877 |  | Formwork for Grade Beams | 2d | 2026-04-02 A | 2026-04-16 A | HAL-C-D-S-867 | 100% |  |
| HAL-C-D-S-1027 |  | Anchor bolts installation | 2d | 2026-04-12 A | 2026-04-16 A | HAL-C-D-S-877 SS | 100% |  |
| HAL-C-D-S-827 |  | Pouring Concrete for Grade Beams | 1d | 2026-04-18 A | 2026-04-18 A | HAL-C-D-S-877, HAL-C-D-S-1027 | 100% |  |
| HAL-C-D-S-977 |  | Damp proof /Bitumin paint on Grade Beams | 5d | 2026-04-20 A | 2026-04-22 A | HAL-C-D-S-827 | 100% |  |
|  | 5 | **SLAB ON GRADE** |  | 2026-04-27 | 2026-06-20 |  |  |  |
| HAL-C-D-S-1007 |  | Backfilling / Compaction for Slab on Grade | 12d | 2026-04-27 A | 2026-04-30 A | HAL-C-D-S-977 | 100% |  |
| HAL-C-D-S-957 |  | Anti Termite Treatment below Ground Slab | 1d | 2026-05-18 A | 2026-05-25 A | HAL-C-D-S-1007 | 100% |  |
| HAL-C-D-S-987 |  | Vapour barrier for below Ground Slab | 2d | 2026-05-18 A | 2026-05-25 A | HAL-C-D-S-957 | 100% |  |
| HAL-C-D-S-837 |  | Pouring Concrete for Ground Slab | 4d | 2026-05-19 A | 2026-05-25 A | HAL-C-D-S-987 | 100% |  |
| HAL-C-D-S-1017 |  | Concrete pad | 7d | 2026-06-17 A | 2026-06-20 A | HAL-C-D-A-260 | 100% |  |
|  | 4 | **COLUMNS & BEAMS** |  | 2026-03-02 | 2026-07-08 |  |  |  |
| HAL-C-D-S-6101 |  | Rebar for Tie Beams | 4d | 2026-03-02 A | 2026-03-04 A | HAL-C-D-S-5103 | 100% |  |
| HAL-C-D-S-6102 |  | Formwork for Tie Beams | 2d | 2026-03-02 A | 2026-03-04 A | HAL-C-D-S-6101 | 100% |  |
| HAL-C-D-S-6103 |  | Pouring Concrete for Tie Beams | 1d | 2026-03-07 A | 2026-03-07 A | HAL-C-D-S-6102 | 100% |  |
| HAL-C-D-S-5101 |  | Rebar for column | 7d | 2026-05-02 A | 2026-05-16 A | HAL-C-D-S-1007 | 100% |  |
| HAL-C-D-S-6113 |  | Rebar for Beams | 4d | 2026-05-07 A | 2026-07-06 A | HAL-C-D-S-6103 | 100% |  |
| HAL-C-D-S-5102 |  | Formwork for column | 4d | 2026-05-09 A | 2026-05-17 A | HAL-C-D-S-5101 | 100% |  |
| HAL-C-D-S-5103 |  | Pouring Concrete for column | 1d | 2026-05-16 A | 2026-05-20 A | HAL-C-D-S-5102 | 100% |  |
| HAL-C-D-S-6123 |  | Formwork for Beams | 2d | 2026-06-20 A | 2026-07-07 A | HAL-C-D-S-6113, HAL-C-D-S-6113 FF | 100% |  |
| HAL-C-D-S-6133 |  | Pouring Concrete for Beams | 1d | 2026-07-08 A | 2026-07-08 A | HAL-C-D-S-6123, HAL-C-D-S-6123 FF | 100% |  |
|  | 5 | **STRUCTURAL STEEL** |  | 2026-05-04 | 2026-08-12 |  |  |  |
| HAL-C-D-A-1440 |  | Steel members for office area | 5d | 2026-05-04 A | 2026-05-25 A | HAL-C-D-A-1430, HAL-C-D-A-220 | 100% |  |
| HAL-C-D-SS-1030 |  | Steel members for external platform | 5d | 2026-05-04 A | 2026-05-25 A | HAL-C-D-A-1440 | 100% |  |
| HAL-C-D-A-210 |  | Installation of columns | 3d | 2026-05-06 A | 2026-05-13 A | HAL-C-D-S-837, HAL-C-A-A-220 | 100% |  |
| HAL-C-D-A-220 |  | Installation of raft and purlins | 5d | 2026-05-06 A | 2026-05-13 A | HAL-C-D-A-210 | 100% |  |
| HAL-C-D-A-1430 |  | Intumescent paint to steel works | 5d | 2026-06-02 A | 2026-06-22 A | HAL-C-D-A-220 | 100% |  |
| HAL-C-D-A-250 |  | Installation of roof sheet | 5d | 2026-06-14 A | 2026-06-18 A | HAL-C-D-A-230, HAL-C-D-A-1430, HAL-C-D-S-6133, HAL-C-D-SS-1040, HAL-C-D-SS-1020 | 100% |  |
| HAL-C-D-A-240 |  | Installation of wall sandwich panel | 5d | 2026-07-08 A | 2026-07-30 A | HAL-C-D-A-260 | 100% |  |
| HAL-C-D-SS-1040 |  | Epoxy paint for external platform | 5d | 2026-07-19 A | 2026-07-20 A | HAL-C-D-SS-1030, HAL-C-D-SS-1030 FF | 100% |  |
| HAL-C-D-SS-1020 |  | Epoxy paint to steel members at office area | 5d | 2026-08-11 A | 2026-08-12 A | HAL-C-D-A-1440 | 100% |  |
|  | 2 | **ARCHITECTURAL** |  | 2026-06-06 | 2026-10-26 |  |  |  |
|  | 1 | **MASONARY WORKS** |  | 2026-06-06 | 2026-06-24 |  |  |  |
| HAL-C-D-A-1030 |  | Block work at toilet area | 7d | 2026-06-06 A | 2026-06-24 A | HAL-C-D-A-260 | 100% |  |
| HAL-C-D-A-230 |  | Block work at factory area | 15d | 2026-06-06 A | 2026-06-24 A | HAL-C-D-S-837, HAL-C-D-A-220, HAL-C-A-A-230 | 100% |  |
| HAL-C-D-A-260 |  | Block work at office area | 10d | 2026-06-06 A | 2026-06-24 A | HAL-C-D-A-250 SS, HAL-C-D-A-1440 | 100% |  |
|  | 5 | **WALL FINISHES** |  | 2026-07-14 | 2026-10-19 |  |  |  |
| HAL-C-D-A-1040 |  | Internal Wall Plaster | 15d | 2026-07-14 A | 2026-07-23 A | HAL-C-D-A-1030, HAL-C-D-E-643, HAL-C-D-S-1017, HAL-PMS-DMS-2310 | 100% |  |
| HAL-C-D-A-1090 |  | Paint to Plaster (Primer, Putty & First Coat) | 7d | 2026-07-27 A | 2026-10-19 | HAL-C-D-A-1110 | 90% | 9.35d |
|  | 2 | **CIELING FINISHES** |  | 2026-09-05 | 2026-09-24 |  |  |  |

| ID | WBS | Task | Duration | Start | Finish | Predecessors | Complete | Total float |
| --- | --- | --- | --- | --- | --- | --- | --- | --- |
| HAL-C-D-A-1100 |  | Installation of Ceiling Gypsum Board | 5d | 2026-09-05 A | 2026-09-24 A | HAL-C-D-A-1080, HAL-C-D-S-1017 | 100% |  |
|  | 6 | **FLOOR FINISHES** |  | 2026-07-29 | 2026-10-15 |  |  |  |
| HAL-C-D-A-1080 |  | Tiles for Toilet | 7d | 2026-07-29 A | 2026-08-02 A | HAL-C-D-A-1220 | 100% |  |
| HAL-C-D-A-1110 |  | Tiles for Office Area | 2d | 2026-08-19 A | 2026-08-29 A | HAL-C-D-A-1100 | 100% |  |
| HAL-C-D-A-1240 |  | Granite strip | 2d | 2026-08-30 A | 2026-08-31 A | HAL-C-D-A-1420, HAL-C-D-A-1110 | 100% |  |
| HAL-C-D-A-1260 |  | Epoxy paint | 2d | 2026-09-03 A | 2026-10-15 A | HAL-C-D-A-1200 SS | 100% |  |
|  | 3 | **DOORS & WINDOWS** |  | 2026-07-12 | 2026-09-12 |  |  |  |
| HAL-C-D-A-1420 |  | Window (CW1) | 7d | 2026-07-12 A | 2026-09-12 A | HAL-C-D-A-240 | 100% |  |
| HAL-C-D-A-1370 |  | Skylight fixtures installation | 1d | 2026-07-25 A | 2026-07-27 A | HAL-C-D-A-1360 | 100% |  |
| HAL-C-D-A-1050 |  | Roll up Shutter Door | 1d | 2026-08-02 A | 2026-08-06 A | HAL-C-D-A-1420 | 100% |  |
| HAL-C-D-A-1060 |  | Supply and install (D5) 1000*2200mm single leaf steel door with door | 1d | 2026-08-11 A | 2026-09-10 A | HAL-C-D-A-1050 | 100% |  |
| HAL-C-D-A-1360 |  | Supply and install fire rated 45 min (D2) 1200*2200 mm single leaf steel door | 1d | 2026-08-11 A | 2026-09-10 A | HAL-C-D-A-1350 | 100% |  |
| HAL-C-D-A-1120 |  | Supply and install (D4) 800*2200 mm single leaf aluminum door with door | 1d | 2026-09-03 A | 2026-09-06 A | HAL-C-D-A-1060 | 100% |  |
| HAL-C-D-A-1130 |  | Supply and install (D7) 1000*2200 mm single leaf aluminum door with door | 1d | 2026-09-03 A | 2026-09-06 A | HAL-C-D-A-1120 | 100% |  |
| HAL-C-D-A-1350 |  | Supply and install (D3) 1000*2200 mm single leaf aluminum door with door | 1d | 2026-09-03 A | 2026-09-06 A | HAL-C-D-A-1130 | 100% |  |
|  | 4 | **WATER PROOFING WORKS** |  | 2026-07-25 | 2026-07-25 |  |  |  |
| HAL-C-D-A-1220 |  | Waterproofing membrane for toilets | 4d | 2026-07-25 A | 2026-07-25 A | HAL-C-D-M-820, HAL-C-D-A-1040, HAL-C-D-A-1370 | 100% |  |
|  | 7 | **METAL WORKS** |  | 2026-08-02 | 2026-10-22 |  |  |  |
| HAL-C-D-A-1170 |  | Aluminium composite panel | 5d | 2026-08-02 A | 2026-10-03 A | HAL-C-D-A-1250 | 100% |  |
| HAL-C-D-A-1150 |  | Steel Ladder | 2d | 2026-08-18 A | 2026-08-29 A | HAL-C-D-A-1240 | 100% |  |
| HAL-C-D-A-1160 |  | Galvanised Steel Gratings | 2d | 2026-10-07 A | 2026-10-08 A | HAL-C-D-A-1170 | 100% |  |
| HAL-C-D-A-1250 |  | Steel railing works | 4d | 2026-10-19 | 2026-10-22 | HAL-C-D-A-1150 |  | 5.75d |
|  | 8 | **SPECIALTIES** |  | 2026-09-22 | 2026-10-26 |  |  |  |
| HAL-C-D-A-1180 |  | Installation of fittings | 4d | 2026-09-22 A | 2026-09-24 A | HAL-C-D-A-1160 | 100% |  |
| HAL-C-D-A-1200 |  | Furniture Installation | 1d | 2026-10-24 | 2026-10-24 | HAL-C-D-A-1410 SS |  | 6.75d |
| HAL-C-D-A-1410 |  | Identification sign; ID01 & ID02 | 3d | 2026-10-24 | 2026-10-26 | HAL-C-D-A-1180 SS |  | 5.75d |
|  | 3 | **MECHANICAL** |  | 2026-04-16 | 2026-09-24 |  |  |  |
|  | 1 | **HVAC** |  | 2026-06-24 | 2026-09-22 |  |  |  |
|  | 1 | **FIRST STAGE** |  | 2026-06-24 | 2026-07-30 |  |  |  |
| HAL-C-D-M-760 |  | Installation of HVAC Ducts | 2d | 2026-06-24 A | 2026-07-30 A | HAL-C-D-M-780 | 100% |  |
| HAL-C-D-M-790 |  | Installation of Duct insulation | 2d | 2026-06-24 A | 2026-07-30 A | HAL-C-D-M-760 | 100% |  |
|  | 2 | **SECOND STAGE** |  | 2026-07-28 | 2026-09-22 |  |  |  |
| HAL-C-D-M-750 |  | Installation of Exhaust Fans | 2d | 2026-07-28 A | 2026-07-28 A | HAL-C-D-A-1090 | 100% |  |
| HAL-C-D-M-780 |  | Installation of Wall Propeller Type Exhaust Fan | 4d | 2026-09-02 A | 2026-09-05 A | HAL-C-D-M-750 | 100% |  |
| HAL-C-D-M-960 |  | Supply, install, test and commission door grilles & exhaust louvers | 2d | 2026-09-05 A | 2026-09-10 A | HAL-C-D-M-770 | 100% |  |
| HAL-C-D-M-770 |  | Installation of Diffuser | 2d | 2026-09-19 A | 2026-09-22 A | HAL-C-D-M-790 | 100% |  |
|  | 2 | **FIRE FIGHTING SYSTEM** |  | 2026-06-17 | 2026-08-22 |  |  |  |
|  | 1 | **FIRST STAGE** |  | 2026-06-17 | 2026-08-05 |  |  |  |
| HAL-C-D-M-920 |  | Installation of Fire Fighting Pipes (Seamless Black Steel) | 7d | 2026-06-17 A | 2026-08-05 A | HAL-C-D-A-1090 | 100% |  |
| HAL-C-D-M-930 |  | Installation of Fire Fighting Valve | 5d | 2026-06-17 A | 2026-08-05 A | HAL-C-D-M-920 | 100% |  |
|  | 2 | **SECOND STAGE** |  | 2026-06-17 | 2026-08-22 |  |  |  |
| HAL-C-D-M-940 |  | Installation of Fire Hose Cabinet | 3d | 2026-06-17 A | 2026-08-22 A | HAL-C-D-M-930 | 100% |  |
| HAL-C-D-M-990 |  | Supply, install, test and commission Fire Department Connection(FDC) | 3d | 2026-07-25 A | 2026-08-05 A | HAL-C-D-M-960 SS | 100% |  |
|  | 3 | **SEWER AND DRAINAGE SYSTEM** |  | 2026-04-16 | 2026-09-24 |  |  |  |
|  | 1 | **FIRST STAGE** |  | 2026-04-16 | 2026-08-05 |  |  |  |
| HAL-C-D-M-820 |  | Installation of Sanitary Waste / Drainage Pipes | 4d | 2026-04-16 A | 2026-04-30 A | HAL-C-D-S-977 | 100% |  |
| HAL-C-D-M-1000 |  | Installation of Trench drain | 5d | 2026-06-17 A | 2026-08-05 A | HAL-C-D-M-840 | 100% |  |
| HAL-C-D-M-840 |  | Installation of Floor Drain | 2d | 2026-06-17 A | 2026-08-05 A | HAL-C-D-M-820, HAL-C-D-A-1080 | 100% |  |
|  | 2 | **SECOND STAGE** |  | 2026-07-11 | 2026-09-24 |  |  |  |
| HAL-C-D-M-860 |  | Installation of Roof Vent Cap | 2d | 2026-07-11 A | 2026-08-25 A | HAL-C-D-M-850 | 100% |  |
| HAL-C-D-M-800 |  | Installation of Electric Water Heater | 2d | 2026-08-05 A | 2026-08-05 A | HAL-C-D-M-1000 | 100% |  |
| HAL-C-D-M-850 |  | Installation of Water Tap | 2d | 2026-09-17 A | 2026-09-19 A | HAL-C-D-M-830, HAL-C-D-M-890 | 100% |  |
| HAL-C-D-M-810 |  | Installation of Sanitary Fixture and Accessories | 4d | 2026-09-19 A | 2026-09-24 A | HAL-C-D-M-800 | 100% |  |
| HAL-C-D-M-830 |  | Installation of Lavotary /Wash Basin | 2d | 2026-09-19 A | 2026-09-24 A | HAL-C-D-M-800, HAL-C-D-M-810 | 100% |  |
| HAL-C-D-M-890 |  | Installation of Bib Tap | 2d | 2026-09-19 A | 2026-09-24 A | HAL-C-D-M-810, HAL-C-D-M-830 | 100% |  |
|  | 4 | **WATER SUPPLY SYSTEM** |  | 2026-07-01 | 2026-08-05 |  |  |  |
|  | 1 | **FIRST STAGE** |  | 2026-07-01 | 2026-08-05 |  |  |  |
| HAL-C-D-M-910 |  | Installation of Water Supply Pipes | 4d | 2026-07-01 A | 2026-08-05 A | HAL-C-D-A-1090 | 100% |  |
| HAL-C-D-M-900 |  | Installation of Water Supply Valve | 2d | 2026-08-02 A | 2026-08-05 A | HAL-C-D-M-910 | 100% |  |
|  | 2 | **SECOND STAGE** |  | 2026-07-04 | 2026-08-05 |  |  |  |
| HAL-C-D-M-950 |  | Capped connection | 5d | 2026-07-04 A | 2026-08-05 A | HAL-C-D-M-900 | 100% |  |
|  | 4 | **ELECTRICAL** |  | 2026-04-16 | 2026-10-20 |  |  |  |
|  | 1 | **FIRST STAGE** |  | 2026-04-16 | 2026-10-19 |  |  |  |
| HAL-C-D-E-573 |  | Installation of Earthing and Grounding | 4d | 2026-04-16 A | 2026-10-19 | HAL-C-D-E-683 SS | 95% | 9.95d |
| HAL-C-D-E-643 |  | Installation of Sleeves & Power outlet | 8d | 2026-04-16 A | 2026-08-01 A | HAL-C-D-A-1030 | 100% |  |
| HAL-C-D-E-603 |  | Installation of Conduits and wiring outlets - Fire Alarm System | 4d | 2026-06-08 A | 2026-06-13 A | HAL-C-D-E-663 SS | 100% |  |
| HAL-C-D-E-623 |  | Installation of Conduites for Lighting Fixture | 4d | 2026-06-08 A | 2026-06-13 A | HAL-C-D-E-603 SS | 100% |  |
| HAL-C-D-E-693 |  | Installation of Wires | 2d | 2026-06-25 A | 2026-09-12 A | HAL-C-D-E-623 SS | 100% |  |
| HAL-C-D-E-683 |  | Installation of LV Cables | 4d | 2026-09-05 A | 2026-10-13 A | HAL-C-D-E-693 | 100% |  |
|  | 2 | **SECOND STAGE** |  | 2026-06-17 | 2026-10-20 |  |  |  |

| ID | WBS | Task | Duration | Start | Finish | Predecessors | Complete | Total float |
| --- | --- | --- | --- | --- | --- | --- | --- | --- |
| HAL-C-D-E-1030 |  | Installation of CCTV System | 2d | 2026-06-17 A | 2026-10-12 A | HAL-C-D-E-643, HAL-C-D-E-713 SS | 100% |  |
| HAL-C-D-E-733 |  | Installation of Access Control System | 2d | 2026-06-17 A | 2026-10-20 | HAL-C-D-E-593 | 70% | 9.85d |
| HAL-C-D-E-703 |  | Installation of LP-1 Panel | 2d | 2026-07-23 A | 2026-09-24 A | HAL-C-D-E-653 | 100% |  |
| HAL-C-D-E-673 |  | Installation of Telephone Cabinet | 2d | 2026-07-29 A | 2026-10-01 A | HAL-C-D-E-713 SS | 100% |  |
| HAL-C-D-E-1040 |  | Installation of Solar power plant | 2d | 2026-08-15 A | 2026-10-12 A | HAL-C-D-E-733 SS | 100% |  |
| HAL-C-D-E-633 |  | Installation of Wiring Devices | 4d | 2026-08-29 A | 2026-10-01 A | HAL-C-D-E-643, HAL-C-D-A-1090 | 100% |  |
| HAL-C-D-E-663 |  | Installation of Disconnect Switches | 2d | 2026-08-29 A | 2026-10-12 A | HAL-C-D-E-633 | 100% |  |
| HAL-C-D-E-713 |  | Installation of PP-AC panel | 2d | 2026-09-02 A | 2026-10-12 A | HAL-C-D-E-703 SS | 100% |  |
| HAL-C-D-E-653 |  | Installation of Main Distribution Board | 2d | 2026-09-03 A | 2026-10-12 A | HAL-C-D-E-693 SS | 100% |  |
| HAL-C-D-E-613 |  | Installation of Lighting fixtures | 4d | 2026-09-08 A | 2026-10-12 A | HAL-C-D-E-693 SS | 100% |  |
| HAL-C-D-E-583 |  | Installation of Fire Alarm Control Panel | 4d | 2026-09-22 A | 2026-09-24 A | HAL-C-D-E-603 | 100% |  |
| HAL-C-D-E-593 |  | Installation of Fire Detectors & Accessories | 4d | 2026-09-22 A | 2026-10-12 A | HAL-C-D-E-583 SS | 100% |  |
| HAL-C-D-E-763 |  | Firewarning flash light with sounder; wall mounted, Weather proof | 2d | 2026-09-22 A | 2026-09-24 A | HAL-C-D-E-753 SS | 100% |  |
| HAL-C-D-E-743 |  | Monitor Modules for Fire Alarm | 2d | 2026-09-24 A | 2026-10-20 | HAL-C-D-E-733 SS | 50% | 10.05d |
| HAL-C-D-E-753 |  | Line Isolator Modules for Fire Alarm | 2d | 2026-09-24 A | 2026-10-13 A | HAL-C-D-E-743 SS | 100% |  |
|  | 5 | **BLOCK E** |  | 2026-01-13 | 2026-10-27 |  |  |  |
|  | 1 | **STRUCTURAL** |  | 2026-01-13 | 2026-07-09 |  |  |  |
|  | 1 | **FOOTING** |  | 2026-01-13 | 2026-02-11 |  |  |  |
| HAL-C-E-S-150 |  | Excavation for footings | 6.12d | 2026-01-13 A | 2026-01-24 A | HAL-C-D-S-210 | 100% |  |
| HAL-C-E-S-101 |  | Anti Termite Below Footings | 1d | 2026-02-03 A | 2026-02-03 A | HAL-C-E-S-150 | 100% |  |
| HAL-C-E-S-102 |  | Vapour Barrier for Footings | 1d | 2026-02-03 A | 2026-02-03 A | HAL-C-E-S-101 | 100% |  |
| HAL-C-E-S-103 |  | Lean Concrete Below Footings | 2d | 2026-02-03 A | 2026-02-03 A | HAL-C-E-S-102 | 100% |  |
| HAL-C-E-S-105 |  | Formwork for Footings | 6d | 2026-02-04 A | 2026-02-04 A | HAL-C-E-S-104 | 100% |  |
| HAL-C-E-S-104 |  | Rebar for Footings | 4d | 2026-02-05 A | 2026-02-10 A | HAL-C-E-S-103 | 100% |  |
| HAL-C-E-S-106 |  | Pouring Concrete for Footings | 1d | 2026-02-11 A | 2026-02-11 A | HAL-C-E-S-105 | 100% |  |
|  | 2 | **COLUMN NECK** |  | 2026-02-07 | 2026-03-18 |  |  |  |
| HAL-C-E-S-257 |  | Rebar for column neck | 4d | 2026-02-07 A | 2026-02-10 A | HAL-C-E-S-106 | 100% |  |
| HAL-C-E-S-267 |  | Formwork for column neck | 2d | 2026-02-14 A | 2026-03-02 A | HAL-C-E-S-257 | 100% |  |
| HAL-C-E-S-297 |  | Pouring Concrete for column neck | 1d | 2026-02-19 A | 2026-03-02 A | HAL-C-E-S-267 | 100% |  |
| HAL-C-E-S-307 |  | Damp proof /Bitumin paint on Footings & column neck | 2d | 2026-02-25 A | 2026-03-03 A | HAL-C-E-S-297 | 100% |  |
| HAL-C-E-S-367 |  | Backfilling / Compaction up to Bottom of Grade Beams | 12d | 2026-03-02 A | 2026-03-18 A | HAL-C-E-S-307 | 100% |  |
|  | 3 | **GRADE BEAM** |  | 2026-03-10 | 2026-04-12 |  |  |  |
| HAL-C-E-S-337 |  | Vapour barrier for Grade Beams | 2d | 2026-03-10 A | 2026-03-24 A | HAL-C-E-S-527 | 100% |  |
| HAL-C-E-S-338 |  | Lean Concrete Below Grade Beams | 2d | 2026-03-10 A | 2026-03-24 A | HAL-C-E-S-337 | 100% |  |
| HAL-C-E-S-527 |  | Anti Termite Below Grade Beams | 1d | 2026-03-10 A | 2026-03-24 A | HAL-C-E-S-367 | 100% |  |
| HAL-C-E-S-339 |  | Rebar for Grade Beams | 5d | 2026-03-24 A | 2026-04-04 A | HAL-C-E-S-338, HAL-C-GEN-200 | 100% |  |
| HAL-C-E-S-340 |  | Formwork for Grade Beams | 2d | 2026-03-24 A | 2026-04-04 A | HAL-C-E-S-339 | 100% |  |
| HAL-C-E-S-341 |  | Anchor bolts installation | 2d | 2026-04-02 A | 2026-04-04 A | HAL-C-E-S-340 SS | 100% |  |
| HAL-C-E-S-342 |  | Pouring Concrete for Grade Beams | 1d | 2026-04-05 A | 2026-04-05 A | HAL-C-E-S-340, HAL-C-E-S-341 | 100% |  |
| HAL-C-E-S-347 |  | Damp proof /Bitumin paint on Grade Beams | 5d | 2026-04-11 A | 2026-04-12 A | HAL-C-E-S-342 | 100% |  |
|  | 5 | **SLAB ON GRADE** |  | 2026-04-14 | 2026-06-20 |  |  |  |
| HAL-C-E-S-377 |  | Backfilling / Compaction for Slab on Grade | 12d | 2026-04-14 A | 2026-04-25 A | HAL-C-E-S-347, HAL-C-TC-S-9100 | 100% |  |
| HAL-C-E-S-378 |  | Anti Termite Treatment below Ground Slab | 1d | 2026-05-14 A | 2026-05-19 A | HAL-C-E-S-377 | 100% |  |
| HAL-C-E-S-379 |  | Vapour barrier for below Ground Slab | 2d | 2026-05-14 A | 2026-05-19 A | HAL-C-E-S-378 | 100% |  |
| HAL-C-E-S-382 |  | Pouring Concrete for Ground Slab | 4d | 2026-05-16 A | 2026-05-20 A | HAL-C-E-S-379 | 100% |  |
| HAL-C-E-S-517 |  | Concrete pad | 7d | 2026-06-17 A | 2026-06-20 A | HAL-C-E-A-0150 | 100% |  |
|  | 4 | **COLUMNS & BEAMS** |  | 2026-03-07 | 2026-07-09 |  |  |  |
| HAL-C-E-S-6101 |  | Rebar for Tie Beams | 4d | 2026-03-07 A | 2026-03-09 A | HAL-C-E-S-5103 | 100% |  |
| HAL-C-E-S-6102 |  | Formwork for Tie Beams | 2d | 2026-03-07 A | 2026-03-09 A | HAL-C-E-S-6101 | 100% |  |
| HAL-C-E-S-6103 |  | Pouring Concrete for Tie Beams | 1d | 2026-03-10 A | 2026-03-10 A | HAL-C-E-S-6102 | 100% |  |
| HAL-C-E-S-5101 |  | Rebar for column | 7d | 2026-05-16 A | 2026-05-24 A | HAL-C-E-S-377 | 100% |  |
| HAL-C-E-S-5102 |  | Formwork for column | 4d | 2026-06-01 A | 2026-06-02 A | HAL-C-E-S-5101, HAL-C-TC-M-3406 | 100% |  |
| HAL-C-E-S-5103 |  | Pouring Concrete for column | 1d | 2026-06-04 A | 2026-06-04 A | HAL-C-E-S-5102 | 100% |  |
| HAL-C-E-S-6113 |  | Rebar for Beams | 4d | 2026-06-04 A | 2026-07-08 A | HAL-C-E-S-6103 | 100% |  |
| HAL-C-E-S-6123 |  | Formwork for Beams | 2d | 2026-07-08 A | 2026-07-08 A | HAL-C-E-S-6113, HAL-C-E-S-6113 FF | 100% |  |
| HAL-C-E-S-6133 |  | Pouring Concrete for Beams | 1d | 2026-07-09 A | 2026-07-09 A | HAL-C-E-S-6123, HAL-C-E-S-6123 FF | 100% |  |
|  | 5 | **STRUCTURAL STEEL** |  | 2026-04-30 | 2026-08-13 |  |  |  |
| HAL-C-E-SS-0100 |  | Installation of columns | 3d | 2026-04-30 A | 2026-05-06 A | HAL-C-E-S-382, HAL-C-D-A-220 | 100% |  |
| HAL-C-E-SS-0110 |  | Installation of raft and purlins | 5d | 2026-04-30 A | 2026-05-09 A | HAL-C-E-SS-0100 | 100% |  |
| HAL-C-E-SS-1030 |  | Steel members for external platform | 5d | 2026-05-03 A | 2026-05-25 A | HAL-C-E-SS-620 | 100% |  |
| HAL-C-E-SS-620 |  | Steel members for office area | 5d | 2026-05-03 A | 2026-05-25 A | HAL-C-E-SS-610, HAL-C-E-SS-0110 | 100% |  |
| HAL-C-E-SS-610 |  | Intumescent paint to steel works | 5d | 2026-05-16 A | 2026-06-02 A | HAL-C-E-SS-0110 | 100% |  |
| HAL-C-E-SS-0140 |  | Installation of roof sheet | 5d | 2026-06-07 A | 2026-06-10 A | HAL-C-E-A-0120, HAL-C-E-SS-610, HAL-C-E-S-6133 | 100% |  |
| HAL-C-E-SS-0130 |  | Installation of wall sandwich panel | 5d | 2026-07-16 A | 2026-07-30 A | HAL-C-E-A-0150 | 100% |  |
| HAL-C-E-SS-1040 |  | Epoxy paint for external platform | 5d | 2026-07-20 A | 2026-07-21 A | HAL-C-E-SS-1030, HAL-C-E-SS-1030 FF | 100% |  |
| HAL-C-E-SS-1020 |  | Epoxy paint to steel members at office area | 5d | 2026-08-12 A | 2026-08-13 A | HAL-C-E-SS-620 | 100% |  |
|  | 2 | **ARCHITECTURAL** |  | 2026-06-10 | 2026-10-27 |  |  |  |
|  | 1 | **MASONARY WORKS** |  | 2026-06-10 | 2026-07-02 |  |  |  |
| HAL-C-E-A-0120 |  | Block work at factory area | 15d | 2026-06-10 A | 2026-07-02 A | HAL-C-E-S-382, HAL-C-E-SS-0110 | 100% |  |
| HAL-C-E-A-0150 |  | Block work at office area | 10d | 2026-06-10 A | 2026-07-02 A | HAL-C-E-SS-0140 SS, HAL-C-E-SS-620, HAL-C-TC-S-9090 | 100% |  |

| ID | WBS | Task | Duration | Start | Finish | Predecessors | Complete | Total float |
| --- | --- | --- | --- | --- | --- | --- | --- | --- |
| HAL-C-E-A-170 |  | Block work at toilet area | 7d | 2026-06-10 A | 2026-07-02 A | HAL-C-E-A-0150, HAL-C-E-SS-1040, HAL-C-E-SS-1020, HAL-C-TC-A-9100 | 100% |  |
|  | 5 | **WALL FINISHES** |  | 2026-07-26 | 2026-10-24 |  |  |  |
| HAL-C-E-A-180 |  | Internal Wall Plaster | 15d | 2026-07-26 A | 2026-08-05 A | HAL-C-E-A-170, HAL-C-E-E-183, HAL-C-E-S-517 | 100% |  |
| HAL-C-E-A-230 |  | Paint to Plaster (Primer, Putty & First Coat) | 7d | 2026-08-12 A | 2026-10-24 | HAL-C-E-A-250 | 90% | 5.85d |
|  | 2 | **CIELING FINISHES** |  | 2026-09-08 | 2026-09-24 |  |  |  |
| HAL-C-E-A-240 |  | Installation of Ceiling Gypsum Board | 5d | 2026-09-08 A | 2026-09-24 A | HAL-C-E-A-220, HAL-C-E-S-517 | 100% |  |
|  | 6 | **FLOOR FINISHES** |  | 2026-08-02 | 2026-10-15 |  |  |  |
| HAL-C-E-A-220 |  | Tiles for Toilet | 7d | 2026-08-02 A | 2026-08-13 A | HAL-C-E-A-370 | 100% |  |
| HAL-C-E-A-250 |  | Tiles for Office Area | 2d | 2026-08-27 A | 2026-08-30 A | HAL-C-E-A-240, HAL-C-E-E-303 | 100% |  |
| HAL-C-E-A-420 |  | Epoxy paint | 5d | 2026-09-05 A | 2026-10-15 A | HAL-C-E-A-340 SS | 100% |  |
| HAL-C-E-A-390 |  | Granite strip | 2d | 2026-09-22 A | 2026-09-24 A | HAL-C-E-A-558 | 100% |  |
|  | 3 | **DOORS & WINDOWS** |  | 2026-07-14 | 2026-09-13 |  |  |  |
| HAL-C-E-A-552 |  | Window (CW1) | 7d | 2026-07-14 A | 2026-09-13 A | HAL-C-E-SS-0130 | 100% |  |
| HAL-C-E-A-558 |  | Skylight fixtures installation | 1d | 2026-08-03 A | 2026-08-06 A | HAL-C-E-A-557, HAL-C-TC-E-9120 | 100% |  |
| HAL-C-E-A-553 |  | Roll up Shutter Door | 1d | 2026-08-11 A | 2026-08-12 A | HAL-C-E-A-552 | 100% |  |
| HAL-C-E-A-200 |  | Supply and install (D5) 1000*2200mm single leaf steel door with door | 1d | 2026-08-13 A | 2026-09-10 A | HAL-C-E-A-553 | 100% |  |
| HAL-C-E-A-557 |  | Supply and install fire rated 45 min (D2) 1200*2200 mm single leaf steel door | 1d | 2026-08-13 A | 2026-09-10 A | HAL-C-E-A-556 | 100% |  |
| HAL-C-E-A-554 |  | Supply and install (D4) 800*2200 mm single leaf aluminum door with door | 1d | 2026-09-08 A | 2026-09-10 A | HAL-C-E-A-200 | 100% |  |
| HAL-C-E-A-555 |  | Supply and install (D7) 1000*2200 mm single leaf aluminum door with door | 1d | 2026-09-08 A | 2026-09-10 A | HAL-C-E-A-554 | 100% |  |
| HAL-C-E-A-556 |  | Supply and install (D3) 1000*2200 mm single leaf aluminum door with door | 1d | 2026-09-08 A | 2026-09-10 A | HAL-C-E-A-555 | 100% |  |
|  | 4 | **WATER PROOFING WORKS** |  | 2026-08-05 | 2026-08-06 |  |  |  |
| HAL-C-E-A-370 |  | Waterproofing membrane for toilets | 4d | 2026-08-05 A | 2026-08-06 A | HAL-C-E-M-200, HAL-C-E-A-180, HAL-C-TC-S-9110 | 100% |  |
|  | 7 | **METAL WORKS** |  | 2026-08-13 | 2026-10-22 |  |  |  |
| HAL-C-E-A-292 |  | Aluminium composite panel | 5d | 2026-08-13 A | 2026-10-03 A | HAL-C-E-A-291 | 100% |  |
| HAL-C-E-A-290 |  | Steel Ladder | 2d | 2026-08-20 A | 2026-08-29 A | HAL-C-E-A-390 | 100% |  |
| HAL-C-E-A-300 |  | Galvanised Steel Gratings | 2d | 2026-10-08 A | 2026-10-10 A | HAL-C-E-A-292 | 100% |  |
| HAL-C-E-A-291 |  | Steel railing works | 4d | 2026-10-19 | 2026-10-22 | HAL-C-E-A-290 |  | 2.75d |
|  | 8 | **SPECIALTIES** |  | 2026-09-22 | 2026-10-27 |  |  |  |
| HAL-C-E-A-320 |  | Installation of fittings | 5d | 2026-09-22 A | 2026-09-24 A | HAL-C-E-A-300 SS | 100% |  |
| HAL-C-E-A-570 |  | Identification sign; ID01 & ID02 | 3d | 2026-10-24 | 2026-10-26 | HAL-C-E-A-320 SS |  | 2.75d |
| HAL-C-E-A-340 |  | Furniture Installation | 1d | 2026-10-27 | 2026-10-27 | HAL-C-E-A-570 |  | 2.75d |
|  | 3 | **MECHANICAL** |  | 2026-04-05 | 2026-09-26 |  |  |  |
|  | 1 | **HVAC** |  | 2026-06-17 | 2026-09-24 |  |  |  |
|  | 1 | **FIRST STAGE** |  | 2026-06-17 | 2026-07-30 |  |  |  |
| HAL-C-E-M-140 |  | Installation of HVAC Ducts | 2d | 2026-06-17 A | 2026-07-30 A | HAL-C-E-M-160 | 100% |  |
| HAL-C-E-M-170 |  | Installation of Duct insulation | 2d | 2026-06-17 A | 2026-07-30 A | HAL-C-E-M-140 | 100% |  |
|  | 2 | **SECOND STAGE** |  | 2026-07-30 | 2026-09-24 |  |  |  |
| HAL-C-E-M-130 |  | Installation of Exhaust Fans | 2d | 2026-07-30 A | 2026-07-30 A | HAL-C-E-A-230 | 100% |  |
| HAL-C-E-M-160 |  | Installation of Wall Propeller Type Exhaust Fan | 4d | 2026-09-03 A | 2026-09-05 A | HAL-C-E-M-130 | 100% |  |
| HAL-C-E-M-340 |  | Supply, install, test and commission door grilles & exhaust louvers | 2d | 2026-09-05 A | 2026-09-10 A | HAL-C-E-M-339 | 100% |  |
| HAL-C-E-M-339 |  | Installation of Diffuser | 2d | 2026-09-19 A | 2026-09-24 A | HAL-C-E-M-170 | 100% |  |
|  | 2 | **FIRE FIGHTING SYSTEM** |  | 2026-06-11 | 2026-08-25 |  |  |  |
|  | 1 | **FIRST STAGE** |  | 2026-06-11 | 2026-08-06 |  |  |  |
| HAL-C-E-M-300 |  | Installation of Fire Fighting Pipes (Seamless Black Steel) | 7d | 2026-06-11 A | 2026-08-06 A | HAL-C-E-A-230 | 100% |  |
| HAL-C-E-M-310 |  | Installation of Fire Fighting Valve | 5d | 2026-06-13 A | 2026-08-06 A | HAL-C-E-M-300 | 100% |  |
|  | 2 | **SECOND STAGE** |  | 2026-06-17 | 2026-08-25 |  |  |  |
| HAL-C-E-M-320 |  | Installation of Fire Hose Cabinet | 3d | 2026-06-17 A | 2026-08-25 A | HAL-C-E-M-310 | 100% |  |
| HAL-C-E-M-370 |  | Supply, install, test and commission Fire Department Connection(FDC) | 3d | 2026-06-17 A | 2026-08-06 A | HAL-C-E-M-340 | 100% |  |
|  | 3 | **SEWER AND DRAINAGE SYSTEM** |  | 2026-04-05 | 2026-09-26 |  |  |  |
|  | 1 | **FIRST STAGE** |  | 2026-04-05 | 2026-08-06 |  |  |  |
| HAL-C-E-M-200 |  | Installation of Sanitary Waste / Drainage Pipes | 4d | 2026-04-05 A | 2026-05-02 A | HAL-C-E-S-347 | 100% |  |
| HAL-C-E-M-220 |  | Installation of Floor Drain | 2d | 2026-06-17 A | 2026-08-06 A | HAL-C-E-M-200, HAL-C-E-A-220 | 100% |  |
| HAL-C-E-M-380 |  | Installation of Trench drain | 5d | 2026-06-17 A | 2026-08-06 A | HAL-C-E-M-220 | 100% |  |
|  | 2 | **SECOND STAGE** |  | 2026-08-15 | 2026-09-26 |  |  |  |
| HAL-C-E-M-180 |  | Installation of Electric Water Heater | 2d | 2026-08-15 A | 2026-08-15 A | HAL-C-E-M-380 | 100% |  |
| HAL-C-E-M-429 |  | Installation of Roof Vent Cap | 2d | 2026-08-19 A | 2026-08-22 A | HAL-C-E-M-428 | 100% |  |
| HAL-C-E-M-428 |  | Installation of Water Tap | 2d | 2026-08-27 A | 2026-09-19 A | HAL-C-E-M-210, HAL-C-E-M-270 | 100% |  |
| HAL-C-E-M-190 |  | Installation of Sanitary Fixture and Accessories | 4d | 2026-09-20 A | 2026-09-26 A | HAL-C-E-M-180 | 100% |  |
| HAL-C-E-M-210 |  | Installation of Lavotary /Wash Basin | 2d | 2026-09-20 A | 2026-09-26 A | HAL-C-E-M-180, HAL-C-E-M-190 | 100% |  |
| HAL-C-E-M-270 |  | Installation of Bib Tap | 2d | 2026-09-20 A | 2026-09-26 A | HAL-C-E-M-190, HAL-C-E-M-210 | 100% |  |
|  | 4 | **WATER SUPPLY SYSTEM** |  | 2026-07-02 | 2026-08-15 |  |  |  |
|  | 1 | **FIRST STAGE** |  | 2026-07-02 | 2026-08-15 |  |  |  |
| HAL-C-E-M-290 |  | Installation of Water Supply Pipes | 4d | 2026-07-02 A | 2026-08-15 A | HAL-C-E-A-230 | 100% |  |
| HAL-C-E-M-280 |  | Installation of Water Supply Valve | 2d | 2026-08-06 A | 2026-08-15 A | HAL-C-E-M-290 | 100% |  |
|  | 2 | **SECOND STAGE** |  | 2026-07-04 | 2026-08-08 |  |  |  |
| HAL-C-E-M-330 |  | Capped connection | 5d | 2026-07-04 A | 2026-08-08 A | HAL-C-E-M-280 | 100% |  |
|  | 4 | **ELECTRICAL** |  | 2026-04-05 | 2026-10-22 |  |  |  |
|  | 1 | **FIRST STAGE** |  | 2026-04-05 | 2026-10-19 |  |  |  |
| HAL-C-E-E-113 |  | Installation of Earthing and Grounding | 5d | 2026-04-05 A | 2026-10-19 | HAL-C-E-E-223 | 95% | 10.4d |
| HAL-C-E-E-183 |  | Installation of Sleeves & Power outlet | 8d | 2026-04-05 A | 2026-09-22 A | HAL-C-E-A-170 | 100% |  |

| ID | WBS | Task | Duration | Start | Finish | Predecessors | Complete | Total float |
| --- | --- | --- | --- | --- | --- | --- | --- | --- |
| HAL-C-E-E-143 |  | Installation of Conduits and wiring outlets - Fire Alarm System | 4d | 2026-05-25 A | 2026-06-11 A | HAL-C-E-A-170 | 100% |  |
| HAL-C-E-E-163 |  | Installation of Conduites for Lighting Fixture | 4d | 2026-05-25 A | 2026-06-11 A | HAL-C-E-E-133 | 100% |  |
| HAL-C-E-E-233 |  | Installation of Wires | 4d | 2026-06-09 A | 2026-09-09 A | HAL-C-E-E-163 | 100% |  |
| HAL-C-E-E-223 |  | Installation of LV Cables | 4d | 2026-09-05 A | 2026-10-14 A | HAL-C-E-E-213 | 100% |  |
|  | 2 | **SECOND STAGE** |  | 2026-06-17 | 2026-10-22 |  |  |  |
| HAL-C-E-E-273 |  | Installation of Access Control System | 5d | 2026-06-17 A | 2026-10-21 | HAL-C-E-E-410, HAL-C-E-E-153 | 50% | 5.85d |
| HAL-C-E-E-410 |  | Installation of CCTV System | 7d | 2026-06-17 A | 2026-10-14 A | HAL-C-E-E-233 | 100% |  |
| HAL-C-E-E-243 |  | Installation of LP-1 Panel | 2d | 2026-07-26 A | 2026-10-01 A | HAL-C-E-E-193 | 100% |  |
| HAL-C-E-E-213 |  | Installation of Telephone Cabinet | 2d | 2026-07-30 A | 2026-10-01 A | HAL-C-E-E-253 | 100% |  |
| HAL-C-E-E-420 |  | Installation of Solar power plant | 2d | 2026-08-17 A | 2026-10-12 A | HAL-C-D-E-1040 SS | 100% |  |
| HAL-C-E-E-173 |  | Installation of Wiring Devices | 4d | 2026-08-29 A | 2026-10-01 A | HAL-C-E-E-183, HAL-C-E-A-230, HAL-C-E-E-113 | 100% |  |
| HAL-C-E-E-203 |  | Installation of Disconnect Switches | 2d | 2026-08-29 A | 2026-10-12 A | HAL-C-E-E-173 | 100% |  |
| HAL-C-E-E-193 |  | Installation of Main Distribution Board | 2d | 2026-09-08 A | 2026-10-14 A | HAL-C-E-E-233 | 100% |  |
| HAL-C-E-E-153 |  | Installation of Lighting fixtures | 4d | 2026-09-15 A | 2026-10-12 A | HAL-C-E-E-233 | 100% |  |
| HAL-C-E-E-253 |  | Installation of PP-AC panel | 2d | 2026-09-17 A | 2026-10-14 A | HAL-C-E-E-243 | 100% |  |
| HAL-C-E-E-123 |  | Installation of Fire Alarm Control Panel | 4d | 2026-09-22 A | 2026-09-24 A | HAL-C-E-E-143 | 100% |  |
| HAL-C-E-E-133 |  | Installation of Fire Detectors & Accessories | 4d | 2026-09-22 A | 2026-10-12 A | HAL-C-E-E-123 | 100% |  |
| HAL-C-E-E-303 |  | Firewarning flash light with sounder; wall mounted, Weather proof | 2d | 2026-09-22 A | 2026-09-24 A | HAL-C-E-E-293 | 100% |  |
| HAL-C-E-E-283 |  | Monitor Modules for Fire Alarm | 2d | 2026-09-24 A | 2026-10-22 | HAL-C-E-E-273, HAL-C-E-E-253, HAL-C-E-E-213 | 50% | 5.85d |
| HAL-C-E-E-293 |  | Line Isolator Modules for Fire Alarm | 2d | 2026-09-24 A | 2026-10-14 A | HAL-C-E-E-283 | 100% |  |
|  | 2 | **SITE INFRASTRUCTURE** |  | 2026-01-20 | 2026-11-01 |  |  |  |
|  | 1 | **SITE WORKS** |  | 2026-01-20 | 2026-08-29 |  |  |  |
| HAL-C-GEN-180 |  | Initial Site Survey and Setting out | 3d | 2026-01-20 A | 2026-01-21 A | HAL-C-GEN-10 | 100% |  |
| HAL-C-GEN-190 |  | Excavation to the target grading level | 20d | 2026-01-24 A | 2026-02-19 A | HAL-C-GEN-180, HAL-C-GEN-620 | 100% |  |
| HAL-C-GEN-200 |  | Backfilling to reach target level | 20d | 2026-08-22 A | 2026-08-29 A | HAL-C-GEN-190 | 100% |  |
|  | 4 | **NETWORKS** |  | 2026-05-05 | 2026-09-19 |  |  |  |
|  | 6 | **INTERNAL FIRE FIGHTING WATER SUPPLY SYSTEM (OUTSIDE BUILDING UNITS)** |  | 2026-05-05 | 2026-08-04 |  |  |  |
| HAL-C-ENV-F-212 |  | Excavation for External Fire Fighting Works | 7d | 2026-05-05 A | 2026-08-03 A | HAL-C-C-SS-310, HAL-C-GEN-200, HAL-E-SA-EX-700, HAL-E-SA-EX-720, HAL-E-MT-ENV-2060 | 100% |  |
| HAL-C-ENV-F-172 |  | Installation of HDPE PN16 Pipes (200 Dia) | 10d | 2026-05-16 A | 2026-08-03 A | HAL-C-ENV-F-212, HAL-P-ST-M-430, HAL-P-ST-EN-100 | 100% |  |
| HAL-C-ENV-F-202 |  | Warning Tapes | 2d | 2026-05-16 A | 2026-08-03 A | HAL-C-ENV-F-172, HAL-P-ST-M-660 | 100% |  |
| HAL-C-ENV-F-222 |  | Backfilling for External Fire Fighting Works | 14d | 2026-06-17 A | 2026-08-04 A | HAL-C-ENV-F-192 | 100% |  |
| HAL-C-ENV-F-192 |  | Installation of Valves | 5d | 2026-07-14 A | 2026-07-25 A | HAL-C-ENV-F-202, HAL-P-ST-EN-110 | 100% |  |
|  | 1 | **WATER SUPPLY SYSTEM** |  | 2026-05-05 | 2026-09-10 |  |  |  |
| HAL-C-ENV-WS-786 |  | Excavation for Water Suppy Works | 7d | 2026-05-05 A | 2026-08-03 A | HAL-C-ENV-F-212, HAL-E-SA-EX-690, HAL-E-SA-EX-710 | 100% |  |
| HAL-C-ENV-WS-746 |  | Installation of HDPE PN16 Pipes for Cold Water Supply | 10d | 2026-05-16 A | 2026-08-03 A | HAL-C-ENV-WS-786, HAL-P-ST-EN-120 | 100% |  |
| HAL-C-ENV-WS-776 |  | Warning Tape | 2d | 2026-05-16 A | 2026-08-15 A | HAL-C-ENV-WS-846 SS | 100% |  |
| HAL-C-ENV-WS-766 |  | Installation of Valves | 5d | 2026-06-17 A | 2026-08-15 A | HAL-C-ENV-WS-776, HAL-E-SA-EX-740, HAL-E-SA-EX-790, HAL-P-ST-EN-130, HAL-P-ST-EN-160 | 100% |  |
| HAL-C-ENV-WS-796 |  | Backfilling for Water Supply | 14d | 2026-06-17 A | 2026-08-15 A | HAL-C-ENV-WS-766, HAL-C-ENV-F-222 | 100% |  |
| HAL-C-ENV-WS-846 |  | Construction of Air Valve Chamber | 7d | 2026-06-17 A | 2026-08-15 A | HAL-C-ENV-WS-806, HAL-E-SA-EX-750, HAL-E-SA-EX-760, HAL-E-SA-EX-780, HAL-E-SA-EX-830, HAL-E-SA-EX-840, HAL-P-ST-EN-140 | 100% |  |
| HAL-C-ENV-WS-826 |  | Supply and install Service connection -HDPE | 14d | 2026-08-03 A | 2026-09-10 A | HAL-C-ENV-WS-796, HAL-E-SA-EX-800 | 100% |  |
| HAL-C-ENV-WS-806 |  | Construction of Washout Chamber | 7d | 2026-08-04 A | 2026-09-05 A | HAL-C-ENV-WS-746, HAL-E-SA-EX-770, HAL-E-SA-EX-810, HAL-E-SA-EX-820, HAL-P-ST-EN-150 | 100% |  |
|  | 9 | **SEWER & DRAINAGE SYSTEM** |  | 2026-05-16 | 2026-09-10 |  |  |  |
| HAL-C-ENV-SW-536 |  | Construction of Manhole | 7d | 2026-05-16 A | 2026-07-23 A | HAL-C-ENV-SW-486, HAL-E-SA-EX-730, HAL-E-SA-EX-900, HAL-E-SA-EX-910, HAL-E-SA-EX-920, HAL-E-SA-EX-930, HAL-E-SA-EX-940 | 100% |  |
| HAL-C-ENV-SW-486 |  | Installation of GRP Pipes for Sewer | 10d | 2026-05-23 A | 2026-08-04 A | HAL-C-ENV-SW-516, HAL-P-ST-EN-170 | 100% |  |
| HAL-C-ENV-SW-516 |  | Excavation for Sewer Works | 7d | 2026-05-23 A | 2026-08-04 A | HAL-C-ENV-WS-746, HAL-E-SA-EX-850, HAL-E-SA-EX-860, HAL-E-SA-EX-870, HAL-E-SA-EX-880, HAL-E-SA-EX-890 | 100% |  |
| HAL-C-ENV-SW-526 |  | Backfilling for Sewer Drainage | 14d | 2026-06-17 A | 2026-08-04 A | HAL-C-ENV-SW-496 SS | 100% |  |
| HAL-C-ENV-SW-496 |  | Construction of inspection chambers | 7d | 2026-07-04 A | 2026-07-23 A | HAL-C-ENV-SW-536 | 100% |  |
| HAL-C-ENV-SW-506 |  | Gully trap | 10d | 2026-08-15 A | 2026-09-10 A | HAL-C-ENV-SW-526, HAL-P-ST-M-540 | 100% |  |
| HAL-C-ENV-SW-546 |  | GRP pipe service connection | 7d | 2026-09-03 A | 2026-09-10 A | HAL-C-ENV-SW-506, HAL-C-ENV-WS-826 | 100% |  |
|  | 2 | **IRRIGATION SYSTEM** |  | 2026-06-17 | 2026-09-19 |  |  |  |
| HAL-C-ENV-SW-576 |  | Construction of Air valve chamber | 5d | 2026-06-17 A | 2026-08-05 A | HAL-C-ENV-SW-566, HAL-E-SA-EX-980, HAL-E-SA-EX-990, HAL-E-SA-EX-1010, HAL-E-SA-EX-1020, HAL-E-SA-EX-1030 | 100% |  |
| HAL-C-ENV-SW-556 |  | Excavation for HDPE pipes | 3d | 2026-09-15 A | 2026-09-16 A | HAL-C-ENV-SW-516 SS, HAL-E-SA-EX-950, HAL-E-SA-EX-960 | 100% |  |
| HAL-C-ENV-SW-566 |  | Installation of HDPE Pipes | 5d | 2026-09-15 A | 2026-09-16 A | HAL-C-ENV-SW-556 | 100% |  |
| HAL-C-ENV-SW-586 |  | Construction of Washout valve chamber | 5d | 2026-09-15 A | 2026-09-19 A | HAL-C-ENV-SW-576 SS, HAL-E-SA-EX-1000, HAL-E-SA-EX-1040, HAL-E-SA-EX-1050 | 100% |  |
| HAL-C-ENV-SW-596 |  | Backfilling for HDPE pipes | 7d | 2026-09-17 A | 2026-09-19 A | HAL-C-ENV-SW-586 | 100% |  |
| HAL-C-ENV-SW-606 |  | Installation of valves | 5d | 2026-09-17 A | 2026-09-17 A | HAL-C-ENV-SW-596, HAL-E-SA-EX-970 | 100% |  |
| HAL-C-ENV-SW-616 |  | Main program system and controller for irrigation system | 7d | 2026-09-17 A | 2026-09-19 A | HAL-C-ENV-SW-606, HAL-E-ST-E-0260 | 100% |  |
|  | 3 | **EXTERNAL WORKS** |  | 2026-04-09 | 2026-11-01 |  |  |  |
|  | 1 | **MECHANICAL** |  | 2026-04-09 | 2026-10-08 |  |  |  |
| HAL-C-EX-M-1371 |  | Installation of GRP Tanks | 10d | 2026-05-13 A | 2026-06-06 A | HAL-P-ST-M-410, HAL-C-GRP-S-0108, HAL-E-SA-M-700, HAL-E-SA-M-710, HAL-E-SA-M-720, HAL-P-ST-M-410 FF | 100% |  |
| HAL-C-EX-M-1381 |  | Valves for GRP Tank | 3d | 2026-06-08 A | 2026-06-13 A | HAL-C-EX-M-1371 | 100% |  |
| HAL-C-EX-M-1391 |  | Access Ladder for GRP Tank | 2d | 2026-06-08 A | 2026-06-13 A | HAL-C-EX-M-1381 | 100% |  |
| HAL-C-EX-M-1341 |  | Installation of Booster Pump | 5d | 2026-08-15 A | 2026-08-29 A | HAL-P-ST-M-400, HAL-C-PR-S-178 SS | 100% |  |
| HAL-C-EX-M-1301 |  | Installation of Fire Fighting Pump | 4d | 2026-08-29 A | 2026-08-29 A | HAL-P-ST-M-380, HAL-C-EX-M-1341 | 100% |  |
| HAL-C-EX-M-1351 |  | Valves for Water Supply Pump | 2d | 2026-08-29 A | 2026-08-30 A | HAL-C-EX-E-176 | 100% |  |
| HAL-C-EX-M-1311 |  | CO2 fire extinguisher | 1d | 2026-10-07 A | 2026-10-08 A | HAL-C-EX-M-1301 | 100% |  |
| HAL-C-EX-M-1361 |  | Powder fire extinguisher | 1d | 2026-10-07 A | 2026-10-08 A | HAL-C-EX-M-1311 | 100% |  |
|  | 1 | **GRP Tank Foundation** |  | 2026-04-09 | 2026-05-24 |  |  |  |
| HAL-C-GRP-S-0101 |  | Excavation for Foundation | 4d | 2026-04-09 A | 2026-04-16 A | HAL-C-PR-S-108, HAL-E-SA-C-880, HAL-E-SA-R-930, HAL-E-SA-R-940 | 100% |  |
| HAL-C-GRP-S-0102 |  | Vapour Barrier for Foundation | 2d | 2026-04-20 A | 2026-04-20 A | HAL-C-GRP-S-0101 | 100% |  |

| ID | WBS | Task | Duration | Start | Finish | Predecessors | Complete | Total float |
| --- | --- | --- | --- | --- | --- | --- | --- | --- |
| HAL-C-GRP-S-0103 |  | Lean Concrete Below Foundation | 2d | 2026-04-20 A | 2026-04-20 A | HAL-C-GRP-S-0102 | 100% |  |
| HAL-C-GRP-S-0104 |  | Rebar for Foundation | 4d | 2026-04-22 A | 2026-04-27 A | HAL-C-GRP-S-0103 | 100% |  |
| HAL-C-GRP-S-0105 |  | Formwork for Foundation | 4d | 2026-04-22 A | 2026-04-30 A | HAL-C-GRP-S-0104 | 100% |  |
| HAL-C-GRP-S-0106 |  | Pouring Concrete for Foundation | 1d | 2026-05-02 A | 2026-05-02 A | HAL-C-GRP-S-0105 | 100% |  |
| HAL-C-GRP-S-0107 |  | Damp proof /Bitumin paint on Foundation | 2d | 2026-05-18 A | 2026-05-20 A | HAL-C-GRP-S-0106 | 100% |  |
| HAL-C-GRP-S-0108 |  | Backfilling / Compaction Around Foundation | 7d | 2026-05-21 A | 2026-05-24 A | HAL-C-GRP-S-0107 | 100% |  |
|  | 2 | **Pump Shed** |  | 2026-05-02 | 2026-07-30 |  |  |  |
| HAL-C-PR-S-108 |  | Excavation for Footings | 4d | 2026-05-02 A | 2026-05-05 A | HAL-C-ENV-SW-486 SS, HAL-E-SA-C-890 | 100% |  |
| HAL-C-PR-S-138 |  | Lean Concrete Below Footings | 2d | 2026-05-07 A | 2026-05-07 A | HAL-C-PR-S-308 | 100% |  |
| HAL-C-PR-S-198 |  | Rebar for Footings | 4d | 2026-05-07 A | 2026-05-11 A | HAL-C-PR-S-138 | 100% |  |
| HAL-C-PR-S-208 |  | Formwork for Footings | 4d | 2026-05-07 A | 2026-05-12 A | HAL-C-PR-S-198 | 100% |  |
| HAL-C-PR-S-308 |  | Vapour Barrier for Footings | 2d | 2026-05-07 A | 2026-05-07 A | HAL-C-PR-S-108 | 100% |  |
| HAL-C-PR-S-148 |  | Pouring Concrete for Footings | 1d | 2026-05-16 A | 2026-05-16 A | HAL-C-PR-S-208 | 100% |  |
| HAL-C-PR-S-298 |  | Damp proof /Bitumin paint on Footing Sides | 2d | 2026-05-18 A | 2026-05-20 A | HAL-C-PR-S-148 | 100% |  |
| HAL-C-PR-S-378 |  | Backfilling / Compaction Around Footings to Bottom of Grade Beams | 5d | 2026-05-21 A | 2026-05-31 A | HAL-C-PR-S-298 | 100% |  |
| HAL-C-PR-S-158 |  | Lean Concrete Below Grade Beams | 2d | 2026-06-01 A | 2026-06-01 A | HAL-C-PR-S-328 | 100% |  |
| HAL-C-PR-S-328 |  | Vapour barrier for Grade Beams | 2d | 2026-06-01 A | 2026-06-01 A | HAL-C-PR-S-378 | 100% |  |
| HAL-C-PR-S-218 |  | Rebar for Grade Beams | 2d | 2026-06-02 A | 2026-06-04 A | HAL-C-PR-S-158 | 100% |  |
| HAL-C-PR-S-188 |  | Pedestal including anchor bolts | 1d | 2026-06-04 A | 2026-06-06 A | HAL-C-PR-S-228 SS | 100% |  |
| HAL-C-PR-S-228 |  | Formwork for Grade Beams | 2d | 2026-06-04 A | 2026-06-06 A | HAL-C-PR-S-218 | 100% |  |
| HAL-C-PR-S-168 |  | Pouring Concrete for Grade Beams | 1d | 2026-06-06 A | 2026-06-06 A | HAL-C-PR-S-228 | 100% |  |
| HAL-C-PR-S-338 |  | Damp proof /Bitumin paint on Grade Beams | 2d | 2026-06-13 A | 2026-06-14 A | HAL-C-PR-S-168, HAL-C-PR-S-188 | 100% |  |
| HAL-C-PR-S-288 |  | Concrete Pad | 5d | 2026-06-17 A | 2026-06-20 A | HAL-C-PR-S-178 | 100% |  |
| HAL-C-PR-S-388 |  | Backfilling / Compaction for Slab on Grade | 5d | 2026-06-29 A | 2026-07-02 A | HAL-C-PR-S-338 | 100% |  |
| HAL-C-PR-S-128 |  | Installation of Columns | 3d | 2026-07-07 A | 2026-07-07 A | HAL-C-PR-S-188, HAL-C-PR-S-288 | 100% |  |
| HAL-C-PR-S-358 |  | Installation of Raft & Purlins | 4d | 2026-07-08 A | 2026-07-08 A | HAL-C-PR-S-128 | 100% |  |
| HAL-C-PR-S-368 |  | Installation of Roof Sheet | 2d | 2026-07-11 A | 2026-07-30 A | HAL-C-PR-S-358 SS | 100% |  |
| HAL-C-PR-S-268 |  | Rebar for Ground Slab | 4d | 2026-07-15 A | 2026-07-16 A | HAL-C-PR-S-348 | 100% |  |
| HAL-C-PR-S-318 |  | Anti Termite Treatment below Ground Slab | 1d | 2026-07-15 A | 2026-07-15 A | HAL-C-PR-S-388 | 100% |  |
| HAL-C-PR-S-348 |  | Vapour barrier for below Ground Slab | 2d | 2026-07-15 A | 2026-07-15 A | HAL-C-PR-S-318 | 100% |  |
| HAL-C-PR-S-278 |  | Formwork for Ground Slab | 4d | 2026-07-16 A | 2026-07-16 A | HAL-C-PR-S-268, HAL-C-PR-S-268 FF, HAL-C-EX-M-1391 | 100% |  |
| HAL-C-PR-S-178 |  | Pouring Concrete for Ground Slab | 1d | 2026-07-18 A | 2026-07-18 A | HAL-C-PR-S-278 | 100% |  |
|  | 6 | **ELECTRICAL** |  | 2026-07-25 | 2026-10-21 |  |  |  |
| HAL-C-EX-E-186 |  | Installation of Earthing and Grounding | 5d | 2026-07-25 A | 2026-10-21 | HAL-C-EX-E-176, HAL-E-SA-E-1160 | 50% | 7.75d |
| HAL-C-EX-E-206 |  | Installation of Conduites for Lighting Fixture | 4d | 2026-08-19 A | 2026-10-01 A | HAL-C-EX-E-186, HAL-E-SA-E-1130, HAL-E-SA-E-1140, HAL-E-SA-E-1170 | 100% |  |
| HAL-C-EX-E-1341 |  | Installation of Cable tray | 2d | 2026-09-05 A | 2026-10-01 A | HAL-C-EX-E-236 SS, HAL-P-ST-E-2100 | 100% |  |
| HAL-C-EX-E-1331 |  | Installation of Programmable Logis Controller | 1d | 2026-09-15 A | 2026-09-19 A | HAL-C-EX-E-196 SS, HAL-E-SA-E-1180, HAL-E-ST-E-0270 | 100% |  |
| HAL-C-EX-E-1321 |  | Installation of wiring devices | 2d | 2026-09-24 A | 2026-10-12 A | HAL-C-EX-M-1301 SS, HAL-C-EX-M-1361 SS | 100% |  |
| HAL-C-EX-E-176 |  | Installation of Main MCC | 2d | 2026-09-24 A | 2026-10-12 A | HAL-C-EX-M-1341 SS | 100% |  |
| HAL-C-EX-E-196 |  | Installation of Lighting fixtures | 2d | 2026-09-24 A | 2026-10-12 A | HAL-C-EX-E-226, HAL-C-EX-M-1351, HAL-E-SA-E-1150, HAL-P-ST-E-280 | 100% |  |
| HAL-C-EX-E-216 |  | Installation of LV Cables | 2d | 2026-09-24 A | 2026-10-12 A | HAL-C-EX-E-176 SS, HAL-C-EX-E-1341 SS | 100% |  |
| HAL-C-EX-E-236 |  | Installation of panel boards | 2d | 2026-09-24 A | 2026-10-12 A | HAL-C-EX-M-1301, HAL-P-ST-E-270 | 100% |  |
| HAL-C-EX-E-226 |  | Installation of Wires | 2d | 2026-10-10 A | 2026-10-12 A | HAL-C-EX-E-206 SS | 100% |  |
|  | 4 | **EXTERNAL ELECTRICAL WORKS** |  | 2026-08-01 | 2026-10-27 |  |  |  |
| HAL-C-EX-E-450 |  | Foundation for Lighting poles | 5d | 2026-08-01 A | 2026-09-09 A | HAL-C-EX-E-390 | 100% |  |
| HAL-C-EX-E-460 |  | Electrical Manhole | 7d | 2026-08-01 A | 2026-09-05 A | HAL-C-EX-E-380 | 100% |  |
| HAL-C-EX-E-410 |  | Construction of Concrete encased duct bank | 10d | 2026-08-25 A | 2026-09-24 A | HAL-C-EX-E-400, HAL-C-EX-E-400 FF | 100% |  |
| HAL-C-EX-E-390 |  | Installation of Telecom manhole | 10d | 2026-09-02 A | 2026-09-09 A | HAL-C-EX-E-420 | 100% |  |
| HAL-C-EX-E-400 |  | Installation of UPVC Pipe | 5d | 2026-09-02 A | 2026-09-24 A | HAL-C-B-A-620 | 100% |  |
| HAL-C-EX-E-420 |  | Installation of Sleeves for lighting poles | 5d | 2026-09-05 A | 2026-09-08 A | HAL-C-EX-E-410 | 100% |  |
| HAL-C-EX-E-470 |  | Installation of Earthing and Grounding | 5d | 2026-09-10 A | 2026-10-22 | HAL-C-EX-E-460 | 20% | 2.75d |
| HAL-C-EX-E-480 |  | Installation of Street Lighting Feeder pillars & KWH meter | 5d | 2026-09-10 A | 2026-10-27 | HAL-C-EX-E-470 | 20% | 2.75d |
| HAL-C-EX-E-440 |  | Installation of Lighting poles | 7d | 2026-09-24 A | 2026-10-12 A | HAL-C-EX-E-450, HAL-P-ST-E-260, HAL-C-TC-ENV-F-1051 | 100% |  |
| HAL-C-EX-E-380 |  | Installation of LV Cables | 7d | 2026-10-01 A | 2026-10-12 A | HAL-C-EX-E-430 | 100% |  |
| HAL-C-EX-E-430 |  | Installation of Lighting Fixture | 5d | 2026-10-01 A | 2026-10-03 A | HAL-C-EX-E-440 | 100% |  |
|  | 3 | **FENCES AND GATES** |  | 2026-08-22 | 2026-11-01 |  |  |  |
| HAL-C-EX-S-1374 |  | Excavation for Fence | 7d | 2026-08-22 A | 2026-08-24 A | HAL-C-EX-E-400 | 100% |  |
| HAL-C-EX-S-1274 |  | Lean Concrete Below Fence | 4d | 2026-08-24 A | 2026-08-25 A | HAL-C-EX-S-1354 | 100% |  |
| HAL-C-EX-S-1354 |  | Vapour Barrier for Fence | 4d | 2026-08-24 A | 2026-08-25 A | HAL-C-EX-S-1374 | 100% |  |
| HAL-C-EX-S-1314 |  | Formwork for Footings | 4d | 2026-08-25 A | 2026-08-25 A | HAL-C-EX-S-1304 | 100% |  |
| HAL-C-EX-S-1304 |  | Rebar for Footings | 7d | 2026-08-26 A | 2026-08-26 A | HAL-C-EX-S-1274 | 100% |  |
| HAL-C-EX-S-1284 |  | Pouring Concrete for Footings | 2d | 2026-08-27 A | 2026-08-27 A | HAL-C-EX-S-1314 | 100% |  |
| HAL-C-EX-S-1344 |  | Damp proof /Bitumin paint on Footing Sides | 2d | 2026-08-29 A | 2026-08-29 A | HAL-C-EX-S-1284 | 100% |  |
| HAL-C-EX-S-1364 |  | Backfilling / Compaction Around Footings | 7d | 2026-08-30 A | 2026-08-31 A | HAL-C-EX-S-1344 | 100% |  |
| HAL-C-EX-S-1334 |  | Installation of base plate | 5d | 2026-10-19 | 2026-10-24 | HAL-C-EX-S-1364, HAL-E-ST-A-1750 |  | 0.75d |
| HAL-C-EX-S-1294 |  | Installation of steel fence | 2d | 2026-10-25 | 2026-10-26 | HAL-C-EX-S-1324 SS |  | 1.75d |
| HAL-C-EX-S-1324 |  | Installation of steel members | 7d | 2026-10-25 | 2026-11-01 | HAL-C-EX-S-1334 |  | 0.75d |
| HAL-C-EX-S-1384 |  | Installation of steel gates | 2d | 2026-10-27 | 2026-10-28 | HAL-C-EX-S-1294 |  | 1.75d |
|  | 2 | **ROAD WORKS** |  | 2026-07-25 | 2026-10-31 |  |  |  |
| HAL-C-EX-R-1390 |  | SubGrade Preparation & Compaction | 7d | 2026-07-25 A | 2026-09-09 A | HAL-E-MT-EX-2050, HAL-C-EX-E-410 | 100% |  |

| ID | WBS | Task | Duration | Start | Finish | Predecessors | Complete | Total float |
| --- | --- | --- | --- | --- | --- | --- | --- | --- |
| HAL-C-EX-R-1400 |  | Aggregate Base Course Layer | 2d | 2026-09-09 A | 2026-09-24 A | HAL-E-SA-R-840, HAL-P-ST-EX-80, HAL-C-EX-R-1390 | 100% |  |
| HAL-C-EX-R-1460 |  | Curb Stones | 7d | 2026-09-19 A | 2026-10-19 | HAL-E-SA-R-790, HAL-E-SA-R-800, HAL-E-SA-R-810, HAL-E-SA-R-820, HAL-E-SA-R-850, HAL-P-ST-EX-140, HAL-C-EX-R-1400 SS | 98% | 0d |
| HAL-C-EX-R-1480 |  | Interlock Tiles | 7d | 2026-09-24 A | 2026-10-21 | HAL-C-EX-R-1460 SS, HAL-P-ST-EX-130 | 60% | 0d |
| HAL-C-EX-R-1500 |  | Road Signs | 5d | 2026-09-24 A | 2026-10-26 | HAL-C-EX-R-1490, HAL-E-SA-R-860, HAL-P-ST-EX-110 | 50% | 0d |
| HAL-C-EX-R-1410 |  | Asphalt Concrete Base Course Layer | 2d | 2026-10-11 A | 2026-10-31 A | HAL-C-EX-R-1450 SS+1d | 100% |  |
| HAL-C-EX-R-1450 |  | Prime Coat | 1d | 2026-10-11 A | 2026-10-12 A | HAL-C-EX-R-1500 | 100% |  |
| HAL-C-EX-R-1470 |  | Tack Coat | 1d | 2026-10-17 A | 2026-10-27 | HAL-C-EX-R-1410 | 25% | 0d |
| HAL-C-EX-R-1420 |  | Asphalt Concrete Wearing Course Layer | 2d | 2026-10-18 A | 2026-10-28 | HAL-C-EX-R-1470 | 25% | 0d |
| HAL-C-EX-R-890 |  | Supply and install geotextile sheet | 2d | 2026-10-19 | 2026-10-20 | HAL-C-EX-R-1480 SS |  | 0d |
| HAL-C-EX-R-1490 |  | Gravel Bedding | 2d | 2026-10-21 | 2026-10-22 | HAL-E-SA-R-880, HAL-E-SA-R-890, HAL-E-SA-R-910, HAL-C-EX-R-890 |  | 0d |
| HAL-C-EX-R-1430 |  | Retroreflective Thermoplastic White Traffic lines | 2d | 2026-10-28 | 2026-10-31 | HAL-C-EX-R-1420, HAL-E-SA-R-830, HAL-E-SA-R-870, HAL-P-ST-EX-100 |  | 0d |
| HAL-C-EX-R-1440 |  | Installation of Concrete wheel bumper | 2d | 2026-10-28 | 2026-10-31 | HAL-C-EX-R-1430 SS, HAL-P-ST-EX-90 |  | 0d |
|  | 5 | **LANDSCAPING** |  | 2026-10-21 | 2026-10-27 |  |  |  |
| HAL-C-EX-R-1510 |  | Planting of trees | 3d | 2026-10-21 | 2026-10-24 | HAL-C-EX-R-1490 SS, HAL-E-SA-R-900, HAL-E-SA-R-920, HAL-E-SA-R-950, HAL-E-SA-R-960 |  | 2.75d |
| HAL-C-EX-R-1520 |  | Planting of shrubs | 3d | 2026-10-25 | 2026-10-27 | HAL-C-EX-R-1510 |  | 2.75d |
|  | 6 | **TESTING AND COMMISSIONING (10%)** |  | 2026-04-25 | 2026-10-25 |  |  |  |
|  | 3 | **TESTING AND COMMISSIONING 900 Sq.m-2** |  | 2026-04-25 | 2026-10-25 |  |  |  |
|  | 1 | **MECHANICAL** |  | 2026-04-25 | 2026-10-24 |  |  |  |
| HAL-C-TC-M-3406 |  | Testing & Commissioning of Sewer & Drainage Pipes | 7d | 2026-04-25 A | 2026-09-24 A | HAL-C-B-M-510, HAL-C-C-M-1130, HAL-C-A-M-820, HAL-C-D-M-820, HAL-C-E-M-200 | 100% |  |
| HAL-C-TC-M-3436 |  | Testing and Commissioning of HVAC Duct | 2d | 2026-07-21 A | 2026-09-24 A | HAL-C-B-M-450, HAL-C-C-M-1070, HAL-C-A-M-760, HAL-C-D-M-760, HAL-C-E-M-140, HAL-C-TC-M-3416 | 100% |  |
| HAL-C-TC-M-3376 |  | Testing and Commissioning of Fire Fighting Pipes | 7d | 2026-09-08 A | 2026-10-24 | HAL-C-B-M-610, HAL-C-C-M-1230, HAL-C-A-M-920, HAL-C-D-M-920, HAL-C-E-M-300 | 90% | 5.85d |
| HAL-C-TC-M-3396 |  | Testing & Commissioning of Water Supply Pipes | 7d | 2026-09-08 A | 2026-09-24 A | HAL-C-B-M-600, HAL-C-C-M-1220, HAL-C-A-M-910, HAL-C-D-M-910, HAL-C-E-M-290 | 100% |  |
| HAL-C-TC-M-3416 |  | Testing and Commissioning of Electric Water Heater | 7d | 2026-09-15 A | 2026-10-19 | HAL-C-B-M-490, HAL-C-C-M-1110, HAL-C-A-M-800, HAL-C-D-M-800, HAL-C-E-M-180 | 90% | 9.85d |
| HAL-C-TC-M-3456 |  | Testing and Commissioning of Wall propeller type exhaust fans | 7d | 2026-09-15 A | 2026-10-24 | HAL-C-B-M-470, HAL-C-C-M-1090, HAL-C-A-M-780, HAL-C-D-M-780, HAL-C-E-M-160 | 90% | 6.45d |
| HAL-C-TC-M3446 |  | Testing and Commissioning of Exhaust Fan | 7d | 2026-09-15 A | 2026-10-24 | HAL-C-B-M-440, HAL-C-C-M-1060, HAL-C-A-M-750, HAL-C-D-M-750, HAL-C-E-M-130 | 90% | 6.55d |
| HAL-C-TC-M-3386 |  | Testing and Commissioning of Fire Hose Cabinet | 3d | 2026-09-24 A | 2026-10-24 | HAL-C-B-M-630, HAL-C-C-M-1250, HAL-C-A-M-940, HAL-C-D-M-940, HAL-C-E-M-320 | 90% | 6.25d |
| HAL-C-TC-M-3426 |  | Testing and Commissioning of Sanitary Fixtures | 7d | 2026-09-24 A | 2026-10-19 | HAL-C-B-M-500, HAL-C-C-M-1120, HAL-C-A-M-810, HAL-C-D-M-810, HAL-C-E-M-190, HAL-C-TC-M-3416 SS | 90% | 9.85d |
|  | 2 | **ELECTRICAL** |  | 2026-09-15 | 2026-10-25 |  |  |  |
| HAL-C-TC-E-3556 |  | Testing and Commissioning of Solar power plant | 1d | 2026-09-15 A | 2026-10-19 | HAL-C-B-E-730, HAL-C-C-E-1350, HAL-C-A-E-1040 SS, HAL-C-D-E-1040 SS, HAL-C-E-E-420 SS | 90% | 9.95d |
| HAL-C-TC-E-3476 |  | Testing and Commissioning of Lighting Fixtures | 1d | 2026-10-01 A | 2026-10-19 | HAL-C-B-E-383, HAL-C-C-E-843, HAL-C-A-E-613 SS, HAL-C-D-E-613 SS, HAL-C-E-E-153 | 90% | 9.95d |
| HAL-C-TC-E-3446 |  | Testing and Commissioning of LV cables | 1d | 2026-10-08 A | 2026-10-19 | HAL-C-B-E-453, HAL-C-C-E-913, HAL-C-A-E-683 SS, HAL-C-D-E-683 SS, HAL-C-E-E-223 | 90% | 9.95d |
| HAL-C-TC-E-3456 |  | Testing and Commissioning of Main Distribution Board | 2d | 2026-10-08 A | 2026-10-25 | HAL-C-B-E-423, HAL-C-C-E-883, HAL-C-A-E-653 SS, HAL-C-D-E-653, HAL-C-E-E-193, HAL-C-TC-M-3376, HAL-C-TC-M-3396, HAL-C-TC-M3446 SS | 90% | 5.85d |
| HAL-C-TC-E-3466 |  | Testing and Commissioning of Disconnect Switches | 1d | 2026-10-08 A | 2026-10-24 | HAL-C-TC-M-3436, HAL-C-TC-M-3456 SS, HAL-C-B-E-433, HAL-C-C-E-893, HAL-C-A-E-663, HAL-C-D-E-663, HAL-C-E-E-203 | 90% | 6.45d |
| HAL-C-TC-E-3486 |  | Testing and Commissioning of Grounding | 1d | 2026-10-08 A | 2026-10-19 | HAL-C-B-E-343 SS, HAL-C-C-E-803 SS, HAL-C-A-E-573 SS, HAL-C-D-E-573 SS, HAL-C-E-E-113 SS | 90% | 9.95d |
| HAL-C-TC-E-3496 |  | Testing and Commissioning of Fire Alarm System | 2d | 2026-10-08 A | 2026-10-19 | HAL-C-TC-M-3426, HAL-C-TC-M-3416, HAL-C-B-E-353, HAL-C-C-E-813, HAL-C-A-E-583 SS, HAL-C-D-E-583, HAL-C-E-E-123 | 90% | 9.85d |
| HAL-C-TC-E-3506 |  | Testing and Commissioning of Wiring Devices | 4d | 2026-10-08 A | 2026-10-24 | HAL-C-B-E-403, HAL-C-C-E-863, HAL-C-A-E-633, HAL-C-D-E-633, HAL-C-E-E-173, HAL-C-E-E-203 | 90% | 6.55d |
| HAL-C-TC-E-3516 |  | Testing and Commissioning of LP panel board | 1d | 2026-10-08 A | 2026-10-24 | HAL-C-TC-E-3456 SS, HAL-C-B-E-473, HAL-C-C-E-933, HAL-C-A-E-703, HAL-C-D-E-703 SS, HAL-C-E-E-243 | 90% | 5.85d |
| HAL-C-TC-E-3526 |  | Testing and Commissioning of PP-AC panel | 1d | 2026-10-08 A | 2026-10-19 | HAL-C-B-E-483, HAL-C-C-E-943, HAL-C-A-E-713, HAL-C-D-E-713 SS, HAL-C-E-E-253 | 90% | 10.05d |
| HAL-C-TC-E-3536 |  | Testing and Commissioning of Telephone and data system | 1d | 2026-10-08 A | 2026-10-19 | HAL-C-B-E-443, HAL-C-C-E-903, HAL-C-A-E-673, HAL-C-D-E-673 SS, HAL-C-E-E-213 | 90% | 10.05d |
| HAL-C-TC-E-3546 |  | Testing and Commissioning of Access Control System | 2d | 2026-10-08 A | 2026-10-19 | HAL-C-B-E-503 SS, HAL-C-C-E-963 SS, HAL-C-A-E-733 SS, HAL-C-D-E-733 SS, HAL-C-E-E-273 SS | 90% | 9.85d |
| HAL-C-TC-E-3566 |  | Testing and Commissioning of CCTV System | 1d | 2026-10-08 A | 2026-10-19 | HAL-C-B-E-720, HAL-C-C-E-1340, HAL-C-A-E-1030 SS, HAL-C-D-E-1030 SS, HAL-C-E-E-410 | 90% | 10.05d |
|  | 4 | **TESTING AND COMMISSIONING SITE INFRASTRUCTURE** |  | 2026-06-22 | 2026-10-24 |  |  |  |
|  | 6 | **PUMP ROOM SHED** |  | 2026-07-22 | 2026-10-21 |  |  |  |
| HAL-C-TC-M-3596 |  | Testing & Commissioning of GRP tank | 3d | 2026-07-22 A | 2026-07-23 A | HAL-C-EX-M-1371 | 100% |  |
| HAL-C-TC-M-3576 |  | Testing & Commissioning of Fire Fighting pump | 2d | 2026-09-15 A | 2026-10-19 | HAL-C-EX-M-1301, HAL-C-TC-E-3496 SS | 90% | 9.85d |
| HAL-C-TC-M-3586 |  | Testing & Commissioning of Booster pump | 2d | 2026-09-15 A | 2026-10-19 | HAL-C-EX-M-1341, HAL-C-TC-M-3426 | 90% | 9.85d |
| HAL-C-TC-E-3616 |  | Testing and Commissioning of Panel Board | 1d | 2026-10-12 A | 2026-10-19 | HAL-C-EX-E-236 | 90% | 10.65d |
| HAL-C-TC-E-3621 |  | Testing and Commissioning of LV cables | 2d | 2026-10-12 A | 2026-10-19 | HAL-C-EX-E-216 SS | 90% | 10.55d |
| HAL-C-TC-E-3626 |  | Testing and Commissioning of Lighting Fixtures | 2d | 2026-10-12 A | 2026-10-21 | HAL-C-EX-E-196 SS | 90% | 8.05d |
| HAL-C-TC-E-3636 |  | Testing and Commissioning of Grounding | 5d | 2026-10-12 A | 2026-10-21 | HAL-C-EX-E-186 | 90% | 7.75d |
| HAL-C-TC-E-3646 |  | Testing and Commissioning of Wiring devices | 2d | 2026-10-12 A | 2026-10-19 | HAL-C-EX-E-1321 SS | 90% | 10.55d |
| HAL-C-TC-E-3656 |  | Testing and Commissioning of Programmable Logic Controller | 2d | 2026-10-12 A | 2026-10-21 | HAL-C-EX-E-1331 SS | 90% | 8.05d |
|  | 7 | **EXTERNAL** |  | 2026-10-15 | 2026-10-24 |  |  |  |
| HAL-C-TC-EX-E-3626 |  | Testing and Commissioning of LV cables | 7d | 2026-10-15 A | 2026-10-19 | HAL-C-EX-E-380 | 90% | 10.05d |
| HAL-C-TC-EX-E-3646 |  | Testing and Commissioning of Street Lighting pole | 7d | 2026-10-15 A | 2026-10-19 | HAL-C-EX-E-430 | 90% | 10.05d |
| HAL-C-TC-EX-E-3656 |  | Testing and Commissioning of Grounding | 7d | 2026-10-20 A | 2026-10-24 | HAL-C-EX-E-470 | 90% | 6.05d |
|  | 5 | **ENVIRONMENTAL** |  | 2026-06-22 | 2026-10-19 |  |  |  |
| HAL-C-TC-ENV-F-1051 |  | Testing & Commissioning of External Fire Fighting System 200 Dia | 15d | 2026-06-22 A | 2026-09-24 A | HAL-C-ENV-F-192 | 100% |  |
| HAL-C-TC-ENV-SW-60 |  | Testing & Commissioning of Sewer & Drainage System | 15d | 2026-06-22 A | 2026-09-24 A | HAL-C-ENV-SW-546 | 100% |  |
| HAL-C-TC-ENV-WS-11 |  | Testing & Commissioning of Water Supply System | 15d | 2026-06-22 A | 2026-09-24 A | HAL-C-ENV-WS-766 | 100% |  |
| HAL-C-TC-E-3666 |  | Testing and Commissioning of Main program system & controller | 5d | 2026-09-15 A | 2026-10-19 | HAL-C-ENV-SW-616 SS | 90% | 10.25d |
| HAL-C-TC-ENV-SW-70 |  | Testing & Commissioning of Irrigaiton System | 5d | 2026-09-15 A | 2026-10-19 | HAL-C-ENV-SW-606 | 90% | 10.25d |
|  | 1 | **SNAGG WORKS** |  | 2026-04-25 | 2026-06-20 |  |  |  |
| HAL-C-TC-S-9100 |  | Architectural Snagg works -1 | 10d | 2026-04-25 A | 2026-04-30 A | HAL-C-B-S-697 | 100% |  |
| HAL-C-TC-A-9100 |  | Mechanical Snagg works | 10d | 2026-06-01 A | 2026-06-04 A | HAL-C-EX-E-400 | 100% |  |
| HAL-C-TC-S-9090 |  | Civil Snagg works | 7d | 2026-06-01 A | 2026-06-04 A | HAL-C-E-S-6101 | 100% |  |
| HAL-C-TC-S-9110 |  | Architectural Snagg works-2 | 10d | 2026-06-02 A | 2026-06-02 A | HAL-C-TC-ENV-F-1051 | 100% |  |
| HAL-C-TC-M-9110 |  | Electrical Snagg works | 5d | 2026-06-13 A | 2026-06-20 A | HAL-C-EX-E-400 | 100% |  |
| HAL-C-TC-E-9120 |  | External Snagg works | 5d | 2026-06-17 A | 2026-06-20 A | HAL-C-EX-E-390 | 100% |  |
|  | 7 | **PREOJECT CLOSEOUT** |  | 2026-10-19 | 2026-11-02 |  |  |  |

| ID | WBS | Task | Duration | Start | Finish | Predecessors | Total float |
| --- | --- | --- | --- | --- | --- | --- | --- |
|  | 1 | **ENGINEERING** |  | 2026-10-19 | 2026-10-21 |  |  |
|  | 1 | **AS BUILT DRAWINGS** |  | 2026-10-19 | 2026-10-20 |  |  |
|  | 4 | **CIVIL DRAWINGS** |  | 2026-10-19 | 2026-10-19 |  |  |
|  | 1 | **PREPARATION AND SUBMITTALS** |  | 2026-10-19 | 2026-10-19 |  |  |
| HAL-AB-1010 |  | Civil drawings | 1d | 2026-10-19 | 2026-10-19 | HAL-C-EX-R-1480 SS | 3.75d |
|  | 2 | **REVIEW AND APPROVALS** |  | 2026-10-19 | 2026-10-19 |  |  |
| HAL-AB-1053 |  | Civil drawings | 1d | 2026-10-19 | 2026-10-19 | HAL-AB-1010 SS | 5.75d |
|  | 1 | **ARCHITECTURAL DRAWINGS** |  | 2026-10-19 | 2026-10-19 |  |  |
|  | 1 | **PREPARATION AND SUBMITTALS** |  | 2026-10-19 | 2026-10-19 |  |  |
| HAL-AB-1011 |  | Architectural drawings | 1d | 2026-10-19 | 2026-10-19 | HAL-AB-1010 SS | 3.75d |
|  | 2 | **REVIEW AND APPROVALS** |  | 2026-10-19 | 2026-10-19 |  |  |
| HAL-AB-1023 |  | Architectural drawings | 1d | 2026-10-19 | 2026-10-19 | HAL-AB-1011 SS | 5.75d |
|  | 2 | **MECHANICAL DRAWINGS** |  | 2026-10-19 | 2026-10-19 |  |  |
|  | 1 | **PREPARATION AND SUBMITTALS** |  | 2026-10-19 | 2026-10-19 |  |  |
| HAL-AB-1013 |  | Mechanical drawings | 1d | 2026-10-19 | 2026-10-19 | HAL-AB-1011 SS | 3.75d |
|  | 2 | **REVIEW AND APPROVALS** |  | 2026-10-19 | 2026-10-19 |  |  |
| HAL-AB-1033 |  | Mechanical drawings | 1d | 2026-10-19 | 2026-10-19 | HAL-AB-1013 SS | 5.75d |
|  | 3 | **ELECTRICAL DRAWINGS** |  | 2026-10-19 | 2026-10-19 |  |  |
|  | 1 | **PREPARATION AND SUBMITTALS** |  | 2026-10-19 | 2026-10-19 |  |  |
| HAL-AB-1012 |  | Electrical drawings | 1d | 2026-10-19 | 2026-10-19 | HAL-AB-1013 SS | 3.75d |
|  | 2 | **REVIEW AND APPROVALS** |  | 2026-10-19 | 2026-10-19 |  |  |
| HAL-AB-1043 |  | Electrical drawings | 1d | 2026-10-19 | 2026-10-19 | HAL-AB-1012 SS | 5.75d |
|  | 5 | **EXTERNAL WORKS DRAWINGS** |  | 2026-10-19 | 2026-10-20 |  |  |
|  | 1 | **PREPARATION AND SUBMITTALS** |  | 2026-10-19 | 2026-10-19 |  |  |
| HAL-AB-1054 |  | External works drawings | 1d | 2026-10-19 | 2026-10-19 | HAL-AB-1012 SS | 3.75d |
|  | 2 | **REVIEW AND APPROVALS** |  | 2026-10-20 | 2026-10-20 |  |  |
| HAL-AB-1055 |  | External works drawings | 1d | 2026-10-20 | 2026-10-20 | HAL-AB-1054 | 3.75d |
|  | 2 | **WARRANTIES AND GUARANTEES** |  | 2026-10-20 | 2026-10-21 |  |  |
|  | 1 | **SYSTEM** |  | 2026-10-20 | 2026-10-21 |  |  |
|  | 1 | **PREPARATION AND SUBMITTALS** |  | 2026-10-20 | 2026-10-20 |  |  |
| HAL-WG-1010 |  | Warraties and Guarantees For Mechanical Equipments | 1d | 2026-10-20 | 2026-10-20 | HAL-AB-1055 SS | 3.75d |
| HAL-WG-1011 |  | Warraties and Guarantees For Electrical Systems | 1d | 2026-10-20 | 2026-10-20 | HAL-WG-1010 SS | 3.75d |
|  | 2 | **REVIEW AND APPROVAL** |  | 2026-10-21 | 2026-10-21 |  |  |
| HAL-WG-1012 |  | Warraties and Guarantees For Mechanical Equipments | 1d | 2026-10-21 | 2026-10-21 | HAL-WG-1010 | 3.75d |
| HAL-WG-1013 |  | Warraties and Guarantees For Electrical Systems | 1d | 2026-10-21 | 2026-10-21 | HAL-WG-1011 | 3.75d |
|  | 2 | **TRAINING AND MANUALS** |  | 2026-10-22 | 2026-10-27 |  |  |
|  | 1 | **TRAINING** |  | 2026-10-22 | 2026-10-25 |  |  |
|  | 1 | **SYSTEM** |  | 2026-10-22 | 2026-10-25 |  |  |
|  | 1 | **PREPARATION AND SUBMITTALS** |  | 2026-10-22 | 2026-10-22 |  |  |
| HAL-WG-1014 |  | The Proposed Coursework For Mechanical Equipment | 1d | 2026-10-22 | 2026-10-22 | HAL-WG-1012 | 3.75d |
| HAL-WG-1015 |  | The Proposed Coursework For Electircal systems | 1d | 2026-10-22 | 2026-10-22 | HAL-WG-1014 SS, HAL-WG-1013 | 3.75d |
|  | 2 | **REVIEW AND APPROVAL** |  | 2026-10-24 | 2026-10-24 |  |  |
| HAL-WG-1016 |  | The Proposed Coursework For Mechanical Equipment | 1d | 2026-10-24 | 2026-10-24 | HAL-WG-1014 | 3.75d |
| HAL-WG-1017 |  | The Proposed Coursework For Electircal systems | 1d | 2026-10-24 | 2026-10-24 | HAL-WG-1016 SS, HAL-WG-1015, HAL-WG-1015 FF | 3.75d |
|  | 3 | **DELIVERY** |  | 2026-10-25 | 2026-10-25 |  |  |
| HAL-WG-1018 |  | The Proposed Coursework For Mechanical Equipment | 1d | 2026-10-25 | 2026-10-25 | HAL-WG-1016 | 3.75d |
| HAL-WG-1019 |  | The Proposed Coursework For Electircal systems | 1d | 2026-10-25 | 2026-10-25 | HAL-WG-1018 SS, HAL-WG-1017, HAL-WG-1017 FF | 3.75d |
|  | 2 | **MANUALS** |  | 2026-10-26 | 2026-10-27 |  |  |
|  | 1 | **SYSTEM** |  | 2026-10-26 | 2026-10-27 |  |  |
|  | 1 | **PREPARATION AND SUBMITTALS** |  | 2026-10-26 | 2026-10-26 |  |  |
| HAL-WG-1020 |  | Manual and Catalogue For Mechanical Equipment | 1d | 2026-10-26 | 2026-10-26 | HAL-WG-1018 | 3.75d |
| HAL-WG-1021 |  | Manual and Catalogue For For Electircal systems | 1d | 2026-10-26 | 2026-10-26 | HAL-WG-1019 | 3.75d |
|  | 2 | **REVIEW AND APPROVAL** |  | 2026-10-27 | 2026-10-27 |  |  |
| HAL-WG-1022 |  | Manual and Catalogue For Mechanical Equipment | 1d | 2026-10-27 | 2026-10-27 | HAL-WG-1020 | 3.75d |
| HAL-WG-1023 |  | Manual and Catalogue For For Electircal systems | 1d | 2026-10-27 | 2026-10-27 | HAL-WG-1021 | 3.75d |
|  | 4 | **DEMOBILIZATION** |  | 2026-10-21 | 2026-10-27 |  |  |
| HAL-D.MOB-1013 |  | Demobilization of manpower | 2d | 2026-10-21 | 2026-10-22 | HAL-AB-1010, HAL-AB-1011, HAL-AB-1013, HAL-AB-1012, HAL-AB-1023, HAL-AB-1033, HAL-AB-1043, HAL-AB-1053, HAL-AB-1055 | 4.75d |
| HAL-D.MOB-1020 |  | Demobilization of equipment | 2d | 2026-10-24 | 2026-10-25 | HAL-D.MOB-1013 | 4.75d |
| HAL-D.MOB-1010 |  | Dismantling and removal offices | 1d | 2026-10-27 | 2026-10-27 | HAL-WG-1023 SS | 3.75d |
|  | 5 | **FINAL HANDOVER** |  | 2026-10-31 | 2026-11-02 |  |  |
| HAL-FH-1000 |  | Snag List Rectification | 1d | 2026-10-31 | 2026-11-01 | HAL-D.MOB-1013 SS, HAL-D.MOB-1020, HAL-C-TC-M-3586, HAL-C-TC-M-3576, HAL-C-TC-M-3596, HAL-C-TC-E-3636, HAL-C-TC-E-3626, HAL-C-TC-E-3621, HAL-C-TC-E-3616, HAL-C-TC-E-3646, HAL-C-TC-EX-E-3656, HAL-C-TC-EX-E-3626, HAL-C-TC-EX-E-3646, HAL-C-TC-ENV-F-1051, HAL-C-TC-ENV-SW-60, HAL-C-TC-ENV-WS-11, HAL-C-TC-M-3406, HAL-C-TC-E-3546, HAL-C-EX-M-1391, HAL-C-EX-E-480, HAL-C-EX-S-1384, HAL-C-EX-R-1440 SS, HAL-C-TC-E-3446, HAL-C-TC-E-3486, HAL-C-TC-E-3536 SS, HAL-C-TC-E-3526 SS, HAL-C-TC-E-3516 SS, HAL-PMS-MMS-0030, HAL-PMS-MMS-0020, HAL-PMS-MMS-0070, HAL-PMS-MMS-0040, HAL-PMS-MMS-0060, HAL-PMS-MMS-0050, HAL-PMS-MMS-0080, HAL-PMS-DMS-2320, HAL-PMS-DMS-2370, HAL-PMS-DMS-2460, HAL-PMS-DMS-2450, HAL-C-ENV-SW-546, HAL-C-A-E-763, HAL-C-TC-M-3376, HAL-C-GEN-620, HAL-C-A1-SS-1020, HAL-C-A1-SS-1040, HAL-C-B-M-680, HAL-C-B-M-550, HAL-C-B-M-640, HAL-C-B-E-533, HAL-C-C-SS-1020, HAL-C-C-SS-1040, HAL-C-C-A-1780, HAL-C-C-M-1300, HAL-C-C-M-1170, HAL-C-C-M-1260, HAL-C-C-E-993, HAL-C-A-SS-1020, HAL-C-A-SS-1040, HAL-C-A-A-1370, HAL-C-A-M-990, HAL-C-A-M-860, HAL-C-A-M-950, HAL-C-D-SS-1020, HAL-C-D-SS-1040, HAL-C-D-A-1260, HAL-C-D-A-1370, HAL-C-D-M-990, HAL-C-D-M-860, HAL-C-D-M-950, HAL-C-D-E-763, HAL-C-E-SS-1020, HAL-C-E-SS-1040, HAL-C-E-A-420, HAL-C-E-M-370, HAL-C-E-M-429, HAL-C-E-M-330, HAL-C-E-E-303, HAL-C-ENV-WS-826, HAL-C-PR-S-368, HAL-C-EX-R-1520, HAL-C-TC-E-3566 SS, HAL-C-TC-E-3556, HAL-C-TC-E-3656, HAL-C-TC-ENV-SW-70, HAL-C-TC-E-3666, HAL-C-TC-E-3476, HAL-C-TC-A-9100, HAL-C-TC-S-9100, HAL-C-TC-S-9090, HAL-C-TC-M-9110, HAL-C-TC-S-9110, HAL-C-TC-E-3466, HAL-C-TC-E-3506 SS, HAL-C-TC-E-3496, HAL-C-TC-M-3386, HAL-C-TC-M-3396, HAL-C-A-A-250, HAL-C-B-A-790, HAL-P-ST-M-510, HAL-C-A-A-1200 SS | 0d |
| HAL-FH-1010 |  | Handover Letter | 1d | 2026-11-01 | 2026-11-02 | HAL-FH-1000 | 0d |
| HAL-FH-1020 |  | Intial Handingover | 1d | 2026-11-01 | 2026-11-02 | HAL-FH-1010 SS, HAL-WG-1022, HAL-D.MOB-1010, HAL-C-TC-E-9120 | 0d |

## Version 9 (data date 2026-10-20, saved 2026-10-20, file 02.DAM3-05-11 Updated Baseline.xer)

Last finish 2026-11-02 → 2027-03-02 (+120d). Complete tasks 1701 → 1728.

Added:

| ID | Task | Duration | Start | Finish | Predecessors | Resources |
| --- | --- | --- | --- | --- | --- | --- |
| 4 | **PROCUREMENT (20%)** |  | 2026-01-14 | 2026-09-27 |  |  |
| DAM3-P-DL-A-1700 | PES -Steel Structure -1 | 7d | 2026-05-31 A | 2026-05-31 A | DAM3-E-MF-A-1700 | Purchaser [32 h]; Construction Cost [2369270] |
| DAM3-P-DL-A-1770 | PES -Steel Structure -2 | 7d | 2026-06-10 A | 2026-06-14 A | DAM3-P-DL-A-1700 | Purchaser [112 h]; Construction Cost [740741] |
| DAM3-P-DL-A-1780 | PES -Steel Structure -3 | 7d | 2026-06-14 A | 2026-07-14 A | DAM3-P-MF-A-180, DAM3-P-MF-A-180 FF | Purchaser [112 h]; Construction Cost [740741] |
| DAM3-P-DL-A-1790 | PES -Steel Structure -4 | 7d | 2026-07-01 A | 2026-07-01 A | DAM3-P-DL-A-1780, DAM3-P-DL-A-1780 FF | Purchaser [112 h]; Construction Cost [1481481] |
| DAM3-P-PO-M-510 | UPVC pipes | 5d | 2026-04-26 A | 2026-04-26 A | DAM3-E-MA-M-0110, DAM3-P-PO-M-500 | Purchaser [16 h] |
| DAM3-P-MF-M-510 | UPVC pipes | 80d | 2026-04-27 A | 2026-09-19 A | DAM3-P-PO-M-510 | Loading workers [40 h] |
| DAM3-P-DL-M-510 | UPVC pipes | 7d | 2026-05-10 A | 2026-05-19 A | DAM3-P-MF-M-510 | Unloading workers [112 h]; Construction Cost [126693] |
| DAM3-P-ST-M-510 | UPVC pipes | 7d | 2026-05-10 A | 2026-05-19 A | DAM3-P-DL-M-510 |  |
| DAM3-P-PO-EN-170 | UPVC pipes | 5d | 2026-06-21 A | 2026-06-21 A | DAM3-E-MA-EN-0080, DAM3-P-PO-EN-160 | Purchaser [16 h] |
| DAM3-P-MF-EN-170 | UPVC pipes | 90d | 2026-06-22 A | 2026-07-25 A | DAM3-P-PO-EN-170 | Loading workers [240 h] |
| DAM3-P-DL-EN-170 | UPVC pipes | 7d | 2026-07-26 A | 2026-07-26 A | DAM3-P-MF-EN-170 | Unloading workers [112 h]; Construction Cost [134788] |
| DAM3-P-ST-EN-170 | UPVC pipes | 7d | 2026-07-26 A | 2026-07-26 A | DAM3-P-DL-EN-170 |  |
| 5 | **CONSTRUCTION (67%)** |  | 2026-01-14 | 2027-02-23 |  |  |
| DAM3-C-GEN-88 | Demolition of the existing pavement | 12d | 2026-01-14 A | 2026-01-31 A | DAM3-C-GEN-10 | Construction Cost [10892.4]; Helper [192 h]; Equipment Operator [192 h]; Wheel Loader [120 h]; Truck [120 h]; POKLIN [120 h] |
| 4 | **BLOCK B6** |  | 2026-02-15 | 2027-01-17 |  |  |
| DAM3-C-B6-S-6143 | Soil replacement - rock fill | 6d | 2026-04-02 A | 2026-04-04 A | DAM3-C-B6-S-160 | General Labour [256 h]; Truck [128 h]; Mini Roller Compactor [128 h]; Equipment Operator [256 h]; Wheel Loader [128 h]; Construction Cost [179062] |
| DAM3-C-B6-S-6153 | Engineering fill | 6d | 2026-04-12 A | 2026-04-13 A | DAM3-C-B6-S-6143 | General Labour [256 h]; Truck [64 h]; Mini Roller Compactor [64 h]; Equipment Operator [256 h]; Wheel Loader [64 h]; Construction Cost [46046.2] |
| 8 | **BLOCK B5** |  | 2026-02-16 | 2026-12-23 |  |  |
| DAM3-C-B5-S-6163 | Soil replacement - rock fill | 4d | 2026-03-30 A | 2026-04-02 A | DAM3-C-B5-S-250 | General Labour [256 h]; Truck [128 h]; Mini Roller Compactor [128 h]; Equipment Operator [256 h]; Wheel Loader [128 h]; Construction Cost [179062] |
| DAM3-C-B5-S-6173 | Engineering fill | 4d | 2026-04-07 A | 2026-04-13 A | DAM3-C-B5-S-6163, DAM3-C-B5-S-6163 FF | General Labour [256 h]; Truck [64 h]; Mini Roller Compactor [64 h]; Equipment Operator [256 h]; Wheel Loader [64 h]; Construction Cost [46046.2] |
| 3 | **BLOCK B4** |  | 2026-02-17 | 2027-01-03 |  |  |
| DAM3-C-B4-S-6183 | Soil replacement - rock fill | 4d | 2026-03-26 A | 2026-03-29 A | DAM3-C-B4-S-210 | General Labour [256 h]; Truck [64 h]; Mini Roller Compactor [64 h]; Equipment Operator [256 h]; Wheel Loader [64 h]; Construction Cost [179062] |
| DAM3-C-B4-S-6193 | Engineering fill | 4d | 2026-04-02 A | 2026-04-05 A | DAM3-C-B4-S-6183, DAM3-C-B4-S-6183 FF, DAM3-C-B4-S-6183 SS | General Labour [256 h]; Truck [64 h]; Mini Roller Compactor [64 h]; Equipment Operator [256 h]; Wheel Loader [64 h]; Construction Cost [46046.2] |
| 6 | **BLOCK B3** |  | 2026-02-17 | 2027-02-15 |  |  |
| DAM3-C-B3-S-6203 | Soil replacement - rock fill | 4d | 2026-03-17 A | 2026-03-24 A | DAM3-C-B3-S-210 | General Labour [256 h]; Truck [64 h]; Mini Roller Compactor [64 h]; Equipment Operator [256 h]; Wheel Loader [64 h]; Construction Cost [179062] |
| DAM3-C-B3-S-6213 | Engineering fill | 4d | 2026-03-28 A | 2026-04-07 A | DAM3-C-B3-S-6203, DAM3-C-B3-S-6203 FF, DAM3-C-B3-S-6203 SS | General Labour [256 h]; Truck [64 h]; Mini Roller Compactor [64 h]; Equipment Operator [256 h]; Wheel Loader [64 h]; Construction Cost [46046.2] |
| 5 | **BLOCK B2** |  | 2026-02-17 | 2027-02-15 |  |  |
| DAM3-C-B2-S-6223 | Soil replacement - rock fill | 4d | 2026-03-17 A | 2026-03-24 A | DAM3-C-B2-S-150 | General Labour [128 h]; Truck [64 h]; Mini Roller Compactor [64 h]; Equipment Operator [128 h]; Wheel Loader [64 h]; Construction Cost [179062] |
| DAM3-C-B2-S-6233 | Engineering fill | 4d | 2026-03-28 A | 2026-04-06 A | DAM3-C-B2-S-6223, DAM3-C-B2-S-6223 FF | General Labour [256 h]; Truck [64 h]; Mini Roller Compactor [64 h]; Equipment Operator [256 h]; Wheel Loader [64 h]; Construction Cost [46046.2] |
| 1 | **BLOCK B1** |  | 2026-03-17 | 2027-02-15 |  |  |
| 1 | **STRUCTURAL** |  | 2026-03-17 | 2026-11-28 |  |  |
| 1 | **FOOTING** |  | 2026-03-17 | 2026-05-07 |  |  |
| DAM3-C-B1-S-150 | Excavation for footings | 4d | 2026-03-17 A | 2026-03-24 A | DAM3-C-B2-S-150 | General Labour [112 h]; Equipment Operator [112 h]; Truck [64 h]; Excavator [64 h]; Mini Roller Compactor [64 h]; Construction Cost [89859.6] |
| DAM3-C-B1-S-6243 | Soil replacement - rock fill | 4d | 2026-03-17 A | 2026-03-24 A | DAM3-C-B1-S-150 | General Labour [256 h]; Truck [64 h]; Mini Roller Compactor [64 h]; Equipment Operator [256 h]; Wheel Loader [64 h]; Construction Cost [179062] |
| DAM3-C-B1-S-6253 | Engineering fill | 4d | 2026-04-07 A | 2026-04-13 A | DAM3-C-B1-S-6243, DAM3-C-B1-S-6243 FF | General Labour [256 h]; Truck [64 h]; Mini Roller Compactor [64 h]; Equipment Operator [256 h]; Wheel Loader [64 h]; Construction Cost [46046.2] |
| DAM3-C-B1-S-101 | Anti Termite Below Footings | 1d | 2026-04-25 A | 2026-04-25 A | DAM3-C-B1-S-6253 | Mason [16 h]; Construction Cost [11905.5] |
| 2 | **COLUMN NECK** |  | 2026-05-05 | 2026-06-01 |  |  |
| DAM3-C-B1-S-257 | Rebar for column neck | 4d | 2026-05-05 A | 2026-05-06 A | DAM3-C-B1-S-106 | Steel Fixer [64 h]; Construction Cost [14919.2] |
| DAM3-C-B1-S-267 | Formwork for column neck | 2d | 2026-05-11 A | 2026-05-12 A | DAM3-C-B1-S-257 | Carperter [32 h]; Construction Cost [9946.13] |
| DAM3-C-B1-S-297 | Pouring Concrete for column neck | 1d | 2026-05-13 A | 2026-05-13 A | DAM3-C-B1-S-267 | Mason [16 h]; Carperter [16 h]; Concrete Mixer [8 h]; Steel Fixer [16 h]; Equipment Operator [16 h]; Construction Cost [24865.3] |
| DAM3-C-B1-S-307 | Damp proof /Bitumin paint on Footings & column neck | 2d | 2026-05-16 A | 2026-05-17 A | DAM3-C-B1-S-297 | Painter [32 h]; Construction Cost [24777.7] |
| DAM3-C-B1-S-367 | Backfilling / Compaction up to Bottom of Grade Beams | 7d | 2026-05-21 A | 2026-06-01 A | DAM3-C-B1-S-307, DAM3-E-SA-E-1110, DAM3-E-SA-E-1120, DAM3-E-SA-E-1130, DAM3-E-SA-E-1140, DAM3-E-SA-E-1150, DAM3-E-SA-E-1160, DAM3-E-SA-E-1170, DAM3-E-SA-E-1180 | General Labour [256 h]; Truck [128 h]; Mini Roller Compactor [128 h]; Equipment Operator [256 h]; Wheel Loader [128 h]; Construction Cost [46046.2] |
| 3 | **GRADE BEAM** |  | 2026-06-06 | 2026-06-25 |  |  |
| DAM3-C-B1-S-527 | Anti Termite Below Grade Beams | 1d | 2026-06-06 A | 2026-06-06 A | DAM3-C-B1-S-367, DAM3-E-SA-EX-1050 | Mason [16 h]; Construction Cost [11905.5] |
| DAM3-C-B1-S-341 | Anchor bolts installation | 2d | 2026-06-11 A | 2026-06-13 A | DAM3-C-B1-S-340 SS | Carperter [32 h]; Construction Cost [57238.8] |
| 5 | **SLAB ON GRADE** |  | 2026-06-27 | 2026-11-28 |  |  |
| DAM3-C-B1-S-517 | Concrete pad | 7d | 2026-11-21 | 2026-11-28 | DAM3-C-B1-A-0150 | Mason [112 h]; Construction Cost [907.11] |
| 4 | **COLUMNS & BEAMS** |  | 2026-06-08 | 2026-10-10 |  |  |
| DAM3-C-B1-S-6101 | Rebar for Tie Beams | 4d | 2026-06-08 A | 2026-06-09 A | DAM3-C-B1-S-5103 | Steel Fixer [64 h]; Construction Cost [7263.64] |
| DAM3-C-B1-S-6102 | Formwork for Tie Beams | 2d | 2026-06-11 A | 2026-06-15 A | DAM3-C-B1-S-6101 | Carperter [32 h]; Construction Cost [1815.91] |
| DAM3-C-B1-S-6103 | Pouring Concrete for Tie Beams | 1d | 2026-06-17 A | 2026-06-17 A | DAM3-C-B1-S-6102 | Mason [16 h]; Carperter [16 h]; Concrete Mixer [32 h]; Steel Fixer [16 h]; Equipment Operator [16 h]; Construction Cost [9079.54] |
| DAM3-C-B1-S-5101 | Rebar for column | 5d | 2026-07-26 A | 2026-07-28 A | DAM3-C-B1-S-377 | Steel Fixer [112 h]; Construction Cost [20144] |
| DAM3-C-B1-S-5102 | Formwork for column | 4d | 2026-08-22 A | 2026-08-27 A | DAM3-C-B1-S-5101 | Carperter [64 h]; Construction Cost [5036.01] |
| DAM3-C-B1-S-5103 | Pouring Concrete for column | 1d | 2026-08-25 A | 2026-08-29 A | DAM3-C-B1-S-5102 | Mason [16 h]; Carperter [16 h]; Concrete Mixer [32 h]; Steel Fixer [16 h]; Equipment Operator [16 h]; Construction Cost [25180.1] |
| DAM3-C-B1-S-6113 | Rebar for Beams | 4d | 2026-09-27 A | 2026-10-04 A | DAM3-C-B1-S-6103 | Steel Fixer [64 h]; Construction Cost [13379.1] |
| DAM3-C-B1-S-6123 | Formwork for Beams | 2d | 2026-09-29 A | 2026-10-06 A | DAM3-C-B1-S-6113, DAM3-C-B1-S-6113 FF, DAM3-C-B2-S-6133 | Carperter [32 h]; Construction Cost [3344.77] |
| DAM3-C-B1-S-6133 | Pouring Concrete for Beams | 1d | 2026-10-07 A | 2026-10-10 A | DAM3-C-B1-S-6123, DAM3-C-B1-S-6123 FF | Mason [16 h]; Carperter [16 h]; Concrete Mixer [32 h]; Steel Fixer [16 h]; Equipment Operator [16 h]; Construction Cost [16723.9] |
| 5 | **STRUCTURAL STEEL** |  | 2026-07-11 | 2026-12-03 |  |  |
| DAM3-C-B1-SS-0100 | Installation of columns | 3d | 2026-07-11 A | 2026-07-11 A | DAM3-C-B1-S-382, DAM3-C-B2-SS-0110 SS | Structural Steel Fixer [80 h]; General Labour [80 h]; Equipment Operator [80 h]; Mobile Crane [24 h]; Construction Cost [217508] |
| DAM3-C-B1-SS-0110 | Installation of raft and purlins | 5d | 2026-07-11 A | 2026-07-13 A | DAM3-C-B1-SS-0100 | Structural Steel Fixer [160 h]; General Labour [160 h]; Mobile Crane [56 h]; Equipment Operator [160 h]; Construction Cost [326261] |
| DAM3-C-B1-SS-610 | Intumescent paint to steel works | 7d | 2026-07-25 A | 2026-07-28 A | DAM3-C-B1-SS-0110 | Painter [112 h]; Construction Cost [317760] |
| DAM3-C-B1-SS-0140 | Installation of roof sheet | 5d | 2026-08-04 A | 2026-08-11 A | DAM3-C-B1-SS-610, DAM3-C-B1-S-6133 | Roof sheet worker [160 h]; General Labour [160 h]; Mobile Crane [40 h]; Equipment Operator [160 h]; Construction Cost [217508] |
| DAM3-C-B1-SS-0130 | Installation of wall sandwich panel | 5d | 2026-10-18 A | 2026-12-02 | DAM3-C-B1-A-0150, DAM3-C-B1-SS-1020 | Sandwich panel worker [112 h]; General Labour [112 h]; Mobile Crane [40 h]; Equipment Operator [112 h]; Construction Cost [326261] |
| DAM3-C-B1-SS-620 | Steel members for office area | 7d | 2026-11-12 | 2026-11-19 | DAM3-C-B1-SS-610, DAM3-C-B1-SS-0110 | Construction Cost [115805]; Structural Steel Fixer [112 h]; Mobile Crane [56 h]; General Labour [112 h]; Equipment Operator [112 h] |
| DAM3-C-B1-SS-1020 | Epoxy paint to steel members at office area | 7d | 2026-11-21 | 2026-11-28 | DAM3-C-B1-SS-620 | Painter [112 h]; Construction Cost [23161] |
| DAM3-C-B1-SS-1030 | Steel members for external platform | 7d | 2026-11-21 | 2026-11-28 | DAM3-C-B1-SS-620 | Construction Cost [18670.8]; General Labour [112 h]; Mobile Crane [56 h]; Structural Steel Fixer [112 h]; Equipment Operator [112 h] |
| DAM3-C-B1-SS-1040 | Epoxy paint for external platform | 5d | 2026-11-29 | 2026-12-03 | DAM3-C-B1-SS-1030, DAM3-C-B1-SS-1030 FF | Painter [80 h]; Construction Cost [3734.16] |
| 2 | **ARCHITECTURAL** |  | 2026-08-10 | 2027-02-15 |  |  |
| 1 | **MASONARY WORKS** |  | 2026-08-15 | 2026-09-07 |  |  |
| DAM3-C-B1-A-0120 | Block work at factory area | 10d | 2026-08-15 A | 2026-08-23 A | DAM3-C-B1-S-382, DAM3-C-B1-SS-0110 | AAC panel erector [240 h]; General Labour [240 h]; Equipment Operator [240 h]; Mobile Crane [120 h]; Construction Cost [58338.7] |
| DAM3-C-B1-A-0150 | Block work at office area | 7d | 2026-08-23 A | 2026-09-06 A | DAM3-C-B1-SS-0140 SS, DAM3-C-B1-SS-620, DAM3-C-B1-A-0120 | AAC panel erector [160 h]; General Labour [160 h]; Mobile Crane [56 h]; Equipment Operator [160 h]; Construction Cost [6179.18] |
| DAM3-C-B1-A-170 | Block work at toilet area | 7d | 2026-09-02 A | 2026-09-07 A | DAM3-C-B1-A-0150, DAM3-C-B4-A-1370, DAM3-C-B6-M-490 | Mason [112 h]; Construction Cost [14436.3] |
| 5 | **WALL FINISHES** |  | 2026-10-19 | 2027-01-23 |  |  |
| DAM3-C-B1-A-180 | Internal Wall Plaster | 10d | 2026-10-19 A | 2026-12-16 | DAM3-C-B1-A-170, DAM3-C-B1-E-183, DAM3-C-B1-S-517 | Mason [240 h]; Construction Cost [48590.2] |
| DAM3-C-B1-A-230 | Paint to Plaster (Primer, Putty & First Coat) | 3d | 2027-01-19 | 2027-01-23 | DAM3-C-B1-A-250 | Painter [112 h]; Construction Cost [44167.3] |
| 2 | **CIELING FINISHES** |  | 2026-12-26 | 2026-12-29 |  |  |
| DAM3-C-B1-A-240 | Installation of Ceiling Gypsum Board | 3d | 2026-12-26 | 2026-12-29 | DAM3-C-B1-A-220, DAM3-C-B1-S-517 | Carperter [80 h]; Construction Cost [46792.3] |
| 6 | **FLOOR FINISHES** |  | 2026-12-21 | 2027-02-15 |  |  |
| DAM3-C-B1-A-220 | Tiles for Toilet | 4d | 2026-12-21 | 2026-12-26 | DAM3-C-B1-A-370 | Tile Fixer [112 h]; Construction Cost [46530.7] |
| DAM3-C-B1-A-250 | Tiles for Office Area | 2d | 2027-01-17 | 2027-01-19 | DAM3-C-B1-A-240, DAM3-C-B6-E-720 | Tile Fixer [32 h]; Construction Cost [26867.3] |
| DAM3-C-B1-A-390 | Granite strip | 2d | 2027-01-19 | 2027-01-21 | DAM3-C-B1-A-558, DAM3-C-B1-A-250, DAM3-C-B6-E-343 | Tile Fixer [32 h]; Construction Cost [671.12] |
| DAM3-C-B1-A-420 | Epoxy paint | 7d | 2027-02-07 | 2027-02-15 | DAM3-C-B1-A-340 | Painter [112 h]; Construction Cost [115420] |
| 3 | **DOORS & WINDOWS** |  | 2026-10-15 | 2026-12-16 |  |  |
| DAM3-C-B1-A-558 | Skylight fixtures installation | 1d | 2026-10-15 A | 2026-10-17 A | DAM3-C-B1-A-557, DAM3-C-B6-M-550 | Carperter [16 h]; Construction Cost [6489.89] |
| DAM3-C-B1-A-552 | Window (CW1) | 5d | 2026-12-05 | 2026-12-09 | DAM3-C-B1-SS-0130, DAM3-C-B1-SS-1040 | Carperter [112 h]; Construction Cost [94173.2] |
| DAM3-C-B1-A-553 | Roll up Shutter Door | 1d | 2026-12-10 | 2026-12-10 | DAM3-C-B1-A-552 | Carperter [16 h]; Construction Cost [68619.2] |
| DAM3-C-B1-A-200 | Supply and install (D5) 1000*2200mm single leaf steel door with door | 1d | 2026-12-12 | 2026-12-12 | DAM3-C-B1-A-553 | Carperter [16 h]; Construction Cost [16016.2] |
| DAM3-C-B1-A-554 | Supply and install (D4) 800*2200 mm single leaf aluminum door with door | 1d | 2026-12-13 | 2026-12-13 | DAM3-C-B1-A-200 | Carperter [16 h]; Construction Cost [22737.8] |
| DAM3-C-B1-A-555 | Supply and install (D7) 1000*2200 mm single leaf aluminum door with door | 1d | 2026-12-14 | 2026-12-14 | DAM3-C-B1-A-554 | Carperter [16 h]; Construction Cost [7811.07] |
| DAM3-C-B1-A-556 | Supply and install (D3) 1000*2200 mm single leaf aluminum door with door | 1d | 2026-12-15 | 2026-12-15 | DAM3-C-B1-A-555 | Carperter [16 h]; Construction Cost [16016.2] |
| DAM3-C-B1-A-557 | Supply and install fire rated 45 min (D2) 1200*2200 mm single leaf steel door | 1d | 2026-12-16 | 2026-12-16 | DAM3-C-B1-A-556 | Carperter [16 h]; Construction Cost [16711.5] |
| 4 | **WATER PROOFING WORKS** |  | 2026-12-16 | 2026-12-21 |  |  |
| DAM3-C-B1-A-370 | Waterproofing membrane for toilets | 4d | 2026-12-16 | 2026-12-21 | DAM3-C-B1-M-200, DAM3-C-B1-A-180, DAM3-C-B6-E-533 | General Labour [64 h]; Construction Cost [4879.02] |
| 7 | **METAL WORKS** |  | 2026-08-10 | 2027-01-30 |  |  |
| DAM3-C-B1-A-300 | Galvanised Steel Gratings | 2d | 2026-08-10 A | 2026-08-10 A | DAM3-C-B1-A-292 | Steel Fixer [32 h]; General Labour [32 h]; Construction Cost [6455.16] |
| DAM3-C-B1-A-290 | Steel Ladder | 2d | 2027-01-21 | 2027-01-24 | DAM3-C-B1-A-390, DAM3-C-B4-A-1260 | Steel Fixer [32 h]; General Labour [32 h]; Construction Cost [9839.16] |
| DAM3-C-B1-A-291 | Steel railing works | 2d | 2027-01-24 | 2027-01-26 | DAM3-C-B1-A-290 | Steel Fixer [64 h]; General Labour [64 h]; Construction Cost [1533.98] |
| DAM3-C-B1-A-292 | Aluminium composite panel | 3d | 2027-01-26 | 2027-01-30 | DAM3-C-B1-A-291 | Steel Fixer [80 h]; General Labour [80 h]; Construction Cost [175889] |
| 8 | **SPECIALTIES** |  | 2027-01-30 | 2027-02-07 |  |  |
| DAM3-C-B1-A-320 | Installation of fittings | 3d | 2027-01-30 | 2027-02-02 | DAM3-C-B1-A-300 | Plumber [80 h]; Construction Cost [22981.3] |
| DAM3-C-B1-A-570 | Identification sign; ID01 & ID02 | 3d | 2027-02-02 | 2027-02-06 | DAM3-C-B1-A-320 | Mason [48 h]; Construction Cost [9630.56] |
| DAM3-C-B1-A-340 | Furniture Installation | 1d | 2027-02-06 | 2027-02-07 | DAM3-C-B1-A-570 | General Labour [16 h]; Mason [16 h]; Construction Cost [12468.8] |
| 1 | **HVAC** |  | 2027-01-23 | 2027-02-06 |  |  |
| 1 | **FIRST STAGE** |  | 2027-01-27 | 2027-02-01 |  |  |
| DAM3-C-B1-M-140 | Installation of HVAC Ducts | 2d | 2027-01-27 | 2027-01-30 | DAM3-C-B1-M-160 | Ductman [32 h]; Construction Cost [149489] |
| DAM3-C-B1-M-170 | Installation of Duct insulation | 2d | 2027-01-30 | 2027-02-01 | DAM3-C-B1-M-140 | Ductman [32 h]; Construction Cost [21205.4] |
| 2 | **SECOND STAGE** |  | 2027-01-23 | 2027-02-06 |  |  |
| DAM3-C-B1-M-130 | Installation of Exhaust Fans | 2d | 2027-01-23 | 2027-01-25 | DAM3-C-B1-A-230 | AC Technician [32 h]; Construction Cost [7938.56] |
| DAM3-C-B1-M-160 | Installation of Wall Propeller Type Exhaust Fan | 2d | 2027-01-25 | 2027-01-27 | DAM3-C-B1-M-130 | AC Technician [64 h]; Construction Cost [46831.6] |
| DAM3-C-B1-M-339 | Installation of Diffuser | 2d | 2027-02-01 | 2027-02-03 | DAM3-C-B1-M-170 | Ductman [32 h]; Construction Cost [2144] |
| DAM3-C-B1-M-340 | Supply, install, test and commission door grilles & exhaust louvers | 2d | 2027-02-03 | 2027-02-06 | DAM3-C-B1-M-339 | Ductman [32 h]; Construction Cost [5574.4] |
| 2 | **FIRE FIGHTING SYSTEM** |  | 2026-09-06 | 2027-02-09 |  |  |
| 1 | **FIRST STAGE** |  | 2026-09-06 | 2026-09-09 |  |  |
| DAM3-C-B1-M-300 | Installation of Fire Fighting Pipes (Seamless Black Steel) | 7d | 2026-09-06 A | 2026-09-09 A | DAM3-C-B1-A-230 | Pipe Fitter [112 h]; Construction Cost [72394.8] |
| DAM3-C-B1-M-310 | Installation of Fire Fighting Valve | 5d | 2026-09-08 A | 2026-09-09 A | DAM3-C-B1-M-300 | Pipe Fitter [80 h]; Construction Cost [12199.4] |
| 2 | **SECOND STAGE** |  | 2027-01-23 | 2027-02-09 |  |  |
| DAM3-C-B1-M-320 | Installation of Fire Hose Cabinet | 3d | 2027-01-23 | 2027-01-26 | DAM3-C-B1-M-310 | Pipe Fitter [48 h]; Construction Cost [15158.6] |
| DAM3-C-B1-M-370 | Supply, install, test and commission Fire Department Connection(FDC) | 3d | 2027-02-06 | 2027-02-09 | DAM3-C-B1-M-340, DAM3-C-B1-M-310 | Pipe Fitter [48 h]; Construction Cost [2706.06] |
| 3 | **SEWER AND DRAINAGE SYSTEM** |  | 2026-07-18 | 2027-01-13 |  |  |
| 1 | **FIRST STAGE** |  | 2026-07-18 | 2026-12-28 |  |  |
| DAM3-C-B1-M-200 | Installation of Sanitary Waste / Drainage Pipes | 4d | 2026-07-18 A | 2026-07-25 A | DAM3-C-B1-S-347 | Plumber [64 h]; Construction Cost [18585.1] |
| DAM3-C-B1-M-380 | Installation of Trench drain | 5d | 2026-07-19 A | 2026-07-25 A | DAM3-C-B1-M-220 | Plumber [80 h]; Construction Cost [11508.8] |
| DAM3-C-B1-M-220 | Installation of Floor Drain | 2d | 2026-12-26 | 2026-12-28 | DAM3-C-B1-M-200, DAM3-C-B1-A-220 | Plumber [32 h]; Construction Cost [11056] |
| 2 | **SECOND STAGE** |  | 2026-12-28 | 2027-01-13 |  |  |
| DAM3-C-B1-M-180 | Installation of Electric Water Heater | 2d | 2026-12-28 | 2026-12-30 | DAM3-C-B1-M-380 | Plumber [32 h]; Construction Cost [1819.51] |
| DAM3-C-B1-M-190 | Installation of Sanitary Fixture and Accessories | 4d | 2026-12-30 | 2027-01-04 | DAM3-C-B1-M-180 | Plumber [64 h]; Construction Cost [19921.7] |
| DAM3-C-B1-M-210 | Installation of Lavotary /Wash Basin | 2d | 2027-01-04 | 2027-01-06 | DAM3-C-B1-M-180, DAM3-C-B1-M-190 | Plumber [32 h]; Construction Cost [21416.7] |
| DAM3-C-B1-M-270 | Installation of Bib Tap | 2d | 2027-01-06 | 2027-01-09 | DAM3-C-B1-M-190, DAM3-C-B1-M-210 | Plumber [32 h]; Construction Cost [1900.66] |
| DAM3-C-B1-M-428 | Installation of Water Tap | 2d | 2027-01-09 | 2027-01-11 | DAM3-C-B1-M-210, DAM3-C-B1-M-270 | Plumber [32 h]; Construction Cost [2874.14] |
| DAM3-C-B1-M-429 | Installation of Roof Vent Cap | 2d | 2027-01-11 | 2027-01-13 | DAM3-C-B1-M-428 | Pipe Fitter [32 h]; Construction Cost [927.12] |
| 1 | **FIRST STAGE** |  | 2026-10-13 | 2026-10-17 |  |  |
| DAM3-C-B1-M-280 | Installation of Water Supply Valve | 2d | 2026-10-13 A | 2026-10-17 A | DAM3-C-B1-M-290 | Plumber [32 h]; Construction Cost [18274.3] |
| DAM3-C-B1-M-290 | Installation of Water Supply Pipes | 4d | 2026-10-13 A | 2026-10-17 A | DAM3-C-B1-A-230 | Plumber [64 h]; Construction Cost [23318.4] |
| 2 | **SECOND STAGE** |  | 2027-01-23 | 2027-01-28 |  |  |
| DAM3-C-B1-M-330 | Capped connection | 5d | 2027-01-23 | 2027-01-28 | DAM3-C-B1-M-280 | Plumber [80 h]; Construction Cost [278.13] |
| 1 | **FIRST STAGE** |  | 2026-06-08 | 2027-01-03 |  |  |
| DAM3-C-B1-E-183 | Installation of Sleeves & Power outlet | 8d | 2026-06-08 A | 2026-12-07 | DAM3-C-B1-A-170 | Electrician [128 h]; Construction Cost [2920.45] |
| DAM3-C-B1-E-143 | Installation of Conduits and wiring outlets - Fire Alarm System | 4d | 2026-06-09 A | 2026-12-05 | DAM3-C-B1-A-170 | Electrician [64 h]; Construction Cost [1768.31] |
| 2 | **SECOND STAGE** |  | 2026-10-10 | 2027-01-30 |  |  |
| DAM3-C-B1-E-243 | Installation of LP-1 Panel | 2d | 2026-10-10 A | 2026-10-14 A | DAM3-C-B1-E-193 | Electrician [32 h]; Construction Cost [18403.5] |
| DAM3-C-B1-E-420 | Installation of Solar power plant | 7d | 2026-10-14 A | 2027-01-20 | DAM3-C-B2-E-420, DAM3-C-B1-E-113 | Plumber [112 h]; Construction Cost [253269] |
| DAM3-C-B1-E-123 | Installation of Fire Alarm Control Panel | 4d | 2026-12-06 | 2026-12-09 | DAM3-C-B1-E-143 | Electrician [64 h]; Construction Cost [19451.4] |
| DAM3-C-B1-E-133 | Installation of Fire Detectors & Accessories | 4d | 2026-12-10 | 2026-12-14 | DAM3-C-B1-E-123 | Electrician [64 h]; Construction Cost [56740.4] |
| DAM3-C-B1-E-193 | Installation of Main Distribution Board | 2d | 2026-12-22 | 2026-12-23 | DAM3-C-B1-E-233, DAM3-C-B5-M-1170 | Electrician [32 h]; Construction Cost [32472.7] |
| DAM3-C-B1-E-410 | Installation of CCTV System | 7d | 2026-12-22 | 2026-12-29 | DAM3-C-B1-E-233 | Plumber [112 h]; Construction Cost [76349.2] |
| DAM3-C-B1-E-253 | Installation of PP-AC panel | 2d | 2026-12-24 | 2026-12-26 | DAM3-C-B1-E-243 | Electrician [32 h]; Construction Cost [21648.5] |
| DAM3-C-B1-E-213 | Installation of Telephone Cabinet | 2d | 2026-12-27 | 2026-12-28 | DAM3-C-B1-E-253 | Electrician [32 h]; Construction Cost [26991.1] |
| DAM3-C-B1-E-273 | Installation of Access Control System | 5d | 2026-12-30 | 2027-01-04 | DAM3-C-B1-E-410, DAM3-C-B1-E-153 | Electrician [80 h]; Construction Cost [27616.9] |
| DAM3-C-B1-E-283 | Monitor Modules for Fire Alarm | 2d | 2027-01-05 | 2027-01-06 | DAM3-C-B1-E-273, DAM3-C-B1-E-213 | Electrician [32 h]; Construction Cost [3882.38] |
| DAM3-C-B1-E-293 | Line Isolator Modules for Fire Alarm | 2d | 2027-01-07 | 2027-01-09 | DAM3-C-B1-E-283 | Electrician [32 h]; Construction Cost [185.4] |
| DAM3-C-B1-E-303 | Firewarning flash light with sounder; wall mounted, Weather proof | 2d | 2027-01-10 | 2027-01-11 | DAM3-C-B1-E-293 | Electrician [32 h]; Construction Cost [3082.69] |
| DAM3-C-B1-E-173 | Installation of Wiring Devices | 4d | 2027-01-23 | 2027-01-27 | DAM3-C-B1-E-183, DAM3-C-B1-A-230 | Electrician [64 h]; Construction Cost [19435.1] |
| DAM3-C-B1-E-203 | Installation of Disconnect Switches | 2d | 2027-01-27 | 2027-01-30 | DAM3-C-B1-E-173 | Electrician [32 h]; Construction Cost [30236] |
| 7 | **BLOCK B7** |  | 2026-02-16 | 2026-12-26 |  |  |
| 1 | **STRUCTURAL** |  | 2026-02-16 | 2026-11-19 |  |  |
| 1 | **FOOTING** |  | 2026-02-16 | 2026-04-11 |  |  |
| DAM3-C-B7-S-150 | Excavation for footings | 8d | 2026-02-16 A | 2026-02-19 A | DAM3-C-B6-S-160 SS | General Labour [112 h]; Equipment Operator [112 h]; Truck [64 h]; Excavator [64 h]; Mini Roller Compactor [64 h]; Construction Cost [89859.6] |
| DAM3-C-B7-S-6263 | Soil replacement - rock fill | 6d | 2026-02-21 A | 2026-02-26 A | DAM3-C-B7-S-150 | General Labour [256 h]; Truck [128 h]; Mini Roller Compactor [128 h]; Equipment Operator [256 h]; Wheel Loader [128 h]; Construction Cost [179062] |
| DAM3-C-B7-S-6273 | Engineering fill | 6d | 2026-03-05 A | 2026-03-11 A | DAM3-C-B7-S-6263, DAM3-C-B7-S-6263 FF | General Labour [256 h]; Truck [64 h]; Mini Roller Compactor [64 h]; Equipment Operator [256 h]; Wheel Loader [64 h]; Construction Cost [46046.2] |
| DAM3-C-B7-S-101 | Anti Termite Below Footings | 1d | 2026-03-25 A | 2026-03-25 A | DAM3-C-B7-S-6273 | Mason [16 h]; Construction Cost [11905.5] |
| DAM3-C-B7-S-102 | Vapour Barrier for Footings | 1d | 2026-03-25 A | 2026-03-25 A | DAM3-C-B7-S-101 | General Labour [16 h]; Construction Cost [7940.1] |
| DAM3-C-B7-S-103 | Lean Concrete Below Footings | 2d | 2026-03-25 A | 2026-03-25 A | DAM3-C-B7-S-102 | Mason [32 h]; Construction Cost [8229.34] |
| 2 | **COLUMN NECK** |  | 2026-04-09 | 2026-05-10 |  |  |
| DAM3-C-B7-S-257 | Rebar for column neck | 4d | 2026-04-09 A | 2026-04-11 A | DAM3-C-B7-S-106 | Steel Fixer [64 h]; Construction Cost [14919.2] |
| DAM3-C-B7-S-267 | Formwork for column neck | 2d | 2026-04-15 A | 2026-04-15 A | DAM3-C-B7-S-257 | Carperter [32 h]; Construction Cost [9946.13] |
| DAM3-C-B7-S-297 | Pouring Concrete for column neck | 1d | 2026-04-16 A | 2026-04-16 A | DAM3-C-B7-S-267 | Mason [16 h]; Carperter [16 h]; Concrete Mixer [8 h]; Steel Fixer [16 h]; Equipment Operator [16 h]; Construction Cost [24865.3] |
| DAM3-C-B7-S-307 | Damp proof /Bitumin paint on Footings & column neck | 2d | 2026-04-20 A | 2026-04-23 A | DAM3-C-B7-S-297 | Painter [32 h]; Construction Cost [24777.7] |
| DAM3-C-B7-S-367 | Backfilling / Compaction up to Bottom of Grade Beams | 7d | 2026-05-02 A | 2026-05-10 A | DAM3-C-B7-S-307 | General Labour [256 h]; Truck [128 h]; Mini Roller Compactor [128 h]; Equipment Operator [256 h]; Wheel Loader [128 h]; Construction Cost [46046.2] |
| 3 | **GRADE BEAM** |  | 2026-05-13 | 2026-05-31 |  |  |
| DAM3-C-B7-S-337 | Vapour barrier for Grade Beams | 2d | 2026-05-13 A | 2026-05-13 A | DAM3-C-B7-S-527 | General Labour [32 h]; Construction Cost [5293.4] |
| DAM3-C-B7-S-338 | Lean Concrete Below Grade Beams | 2d | 2026-05-13 A | 2026-05-13 A | DAM3-C-B7-S-337 | Mason [32 h]; Construction Cost [4431.19] |
| DAM3-C-B7-S-527 | Anti Termite Below Grade Beams | 1d | 2026-05-13 A | 2026-05-13 A | DAM3-C-B7-S-367 | Mason [16 h]; Construction Cost [11905.5] |
| DAM3-C-B7-S-339 | Rebar for Grade Beams | 5d | 2026-05-16 A | 2026-05-18 A | DAM3-C-B7-S-338 | Steel Fixer [80 h]; Construction Cost [27194.5] |
| DAM3-C-B7-S-341 | Anchor bolts installation | 2d | 2026-05-16 A | 2026-05-18 A | DAM3-C-B7-S-340 SS | Carperter [32 h]; Construction Cost [57238.8] |
| DAM3-C-B7-S-340 | Formwork for Grade Beams | 2d | 2026-05-18 A | 2026-05-19 A | DAM3-C-B7-S-339 | Carperter [32 h]; Construction Cost [6798.61] |
| DAM3-C-B7-S-342 | Pouring Concrete for Grade Beams | 1d | 2026-05-20 A | 2026-05-20 A | DAM3-C-B7-S-340, DAM3-C-B7-S-341 | Mason [16 h]; Carperter [16 h]; Concrete Mixer [8 h]; Steel Fixer [16 h]; Equipment Operator [16 h]; Construction Cost [33993.1] |
| DAM3-C-B7-S-347 | Damp proof /Bitumin paint on Grade Beams | 5d | 2026-05-23 A | 2026-05-31 A | DAM3-C-B7-S-342 | Painter [80 h]; Construction Cost [24777.7] |
| 5 | **SLAB ON GRADE** |  | 2026-06-01 | 2026-11-19 |  |  |
| DAM3-C-B7-S-377 | Backfilling / Compaction for Slab on Grade | 7d | 2026-06-01 A | 2026-06-08 A | DAM3-C-B7-S-347 | Mini Roller Compactor [128 h]; General Labour [256 h]; Equipment Operator [256 h]; Wheel Loader [128 h]; Truck [128 h]; Construction Cost [23023.1] |
| DAM3-C-B7-S-378 | Anti Termite Treatment below Ground Slab | 1d | 2026-07-08 A | 2026-07-12 A | DAM3-C-B7-S-377 | General Labour [16 h]; Construction Cost [15874.1] |
| DAM3-C-B7-S-379 | Vapour barrier for below Ground Slab | 2d | 2026-07-08 A | 2026-07-12 A | DAM3-C-B7-S-378 | General Labour [32 h]; Construction Cost [13233.5] |
| DAM3-C-B7-S-382 | Pouring Concrete for Ground Slab | 4d | 2026-07-08 A | 2026-07-12 A | DAM3-C-B7-S-379 | Mason [64 h]; Carperter [64 h]; Steel Fixer [64 h]; Concrete Mixer [32 h]; Equipment Operator [64 h]; Construction Cost [344195] |
| DAM3-C-B7-S-517 | Concrete pad | 7d | 2026-11-12 | 2026-11-19 | DAM3-C-B7-A-0150 | Mason [112 h]; Construction Cost [907.11] |
| 4 | **COLUMNS & BEAMS** |  | 2026-05-11 | 2026-08-29 |  |  |
| DAM3-C-B7-S-6101 | Rebar for Tie Beams | 4d | 2026-05-11 A | 2026-05-12 A | DAM3-C-B7-S-5103 | Steel Fixer [64 h]; Construction Cost [7263.64] |
| DAM3-C-B7-S-6102 | Formwork for Tie Beams | 2d | 2026-05-13 A | 2026-05-13 A | DAM3-C-B7-S-6101, DAM3-C-B7-S-382 | Carperter [32 h]; Construction Cost [1815.91] |
| DAM3-C-B7-S-6103 | Pouring Concrete for Tie Beams | 1d | 2026-05-14 A | 2026-05-14 A | DAM3-C-B7-S-6102 | Mason [16 h]; Carperter [16 h]; Concrete Mixer [32 h]; Steel Fixer [16 h]; Equipment Operator [16 h]; Construction Cost [9079.54] |
| DAM3-C-B7-S-5102 | Formwork for column | 4d | 2026-06-01 A | 2026-07-07 A | DAM3-C-B7-S-5101 | Carperter [64 h]; Construction Cost [5036.01] |
| DAM3-C-B7-S-5101 | Rebar for column | 5d | 2026-06-25 A | 2026-07-02 A | DAM3-C-B7-S-377 | Steel Fixer [112 h]; Construction Cost [20144] |
| DAM3-C-B7-S-5103 | Pouring Concrete for column | 1d | 2026-07-05 A | 2026-07-22 A | DAM3-C-B7-S-5102 | Mason [16 h]; Carperter [16 h]; Concrete Mixer [32 h]; Steel Fixer [16 h]; Equipment Operator [16 h]; Construction Cost [25180.1] |
| DAM3-C-B7-S-6113 | Rebar for Beams | 4d | 2026-08-16 A | 2026-08-19 A | DAM3-C-B7-S-6103 | Steel Fixer [64 h]; Construction Cost [13379.1] |
| DAM3-C-B7-S-6123 | Formwork for Beams | 2d | 2026-08-20 A | 2026-08-26 A | DAM3-C-B7-S-6113, DAM3-C-B7-S-6113 FF | Carperter [32 h]; Construction Cost [3344.77] |
| DAM3-C-B7-S-6133 | Pouring Concrete for Beams | 1d | 2026-08-26 A | 2026-08-29 A | DAM3-C-B7-S-6123, DAM3-C-B7-S-6123 FF | Mason [16 h]; Carperter [16 h]; Concrete Mixer [32 h]; Steel Fixer [16 h]; Equipment Operator [16 h]; Construction Cost [16723.9] |
| 5 | **STRUCTURAL STEEL** |  | 2026-06-13 | 2026-11-19 |  |  |
| DAM3-C-B7-SS-0100 | Installation of columns | 3d | 2026-06-13 A | 2026-06-13 A | DAM3-C-B7-S-382, DAM3-C-B1-SS-0110 SS, DAM3-P-DL-A-1780, DAM3-C-B7-S-6133 | Structural Steel Fixer [80 h]; General Labour [80 h]; Equipment Operator [80 h]; Mobile Crane [24 h]; Construction Cost [217508] |
| DAM3-C-B7-SS-0110 | Installation of raft and purlins | 5d | 2026-06-14 A | 2026-06-15 A | DAM3-C-B7-SS-0100 | Structural Steel Fixer [160 h]; General Labour [160 h]; Mobile Crane [56 h]; Equipment Operator [160 h]; Construction Cost [326261] |
| DAM3-C-B7-SS-610 | Intumescent paint to steel works | 7d | 2026-06-14 A | 2026-06-21 A | DAM3-C-B7-SS-0110 | Painter [112 h]; Construction Cost [317760] |
| DAM3-C-B7-SS-0140 | Installation of roof sheet | 5d | 2026-07-07 A | 2026-07-25 A | DAM3-C-B7-A-0120, DAM3-C-B7-SS-610, DAM3-C-B7-S-6133 | Roof sheet worker [160 h]; General Labour [160 h]; Mobile Crane [40 h]; Equipment Operator [160 h]; Construction Cost [217508] |
| DAM3-C-B7-SS-1030 | Steel members for external platform | 7d | 2026-08-24 A | 2026-09-19 A | DAM3-C-B7-SS-620 | Construction Cost [18670.8]; General Labour [112 h]; Mobile Crane [56 h]; Structural Steel Fixer [112 h]; Equipment Operator [112 h] |
| DAM3-C-B7-SS-0130 | Installation of wall sandwich panel | 5d | 2026-09-01 A | 2026-09-24 A | DAM3-C-B7-A-0150, DAM3-C-B7-SS-1020 | Sandwich panel worker [112 h]; General Labour [112 h]; Mobile Crane [40 h]; Equipment Operator [112 h]; Construction Cost [326261] |
| DAM3-C-B7-SS-620 | Steel members for office area | 7d | 2026-09-21 A | 2026-09-24 A | DAM3-C-B7-SS-610, DAM3-C-B7-SS-0110 | Construction Cost [115805]; Structural Steel Fixer [112 h]; Mobile Crane [56 h]; General Labour [112 h]; Equipment Operator [112 h] |
| DAM3-C-B7-SS-1020 | Epoxy paint to steel members at office area | 7d | 2026-11-12 | 2026-11-19 | DAM3-C-B7-SS-620 | Painter [112 h]; Construction Cost [23161] |
| DAM3-C-B7-SS-1040 | Epoxy paint for external platform | 5d | 2026-11-12 | 2026-11-17 | DAM3-C-B7-SS-1030, DAM3-C-B7-SS-1030 FF | Painter [80 h]; Construction Cost [3734.16] |
| 2 | **ARCHITECTURAL** |  | 2026-07-01 | 2026-12-26 |  |  |
| 1 | **MASONARY WORKS** |  | 2026-07-22 | 2026-08-17 |  |  |
| DAM3-C-B7-A-0120 | Block work at factory area | 10d | 2026-07-22 A | 2026-07-26 A | DAM3-C-B7-S-382, DAM3-C-B7-SS-0110 | AAC panel erector [240 h]; General Labour [240 h]; Equipment Operator [240 h]; Mobile Crane [120 h]; Construction Cost [58338.7] |
| DAM3-C-B7-A-0150 | Block work at office area | 7d | 2026-07-25 A | 2026-08-17 A | DAM3-C-B7-SS-0140 SS, DAM3-C-B7-SS-620 | AAC panel erector [160 h]; General Labour [160 h]; Mobile Crane [56 h]; Equipment Operator [160 h]; Construction Cost [6179.18] |
| DAM3-C-B7-A-170 | Block work at toilet area | 7d | 2026-07-26 A | 2026-08-17 A | DAM3-C-B7-A-0150 | Mason [112 h]; Construction Cost [14436.3] |
| 5 | **WALL FINISHES** |  | 2026-09-03 | 2026-11-22 |  |  |
| DAM3-C-B7-A-180 | Internal Wall Plaster | 15d | 2026-09-03 A | 2026-09-24 A | DAM3-C-B7-A-170, DAM3-C-B7-E-183, DAM3-C-B7-S-517 | Mason [240 h]; Construction Cost [48590.2] |
| DAM3-C-B7-A-230 | Paint to Plaster (Primer, Putty & First Coat) | 4d | 2026-09-28 A | 2026-11-22 | DAM3-C-B7-A-250 | Painter [112 h]; Construction Cost [44167.3] |
| 2 | **CIELING FINISHES** |  | 2026-10-04 | 2026-10-15 |  |  |
| DAM3-C-B7-A-240 | Installation of Ceiling Gypsum Board | 5d | 2026-10-04 A | 2026-10-15 A | DAM3-C-B7-A-220, DAM3-C-B7-S-517 | Carperter [80 h]; Construction Cost [46792.3] |
| 6 | **FLOOR FINISHES** |  | 2026-09-19 | 2026-12-26 |  |  |
| DAM3-C-B7-A-220 | Tiles for Toilet | 7d | 2026-09-19 A | 2026-09-28 A | DAM3-C-B7-A-370 | Tile Fixer [112 h]; Construction Cost [46530.7] |
| DAM3-C-B7-A-250 | Tiles for Office Area | 2d | 2026-10-19 A | 2026-11-21 | DAM3-C-B7-A-240 | Tile Fixer [32 h]; Construction Cost [26867.3] |
| DAM3-C-B7-A-390 | Granite strip | 2d | 2026-11-26 | 2026-11-29 | DAM3-C-B7-A-558, DAM3-C-B7-A-250 | Tile Fixer [32 h]; Construction Cost [671.12] |
| DAM3-C-B7-A-420 | Epoxy paint | 7d | 2026-12-17 | 2026-12-26 | DAM3-C-B7-A-340 | Painter [112 h]; Construction Cost [115420] |
| 3 | **DOORS & WINDOWS** |  | 2026-09-21 | 2026-11-26 |  |  |
| DAM3-C-B7-A-558 | Skylight fixtures installation | 1d | 2026-09-21 A | 2026-09-26 A | DAM3-C-B7-A-557 | Carperter [16 h]; Construction Cost [6489.89] |
| DAM3-C-B7-A-552 | Window (CW1) | 7d | 2026-10-05 A | 2026-11-21 | DAM3-C-B7-SS-0130 | Carperter [112 h]; Construction Cost [94173.2] |
| DAM3-C-B7-A-553 | Roll up Shutter Door | 1d | 2026-10-18 A | 2026-10-20 A | DAM3-C-B7-A-552 | Carperter [16 h]; Construction Cost [68619.2] |
| DAM3-C-B7-A-200 | Supply and install (D5) 1000*2200mm single leaf steel door with door | 1d | 2026-11-21 | 2026-11-22 | DAM3-C-B7-A-553 | Carperter [16 h]; Construction Cost [16016.2] |
| DAM3-C-B7-A-554 | Supply and install (D4) 800*2200 mm single leaf aluminum door with door | 1d | 2026-11-22 | 2026-11-23 | DAM3-C-B7-A-200 | Carperter [16 h]; Construction Cost [22737.8] |
| DAM3-C-B7-A-555 | Supply and install (D7) 1000*2200 mm single leaf aluminum door with door | 1d | 2026-11-23 | 2026-11-24 | DAM3-C-B7-A-554 | Carperter [16 h]; Construction Cost [7811.07] |
| DAM3-C-B7-A-556 | Supply and install (D3) 1000*2200 mm single leaf aluminum door with door | 1d | 2026-11-24 | 2026-11-25 | DAM3-C-B7-A-555 | Carperter [16 h]; Construction Cost [16016.2] |
| DAM3-C-B7-A-557 | Supply and install fire rated 45 min (D2) 1200*2200 mm single leaf steel door | 1d | 2026-11-25 | 2026-11-26 | DAM3-C-B7-A-556 | Carperter [16 h]; Construction Cost [16711.5] |
| 4 | **WATER PROOFING WORKS** |  | 2026-10-01 | 2026-10-04 |  |  |
| DAM3-C-B7-A-370 | Waterproofing membrane for toilets | 4d | 2026-10-01 A | 2026-10-04 A | DAM3-C-B7-M-200, DAM3-C-B7-A-180 | General Labour [64 h]; Construction Cost [4879.02] |
| 7 | **METAL WORKS** |  | 2026-07-01 | 2026-12-07 |  |  |
| DAM3-C-B7-A-300 | Galvanised Steel Gratings | 2d | 2026-07-01 A | 2026-07-01 A | DAM3-C-B7-A-292 | Steel Fixer [32 h]; General Labour [32 h]; Construction Cost [6455.16] |
| DAM3-C-B7-A-292 | Aluminium composite panel | 5d | 2026-09-30 A | 2026-12-07 | DAM3-C-B7-A-291 | Steel Fixer [80 h]; General Labour [80 h]; Construction Cost [175889] |
| DAM3-C-B7-A-290 | Steel Ladder | 2d | 2026-11-29 | 2026-12-01 | DAM3-C-B7-A-390 | Steel Fixer [32 h]; General Labour [32 h]; Construction Cost [9839.16] |
| DAM3-C-B7-A-291 | Steel railing works | 4d | 2026-12-01 | 2026-12-06 | DAM3-C-B7-A-290 | Steel Fixer [64 h]; General Labour [64 h]; Construction Cost [1533.98] |
| 8 | **SPECIALTIES** |  | 2026-12-07 | 2026-12-17 |  |  |
| DAM3-C-B7-A-320 | Installation of fittings | 5d | 2026-12-07 | 2026-12-13 | DAM3-C-B7-A-300 | Plumber [80 h]; Construction Cost [22981.3] |
| DAM3-C-B7-A-570 | Identification sign; ID01 & ID02 | 3d | 2026-12-13 | 2026-12-16 | DAM3-C-B7-A-320 | Mason [48 h]; Construction Cost [9630.56] |
| DAM3-C-B7-A-340 | Furniture Installation | 1d | 2026-12-16 | 2026-12-17 | DAM3-C-B7-A-570 | General Labour [16 h]; Mason [16 h]; Construction Cost [12468.8] |
| 1 | **HVAC** |  | 2026-10-05 | 2026-12-02 |  |  |
| 1 | **FIRST STAGE** |  | 2026-10-05 | 2026-10-11 |  |  |
| DAM3-C-B7-M-140 | Installation of HVAC Ducts | 2d | 2026-10-05 A | 2026-10-11 A | DAM3-C-B7-M-160 | Ductman [32 h]; Construction Cost [149489] |
| DAM3-C-B7-M-170 | Installation of Duct insulation | 2d | 2026-10-06 A | 2026-10-11 A | DAM3-C-B7-M-140 | Ductman [32 h]; Construction Cost [21205.4] |
| 2 | **SECOND STAGE** |  | 2026-11-22 | 2026-12-02 |  |  |
| DAM3-C-B7-M-130 | Installation of Exhaust Fans | 2d | 2026-11-22 | 2026-11-24 | DAM3-C-B7-A-230 | AC Technician [32 h]; Construction Cost [7938.56] |
| DAM3-C-B7-M-160 | Installation of Wall Propeller Type Exhaust Fan | 3d | 2026-11-24 | 2026-11-28 | DAM3-C-B7-M-130 | AC Technician [64 h]; Construction Cost [46831.6] |
| DAM3-C-B7-M-339 | Installation of Diffuser | 2d | 2026-11-28 | 2026-11-30 | DAM3-C-B7-M-170 | Ductman [32 h]; Construction Cost [2144] |
| DAM3-C-B7-M-340 | Supply, install, test and commission door grilles & exhaust louvers | 2d | 2026-11-30 | 2026-12-02 | DAM3-C-B7-M-339 | Ductman [32 h]; Construction Cost [5574.4] |
| 2 | **FIRE FIGHTING SYSTEM** |  | 2026-07-29 | 2026-12-06 |  |  |
| 1 | **FIRST STAGE** |  | 2026-07-29 | 2026-08-12 |  |  |
| DAM3-C-B7-M-300 | Installation of Fire Fighting Pipes (Seamless Black Steel) | 7d | 2026-07-29 A | 2026-08-10 A | DAM3-C-B7-A-230 | Pipe Fitter [112 h]; Construction Cost [72394.8] |
| DAM3-C-B7-M-310 | Installation of Fire Fighting Valve | 5d | 2026-08-09 A | 2026-08-12 A | DAM3-C-B7-M-300 | Pipe Fitter [80 h]; Construction Cost [12199.4] |
| 2 | **SECOND STAGE** |  | 2026-11-22 | 2026-12-06 |  |  |
| DAM3-C-B7-M-320 | Installation of Fire Hose Cabinet | 3d | 2026-11-22 | 2026-11-25 | DAM3-C-B7-M-310 | Pipe Fitter [48 h]; Construction Cost [15158.6] |
| DAM3-C-B7-M-370 | Supply, install, test and commission Fire Department Connection(FDC) | 3d | 2026-12-02 | 2026-12-06 | DAM3-C-B7-M-340 | Pipe Fitter [48 h]; Construction Cost [2706.06] |
| 3 | **SEWER AND DRAINAGE SYSTEM** |  | 2026-06-10 | 2026-12-06 |  |  |
| 1 | **FIRST STAGE** |  | 2026-06-10 | 2026-11-22 |  |  |
| DAM3-C-B7-M-200 | Installation of Sanitary Waste / Drainage Pipes | 4d | 2026-06-10 A | 2026-06-14 A | DAM3-C-B7-S-347 | Plumber [64 h]; Construction Cost [18585.1] |
| DAM3-C-B7-M-380 | Installation of Trench drain | 5d | 2026-06-16 A | 2026-06-18 A | DAM3-C-B7-M-220 | Plumber [80 h]; Construction Cost [11508.8] |
| DAM3-C-B7-M-220 | Installation of Floor Drain | 2d | 2026-11-21 | 2026-11-22 | DAM3-C-B7-M-200, DAM3-C-B7-A-220 | Plumber [32 h]; Construction Cost [11056] |
| 2 | **SECOND STAGE** |  | 2026-10-17 | 2026-12-06 |  |  |
| DAM3-C-B7-M-180 | Installation of Electric Water Heater | 2d | 2026-10-17 A | 2026-10-18 A | DAM3-C-B7-M-380 | Plumber [32 h]; Construction Cost [1819.51] |
| DAM3-C-B7-M-190 | Installation of Sanitary Fixture and Accessories | 4d | 2026-11-23 | 2026-11-26 | DAM3-C-B7-M-180 | Plumber [64 h]; Construction Cost [19921.7] |
| DAM3-C-B7-M-210 | Installation of Lavotary /Wash Basin | 2d | 2026-11-28 | 2026-11-29 | DAM3-C-B7-M-180, DAM3-C-B7-M-190 | Plumber [32 h]; Construction Cost [21416.7] |
| DAM3-C-B7-M-270 | Installation of Bib Tap | 2d | 2026-11-30 | 2026-12-01 | DAM3-C-B7-M-190, DAM3-C-B7-M-210 | Plumber [32 h]; Construction Cost [1900.66] |
| DAM3-C-B7-M-428 | Installation of Water Tap | 2d | 2026-12-02 | 2026-12-03 | DAM3-C-B7-M-210, DAM3-C-B7-M-270 | Plumber [32 h]; Construction Cost [2874.14] |
| DAM3-C-B7-M-429 | Installation of Roof Vent Cap | 2d | 2026-12-05 | 2026-12-06 | DAM3-C-B7-M-428 | Pipe Fitter [32 h]; Construction Cost [927.12] |
| 4 | **WATER SUPPLY SYSTEM** |  | 2026-08-30 | 2026-11-28 |  |  |
| 1 | **FIRST STAGE** |  | 2026-08-30 | 2026-09-03 |  |  |
| DAM3-C-B7-M-290 | Installation of Water Supply Pipes | 4d | 2026-08-30 A | 2026-09-03 A | DAM3-C-B7-A-230 | Plumber [64 h]; Construction Cost [23318.4] |
| DAM3-C-B7-M-280 | Installation of Water Supply Valve | 2d | 2026-08-31 A | 2026-09-03 A | DAM3-C-B7-M-290 | Plumber [32 h]; Construction Cost [18274.3] |
| 2 | **SECOND STAGE** |  | 2026-11-22 | 2026-11-28 |  |  |
| DAM3-C-B7-M-330 | Capped connection | 5d | 2026-11-22 | 2026-11-28 | DAM3-C-B7-M-280 | Plumber [80 h]; Construction Cost [278.13] |
| 1 | **FIRST STAGE** |  | 2026-05-16 | 2026-12-14 |  |  |
| DAM3-C-B7-E-143 | Installation of Conduits and wiring outlets - Fire Alarm System | 4d | 2026-05-16 A | 2026-11-14 | DAM3-C-B7-A-170 | Electrician [64 h]; Construction Cost [1768.31] |
| DAM3-C-B7-E-183 | Installation of Sleeves & Power outlet | 8d | 2026-05-18 A | 2026-11-16 | DAM3-C-B7-A-170 | Electrician [128 h]; Construction Cost [2920.45] |
| DAM3-C-B7-E-163 | Installation of Conduites for Lighting Fixture | 4d | 2026-09-06 A | 2026-11-24 | DAM3-C-B7-E-133 | Electrician [64 h]; Construction Cost [8462.97] |
| DAM3-C-B7-E-233 | Installation of Wires | 4d | 2026-11-26 | 2026-12-01 | DAM3-C-B7-E-163, DAM3-C-B7-A-558 | Electrician [64 h]; Construction Cost [16925.9] |
| 2 | **SECOND STAGE** |  | 2026-09-21 | 2026-12-22 |  |  |
| DAM3-C-B7-E-153 | Installation of Lighting fixtures | 4d | 2026-09-21 A | 2026-12-05 | DAM3-C-B7-E-233 | Electrician [64 h]; Construction Cost [76166.7] |
| DAM3-C-B7-E-420 | Installation of Solar power plant | 7d | 2026-10-04 A | 2026-10-06 A | DAM3-C-B1-E-420, DAM3-C-B7-E-303, DAM3-C-B7-E-113 | Plumber [112 h]; Construction Cost [253269] |
| DAM3-C-B7-E-243 | Installation of LP-1 Panel | 2d | 2026-10-10 A | 2026-10-14 A | DAM3-C-B7-E-193 | Electrician [32 h]; Construction Cost [18403.5] |
| DAM3-C-B7-E-123 | Installation of Fire Alarm Control Panel | 4d | 2026-11-15 | 2026-11-18 | DAM3-C-B7-E-143 | Electrician [64 h]; Construction Cost [19451.4] |
| DAM3-C-B7-E-133 | Installation of Fire Detectors & Accessories | 4d | 2026-11-19 | 2026-11-23 | DAM3-C-B7-E-123 | Electrician [64 h]; Construction Cost [56740.4] |
| DAM3-C-B7-E-173 | Installation of Wiring Devices | 4d | 2026-11-22 | 2026-11-26 | DAM3-C-B7-E-183, DAM3-C-B7-A-230 | Electrician [64 h]; Construction Cost [19435.1] |
| DAM3-C-B7-E-203 | Installation of Disconnect Switches | 2d | 2026-11-26 | 2026-11-29 | DAM3-C-B7-E-173 | Electrician [32 h]; Construction Cost [30236] |
| DAM3-C-B7-E-193 | Installation of Main Distribution Board | 2d | 2026-12-01 | 2026-12-03 | DAM3-C-B7-E-233 | Electrician [32 h]; Construction Cost [32472.7] |
| DAM3-C-B7-E-410 | Installation of CCTV System | 7d | 2026-12-01 | 2026-12-09 | DAM3-C-B7-E-233 | Plumber [112 h]; Construction Cost [76349.2] |
| DAM3-C-B7-E-253 | Installation of PP-AC panel | 2d | 2026-12-03 | 2026-12-06 | DAM3-C-B7-E-243 | Electrician [32 h]; Construction Cost [21648.5] |
| DAM3-C-B7-E-213 | Installation of Telephone Cabinet | 2d | 2026-12-06 | 2026-12-08 | DAM3-C-B7-E-253 | Electrician [32 h]; Construction Cost [26991.1] |
| DAM3-C-B7-E-273 | Installation of Access Control System | 5d | 2026-12-09 | 2026-12-15 | DAM3-C-B7-E-410, DAM3-C-B7-E-153 | Electrician [80 h]; Construction Cost [27616.9] |
| DAM3-C-B7-E-283 | Monitor Modules for Fire Alarm | 2d | 2026-12-15 | 2026-12-17 | DAM3-C-B7-E-273 | Electrician [32 h]; Construction Cost [3882.38] |
| DAM3-C-B7-E-293 | Line Isolator Modules for Fire Alarm | 2d | 2026-12-17 | 2026-12-20 | DAM3-C-B7-E-283, DAM3-C-B7-E-213 | Electrician [32 h]; Construction Cost [185.4] |
| DAM3-C-B7-E-303 | Firewarning flash light with sounder; wall mounted, Weather proof | 2d | 2026-12-20 | 2026-12-22 | DAM3-C-B7-E-293 | Electrician [32 h]; Construction Cost [3082.69] |
| 9 | **BLOCK B8** |  | 2026-02-17 | 2027-02-23 |  |  |
| 1 | **STRUCTURAL** |  | 2026-02-17 | 2026-11-19 |  |  |
| 1 | **FOOTING** |  | 2026-02-17 | 2026-04-16 |  |  |
| DAM3-C-B8-S-150 | Excavation for footings | 4d | 2026-02-17 A | 2026-02-21 A | DAM3-C-B7-S-150 | General Labour [112 h]; Equipment Operator [112 h]; Truck [64 h]; Excavator [64 h]; Mini Roller Compactor [64 h]; Construction Cost [89859.6] |
| DAM3-C-B8-S-6283 | Soil replacement - rock fill | 4d | 2026-02-28 A | 2026-03-02 A | DAM3-C-B8-S-150 | General Labour [256 h]; Truck [128 h]; Mini Roller Compactor [128 h]; Equipment Operator [256 h]; Wheel Loader [128 h]; Construction Cost [179062] |
| DAM3-C-B8-S-6293 | Engineering fill | 4d | 2026-03-08 A | 2026-03-16 A | DAM3-C-B8-S-6283, DAM3-C-B8-S-6283 FF | General Labour [256 h]; Truck [64 h]; Mini Roller Compactor [64 h]; Equipment Operator [256 h]; Wheel Loader [64 h]; Construction Cost [46046.2] |
| DAM3-C-B8-S-101 | Anti Termite Below Footings | 1d | 2026-03-28 A | 2026-03-28 A | DAM3-C-B8-S-6293 | Mason [16 h]; Construction Cost [11905.5] |
| DAM3-C-B8-S-102 | Vapour Barrier for Footings | 1d | 2026-03-28 A | 2026-03-28 A | DAM3-C-B8-S-101 | General Labour [16 h]; Construction Cost [7940.1] |
| DAM3-C-B8-S-103 | Lean Concrete Below Footings | 2d | 2026-03-28 A | 2026-03-28 A | DAM3-C-B8-S-102 | Mason [32 h]; Construction Cost [8229.34] |
| DAM3-C-B8-S-104 | Rebar for Footings | 4d | 2026-04-11 A | 2026-04-13 A | DAM3-C-B8-S-103 | Steel Fixer [64 h]; Construction Cost [101845] |
| DAM3-C-B8-S-105 | Formwork for Footings | 4d | 2026-04-13 A | 2026-04-14 A | DAM3-C-B8-S-104, DAM3-PMS-MMS-0060 | Carperter [64 h]; Construction Cost [25461.2] |
| DAM3-C-B8-S-106 | Pouring Concrete for Footings | 1d | 2026-04-16 A | 2026-04-16 A | DAM3-C-B8-S-105 | Carperter [16 h]; Mason [16 h]; Steel Fixer [16 h]; Concrete Mixer [8 h]; Equipment Operator [16 h]; Construction Cost [127306] |
| 2 | **COLUMN NECK** |  | 2026-04-14 | 2026-05-12 |  |  |
| DAM3-C-B8-S-257 | Rebar for column neck | 4d | 2026-04-14 A | 2026-04-15 A | DAM3-C-B8-S-106 | Steel Fixer [64 h]; Construction Cost [14919.2] |
| DAM3-C-B8-S-267 | Formwork for column neck | 2d | 2026-04-22 A | 2026-04-25 A | DAM3-C-B8-S-257 | Carperter [32 h]; Construction Cost [9946.13] |
| DAM3-C-B8-S-297 | Pouring Concrete for column neck | 1d | 2026-04-23 A | 2026-04-25 A | DAM3-C-B8-S-267 | Mason [16 h]; Carperter [16 h]; Concrete Mixer [8 h]; Steel Fixer [16 h]; Equipment Operator [16 h]; Construction Cost [24865.3] |
| DAM3-C-B8-S-307 | Damp proof /Bitumin paint on Footings & column neck | 2d | 2026-04-27 A | 2026-04-30 A | DAM3-C-B8-S-297 | Painter [32 h]; Construction Cost [24777.7] |
| DAM3-C-B8-S-367 | Backfilling / Compaction up to Bottom of Grade Beams | 7d | 2026-05-05 A | 2026-05-12 A | DAM3-C-B8-S-307 | General Labour [256 h]; Truck [128 h]; Mini Roller Compactor [128 h]; Equipment Operator [256 h]; Wheel Loader [128 h]; Construction Cost [46046.2] |
| 3 | **GRADE BEAM** |  | 2026-05-13 | 2026-06-03 |  |  |
| DAM3-C-B8-S-337 | Vapour barrier for Grade Beams | 2d | 2026-05-13 A | 2026-05-13 A | DAM3-C-B8-S-527 | General Labour [32 h]; Construction Cost [5293.4] |
| DAM3-C-B8-S-338 | Lean Concrete Below Grade Beams | 2d | 2026-05-13 A | 2026-05-13 A | DAM3-C-B8-S-337 | Mason [32 h]; Construction Cost [4431.19] |
| DAM3-C-B8-S-527 | Anti Termite Below Grade Beams | 1d | 2026-05-13 A | 2026-05-13 A | DAM3-C-B8-S-367, DAM3-P-ST-A-210, DAM3-C-B7-S-6133 | Mason [16 h]; Construction Cost [11905.5] |
| DAM3-C-B8-S-339 | Rebar for Grade Beams | 5d | 2026-05-16 A | 2026-05-20 A | DAM3-C-B8-S-338 | Steel Fixer [80 h]; Construction Cost [27194.5] |
| DAM3-C-B8-S-341 | Anchor bolts installation | 2d | 2026-05-17 A | 2026-05-20 A | DAM3-C-B8-S-340 SS | Carperter [32 h]; Construction Cost [57238.8] |
| DAM3-C-B8-S-340 | Formwork for Grade Beams | 2d | 2026-05-20 A | 2026-05-23 A | DAM3-C-B8-S-339, DAM3-P-ST-A-220 | Carperter [32 h]; Construction Cost [6798.61] |
| DAM3-C-B8-S-342 | Pouring Concrete for Grade Beams | 1d | 2026-05-24 A | 2026-05-25 A | DAM3-C-B8-S-340, DAM3-C-B8-S-341 | Mason [16 h]; Carperter [16 h]; Concrete Mixer [8 h]; Steel Fixer [16 h]; Equipment Operator [16 h]; Construction Cost [33993.1] |
| DAM3-C-B8-S-347 | Damp proof /Bitumin paint on Grade Beams | 5d | 2026-05-31 A | 2026-06-03 A | DAM3-C-B8-S-342 | Painter [80 h]; Construction Cost [24777.7] |
| 5 | **SLAB ON GRADE** |  | 2026-06-04 | 2026-11-19 |  |  |
| DAM3-C-B8-S-377 | Backfilling / Compaction for Slab on Grade | 7d | 2026-06-04 A | 2026-06-09 A | DAM3-C-B8-S-347, DAM3-P-ST-EN-120, DAM3-P-ST-M-430, DAM3-P-ST-M-490, DAM3-P-ST-M-620, DAM3-P-ST-E-340, DAM3-E-ST-E-210 | Mini Roller Compactor [128 h]; General Labour [256 h]; Equipment Operator [256 h]; Wheel Loader [128 h]; Truck [128 h]; Construction Cost [23023.1] |
| DAM3-C-B8-S-378 | Anti Termite Treatment below Ground Slab | 1d | 2026-07-13 A | 2026-07-16 A | DAM3-C-B8-S-377 | General Labour [16 h]; Construction Cost [15874.1] |
| DAM3-C-B8-S-379 | Vapour barrier for below Ground Slab | 2d | 2026-07-13 A | 2026-07-16 A | DAM3-C-B8-S-378 | General Labour [32 h]; Construction Cost [13233.5] |
| DAM3-C-B8-S-382 | Pouring Concrete for Ground Slab | 4d | 2026-07-13 A | 2026-07-16 A | DAM3-C-B8-S-379 | Mason [64 h]; Carperter [64 h]; Steel Fixer [64 h]; Concrete Mixer [32 h]; Equipment Operator [64 h]; Construction Cost [344195] |
| DAM3-C-B8-S-517 | Concrete pad | 7d | 2026-11-12 | 2026-11-19 | DAM3-C-B8-A-0150 | Mason [112 h]; Construction Cost [907.11] |
| 4 | **COLUMNS & BEAMS** |  | 2026-05-16 | 2026-09-03 |  |  |
| DAM3-C-B8-S-6101 | Rebar for Tie Beams | 4d | 2026-05-16 A | 2026-05-23 A | DAM3-C-B8-S-5103 | Steel Fixer [64 h]; Construction Cost [7263.64] |
| DAM3-C-B8-S-6102 | Formwork for Tie Beams | 2d | 2026-05-16 A | 2026-05-24 A | DAM3-C-B8-S-6101 | Carperter [32 h]; Construction Cost [1815.91] |
| DAM3-C-B8-S-6103 | Pouring Concrete for Tie Beams | 1d | 2026-05-16 A | 2026-05-25 A | DAM3-C-B8-S-6102, DAM3-P-ST-EX-100, DAM3-P-ST-EX-90 | Mason [16 h]; Carperter [16 h]; Concrete Mixer [32 h]; Steel Fixer [16 h]; Equipment Operator [16 h]; Construction Cost [9079.54] |
| DAM3-C-B8-S-5101 | Rebar for column | 5d | 2026-07-02 A | 2026-07-11 A | DAM3-C-B8-S-377, DAM3-E-ST-A-1720, DAM3-P-ST-A-320, DAM3-E-ST-A-1750, DAM3-P-ST-A-330, DAM3-E-ST-A-1760, DAM3-P-ST-EN-150, DAM3-P-ST-EN-140, DAM3-P-ST-EN-130, DAM3-P-ST-M-520, DAM3-P-ST-M-440, DAM3-P-ST-M-510, DAM3-P-ST-M-660, DAM3-P-ST-M-500, DAM3-P-ST-E-300 | Steel Fixer [112 h]; Construction Cost [20144] |
| DAM3-C-B8-S-5102 | Formwork for column | 4d | 2026-07-07 A | 2026-07-25 A | DAM3-C-B8-S-5101, DAM3-P-ST-EN-160, DAM3-P-ST-E-330 | Carperter [64 h]; Construction Cost [5036.01] |
| DAM3-C-B8-S-5103 | Pouring Concrete for column | 1d | 2026-07-13 A | 2026-07-26 A | DAM3-C-B8-S-5102, DAM3-P-ST-EN-170 | Mason [16 h]; Carperter [16 h]; Concrete Mixer [32 h]; Steel Fixer [16 h]; Equipment Operator [16 h]; Construction Cost [25180.1] |
| DAM3-C-B8-S-6113 | Rebar for Beams | 4d | 2026-08-23 A | 2026-08-26 A | DAM3-C-B8-S-6103 | Steel Fixer [64 h]; Construction Cost [13379.1] |
| DAM3-C-B8-S-6123 | Formwork for Beams | 2d | 2026-08-29 A | 2026-09-01 A | DAM3-C-B8-S-6113, DAM3-C-B8-S-6113 FF | Carperter [32 h]; Construction Cost [3344.77] |
| DAM3-C-B8-S-6133 | Pouring Concrete for Beams | 1d | 2026-09-01 A | 2026-09-03 A | DAM3-C-B8-S-6123, DAM3-C-B8-S-6123 FF | Mason [16 h]; Carperter [16 h]; Concrete Mixer [32 h]; Steel Fixer [16 h]; Equipment Operator [16 h]; Construction Cost [16723.9] |
| 5 | **STRUCTURAL STEEL** |  | 2026-06-14 | 2026-12-06 |  |  |
| DAM3-C-B8-SS-0100 | Installation of columns | 3d | 2026-06-14 A | 2026-06-15 A | DAM3-C-B8-S-382, DAM3-C-B7-SS-0110 SS, DAM3-C-B8-S-6133, DAM3-P-ST-EX-150, DAM3-P-ST-EX-140, DAM3-P-ST-EX-130, DAM3-P-ST-EX-110 | Structural Steel Fixer [80 h]; General Labour [80 h]; Equipment Operator [80 h]; Mobile Crane [24 h]; Construction Cost [217508] |
| DAM3-C-B8-SS-0110 | Installation of raft and purlins | 5d | 2026-06-15 A | 2026-06-16 A | DAM3-C-B8-SS-0100, DAM3-P-ST-M-390 | Structural Steel Fixer [160 h]; General Labour [160 h]; Mobile Crane [56 h]; Equipment Operator [160 h]; Construction Cost [326261] |
| DAM3-C-B8-SS-610 | Intumescent paint to steel works | 7d | 2026-06-17 A | 2026-06-24 A | DAM3-C-B8-SS-0110 | Painter [112 h]; Construction Cost [317760] |
| DAM3-C-B8-SS-0140 | Installation of roof sheet | 5d | 2026-07-19 A | 2026-08-01 A | DAM3-C-B8-A-0120, DAM3-C-B8-SS-610, DAM3-C-B8-S-6133 | Roof sheet worker [160 h]; General Labour [160 h]; Mobile Crane [40 h]; Equipment Operator [160 h]; Construction Cost [217508] |
| DAM3-C-B8-SS-0130 | Installation of wall sandwich panel | 5d | 2026-09-02 A | 2026-09-22 A | DAM3-C-B8-A-0150 | Sandwich panel worker [112 h]; General Labour [112 h]; Mobile Crane [40 h]; Equipment Operator [112 h]; Construction Cost [326261] |
| DAM3-C-B8-SS-1030 | Steel members for external platform | 4d | 2026-09-20 A | 2026-09-21 A | DAM3-C-B8-SS-620 | Construction Cost [18670.8]; General Labour [112 h]; Mobile Crane [56 h]; Structural Steel Fixer [112 h]; Equipment Operator [112 h] |
| DAM3-C-B8-SS-620 | Steel members for office area | 4d | 2026-09-26 A | 2026-09-28 A | DAM3-C-B8-SS-610, DAM3-C-B8-SS-0110 | Construction Cost [115805]; Structural Steel Fixer [112 h]; Mobile Crane [56 h]; General Labour [112 h]; Equipment Operator [112 h] |
| DAM3-C-B8-SS-1020 | Epoxy paint to steel members at office area | 4d | 2026-11-12 | 2026-11-16 | DAM3-C-B8-SS-620 | Painter [112 h]; Construction Cost [23161] |
| DAM3-C-B8-SS-1040 | Epoxy paint for external platform | 3d | 2026-12-02 | 2026-12-06 | DAM3-C-B8-SS-1030, DAM3-PMS-DMS-2310, DAM3-PMS-MMS-0080 | Painter [80 h]; Construction Cost [3734.16] |
| 2 | **ARCHITECTURAL** |  | 2026-07-18 | 2027-02-23 |  |  |
| 1 | **MASONARY WORKS** |  | 2026-07-23 | 2026-08-23 |  |  |
| DAM3-C-B8-A-0120 | Block work at factory area | 5d | 2026-07-23 A | 2026-07-27 A | DAM3-C-B8-S-382, DAM3-C-B8-SS-0110 | AAC panel erector [240 h]; General Labour [240 h]; Equipment Operator [240 h]; Mobile Crane [120 h]; Construction Cost [58338.7] |
| DAM3-C-B8-A-0150 | Block work at office area | 5d | 2026-07-23 A | 2026-08-23 A | DAM3-C-B8-SS-0140 SS, DAM3-C-B8-SS-620 | AAC panel erector [160 h]; General Labour [160 h]; Mobile Crane [56 h]; Equipment Operator [160 h]; Construction Cost [6179.18] |
| DAM3-C-B8-A-170 | Block work at toilet area | 3d | 2026-07-27 A | 2026-08-22 A | DAM3-C-B8-A-0150, DAM3-C-B8-SS-1020, DAM3-C-B7-SS-1040 | Mason [112 h]; Construction Cost [14436.3] |
| 5 | **WALL FINISHES** |  | 2026-09-10 | 2027-01-13 |  |  |
| DAM3-C-B8-A-180 | Internal Wall Plaster | 10d | 2026-09-10 A | 2026-09-28 A | DAM3-C-B8-A-170, DAM3-C-B8-E-183, DAM3-C-B8-S-517 | Mason [240 h]; Construction Cost [48590.2] |
| DAM3-C-B8-A-230 | Paint to Plaster (Primer, Putty & First Coat) | 4d | 2026-10-01 A | 2027-01-13 | DAM3-C-B8-A-250 | Painter [112 h]; Construction Cost [44167.3] |
| 2 | **CIELING FINISHES** |  | 2026-10-15 | 2026-10-20 |  |  |
| DAM3-C-B8-A-240 | Installation of Ceiling Gypsum Board | 3d | 2026-10-15 A | 2026-10-20 A | DAM3-C-B8-A-220, DAM3-C-B8-S-517, DAM3-C-B1-E-303 | Carperter [80 h]; Construction Cost [46792.3] |
| 6 | **FLOOR FINISHES** |  | 2026-09-30 | 2027-02-23 |  |  |
| DAM3-C-B8-A-220 | Tiles for Toilet | 4d | 2026-09-30 A | 2026-10-04 A | DAM3-C-B8-A-370, DAM3-C-B2-E-303 | Tile Fixer [112 h]; Construction Cost [46530.7] |
| DAM3-C-B8-A-250 | Tiles for Office Area | 2d | 2027-01-11 | 2027-01-12 | DAM3-C-B8-A-220 | Tile Fixer [32 h]; Construction Cost [26867.3] |
| DAM3-C-B8-A-390 | Granite strip | 2d | 2027-01-13 | 2027-01-14 | DAM3-C-B8-A-558, DAM3-C-B8-A-250, DAM3-C-B2-E-203 | Tile Fixer [32 h]; Construction Cost [671.12] |
| DAM3-C-B8-A-420 | Epoxy paint | 2d | 2027-02-21 | 2027-02-23 | DAM3-C-B8-A-340, DAM3-C-B8-A-240 | Painter [112 h]; Construction Cost [115420] |
| 3 | **DOORS & WINDOWS** |  | 2026-09-27 | 2026-11-18 |  |  |
| DAM3-C-B8-A-558 | Skylight fixtures installation | 1d | 2026-09-27 A | 2026-09-30 A | DAM3-C-B8-A-557 | Carperter [16 h]; Construction Cost [6489.89] |
| DAM3-C-B8-A-552 | Window (CW1) | 7d | 2026-10-08 A | 2026-11-12 | DAM3-C-B8-SS-0130 | Carperter [112 h]; Construction Cost [94173.2] |
| DAM3-C-B8-A-553 | Roll up Shutter Door | 1d | 2026-10-19 A | 2026-11-12 | DAM3-C-B8-A-552 | Carperter [16 h]; Construction Cost [68619.2] |
| DAM3-C-B8-A-200 | Supply and install (D5) 1000*2200mm single leaf steel door with door | 1d | 2026-11-12 | 2026-11-14 | DAM3-C-B8-A-553 | Carperter [16 h]; Construction Cost [16016.2] |
| DAM3-C-B8-A-554 | Supply and install (D4) 800*2200 mm single leaf aluminum door with door | 1d | 2026-11-14 | 2026-11-15 | DAM3-C-B8-A-200 | Carperter [16 h]; Construction Cost [22737.8] |
| DAM3-C-B8-A-555 | Supply and install (D7) 1000*2200 mm single leaf aluminum door with door | 1d | 2026-11-15 | 2026-11-16 | DAM3-C-B8-A-554 | Carperter [16 h]; Construction Cost [7811.07] |
| DAM3-C-B8-A-556 | Supply and install (D3) 1000*2200 mm single leaf aluminum door with door | 1d | 2026-11-16 | 2026-11-17 | DAM3-C-B8-A-555 | Carperter [16 h]; Construction Cost [16016.2] |
| DAM3-C-B8-A-557 | Supply and install fire rated 45 min (D2) 1200*2200 mm single leaf steel door | 1d | 2026-11-17 | 2026-11-18 | DAM3-C-B8-A-556 | Carperter [16 h]; Construction Cost [16711.5] |
| 4 | **WATER PROOFING WORKS** |  | 2026-10-05 | 2026-10-08 |  |  |
| DAM3-C-B8-A-370 | Waterproofing membrane for toilets | 4d | 2026-10-05 A | 2026-10-08 A | DAM3-C-B8-M-200, DAM3-C-B8-A-180, DAM3-C-B8-A-558 | General Labour [64 h]; Construction Cost [4879.02] |
| 7 | **METAL WORKS** |  | 2026-07-18 | 2027-01-31 |  |  |
| DAM3-C-B8-A-300 | Galvanised Steel Gratings | 2d | 2026-07-18 A | 2026-07-18 A | DAM3-C-B8-A-292, DAM3-C-B7-E-203, DAM3-C-B7-M-429, DAM3-C-B1-M-330, DAM3-C-B2-M-370, DAM3-C-B2-M-320 | Steel Fixer [32 h]; General Labour [32 h]; Construction Cost [6455.16] |
| DAM3-C-B8-A-292 | Aluminium composite panel | 3d | 2026-10-06 A | 2027-01-31 | DAM3-C-B8-A-291, DAM3-C-B1-E-203, DAM3-C-B1-M-429, DAM3-C-B2-M-330 | Steel Fixer [80 h]; General Labour [80 h]; Construction Cost [175889] |
| DAM3-C-B8-A-290 | Steel Ladder | 2d | 2027-01-16 | 2027-01-17 | DAM3-C-B8-A-390, DAM3-C-B2-M-429 | Steel Fixer [32 h]; General Labour [32 h]; Construction Cost [9839.16] |
| DAM3-C-B8-A-291 | Steel railing works | 4d | 2027-01-18 | 2027-01-21 | DAM3-C-B8-A-290 | Steel Fixer [64 h]; General Labour [64 h]; Construction Cost [1533.98] |
| 8 | **SPECIALTIES** |  | 2027-02-13 | 2027-02-20 |  |  |
| DAM3-C-B8-A-320 | Installation of fittings | 3d | 2027-02-13 | 2027-02-15 | DAM3-C-B8-A-300, DAM3-C-B7-M-330, DAM3-C-B1-M-370, DAM3-C-B1-M-320, DAM3-C-B1-A-340, DAM3-C-B2-A-340 | Plumber [80 h]; Construction Cost [22981.3] |
| DAM3-C-B8-A-570 | Identification sign; ID01 & ID02 | 3d | 2027-02-16 | 2027-02-18 | DAM3-C-B8-A-320, DAM3-C-B7-M-340 | Mason [48 h]; Construction Cost [9630.56] |
| DAM3-C-B8-A-340 | Furniture Installation | 1d | 2027-02-20 | 2027-02-20 | DAM3-C-B8-A-570 | General Labour [16 h]; Mason [16 h]; Construction Cost [12468.8] |
| 3 | **MECHANICAL** |  | 2026-06-15 | 2027-02-18 |  |  |
| 1 | **HVAC** |  | 2026-10-11 | 2027-01-25 |  |  |
| 1 | **FIRST STAGE** |  | 2026-10-11 | 2026-10-15 |  |  |
| DAM3-C-B8-M-140 | Installation of HVAC Ducts | 2d | 2026-10-11 A | 2026-10-15 A | DAM3-C-B8-M-160 | Ductman [32 h]; Construction Cost [149489] |
| DAM3-C-B8-M-170 | Installation of Duct insulation | 2d | 2026-10-11 A | 2026-10-15 A | DAM3-C-B8-M-140 | Ductman [32 h]; Construction Cost [21205.4] |
| 2 | **SECOND STAGE** |  | 2027-01-13 | 2027-01-25 |  |  |
| DAM3-C-B8-M-130 | Installation of Exhaust Fans | 2d | 2027-01-13 | 2027-01-16 | DAM3-C-B8-A-230 | AC Technician [32 h]; Construction Cost [7938.56] |
| DAM3-C-B8-M-160 | Installation of Wall Propeller Type Exhaust Fan | 4d | 2027-01-16 | 2027-01-20 | DAM3-C-B8-M-130 | AC Technician [64 h]; Construction Cost [46831.6] |
| DAM3-C-B8-M-339 | Installation of Diffuser | 2d | 2027-01-20 | 2027-01-23 | DAM3-C-B8-M-170 | Ductman [32 h]; Construction Cost [2144] |
| DAM3-C-B8-M-340 | Supply, install, test and commission door grilles & exhaust louvers | 2d | 2027-01-23 | 2027-01-25 | DAM3-C-B8-M-339 | Ductman [32 h]; Construction Cost [5574.4] |
| 2 | **FIRE FIGHTING SYSTEM** |  | 2026-08-12 | 2027-02-18 |  |  |
| 1 | **FIRST STAGE** |  | 2026-08-12 | 2026-08-16 |  |  |
| DAM3-C-B8-M-300 | Installation of Fire Fighting Pipes (Seamless Black Steel) | 4d | 2026-08-12 A | 2026-08-16 A | DAM3-C-B8-A-230 | Pipe Fitter [112 h]; Construction Cost [72394.8] |
| DAM3-C-B8-M-310 | Installation of Fire Fighting Valve | 5d | 2026-08-15 A | 2026-08-16 A | DAM3-C-B8-M-300 | Pipe Fitter [80 h]; Construction Cost [12199.4] |
| 2 | **SECOND STAGE** |  | 2027-01-25 | 2027-02-18 |  |  |
| DAM3-C-B8-M-370 | Supply, install, test and commission Fire Department Connection(FDC) | 3d | 2027-01-25 | 2027-01-28 | DAM3-C-B8-M-340 | Pipe Fitter [48 h]; Construction Cost [2706.06] |
| DAM3-C-B8-M-320 | Installation of Fire Hose Cabinet | 3d | 2027-02-16 | 2027-02-18 | DAM3-C-B8-M-310, DAM3-C-B2-A-420 | Pipe Fitter [48 h]; Construction Cost [15158.6] |
| 3 | **SEWER AND DRAINAGE SYSTEM** |  | 2026-06-15 | 2027-01-26 |  |  |
| 1 | **FIRST STAGE** |  | 2026-06-15 | 2027-01-12 |  |  |
| DAM3-C-B8-M-200 | Installation of Sanitary Waste / Drainage Pipes | 4d | 2026-06-15 A | 2026-06-20 A | DAM3-C-B8-S-347 | Plumber [64 h]; Construction Cost [18585.1] |
| DAM3-C-B8-M-380 | Installation of Trench drain | 5d | 2026-06-20 A | 2026-06-21 A | DAM3-C-B8-M-220 | Plumber [80 h]; Construction Cost [11508.8] |
| DAM3-C-B8-M-220 | Installation of Floor Drain | 2d | 2027-01-11 | 2027-01-12 | DAM3-C-B8-M-200, DAM3-C-B8-A-220 | Plumber [32 h]; Construction Cost [11056] |
| 2 | **SECOND STAGE** |  | 2026-10-12 | 2027-01-26 |  |  |
| DAM3-C-B8-M-180 | Installation of Electric Water Heater | 2d | 2026-10-12 A | 2026-10-14 A | DAM3-C-B8-M-380 | Plumber [32 h]; Construction Cost [1819.51] |
| DAM3-C-B8-M-190 | Installation of Sanitary Fixture and Accessories | 4d | 2027-01-13 | 2027-01-17 | DAM3-C-B8-M-180 | Plumber [64 h]; Construction Cost [19921.7] |
| DAM3-C-B8-M-210 | Installation of Lavotary /Wash Basin | 2d | 2027-01-18 | 2027-01-19 | DAM3-C-B8-M-180, DAM3-C-B8-M-190 | Plumber [32 h]; Construction Cost [21416.7] |
| DAM3-C-B8-M-270 | Installation of Bib Tap | 2d | 2027-01-20 | 2027-01-21 | DAM3-C-B8-M-190, DAM3-C-B8-M-210 | Plumber [32 h]; Construction Cost [1900.66] |
| DAM3-C-B8-M-428 | Installation of Water Tap | 2d | 2027-01-23 | 2027-01-24 | DAM3-C-B8-M-210, DAM3-C-B8-M-270 | Plumber [32 h]; Construction Cost [2874.14] |
| DAM3-C-B8-M-429 | Installation of Roof Vent Cap | 2d | 2027-01-25 | 2027-01-26 | DAM3-C-B8-M-428 | Pipe Fitter [32 h]; Construction Cost [927.12] |
| 4 | **WATER SUPPLY SYSTEM** |  | 2026-09-05 | 2027-01-17 |  |  |
| 1 | **FIRST STAGE** |  | 2026-09-05 | 2026-09-09 |  |  |
| DAM3-C-B8-M-290 | Installation of Water Supply Pipes | 4d | 2026-09-05 A | 2026-09-08 A | DAM3-C-B8-A-230 | Plumber [64 h]; Construction Cost [23318.4] |
| DAM3-C-B8-M-280 | Installation of Water Supply Valve | 2d | 2026-09-06 A | 2026-09-09 A | DAM3-C-B8-M-290 | Plumber [32 h]; Construction Cost [18274.3] |
| 2 | **SECOND STAGE** |  | 2027-01-13 | 2027-01-17 |  |  |
| DAM3-C-B8-M-330 | Capped connection | 3d | 2027-01-13 | 2027-01-17 | DAM3-C-B8-M-280 | Plumber [80 h]; Construction Cost [278.13] |
| 4 | **ELECTRICAL** |  | 2026-05-19 | 2027-01-28 |  |  |
| 1 | **FIRST STAGE** |  | 2026-05-19 | 2027-01-02 |  |  |
| DAM3-C-B8-E-113 | Installation of Earthing and Grounding | 3d | 2026-05-19 A | 2027-01-02 | DAM3-C-B8-E-223 | Electrician [80 h]; Construction Cost [19646.5] |
| DAM3-C-B8-E-143 | Installation of Conduits and wiring outlets - Fire Alarm System | 4d | 2026-05-20 A | 2026-12-08 | DAM3-C-B8-A-170, DAM3-C-B8-SS-1040 | Electrician [64 h]; Construction Cost [1768.31] |
| DAM3-C-B8-E-183 | Installation of Sleeves & Power outlet | 8d | 2026-05-20 A | 2026-11-22 | DAM3-C-B8-A-170 | Electrician [128 h]; Construction Cost [2920.45] |
| DAM3-C-B8-E-163 | Installation of Conduites for Lighting Fixture | 4d | 2026-09-07 A | 2026-12-17 | DAM3-C-B8-E-133 | Electrician [64 h]; Construction Cost [8462.97] |
| DAM3-C-B8-E-233 | Installation of Wires | 4d | 2026-12-17 | 2026-12-22 | DAM3-C-B8-E-163 | Electrician [64 h]; Construction Cost [16925.9] |
| DAM3-C-B8-E-223 | Installation of LV Cables | 2d | 2026-12-29 | 2026-12-31 | DAM3-C-B8-E-213 | Electrician [64 h]; Construction Cost [36390] |
| 2 | **SECOND STAGE** |  | 2026-10-05 | 2027-01-28 |  |  |
| DAM3-C-B8-E-420 | Installation of Solar power plant | 7d | 2026-10-05 A | 2027-01-28 | DAM3-C-B7-E-420 | Plumber [112 h]; Construction Cost [253269] |
| DAM3-C-B8-E-243 | Installation of LP-1 Panel | 2d | 2026-10-10 A | 2026-10-14 A | DAM3-C-B8-E-193 | Electrician [32 h]; Construction Cost [18403.5] |
| DAM3-C-B8-E-123 | Installation of Fire Alarm Control Panel | 4d | 2026-12-08 | 2026-12-13 | DAM3-C-B8-E-143 | Electrician [64 h]; Construction Cost [19451.4] |
| DAM3-C-B8-E-133 | Installation of Fire Detectors & Accessories | 4d | 2026-12-13 | 2026-12-17 | DAM3-C-B8-E-123 | Electrician [64 h]; Construction Cost [56740.4] |
| DAM3-C-B8-E-153 | Installation of Lighting fixtures | 4d | 2026-12-22 | 2026-12-27 | DAM3-C-B8-E-233 | Electrician [64 h]; Construction Cost [76166.7] |
| DAM3-C-B8-E-193 | Installation of Main Distribution Board | 2d | 2026-12-22 | 2026-12-24 | DAM3-C-B8-E-233 | Electrician [32 h]; Construction Cost [32472.7] |
| DAM3-C-B8-E-410 | Installation of CCTV System | 3d | 2026-12-22 | 2026-12-26 | DAM3-C-B8-E-233 | Plumber [112 h]; Construction Cost [76349.2] |
| DAM3-C-B8-E-253 | Installation of PP-AC panel | 2d | 2026-12-24 | 2026-12-27 | DAM3-C-B8-E-243 | Electrician [32 h]; Construction Cost [21648.5] |
| DAM3-C-B8-E-273 | Installation of Access Control System | 3d | 2026-12-26 | 2026-12-29 | DAM3-C-B8-E-410 | Electrician [80 h]; Construction Cost [27616.9] |
| DAM3-C-B8-E-213 | Installation of Telephone Cabinet | 2d | 2026-12-27 | 2026-12-29 | DAM3-C-B8-E-253, DAM3-C-B8-E-153 | Electrician [32 h]; Construction Cost [26991.1] |
| DAM3-C-B8-E-283 | Monitor Modules for Fire Alarm | 2d | 2026-12-29 | 2026-12-31 | DAM3-C-B8-E-273 | Electrician [32 h]; Construction Cost [3882.38] |
| DAM3-C-B8-E-293 | Line Isolator Modules for Fire Alarm | 2d | 2026-12-31 | 2027-01-03 | DAM3-C-B8-E-283 | Electrician [32 h]; Construction Cost [185.4] |
| DAM3-C-B8-E-303 | Firewarning flash light with sounder; wall mounted, Weather proof | 2d | 2027-01-03 | 2027-01-05 | DAM3-C-B8-E-293 | Electrician [32 h]; Construction Cost [3082.69] |
| DAM3-C-B8-E-173 | Installation of Wiring Devices | 3d | 2027-01-13 | 2027-01-17 | DAM3-C-B8-E-183, DAM3-C-B8-A-230, DAM3-C-B8-E-113 | Electrician [64 h]; Construction Cost [19435.1] |
| DAM3-C-B8-E-203 | Installation of Disconnect Switches | 2d | 2027-01-17 | 2027-01-19 | DAM3-C-B8-E-173 | Electrician [32 h]; Construction Cost [30236] |
| 10 | **BLOCK B9** |  | 2026-02-17 | 2027-02-06 |  |  |
| 1 | **STRUCTURAL** |  | 2026-02-17 | 2026-11-19 |  |  |
| 1 | **FOOTING** |  | 2026-02-17 | 2026-04-23 |  |  |
| DAM3-C-B9-S-150 | Excavation for footings | 4d | 2026-02-17 A | 2026-02-21 A | DAM3-C-B8-S-150 | General Labour [112 h]; Equipment Operator [112 h]; Truck [64 h]; Excavator [64 h]; Mini Roller Compactor [64 h]; Construction Cost [89859.6] |
| DAM3-C-B9-S-6303 | Soil replacement - rock fill | 4d | 2026-03-03 A | 2026-03-07 A | DAM3-C-B9-S-150 | General Labour [256 h]; Truck [64 h]; Mini Roller Compactor [64 h]; Equipment Operator [256 h]; Wheel Loader [64 h]; Construction Cost [179062] |
| DAM3-C-B9-S-6313 | Engineering fill | 4d | 2026-03-09 A | 2026-03-17 A | DAM3-C-B9-S-6303, DAM3-C-B9-S-6303 FF | General Labour [256 h]; Truck [64 h]; Mini Roller Compactor [64 h]; Equipment Operator [256 h]; Wheel Loader [64 h]; Construction Cost [46046.2] |
| DAM3-C-B9-S-101 | Anti Termite Below Footings | 1d | 2026-03-29 A | 2026-03-29 A | DAM3-C-B9-S-6313 | Mason [16 h]; Construction Cost [11905.5] |
| DAM3-C-B9-S-102 | Vapour Barrier for Footings | 1d | 2026-03-29 A | 2026-03-29 A | DAM3-C-B9-S-101 | General Labour [16 h]; Construction Cost [7940.1] |
| DAM3-C-B9-S-103 | Lean Concrete Below Footings | 2d | 2026-03-30 A | 2026-03-30 A | DAM3-C-B9-S-102 | Mason [32 h]; Construction Cost [8229.34] |
| DAM3-C-B9-S-104 | Rebar for Footings | 4d | 2026-04-18 A | 2026-04-20 A | DAM3-C-B9-S-103, DAM3-C-B6-M-510 | Steel Fixer [64 h]; Construction Cost [101845] |
| DAM3-C-B9-S-105 | Formwork for Footings | 4d | 2026-04-19 A | 2026-04-21 A | DAM3-C-B9-S-104 | Carperter [64 h]; Construction Cost [25461.2] |
| DAM3-C-B9-S-106 | Pouring Concrete for Footings | 1d | 2026-04-23 A | 2026-04-23 A | DAM3-C-B9-S-105 | Carperter [16 h]; Mason [16 h]; Steel Fixer [16 h]; Concrete Mixer [8 h]; Equipment Operator [16 h]; Construction Cost [127306] |
| 2 | **COLUMN NECK** |  | 2026-04-21 | 2026-05-14 |  |  |
| DAM3-C-B9-S-257 | Rebar for column neck | 4d | 2026-04-21 A | 2026-04-22 A | DAM3-C-B9-S-106, DAM3-C-B5-M-1130 | Steel Fixer [64 h]; Construction Cost [14919.2] |
| DAM3-C-B9-S-267 | Formwork for column neck | 2d | 2026-04-22 A | 2026-04-23 A | DAM3-C-B9-S-257 | Carperter [32 h]; Construction Cost [9946.13] |
| DAM3-C-B9-S-297 | Pouring Concrete for column neck | 1d | 2026-04-28 A | 2026-04-28 A | DAM3-C-B9-S-267 | Mason [16 h]; Carperter [16 h]; Concrete Mixer [8 h]; Steel Fixer [16 h]; Equipment Operator [16 h]; Construction Cost [24865.3] |
| DAM3-C-B9-S-307 | Damp proof /Bitumin paint on Footings & column neck | 2d | 2026-05-02 A | 2026-05-02 A | DAM3-C-B9-S-297 | Painter [32 h]; Construction Cost [24777.7] |
| DAM3-C-B9-S-367 | Backfilling / Compaction up to Bottom of Grade Beams | 7d | 2026-05-09 A | 2026-05-14 A | DAM3-C-B9-S-307, DAM3-C-B4-M-820 | General Labour [256 h]; Truck [128 h]; Mini Roller Compactor [128 h]; Equipment Operator [256 h]; Wheel Loader [128 h]; Construction Cost [46046.2] |
| 3 | **GRADE BEAM** |  | 2026-05-18 | 2026-06-07 |  |  |
| DAM3-C-B9-S-337 | Vapour barrier for Grade Beams | 2d | 2026-05-18 A | 2026-05-18 A | DAM3-C-B9-S-527 | General Labour [32 h]; Construction Cost [5293.4] |
| DAM3-C-B9-S-338 | Lean Concrete Below Grade Beams | 2d | 2026-05-18 A | 2026-05-18 A | DAM3-C-B9-S-337 | Mason [32 h]; Construction Cost [4431.19] |
| DAM3-C-B9-S-527 | Anti Termite Below Grade Beams | 1d | 2026-05-18 A | 2026-05-18 A | DAM3-C-B9-S-367, DAM3-C-B10-S-382 | Mason [16 h]; Construction Cost [11905.5] |
| DAM3-C-B9-S-339 | Rebar for Grade Beams | 5d | 2026-05-20 A | 2026-05-21 A | DAM3-C-B9-S-338, DAM3-C-B1-M-200 | Steel Fixer [80 h]; Construction Cost [27194.5] |
| DAM3-C-B9-S-341 | Anchor bolts installation | 2d | 2026-05-20 A | 2026-05-23 A | DAM3-C-B9-S-340 SS | Carperter [32 h]; Construction Cost [57238.8] |
| DAM3-C-B9-S-340 | Formwork for Grade Beams | 2d | 2026-05-21 A | 2026-05-24 A | DAM3-C-B9-S-339 | Carperter [32 h]; Construction Cost [6798.61] |
| DAM3-C-B9-S-342 | Pouring Concrete for Grade Beams | 1d | 2026-05-25 A | 2026-05-25 A | DAM3-C-B9-S-340, DAM3-C-B9-S-341, DAM3-C-B7-M-200, DAM3-C-B10-S-6133 | Mason [16 h]; Carperter [16 h]; Concrete Mixer [8 h]; Steel Fixer [16 h]; Equipment Operator [16 h]; Construction Cost [33993.1] |
| DAM3-C-B9-S-347 | Damp proof /Bitumin paint on Grade Beams | 5d | 2026-06-02 A | 2026-06-07 A | DAM3-C-B9-S-342 | Painter [80 h]; Construction Cost [24777.7] |
| 5 | **SLAB ON GRADE** |  | 2026-06-09 | 2026-11-19 |  |  |
| DAM3-C-B9-S-377 | Backfilling / Compaction for Slab on Grade | 7d | 2026-06-09 A | 2026-06-13 A | DAM3-C-B9-S-347, DAM3-C-B8-M-200 | Mini Roller Compactor [128 h]; General Labour [256 h]; Equipment Operator [256 h]; Wheel Loader [128 h]; Truck [128 h]; Construction Cost [23023.1] |
| DAM3-C-B9-S-378 | Anti Termite Treatment below Ground Slab | 1d | 2026-07-22 A | 2026-07-25 A | DAM3-C-B9-S-377 | General Labour [16 h]; Construction Cost [15874.1] |
| DAM3-C-B9-S-379 | Vapour barrier for below Ground Slab | 2d | 2026-07-22 A | 2026-07-25 A | DAM3-C-B9-S-378 | General Labour [32 h]; Construction Cost [13233.5] |
| DAM3-C-B9-S-382 | Pouring Concrete for Ground Slab | 4d | 2026-07-22 A | 2026-07-25 A | DAM3-C-B9-S-379 | Mason [64 h]; Carperter [64 h]; Steel Fixer [64 h]; Concrete Mixer [32 h]; Equipment Operator [64 h]; Construction Cost [344195] |
| DAM3-C-B9-S-517 | Concrete pad | 7d | 2026-11-12 | 2026-11-19 | DAM3-C-B9-A-0150 | Mason [112 h]; Construction Cost [907.11] |
| 4 | **COLUMNS & BEAMS** |  | 2026-05-21 | 2026-09-12 |  |  |
| DAM3-C-B9-S-6101 | Rebar for Tie Beams | 4d | 2026-05-21 A | 2026-06-07 A | DAM3-C-B9-S-5103 | Steel Fixer [64 h]; Construction Cost [7263.64] |
| DAM3-C-B9-S-6102 | Formwork for Tie Beams | 2d | 2026-05-23 A | 2026-06-08 A | DAM3-C-B9-S-6101 | Carperter [32 h]; Construction Cost [1815.91] |
| DAM3-C-B9-S-6103 | Pouring Concrete for Tie Beams | 1d | 2026-05-25 A | 2026-06-09 A | DAM3-C-B9-S-6102 | Mason [16 h]; Carperter [16 h]; Concrete Mixer [32 h]; Steel Fixer [16 h]; Equipment Operator [16 h]; Construction Cost [9079.54] |
| DAM3-C-B9-S-5101 | Rebar for column | 5d | 2026-07-11 A | 2026-07-14 A | DAM3-C-B9-S-377, DAM3-C-B10-M-200, DAM3-C-B9-M-200 | Steel Fixer [112 h]; Construction Cost [20144] |
| DAM3-C-B9-S-5102 | Formwork for column | 4d | 2026-07-14 A | 2026-07-28 A | DAM3-C-B9-S-5101, S001-C-TC-M-100, DAM3-C-B11-M-200 | Carperter [64 h]; Construction Cost [5036.01] |
| DAM3-C-B9-S-5103 | Pouring Concrete for column | 1d | 2026-07-15 A | 2026-07-29 A | DAM3-C-B9-S-5102 | Mason [16 h]; Carperter [16 h]; Concrete Mixer [32 h]; Steel Fixer [16 h]; Equipment Operator [16 h]; Construction Cost [25180.1] |
| DAM3-C-B9-S-6113 | Rebar for Beams | 4d | 2026-08-23 A | 2026-08-26 A | DAM3-C-B9-S-6103 | Steel Fixer [64 h]; Construction Cost [13379.1] |
| DAM3-C-B9-S-6123 | Formwork for Beams | 2d | 2026-09-01 A | 2026-09-05 A | DAM3-C-B9-S-6113, DAM3-C-B9-S-6113 FF | Carperter [32 h]; Construction Cost [3344.77] |
| DAM3-C-B9-S-6133 | Pouring Concrete for Beams | 1d | 2026-09-08 A | 2026-09-12 A | DAM3-C-B9-S-6123, DAM3-C-B9-S-6123 FF | Mason [16 h]; Carperter [16 h]; Concrete Mixer [32 h]; Steel Fixer [16 h]; Equipment Operator [16 h]; Construction Cost [16723.9] |
| 5 | **STRUCTURAL STEEL** |  | 2026-06-16 | 2026-11-19 |  |  |
| DAM3-C-B9-SS-0100 | Installation of columns | 3d | 2026-06-16 A | 2026-06-17 A | DAM3-C-B9-S-382, DAM3-C-B8-SS-0110 SS | Structural Steel Fixer [80 h]; General Labour [80 h]; Equipment Operator [80 h]; Mobile Crane [24 h]; Construction Cost [217508] |
| DAM3-C-B9-SS-0110 | Installation of raft and purlins | 5d | 2026-06-18 A | 2026-06-22 A | DAM3-C-B9-SS-0100, DAM3-C-B9-S-6133 | Structural Steel Fixer [160 h]; General Labour [160 h]; Mobile Crane [56 h]; Equipment Operator [160 h]; Construction Cost [326261] |
| DAM3-C-B9-SS-610 | Intumescent paint to steel works | 7d | 2026-07-05 A | 2026-07-07 A | DAM3-C-B9-SS-0110, S001-C-TC-E-3606 | Painter [112 h]; Construction Cost [317760] |
| DAM3-C-B9-SS-0140 | Installation of roof sheet | 5d | 2026-07-22 A | 2026-08-01 A | DAM3-C-B9-A-0120, DAM3-C-B9-SS-610, DAM3-C-B9-S-6133 | Roof sheet worker [160 h]; General Labour [160 h]; Mobile Crane [40 h]; Equipment Operator [160 h]; Construction Cost [217508] |
| DAM3-C-B9-SS-0130 | Installation of wall sandwich panel | 5d | 2026-09-03 A | 2026-10-05 A | DAM3-C-B9-A-0150 | Sandwich panel worker [112 h]; General Labour [112 h]; Mobile Crane [40 h]; Equipment Operator [112 h]; Construction Cost [326261] |
| DAM3-C-B9-SS-1030 | Steel members for external platform | 7d | 2026-09-21 A | 2026-09-26 A | DAM3-C-B9-SS-620 | Construction Cost [18670.8]; General Labour [112 h]; Mobile Crane [56 h]; Structural Steel Fixer [112 h]; Equipment Operator [112 h] |
| DAM3-C-B9-SS-620 | Steel members for office area | 2d | 2026-09-27 A | 2026-09-29 A | DAM3-C-B9-SS-610, DAM3-C-B9-SS-0110 | Construction Cost [115805]; Structural Steel Fixer [112 h]; Mobile Crane [56 h]; General Labour [112 h]; Equipment Operator [112 h] |
| DAM3-C-B9-SS-1020 | Epoxy paint to steel members at office area | 7d | 2026-11-12 | 2026-11-19 | DAM3-C-B9-SS-620 | Painter [112 h]; Construction Cost [23161] |
| DAM3-C-B9-SS-1040 | Epoxy paint for external platform | 5d | 2026-11-12 | 2026-11-17 | DAM3-C-B9-SS-1030, DAM3-C-B9-SS-1030 FF | Painter [80 h]; Construction Cost [3734.16] |
| 2 | **ARCHITECTURAL** |  | 2026-07-27 | 2027-02-01 |  |  |
| 1 | **MASONARY WORKS** |  | 2026-07-28 | 2026-08-29 |  |  |
| DAM3-C-B9-A-0120 | Block work at factory area | 10d | 2026-07-28 A | 2026-07-30 A | DAM3-C-B9-S-382, DAM3-C-B9-SS-0110 | AAC panel erector [240 h]; General Labour [240 h]; Equipment Operator [240 h]; Mobile Crane [120 h]; Construction Cost [58338.7] |
| DAM3-C-B9-A-0150 | Block work at office area | 5d | 2026-07-30 A | 2026-08-27 A | DAM3-C-B9-SS-0140 SS, DAM3-C-B9-SS-620 | AAC panel erector [160 h]; General Labour [160 h]; Mobile Crane [56 h]; Equipment Operator [160 h]; Construction Cost [6179.18] |
| DAM3-C-B9-A-170 | Block work at toilet area | 5d | 2026-08-02 A | 2026-08-29 A | DAM3-C-B9-A-0150, DAM3-C-B9-SS-1020 | Mason [112 h]; Construction Cost [14436.3] |
| 5 | **WALL FINISHES** |  | 2026-09-17 | 2026-12-01 |  |  |
| DAM3-C-B9-A-180 | Internal Wall Plaster | 5d | 2026-09-17 A | 2026-10-05 A | DAM3-C-B9-A-170, DAM3-C-B9-E-183, DAM3-C-B9-SS-1040, DAM3-C-B9-SS-0130, DAM3-C-B9-S-517 | Mason [240 h]; Construction Cost [48590.2] |
| DAM3-C-B9-A-230 | Paint to Plaster (Primer, Putty & First Coat) | 4d | 2026-10-03 A | 2026-12-01 | DAM3-C-B9-A-250 | Painter [112 h]; Construction Cost [44167.3] |
| 2 | **CIELING FINISHES** |  | 2026-11-25 | 2026-11-28 |  |  |
| DAM3-C-B9-A-240 | Installation of Ceiling Gypsum Board | 3d | 2026-11-25 | 2026-11-28 | DAM3-C-B9-A-220, DAM3-C-B9-S-517 | Carperter [80 h]; Construction Cost [46792.3] |
| 6 | **FLOOR FINISHES** |  | 2026-10-01 | 2027-02-01 |  |  |
| DAM3-C-B9-A-220 | Tiles for Toilet | 4d | 2026-10-01 A | 2026-10-07 A | DAM3-C-B9-A-370 | Tile Fixer [112 h]; Construction Cost [46530.7] |
| DAM3-C-B9-A-250 | Tiles for Office Area | 2d | 2026-11-29 | 2026-11-30 | DAM3-C-B9-A-240 | Tile Fixer [32 h]; Construction Cost [26867.3] |
| DAM3-C-B9-A-390 | Granite strip | 2d | 2026-12-01 | 2026-12-02 | DAM3-C-B9-A-558, DAM3-C-B9-A-250 | Tile Fixer [32 h]; Construction Cost [671.12] |
| DAM3-C-B9-A-420 | Epoxy paint | 4d | 2027-01-27 | 2027-02-01 | DAM3-C-B9-A-340 | Painter [112 h]; Construction Cost [115420] |
| 3 | **DOORS & WINDOWS** |  | 2026-09-30 | 2026-11-21 |  |  |
| DAM3-C-B9-A-558 | Skylight fixtures installation | 1d | 2026-09-30 A | 2026-10-04 A | DAM3-C-B9-A-557 | Carperter [16 h]; Construction Cost [6489.89] |
| DAM3-C-B9-A-552 | Window (CW1) | 7d | 2026-10-10 A | 2026-11-14 | DAM3-C-B9-SS-0130 | Carperter [112 h]; Construction Cost [94173.2] |
| DAM3-C-B9-A-553 | Roll up Shutter Door | 1d | 2026-11-14 | 2026-11-15 | DAM3-C-B9-A-552 | Carperter [16 h]; Construction Cost [68619.2] |
| DAM3-C-B9-A-200 | Supply and install (D5) 1000*2200mm single leaf steel door with door | 1d | 2026-11-15 | 2026-11-16 | DAM3-C-B9-A-553 | Carperter [16 h]; Construction Cost [16016.2] |
| DAM3-C-B9-A-554 | Supply and install (D4) 800*2200 mm single leaf aluminum door with door | 1d | 2026-11-16 | 2026-11-17 | DAM3-C-B9-A-200 | Carperter [16 h]; Construction Cost [22737.8] |
| DAM3-C-B9-A-555 | Supply and install (D7) 1000*2200 mm single leaf aluminum door with door | 1d | 2026-11-17 | 2026-11-18 | DAM3-C-B9-A-554 | Carperter [16 h]; Construction Cost [7811.07] |
| DAM3-C-B9-A-556 | Supply and install (D3) 1000*2200 mm single leaf aluminum door with door | 1d | 2026-11-18 | 2026-11-19 | DAM3-C-B9-A-555 | Carperter [16 h]; Construction Cost [16016.2] |
| DAM3-C-B9-A-557 | Supply and install fire rated 45 min (D2) 1200*2200 mm single leaf steel door | 1d | 2026-11-19 | 2026-11-21 | DAM3-C-B9-A-556 | Carperter [16 h]; Construction Cost [16711.5] |
| 4 | **WATER PROOFING WORKS** |  | 2026-10-10 | 2026-10-13 |  |  |
| DAM3-C-B9-A-370 | Waterproofing membrane for toilets | 4d | 2026-10-10 A | 2026-10-13 A | DAM3-C-B9-M-200, DAM3-C-B9-A-180, DAM3-C-B9-A-558 | General Labour [64 h]; Construction Cost [4879.02] |
| 7 | **METAL WORKS** |  | 2026-07-27 | 2026-12-09 |  |  |
| DAM3-C-B9-A-300 | Galvanised Steel Gratings | 2d | 2026-07-27 A | 2026-07-27 A | DAM3-C-B9-A-292, DAM3-C-B8-E-203 | Steel Fixer [32 h]; General Labour [32 h]; Construction Cost [6455.16] |
| DAM3-C-B9-A-292 | Aluminium composite panel | 3d | 2026-09-29 A | 2026-12-09 | DAM3-C-B9-A-291 | Steel Fixer [80 h]; General Labour [80 h]; Construction Cost [175889] |
| DAM3-C-B9-A-290 | Steel Ladder | 2d | 2026-12-03 | 2026-12-05 | DAM3-C-B9-A-390 | Steel Fixer [32 h]; General Labour [32 h]; Construction Cost [9839.16] |
| DAM3-C-B9-A-291 | Steel railing works | 3d | 2026-12-06 | 2026-12-08 | DAM3-C-B9-A-290 | Steel Fixer [64 h]; General Labour [64 h]; Construction Cost [1533.98] |
| 8 | **SPECIALTIES** |  | 2027-01-19 | 2027-01-27 |  |  |
| DAM3-C-B9-A-320 | Installation of fittings | 3d | 2027-01-19 | 2027-01-23 | DAM3-C-B9-A-300, DAM3-C-B8-M-330 | Plumber [80 h]; Construction Cost [22981.3] |
| DAM3-C-B9-A-570 | Identification sign; ID01 & ID02 | 3d | 2027-01-23 | 2027-01-26 | DAM3-C-B9-A-320 | Mason [48 h]; Construction Cost [9630.56] |
| DAM3-C-B9-A-340 | Furniture Installation | 1d | 2027-01-26 | 2027-01-27 | DAM3-C-B9-A-570 | General Labour [16 h]; Mason [16 h]; Construction Cost [12468.8] |
| 3 | **MECHANICAL** |  | 2026-06-21 | 2026-12-16 |  |  |
| 1 | **HVAC** |  | 2026-10-15 | 2026-12-13 |  |  |
| 1 | **FIRST STAGE** |  | 2026-10-15 | 2026-10-18 |  |  |
| DAM3-C-B9-M-140 | Installation of HVAC Ducts | 2d | 2026-10-15 A | 2026-10-18 A | DAM3-C-B9-M-160 | Ductman [32 h]; Construction Cost [149489] |
| DAM3-C-B9-M-170 | Installation of Duct insulation | 2d | 2026-10-15 A | 2026-10-18 A | DAM3-C-B9-M-140 | Ductman [32 h]; Construction Cost [21205.4] |
| 2 | **SECOND STAGE** |  | 2026-12-01 | 2026-12-13 |  |  |
| DAM3-C-B9-M-130 | Installation of Exhaust Fans | 2d | 2026-12-01 | 2026-12-03 | DAM3-C-B9-A-230 | AC Technician [32 h]; Construction Cost [7938.56] |
| DAM3-C-B9-M-160 | Installation of Wall Propeller Type Exhaust Fan | 4d | 2026-12-03 | 2026-12-08 | DAM3-C-B9-M-130 | AC Technician [64 h]; Construction Cost [46831.6] |
| DAM3-C-B9-M-339 | Installation of Diffuser | 2d | 2026-12-08 | 2026-12-10 | DAM3-C-B9-M-170 | Ductman [32 h]; Construction Cost [2144] |
| DAM3-C-B9-M-340 | Supply, install, test and commission door grilles & exhaust louvers | 2d | 2026-12-10 | 2026-12-13 | DAM3-C-B9-M-339 | Ductman [32 h]; Construction Cost [5574.4] |
| 2 | **FIRE FIGHTING SYSTEM** |  | 2026-08-17 | 2026-12-16 |  |  |
| 1 | **FIRST STAGE** |  | 2026-08-17 | 2026-08-23 |  |  |
| DAM3-C-B9-M-300 | Installation of Fire Fighting Pipes (Seamless Black Steel) | 5d | 2026-08-17 A | 2026-08-22 A | DAM3-C-B9-A-230 | Pipe Fitter [112 h]; Construction Cost [72394.8] |
| DAM3-C-B9-M-310 | Installation of Fire Fighting Valve | 5d | 2026-08-17 A | 2026-08-23 A | DAM3-C-B9-M-300 | Pipe Fitter [80 h]; Construction Cost [12199.4] |
| 2 | **SECOND STAGE** |  | 2026-12-01 | 2026-12-16 |  |  |
| DAM3-C-B9-M-320 | Installation of Fire Hose Cabinet | 3d | 2026-12-01 | 2026-12-05 | DAM3-C-B9-M-310 | Pipe Fitter [48 h]; Construction Cost [15158.6] |
| DAM3-C-B9-M-370 | Supply, install, test and commission Fire Department Connection(FDC) | 3d | 2026-12-13 | 2026-12-16 | DAM3-C-B9-M-340 | Pipe Fitter [48 h]; Construction Cost [2706.06] |
| 3 | **SEWER AND DRAINAGE SYSTEM** |  | 2026-06-21 | 2026-12-10 |  |  |
| 1 | **FIRST STAGE** |  | 2026-06-21 | 2026-11-26 |  |  |
| DAM3-C-B9-M-200 | Installation of Sanitary Waste / Drainage Pipes | 4d | 2026-06-21 A | 2026-06-24 A | DAM3-C-B9-S-347 | Plumber [64 h]; Construction Cost [18585.1] |
| DAM3-C-B9-M-380 | Installation of Trench drain | 5d | 2026-06-22 A | 2026-06-24 A | DAM3-C-B9-M-220 | Plumber [80 h]; Construction Cost [11508.8] |
| DAM3-C-B9-M-220 | Installation of Floor Drain | 2d | 2026-11-25 | 2026-11-26 | DAM3-C-B9-M-200, DAM3-C-B9-A-220 | Plumber [32 h]; Construction Cost [11056] |
| 2 | **SECOND STAGE** |  | 2026-10-18 | 2026-12-10 |  |  |
| DAM3-C-B9-M-180 | Installation of Electric Water Heater | 2d | 2026-10-18 A | 2026-10-19 A | DAM3-C-B9-M-380 | Plumber [32 h]; Construction Cost [1819.51] |
| DAM3-C-B9-M-190 | Installation of Sanitary Fixture and Accessories | 4d | 2026-11-28 | 2026-12-01 | DAM3-C-B9-M-180 | Plumber [64 h]; Construction Cost [19921.7] |
| DAM3-C-B9-M-210 | Installation of Lavotary /Wash Basin | 2d | 2026-12-02 | 2026-12-03 | DAM3-C-B9-M-180, DAM3-C-B9-M-190 | Plumber [32 h]; Construction Cost [21416.7] |
| DAM3-C-B9-M-270 | Installation of Bib Tap | 2d | 2026-12-05 | 2026-12-06 | DAM3-C-B9-M-190, DAM3-C-B9-M-210 | Plumber [32 h]; Construction Cost [1900.66] |
| DAM3-C-B9-M-428 | Installation of Water Tap | 2d | 2026-12-07 | 2026-12-08 | DAM3-C-B9-M-210, DAM3-C-B9-M-270 | Plumber [32 h]; Construction Cost [2874.14] |
| DAM3-C-B9-M-429 | Installation of Roof Vent Cap | 2d | 2026-12-09 | 2026-12-10 | DAM3-C-B9-M-428 | Pipe Fitter [32 h]; Construction Cost [927.12] |
| 4 | **WATER SUPPLY SYSTEM** |  | 2026-09-14 | 2026-12-07 |  |  |
| 1 | **FIRST STAGE** |  | 2026-09-14 | 2026-09-19 |  |  |
| DAM3-C-B9-M-290 | Installation of Water Supply Pipes | 4d | 2026-09-14 A | 2026-09-19 A | DAM3-C-B9-A-230 | Plumber [64 h]; Construction Cost [23318.4] |
| DAM3-C-B9-M-280 | Installation of Water Supply Valve | 2d | 2026-09-15 A | 2026-09-19 A | DAM3-C-B9-M-290 | Plumber [32 h]; Construction Cost [18274.3] |
| 2 | **SECOND STAGE** |  | 2026-12-01 | 2026-12-07 |  |  |
| DAM3-C-B9-M-330 | Capped connection | 5d | 2026-12-01 | 2026-12-07 | DAM3-C-B9-M-280 | Plumber [80 h]; Construction Cost [278.13] |
| 4 | **ELECTRICAL** |  | 2026-05-20 | 2027-02-06 |  |  |
| 1 | **FIRST STAGE** |  | 2026-05-20 | 2026-12-19 |  |  |
| DAM3-C-B9-E-113 | Installation of Earthing and Grounding | 3d | 2026-05-20 A | 2026-12-19 | DAM3-C-B9-E-223 | Electrician [80 h]; Construction Cost [19646.5] |
| DAM3-C-B9-E-143 | Installation of Conduits and wiring outlets - Fire Alarm System | 4d | 2026-05-21 A | 2026-11-22 | DAM3-C-B9-A-170 | Electrician [64 h]; Construction Cost [1768.31] |
| DAM3-C-B9-E-183 | Installation of Sleeves & Power outlet | 8d | 2026-05-21 A | 2026-11-24 | DAM3-C-B9-A-170 | Electrician [128 h]; Construction Cost [2920.45] |
| DAM3-C-B9-E-163 | Installation of Conduites for Lighting Fixture | 4d | 2026-09-08 A | 2026-12-02 | DAM3-C-B9-E-133 | Electrician [64 h]; Construction Cost [8462.97] |
| DAM3-C-B9-E-233 | Installation of Wires | 4d | 2026-12-02 | 2026-12-07 | DAM3-C-B9-E-163 | Electrician [64 h]; Construction Cost [16925.9] |
| DAM3-C-B9-E-223 | Installation of LV Cables | 4d | 2026-12-14 | 2026-12-19 | DAM3-C-B9-E-213 | Electrician [64 h]; Construction Cost [36390] |
| 2 | **SECOND STAGE** |  | 2026-10-06 | 2027-02-06 |  |  |
| DAM3-C-B9-E-420 | Installation of Solar power plant | 8d | 2026-10-06 A | 2027-02-06 | DAM3-C-B8-E-420 | Plumber [112 h]; Construction Cost [253269] |
| DAM3-C-B9-E-243 | Installation of LP-1 Panel | 2d | 2026-10-10 A | 2026-10-14 A | DAM3-C-B9-E-193 | Electrician [32 h]; Construction Cost [18403.5] |
| DAM3-C-B9-E-123 | Installation of Fire Alarm Control Panel | 4d | 2026-11-23 | 2026-11-26 | DAM3-C-B9-E-143 | Electrician [64 h]; Construction Cost [19451.4] |
| DAM3-C-B9-E-133 | Installation of Fire Detectors & Accessories | 4d | 2026-11-28 | 2026-12-01 | DAM3-C-B9-E-123 | Electrician [64 h]; Construction Cost [56740.4] |
| DAM3-C-B9-E-173 | Installation of Wiring Devices | 4d | 2026-12-01 | 2026-12-06 | DAM3-C-B9-E-183, DAM3-C-B9-A-230 | Electrician [64 h]; Construction Cost [19435.1] |
| DAM3-C-B9-E-203 | Installation of Disconnect Switches | 2d | 2026-12-06 | 2026-12-08 | DAM3-C-B9-E-173 | Electrician [32 h]; Construction Cost [30236] |
| DAM3-C-B9-E-153 | Installation of Lighting fixtures | 4d | 2026-12-07 | 2026-12-12 | DAM3-C-B9-E-233 | Electrician [64 h]; Construction Cost [76166.7] |
| DAM3-C-B9-E-193 | Installation of Main Distribution Board | 2d | 2026-12-07 | 2026-12-09 | DAM3-C-B9-E-233 | Electrician [32 h]; Construction Cost [32472.7] |
| DAM3-C-B9-E-410 | Installation of CCTV System | 5d | 2026-12-07 | 2026-12-13 | DAM3-C-B9-E-233 | Plumber [112 h]; Construction Cost [76349.2] |
| DAM3-C-B9-E-253 | Installation of PP-AC panel | 2d | 2026-12-09 | 2026-12-12 | DAM3-C-B9-E-243 | Electrician [32 h]; Construction Cost [21648.5] |
| DAM3-C-B9-E-213 | Installation of Telephone Cabinet | 2d | 2026-12-12 | 2026-12-14 | DAM3-C-B9-E-253 | Electrician [32 h]; Construction Cost [26991.1] |
| DAM3-C-B9-E-273 | Installation of Access Control System | 5d | 2026-12-13 | 2026-12-19 | DAM3-C-B9-E-410 | Electrician [80 h]; Construction Cost [27616.9] |
| DAM3-C-B9-E-283 | Monitor Modules for Fire Alarm | 2d | 2026-12-19 | 2026-12-21 | DAM3-C-B9-E-273 | Electrician [32 h]; Construction Cost [3882.38] |
| DAM3-C-B9-E-293 | Line Isolator Modules for Fire Alarm | 2d | 2026-12-21 | 2026-12-23 | DAM3-C-B9-E-283 | Electrician [32 h]; Construction Cost [185.4] |
| DAM3-C-B9-E-303 | Firewarning flash light with sounder; wall mounted, Weather proof | 2d | 2026-12-23 | 2026-12-26 | DAM3-C-B9-E-293 | Electrician [32 h]; Construction Cost [3082.69] |
| 11 | **BLOCK B10** |  | 2026-02-18 | 2027-02-10 |  |  |
| 1 | **STRUCTURAL** |  | 2026-02-18 | 2026-11-19 |  |  |
| 1 | **FOOTING** |  | 2026-02-18 | 2026-04-28 |  |  |
| DAM3-C-B10-S-150 | Excavation for footings | 4d | 2026-02-18 A | 2026-03-03 A | DAM3-C-B9-S-150 | General Labour [112 h]; Equipment Operator [112 h]; Truck [64 h]; Excavator [64 h]; Mini Roller Compactor [64 h]; Construction Cost [89859.6] |
| DAM3-C-B10-S-6323 | Soil replacement - rock fill | 4d | 2026-03-07 A | 2026-03-11 A | DAM3-C-B10-S-150 | General Labour [256 h]; Truck [64 h]; Mini Roller Compactor [64 h]; Equipment Operator [256 h]; Wheel Loader [64 h]; Construction Cost [179062] |
| DAM3-C-B10-S-6333 | Engineering fill | 4d | 2026-03-18 A | 2026-03-31 A | DAM3-C-B10-S-6323, DAM3-C-B10-S-6323 FF | General Labour [256 h]; Truck [64 h]; Mini Roller Compactor [64 h]; Equipment Operator [256 h]; Wheel Loader [64 h]; Construction Cost [46046.2] |
| DAM3-C-B10-S-101 | Anti Termite Below Footings | 1d | 2026-04-01 A | 2026-04-01 A | DAM3-C-B10-S-6333 | Mason [16 h]; Construction Cost [11905.5] |
| DAM3-C-B10-S-102 | Vapour Barrier for Footings | 1d | 2026-04-01 A | 2026-04-01 A | DAM3-C-B10-S-101 | General Labour [16 h]; Construction Cost [7940.1] |
| DAM3-C-B10-S-103 | Lean Concrete Below Footings | 2d | 2026-04-01 A | 2026-04-01 A | DAM3-C-B10-S-102, DAM3-E-SS-C-890, DAM3-E-SS-M-660, DAM3-E-SS-E-990, DAM3-E-SS-EX-760 | Mason [32 h]; Construction Cost [8229.34] |
| DAM3-C-B10-S-104 | Rebar for Footings | 4d | 2026-04-23 A | 2026-04-23 A | DAM3-C-B10-S-103 | Steel Fixer [64 h]; Construction Cost [101845] |
| DAM3-C-B10-S-105 | Formwork for Footings | 4d | 2026-04-23 A | 2026-04-25 A | DAM3-C-B10-S-104 | Carperter [64 h]; Construction Cost [25461.2] |
| DAM3-C-B10-S-106 | Pouring Concrete for Footings | 1d | 2026-04-28 A | 2026-04-28 A | DAM3-C-B10-S-105 | Carperter [16 h]; Mason [16 h]; Steel Fixer [16 h]; Concrete Mixer [8 h]; Equipment Operator [16 h]; Construction Cost [127306] |
| 2 | **COLUMN NECK** |  | 2026-04-26 | 2026-05-20 |  |  |
| DAM3-C-B10-S-257 | Rebar for column neck | 4d | 2026-04-26 A | 2026-04-27 A | DAM3-C-B10-S-106 | Steel Fixer [64 h]; Construction Cost [14919.2] |
| DAM3-C-B10-S-267 | Formwork for column neck | 2d | 2026-04-27 A | 2026-05-04 A | DAM3-C-B10-S-257 | Carperter [32 h]; Construction Cost [9946.13] |
| DAM3-C-B10-S-297 | Pouring Concrete for column neck | 1d | 2026-05-02 A | 2026-05-05 A | DAM3-C-B10-S-267 | Mason [16 h]; Carperter [16 h]; Concrete Mixer [8 h]; Steel Fixer [16 h]; Equipment Operator [16 h]; Construction Cost [24865.3] |
| DAM3-C-B10-S-307 | Damp proof /Bitumin paint on Footings & column neck | 2d | 2026-05-05 A | 2026-05-09 A | DAM3-C-B10-S-297 | Painter [32 h]; Construction Cost [24777.7] |
| DAM3-C-B10-S-367 | Backfilling / Compaction up to Bottom of Grade Beams | 7d | 2026-05-13 A | 2026-05-20 A | DAM3-C-B10-S-307 | General Labour [256 h]; Truck [128 h]; Mini Roller Compactor [128 h]; Equipment Operator [256 h]; Wheel Loader [128 h]; Construction Cost [46046.2] |
| 3 | **GRADE BEAM** |  | 2026-05-25 | 2026-06-15 |  |  |
| DAM3-C-B10-S-337 | Vapour barrier for Grade Beams | 2d | 2026-05-25 A | 2026-05-25 A | DAM3-C-B10-S-527 | General Labour [32 h]; Construction Cost [5293.4] |
| DAM3-C-B10-S-338 | Lean Concrete Below Grade Beams | 2d | 2026-05-25 A | 2026-05-25 A | DAM3-C-B10-S-337 | Mason [32 h]; Construction Cost [4431.19] |
| DAM3-C-B10-S-527 | Anti Termite Below Grade Beams | 1d | 2026-05-25 A | 2026-05-25 A | DAM3-C-B10-S-367 | Mason [16 h]; Construction Cost [11905.5] |
| DAM3-C-B10-S-339 | Rebar for Grade Beams | 5d | 2026-05-31 A | 2026-06-03 A | DAM3-C-B10-S-338 | Steel Fixer [80 h]; Construction Cost [27194.5] |
| DAM3-C-B10-S-341 | Anchor bolts installation | 2d | 2026-06-02 A | 2026-06-03 A | DAM3-C-B10-S-340 SS | Carperter [32 h]; Construction Cost [57238.8] |
| DAM3-C-B10-S-340 | Formwork for Grade Beams | 2d | 2026-06-07 A | 2026-06-09 A | DAM3-C-B10-S-339 | Carperter [32 h]; Construction Cost [6798.61] |
| DAM3-C-B10-S-342 | Pouring Concrete for Grade Beams | 1d | 2026-06-09 A | 2026-06-09 A | DAM3-C-B10-S-340, DAM3-C-B10-S-341 | Mason [16 h]; Carperter [16 h]; Concrete Mixer [8 h]; Steel Fixer [16 h]; Equipment Operator [16 h]; Construction Cost [33993.1] |
| DAM3-C-B10-S-347 | Damp proof /Bitumin paint on Grade Beams | 5d | 2026-06-14 A | 2026-06-15 A | DAM3-C-B10-S-342 | Painter [80 h]; Construction Cost [24777.7] |
| 5 | **SLAB ON GRADE** |  | 2026-06-16 | 2026-11-19 |  |  |
| DAM3-C-B10-S-377 | Backfilling / Compaction for Slab on Grade | 7d | 2026-06-16 A | 2026-06-22 A | DAM3-C-B10-S-347 | Mini Roller Compactor [128 h]; General Labour [256 h]; Equipment Operator [256 h]; Wheel Loader [128 h]; Truck [128 h]; Construction Cost [23023.1] |
| DAM3-C-B10-S-378 | Anti Termite Treatment below Ground Slab | 1d | 2026-07-18 A | 2026-07-21 A | DAM3-C-B10-S-377 | General Labour [16 h]; Construction Cost [15874.1] |
| DAM3-C-B10-S-379 | Vapour barrier for below Ground Slab | 2d | 2026-07-18 A | 2026-07-21 A | DAM3-C-B10-S-378 | General Labour [32 h]; Construction Cost [13233.5] |
| DAM3-C-B10-S-382 | Pouring Concrete for Ground Slab | 4d | 2026-07-18 A | 2026-07-21 A | DAM3-C-B10-S-379 | Mason [64 h]; Carperter [64 h]; Steel Fixer [64 h]; Concrete Mixer [32 h]; Equipment Operator [64 h]; Construction Cost [344195] |
| DAM3-C-B10-S-517 | Concrete pad | 7d | 2026-11-12 | 2026-11-19 | DAM3-C-B10-A-0150 | Mason [112 h]; Construction Cost [907.11] |
| 4 | **COLUMNS & BEAMS** |  | 2026-06-01 | 2026-09-16 |  |  |
| DAM3-C-B10-S-6101 | Rebar for Tie Beams | 4d | 2026-06-01 A | 2026-06-03 A | DAM3-C-B10-S-5103 | Steel Fixer [64 h]; Construction Cost [7263.64] |
| DAM3-C-B10-S-6102 | Formwork for Tie Beams | 2d | 2026-06-07 A | 2026-06-08 A | DAM3-C-B10-S-6101 | Carperter [32 h]; Construction Cost [1815.91] |
| DAM3-C-B10-S-6103 | Pouring Concrete for Tie Beams | 1d | 2026-06-09 A | 2026-06-09 A | DAM3-C-B10-S-6102 | Mason [16 h]; Carperter [16 h]; Concrete Mixer [32 h]; Steel Fixer [16 h]; Equipment Operator [16 h]; Construction Cost [9079.54] |
| DAM3-C-B10-S-5101 | Rebar for column | 5d | 2026-07-12 A | 2026-07-16 A | DAM3-C-B10-S-377, DAM3-C-B10-M-200 | Steel Fixer [112 h]; Construction Cost [20144] |
| DAM3-C-B10-S-5102 | Formwork for column | 4d | 2026-08-04 A | 2026-08-06 A | DAM3-C-B10-S-5101 | Carperter [64 h]; Construction Cost [5036.01] |
| DAM3-C-B10-S-5103 | Pouring Concrete for column | 1d | 2026-08-05 A | 2026-08-09 A | DAM3-C-B10-S-5102 | Mason [16 h]; Carperter [16 h]; Concrete Mixer [32 h]; Steel Fixer [16 h]; Equipment Operator [16 h]; Construction Cost [25180.1] |
| DAM3-C-B10-S-6113 | Rebar for Beams | 4d | 2026-08-31 A | 2026-09-02 A | DAM3-C-B10-S-6103 | Steel Fixer [64 h]; Construction Cost [13379.1] |
| DAM3-C-B10-S-6123 | Formwork for Beams | 2d | 2026-09-08 A | 2026-09-15 A | DAM3-C-B10-S-6113 | Carperter [32 h]; Construction Cost [3344.77] |
| DAM3-C-B10-S-6133 | Pouring Concrete for Beams | 1d | 2026-09-12 A | 2026-09-16 A | DAM3-C-B10-S-6123 | Mason [16 h]; Carperter [16 h]; Concrete Mixer [32 h]; Steel Fixer [16 h]; Equipment Operator [16 h]; Construction Cost [16723.9] |
| 5 | **STRUCTURAL STEEL** |  | 2026-06-25 | 2026-11-17 |  |  |
| DAM3-C-B10-SS-0100 | Installation of columns | 3d | 2026-06-25 A | 2026-06-25 A | DAM3-C-B10-S-382, DAM3-C-B9-SS-0110 SS | Structural Steel Fixer [80 h]; General Labour [80 h]; Equipment Operator [80 h]; Mobile Crane [24 h]; Construction Cost [217508] |
| DAM3-C-B10-SS-0110 | Installation of raft and purlins | 5d | 2026-06-25 A | 2026-06-28 A | DAM3-C-B10-SS-0100, DAM3-C-B10-S-6133 | Structural Steel Fixer [160 h]; General Labour [160 h]; Mobile Crane [56 h]; Equipment Operator [160 h]; Construction Cost [326261] |
| DAM3-C-B10-SS-610 | Intumescent paint to steel works | 7d | 2026-07-07 A | 2026-08-11 A | DAM3-C-B10-SS-0110 | Painter [112 h]; Construction Cost [317760] |
| DAM3-C-B10-SS-0140 | Installation of roof sheet | 3d | 2026-08-13 A | 2026-08-16 A | DAM3-C-B10-A-0120, DAM3-C-B10-SS-610, DAM3-C-B10-S-6133 | Roof sheet worker [160 h]; General Labour [160 h]; Mobile Crane [40 h]; Equipment Operator [160 h]; Construction Cost [217508] |
| DAM3-C-B10-SS-0130 | Installation of wall sandwich panel | 5d | 2026-09-03 A | 2026-09-30 A | DAM3-C-B10-A-0150, DAM3-C-B10-SS-1020 | Sandwich panel worker [112 h]; General Labour [112 h]; Mobile Crane [40 h]; Equipment Operator [112 h]; Construction Cost [326261] |
| DAM3-C-B10-SS-1030 | Steel members for external platform | 7d | 2026-09-26 A | 2026-10-06 A | DAM3-C-B10-SS-620 | Construction Cost [18670.8]; General Labour [112 h]; Mobile Crane [56 h]; Structural Steel Fixer [112 h]; Equipment Operator [112 h] |
| DAM3-C-B10-SS-620 | Steel members for office area | 4d | 2026-09-29 A | 2026-09-30 A | DAM3-C-B10-SS-610, DAM3-C-B10-SS-0110 | Construction Cost [115805]; Structural Steel Fixer [112 h]; Mobile Crane [56 h]; General Labour [112 h]; Equipment Operator [112 h] |
| DAM3-C-B10-SS-1020 | Epoxy paint to steel members at office area | 4d | 2026-11-12 | 2026-11-16 | DAM3-C-B10-SS-620 | Painter [112 h]; Construction Cost [23161] |
| DAM3-C-B10-SS-1040 | Epoxy paint for external platform | 5d | 2026-11-12 | 2026-11-17 | DAM3-C-B10-SS-1030, DAM3-C-B10-SS-1030 FF | Painter [80 h]; Construction Cost [3734.16] |
| 2 | **ARCHITECTURAL** |  | 2026-07-23 | 2026-12-26 |  |  |
| 1 | **MASONARY WORKS** |  | 2026-08-02 | 2026-09-03 |  |  |
| DAM3-C-B10-A-0120 | Block work at factory area | 3d | 2026-08-02 A | 2026-08-23 A | DAM3-C-B10-S-382, DAM3-C-B10-SS-0110 | AAC panel erector [240 h]; General Labour [240 h]; Equipment Operator [240 h]; Mobile Crane [120 h]; Construction Cost [58338.7] |
| DAM3-C-B10-A-0150 | Block work at office area | 4d | 2026-08-08 A | 2026-09-01 A | DAM3-C-B10-SS-0140 SS, DAM3-C-B10-SS-620 | AAC panel erector [160 h]; General Labour [160 h]; Mobile Crane [56 h]; Equipment Operator [160 h]; Construction Cost [6179.18] |
| DAM3-C-B10-A-170 | Block work at toilet area | 5d | 2026-08-11 A | 2026-09-03 A | DAM3-C-B10-A-0150 | Mason [112 h]; Construction Cost [14436.3] |
| 5 | **WALL FINISHES** |  | 2026-09-21 | 2026-12-03 |  |  |
| DAM3-C-B10-A-180 | Internal Wall Plaster | 5d | 2026-09-21 A | 2026-10-12 A | DAM3-C-B10-A-170, DAM3-C-B10-E-183, DAM3-C-B10-SS-1040, DAM3-C-B10-S-517 | Mason [240 h]; Construction Cost [48590.2] |
| DAM3-C-B10-A-230 | Paint to Plaster (Primer, Putty & First Coat) | 5d | 2026-10-08 A | 2026-12-03 | DAM3-C-B10-A-250 | Painter [112 h]; Construction Cost [44167.3] |
| 2 | **CIELING FINISHES** |  | 2026-12-12 | 2026-12-16 |  |  |
| DAM3-C-B10-A-240 | Installation of Ceiling Gypsum Board | 4d | 2026-12-12 | 2026-12-16 | DAM3-C-B10-A-220, DAM3-C-B10-S-517, DAM3-C-B9-E-153 | Carperter [80 h]; Construction Cost [46792.3] |
| 6 | **FLOOR FINISHES** |  | 2026-10-11 | 2026-12-26 |  |  |
| DAM3-C-B10-A-220 | Tiles for Toilet | 5d | 2026-10-11 A | 2026-10-18 A | DAM3-C-B10-A-370 | Tile Fixer [112 h]; Construction Cost [46530.7] |
| DAM3-C-B10-A-250 | Tiles for Office Area | 2d | 2026-11-30 | 2026-12-02 | DAM3-C-B10-A-220 | Tile Fixer [32 h]; Construction Cost [26867.3] |
| DAM3-C-B10-A-390 | Granite strip | 2d | 2026-12-02 | 2026-12-05 | DAM3-C-B10-A-558, DAM3-C-B10-A-250 | Tile Fixer [32 h]; Construction Cost [671.12] |
| DAM3-C-B10-A-420 | Epoxy paint | 3d | 2026-12-22 | 2026-12-26 | DAM3-C-B10-A-340, DAM3-C-B10-A-240 | Painter [112 h]; Construction Cost [115420] |
| 3 | **DOORS & WINDOWS** |  | 2026-10-04 | 2026-11-25 |  |  |
| DAM3-C-B10-A-558 | Skylight fixtures installation | 1d | 2026-10-04 A | 2026-10-06 A | DAM3-C-B10-A-557 | Carperter [16 h]; Construction Cost [6489.89] |
| DAM3-C-B10-A-552 | Window (CW1) | 7d | 2026-10-14 A | 2026-11-18 | DAM3-C-B10-SS-0130 | Carperter [112 h]; Construction Cost [94173.2] |
| DAM3-C-B10-A-553 | Roll up Shutter Door | 1d | 2026-11-18 | 2026-11-19 | DAM3-C-B10-A-552 | Carperter [16 h]; Construction Cost [68619.2] |
| DAM3-C-B10-A-200 | Supply and install (D5) 1000*2200mm single leaf steel door with door | 1d | 2026-11-19 | 2026-11-21 | DAM3-C-B10-A-553 | Carperter [16 h]; Construction Cost [16016.2] |
| DAM3-C-B10-A-554 | Supply and install (D4) 800*2200 mm single leaf aluminum door with door | 1d | 2026-11-21 | 2026-11-22 | DAM3-C-B10-A-200 | Carperter [16 h]; Construction Cost [22737.8] |
| DAM3-C-B10-A-555 | Supply and install (D7) 1000*2200 mm single leaf aluminum door with door | 1d | 2026-11-22 | 2026-11-23 | DAM3-C-B10-A-554 | Carperter [16 h]; Construction Cost [7811.07] |
| DAM3-C-B10-A-556 | Supply and install (D3) 1000*2200 mm single leaf aluminum door with door | 1d | 2026-11-23 | 2026-11-24 | DAM3-C-B10-A-555 | Carperter [16 h]; Construction Cost [16016.2] |
| DAM3-C-B10-A-557 | Supply and install fire rated 45 min (D2) 1200*2200 mm single leaf steel door | 1d | 2026-11-24 | 2026-11-25 | DAM3-C-B10-A-556 | Carperter [16 h]; Construction Cost [16711.5] |
| 4 | **WATER PROOFING WORKS** |  | 2026-11-25 | 2026-11-30 |  |  |
| DAM3-C-B10-A-370 | Waterproofing membrane for toilets | 4d | 2026-11-25 | 2026-11-30 | DAM3-C-B10-M-200, DAM3-C-B10-A-180, DAM3-C-B10-A-558 | General Labour [64 h]; Construction Cost [4879.02] |
| 7 | **METAL WORKS** |  | 2026-07-23 | 2026-12-14 |  |  |
| DAM3-C-B10-A-300 | Galvanised Steel Gratings | 2d | 2026-07-23 A | 2026-07-23 A | DAM3-C-B10-A-292 | Steel Fixer [32 h]; General Labour [32 h]; Construction Cost [6455.16] |
| DAM3-C-B10-A-292 | Aluminium composite panel | 3d | 2026-10-14 A | 2026-12-14 | DAM3-C-B10-A-291 | Steel Fixer [80 h]; General Labour [80 h]; Construction Cost [175889] |
| DAM3-C-B10-A-290 | Steel Ladder | 2d | 2026-12-05 | 2026-12-07 | DAM3-C-B10-A-390 | Steel Fixer [32 h]; General Labour [32 h]; Construction Cost [9839.16] |
| DAM3-C-B10-A-291 | Steel railing works | 3d | 2026-12-07 | 2026-12-10 | DAM3-C-B10-A-290 | Steel Fixer [64 h]; General Labour [64 h]; Construction Cost [1533.98] |
| 8 | **SPECIALTIES** |  | 2026-12-14 | 2026-12-22 |  |  |
| DAM3-C-B10-A-320 | Installation of fittings | 3d | 2026-12-14 | 2026-12-17 | DAM3-C-B10-A-300, DAM3-C-B9-M-429 | Plumber [80 h]; Construction Cost [22981.3] |
| DAM3-C-B10-A-570 | Identification sign; ID01 & ID02 | 3d | 2026-12-17 | 2026-12-21 | DAM3-C-B10-A-320 | Mason [48 h]; Construction Cost [9630.56] |
| DAM3-C-B10-A-340 | Furniture Installation | 1d | 2026-12-21 | 2026-12-22 | DAM3-C-B10-A-570 | General Labour [16 h]; Mason [16 h]; Construction Cost [12468.8] |
| 3 | **MECHANICAL** |  | 2026-07-01 | 2026-12-19 |  |  |
| 1 | **HVAC** |  | 2026-10-18 | 2026-12-15 |  |  |
| 1 | **FIRST STAGE** |  | 2026-10-18 | 2026-10-20 |  |  |
| DAM3-C-B10-M-140 | Installation of HVAC Ducts | 2d | 2026-10-18 A | 2026-10-20 A | DAM3-C-B10-M-160 | Ductman [32 h]; Construction Cost [149489] |
| DAM3-C-B10-M-170 | Installation of Duct insulation | 2d | 2026-10-18 A | 2026-10-20 A | DAM3-C-B10-M-140 | Ductman [32 h]; Construction Cost [21205.4] |
| 2 | **SECOND STAGE** |  | 2026-12-03 | 2026-12-15 |  |  |
| DAM3-C-B10-M-130 | Installation of Exhaust Fans | 2d | 2026-12-03 | 2026-12-06 | DAM3-C-B10-A-230 | AC Technician [32 h]; Construction Cost [7938.56] |
| DAM3-C-B10-M-160 | Installation of Wall Propeller Type Exhaust Fan | 4d | 2026-12-06 | 2026-12-10 | DAM3-C-B10-M-130 | AC Technician [64 h]; Construction Cost [46831.6] |
| DAM3-C-B10-M-339 | Installation of Diffuser | 2d | 2026-12-10 | 2026-12-13 | DAM3-C-B10-M-170 | Ductman [32 h]; Construction Cost [2144] |
| DAM3-C-B10-M-340 | Supply, install, test and commission door grilles & exhaust louvers | 2d | 2026-12-13 | 2026-12-15 | DAM3-C-B10-M-339 | Ductman [32 h]; Construction Cost [5574.4] |
| 2 | **FIRE FIGHTING SYSTEM** |  | 2026-08-23 | 2026-12-19 |  |  |
| 1 | **FIRST STAGE** |  | 2026-08-23 | 2026-08-29 |  |  |
| DAM3-C-B10-M-300 | Installation of Fire Fighting Pipes (Seamless Black Steel) | 7d | 2026-08-23 A | 2026-08-27 A | DAM3-C-B10-A-230 | Pipe Fitter [112 h]; Construction Cost [72394.8] |
| DAM3-C-B10-M-310 | Installation of Fire Fighting Valve | 3d | 2026-08-25 A | 2026-08-29 A | DAM3-C-B10-M-300 | Pipe Fitter [80 h]; Construction Cost [12199.4] |
| 2 | **SECOND STAGE** |  | 2026-12-03 | 2026-12-19 |  |  |
| DAM3-C-B10-M-320 | Installation of Fire Hose Cabinet | 3d | 2026-12-03 | 2026-12-07 | DAM3-C-B10-M-310 | Pipe Fitter [48 h]; Construction Cost [15158.6] |
| DAM3-C-B10-M-370 | Supply, install, test and commission Fire Department Connection(FDC) | 3d | 2026-12-15 | 2026-12-19 | DAM3-C-B10-M-340 | Pipe Fitter [48 h]; Construction Cost [2706.06] |
| 3 | **SEWER AND DRAINAGE SYSTEM** |  | 2026-07-01 | 2026-12-19 |  |  |
| 1 | **FIRST STAGE** |  | 2026-07-01 | 2026-12-02 |  |  |
| DAM3-C-B10-M-200 | Installation of Sanitary Waste / Drainage Pipes | 4d | 2026-07-01 A | 2026-07-06 A | DAM3-C-B10-S-347 | Plumber [64 h]; Construction Cost [18585.1] |
| DAM3-C-B10-M-380 | Installation of Trench drain | 5d | 2026-07-07 A | 2026-07-09 A | DAM3-C-B10-M-220 | Plumber [80 h]; Construction Cost [11508.8] |
| DAM3-C-B10-M-220 | Installation of Floor Drain | 2d | 2026-11-30 | 2026-12-02 | DAM3-C-B10-M-200, DAM3-C-B10-A-220 | Plumber [32 h]; Construction Cost [11056] |
| 2 | **SECOND STAGE** |  | 2026-12-02 | 2026-12-19 |  |  |
| DAM3-C-B10-M-180 | Installation of Electric Water Heater | 2d | 2026-12-02 | 2026-12-05 | DAM3-C-B10-M-380 | Plumber [32 h]; Construction Cost [1819.51] |
| DAM3-C-B10-M-190 | Installation of Sanitary Fixture and Accessories | 4d | 2026-12-05 | 2026-12-09 | DAM3-C-B10-M-180 | Plumber [64 h]; Construction Cost [19921.7] |
| DAM3-C-B10-M-210 | Installation of Lavotary /Wash Basin | 2d | 2026-12-09 | 2026-12-12 | DAM3-C-B10-M-180, DAM3-C-B10-M-190 | Plumber [32 h]; Construction Cost [21416.7] |
| DAM3-C-B10-M-270 | Installation of Bib Tap | 2d | 2026-12-12 | 2026-12-14 | DAM3-C-B10-M-190, DAM3-C-B10-M-210 | Plumber [32 h]; Construction Cost [1900.66] |
| DAM3-C-B10-M-428 | Installation of Water Tap | 2d | 2026-12-14 | 2026-12-16 | DAM3-C-B10-M-210, DAM3-C-B10-M-270 | Plumber [32 h]; Construction Cost [2874.14] |
| DAM3-C-B10-M-429 | Installation of Roof Vent Cap | 2d | 2026-12-16 | 2026-12-19 | DAM3-C-B10-M-428 | Pipe Fitter [32 h]; Construction Cost [927.12] |
| 4 | **WATER SUPPLY SYSTEM** |  | 2026-09-17 | 2026-12-09 |  |  |
| 1 | **FIRST STAGE** |  | 2026-09-17 | 2026-09-21 |  |  |
| DAM3-C-B10-M-280 | Installation of Water Supply Valve | 2d | 2026-09-17 A | 2026-09-21 A | DAM3-C-B10-M-290 | Plumber [32 h]; Construction Cost [18274.3] |
| DAM3-C-B10-M-290 | Installation of Water Supply Pipes | 4d | 2026-09-17 A | 2026-09-21 A | DAM3-C-B10-A-230 | Plumber [64 h]; Construction Cost [23318.4] |
| 2 | **SECOND STAGE** |  | 2026-12-03 | 2026-12-09 |  |  |
| DAM3-C-B10-M-330 | Capped connection | 5d | 2026-12-03 | 2026-12-09 | DAM3-C-B10-M-280 | Plumber [80 h]; Construction Cost [278.13] |
| 4 | **ELECTRICAL** |  | 2026-06-02 | 2027-02-10 |  |  |
| 1 | **FIRST STAGE** |  | 2026-06-02 | 2026-12-10 |  |  |
| DAM3-C-B10-E-113 | Installation of Earthing and Grounding | 5d | 2026-06-02 A | 2026-12-10 | DAM3-C-B10-E-223 | Electrician [80 h]; Construction Cost [19646.5] |
| DAM3-C-B10-E-143 | Installation of Conduits and wiring outlets - Fire Alarm System | 4d | 2026-06-03 A | 2026-11-14 | DAM3-C-B10-A-170 | Electrician [64 h]; Construction Cost [1768.31] |
| DAM3-C-B10-E-183 | Installation of Sleeves & Power outlet | 4d | 2026-06-03 A | 2026-11-14 | DAM3-C-B10-A-170 | Electrician [128 h]; Construction Cost [2920.45] |
| DAM3-C-B10-E-163 | Installation of Conduites for Lighting Fixture | 4d | 2026-09-21 A | 2026-11-24 | DAM3-C-B10-E-133 | Electrician [64 h]; Construction Cost [8462.97] |
| DAM3-C-B10-E-233 | Installation of Wires | 4d | 2026-11-24 | 2026-11-29 | DAM3-C-B10-E-163 | Electrician [64 h]; Construction Cost [16925.9] |
| DAM3-C-B10-E-223 | Installation of LV Cables | 4d | 2026-12-06 | 2026-12-10 | DAM3-C-B10-E-213 | Electrician [64 h]; Construction Cost [36390] |
| 2 | **SECOND STAGE** |  | 2026-10-07 | 2027-02-10 |  |  |
| DAM3-C-B10-E-420 | Installation of Solar power plant | 5d | 2026-10-07 A | 2027-02-10 | DAM3-C-B9-E-420 | Plumber [112 h]; Construction Cost [253269] |
| DAM3-C-B10-E-243 | Installation of LP-1 Panel | 2d | 2026-10-10 A | 2026-10-14 A | DAM3-C-B10-E-193 | Electrician [32 h]; Construction Cost [18403.5] |
| DAM3-C-B10-E-123 | Installation of Fire Alarm Control Panel | 4d | 2026-11-15 | 2026-11-18 | DAM3-C-B10-E-143 | Electrician [64 h]; Construction Cost [19451.4] |
| DAM3-C-B10-E-133 | Installation of Fire Detectors & Accessories | 4d | 2026-11-19 | 2026-11-23 | DAM3-C-B10-E-123 | Electrician [64 h]; Construction Cost [56740.4] |
| DAM3-C-B10-E-153 | Installation of Lighting fixtures | 4d | 2026-11-29 | 2026-12-03 | DAM3-C-B10-E-233 | Electrician [64 h]; Construction Cost [76166.7] |
| DAM3-C-B10-E-193 | Installation of Main Distribution Board | 2d | 2026-11-29 | 2026-12-01 | DAM3-C-B10-E-233 | Electrician [32 h]; Construction Cost [32472.7] |
| DAM3-C-B10-E-410 | Installation of CCTV System | 7d | 2026-11-29 | 2026-12-07 | DAM3-C-B10-E-233 | Plumber [112 h]; Construction Cost [76349.2] |
| DAM3-C-B10-E-253 | Installation of PP-AC panel | 2d | 2026-12-01 | 2026-12-03 | DAM3-C-B10-E-243 | Electrician [32 h]; Construction Cost [21648.5] |
| DAM3-C-B10-E-213 | Installation of Telephone Cabinet | 2d | 2026-12-03 | 2026-12-06 | DAM3-C-B10-E-253 | Electrician [32 h]; Construction Cost [26991.1] |
| DAM3-C-B10-E-173 | Installation of Wiring Devices | 4d | 2026-12-03 | 2026-12-08 | DAM3-C-B10-E-183, DAM3-C-B10-A-230 | Electrician [64 h]; Construction Cost [19435.1] |
| DAM3-C-B10-E-273 | Installation of Access Control System | 5d | 2026-12-07 | 2026-12-13 | DAM3-C-B10-E-410 | Electrician [80 h]; Construction Cost [27616.9] |
| DAM3-C-B10-E-203 | Installation of Disconnect Switches | 2d | 2026-12-08 | 2026-12-10 | DAM3-C-B10-E-173 | Electrician [32 h]; Construction Cost [30236] |
| DAM3-C-B10-E-283 | Monitor Modules for Fire Alarm | 2d | 2026-12-13 | 2026-12-15 | DAM3-C-B10-E-273 | Electrician [32 h]; Construction Cost [3882.38] |
| DAM3-C-B10-E-293 | Line Isolator Modules for Fire Alarm | 2d | 2026-12-15 | 2026-12-17 | DAM3-C-B10-E-283 | Electrician [32 h]; Construction Cost [185.4] |
| DAM3-C-B10-E-303 | Firewarning flash light with sounder; wall mounted, Weather proof | 2d | 2026-12-17 | 2026-12-20 | DAM3-C-B10-E-293 | Electrician [32 h]; Construction Cost [3082.69] |
| 12 | **BLOCK B11** |  | 2026-02-18 | 2027-02-15 |  |  |
| 1 | **STRUCTURAL** |  | 2026-02-18 | 2026-11-19 |  |  |
| 1 | **FOOTING** |  | 2026-02-18 | 2026-05-02 |  |  |
| DAM3-C-B11-S-150 | Excavation for footings | 4d | 2026-02-18 A | 2026-03-08 A | DAM3-C-B10-S-150 | General Labour [112 h]; Equipment Operator [112 h]; Truck [64 h]; Excavator [64 h]; Mini Roller Compactor [64 h]; Construction Cost [89859.6] |
| DAM3-C-B11-S-6343 | Soil replacement - rock fill | 4d | 2026-03-08 A | 2026-03-16 A | DAM3-C-B11-S-150 | General Labour [256 h]; Truck [64 h]; Mini Roller Compactor [64 h]; Equipment Operator [256 h]; Wheel Loader [64 h]; Construction Cost [179062] |
| DAM3-C-B11-S-6353 | Engineering fill | 4d | 2026-03-26 A | 2026-03-31 A | DAM3-C-B11-S-6343, DAM3-C-B11-S-6343 FF | General Labour [256 h]; Truck [64 h]; Mini Roller Compactor [64 h]; Equipment Operator [256 h]; Wheel Loader [64 h]; Construction Cost [46046.2] |
| DAM3-C-B11-S-101 | Anti Termite Below Footings | 1d | 2026-04-02 A | 2026-04-02 A | DAM3-C-B11-S-6353 | Mason [16 h]; Construction Cost [11905.5] |
| DAM3-C-B11-S-102 | Vapour Barrier for Footings | 1d | 2026-04-02 A | 2026-04-02 A | DAM3-C-B11-S-101 | General Labour [16 h]; Construction Cost [7940.1] |
| DAM3-C-B11-S-103 | Lean Concrete Below Footings | 2d | 2026-04-02 A | 2026-04-02 A | DAM3-C-B11-S-102 | Mason [32 h]; Construction Cost [8229.34] |
| DAM3-C-B11-S-104 | Rebar for Footings | 4d | 2026-04-25 A | 2026-04-28 A | DAM3-C-B11-S-103 | Steel Fixer [64 h]; Construction Cost [101845] |
| DAM3-C-B11-S-105 | Formwork for Footings | 4d | 2026-04-28 A | 2026-04-29 A | DAM3-C-B11-S-104 | Carperter [64 h]; Construction Cost [25461.2] |
| DAM3-C-B11-S-106 | Pouring Concrete for Footings | 1d | 2026-05-02 A | 2026-05-02 A | DAM3-C-B11-S-105 | Carperter [16 h]; Mason [16 h]; Steel Fixer [16 h]; Concrete Mixer [8 h]; Equipment Operator [16 h]; Construction Cost [127306] |
| 2 | **COLUMN NECK** |  | 2026-04-27 | 2026-05-20 |  |  |
| DAM3-C-B11-S-257 | Rebar for column neck | 4d | 2026-04-27 A | 2026-04-28 A | DAM3-C-B11-S-106 | Steel Fixer [64 h]; Construction Cost [14919.2] |
| DAM3-C-B11-S-267 | Formwork for column neck | 2d | 2026-05-05 A | 2026-05-06 A | DAM3-C-B11-S-257 | Carperter [32 h]; Construction Cost [9946.13] |
| DAM3-C-B11-S-297 | Pouring Concrete for column neck | 1d | 2026-05-07 A | 2026-05-07 A | DAM3-C-B11-S-267 | Mason [16 h]; Carperter [16 h]; Concrete Mixer [8 h]; Steel Fixer [16 h]; Equipment Operator [16 h]; Construction Cost [24865.3] |
| DAM3-C-B11-S-307 | Damp proof /Bitumin paint on Footings & column neck | 2d | 2026-05-11 A | 2026-05-13 A | DAM3-C-B11-S-297 | Painter [32 h]; Construction Cost [24777.7] |
| DAM3-C-B11-S-367 | Backfilling / Compaction up to Bottom of Grade Beams | 7d | 2026-05-17 A | 2026-05-20 A | DAM3-C-B11-S-307 | General Labour [256 h]; Truck [128 h]; Mini Roller Compactor [128 h]; Equipment Operator [256 h]; Wheel Loader [128 h]; Construction Cost [46046.2] |
| 3 | **GRADE BEAM** |  | 2026-05-24 | 2026-06-13 |  |  |
| DAM3-C-B11-S-337 | Vapour barrier for Grade Beams | 2d | 2026-05-24 A | 2026-05-24 A | DAM3-C-B11-S-527 | General Labour [32 h]; Construction Cost [5293.4] |
| DAM3-C-B11-S-338 | Lean Concrete Below Grade Beams | 2d | 2026-05-24 A | 2026-05-24 A | DAM3-C-B11-S-337 | Mason [32 h]; Construction Cost [4431.19] |
| DAM3-C-B11-S-527 | Anti Termite Below Grade Beams | 1d | 2026-05-24 A | 2026-05-24 A | DAM3-C-B11-S-367 | Mason [16 h]; Construction Cost [11905.5] |
| DAM3-C-B11-S-339 | Rebar for Grade Beams | 5d | 2026-06-01 A | 2026-06-03 A | DAM3-C-B11-S-338 | Steel Fixer [80 h]; Construction Cost [27194.5] |
| DAM3-C-B11-S-340 | Formwork for Grade Beams | 2d | 2026-06-02 A | 2026-06-06 A | DAM3-C-B11-S-339 | Carperter [32 h]; Construction Cost [6798.61] |
| DAM3-C-B11-S-341 | Anchor bolts installation | 2d | 2026-06-02 A | 2026-06-03 A | DAM3-C-B11-S-340 SS | Carperter [32 h]; Construction Cost [57238.8] |
| DAM3-C-B11-S-342 | Pouring Concrete for Grade Beams | 1d | 2026-06-06 A | 2026-06-06 A | DAM3-C-B11-S-340, DAM3-C-B11-S-341 | Mason [16 h]; Carperter [16 h]; Concrete Mixer [8 h]; Steel Fixer [16 h]; Equipment Operator [16 h]; Construction Cost [33993.1] |
| DAM3-C-B11-S-347 | Damp proof /Bitumin paint on Grade Beams | 5d | 2026-06-11 A | 2026-06-13 A | DAM3-C-B11-S-342 | Painter [80 h]; Construction Cost [24777.7] |
| 5 | **SLAB ON GRADE** |  | 2026-06-15 | 2026-11-19 |  |  |
| DAM3-C-B11-S-377 | Backfilling / Compaction for Slab on Grade | 7d | 2026-06-15 A | 2026-06-21 A | DAM3-C-B11-S-347 | Mini Roller Compactor [128 h]; General Labour [256 h]; Equipment Operator [256 h]; Wheel Loader [128 h]; Truck [128 h]; Construction Cost [23023.1] |
| DAM3-C-B11-S-378 | Anti Termite Treatment below Ground Slab | 1d | 2026-07-26 A | 2026-07-28 A | DAM3-C-B11-S-377 | General Labour [16 h]; Construction Cost [15874.1] |
| DAM3-C-B11-S-379 | Vapour barrier for below Ground Slab | 2d | 2026-07-26 A | 2026-07-28 A | DAM3-C-B11-S-378 | General Labour [32 h]; Construction Cost [13233.5] |
| DAM3-C-B11-S-382 | Pouring Concrete for Ground Slab | 4d | 2026-07-26 A | 2026-07-28 A | DAM3-C-B11-S-379 | Mason [64 h]; Carperter [64 h]; Steel Fixer [64 h]; Concrete Mixer [32 h]; Equipment Operator [64 h]; Construction Cost [344195] |
| DAM3-C-B11-S-517 | Concrete pad | 7d | 2026-11-12 | 2026-11-19 | DAM3-C-B11-A-0150 | Mason [112 h]; Construction Cost [907.11] |
| 4 | **COLUMNS & BEAMS** |  | 2026-06-02 | 2026-10-01 |  |  |
| DAM3-C-B11-S-6101 | Rebar for Tie Beams | 4d | 2026-06-02 A | 2026-06-08 A | DAM3-C-B11-S-5103 | Steel Fixer [64 h]; Construction Cost [7263.64] |
| DAM3-C-B11-S-6102 | Formwork for Tie Beams | 2d | 2026-06-03 A | 2026-06-08 A | DAM3-C-B11-S-6101 | Carperter [32 h]; Construction Cost [1815.91] |
| DAM3-C-B11-S-6103 | Pouring Concrete for Tie Beams | 1d | 2026-06-06 A | 2026-06-09 A | DAM3-C-B11-S-6102 | Mason [16 h]; Carperter [16 h]; Concrete Mixer [32 h]; Steel Fixer [16 h]; Equipment Operator [16 h]; Construction Cost [9079.54] |
| DAM3-C-B11-S-5101 | Rebar for column | 5d | 2026-07-13 A | 2026-07-16 A | DAM3-C-B11-S-377 | Steel Fixer [112 h]; Construction Cost [20144] |
| DAM3-C-B11-S-5102 | Formwork for column | 4d | 2026-08-08 A | 2026-08-11 A | DAM3-C-B11-S-5101 | Carperter [64 h]; Construction Cost [5036.01] |
| DAM3-C-B11-S-5103 | Pouring Concrete for column | 1d | 2026-08-09 A | 2026-08-12 A | DAM3-C-B11-S-5102, DAM3-C-B11-S-382 | Mason [16 h]; Carperter [16 h]; Concrete Mixer [32 h]; Steel Fixer [16 h]; Equipment Operator [16 h]; Construction Cost [25180.1] |
| DAM3-C-B11-S-6113 | Rebar for Beams | 4d | 2026-09-01 A | 2026-09-03 A | DAM3-C-B11-S-6103 | Steel Fixer [64 h]; Construction Cost [13379.1] |
| DAM3-C-B11-S-6123 | Formwork for Beams | 2d | 2026-09-21 A | 2026-09-26 A | DAM3-C-B11-S-6113, DAM3-C-B11-S-6113 FF | Carperter [32 h]; Construction Cost [3344.77] |
| DAM3-C-B11-S-6133 | Pouring Concrete for Beams | 1d | 2026-09-28 A | 2026-10-01 A | DAM3-C-B11-S-6123, DAM3-C-B11-S-6123 FF | Mason [16 h]; Carperter [16 h]; Concrete Mixer [32 h]; Steel Fixer [16 h]; Equipment Operator [16 h]; Construction Cost [16723.9] |
| 5 | **STRUCTURAL STEEL** |  | 2026-06-25 | 2026-11-17 |  |  |
| DAM3-C-B11-SS-0100 | Installation of columns | 3d | 2026-06-25 A | 2026-06-28 A | DAM3-C-B11-S-382, DAM3-C-B10-SS-0110 SS | Structural Steel Fixer [80 h]; General Labour [80 h]; Equipment Operator [80 h]; Mobile Crane [24 h]; Construction Cost [217508] |
| DAM3-C-B11-SS-0110 | Installation of raft and purlins | 5d | 2026-06-30 A | 2026-07-01 A | DAM3-C-B11-SS-0100 | Structural Steel Fixer [160 h]; General Labour [160 h]; Mobile Crane [56 h]; Equipment Operator [160 h]; Construction Cost [326261] |
| DAM3-C-B11-SS-610 | Intumescent paint to steel works | 7d | 2026-07-19 A | 2026-07-25 A | DAM3-C-B11-SS-0110, DAM3-P-DL-A-1790 | Painter [112 h]; Construction Cost [317760] |
| DAM3-C-B11-SS-0140 | Installation of roof sheet | 5d | 2026-08-01 A | 2026-08-08 A | DAM3-C-B11-A-0120, DAM3-C-B11-SS-610, DAM3-C-B11-S-6133 | Roof sheet worker [160 h]; General Labour [160 h]; Mobile Crane [40 h]; Equipment Operator [160 h]; Construction Cost [217508] |
| DAM3-C-B11-SS-0130 | Installation of wall sandwich panel | 5d | 2026-09-03 A | 2026-09-30 A | DAM3-C-B11-A-0150 | Sandwich panel worker [112 h]; General Labour [112 h]; Mobile Crane [40 h]; Equipment Operator [112 h]; Construction Cost [326261] |
| DAM3-C-B11-SS-620 | Steel members for office area | 7d | 2026-09-27 A | 2026-09-30 A | DAM3-C-B11-SS-610, DAM3-C-B11-SS-0110, DAM3-C-B11-S-6133 | Construction Cost [115805]; Structural Steel Fixer [112 h]; Mobile Crane [56 h]; General Labour [112 h]; Equipment Operator [112 h] |
| DAM3-C-B11-SS-1030 | Steel members for external platform | 7d | 2026-10-04 A | 2026-10-07 A | DAM3-C-B11-SS-620 | Construction Cost [18670.8]; General Labour [112 h]; Mobile Crane [56 h]; Structural Steel Fixer [112 h]; Equipment Operator [112 h] |
| DAM3-C-B11-SS-1020 | Epoxy paint to steel members at office area | 4d | 2026-11-12 | 2026-11-16 | DAM3-C-B11-SS-620 | Painter [112 h]; Construction Cost [23161] |
| DAM3-C-B11-SS-1040 | Epoxy paint for external platform | 5d | 2026-11-12 | 2026-11-17 | DAM3-C-B11-SS-1030, DAM3-C-B11-SS-1030 FF | Painter [80 h]; Construction Cost [3734.16] |
| 2 | **ARCHITECTURAL** |  | 2026-07-30 | 2026-12-24 |  |  |
| 1 | **MASONARY WORKS** |  | 2026-08-06 | 2026-09-06 |  |  |
| DAM3-C-B11-A-0120 | Block work at factory area | 5d | 2026-08-06 A | 2026-08-11 A | DAM3-C-B11-S-382, DAM3-C-B11-SS-0110 | AAC panel erector [240 h]; General Labour [240 h]; Equipment Operator [240 h]; Mobile Crane [120 h]; Construction Cost [58338.7] |
| DAM3-C-B11-A-0150 | Block work at office area | 3d | 2026-08-10 A | 2026-09-06 A | DAM3-C-B11-SS-0140 SS, DAM3-C-B11-SS-620 | AAC panel erector [160 h]; General Labour [160 h]; Mobile Crane [56 h]; Equipment Operator [160 h]; Construction Cost [6179.18] |
| DAM3-C-B11-A-170 | Block work at toilet area | 4d | 2026-08-13 A | 2026-09-06 A | DAM3-C-B11-A-0150, DAM3-C-B11-SS-1020 | Mason [112 h]; Construction Cost [14436.3] |
| 5 | **WALL FINISHES** |  | 2026-09-27 | 2026-12-08 |  |  |
| DAM3-C-B11-A-180 | Internal Wall Plaster | 10d | 2026-09-27 A | 2026-10-15 A | DAM3-C-B11-A-170, DAM3-C-B11-E-183, DAM3-C-B11-S-517, DAM3-C-B11-SS-1040 | Mason [240 h]; Construction Cost [48590.2] |
| DAM3-C-B11-A-230 | Paint to Plaster (Primer, Putty & First Coat) | 4d | 2026-12-05 | 2026-12-08 | DAM3-C-B11-A-250 | Painter [112 h]; Construction Cost [44167.3] |
| 2 | **CIELING FINISHES** |  | 2026-12-02 | 2026-12-07 |  |  |
| DAM3-C-B11-A-240 | Installation of Ceiling Gypsum Board | 5d | 2026-12-02 | 2026-12-07 | DAM3-C-B11-A-220, DAM3-C-B11-S-517 | Carperter [80 h]; Construction Cost [46792.3] |
| 6 | **FLOOR FINISHES** |  | 2026-11-26 | 2026-12-15 |  |  |
| DAM3-C-B11-A-220 | Tiles for Toilet | 5d | 2026-11-26 | 2026-12-01 | DAM3-C-B11-A-370 | Tile Fixer [112 h]; Construction Cost [46530.7] |
| DAM3-C-B11-A-250 | Tiles for Office Area | 2d | 2026-12-02 | 2026-12-03 | DAM3-C-B11-A-220 | Tile Fixer [32 h]; Construction Cost [26867.3] |
| DAM3-C-B11-A-390 | Granite strip | 2d | 2026-12-05 | 2026-12-06 | DAM3-C-B11-A-558, DAM3-C-B11-A-250 | Tile Fixer [32 h]; Construction Cost [671.12] |
| DAM3-C-B11-A-420 | Epoxy paint | 7d | 2026-12-08 | 2026-12-15 | DAM3-C-B11-A-390, DAM3-C-B11-A-240 | Painter [112 h]; Construction Cost [115420] |
| 3 | **DOORS & WINDOWS** |  | 2026-10-06 | 2026-11-25 |  |  |
| DAM3-C-B11-A-558 | Skylight fixtures installation | 1d | 2026-10-06 A | 2026-10-08 A | DAM3-C-B11-A-557 | Carperter [16 h]; Construction Cost [6489.89] |
| DAM3-C-B11-A-552 | Window (CW1) | 7d | 2026-10-20 A | 2026-11-18 | DAM3-C-B11-SS-0130 | Carperter [112 h]; Construction Cost [94173.2] |
| DAM3-C-B11-A-553 | Roll up Shutter Door | 1d | 2026-11-18 | 2026-11-19 | DAM3-C-B11-A-552 | Carperter [16 h]; Construction Cost [68619.2] |
| DAM3-C-B11-A-200 | Supply and install (D5) 1000*2200mm single leaf steel door with door | 1d | 2026-11-19 | 2026-11-21 | DAM3-C-B11-A-553 | Carperter [16 h]; Construction Cost [16016.2] |
| DAM3-C-B11-A-554 | Supply and install (D4) 800*2200 mm single leaf aluminum door with door | 1d | 2026-11-21 | 2026-11-22 | DAM3-C-B11-A-200 | Carperter [16 h]; Construction Cost [22737.8] |
| DAM3-C-B11-A-555 | Supply and install (D7) 1000*2200 mm single leaf aluminum door with door | 1d | 2026-11-22 | 2026-11-23 | DAM3-C-B11-A-554 | Carperter [16 h]; Construction Cost [7811.07] |
| DAM3-C-B11-A-556 | Supply and install (D3) 1000*2200 mm single leaf aluminum door with door | 1d | 2026-11-23 | 2026-11-24 | DAM3-C-B11-A-555 | Carperter [16 h]; Construction Cost [16016.2] |
| DAM3-C-B11-A-557 | Supply and install fire rated 45 min (D2) 1200*2200 mm single leaf steel door | 1d | 2026-11-24 | 2026-11-25 | DAM3-C-B11-A-556 | Carperter [16 h]; Construction Cost [16711.5] |
| 4 | **WATER PROOFING WORKS** |  | 2026-11-22 | 2026-11-25 |  |  |
| DAM3-C-B11-A-370 | Waterproofing membrane for toilets | 4d | 2026-11-22 | 2026-11-25 | DAM3-C-B11-M-200, DAM3-C-B11-A-180 | General Labour [64 h]; Construction Cost [4879.02] |
| 7 | **METAL WORKS** |  | 2026-07-30 | 2026-12-16 |  |  |
| DAM3-C-B11-A-300 | Galvanised Steel Gratings | 2d | 2026-07-30 A | 2026-07-30 A | DAM3-C-B11-A-292 | Steel Fixer [32 h]; General Labour [32 h]; Construction Cost [6455.16] |
| DAM3-C-B11-A-292 | Aluminium composite panel | 3d | 2026-10-15 A | 2026-12-16 | DAM3-C-B11-A-291 | Steel Fixer [80 h]; General Labour [80 h]; Construction Cost [175889] |
| DAM3-C-B11-A-290 | Steel Ladder | 2d | 2026-12-07 | 2026-12-08 | DAM3-C-B11-A-390 | Steel Fixer [32 h]; General Labour [32 h]; Construction Cost [9839.16] |
| DAM3-C-B11-A-291 | Steel railing works | 4d | 2026-12-09 | 2026-12-13 | DAM3-C-B11-A-290 | Steel Fixer [64 h]; General Labour [64 h]; Construction Cost [1533.98] |
| 8 | **SPECIALTIES** |  | 2026-12-16 | 2026-12-24 |  |  |
| DAM3-C-B11-A-320 | Installation of fittings | 3d | 2026-12-16 | 2026-12-20 | DAM3-C-B11-A-300 | Plumber [80 h]; Construction Cost [22981.3] |
| DAM3-C-B11-A-570 | Identification sign; ID01 & ID02 | 3d | 2026-12-20 | 2026-12-23 | DAM3-C-B11-A-320 | Mason [48 h]; Construction Cost [9630.56] |
| DAM3-C-B11-A-340 | Furniture Installation | 1d | 2026-12-23 | 2026-12-24 | DAM3-C-B11-A-570 | General Labour [16 h]; Mason [16 h]; Construction Cost [12468.8] |
| 3 | **MECHANICAL** |  | 2026-07-05 | 2026-12-27 |  |  |
| 1 | **HVAC** |  | 2026-12-09 | 2026-12-23 |  |  |
| 1 | **FIRST STAGE** |  | 2026-12-15 | 2026-12-19 |  |  |
| DAM3-C-B11-M-140 | Installation of HVAC Ducts | 2d | 2026-12-15 | 2026-12-16 | DAM3-C-B11-M-160 | Ductman [32 h]; Construction Cost [149489] |
| DAM3-C-B11-M-170 | Installation of Duct insulation | 2d | 2026-12-17 | 2026-12-19 | DAM3-C-B11-M-140 | Ductman [32 h]; Construction Cost [21205.4] |
| 2 | **SECOND STAGE** |  | 2026-12-09 | 2026-12-23 |  |  |
| DAM3-C-B11-M-130 | Installation of Exhaust Fans | 2d | 2026-12-09 | 2026-12-10 | DAM3-C-B11-A-230 | AC Technician [32 h]; Construction Cost [7938.56] |
| DAM3-C-B11-M-160 | Installation of Wall Propeller Type Exhaust Fan | 3d | 2026-12-12 | 2026-12-14 | DAM3-C-B11-M-130 | AC Technician [64 h]; Construction Cost [46831.6] |
| DAM3-C-B11-M-339 | Installation of Diffuser | 2d | 2026-12-20 | 2026-12-21 | DAM3-C-B11-M-170 | Ductman [32 h]; Construction Cost [2144] |
| DAM3-C-B11-M-340 | Supply, install, test and commission door grilles & exhaust louvers | 2d | 2026-12-22 | 2026-12-23 | DAM3-C-B11-M-339 | Ductman [32 h]; Construction Cost [5574.4] |
| 2 | **FIRE FIGHTING SYSTEM** |  | 2026-08-29 | 2026-12-27 |  |  |
| 1 | **FIRST STAGE** |  | 2026-08-29 | 2026-09-07 |  |  |
| DAM3-C-B11-M-300 | Installation of Fire Fighting Pipes (Seamless Black Steel) | 5d | 2026-08-29 A | 2026-09-05 A | DAM3-C-B11-A-230 | Pipe Fitter [112 h]; Construction Cost [72394.8] |
| DAM3-C-B11-M-310 | Installation of Fire Fighting Valve | 3d | 2026-08-30 A | 2026-09-07 A | DAM3-C-B11-M-300 | Pipe Fitter [80 h]; Construction Cost [12199.4] |
| 2 | **SECOND STAGE** |  | 2026-12-09 | 2026-12-27 |  |  |
| DAM3-C-B11-M-320 | Installation of Fire Hose Cabinet | 3d | 2026-12-09 | 2026-12-12 | DAM3-C-B11-M-310 | Pipe Fitter [48 h]; Construction Cost [15158.6] |
| DAM3-C-B11-M-370 | Supply, install, test and commission Fire Department Connection(FDC) | 3d | 2026-12-24 | 2026-12-27 | DAM3-C-B11-M-340 | Pipe Fitter [48 h]; Construction Cost [2706.06] |
| 3 | **SEWER AND DRAINAGE SYSTEM** |  | 2026-07-05 | 2026-12-20 |  |  |
| 1 | **FIRST STAGE** |  | 2026-07-05 | 2026-12-03 |  |  |
| DAM3-C-B11-M-200 | Installation of Sanitary Waste / Drainage Pipes | 4d | 2026-07-05 A | 2026-07-08 A | DAM3-C-B11-S-347 | Plumber [64 h]; Construction Cost [18585.1] |
| DAM3-C-B11-M-380 | Installation of Trench drain | 5d | 2026-07-06 A | 2026-07-08 A | DAM3-C-B11-M-220 | Plumber [80 h]; Construction Cost [11508.8] |
| DAM3-C-B11-M-220 | Installation of Floor Drain | 2d | 2026-12-02 | 2026-12-03 | DAM3-C-B11-M-200, DAM3-C-B11-A-220 | Plumber [32 h]; Construction Cost [11056] |
| 2 | **SECOND STAGE** |  | 2026-12-05 | 2026-12-20 |  |  |
| DAM3-C-B11-M-180 | Installation of Electric Water Heater | 2d | 2026-12-05 | 2026-12-06 | DAM3-C-B11-M-380 | Plumber [32 h]; Construction Cost [1819.51] |
| DAM3-C-B11-M-190 | Installation of Sanitary Fixture and Accessories | 4d | 2026-12-07 | 2026-12-10 | DAM3-C-B11-M-180 | Plumber [64 h]; Construction Cost [19921.7] |
| DAM3-C-B11-M-210 | Installation of Lavotary /Wash Basin | 2d | 2026-12-12 | 2026-12-13 | DAM3-C-B11-M-180, DAM3-C-B11-M-190 | Plumber [32 h]; Construction Cost [21416.7] |
| DAM3-C-B11-M-270 | Installation of Bib Tap | 2d | 2026-12-14 | 2026-12-15 | DAM3-C-B11-M-190, DAM3-C-B11-M-210 | Plumber [32 h]; Construction Cost [1900.66] |
| DAM3-C-B11-M-428 | Installation of Water Tap | 2d | 2026-12-16 | 2026-12-17 | DAM3-C-B11-M-210, DAM3-C-B11-M-270 | Plumber [32 h]; Construction Cost [2874.14] |
| DAM3-C-B11-M-429 | Installation of Roof Vent Cap | 2d | 2026-12-19 | 2026-12-20 | DAM3-C-B11-M-428 | Pipe Fitter [32 h]; Construction Cost [927.12] |
| 4 | **WATER SUPPLY SYSTEM** |  | 2026-10-01 | 2026-12-14 |  |  |
| 1 | **FIRST STAGE** |  | 2026-10-01 | 2026-10-05 |  |  |
| DAM3-C-B11-M-280 | Installation of Water Supply Valve | 2d | 2026-10-01 A | 2026-10-05 A | DAM3-C-B11-M-290 | Plumber [32 h]; Construction Cost [18274.3] |
| DAM3-C-B11-M-290 | Installation of Water Supply Pipes | 4d | 2026-10-01 A | 2026-10-05 A | DAM3-C-B11-A-230 | Plumber [64 h]; Construction Cost [23318.4] |
| 2 | **SECOND STAGE** |  | 2026-12-09 | 2026-12-14 |  |  |
| DAM3-C-B11-M-330 | Capped connection | 5d | 2026-12-09 | 2026-12-14 | DAM3-C-B11-M-280 | Plumber [80 h]; Construction Cost [278.13] |
| 4 | **ELECTRICAL** |  | 2026-06-01 | 2027-02-15 |  |  |
| 1 | **FIRST STAGE** |  | 2026-06-01 | 2026-12-15 |  |  |
| DAM3-C-B11-E-113 | Installation of Earthing and Grounding | 3d | 2026-06-01 A | 2026-12-15 | DAM3-C-B11-E-223 | Electrician [80 h]; Construction Cost [19646.5] |
| DAM3-C-B11-E-143 | Installation of Conduits and wiring outlets - Fire Alarm System | 4d | 2026-06-02 A | 2026-11-18 | DAM3-C-B11-A-170 | Electrician [64 h]; Construction Cost [1768.31] |
| DAM3-C-B11-E-183 | Installation of Sleeves & Power outlet | 8d | 2026-06-02 A | 2026-11-21 | DAM3-C-B11-A-170 | Electrician [128 h]; Construction Cost [2920.45] |
| DAM3-C-B11-E-163 | Installation of Conduites for Lighting Fixture | 4d | 2026-09-27 A | 2026-11-29 | DAM3-C-B11-E-133 | Electrician [64 h]; Construction Cost [8462.97] |
| DAM3-C-B11-E-233 | Installation of Wires | 4d | 2026-11-29 | 2026-12-03 | DAM3-C-B11-E-163 | Electrician [64 h]; Construction Cost [16925.9] |
| DAM3-C-B11-E-223 | Installation of LV Cables | 4d | 2026-12-10 | 2026-12-15 | DAM3-C-B11-E-213 | Electrician [64 h]; Construction Cost [36390] |
| 2 | **SECOND STAGE** |  | 2026-10-08 | 2027-02-15 |  |  |
| DAM3-C-B11-E-420 | Installation of Solar power plant | 4d | 2026-10-08 A | 2027-02-15 | DAM3-C-B10-E-420 | Plumber [112 h]; Construction Cost [253269] |
| DAM3-C-B11-E-243 | Installation of LP-1 Panel | 2d | 2026-10-10 A | 2026-10-14 A | DAM3-C-B11-E-193 | Electrician [32 h]; Construction Cost [18403.5] |
| DAM3-C-B11-E-123 | Installation of Fire Alarm Control Panel | 4d | 2026-11-19 | 2026-11-23 | DAM3-C-B11-E-143 | Electrician [64 h]; Construction Cost [19451.4] |
| DAM3-C-B11-E-133 | Installation of Fire Detectors & Accessories | 4d | 2026-11-24 | 2026-11-28 | DAM3-C-B11-E-123 | Electrician [64 h]; Construction Cost [56740.4] |
| DAM3-C-B11-E-153 | Installation of Lighting fixtures | 4d | 2026-12-03 | 2026-12-08 | DAM3-C-B11-E-233 | Electrician [64 h]; Construction Cost [76166.7] |
| DAM3-C-B11-E-193 | Installation of Main Distribution Board | 2d | 2026-12-03 | 2026-12-06 | DAM3-C-B11-E-233 | Electrician [32 h]; Construction Cost [32472.7] |
| DAM3-C-B11-E-410 | Installation of CCTV System | 5d | 2026-12-03 | 2026-12-09 | DAM3-C-B11-E-233 | Plumber [112 h]; Construction Cost [76349.2] |
| DAM3-C-B11-E-253 | Installation of PP-AC panel | 2d | 2026-12-06 | 2026-12-08 | DAM3-C-B11-E-243 | Electrician [32 h]; Construction Cost [21648.5] |
| DAM3-C-B11-E-213 | Installation of Telephone Cabinet | 2d | 2026-12-08 | 2026-12-10 | DAM3-C-B11-E-253 | Electrician [32 h]; Construction Cost [26991.1] |
| DAM3-C-B11-E-173 | Installation of Wiring Devices | 4d | 2026-12-09 | 2026-12-13 | DAM3-C-B11-E-183, DAM3-C-B11-A-230 | Electrician [64 h]; Construction Cost [19435.1] |
| DAM3-C-B11-E-273 | Installation of Access Control System | 5d | 2026-12-09 | 2026-12-15 | DAM3-C-B11-E-410 | Electrician [80 h]; Construction Cost [27616.9] |
| DAM3-C-B11-E-203 | Installation of Disconnect Switches | 2d | 2026-12-14 | 2026-12-15 | DAM3-C-B11-E-173 | Electrician [32 h]; Construction Cost [30236] |
| DAM3-C-B11-E-283 | Monitor Modules for Fire Alarm | 2d | 2026-12-15 | 2026-12-17 | DAM3-C-B11-E-273 | Electrician [32 h]; Construction Cost [3882.38] |
| DAM3-C-B11-E-293 | Line Isolator Modules for Fire Alarm | 2d | 2026-12-17 | 2026-12-20 | DAM3-C-B11-E-283 | Electrician [32 h]; Construction Cost [185.4] |
| DAM3-C-B11-E-303 | Firewarning flash light with sounder; wall mounted, Weather proof | 2d | 2026-12-20 | 2026-12-22 | DAM3-C-B11-E-293 | Electrician [32 h]; Construction Cost [3082.69] |
| 1 | **WATER SUPPLY SYSTEM** |  | 2026-10-04 | 2026-12-30 |  |  |
| DAM3-C-ENV-SW-486 | Installation of UPVC Pipes for Sewer | 4d | 2026-09-16 A | 2026-10-05 A | DAM3-C-ENV-SW-516, DAM3-P-ST-EN-170 | Pipe Fitter [160 h]; Construction Cost [222619] |
| DAM3-C-ENV-SW-546 | UPVC pipe service connection | 7d | 2026-12-13 | 2026-12-20 | DAM3-C-ENV-SW-506 | Plumber [112 h]; Construction Cost [35567] |
| 1 | **MECHANICAL** |  | 2026-07-01 | 2026-12-12 |  |  |
| DAM3-C-PR-S-138 | Lean Concrete Below Footings | 2d | 2026-07-23 A | 2026-07-23 A | DAM3-C-PR-S-308 | Mason [32 h]; Construction Cost [649.57] |
| DAM3-C-PR-S-308 | Vapour Barrier for Footings | 2d | 2026-07-23 A | 2026-07-23 A | DAM3-C-PR-S-108 | General Labour [32 h]; Construction Cost [649.57] |
| DAM3-C-PR-S-198 | Rebar for Footings | 4d | 2026-07-25 A | 2026-07-25 A | DAM3-C-PR-S-138 | Steel Fixer [64 h]; Construction Cost [1299.14] |
| DAM3-C-PR-S-208 | Formwork for Footings | 4d | 2026-07-25 A | 2026-07-25 A | DAM3-C-PR-S-198 | Carperter [64 h]; Construction Cost [649.57] |
| DAM3-C-PR-S-148 | Pouring Concrete for Footings | 1d | 2026-07-26 A | 2026-07-26 A | DAM3-C-PR-S-208 | Carperter [16 h]; Mason [16 h]; Steel Fixer [16 h]; Concrete Mixer [32 h]; Construction Cost [5846.13] |
| DAM3-C-PR-S-158 | Lean Concrete Below Grade Beams | 2d | 2026-08-04 A | 2026-08-04 A | DAM3-C-PR-S-328 | Mason [32 h]; Construction Cost [649.57] |
| DAM3-C-PR-S-328 | Vapour barrier for Grade Beams | 2d | 2026-08-04 A | 2026-08-04 A | DAM3-C-PR-S-378 | General Labour [32 h]; Construction Cost [649.57] |
| DAM3-C-PR-S-218 | Rebar for Grade Beams | 2d | 2026-08-15 A | 2026-08-15 A | DAM3-C-PR-S-158 | Steel Fixer [32 h]; Construction Cost [1299.14] |
| DAM3-C-PR-S-228 | Formwork for Grade Beams | 2d | 2026-08-16 A | 2026-08-17 A | DAM3-C-PR-S-218 | Carperter [32 h]; Construction Cost [649.57] |
| DAM3-C-PR-S-168 | Pouring Concrete for Grade Beams | 1d | 2026-08-18 A | 2026-08-18 A | DAM3-C-PR-S-228 | Mason [16 h]; Carperter [16 h]; Concrete Mixer [32 h]; Steel Fixer [16 h]; Construction Cost [3247.85] |
| DAM3-C-PR-S-338 | Damp proof /Bitumin paint on Grade Beams | 2d | 2026-08-20 A | 2026-08-22 A | DAM3-C-PR-S-168 | Painter [32 h]; Construction Cost [649.57] |
| DAM3-C-PR-S-388 | Backfilling / Compaction for Slab on Grade | 5d | 2026-08-23 A | 2026-08-24 A | DAM3-C-PR-S-338 | Mini Roller Compactor [40 h]; General Labour [80 h]; Wheel Loader [40 h]; Construction Cost [1299.14] |
| DAM3-C-PR-S-318 | Anti Termite Treatment below Ground Slab | 1d | 2026-08-24 A | 2026-08-24 A | DAM3-C-PR-S-388 | General Labour [16 h]; Construction Cost [649.57] |
| DAM3-C-PR-S-348 | Vapour barrier for below Ground Slab | 2d | 2026-08-24 A | 2026-08-24 A | DAM3-C-PR-S-318 | General Labour [32 h]; Construction Cost [649.57] |
| DAM3-C-PR-S-178 | Pouring Concrete for Ground Slab | 1d | 2026-08-27 A | 2026-08-27 A | DAM3-C-PR-S-278 | Mason [16 h]; Carperter [16 h]; Steel Fixer [16 h]; Concrete Mixer [32 h]; Construction Cost [20334.2] |
| 6 | **ELECTRICAL** |  | 2026-12-01 | 2026-12-20 |  |  |
| DAM3-C-ENV-E-186 | Installation of Earthing and Grounding | 3d | 2026-12-03 | 2026-12-06 | DAM3-C-ENV-E-176, DAM3-E-SA-E-1160 | Electrician [80 h]; Construction Cost [1399.38] |
| DAM3-C-ENV-E-206 | Installation of Conduites for Lighting Fixture | 4d | 2026-12-07 | 2026-12-10 | DAM3-C-ENV-E-186, DAM3-E-SA-E-1130, DAM3-E-SA-E-1140, DAM3-E-SA-E-1170 | Electrician [64 h]; Construction Cost [798.2] |
| DAM3-C-ENV-E-216 | Installation of LV Cables | 5d | 2026-12-09 | 2026-12-14 | DAM3-C-ENV-E-176, DAM3-C-ENV-E-1341 | Electrician [80 h]; Construction Cost [7709.71] |
| DAM3-C-ENV-E-226 | Installation of Wires | 2d | 2026-12-12 | 2026-12-13 | DAM3-C-ENV-E-206 | Electrician [32 h]; Construction Cost [1596.4] |
| DAM3-C-ENV-E-196 | Installation of Lighting fixtures | 2d | 2026-12-14 | 2026-12-15 | DAM3-C-ENV-E-226, DAM3-C-ENV-M-1351, DAM3-E-SA-E-1150, DAM3-P-ST-E-280 | Electrician [32 h]; Construction Cost [7183.81] |
| DAM3-C-ENV-E-380 | Installation of LV Cables | 7d | 2027-01-05 | 2027-01-12 | DAM3-C-ENV-E-430 | Electrician [112 h]; Construction Cost [98914.9] |
| DAM3-C-ENV-E-470 | Installation of Earthing and Grounding | 5d | 2027-01-21 | 2027-01-26 | DAM3-C-ENV-E-460 | Electrician [80 h]; Construction Cost [19643.5] |
| DAM3-C-ENV-S-1304 | Rebar for Footings | 7d | 2027-01-17 | 2027-01-24 | DAM3-C-ENV-S-1274 | Steel Fixer [112 h]; Construction Cost [1195.12] |
| DAM3-C-ENV-S-1314 | Formwork for Footings | 4d | 2027-01-25 | 2027-01-28 | DAM3-C-ENV-S-1304 | Carperter [64 h]; Construction Cost [597.56] |
| DAM3-C-ENV-S-1284 | Pouring Concrete for Footings | 2d | 2027-01-30 | 2027-01-31 | DAM3-C-ENV-S-1314 | Carperter [32 h]; Mason [32 h]; Steel Fixer [32 h]; Concrete Mixer [16 h]; Equipment Operator [32 h]; Construction Cost [1792.67] |
| 1 | **MECHANICAL** |  | 2026-06-28 | 2027-02-23 |  |  |
| 2 | **ELECTRICAL** |  | 2027-01-23 | 2027-02-24 |  |  |
| S001-C-TC-C-80 | Civil & Architectural Snagg works-1 | 5d | 2026-06-17 A | 2026-06-20 A | DAM3-P-DL-A-210, DAM3-P-DL-A-330 | Construction Cost [1520575] |
| S001-C-TC-A-90 | Civil & Architectural Snagg works-2 | 5d | 2026-06-21 A | 2026-06-22 A | S001-C-TC-C-80 | Construction Cost [1000000] |

Removed: HAL-E-PS-EN-0080 GRP pipes; HAL-E-PA-EN-0080 GRP pipes; HAL-E-MS-EN-0080 GRP pipes; HAL-E-MA-EN-0080 GRP pipes; PROCUREMENT (27%); HAL-E-ST-A-1700 PES -Steel Structure; HAL-P-PO-EN-170 GRP pipes; HAL-P-MF-EN-170 GRP pipes; HAL-P-DL-EN-170 GRP pipes; HAL-P-ST-EN-170 GRP pipes; CONSTRUCTION (60%); HAL-C-GEN-1440 Relocating of existing Tress; HAL-C-GEN-99 Demolition of existing structure; HAL-C-GEN-88 Demolition of existing curbstone,side walk & steel fence; HAL-C-GEN-78 Backfilling to reach target level; HAL-C-GEN-620 Block Wall; BLOCK B; BLOCK C; BLOCK A; BLOCK D; BLOCK E; HAL-C-GEN-190 Excavation to the target grading level; HAL-C-GEN-200 Backfilling to reach target level; HAL-C-ENV-SW-486 Installation of GRP Pipes for Sewer; HAL-C-ENV-SW-546 GRP pipe service connection; HAL-C-TC-S-9100 Architectural Snagg works -1; HAL-C-TC-S-9090 Civil Snagg works; HAL-C-TC-S-9110 Architectural Snagg works-2

Changed:

| ID | Task | Start | Finish | Duration | Complete | Total float | Predecessors | Other |
| --- | --- | --- | --- | --- | --- | --- | --- | --- |
| 1 | **PROJECT MILESTONES** | 2025-12-04 → 2026-01-07 (+34d) | 2026-11-02 → 2027-03-02 (+120d) |  |  |  |  |  |
| 1 | **CONTRACTUAL MILESTONES** | 2025-12-04 → 2026-01-07 (+34d) | 2026-11-02 → 2027-03-02 (+120d) |  |  |  |  |  |
| DAM3-PMS-MMS-0010 | Project Start Date | 2025-12-04 A → 2026-01-07 A (+34d) | 2025-12-04 A → 2026-01-07 A (+34d) |  |  |  |  |  |
| DAM3-PMS-MMS-0020 | Completion of Mobilization Works | 2026-01-05 A → 2026-01-18 A (+13d) | 2026-01-05 A → 2026-01-18 A (+13d) |  |  |  |  |  |
| DAM3-PMS-MMS-0040 | Completion of Time Schedule submission | 2025-12-22 A → 2026-02-11 A (+51d) | 2025-12-22 A → 2026-02-11 A (+51d) |  |  |  |  |  |
| DAM3-PMS-MMS-0030 | Completion of Site Suvey Works | 2025-12-04 A → 2026-02-12 A (+70d) | 2025-12-04 A → 2026-02-12 A (+70d) |  |  |  |  |  |
| DAM3-PMS-MMS-0050 | Completion of Plans (PEP,PQP,HSE, Procurement Plan) | 2025-12-31 A → 2026-05-04 A (+124d) | 2025-12-31 A → 2026-05-04 A (+124d) |  |  |  |  |  |
| DAM3-PMS-MMS-0060 | Completion of Engineering and Materials | 2026-10-19 → 2026-07-05 A (-106d) | 2026-10-19 → 2026-07-05 A (-106d) |  | 0% → 100% | 2.75d → none |  |  |
| DAM3-PMS-MMS-0080 | Network start | 2026-05-05 A → 2026-08-01 A (+88d) | 2026-05-05 A → 2026-08-01 A (+88d) |  |  |  |  |  |
| DAM3-PMS-MMS-0070 | Completion of Site levelling, local roads & parkings | 2026-01-05 A → 2026-10-20 (+288d) | 2026-01-05 A → 2026-10-20 (+288d) |  | 100% → 0% | none → 0d |  |  |
| DAM3-PMS-MMS-0110 | Competion of Testing and Commissioning | 2026-10-21 → 2026-12-22 (+62d) | 2026-10-21 → 2026-12-22 (+62d) |  |  | 10.05d → 59d |  |  |
| DAM3-PMS-MMS-0090 | Completion of Construction | 2026-10-31 → 2027-02-15 (+107d) | 2026-10-31 → 2027-02-15 (+107d) |  |  | 2d → 12d |  |  |
| DAM3-PMS-MMS-0100 | Project Completion Date | 2026-11-02 → 2027-03-02 (+120d) | 2026-11-02 → 2027-03-02 (+120d) |  |  |  | DAM3-FH-1020, DAM3-PMS-MMS-0090, DAM3-PMS-MMS-0110, DAM3-FH-1020 FF → DAM3-FH-1020, DAM3-PMS-MMS-0090, DAM3-PMS-MMS-0110 |  |
| 3 | **DISCIPLINE MILESTONES** | 2025-12-28 → 2026-02-15 (+49d) | 2026-10-31 → 2027-02-15 (+107d) |  |  |  |  |  |
| 6 | **900 SQM FACTORIES** | 2025-12-28 → 2026-02-15 (+49d) | 2026-10-31 → 2027-02-15 (+107d) |  |  |  |  |  |
| DAM3-PMS-DMS-2360 | Construction Start | 2025-12-28 A → 2026-02-15 A (+49d) | 2025-12-28 A → 2026-02-15 A (+49d) |  |  |  |  |  |
| DAM3-PMS-DMS-2310 | Completion of Civil works | 2026-10-19 → 2026-12-02 (+44d) | 2026-10-19 → 2026-12-02 (+44d) |  |  | 5.75d → 29.8d |  |  |
| DAM3-PMS-DMS-2330 | Completion of Mechanical works | 2026-10-24 → 2027-01-12 (+80d) | 2026-10-24 → 2027-01-12 (+80d) |  |  | 6.55d → 36d |  |  |
| DAM3-PMS-DMS-2320 | Completion of Electrical works | 2026-10-27 → 2027-02-11 (+107d) | 2026-10-27 → 2027-02-11 (+107d) |  |  | 2.75d → 10d |  |  |
| DAM3-PMS-DMS-2340 | Completion of Architectural works | 2026-10-27 → 2027-02-11 (+107d) | 2026-10-27 → 2027-02-11 (+107d) |  |  | 2.75d → 10d |  |  |
| DAM3-PMS-DMS-2370 | Construction Finish | 2026-10-31 → 2027-02-15 (+107d) | 2026-10-31 → 2027-02-15 (+107d) |  |  | 0d → 7d |  |  |
| 1 | **SITE INFRASTRUCTURE** | 2026-10-19 → 2027-01-25 (+98d) | 2026-10-31 → 2027-02-15 (+107d) |  |  |  |  |  |
| DAM3-PMS-DMS-2460 | Completion of Environmentall works | 2026-10-19 → 2027-01-25 (+98d) | 2026-10-19 → 2027-01-25 (+98d) |  |  | 10.75d → 25d |  |  |
| DAM3-PMS-DMS-2450 | Completion of External works | 2026-10-31 → 2027-02-15 (+107d) | 2026-10-31 → 2027-02-15 (+107d) |  |  | 0d → 7d |  |  |
| 2 | **MOBILIZATION** | 2025-12-04 → 2026-01-07 (+34d) | 2026-01-05 → 2026-05-04 (+119d) |  |  |  |  |  |
| 3 | **SITE FACILITIES AND OFFICES** | 2025-12-04 → 2026-01-07 (+34d) | 2026-01-05 → 2026-02-23 (+49d) |  |  |  |  |  |
| DAM3-MOB-SO.0019 | Mobilization of Manpower | 2025-12-16 A → 2026-01-07 A (+22d) | 2026-01-04 A → 2026-02-23 A (+50d) |  |  |  | DAM3-MOB-SO.0018 → DAM3-MOB-SO.0018, DAM3-PMS-MMS-0040 |  |
| DAM3-MOB-SO.0014 | Clear and Grub for Offices and Access Roads | 2025-12-04 A → 2026-01-11 A (+38d) | 2025-12-08 A → 2026-02-16 A (+70d) |  |  |  |  |  |
| DAM3-MOB-SO.0015 | Construct Site Offices | 2025-12-18 A → 2026-01-19 A (+32d) | 2025-12-25 A → 2026-02-10 A (+47d) |  |  |  |  |  |
| DAM3-MOB-SO.0020 | Mobilization of Equipment | 2025-12-23 A → 2026-01-25 A (+33d) | 2026-01-04 A → 2026-02-23 A (+50d) |  |  |  |  |  |
| DAM3-MOB-SO.0018 | Install Project Signs | 2025-12-24 A → 2026-02-03 A (+41d) | 2026-01-05 A → 2026-02-04 A (+30d) |  |  |  |  |  |
| DAM3-MOB-SO.0011 | Site Layout Plan Prep | 2025-12-04 A → 2026-02-04 A (+62d) | 2025-12-06 A → 2026-02-04 A (+60d) |  |  |  |  |  |
| DAM3-MOB-SO.0012 | Site Layout Plan Submittal | 2025-12-06 A → 2026-02-04 A (+60d) | 2025-12-07 A → 2026-02-04 A (+59d) |  |  |  |  |  |
| DAM3-MOB-SO.0013 | Site Layout Plan Owner Approval | 2025-12-06 A → 2026-02-04 A (+60d) | 2025-12-08 A → 2026-02-16 A (+70d) |  |  |  |  |  |
| DAM3-MOB-SO.0016 | Electrical Works and Connections | 2025-12-23 A → 2026-02-09 A (+48d) | 2025-12-24 A → 2026-02-23 A (+61d) |  |  |  |  |  |
| DAM3-MOB-SO.0017 | Site Utilities | 2025-12-27 A → 2026-02-11 A (+46d) | 2026-01-04 A → 2026-02-23 A (+50d) |  |  |  |  |  |
| DAM3-MOB-SO.0010 | Site Survey | 2025-12-04 A → 2026-02-12 A (+70d) | 2025-12-04 A → 2026-02-12 A (+70d) |  |  |  |  |  |
| 2 | **PRELIMINARY SUBMITTALS** | 2025-12-10 → 2026-01-14 (+35d) | 2025-12-31 → 2026-05-04 (+124d) |  |  |  |  |  |
| 1 | **PREPARATION AND SUBMITTALS** | 2025-12-10 → 2026-01-14 (+35d) | 2025-12-21 → 2026-02-21 (+62d) |  |  |  |  |  |
| DAM3-PRE-SUB-0012 | Baseline Schedule | 2025-12-18 A → 2026-01-14 A (+27d) | 2025-12-18 A → 2026-01-14 A (+27d) |  |  |  |  |  |
| DAM3-PRE-SUB-0011 | Health & Safety Plan | 2025-12-17 A → 2026-01-26 A (+40d) | 2025-12-17 A → 2026-01-26 A (+40d) |  |  |  |  |  |
| DAM3-PRE-SUB-0013 | Risk Management plan | 2025-12-15 A → 2026-01-28 A (+44d) | 2025-12-15 A → 2026-01-28 A (+44d) |  |  |  | DAM3-PRE-SUB-0011 SS, DAM3-PRE-SUB-0012 → DAM3-PRE-SUB-0011 SS, DAM3-PRE-SUB-0012, DAM3-PMS-DMS-2360 |  |
| DAM3-PRE-SUB-0015 | Quality Control Plan | 2025-12-15 A → 2026-01-28 A (+44d) | 2025-12-15 A → 2026-01-28 A (+44d) |  |  |  |  |  |
| DAM3-PRE-SUB-0010 | Project Execution Plan | 2025-12-21 A → 2026-02-21 A (+62d) | 2025-12-21 A → 2026-02-21 A (+62d) |  |  |  |  |  |
| DAM3-PRE-SUB-0014 | Communication Plan | 2025-12-10 A → 2026-02-21 A (+73d) | 2025-12-10 A → 2026-02-21 A (+73d) |  |  |  |  |  |
| 2 | **REVIEW AND APPROVALS** | 2025-12-10 → 2026-01-14 (+35d) | 2025-12-31 → 2026-05-04 (+124d) |  |  |  |  |  |
| DAM3-PRE-SUB-1015 | Baseline Schedule | 2025-12-18 A → 2026-01-14 A (+27d) | 2025-12-22 A → 2026-02-10 A (+50d) |  |  |  |  |  |
| DAM3-PRE-SUB-1011 | Health & Safety Plan | 2025-12-17 A → 2026-01-26 A (+40d) | 2025-12-31 A → 2026-01-28 A (+28d) |  |  |  |  |  |
| DAM3-PRE-SUB-1012 | Risk Management plan | 2025-12-15 A → 2026-01-28 A (+44d) | 2025-12-28 A → 2026-02-03 A (+37d) |  |  |  |  |  |
| DAM3-PRE-SUB-1014 | Quality Control Plan | 2025-12-15 A → 2026-01-28 A (+44d) | 2025-12-28 A → 2026-05-04 A (+127d) |  |  |  |  |  |
| DAM3-PRE-SUB-1010 | Project Execution Plan | 2025-12-21 A → 2026-02-21 A (+62d) | 2025-12-22 A → 2026-05-03 A (+132d) |  |  |  |  |  |
| DAM3-PRE-SUB-1013 | Communication Plan | 2025-12-10 A → 2026-02-21 A (+73d) | 2025-12-10 A → 2026-05-03 A (+144d) |  |  |  |  |  |
| 3 | **ENGINEERING (3%)** | 2025-12-08 → 2026-01-15 (+38d) | 2026-08-16 → 2026-07-05 (-42d) |  |  |  |  |  |
| 1 | **SHOP DRAWINGS** | 2025-12-11 → 2026-01-20 (+40d) | 2026-03-29 → 2026-07-05 (+98d) |  |  |  |  |  |
| 1 | **PREPARATION AND SUBMITTAL** | 2025-12-11 → 2026-01-20 (+40d) | 2026-02-07 → 2026-07-01 (+144d) |  |  |  |  |  |
| 5 | **STRUCTURAL** | 2025-12-24 → 2026-02-03 (+41d) | 2026-02-02 → 2026-06-02 (+120d) |  |  |  |  |  |
| DAM3-E-SS-C-830 | SECTIONS | 2025-12-24 A → 2026-02-03 A (+41d) | 2025-12-24 A → 2026-02-03 A (+41d) | 1.62d → 2d |  |  |  | resources Engineer [16 h]; Draftman [16 h] → Engineer [4 h]; Draftman [4 h] |
| DAM3-E-SS-C-840 | EXTERNAL WALL SECTION DETAILS | 2025-12-24 A → 2026-02-03 A (+41d) | 2025-12-24 A → 2026-02-03 A (+41d) | 0.62d → 2d |  |  |  | resources Engineer [32 h]; Draftman [32 h] → Engineer [4 h]; Draftman [4 h] |
| DAM3-E-SS-C-850 | BASE PLATE DETAILS | 2026-02-02 A → 2026-02-03 A (+1d) | 2026-02-02 A → 2026-02-03 A (+1d) |  |  |  |  | resources Engineer [32 h]; Draftman [32 h] → Engineer [4 h]; Draftman [4 h] |
| DAM3-E-SS-C-770 | BASE PLATE LAYOUT | 2026-02-02 A → 2026-02-07 A (+5d) | 2026-02-02 A → 2026-02-07 A (+5d) |  |  |  | DAM3-E-SS-C-760 → DAM3-E-SS-C-760, DAM3-PMS-MMS-0070 | resources Engineer [16 h]; Draftman [16 h] → Engineer [32 h]; Draftman [32 h] |
| DAM3-E-SS-C-790 | ROOF FRAMING LAYOUT | 2026-02-02 A → 2026-02-07 A (+5d) | 2026-02-02 A → 2026-02-07 A (+5d) |  |  |  |  | resources Engineer [16 h]; Draftman [16 h] → Engineer [32 h]; Draftman [32 h] |
| DAM3-E-SS-C-800 | PURLINS FRAMING LAYOUT | 2026-02-02 A → 2026-02-07 A (+5d) | 2026-02-02 A → 2026-02-07 A (+5d) |  |  |  |  | resources Engineer [16 h]; Draftman [16 h] → Engineer [32 h]; Draftman [32 h] |
| DAM3-E-SS-C-810 | ROOF SHEETING LAYOUT | 2026-02-02 A → 2026-02-07 A (+5d) | 2026-02-02 A → 2026-02-07 A (+5d) |  |  |  |  | resources Engineer [16 h]; Draftman [16 h] → Engineer [32 h]; Draftman [32 h] |
| DAM3-E-SS-C-820 | COLUMNS AND AXIS LAYOUT | 2026-01-01 A → 2026-02-07 A (+37d) | 2026-01-01 A → 2026-02-07 A (+37d) |  |  |  |  | resources Engineer [16 h]; Draftman [16 h] → Engineer [4 h]; Draftman [4 h] |
| DAM3-E-SS-C-750 | FOUNDATION LAYOUT | 2025-12-30 A → 2026-02-18 A (+50d) | 2025-12-30 A → 2026-02-18 A (+50d) | 4d → 2d |  |  | DAM3-E-SS-R-780 → DAM3-E-SS-R-780, DAM3-PMS-MMS-0020, DAM3-PMS-MMS-0050 | resources Draftman [16 h]; Engineer [16 h] → Draftman [32 h]; Engineer [32 h] |
| DAM3-E-SS-C-780 | TIE BEAM @ 4500mm EL. | 2026-01-08 A → 2026-03-01 A (+52d) | 2026-01-08 A → 2026-03-01 A (+52d) |  |  |  | DAM3-E-SS-C-770 → DAM3-E-SS-C-770, DAM3-PRE-SUB-1015, DAM3-PRE-SUB-1014, DAM3-PRE-SUB-1013 | resources Engineer [16 h]; Draftman [16 h] → Engineer [32 h]; Draftman [32 h] |
| DAM3-E-SS-C-880 | PUMP SHED AND GRP WATER TANK STRUCTURAL DETAILS (1-2) | 2026-01-22 A → 2026-03-29 A (+66d) | 2026-01-22 A → 2026-03-29 A (+66d) |  |  |  |  | resources Engineer [32 h]; Draftman [32 h] → Engineer [4 h]; Draftman [4 h] |
| DAM3-E-SS-C-890 | PUMP SHED AND GRP WATER TANK STRUCTURAL DETAILS (2-2) | 2026-01-22 A → 2026-03-29 A (+66d) | 2026-01-22 A → 2026-03-29 A (+66d) |  |  |  |  | resources Engineer [32 h]; Draftman [32 h] → Engineer [4 h]; Draftman [4 h] |
| DAM3-E-SS-C-760 | GRADE BEAM / SLAB ON GRADE LAYOUT | 2026-01-28 A → 2026-04-21 A (+83d) | 2026-01-28 A → 2026-04-21 A (+83d) | 3d → 2d |  |  | DAM3-E-SS-C-750 → DAM3-E-SS-C-750, DAM3-PMS-MMS-0030 | resources Engineer [16 h]; Draftman [16 h] → Engineer [32 h]; Draftman [32 h] |
| DAM3-E-SS-C-860 | TYPICAL STRUCTURAL SECTION DETAILS | 2026-01-01 A → 2026-04-21 A (+110d) | 2026-01-01 A → 2026-04-21 A (+110d) |  |  |  |  | resources Engineer [32 h]; Draftman [32 h] → Engineer [4 h]; Draftman [4 h] |

| ID | Task | Start | Finish | Duration | Predecessors | Other |
| --- | --- | --- | --- | --- | --- | --- |
| DAM3-E-SS-C-870 | STRUCTURAL SCHEDULE | 2026-01-01 A → 2026-06-02 A (+152d) | 2026-01-01 A → 2026-06-02 A (+152d) | 1.62d → 2d |  | resources Engineer [32 h]; Draftman [32 h] → Engineer [4 h]; Draftman [4 h] |
| 2 | **ARCHITECTURAL** | 2025-12-23 → 2026-02-03 (+42d) | 2026-02-04 → 2026-06-02 (+118d) |  |  |  |
| DAM3-E-SS-A-1170 | ELEVATIONS (SHEET 01 0F 02) | 2025-12-24 A → 2026-02-03 A (+41d) | 2025-12-24 A → 2026-02-03 A (+41d) | 2d → 5d |  | resources Engineer [32 h]; Draftman [32 h] → none |
| DAM3-E-SS-A-830 | GROUND FLOOR LAYOUT PLAN | 2025-12-23 A → 2026-02-03 A (+42d) | 2025-12-23 A → 2026-02-03 A (+42d) |  |  | resources Engineer [16 h]; Draftman [16 h] → Engineer [32 h]; Draftman [32 h] |
| DAM3-E-SS-A-840 | GROUND FLOOR ENLARGED LAYOUT PLAN | 2025-12-23 A → 2026-02-03 A (+42d) | 2025-12-23 A → 2026-02-03 A (+42d) | 1.12d → 2d |  | resources Engineer [16 h]; Draftman [16 h] → Engineer [4 h]; Draftman [4 h] |
| DAM3-E-SS-A-860 | ELEVATIONS (SHEET 01 0F 02) | 2025-12-24 A → 2026-02-03 A (+41d) | 2025-12-24 A → 2026-02-03 A (+41d) |  |  | resources Engineer [32 h]; Draftman [32 h] → Engineer [4 h]; Draftman [4 h] |
| DAM3-E-SS-A-870 | BUILDING SECTIONS | 2025-12-24 A → 2026-02-03 A (+41d) | 2025-12-24 A → 2026-02-03 A (+41d) | 1.62d → 2d |  | resources Engineer [32 h]; Draftman [32 h] → Engineer [4 h]; Draftman [4 h] |
| DAM3-E-SS-A-880 | WALL SECTIONS | 2025-12-24 A → 2026-02-03 A (+41d) | 2025-12-24 A → 2026-02-03 A (+41d) |  | DAM3-E-SS-A-870 → DAM3-E-SS-A-870, DAM3-E-SS-A-1170 | resources Engineer [32 h]; Draftman [32 h] → Engineer [4 h]; Draftman [4 h] |
| DAM3-E-SS-A-890 | CEILING LAYOUT PLAN | 2026-01-11 A → 2026-02-05 A (+25d) | 2026-01-11 A → 2026-02-05 A (+25d) |  |  | resources Engineer [32 h]; Draftman [32 h] → Engineer [4 h]; Draftman [4 h] |
| DAM3-E-SS-A-900 | FINISHING LAYOUT PLAN | 2026-01-11 A → 2026-02-09 A (+29d) | 2026-01-11 A → 2026-02-09 A (+29d) | 1.62d → 2d |  | resources Engineer [32 h]; Draftman [32 h] → Engineer [4 h]; Draftman [4 h] |
| DAM3-E-SS-A-910 | TOILET DETAILS | 2026-01-11 A → 2026-02-11 A (+31d) | 2026-01-11 A → 2026-02-11 A (+31d) | 1.5d → 2d | DAM3-E-SS-A-900 → DAM3-E-SS-A-900, DAM3-E-SA-A-890, DAM3-E-SA-A-1170, DAM3-E-SA-A-880 | resources Engineer [32 h]; Draftman [32 h] → Engineer [4 h]; Draftman [4 h] |
| DAM3-E-SS-A-920 | DOORS & WINDOWS SCHEDULE | 2026-02-04 A → 2026-02-11 A (+7d) | 2026-02-04 A → 2026-02-11 A (+7d) | 1.5d → 2d |  | resources Engineer [32 h]; Draftman [32 h] → Engineer [4 h]; Draftman [4 h] |
| DAM3-E-SS-A-930 | MISCELLANEOUS DETAILS - 01 | 2026-01-21 A → 2026-02-11 A (+21d) | 2026-01-21 A → 2026-02-11 A (+21d) |  |  | resources Engineer [32 h]; Draftman [32 h] → Engineer [4 h]; Draftman [4 h] |
| DAM3-E-SS-A-940 | MISCELLANEOUS DETAILS - 02 | 2026-01-21 A → 2026-02-11 A (+21d) | 2026-01-21 A → 2026-02-11 A (+21d) | 1.5d → 2d |  | resources Engineer [32 h]; Draftman [32 h] → Engineer [4 h]; Draftman [4 h] |
| DAM3-E-SS-A-950 | SIGNAGE LOCATION PLAN | 2026-01-21 A → 2026-02-11 A (+21d) | 2026-01-21 A → 2026-02-11 A (+21d) |  | DAM3-E-SS-A-940 → DAM3-E-SS-A-940, DAM3-C-B5-S-1167, DAM3-C-B6-S-647 | resources Engineer [32 h]; Draftman [32 h] → Engineer [4 h]; Draftman [4 h] |
| DAM3-E-SS-A-960 | SIGNAGE DESIGN DETAILS | 2026-01-21 A → 2026-02-11 A (+21d) | 2026-01-21 A → 2026-02-11 A (+21d) |  | DAM3-E-SS-A-950 → DAM3-E-SS-A-950, DAM3-C-B4-S-897 | resources Engineer [32 h]; Draftman [32 h] → Engineer [8 h]; Draftman [8 h] |
| DAM3-E-SS-A-850 | SKYLIGHT DISTRIBUTION - ROOF LAYOUT PLAN | 2025-12-23 A → 2026-06-02 A (+161d) | 2025-12-23 A → 2026-06-02 A (+161d) |  |  | resources Engineer [16 h]; Draftman [16 h] → Engineer [4 h]; Draftman [4 h] |
| 3 | **MECHANICAL** | 2026-01-14 → 2026-02-04 (+21d) | 2026-02-03 → 2026-04-16 (+72d) |  |  |  |
| DAM3-E-SS-M-650 | SCHEMATIC RISER DIAGRAM PLUMBING-DRAINAGE | 2026-01-20 A → 2026-02-04 A (+15d) | 2026-01-20 A → 2026-02-04 A (+15d) | 1.62d → 2d |  | resources Engineer [32 h]; Draftman [32 h] → Engineer [4 h]; Draftman [4 h] |
| DAM3-E-SS-M-660 | SCHEMATIC RISER DIAGRAM PLUMBING-WATER | 2026-01-20 A → 2026-02-04 A (+15d) | 2026-01-20 A → 2026-02-04 A (+15d) | 1.5d → 2d |  | resources Engineer [32 h]; Draftman [32 h] → Engineer [4 h]; Draftman [4 h] |
| DAM3-E-SS-M-670 | GENERAL MISELLANEOUS DETAILS PLUMBING | 2026-01-17 A → 2026-02-04 A (+18d) | 2026-01-17 A → 2026-02-04 A (+18d) |  | DAM3-E-SS-M-680 → DAM3-E-SS-M-660 | resources Engineer [32 h]; Draftman [32 h] → Engineer [4 h]; Draftman [4 h] |
| DAM3-E-SS-M-680 | GENERAL MISELLANEOUS DETAILS PLUMBING | 2026-01-20 A → 2026-02-04 A (+15d) | 2026-01-20 A → 2026-02-04 A (+15d) |  | DAM3-E-SS-M-660 → DAM3-E-SS-M-670 | resources Engineer [32 h]; Draftman [32 h] → Engineer [4 h]; Draftman [4 h] |
| DAM3-E-SS-M-750 | GENERAL-INSTRUMENTATION & CONTROL | 2026-01-17 A → 2026-02-04 A (+18d) | 2026-01-17 A → 2026-02-04 A (+18d) |  |  | resources Engineer [32 h]; Draftman [32 h] → Engineer [8 h]; Draftman [8 h] |
| DAM3-E-SS-M-780 | SCHEMATIC RISER DIAGRAM FIREFIGHTING | 2026-01-20 A → 2026-02-04 A (+15d) | 2026-01-20 A → 2026-02-04 A (+15d) |  |  | resources Engineer [32 h]; Draftman [32 h] → Engineer [8 h]; Draftman [8 h] |
| DAM3-E-SS-M-790 | GENERAL-MISCELLANEOUS DETAILS- FIRE FIGHTING | 2026-01-20 A → 2026-02-04 A (+15d) | 2026-01-20 A → 2026-02-04 A (+15d) | 4d → 2d |  | resources Engineer [32 h]; Draftman [32 h] → Engineer [8 h]; Draftman [8 h] |
| DAM3-E-SS-M-800 | MISCELLANEOUS DETAILS | 2026-01-17 A → 2026-02-04 A (+18d) | 2026-01-17 A → 2026-02-04 A (+18d) |  |  | resources Engineer [32 h]; Draftman [32 h] → Engineer [8 h]; Draftman [8 h] |
| DAM3-E-SS-M-760 | GENERAL MISCELLANEOUS DETAILS - HVAC | 2026-01-20 A → 2026-02-05 A (+16d) | 2026-01-20 A → 2026-02-05 A (+16d) | 1.62d → 2d |  | resources Engineer [32 h]; Draftman [32 h] → Engineer [8 h]; Draftman [8 h] |
| DAM3-E-SS-M-610 | TOILETS DETAILS PLUMBING-DRAINAGE | 2026-01-17 A → 2026-03-11 A (+53d) | 2026-01-19 A → 2026-03-11 A (+51d) |  |  | resources Engineer [32 h]; Draftman [32 h] → Engineer [4 h]; Draftman [4 h] |
| DAM3-E-SS-M-640 | TOILET DETAILS PLUMBING-WATER | 2026-01-17 A → 2026-03-11 A (+53d) | 2026-01-17 A → 2026-03-11 A (+53d) | 1.5d → 2d | DAM3-E-SS-M-630 → DAM3-E-SS-M-630, DAM3-C-GEN-190 | resources Engineer [32 h]; Draftman [32 h] → Engineer [4 h]; Draftman [4 h] |
| DAM3-E-SS-M-770 | TYPICAL GROUND FLOOR PLAN FIREFIGHTING | 2026-01-17 A → 2026-03-14 A (+56d) | 2026-01-17 A → 2026-03-14 A (+56d) |  |  | resources Engineer [32 h]; Draftman [32 h] → Engineer [8 h]; Draftman [8 h] |
| DAM3-E-SS-M-620 | TYPICAL ROOF PLUMBING PLAN | 2026-01-20 A → 2026-03-16 A (+55d) | 2026-01-20 A → 2026-03-16 A (+55d) |  |  | resources Engineer [32 h]; Draftman [32 h] → Engineer [4 h]; Draftman [4 h] |
| DAM3-E-SS-M-600 | TYPICAL GROUND FLOOR PLAN-PLUMBING- DRAINAGE | 2026-01-14 A → 2026-03-17 A (+62d) | 2026-01-14 A → 2026-03-17 A (+62d) | 4d → 2d |  | resources Engineer [16 h]; Draftman [16 h] → Engineer [4 h]; Draftman [4 h] |
| DAM3-E-SS-M-630 | GROUND FLOOR WATER SUPPLY PLAN | 2026-01-17 A → 2026-03-17 A (+59d) | 2026-01-17 A → 2026-03-17 A (+59d) | 1.5d → 2d |  | resources Engineer [32 h]; Draftman [32 h] → Engineer [4 h]; Draftman [4 h] |
| DAM3-E-SS-M-690 | SCHEDULE- PLUMBING | 2026-01-17 A → 2026-03-17 A (+59d) | 2026-01-17 A → 2026-03-17 A (+59d) | 4d → 2d | DAM3-E-SS-M-670 → DAM3-E-SS-M-680 | resources Engineer [32 h]; Draftman [32 h] → Engineer [4 h]; Draftman [4 h] |
| DAM3-E-SS-M-720 | SCHEDULES | 2026-01-20 A → 2026-03-17 A (+56d) | 2026-01-20 A → 2026-03-17 A (+56d) |  |  | resources Engineer [32 h]; Draftman [32 h] → Engineer [8 h]; Draftman [8 h] |
| DAM3-E-SS-M-730 | GROUND FLOOR PLAN-HVAC SYSTEM | 2026-02-03 A → 2026-03-26 A (+51d) | 2026-02-03 A → 2026-03-26 A (+51d) | 1.5d → 2d |  | resources Engineer [32 h]; Draftman [32 h] → Engineer [8 h]; Draftman [8 h] |
| DAM3-E-SS-M-740 | TYPICAL ROOF HVAC PLAN | 2026-02-03 A → 2026-03-26 A (+51d) | 2026-02-03 A → 2026-03-26 A (+51d) | 1.5d → 2d |  | resources Engineer [32 h]; Draftman [32 h] → Engineer [8 h]; Draftman [8 h] |
| DAM3-E-SS-M-700 | PUMP ROOM LAYOUT | 2026-02-01 A → 2026-04-16 A (+74d) | 2026-02-01 A → 2026-04-16 A (+74d) |  |  | resources Engineer [32 h]; Draftman [32 h] → Engineer [4 h]; Draftman [4 h] |
| DAM3-E-SS-M-710 | PUMP ROOM 3D & SECTIONS VIEW | 2026-02-01 A → 2026-04-16 A (+74d) | 2026-02-01 A → 2026-04-16 A (+74d) | 1.62d → 2d |  | resources Engineer [32 h]; Draftman [32 h] → Engineer [8 h]; Draftman [8 h] |
| 4 | **ELECTRICAL** | 2025-12-22 → 2026-02-09 (+49d) | 2026-02-07 → 2026-06-25 (+138d) |  |  |  |
| DAM3-E-SS-E-1000 | ROOF FLOOR LIGHTING PLAN | 2025-12-24 A → 2026-02-09 A (+47d) | 2025-12-24 A → 2026-02-09 A (+47d) |  |  | resources Engineer [32 h]; Draftman [32 h] → Engineer [4 h]; Draftman [4 h] |
| DAM3-E-SS-E-1060 | ROOF FLOOR LIGHTENING PLAN | 2026-01-13 A → 2026-02-09 A (+27d) | 2026-01-13 A → 2026-02-09 A (+27d) |  |  | resources Engineer [32 h]; Draftman [32 h] → Engineer [8 h]; Draftman [8 h] |
| DAM3-E-SS-E-1140 | POWER FOR MECHANICAL | 2025-12-24 A → 2026-02-09 A (+47d) | 2025-12-24 A → 2026-02-09 A (+47d) |  |  | resources Engineer [32 h]; Draftman [32 h] → Engineer [8 h]; Draftman [8 h] |
| DAM3-E-SS-E-1150 | GROUND FLOOR LIGHTING PLAN | 2025-12-22 A → 2026-02-09 A (+49d) | 2025-12-22 A → 2026-02-09 A (+49d) |  |  | resources Engineer [32 h]; Draftman [32 h] → Engineer [8 h]; Draftman [8 h] |
| DAM3-E-SS-E-940 | GROUND FLOOR POWER PLAN | 2025-12-22 A → 2026-02-09 A (+49d) | 2025-12-22 A → 2026-02-09 A (+49d) | 4d → 2d |  | resources Engineer [32 h]; Draftman [32 h] → Engineer [4 h]; Draftman [4 h] |
| DAM3-E-SS-E-950 | GROUND FLOOR POWER FOR MECHANICAL | 2025-12-24 A → 2026-02-09 A (+47d) | 2025-12-24 A → 2026-02-09 A (+47d) |  |  | resources Engineer [32 h]; Draftman [32 h] → Engineer [4 h]; Draftman [4 h] |
| DAM3-E-SS-E-960 | ROOF FLOOR POWER FOR MECHANICAL | 2026-01-13 A → 2026-02-09 A (+27d) | 2026-01-13 A → 2026-02-09 A (+27d) |  |  | resources Engineer [32 h]; Draftman [32 h] → Engineer [4 h]; Draftman [4 h] |
| DAM3-E-SS-E-990 | GROUND FLOOR LIGHTING PLAN | 2026-01-13 A → 2026-02-09 A (+27d) | 2026-01-13 A → 2026-02-09 A (+27d) | 1.5d → 2d |  | resources Engineer [32 h]; Draftman [32 h] → Engineer [4 h]; Draftman [4 h] |
| DAM3-E-SS-E-1130 | GROUND FLOOR POWER PLAN | 2026-01-13 A → 2026-02-09 A (+27d) | 2026-01-13 A → 2026-02-09 A (+27d) | 2d → 1d |  | resources Engineer [32 h]; Draftman [32 h] → Engineer [8 h]; Draftman [8 h] |
| DAM3-E-SS-E-1030 | GROUND FLOOR CCTV PLAN | 2026-01-13 A → 2026-03-01 A (+47d) | 2026-01-13 A → 2026-03-01 A (+47d) |  |  | resources Engineer [32 h]; Draftman [32 h] → Engineer [4 h]; Draftman [4 h] |
| DAM3-E-SS-E-1040 | GROUND FLOOR DATA & TELECOM PLAN | 2026-01-13 A → 2026-03-01 A (+47d) | 2026-01-13 A → 2026-03-01 A (+47d) |  |  | resources Engineer [32 h]; Draftman [32 h] → Engineer [8 h]; Draftman [8 h] |
| DAM3-E-SS-E-1050 | GROUND FLOOR GROUNDING PLAN | 2026-01-21 A → 2026-03-01 A (+39d) | 2026-01-21 A → 2026-03-01 A (+39d) |  |  | resources Engineer [32 h]; Draftman [32 h] → Engineer [8 h]; Draftman [8 h] |
| DAM3-E-SS-E-1120 | ELECTRICAL DETAILS | 2026-02-07 A → 2026-03-01 A (+22d) | 2026-02-07 A → 2026-03-01 A (+22d) |  |  | resources Engineer [32 h]; Draftman [32 h] → Engineer [8 h]; Draftman [8 h] |
| DAM3-E-SS-E-1160 | GROUND FLOOR GROUNDING PLAN | 2026-01-21 A → 2026-03-01 A (+39d) | 2026-01-21 A → 2026-03-01 A (+39d) |  |  | resources Engineer [32 h]; Draftman [32 h] → Engineer [8 h]; Draftman [8 h] |
| DAM3-E-SS-E-1180 | ELECTRICAL DETAILS | 2026-02-07 A → 2026-03-01 A (+22d) | 2026-02-07 A → 2026-03-01 A (+22d) |  |  |  |
| DAM3-E-SS-E-1010 | GOUND FLOOR ACCESS CONTROL | 2026-02-05 A → 2026-03-29 A (+52d) | 2026-02-05 A → 2026-03-29 A (+52d) | 1.62d → 2d |  | resources Engineer [32 h]; Draftman [32 h] → Engineer [4 h]; Draftman [4 h] |
| DAM3-E-SS-E-1020 | GROUND FLOOR FIRE ALARM PLAN | 2026-01-21 A → 2026-03-29 A (+67d) | 2026-01-21 A → 2026-03-29 A (+67d) |  |  | resources Engineer [32 h]; Draftman [32 h] → Engineer [4 h]; Draftman [4 h] |
| DAM3-E-SS-E-1070 | POWER RISER DIAGRAM | 2026-01-10 A → 2026-03-29 A (+78d) | 2026-01-10 A → 2026-03-29 A (+78d) |  |  | resources Engineer [32 h]; Draftman [32 h] → Engineer [8 h]; Draftman [8 h] |
| DAM3-E-SS-E-1080 | FIRE ALARM RISER DIAGRAM | 2026-01-21 A → 2026-03-29 A (+67d) | 2026-01-21 A → 2026-03-29 A (+67d) |  |  | resources Engineer [32 h]; Draftman [32 h] → Engineer [8 h]; Draftman [8 h] |
| DAM3-E-SS-E-1090 | DATA & TELECOME RISER DIAGRAM | 2026-02-04 A → 2026-03-29 A (+53d) | 2026-02-04 A → 2026-03-29 A (+53d) |  |  | resources Engineer [32 h]; Draftman [32 h] → Engineer [8 h]; Draftman [8 h] |
| DAM3-E-SS-E-1100 | ACCESS CONTROL RISER DIAGRAM | 2026-02-04 A → 2026-03-29 A (+53d) | 2026-02-04 A → 2026-03-29 A (+53d) |  |  | resources Engineer [32 h]; Draftman [32 h] → Engineer [8 h]; Draftman [8 h] |
| DAM3-E-SS-E-1110 | SCHEDULES | 2026-01-13 A → 2026-03-29 A (+75d) | 2026-01-13 A → 2026-03-29 A (+75d) |  |  | resources Engineer [32 h]; Draftman [32 h] → Engineer [8 h]; Draftman [8 h] |
| DAM3-E-SS-E-970 | ROOF FLOOR POWER | 2026-02-07 A → 2026-04-08 A (+60d) | 2026-02-07 A → 2026-04-09 A (+61d) | 1.62d → 2d |  | resources Engineer [32 h]; Draftman [32 h] → Engineer [4 h]; Draftman [4 h] |
| DAM3-E-SS-E-1170 | RISER DIAGRAM | 2026-02-04 A → 2026-04-27 A (+82d) | 2026-02-04 A → 2026-04-27 A (+82d) |  |  |  |
| DAM3-E-SS-E-980 | PV SYSTEM CALCULATION | 2026-02-07 A → 2026-06-25 A (+138d) | 2026-02-07 A → 2026-06-25 A (+138d) | 1.5d → 2d |  | resources Engineer [32 h]; Draftman [32 h] → Engineer [4 h]; Draftman [4 h] |
| 1 | **ROAD DRAWINGS** | 2025-12-11 → 2026-01-20 (+40d) | 2026-02-04 → 2026-07-01 (+147d) |  |  |  |
| DAM3-E-SS-R-780 | TOPOGRAPHIC SURVEY-CONTOURS MAP | 2025-12-11 A → 2026-01-20 A (+40d) | 2025-12-11 A → 2026-01-20 A (+40d) |  |  | resources Engineer [16 h]; Draftman [16 h] → Engineer [32 h]; Draftman [32 h] |
| DAM3-E-SS-R-730 | GRADING LAYOUT PLAN | 2025-12-18 A → 2026-02-03 A (+47d) | 2025-12-18 A → 2026-02-03 A (+47d) |  |  |  |
| DAM3-E-SS-R-880 | GENERAL SITE PLAN - OVERALL | 2026-01-18 A → 2026-03-08 A (+49d) | 2026-01-18 A → 2026-03-08 A (+49d) |  |  | resources Engineer [32 h]; Draftman [32 h] → Engineer [4 h]; Draftman [4 h] |
| DAM3-E-SS-R-890 | SITE SETTING-OUT PLAN - OVERALL | 2026-01-18 A → 2026-03-08 A (+49d) | 2026-01-18 A → 2026-03-08 A (+49d) |  |  | resources Engineer [32 h]; Draftman [32 h] → Engineer [4 h]; Draftman [4 h] |

| ID | Task | Start | Finish | Duration | Predecessors | Other |
| --- | --- | --- | --- | --- | --- | --- |
| DAM3-E-SS-R-900 | GENERAL LANDSCAPE LAYOUT | 2026-01-21 A → 2026-03-08 A (+46d) | 2026-01-21 A → 2026-03-08 A (+46d) |  |  | resources Engineer [32 h]; Draftman [32 h] → Engineer [4 h]; Draftman [4 h] |
| DAM3-E-SS-R-910 | GENERAL HARDSCAPE LAYOUT | 2026-01-21 A → 2026-03-08 A (+46d) | 2026-01-21 A → 2026-03-08 A (+46d) | 4d → 2d |  | resources Engineer [32 h]; Draftman [32 h] → Engineer [4 h]; Draftman [4 h] |
| DAM3-E-SS-R-920 | GENERAL SOFTSCAPE LAYOUT | 2026-01-20 A → 2026-03-08 A (+47d) | 2026-01-20 A → 2026-03-08 A (+47d) | 4d → 2d |  | resources Engineer [32 h]; Draftman [32 h] → Engineer [4 h]; Draftman [4 h] |
| DAM3-E-SS-R-960 | LANDSCAPE SCHEDULES | 2026-02-04 A → 2026-03-08 A (+32d) | 2026-02-04 A → 2026-03-08 A (+32d) |  |  | resources Draftman [32 h]; Engineer [32 h] → none |
| DAM3-E-SS-R-930 | PUMP ROOM DETAILS | 2026-01-22 A → 2026-03-14 A (+51d) | 2026-01-22 A → 2026-03-14 A (+51d) | 1.62d → 1d |  | resources Engineer [32 h]; Draftman [32 h] → Engineer [4 h]; Draftman [4 h] |
| DAM3-E-SS-R-740 | ROAD LAYOUT PLAN | 2026-01-14 A → 2026-03-16 A (+61d) | 2026-01-14 A → 2026-03-16 A (+61d) |  |  |  |
| DAM3-E-SS-R-750 | TYPICAL CROSS SECTIONS - KEY PLAN | 2026-01-18 A → 2026-03-16 A (+57d) | 2026-01-18 A → 2026-03-16 A (+57d) |  |  |  |
| DAM3-E-SS-R-760 | TYPICAL CROSS SECTIONS | 2026-01-18 A → 2026-03-16 A (+57d) | 2026-01-18 A → 2026-03-16 A (+57d) |  |  |  |
| DAM3-E-SS-R-770 | ROAD PROFILES | 2026-01-20 A → 2026-03-16 A (+55d) | 2026-01-20 A → 2026-03-16 A (+55d) |  |  | resources Engineer [16 h]; Draftman [16 h] → Engineer [32 h]; Draftman [32 h] |
| DAM3-E-SS-R-940 | GENERAL DETAILS | 2026-02-04 A → 2026-03-18 A (+42d) | 2026-02-04 A → 2026-03-18 A (+42d) | 2d → 1d | DAM3-E-SS-R-930 → DAM3-E-SS-R-930, DAM3-E-SA-M-650, DAM3-E-SA-E-980, DAM3-E-SA-E-970, DAM3-E-SA-E-960, DAM3-E-SA-R-920, DAM3-E-SA-EX-750 | resources Engineer [32 h]; Draftman [32 h] → Engineer [4 h]; Draftman [4 h] |
| DAM3-E-SS-R-830 | SIGNING & MARKING LAYOUT PLAN | 2026-01-21 A → 2026-04-21 A (+90d) | 2026-01-21 A → 2026-04-21 A (+90d) | 1.62d → 2d |  | resources Engineer [16 h]; Draftman [16 h] → Engineer [32 h]; Draftman [32 h] |
| DAM3-E-SS-R-840 | ROAD STANDARD DETAILS-TYPICAL PAVEMENT DETAILS | 2026-01-14 A → 2026-04-21 A (+97d) | 2026-01-14 A → 2026-04-21 A (+97d) |  |  | resources Engineer [16 h]; Draftman [16 h] → Engineer [32 h]; Draftman [32 h] |
| DAM3-E-SS-R-850 | ROAD STANDARD DETAILS-TYPICAL CURB DETAILS | 2026-01-14 A → 2026-04-21 A (+97d) | 2026-01-14 A → 2026-04-21 A (+97d) |  |  | resources Engineer [16 h]; Draftman [16 h] → Engineer [32 h]; Draftman [32 h] |
| DAM3-E-SS-R-860 | ROAD STANDARD DETAILS-ROAD SIGN DETAILS | 2026-01-14 A → 2026-04-21 A (+97d) | 2026-01-14 A → 2026-04-21 A (+97d) |  |  | resources Engineer [16 h]; Draftman [16 h] → Engineer [4 h]; Draftman [4 h] |
| DAM3-E-SS-R-870 | ROAD STANDARD DETAILS-ROAD MARKING DETAILS | 2026-01-14 A → 2026-04-21 A (+97d) | 2026-01-14 A → 2026-04-21 A (+97d) | 1.12d → 2d |  | resources Engineer [16 h]; Draftman [16 h] → Engineer [4 h]; Draftman [4 h] |
| DAM3-E-SS-R-790 | ALIGNMENT & CURB SETTING OUT | 2026-01-21 A → 2026-06-14 A (+144d) | 2026-01-21 A → 2026-06-14 A (+144d) | 5d → 2d |  | resources Engineer [16 h]; Draftman [16 h] → Engineer [32 h]; Draftman [32 h] |
| DAM3-E-SS-R-800 | ALIGNMENT & CURB SETTING OUT TABLES | 2026-01-20 A → 2026-06-14 A (+145d) | 2026-01-20 A → 2026-06-14 A (+145d) |  |  | resources Engineer [16 h]; Draftman [16 h] → Engineer [32 h]; Draftman [32 h] |
| DAM3-E-SS-R-810 | ALIGNMNET GEOMETRIC DATA | 2026-01-20 A → 2026-06-14 A (+145d) | 2026-01-20 A → 2026-06-14 A (+145d) |  |  | resources Engineer [16 h]; Draftman [16 h] → Engineer [32 h]; Draftman [32 h] |
| DAM3-E-SS-R-820 | SWEPT PATH LAYOUT PLAN | 2026-01-14 A → 2026-06-14 A (+151d) | 2026-02-04 A → 2026-06-14 A (+130d) |  |  | resources Engineer [16 h]; Draftman [16 h] → Engineer [32 h]; Draftman [32 h] |
| DAM3-E-SS-R-950 | LANDSCAPE DETAILS | 2026-02-04 A → 2026-07-01 A (+147d) | 2026-02-04 A → 2026-07-01 A (+147d) | 2d → 1d | DAM3-E-SS-R-940 → DAM3-E-SS-R-940, DAM3-C-B2-S-6233 | resources Engineer [32 h]; Draftman [32 h] → Engineer [4 h]; Draftman [4 h] |
| 6 | **EXTERNAL** | 2026-01-17 → 2026-02-10 (+24d) | 2026-01-28 → 2026-06-02 (+125d) |  |  |  |
| DAM3-E-SS-EX-1000 | WASHOUT CHAMBER DETAILS | 2026-01-17 A → 2026-02-10 A (+24d) | 2026-01-17 A → 2026-02-10 A (+24d) |  |  | resources Engineer [32 h]; Draftman [32 h] → none |
| DAM3-E-SS-EX-1010 | AIR RELEASE VALVE CHAMBER DETAILS | 2026-01-17 A → 2026-02-10 A (+24d) | 2026-01-17 A → 2026-02-10 A (+24d) |  |  | resources Engineer [32 h]; Draftman [32 h] → none |
| DAM3-E-SS-EX-1020 | THRUST BLOCK DETAILS (SHEET 1 OF 4) | 2026-01-17 A → 2026-02-10 A (+24d) | 2026-01-17 A → 2026-02-10 A (+24d) |  |  | resources Engineer [64 h]; Draftman [64 h] → none |
| DAM3-E-SS-EX-1030 | THRUST BLOCK DETAILS (SHEET 2 OF 4) | 2026-01-17 A → 2026-02-10 A (+24d) | 2026-01-17 A → 2026-02-10 A (+24d) |  |  | resources Engineer [64 h]; Draftman [64 h] → none |
| DAM3-E-SS-EX-1040 | THRUST BLOCK DETAILS (SHEET 3 OF 4) | 2026-01-17 A → 2026-02-10 A (+24d) | 2026-01-17 A → 2026-02-10 A (+24d) |  |  | resources Engineer [64 h]; Draftman [64 h] → none |
| DAM3-E-SS-EX-1050 | THRUST BLOCK DETAILS (SHEET 4 OF 4) | 2026-01-17 A → 2026-02-10 A (+24d) | 2026-01-17 A → 2026-02-10 A (+24d) |  |  | resources Engineer [64 h]; Draftman [64 h] → none |
| DAM3-E-SS-EX-730 | PIPE TRENCH DETAILS | 2026-01-17 A → 2026-02-10 A (+24d) | 2026-01-17 A → 2026-02-10 A (+24d) |  | DAM3-E-SS-EX-950 → DAM3-E-SS-EX-720 | resources Engineer [32 h]; Draftman [32 h] → Engineer [4 h]; Draftman [4 h] |
| DAM3-E-SS-EX-740 | BURIED GATE VALVE DETAILS | 2026-01-17 A → 2026-02-10 A (+24d) | 2026-01-17 A → 2026-02-10 A (+24d) |  |  | resources Engineer [32 h]; Draftman [32 h] → Engineer [4 h]; Draftman [4 h] |
| DAM3-E-SS-EX-770 | WASHOUT CHAMBER DETAILS | 2026-01-21 A → 2026-02-10 A (+20d) | 2026-01-21 A → 2026-02-10 A (+20d) |  |  | resources Engineer [32 h]; Draftman [32 h] → Engineer [4 h]; Draftman [4 h] |
| DAM3-E-SS-EX-780 | AIR RELEASE VALVE CHAMBER DETAILS | 2026-01-21 A → 2026-02-10 A (+20d) | 2026-01-21 A → 2026-02-10 A (+20d) |  |  | resources Engineer [32 h]; Draftman [32 h] → Engineer [4 h]; Draftman [4 h] |
| DAM3-E-SS-EX-810 | THRUST BLOCK DETAILS (SHEET 1 OF 4) | 2026-01-17 A → 2026-02-10 A (+24d) | 2026-01-17 A → 2026-02-10 A (+24d) |  |  | resources Engineer [32 h]; Draftman [32 h] → Engineer [8 h]; Draftman [8 h] |
| DAM3-E-SS-EX-820 | THRUST BLOCK DETAILS (SHEET 2 OF 4) | 2026-01-17 A → 2026-02-10 A (+24d) | 2026-01-17 A → 2026-02-10 A (+24d) |  |  | resources Engineer [32 h]; Draftman [32 h] → Engineer [8 h]; Draftman [8 h] |
| DAM3-E-SS-EX-830 | THRUST BLOCK DETAILS (SHEET 3 OF 4) | 2026-01-17 A → 2026-02-10 A (+24d) | 2026-01-17 A → 2026-02-10 A (+24d) |  |  | resources Engineer [32 h]; Draftman [32 h] → Engineer [8 h]; Draftman [8 h] |
| DAM3-E-SS-EX-840 | THRUST BLOCK DETAILS (SHEET 4 OF 4) | 2026-01-17 A → 2026-02-10 A (+24d) | 2026-01-17 A → 2026-02-10 A (+24d) |  |  | resources Engineer [32 h]; Draftman [32 h] → Engineer [8 h]; Draftman [8 h] |
| DAM3-E-SS-EX-870 | GENERAL NOTES | 2026-01-17 A → 2026-02-10 A (+24d) | 2026-01-17 A → 2026-02-10 A (+24d) |  |  | resources Engineer [32 h]; Draftman [32 h] → none |
| DAM3-E-SS-EX-880 | PIPE TRENCHES DETAILS (1) | 2026-01-17 A → 2026-02-10 A (+24d) | 2026-01-17 A → 2026-02-10 A (+24d) |  |  | resources Engineer [32 h]; Draftman [32 h] → none |
| DAM3-E-SS-EX-890 | PIPE TRENCHES DETAILS (2) | 2026-01-17 A → 2026-02-10 A (+24d) | 2026-01-17 A → 2026-02-10 A (+24d) |  |  | resources Engineer [32 h]; Draftman [32 h] → none |
| DAM3-E-SS-EX-900 | CAST IN PLACE MANHOLE DETAILS FOR DEPTH < 6000MM (TYPE-A) | 2026-01-21 A → 2026-02-10 A (+20d) | 2026-01-21 A → 2026-02-10 A (+20d) |  |  | resources Engineer [32 h]; Draftman [32 h] → none |
| DAM3-E-SS-EX-920 | BACKDROP DETAIL OF PRECAST MANHOLE DEPTH < 3000MM | 2026-01-21 A → 2026-02-10 A (+20d) | 2026-01-21 A → 2026-02-10 A (+20d) |  |  | resources Engineer [32 h]; Draftman [32 h] → none |
| DAM3-E-SS-EX-930 | BACKDROP DETAIL OF PRECAST MANHOLE DEPTH FROM 3000MM TO 6000MM | 2026-01-17 A → 2026-02-10 A (+24d) | 2026-01-17 A → 2026-02-10 A (+24d) |  |  | resources Engineer [32 h]; Draftman [32 h] → none |
| DAM3-E-SS-EX-960 | PIPE TRENCH DETAILS | 2026-01-20 A → 2026-02-10 A (+21d) | 2026-01-20 A → 2026-02-10 A (+21d) |  | DAM3-E-SS-EX-720 → DAM3-E-SS-EX-950 | resources Engineer [32 h]; Draftman [32 h] → none |
| DAM3-E-SS-EX-970 | BURIED GATE VALVE DETAILS | 2026-01-20 A → 2026-02-10 A (+21d) | 2026-01-20 A → 2026-02-10 A (+21d) |  |  | resources Engineer [32 h]; Draftman [32 h] → none |
| DAM3-E-SS-EX-910 | CAST IN PLACE MANHOLE DETAILS FOR DEPTH < 6000MM (TYPE-B) | 2026-01-17 A → 2026-02-12 A (+26d) | 2026-01-17 A → 2026-02-12 A (+26d) |  |  | resources Engineer [32 h]; Draftman [32 h] → none |
| DAM3-E-SS-EX-940 | PRECAST MANHOLE DETAILS | 2026-01-17 A → 2026-04-15 A (+88d) | 2026-01-17 A → 2026-04-15 A (+88d) |  |  | resources Engineer [32 h]; Draftman [32 h] → none |
| DAM3-E-SS-EX-750 | SINGLE VALVE CHAMBER DETAILS | 2026-01-21 A → 2026-04-21 A (+90d) | 2026-01-21 A → 2026-04-21 A (+90d) |  | DAM3-E-SS-EX-970 → DAM3-E-SS-EX-740 | resources Engineer [32 h]; Draftman [32 h] → Engineer [4 h]; Draftman [4 h] |
| DAM3-E-SS-EX-760 | DOUBLE VALVE CHAMBER DETAILS | 2026-01-17 A → 2026-04-21 A (+94d) | 2026-01-17 A → 2026-04-21 A (+94d) |  |  | resources Engineer [32 h]; Draftman [32 h] → Engineer [4 h]; Draftman [4 h] |
| DAM3-E-SS-EX-980 | SINGLE VALVE CHAMBER DETAILS | 2026-01-21 A → 2026-04-21 A (+90d) | 2026-01-21 A → 2026-04-21 A (+90d) | 1.5d → 2d | DAM3-E-SS-EX-740 → DAM3-E-SS-EX-970 | resources Engineer [32 h]; Draftman [32 h] → none |
| DAM3-E-SS-EX-990 | DOUBLE VALVE CHAMBER DETAILS | 2026-01-17 A → 2026-04-21 A (+94d) | 2026-01-17 A → 2026-04-21 A (+94d) |  |  | resources Engineer [32 h]; Draftman [32 h] → none |
| DAM3-E-SS-EX-690 | POTABLE WATER NETWORK | 2026-01-28 A → 2026-05-11 A (+103d) | 2026-01-28 A → 2026-05-11 A (+103d) | 3.62d → 2d |  | resources Engineer [16 h]; Draftman [16 h] → Engineer [4 h]; Draftman [4 h] |
| DAM3-E-SS-EX-700 | FIRE FIGHTING WATER NETWORK | 2026-01-28 A → 2026-05-11 A (+103d) | 2026-01-28 A → 2026-05-11 A (+103d) | 1.5d → 2d |  | resources Engineer [32 h]; Draftman [32 h] → Engineer [4 h]; Draftman [4 h] |
| DAM3-E-SS-EX-710 | POTABLE WATER NETWORK PROFILES | 2026-01-28 A → 2026-05-11 A (+103d) | 2026-01-28 A → 2026-05-11 A (+103d) |  |  | resources Engineer [32 h]; Draftman [32 h] → Engineer [4 h]; Draftman [4 h] |
| DAM3-E-SS-EX-720 | FIRE FIGHTING NETWORK PROFILE | 2026-01-28 A → 2026-05-11 A (+103d) | 2026-01-28 A → 2026-05-11 A (+103d) | 1.62d → 2d |  | resources Engineer [32 h]; Draftman [32 h] → Engineer [4 h]; Draftman [4 h] |
| DAM3-E-SS-EX-950 | IRRIGATION NETWORK LAYOUT SHEET 1 OF 1 | 2026-01-28 A → 2026-05-12 A (+104d) | 2026-01-28 A → 2026-05-12 A (+104d) |  |  | resources Engineer [32 h]; Draftman [32 h] → none |
| DAM3-E-SS-EX-850 | SEWAGE NETWORK | 2026-01-28 A → 2026-05-14 A (+106d) | 2026-01-28 A → 2026-05-14 A (+106d) |  |  | resources Engineer [32 h]; Draftman [32 h] → Engineer [8 h]; Draftman [8 h] |
| DAM3-E-SS-EX-860 | SEWAGE NETWORK PROFILES | 2026-01-28 A → 2026-05-14 A (+106d) | 2026-01-28 A → 2026-05-14 A (+106d) |  |  | resources Engineer [32 h]; Draftman [32 h] → none |
| DAM3-E-SS-EX-790 | FLOW METER DETAILS | 2026-01-28 A → 2026-06-02 A (+125d) | 2026-01-28 A → 2026-06-02 A (+125d) | 1.5d → 2d |  | resources Engineer [32 h]; Draftman [32 h] → Engineer [4 h]; Draftman [4 h] |
| DAM3-E-SS-EX-800 | FLOW METER REINFORCEMENT DETAILS | 2026-01-17 A → 2026-06-02 A (+136d) | 2026-01-17 A → 2026-06-02 A (+136d) |  |  | resources Engineer [32 h]; Draftman [32 h] → Engineer [4 h]; Draftman [4 h] |
| 2 | **REVIEW AND APPROVAL** | 2025-12-11 → 2026-01-20 (+40d) | 2026-03-29 → 2026-07-05 (+98d) |  |  |  |
| 5 | **STRUCTURAL** | 2025-12-24 → 2026-02-03 (+41d) | 2026-03-29 → 2026-06-03 (+66d) |  |  |  |
| DAM3-E-SA-C-830 | SECTIONS | 2025-12-24 A → 2026-02-03 A (+41d) | 2026-01-17 A → 2026-02-05 A (+19d) | 0.62d → 2d |  | resources Engineer; Draftman → Engineer [4 h]; Draftman [4 h] |
| DAM3-E-SA-C-840 | EXTERNAL WALL SECTION DETAILS | 2025-12-24 A → 2026-02-03 A (+41d) | 2026-01-17 A → 2026-02-05 A (+19d) |  | DAM3-E-SS-C-840 → DAM3-E-SS-C-840, DAM3-E-SA-C-820, DAM3-E-SA-C-810, DAM3-E-SA-C-790 | resources Engineer; Draftman → Engineer [4 h]; Draftman [4 h] |
| DAM3-E-SA-C-850 | BASE PLATE DETAILS | 2026-02-02 A → 2026-02-03 A (+1d) |  |  |  | resources Engineer; Draftman → Engineer [4 h]; Draftman [4 h] |
| DAM3-E-SA-C-770 | BASE PLATE LAYOUT | 2026-02-02 A → 2026-02-07 A (+5d) | 2026-02-05 A → 2026-03-17 A (+40d) |  | DAM3-E-SS-C-770 → DAM3-E-SS-C-770, DAM3-E-SA-C-760 | resources Engineer; Draftman → Engineer [32 h]; Draftman [32 h] |
| DAM3-E-SA-C-790 | ROOF FRAMING LAYOUT | 2026-02-02 A → 2026-02-07 A (+5d) | 2026-02-05 A → 2026-03-17 A (+40d) |  |  | resources Engineer; Draftman → Engineer [32 h]; Draftman [32 h] |
| DAM3-E-SA-C-800 | PURLINS FRAMING LAYOUT | 2026-02-02 A → 2026-02-07 A (+5d) | 2026-02-05 A → 2026-03-17 A (+40d) |  | DAM3-E-SS-C-800 → DAM3-E-SS-C-800, DAM3-E-SA-C-780 | resources Engineer; Draftman → Engineer [32 h]; Draftman [32 h] |
| DAM3-E-SA-C-810 | ROOF SHEETING LAYOUT | 2026-02-02 A → 2026-02-07 A (+5d) | 2026-02-05 A → 2026-03-17 A (+40d) | 1.62d → 2d |  | resources Engineer; Draftman → Engineer [4 h]; Draftman [4 h] |
| DAM3-E-SA-C-820 | COLUMNS AND AXIS LAYOUT | 2026-01-01 A → 2026-02-07 A (+37d) | 2026-01-08 A → 2026-03-07 A (+58d) |  |  | resources Engineer; Draftman → Engineer [4 h]; Draftman [4 h] |
| DAM3-E-SA-C-750 | FOUNDATION LAYOUT | 2025-12-30 A → 2026-02-18 A (+50d) | 2026-01-08 A → 2026-03-07 A (+58d) |  |  | resources Draftman; Engineer → Draftman [32 h]; Engineer [32 h] |
| DAM3-E-SA-C-780 | TIE BEAM @ 4500mm EL. | 2026-01-08 A → 2026-03-01 A (+52d) | 2026-02-28 A → 2026-05-17 A (+78d) |  | DAM3-E-SS-C-780 → DAM3-E-SS-C-780, DAM3-E-SA-C-770 | resources Engineer; Draftman → Engineer [32 h]; Draftman [32 h] |

| ID | Task | Start | Finish | Duration | Predecessors | Other |
| --- | --- | --- | --- | --- | --- | --- |
| DAM3-E-SA-C-880 | PUMP SHED AND GRP WATER TANK STRUCTURAL DETAILS (1-2) | 2026-01-22 A → 2026-03-29 A (+66d) | 2026-02-12 A → 2026-05-17 A (+94d) |  |  | resources Engineer; Draftman → Engineer [4 h]; Draftman [4 h] |
| DAM3-E-SA-C-890 | PUMP SHED AND GRP WATER TANK STRUCTURAL DETAILS (2-2) | 2026-01-22 A → 2026-03-29 A (+66d) | 2026-02-12 A → 2026-05-17 A (+94d) |  |  | resources Engineer; Draftman → Engineer [4 h]; Draftman [4 h] |
| DAM3-E-SA-C-760 | GRADE BEAM / SLAB ON GRADE LAYOUT | 2026-01-28 A → 2026-04-21 A (+83d) | 2026-03-29 A → 2026-05-03 A (+35d) |  |  | resources Engineer; Draftman → Engineer [32 h]; Draftman [32 h] |
| DAM3-E-SA-C-860 | TYPICAL STRUCTURAL SECTION DETAILS | 2026-01-01 A → 2026-04-21 A (+110d) | 2026-01-04 A → 2026-05-12 A (+128d) | 1.62d → 2d | DAM3-E-SS-C-860 → DAM3-E-SS-C-860, DAM3-E-SA-C-840, DAM3-E-SA-C-830 | resources Engineer; Draftman → Engineer [4 h]; Draftman [4 h] |
| DAM3-E-SA-C-870 | STRUCTURAL SCHEDULE | 2026-01-01 A → 2026-06-02 A (+152d) | 2026-01-08 A → 2026-06-03 A (+146d) | 1.5d → 2d |  | resources Engineer; Draftman → Engineer [4 h]; Draftman [4 h] |
| 2 | **ARCHITECTURAL** | 2025-12-23 → 2026-02-03 (+42d) | 2026-03-04 → 2026-06-03 (+91d) |  |  |  |
| DAM3-E-SA-A-1170 | BUILDING SECTIONS | 2025-12-24 A → 2026-02-03 A (+41d) | 2026-01-17 A → 2026-02-05 A (+19d) |  | DAM3-E-SS-A-1170 → DAM3-E-SS-A-1170, DAM3-E-SA-A-870 |  |
| DAM3-E-SA-A-830 | GROUND FLOOR LAYOUT PLAN | 2025-12-23 A → 2026-02-03 A (+42d) | 2025-12-24 A → 2026-02-08 A (+46d) | 1.12d → 2d |  | resources Engineer; Draftman → Engineer [4 h]; Draftman [4 h] |
| DAM3-E-SA-A-840 | GROUND FLOOR ENLARGED LAYOUT PLAN | 2025-12-23 A → 2026-02-03 A (+42d) | 2025-12-24 A → 2026-02-08 A (+46d) |  | DAM3-E-SS-A-840 → DAM3-E-SS-A-840, DAM3-E-SA-A-830 | resources Engineer; Draftman → Engineer [4 h]; Draftman [4 h] |
| DAM3-E-SA-A-860 | ELEVATIONS (SHEET 01 0F 02) | 2025-12-24 A → 2026-02-03 A (+41d) | 2026-01-15 A → 2026-02-05 A (+21d) |  | DAM3-E-SS-A-860 → DAM3-E-SS-A-860, DAM3-E-SA-A-850 | resources Engineer; Draftman → Engineer [4 h]; Draftman [4 h] |
| DAM3-E-SA-A-870 | ELEVATIONS (SHEET 01 0F 02) | 2025-12-24 A → 2026-02-03 A (+41d) | 2026-01-15 A → 2026-02-05 A (+21d) |  | DAM3-E-SS-A-870 → DAM3-E-SS-A-870, DAM3-E-SA-A-860 | resources Engineer; Draftman → Engineer [4 h]; Draftman [4 h] |
| DAM3-E-SA-A-880 | WALL SECTIONS | 2025-12-24 A → 2026-02-03 A (+41d) | 2026-01-17 A → 2026-02-05 A (+19d) |  |  | resources Engineer; Draftman → Engineer [4 h]; Draftman [4 h] |
| DAM3-E-SA-A-890 | CEILING LAYOUT PLAN | 2026-01-11 A → 2026-02-05 A (+25d) | 2026-03-04 A → 2026-02-09 A (-23d) | 1.62d → 2d |  | resources Engineer; Draftman → Engineer [4 h]; Draftman [4 h] |
| DAM3-E-SA-A-900 | FINISHING LAYOUT PLAN | 2026-01-11 A → 2026-02-09 A (+29d) | 2026-01-17 A → 2026-02-14 A (+28d) | 1.5d → 2d | DAM3-E-SS-A-900 → DAM3-E-SS-A-900, DAM3-E-SA-A-890, DAM3-E-SA-A-880 | resources Engineer; Draftman → Engineer [4 h]; Draftman [4 h] |
| DAM3-E-SA-A-910 | TOILET DETAILS | 2026-01-11 A → 2026-02-11 A (+31d) | 2026-01-18 A → 2026-02-25 A (+38d) |  | DAM3-E-SS-A-910 → DAM3-E-SS-A-910, DAM3-E-SA-A-1170 | resources Engineer; Draftman → Engineer [4 h]; Draftman [4 h] |
| DAM3-E-SA-A-920 | DOORS & WINDOWS SCHEDULE | 2026-02-04 A → 2026-02-11 A (+7d) | 2026-02-08 A → 2026-02-25 A (+17d) | 1.5d → 2d | DAM3-E-SS-A-920 → DAM3-E-SS-A-920, DAM3-E-SA-C-880 | resources Engineer; Draftman → Engineer [4 h]; Draftman [4 h] |
| DAM3-E-SA-A-930 | MISCELLANEOUS DETAILS - 01 | 2026-01-21 A → 2026-02-11 A (+21d) | 2026-01-26 A → 2026-02-25 A (+30d) |  | DAM3-E-SS-A-930 → DAM3-E-SS-A-930, DAM3-E-SA-C-890 | resources Engineer; Draftman → Engineer [4 h]; Draftman [4 h] |
| DAM3-E-SA-A-940 | MISCELLANEOUS DETAILS - 02 | 2026-01-21 A → 2026-02-11 A (+21d) | 2026-01-26 A → 2026-02-25 A (+30d) | 1.62d → 2d | DAM3-E-SS-A-940 → DAM3-E-SS-A-940, DAM3-E-SA-A-910, DAM3-E-SA-A-900 | resources Engineer; Draftman → Engineer [4 h]; Draftman [4 h] |
| DAM3-E-SA-A-950 | SIGNAGE LOCATION PLAN | 2026-01-21 A → 2026-02-11 A (+21d) | 2026-01-28 A → 2026-02-25 A (+28d) |  | DAM3-E-SS-A-950 → DAM3-E-SS-A-950, DAM3-E-SA-A-930, DAM3-E-SA-A-920 | resources Engineer; Draftman → Engineer [8 h]; Draftman [8 h] |
| DAM3-E-SA-A-960 | SIGNAGE DESIGN DETAILS | 2026-01-21 A → 2026-02-11 A (+21d) | 2026-01-28 A → 2026-02-25 A (+28d) |  | DAM3-E-SS-A-960 → DAM3-E-SS-A-960, DAM3-E-SA-A-940 | resources Engineer; Draftman → Engineer [8 h]; Draftman [8 h] |
| DAM3-E-SA-A-850 | SKYLIGHT DISTRIBUTION - ROOF LAYOUT PLAN | 2025-12-23 A → 2026-06-02 A (+161d) | 2026-01-24 A → 2026-06-03 A (+130d) | 1.62d → 2d | DAM3-E-SS-A-850 → DAM3-E-SS-A-850, DAM3-E-SA-A-840 | resources Engineer; Draftman → Engineer [4 h]; Draftman [4 h] |
| 3 | **MECHANICAL** | 2026-01-14 → 2026-02-04 (+21d) | 2026-03-02 → 2026-06-09 (+99d) |  |  |  |
| DAM3-E-SA-M-650 | SCHEMATIC RISER DIAGRAM PLUMBING-DRAINAGE | 2026-01-20 A → 2026-02-04 A (+15d) | 2026-01-20 A → 2026-03-03 A (+42d) | 1.5d → 2d | DAM3-E-SS-M-650 → DAM3-E-SS-M-650, DAM3-E-SA-M-640, DAM3-E-SA-M-630 | resources Engineer; Draftman → Engineer [4 h]; Draftman [4 h] |
| DAM3-E-SA-M-660 | SCHEMATIC RISER DIAGRAM PLUMBING-WATER | 2026-01-20 A → 2026-02-04 A (+15d) | 2026-01-20 A → 2026-04-13 A (+83d) |  | DAM3-E-SS-M-660 → DAM3-E-SS-M-660, DAM3-E-SA-M-650 | resources Engineer; Draftman → Engineer [4 h]; Draftman [4 h] |
| DAM3-E-SA-M-670 | GENERAL MISELLANEOUS DETAILS PLUMBING | 2026-01-17 A → 2026-02-04 A (+18d) | 2026-01-17 A → 2026-03-03 A (+45d) |  |  | resources Engineer; Draftman → Engineer [4 h]; Draftman [4 h] |
| DAM3-E-SA-M-680 | GENERAL MISELLANEOUS DETAILS PLUMBING | 2026-01-20 A → 2026-02-04 A (+15d) | 2026-01-20 A → 2026-03-03 A (+42d) |  | DAM3-E-SS-M-680 → DAM3-E-SS-M-680, DAM3-E-SA-M-660 | resources Engineer; Draftman → Engineer [4 h]; Draftman [4 h] |
| DAM3-E-SA-M-750 | GENERAL-INSTRUMENTATION & CONTROL | 2026-01-17 A → 2026-02-04 A (+18d) | 2026-01-17 A → 2026-06-09 A (+143d) |  |  | resources Engineer; Draftman → Engineer [8 h]; Draftman [8 h] |
| DAM3-E-SA-M-780 | SCHEMATIC RISER DIAGRAM FIREFIGHTING | 2026-01-20 A → 2026-02-04 A (+15d) | 2026-01-20 A → 2026-06-09 A (+140d) | 4d → 2d |  | resources Engineer; Draftman → Engineer [8 h]; Draftman [8 h] |
| DAM3-E-SA-M-790 | GENERAL-MISCELLANEOUS DETAILS- FIRE FIGHTING | 2026-01-20 A → 2026-02-04 A (+15d) | 2026-01-20 A → 2026-06-09 A (+140d) |  |  | resources Engineer; Draftman → Engineer [8 h]; Draftman [8 h] |
| DAM3-E-SA-M-800 | MISCELLANEOUS DETAILS | 2026-01-17 A → 2026-02-04 A (+18d) | 2026-01-17 A → 2026-03-03 A (+45d) |  |  | resources Engineer; Draftman → Engineer [8 h]; Draftman [8 h] |
| DAM3-E-SA-M-760 | GENERAL MISCELLANEOUS DETAILS - HVAC | 2026-01-20 A → 2026-02-05 A (+16d) | 2026-01-20 A → 2026-03-03 A (+42d) |  |  | resources Engineer; Draftman → Engineer [8 h]; Draftman [8 h] |
| DAM3-E-SA-M-610 | TOILETS DETAILS PLUMBING-DRAINAGE | 2026-01-17 A → 2026-03-11 A (+53d) | 2026-01-17 A → 2026-05-10 A (+113d) |  | DAM3-E-SS-M-610 → DAM3-E-SS-M-610, DAM3-E-SA-M-600 | resources Engineer; Draftman → Engineer [4 h]; Draftman [4 h] |
| DAM3-E-SA-M-640 | TOILET DETAILS PLUMBING-WATER | 2026-01-17 A → 2026-03-11 A (+53d) | 2026-01-17 A → 2026-05-10 A (+113d) | 1.62d → 2d | DAM3-E-SS-M-640 → DAM3-E-SS-M-640, DAM3-E-SA-M-620 | resources Engineer; Draftman → Engineer [4 h]; Draftman [4 h] |
| DAM3-E-SA-M-770 | TYPICAL GROUND FLOOR PLAN FIREFIGHTING | 2026-01-17 A → 2026-03-14 A (+56d) | 2026-01-28 A → 2026-05-12 A (+104d) |  |  | resources Engineer; Draftman → Engineer [8 h]; Draftman [8 h] |
| DAM3-E-SA-M-620 | TYPICAL ROOF PLUMBING PLAN | 2026-01-20 A → 2026-03-16 A (+55d) | 2026-01-20 A → 2026-05-12 A (+112d) | 1.62d → 2d | DAM3-E-SS-M-620 → DAM3-E-SS-M-620, DAM3-E-SA-M-610 | resources Engineer; Draftman → Engineer [4 h]; Draftman [4 h] |
| DAM3-E-SA-M-600 | TYPICAL GROUND FLOOR PLAN-PLUMBING- DRAINAGE | 2026-01-14 A → 2026-03-17 A (+62d) | 2026-03-02 A → 2026-05-12 A (+71d) |  |  | resources Engineer; Draftman → Engineer [4 h]; Draftman [4 h] |
| DAM3-E-SA-M-630 | GROUND FLOOR WATER SUPPLY PLAN | 2026-01-17 A → 2026-03-17 A (+59d) | 2026-01-20 A → 2026-05-12 A (+112d) |  | DAM3-E-SS-M-630 → DAM3-E-SS-M-630, DAM3-E-SA-M-610 | resources Engineer; Draftman → Engineer [4 h]; Draftman [4 h] |
| DAM3-E-SA-M-690 | SCHEDULE- PLUMBING | 2026-01-17 A → 2026-03-17 A (+59d) | 2026-01-17 A → 2026-05-11 A (+114d) |  |  | resources Engineer; Draftman → Engineer [4 h]; Draftman [4 h] |
| DAM3-E-SA-M-720 | SCHEDULES | 2026-01-17 A → 2026-03-17 A (+59d) | 2026-01-17 A → 2026-05-11 A (+114d) |  | DAM3-E-SS-M-720 → DAM3-E-SS-M-720, DAM3-E-SA-A-950 | resources Engineer; Draftman → Engineer [8 h]; Draftman [8 h] |
| DAM3-E-SA-M-730 | GROUND FLOOR PLAN-HVAC SYSTEM | 2026-02-03 A → 2026-03-26 A (+51d) | 2026-02-12 A → 2026-05-12 A (+89d) | 1.5d → 2d | DAM3-E-SS-M-730 → DAM3-E-SS-M-730, DAM3-E-SA-A-960 | resources Engineer; Draftman → Engineer [8 h]; Draftman [8 h] |
| DAM3-E-SA-M-740 | TYPICAL ROOF HVAC PLAN | 2026-02-03 A → 2026-03-26 A (+51d) | 2026-02-05 A → 2026-05-12 A (+96d) | 1.62d → 2d |  | resources Engineer; Draftman → Engineer [8 h]; Draftman [8 h] |
| DAM3-E-SA-M-700 | PUMP ROOM LAYOUT | 2026-02-01 A → 2026-04-16 A (+74d) | 2026-02-04 A → 2026-05-17 A (+102d) | 1.62d → 2d |  | resources Engineer; Draftman → Engineer [8 h]; Draftman [8 h] |
| DAM3-E-SA-M-710 | PUMP ROOM 3D & SECTIONS VIEW | 2026-02-01 A → 2026-04-21 A (+79d) | 2026-02-04 A → 2026-05-17 A (+102d) | 1.5d → 2d | DAM3-E-SS-M-710 → DAM3-E-SS-M-710, DAM3-E-SA-M-670 | resources Engineer; Draftman → Engineer [8 h]; Draftman [8 h] |
| 4 | **ELECTRICAL** | 2025-12-22 → 2026-02-09 (+49d) | 2026-03-29 → 2026-06-28 (+91d) |  |  |  |
| DAM3-E-SA-E-1000 | ROOF FLOOR LIGHTING PLAN | 2025-12-24 A → 2026-02-09 A (+47d) | 2026-01-15 A → 2026-02-17 A (+33d) |  | DAM3-E-SS-E-1000 → DAM3-E-SS-E-1000, DAM3-E-SA-E-980, DAM3-E-SA-E-960 | resources Engineer; Draftman → Engineer [4 h]; Draftman [4 h] |
| DAM3-E-SA-E-1060 | ROOF FLOOR LIGHTENING PLAN | 2026-01-15 A → 2026-02-09 A (+25d) | 2026-01-15 A → 2026-02-17 A (+33d) |  |  | resources Engineer; Draftman → Engineer [8 h]; Draftman [8 h] |
| DAM3-E-SA-E-1130 | GROUND FLOOR POWER PLAN | 2025-12-22 A → 2026-02-09 A (+49d) | 2026-01-14 A → 2026-02-17 A (+34d) |  | DAM3-E-SS-E-940 → DAM3-E-SS-E-1130 | resources Engineer; Draftman → Engineer [8 h]; Draftman [8 h] |
| DAM3-E-SA-E-1140 | POWER FOR MECHANICAL | 2025-12-24 A → 2026-02-09 A (+47d) | 2026-01-15 A → 2026-02-18 A (+34d) |  |  | resources Engineer; Draftman → Engineer [8 h]; Draftman [8 h] |
| DAM3-E-SA-E-1150 | GROUND FLOOR LIGHTING PLAN | 2025-12-22 A → 2026-02-09 A (+49d) | 2026-01-14 A → 2026-02-17 A (+34d) |  |  | resources Engineer; Draftman → Engineer [8 h]; Draftman [8 h] |
| DAM3-E-SA-E-940 | GROUND FLOOR POWER PLAN | 2026-01-13 A → 2026-02-09 A (+27d) | 2026-01-14 A → 2026-02-10 A (+27d) |  | DAM3-E-SS-E-1130 → DAM3-E-SS-E-940 | resources Engineer; Draftman → Engineer [4 h]; Draftman [4 h] |
| DAM3-E-SA-E-950 | GROUND FLOOR POWER FOR MECHANICAL | 2025-12-24 A → 2026-02-09 A (+47d) | 2026-01-15 A → 2026-04-18 A (+93d) |  | DAM3-E-SS-E-950, DAM3-E-SA-E-1130 → DAM3-E-SS-E-950, DAM3-E-SA-E-940 | resources Engineer; Draftman → Engineer [4 h]; Draftman [4 h] |
| DAM3-E-SA-E-960 | ROOF FLOOR POWER FOR MECHANICAL | 2026-01-13 A → 2026-02-09 A (+27d) | 2026-01-15 A → 2026-04-15 A (+90d) | 1.62d → 2d |  | resources Engineer; Draftman → Engineer [4 h]; Draftman [4 h] |
| DAM3-E-SA-E-990 | GROUND FLOOR LIGHTING PLAN | 2026-01-13 A → 2026-02-09 A (+27d) | 2026-01-14 A → 2026-02-17 A (+34d) | 1.62d → 2d | DAM3-E-SS-E-990 → DAM3-E-SS-E-990, DAM3-E-SA-E-970 | resources Engineer; Draftman → Engineer [4 h]; Draftman [4 h] |
| DAM3-E-SA-E-1030 | GROUND FLOOR CCTV PLAN | 2026-01-13 A → 2026-03-01 A (+47d) | 2026-01-14 A → 2026-03-03 A (+48d) |  |  | resources Engineer; Draftman → Engineer [8 h]; Draftman [8 h] |
| DAM3-E-SA-E-1040 | GROUND FLOOR DATA & TELECOM PLAN | 2026-01-13 A → 2026-03-01 A (+47d) | 2026-01-14 A → 2026-03-03 A (+48d) |  |  | resources Engineer; Draftman → Engineer [8 h]; Draftman [8 h] |
| DAM3-E-SA-E-1050 | GROUND FLOOR GROUNDING PLAN | 2026-01-21 A → 2026-03-01 A (+39d) | 2026-02-01 A → 2026-03-03 A (+30d) |  |  | resources Engineer; Draftman → Engineer [8 h]; Draftman [8 h] |
| DAM3-E-SA-E-1120 | ELECTRICAL DETAILS | 2026-02-07 A → 2026-03-01 A (+22d) | 2026-02-28 A → 2026-03-03 A (+3d) |  |  | resources Engineer; Draftman → Engineer [8 h]; Draftman [8 h] |
| DAM3-E-SA-E-1160 | GROUND FLOOR GROUNDING PLAN | 2026-01-21 A → 2026-03-01 A (+39d) | 2026-02-01 A → 2026-03-03 A (+30d) |  |  | resources Engineer; Draftman → Engineer [32 h]; Draftman [32 h] |
| DAM3-E-SA-E-1180 | ELECTRICAL DETAILS | 2026-02-07 A → 2026-03-01 A (+22d) | 2026-02-28 A → 2026-03-03 A (+3d) |  |  | resources Engineer; Draftman → Engineer [32 h]; Draftman [32 h] |
| DAM3-E-SA-E-1010 | GOUND FLOOR ACCESS CONTROL | 2026-02-05 A → 2026-03-29 A (+52d) | 2026-02-05 A → 2026-04-18 A (+72d) |  |  | resources Engineer; Draftman → Engineer [4 h]; Draftman [4 h] |
| DAM3-E-SA-E-1020 | GROUND FLOOR FIRE ALARM PLAN | 2026-01-21 A → 2026-03-29 A (+67d) | 2026-03-29 A → 2026-04-15 A (+17d) |  |  | resources Engineer; Draftman → Engineer [4 h]; Draftman [4 h] |
| DAM3-E-SA-E-1070 | POWER RISER DIAGRAM | 2026-01-13 A → 2026-03-29 A (+75d) | 2026-01-14 A → 2026-06-23 A (+160d) |  |  | resources Engineer; Draftman → Engineer [8 h]; Draftman [8 h] |
| DAM3-E-SA-E-1080 | FIRE ALARM RISER DIAGRAM | 2026-01-21 A → 2026-03-29 A (+67d) | 2026-03-29 A → 2026-05-11 A (+43d) |  |  | resources Engineer; Draftman → Engineer [8 h]; Draftman [8 h] |
| DAM3-E-SA-E-1090 | DATA & TELECOME RISER DIAGRAM | 2026-02-04 A → 2026-03-29 A (+53d) | 2026-02-04 A → 2026-03-30 A (+54d) |  |  | resources Engineer; Draftman → Engineer [8 h]; Draftman [8 h] |
| DAM3-E-SA-E-1100 | ACCESS CONTROL RISER DIAGRAM | 2026-02-04 A → 2026-03-29 A (+53d) | 2026-02-04 A → 2026-03-30 A (+54d) |  |  | resources Engineer; Draftman → Engineer [8 h]; Draftman [8 h] |
| DAM3-E-SA-E-1110 | SCHEDULES | 2026-01-13 A → 2026-03-29 A (+75d) | 2026-01-14 A → 2026-06-23 A (+160d) |  |  | resources Engineer; Draftman → Engineer [8 h]; Draftman [8 h] |
| DAM3-E-SA-E-970 | ROOF FLOOR POWER | 2026-02-07 A → 2026-04-08 A (+60d) | 2026-02-28 A → 2026-04-09 A (+40d) | 1.5d → 2d | DAM3-E-SS-E-970 → DAM3-E-SS-E-970, DAM3-E-SA-E-950 | resources Engineer; Draftman → Engineer [4 h]; Draftman [4 h] |
| DAM3-E-SA-E-1170 | RISER DIAGRAM | 2026-02-04 A → 2026-04-27 A (+82d) | 2026-02-04 A → 2026-06-23 A (+139d) |  |  | resources Engineer; Draftman → Engineer [32 h]; Draftman [32 h] |
| DAM3-E-SA-E-980 | PV SYSTEM CALCULATION | 2026-02-07 A → 2026-06-25 A (+138d) | 2026-02-28 A → 2026-06-28 A (+120d) |  |  | resources Engineer; Draftman → Engineer [4 h]; Draftman [4 h] |
| 1 | **ROAD DRAWINGS** | 2025-12-11 → 2026-01-20 (+40d) | 2026-02-28 → 2026-07-05 (+127d) |  |  |  |

| ID | Task | Start | Finish | Duration | Predecessors | Other |
| --- | --- | --- | --- | --- | --- | --- |
| DAM3-E-SA-R-780 | TOPOGRAPHIC SURVEY-CONTOURS MAP | 2025-12-11 A → 2026-01-20 A (+40d) | 2025-12-13 A → 2026-01-22 A (+40d) |  |  | resources Engineer; Draftman → Engineer [32 h]; Draftman [32 h] |
| DAM3-E-SA-R-730 | GRADING LAYOUT PLAN | 2025-12-18 A → 2026-02-03 A (+47d) | 2026-01-04 A → 2026-05-03 A (+119d) |  |  | resources Engineer; Draftman → Engineer [32 h]; Draftman [32 h] |
| DAM3-E-SA-R-880 | GENERAL SITE PLAN - OVERALL | 2026-01-18 A → 2026-03-08 A (+49d) | 2026-01-18 A → 2026-05-20 A (+122d) |  | DAM3-E-SS-R-880 → DAM3-E-SS-R-880, DAM3-E-SA-R-870 | resources Engineer; Draftman → Engineer [4 h]; Draftman [4 h] |
| DAM3-E-SA-R-890 | SITE SETTING-OUT PLAN - OVERALL | 2026-01-18 A → 2026-03-08 A (+49d) | 2026-01-18 A → 2026-05-03 A (+105d) |  | DAM3-E-SS-R-890 → DAM3-E-SS-R-890, DAM3-E-SA-R-880 | resources Engineer; Draftman → Engineer [4 h]; Draftman [4 h] |
| DAM3-E-SA-R-900 | GENERAL LANDSCAPE LAYOUT | 2026-01-21 A → 2026-03-08 A (+46d) | 2026-01-22 A → 2026-05-06 A (+104d) |  | DAM3-E-SS-R-900 → DAM3-E-SS-R-900, DAM3-E-SA-R-890 | resources Engineer; Draftman → Engineer [4 h]; Draftman [4 h] |
| DAM3-E-SA-R-910 | GENERAL HARDSCAPE LAYOUT | 2026-01-21 A → 2026-03-08 A (+46d) | 2026-01-22 A → 2026-05-07 A (+105d) | 4d → 2d | DAM3-E-SS-R-910 → DAM3-E-SS-R-910, DAM3-E-SA-R-900 | resources Engineer; Draftman → Engineer [4 h]; Draftman [4 h] |
| DAM3-E-SA-R-920 | GENERAL SOFTSCAPE LAYOUT | 2026-01-20 A → 2026-03-08 A (+47d) | 2026-01-20 A → 2026-05-09 A (+109d) |  | DAM3-E-SS-R-920 → DAM3-E-SS-R-920, DAM3-E-SA-R-910 | resources Engineer; Draftman → Engineer [4 h]; Draftman [4 h] |
| DAM3-E-SA-R-960 | LANDSCAPE SCHEDULES | 2026-02-04 A → 2026-03-08 A (+32d) | 2026-02-12 A → 2026-05-06 A (+83d) |  | DAM3-E-SS-R-960 → DAM3-E-SS-R-960, DAM3-E-SA-R-950 |  |
| DAM3-E-SA-R-930 | PUMP ROOM DETAILS | 2026-01-22 A → 2026-03-14 A (+51d) | 2026-02-28 A → 2026-05-06 A (+67d) |  | DAM3-E-SS-R-930 → DAM3-E-SS-R-930, DAM3-E-SA-R-920 | resources Engineer; Draftman → Engineer [4 h]; Draftman [4 h] |
| DAM3-E-SA-R-740 | ROAD LAYOUT PLAN | 2026-01-14 A → 2026-03-16 A (+61d) | 2026-01-22 A → 2026-04-29 A (+97d) |  |  | resources Engineer; Draftman → Engineer [32 h]; Draftman [32 h] |
| DAM3-E-SA-R-750 | TYPICAL CROSS SECTIONS - KEY PLAN | 2026-01-18 A → 2026-03-16 A (+57d) | 2026-01-22 A → 2026-05-04 A (+102d) |  |  | resources Engineer; Draftman → Engineer [32 h]; Draftman [32 h] |
| DAM3-E-SA-R-760 | TYPICAL CROSS SECTIONS | 2026-01-18 A → 2026-03-16 A (+57d) | 2026-01-22 A → 2026-05-04 A (+102d) |  |  | resources Engineer; Draftman → Engineer [32 h]; Draftman [32 h] |
| DAM3-E-SA-R-770 | ROAD PROFILES | 2026-01-20 A → 2026-03-16 A (+55d) | 2026-01-22 A → 2026-04-29 A (+97d) |  |  | resources Engineer; Draftman → Engineer [32 h]; Draftman [32 h] |
| DAM3-E-SA-R-940 | GENERAL DETAILS | 2026-02-04 A → 2026-03-18 A (+42d) | 2026-02-08 A → 2026-05-11 A (+92d) |  | DAM3-E-SS-R-940 → DAM3-E-SS-R-940, DAM3-E-SA-R-930 | resources Engineer; Draftman → Engineer [4 h]; Draftman [4 h] |
| DAM3-E-SA-R-830 | SIGNING & MARKING LAYOUT PLAN | 2026-01-21 A → 2026-04-21 A (+90d) | 2026-01-22 A → 2026-04-29 A (+97d) | 1.5d → 2d | DAM3-E-SS-R-830 → DAM3-E-SS-R-830, DAM3-E-SA-R-820 | resources Engineer; Draftman → Engineer [32 h]; Draftman [32 h] |
| DAM3-E-SA-R-840 | ROAD STANDARD DETAILS-TYPICAL PAVEMENT DETAILS | 2026-01-14 A → 2026-04-21 A (+97d) | 2026-01-18 A → 2026-05-04 A (+106d) |  | DAM3-E-SS-R-840 → DAM3-E-SS-R-840, DAM3-E-SA-R-830 | resources Engineer; Draftman → Engineer [32 h]; Draftman [32 h] |
| DAM3-E-SA-R-850 | ROAD STANDARD DETAILS-TYPICAL CURB DETAILS | 2026-01-14 A → 2026-04-21 A (+97d) | 2026-01-18 A → 2026-05-04 A (+106d) |  | DAM3-E-SS-R-850 → DAM3-E-SS-R-850, DAM3-E-SA-R-840 | resources Engineer; Draftman → Engineer [4 h]; Draftman [4 h] |
| DAM3-E-SA-R-860 | ROAD STANDARD DETAILS-ROAD SIGN DETAILS | 2026-01-14 A → 2026-04-21 A (+97d) | 2026-01-18 A → 2026-05-04 A (+106d) |  | DAM3-E-SS-R-860 → DAM3-E-SS-R-860, DAM3-E-SA-R-850 | resources Engineer; Draftman → Engineer [4 h]; Draftman [4 h] |
| DAM3-E-SA-R-870 | ROAD STANDARD DETAILS-ROAD MARKING DETAILS | 2026-01-14 A → 2026-04-21 A (+97d) | 2026-01-18 A → 2026-05-04 A (+106d) |  | DAM3-E-SS-R-870 → DAM3-E-SS-R-870, DAM3-E-SA-R-860 | resources Engineer; Draftman → Engineer [4 h]; Draftman [4 h] |
| DAM3-E-SA-R-790 | ALIGNMENT & CURB SETTING OUT | 2026-01-21 A → 2026-06-14 A (+144d) | 2026-01-21 A → 2026-06-14 A (+144d) |  |  | resources Engineer; Draftman → Engineer [32 h]; Draftman [32 h] |
| DAM3-E-SA-R-800 | ALIGNMENT & CURB SETTING OUT TABLES | 2026-01-20 A → 2026-06-14 A (+145d) | 2026-01-21 A → 2026-06-14 A (+144d) |  | DAM3-E-SS-R-800 → DAM3-E-SS-R-800, DAM3-E-SA-R-790 | resources Engineer; Draftman → Engineer [32 h]; Draftman [32 h] |
| DAM3-E-SA-R-810 | ALIGNMNET GEOMETRIC DATA | 2026-01-20 A → 2026-06-14 A (+145d) | 2026-01-22 A → 2026-06-14 A (+143d) |  | DAM3-E-SS-R-810 → DAM3-E-SS-R-810, DAM3-E-SA-R-800 | resources Engineer; Draftman → Engineer [32 h]; Draftman [32 h] |
| DAM3-E-SA-R-820 | SWEPT PATH LAYOUT PLAN | 2026-02-04 A → 2026-06-14 A (+130d) | 2026-02-07 A → 2026-06-14 A (+127d) |  | DAM3-E-SS-R-820 → DAM3-E-SS-R-820, DAM3-E-SA-R-810 | resources Engineer; Draftman → Engineer [32 h]; Draftman [32 h] |
| DAM3-E-SA-R-950 | LANDSCAPE DETAILS | 2026-02-04 A → 2026-07-01 A (+147d) | 2026-02-12 A → 2026-07-05 A (+143d) |  | DAM3-E-SS-R-950 → DAM3-E-SS-R-950, DAM3-E-SA-R-940 | resources Engineer; Draftman → Engineer [4 h]; Draftman [4 h] |
| 6 | **EXTERNAL** | 2026-01-17 → 2026-02-10 (+24d) | 2026-03-29 → 2026-06-08 (+71d) |  |  |  |
| DAM3-E-SA-EX-1000 | WASHOUT CHAMBER DETAILS | 2026-01-17 A → 2026-02-10 A (+24d) | 2026-01-17 A → 2026-05-11 A (+114d) |  |  |  |
| DAM3-E-SA-EX-1010 | AIR RELEASE VALVE CHAMBER DETAILS | 2026-01-17 A → 2026-02-10 A (+24d) | 2026-01-17 A → 2026-05-25 A (+128d) |  |  |  |
| DAM3-E-SA-EX-1020 | THRUST BLOCK DETAILS (SHEET 1 OF 4) | 2026-01-17 A → 2026-02-10 A (+24d) | 2026-01-17 A → 2026-03-18 A (+60d) |  |  |  |
| DAM3-E-SA-EX-1030 | THRUST BLOCK DETAILS (SHEET 2 OF 4) | 2026-01-17 A → 2026-02-10 A (+24d) | 2026-01-17 A → 2026-03-18 A (+60d) |  |  |  |
| DAM3-E-SA-EX-1040 | THRUST BLOCK DETAILS (SHEET 3 OF 4) | 2026-01-17 A → 2026-02-10 A (+24d) | 2026-01-17 A → 2026-03-18 A (+60d) |  |  |  |
| DAM3-E-SA-EX-1050 | THRUST BLOCK DETAILS (SHEET 4 OF 4) | 2026-01-17 A → 2026-02-10 A (+24d) | 2026-01-17 A → 2026-03-18 A (+60d) |  |  |  |
| DAM3-E-SA-EX-730 | PIPE TRENCH DETAILS | 2026-01-17 A → 2026-02-10 A (+24d) | 2026-01-17 A → 2026-05-10 A (+113d) |  | DAM3-E-SS-EX-730, DAM3-E-SA-EX-940, DAM3-E-SA-EX-930, DAM3-E-SA-EX-920, DAM3-E-SA-EX-910, DAM3-E-SA-EX-900 → DAM3-E-SS-EX-730, DAM3-E-SA-EX-710, DAM3-E-SA-EX-710 FF | resources none → Engineer [4 h]; Draftman [4 h] |
| DAM3-E-SA-EX-740 | BURIED GATE VALVE DETAILS | 2026-01-17 A → 2026-02-10 A (+24d) | 2026-01-17 A → 2026-05-31 A (+134d) |  | DAM3-E-SS-EX-740 → DAM3-E-SS-EX-740, DAM3-E-SA-EX-720, DAM3-E-SA-EX-700 | resources none → Engineer [4 h]; Draftman [4 h] |
| DAM3-E-SA-EX-770 | WASHOUT CHAMBER DETAILS | 2026-01-21 A → 2026-02-10 A (+20d) | 2026-01-28 A → 2026-05-11 A (+103d) |  | DAM3-E-SS-EX-770 → DAM3-E-SS-EX-770, DAM3-E-SA-EX-750 | resources Engineer; Draftman → Engineer [4 h]; Draftman [4 h] |
| DAM3-E-SA-EX-780 | AIR RELEASE VALVE CHAMBER DETAILS | 2026-01-21 A → 2026-02-10 A (+20d) | 2026-01-28 A → 2026-05-25 A (+117d) |  | DAM3-E-SS-EX-780 → DAM3-E-SS-EX-780, DAM3-E-SA-EX-760 | resources Engineer; Draftman → Engineer [4 h]; Draftman [4 h] |
| DAM3-E-SA-EX-810 | THRUST BLOCK DETAILS (SHEET 1 OF 4) | 2026-01-17 A → 2026-02-10 A (+24d) | 2026-01-17 A → 2026-03-18 A (+60d) | 4d → 2d | DAM3-E-SS-EX-810 → DAM3-E-SS-EX-810, DAM3-E-SA-EX-800 | resources Engineer; Draftman → Engineer [8 h]; Draftman [8 h] |
| DAM3-E-SA-EX-820 | THRUST BLOCK DETAILS (SHEET 2 OF 4) | 2026-01-17 A → 2026-02-10 A (+24d) | 2026-01-17 A → 2026-03-18 A (+60d) |  |  | resources Engineer; Draftman → Engineer [8 h]; Draftman [8 h] |
| DAM3-E-SA-EX-830 | THRUST BLOCK DETAILS (SHEET 3 OF 4) | 2026-01-17 A → 2026-02-10 A (+24d) | 2026-01-17 A → 2026-03-18 A (+60d) | 4d → 2d | DAM3-E-SS-EX-830 → DAM3-E-SS-EX-830, DAM3-E-SA-EX-790 | resources Engineer; Draftman → Engineer [8 h]; Draftman [8 h] |
| DAM3-E-SA-EX-840 | THRUST BLOCK DETAILS (SHEET 4 OF 4) | 2026-01-17 A → 2026-02-10 A (+24d) | 2026-01-17 A → 2026-03-18 A (+60d) | 4d → 2d |  | resources Engineer; Draftman → Engineer [8 h]; Draftman [8 h] |
| DAM3-E-SA-EX-870 | GENERAL NOTES | 2026-01-17 A → 2026-02-10 A (+24d) | 2026-01-17 A → 2026-03-18 A (+60d) |  | DAM3-E-SS-EX-870 → DAM3-E-SS-EX-870, DAM3-E-SA-EX-820, DAM3-E-SA-EX-850, DAM3-E-SA-EX-850 FF |  |
| DAM3-E-SA-EX-880 | PIPE TRENCHES DETAILS (1) | 2026-01-17 A → 2026-02-10 A (+24d) | 2026-01-17 A → 2026-03-18 A (+60d) |  |  |  |
| DAM3-E-SA-EX-890 | PIPE TRENCHES DETAILS (2) | 2026-01-17 A → 2026-02-10 A (+24d) | 2026-01-17 A → 2026-03-18 A (+60d) |  |  |  |
| DAM3-E-SA-EX-900 | CAST IN PLACE MANHOLE DETAILS FOR DEPTH < 6000MM (TYPE-A) | 2026-01-21 A → 2026-02-10 A (+20d) | 2026-01-28 A → 2026-05-11 A (+103d) |  |  |  |
| DAM3-E-SA-EX-920 | BACKDROP DETAIL OF PRECAST MANHOLE DEPTH FROM 3000MM TO 6000MM | 2026-01-17 A → 2026-02-10 A (+24d) | 2026-01-17 A → 2026-05-19 A (+122d) |  |  |  |
| DAM3-E-SA-EX-930 | BACKDROP DETAIL OF PRECAST MANHOLE DEPTH < 3000MM | 2026-01-21 A → 2026-02-10 A (+20d) | 2026-01-28 A → 2026-05-19 A (+111d) |  |  |  |
| DAM3-E-SA-EX-960 | PIPE TRENCH DETAILS | 2026-01-20 A → 2026-02-10 A (+21d) | 2026-01-20 A → 2026-03-18 A (+57d) | 1.5d → 2d | DAM3-E-SS-EX-960 → DAM3-E-SS-EX-960, DAM3-E-SA-EX-940 | resources Engineer; Draftman → none |
| DAM3-E-SA-EX-970 | BURIED GATE VALVE DETAILS | 2026-01-20 A → 2026-02-10 A (+21d) | 2026-01-20 A → 2026-05-31 A (+131d) | 1.5d → 2d | DAM3-E-SS-EX-970 → DAM3-E-SS-EX-970, DAM3-E-SA-EX-950 | resources Engineer; Draftman → none |
| DAM3-E-SA-EX-910 | CAST IN PLACE MANHOLE DETAILS FOR DEPTH < 6000MM (TYPE-B) | 2026-01-17 A → 2026-02-12 A (+26d) | 2026-01-17 A → 2026-05-11 A (+114d) |  |  |  |
| DAM3-E-SA-EX-940 | PRECAST MANHOLE DETAILS | 2026-01-17 A → 2026-04-15 A (+88d) | 2026-01-17 A → 2026-06-08 A (+142d) |  |  |  |
| DAM3-E-SA-EX-750 | SINGLE VALVE CHAMBER DETAILS | 2026-01-21 A → 2026-04-21 A (+90d) | 2026-01-21 A → 2026-04-27 A (+96d) | 1.5d → 2d |  | resources Engineer; Draftman → Engineer [4 h]; Draftman [4 h] |
| DAM3-E-SA-EX-760 | DOUBLE VALVE CHAMBER DETAILS | 2026-01-17 A → 2026-04-21 A (+94d) | 2026-01-17 A → 2026-04-27 A (+100d) |  | DAM3-E-SS-EX-760 → DAM3-E-SS-EX-760, DAM3-E-SA-EX-730, DAM3-E-SA-EX-740 | resources Engineer; Draftman → Engineer [4 h]; Draftman [4 h] |
| DAM3-E-SA-EX-980 | SINGLE VALVE CHAMBER DETAILS | 2026-01-21 A → 2026-04-21 A (+90d) | 2026-01-21 A → 2026-04-27 A (+96d) |  | DAM3-E-SA-EX-740 → DAM3-E-SA-EX-970, DAM3-E-SA-EX-960 |  |
| DAM3-E-SA-EX-990 | DOUBLE VALVE CHAMBER DETAILS | 2026-01-17 A → 2026-04-21 A (+94d) | 2026-01-17 A → 2026-04-27 A (+100d) |  | DAM3-E-SA-EX-980, DAM3-E-SA-EX-950, DAM3-E-SA-EX-730 → DAM3-E-SA-EX-980 |  |
| DAM3-E-SA-EX-690 | POTABLE WATER NETWORK | 2026-01-28 A → 2026-05-11 A (+103d) | 2026-02-05 A → 2026-06-01 A (+116d) |  |  | resources Engineer; Draftman → Engineer [4 h]; Draftman [4 h] |
| DAM3-E-SA-EX-700 | FIRE FIGHTING WATER NETWORK | 2026-01-28 A → 2026-05-11 A (+103d) | 2026-02-05 A → 2026-05-12 A (+96d) |  | DAM3-E-SS-EX-700 → DAM3-E-SS-EX-700, DAM3-E-SA-EX-690 | resources Engineer; Draftman → Engineer [4 h]; Draftman [4 h] |
| DAM3-E-SA-EX-710 | POTABLE WATER NETWORK PROFILES | 2026-01-28 A → 2026-05-11 A (+103d) | 2026-02-05 A → 2026-05-25 A (+109d) | 1.62d → 2d | DAM3-E-SS-EX-710 → DAM3-E-SS-EX-710, DAM3-E-SA-EX-700, DAM3-E-SA-EX-690 | resources Engineer; Draftman → Engineer [4 h]; Draftman [4 h] |
| DAM3-E-SA-EX-720 | FIRE FIGHTING NETWORK PROFILE | 2026-01-28 A → 2026-05-11 A (+103d) | 2026-02-05 A → 2026-05-12 A (+96d) | 1.5d → 2d |  | resources Engineer; Draftman → Engineer [4 h]; Draftman [4 h] |
| DAM3-E-SA-EX-950 | IRRIGATION NETWORK LAYOUT SHEET 1 OF 1 | 2026-01-28 A → 2026-05-12 A (+104d) | 2026-03-29 A → 2026-05-17 A (+49d) |  | DAM3-E-SS-EX-950 → DAM3-E-SS-EX-950, DAM3-E-SA-EX-930 |  |
| DAM3-E-SA-EX-850 | SEWAGE NETWORK | 2026-01-28 A → 2026-05-14 A (+106d) | 2026-02-05 A → 2026-05-17 A (+101d) |  | DAM3-E-SS-EX-850 → DAM3-E-SS-EX-850, DAM3-E-SA-EX-840, DAM3-E-SA-EX-830 | resources Engineer; Draftman → Engineer [8 h]; Draftman [8 h] |
| DAM3-E-SA-EX-860 | SEWAGE NETWORK PROFILES | 2026-01-28 A → 2026-05-14 A (+106d) | 2026-02-05 A → 2026-05-17 A (+101d) |  |  |  |
| DAM3-E-SA-EX-790 | FLOW METER DETAILS | 2026-01-28 A → 2026-06-02 A (+125d) | 2026-02-05 A → 2026-06-03 A (+118d) |  | DAM3-E-SS-EX-790 → DAM3-E-SS-EX-790, DAM3-E-SA-EX-770 | resources Engineer; Draftman → Engineer [4 h]; Draftman [4 h] |
| DAM3-E-SA-EX-800 | FLOW METER REINFORCEMENT DETAILS | 2026-01-17 A → 2026-06-02 A (+136d) | 2026-01-17 A → 2026-06-03 A (+137d) | 4d → 2d | DAM3-E-SS-EX-800 → DAM3-E-SS-EX-800, DAM3-E-SA-EX-780, DAM3-E-SA-R-960 | resources Engineer; Draftman → Engineer [8 h]; Draftman [8 h] |
| 4 | **PRE QUALIFACTION FOR MATERIALS** | 2025-12-08 → 2026-01-15 (+38d) | 2026-03-29 → 2026-06-11 (+74d) |  |  |  |
| 1 | **PREPARATION AND SUBMITTAL** | 2025-12-16 → 2026-01-15 (+30d) | 2026-03-15 → 2026-06-10 (+87d) |  |  |  |
| 6 | **STRUCTURAL** | 2025-12-16 → 2026-01-15 (+30d) | 2026-01-03 → 2026-01-19 (+16d) |  |  |  |
| DAM3-E-PS-C-0010 | Anti termite | 2026-01-03 A → 2026-01-15 A (+12d) | 2026-01-03 A → 2026-01-15 A (+12d) |  | DAM3-MOB-SO.0016 → DAM3-MOB-SO.0015 |  |
| DAM3-E-PS-C-0020 | Concrete mix | 2025-12-16 A → 2026-01-15 A (+30d) | 2025-12-16 A → 2026-01-15 A (+30d) |  |  |  |
| DAM3-E-PS-C-0040 | Bitumen paint | 2025-12-29 A → 2026-01-15 A (+17d) | 2025-12-29 A → 2026-01-15 A (+17d) |  |  |  |
| DAM3-E-PS-C-0050 | Rebar | 2025-12-29 A → 2026-01-15 A (+17d) | 2025-12-29 A → 2026-01-15 A (+17d) |  |  |  |
| DAM3-E-PS-C-0030 | Polyethylene sheet | 2025-12-29 A → 2026-01-19 A (+21d) | 2025-12-29 A → 2026-01-19 A (+21d) |  |  |  |

| ID | Task | Start | Finish | Duration | Predecessors | Other |
| --- | --- | --- | --- | --- | --- | --- |
| 1 | **ARCHITECTURAL** | 2025-12-18 → 2026-02-08 (+52d) | 2026-03-15 → 2026-06-10 (+87d) |  |  |  |
| DAM3-E-PS-A-0040 | Concrete masonry unit (CMU) | 2026-03-15 A → 2026-02-08 A (-35d) | 2026-03-15 A → 2026-02-08 A (-35d) |  | DAM3-E-PS-C-0020 → DAM3-E-PS-A-0020 |  |
| DAM3-E-PS-A-0130 | Windows | 2026-02-09 A → 2026-02-08 A (-1d) | 2026-02-09 A → 2026-02-08 A (-1d) |  |  |  |
| DAM3-E-PS-A-0200 | Aluminum Composite Panel | 2026-02-09 A → 2026-02-10 A (+1d) | 2026-02-09 A → 2026-02-10 A (+1d) | 1.12d → 2d |  |  |
| DAM3-E-PS-A-0120 | Doors | 2026-01-03 A → 2026-02-16 A (+44d) | 2026-01-03 A → 2026-02-16 A (+44d) |  |  |  |
| DAM3-E-PS-A-0020 | PES -Steel Structure | 2025-12-18 A → 2026-02-19 A (+63d) | 2025-12-18 A → 2026-02-23 A (+67d) |  | DAM3-E-PS-C-0010, DAM3-E-PS-C-0050 → DAM3-E-PS-C-0010 |  |
| DAM3-E-PS-A-0190 | Gypsum board | 2026-02-05 A → 2026-02-24 A (+19d) | 2026-02-05 A → 2026-02-24 A (+19d) |  |  |  |
| DAM3-E-PS-A-0050 | Steel ladder | 2025-12-18 A → 2026-02-25 A (+69d) | 2025-12-18 A → 2026-02-28 A (+72d) |  |  |  |
| DAM3-E-PS-A-0140 | Ceramic tiles | 2026-02-26 A → 2026-03-25 A (+27d) | 2026-02-26 A → 2026-03-25 A (+27d) |  |  |  |
| DAM3-E-PS-A-0180 | Internl paint | 2026-01-08 A → 2026-03-25 A (+76d) | 2026-01-08 A → 2026-03-25 A (+76d) |  |  |  |
| DAM3-E-PS-A-0170 | Epoxy paint | 2026-03-15 A → 2026-04-20 A (+36d) | 2026-03-15 A → 2026-04-20 A (+36d) |  |  |  |
| DAM3-E-PS-A-0150 | Granite strip | 2026-02-26 A → 2026-05-03 A (+66d) | 2026-02-26 A → 2026-05-03 A (+66d) |  |  |  |
| DAM3-E-PS-A-0060 | Steel gratings | 2026-02-05 A → 2026-05-19 A (+103d) | 2026-02-05 A → 2026-05-19 A (+103d) |  |  |  |
| DAM3-E-PS-A-0230 | Steel fence and gates | 2026-03-15 A → 2026-05-20 A (+66d) | 2026-03-15 A → 2026-05-20 A (+66d) |  |  |  |
| DAM3-E-PS-A-0070 | Steel rails | 2026-02-05 A → 2026-06-10 A (+125d) | 2026-02-05 A → 2026-06-10 A (+125d) |  |  |  |
| DAM3-E-PS-A-0240 | Identification sign; ID01 & ID02 | 2026-03-15 A → 2026-06-10 A (+87d) | 2026-03-15 A → 2026-06-10 A (+87d) |  |  | resources Purchaser [32 h] → Purchaser [16 h] |
| 2 | **MECHANICAL** | 2025-12-24 → 2026-01-24 (+31d) | 2026-01-29 → 2026-06-10 (+132d) |  |  |  |
| DAM3-E-PS-M-0330 | GRP tank | 2025-12-28 A → 2026-01-24 A (+27d) | 2025-12-28 A → 2026-01-28 A (+31d) |  |  | resources Purchaser [32 h] → Purchaser [16 h] |
| DAM3-E-PS-M-0250 | Inline exhaust fans | 2026-01-29 A → 2026-02-02 A (+4d) | 2026-01-29 A → 2026-02-02 A (+4d) |  |  | resources Purchaser [32 h] → Purchaser [16 h] |
| DAM3-E-PS-M-0260 | Wall propeller type exhaust fans | 2026-01-29 A → 2026-02-02 A (+4d) | 2026-01-29 A → 2026-02-02 A (+4d) |  |  | resources Purchaser [32 h] → Purchaser [16 h] |
| DAM3-E-PS-M-0280 | Fire fighting valves | 2026-01-19 A → 2026-02-02 A (+14d) | 2026-01-19 A → 2026-02-02 A (+14d) |  |  | resources Purchaser [32 h] → Purchaser [16 h] |
| DAM3-E-PS-M-0340 | Water supply valves | 2026-01-07 A → 2026-02-02 A (+26d) | 2026-01-07 A → 2026-02-02 A (+26d) |  |  | resources Purchaser [32 h] → Purchaser [16 h] |
| DAM3-E-PS-M-0030 | PPR pipes | 2025-12-24 A → 2026-02-03 A (+41d) | 2025-12-24 A → 2026-02-03 A (+41d) |  |  |  |
| DAM3-E-PS-M-0270 | Fire pumps | 2025-12-27 A → 2026-02-03 A (+38d) | 2025-12-27 A → 2026-02-03 A (+38d) |  |  | resources Purchaser [32 h] → Purchaser [16 h] |
| DAM3-E-PS-M-0320 | Booster pump | 2025-12-27 A → 2026-02-03 A (+38d) | 2025-12-27 A → 2026-02-03 A (+38d) |  |  | resources Purchaser [32 h] → Purchaser [16 h] |
| DAM3-E-PS-M-0070 | U/G HDPE pipes | 2025-12-28 A → 2026-02-04 A (+38d) | 2025-12-28 A → 2026-02-04 A (+38d) |  |  |  |
| DAM3-E-PS-M-0090 | Fire hose cabinet | 2026-01-14 A → 2026-02-04 A (+21d) | 2026-01-14 A → 2026-02-04 A (+21d) |  |  |  |
| DAM3-E-PS-M-0160 | UPVC pipes | 2025-12-24 A → 2026-02-04 A (+42d) | 2025-12-24 A → 2026-02-04 A (+42d) |  |  |  |
| DAM3-E-PS-M-0200 | Electric water heater | 2026-01-03 A → 2026-02-05 A (+33d) | 2026-01-03 A → 2026-02-05 A (+33d) |  |  | resources Purchaser [32 h] → Purchaser [16 h] |
| DAM3-E-PS-M-0210 | Western water closet | 2025-12-24 A → 2026-02-05 A (+43d) | 2025-12-24 A → 2026-02-05 A (+43d) |  |  | resources Purchaser [32 h] → Purchaser [16 h] |
| DAM3-E-PS-M-0240 | Lavatory / wash basin | 2025-12-24 A → 2026-02-05 A (+43d) | 2025-12-24 A → 2026-02-05 A (+43d) | 1.12d → 2d |  | resources Purchaser [32 h] → Purchaser [16 h] |
| DAM3-E-PS-M-0190 | Gully trap | 2025-12-30 A → 2026-02-07 A (+39d) | 2025-12-30 A → 2026-02-07 A (+39d) |  |  | resources Purchaser [32 h] → Purchaser [16 h] |
| DAM3-E-PS-M-0230 | Toilet Fittings | 2026-01-08 A → 2026-02-07 A (+30d) | 2026-01-08 A → 2026-02-07 A (+30d) |  |  | resources Purchaser [32 h] → Purchaser [16 h] |
| DAM3-E-PS-M-0010 | Seamless black steel or ERW pipes | 2026-01-08 A → 2026-02-08 A (+31d) | 2026-01-08 A → 2026-02-08 A (+31d) |  | DAM3-E-PS-C-0020 → DAM3-E-PS-A-0020 |  |
| DAM3-E-PS-M-0100 | Automatic air release valve | 2026-01-19 A → 2026-02-08 A (+20d) | 2026-01-19 A → 2026-02-08 A (+20d) |  |  |  |
| DAM3-E-PS-M-0110 | OS & Y gate valve | 2026-01-19 A → 2026-02-08 A (+20d) | 2026-01-19 A → 2026-02-08 A (+20d) |  |  |  |
| DAM3-E-PS-M-0120 | Fire alarm check valve | 2026-01-19 A → 2026-02-08 A (+20d) | 2026-01-19 A → 2026-02-08 A (+20d) |  |  |  |
| DAM3-E-PS-M-0040 | HVAC duct | 2026-01-28 A → 2026-02-09 A (+12d) | 2026-01-28 A → 2026-02-09 A (+12d) |  |  |  |
| DAM3-E-PS-M-0050 | Flexible duct | 2026-01-28 A → 2026-02-09 A (+12d) | 2026-01-28 A → 2026-02-09 A (+12d) |  |  |  |
| DAM3-E-PS-M-0140 | Ball valve | 2026-01-05 A → 2026-02-11 A (+37d) | 2026-01-05 A → 2026-02-12 A (+38d) |  |  |  |
| DAM3-E-PS-M-0350 | Water tap | 2026-01-11 A → 2026-02-11 A (+31d) | 2026-01-11 A → 2026-02-11 A (+31d) |  |  | resources Purchaser [32 h] → Purchaser [16 h] |
| DAM3-E-PS-M-0080 | Warning tapes | 2026-01-01 A → 2026-02-14 A (+44d) | 2026-01-01 A → 2026-02-14 A (+44d) |  |  |  |
| DAM3-E-PS-M-0170 | Roof vent caps | 2026-01-12 A → 2026-02-16 A (+35d) | 2026-01-12 A → 2026-02-16 A (+35d) |  |  | resources Purchaser [32 h] → Purchaser [16 h] |
| DAM3-E-PS-M-0180 | Floor drain | 2026-01-12 A → 2026-02-16 A (+35d) | 2026-01-12 A → 2026-02-16 A (+35d) |  |  | resources Purchaser [32 h] → Purchaser [16 h] |
| DAM3-E-PS-M-0220 | Bib tap | 2026-01-11 A → 2026-04-04 A (+83d) | 2026-01-11 A → 2026-04-05 A (+84d) |  |  | resources Purchaser [32 h] → Purchaser [16 h] |
| DAM3-E-PS-M-0060 | Exhaust diffuser | 2026-01-27 A → 2026-05-27 A (+120d) | 2026-01-27 A → 2026-05-27 A (+120d) |  |  |  |
| DAM3-E-PS-M-0150 | Capped connection | 2025-12-24 A → 2026-06-10 A (+168d) | 2025-12-24 A → 2026-06-10 A (+168d) |  |  |  |
| 3 | **ELECTRICAL** | 2025-12-21 → 2026-02-07 (+48d) | 2026-03-15 → 2026-04-20 (+36d) |  |  |  |
| DAM3-E-PS-E-0010 | PVC conduits | 2025-12-21 A → 2026-02-07 A (+48d) | 2025-12-21 A → 2026-02-07 A (+48d) |  |  |  |
| DAM3-E-PS-E-0180 | Fire alarm system | 2026-01-19 A → 2026-02-09 A (+21d) | 2026-01-20 A → 2026-02-09 A (+20d) |  | DAM3-E-PS-E-0170, DAM3-E-PS-M-0210 → DAM3-E-PS-E-0170 | resources Purchaser [32 h] → Purchaser [16 h] |
| DAM3-E-PS-E-0240 | Access control system | 2026-02-02 A → 2026-02-09 A (+7d) | 2026-02-02 A → 2026-02-09 A (+7d) | 1.62d → 2d | DAM3-E-PS-E-0230, DAM3-E-SS-R-960 → DAM3-E-PS-E-0230 | resources Purchaser [32 h] → none |
| DAM3-E-PS-E-0170 | Wall mounted, duplex, telephone and data outlet | 2026-01-24 A → 2026-02-11 A (+18d) | 2026-01-24 A → 2026-02-11 A (+18d) |  |  | resources Purchaser [32 h] → Purchaser [16 h] |
| DAM3-E-PS-E-0230 | CCTV System | 2026-01-24 A → 2026-02-11 A (+18d) | 2026-01-24 A → 2026-02-11 A (+18d) |  | DAM3-E-PS-E-0220, DAM3-E-SS-M-670, DAM3-E-SS-EX-780 → DAM3-E-PS-E-0220 | resources Purchaser [32 h] → none |
| DAM3-E-PS-E-0250 | Solar system | 2026-01-03 A → 2026-02-24 A (+52d) | 2026-01-03 A → 2026-03-01 A (+57d) |  | DAM3-E-PS-E-0240 → DAM3-E-PS-E-0240, DAM3-E-MS-M-0190, DAM3-E-MS-M-0180, DAM3-E-MS-M-0170, DAM3-E-MS-M-0160, DAM3-E-MS-M-0200 | resources Purchaser [32 h] → none |
| DAM3-E-PS-E-0120 | Suspended High Bay LED lights | 2026-01-11 A → 2026-03-01 A (+49d) | 2026-01-11 A → 2026-03-01 A (+49d) |  |  |  |
| DAM3-E-PS-E-0130 | Flood lights | 2026-01-11 A → 2026-03-01 A (+49d) | 2026-01-11 A → 2026-03-01 A (+49d) |  |  | resources Purchaser [32 h] → Purchaser [16 h] |
| DAM3-E-PS-E-0140 | Recessed mounted LED downlight | 2026-01-11 A → 2026-03-01 A (+49d) | 2026-01-11 A → 2026-03-01 A (+49d) |  |  | resources Purchaser [32 h] → Purchaser [16 h] |
| DAM3-E-PS-E-0150 | LED Emergency Lights wall mounted | 2026-01-11 A → 2026-03-01 A (+49d) | 2026-01-11 A → 2026-03-01 A (+49d) |  |  | resources Purchaser [32 h] → Purchaser [16 h] |
| DAM3-E-PS-E-0160 | LED Emergency Exit Light | 2026-01-11 A → 2026-03-01 A (+49d) | 2026-01-11 A → 2026-03-01 A (+49d) |  | DAM3-E-PS-E-0150, DAM3-E-SS-R-900 → DAM3-E-PS-E-0150 | resources Purchaser [32 h] → Purchaser [16 h] |
| DAM3-E-PS-E-0200 | Street Lighting poles | 2026-01-11 A → 2026-03-01 A (+49d) | 2026-01-11 A → 2026-03-01 A (+49d) | 4d → 1d | DAM3-E-PS-E-0180, DAM3-E-SS-C-890 → DAM3-E-PS-E-0180 | resources Purchaser [32 h] → Purchaser [16 h] |
| DAM3-E-PS-E-0220 | Surface mounted lights | 2026-01-11 A → 2026-03-01 A (+49d) | 2026-01-11 A → 2026-03-01 A (+49d) |  |  | resources Purchaser [32 h] → Purchaser [16 h] |
| DAM3-E-PS-E-0030 | Cable Tray | 2026-01-03 A → 2026-03-03 A (+59d) | 2026-01-03 A → 2026-03-03 A (+59d) |  |  |  |
| DAM3-E-PS-E-0050 | Wiring devices | 2026-01-03 A → 2026-03-03 A (+59d) | 2026-01-03 A → 2026-03-03 A (+59d) |  |  |  |
| DAM3-E-PS-E-0020 | Wires | 2026-01-01 A → 2026-03-14 A (+72d) | 2026-01-01 A → 2026-03-14 A (+72d) |  |  |  |
| DAM3-E-PS-E-0040 | Grounding system | 2026-01-24 A → 2026-03-14 A (+49d) | 2026-01-24 A → 2026-03-14 A (+49d) |  |  |  |
| DAM3-E-PS-E-0070 | Low Voltage cables | 2025-12-24 A → 2026-03-14 A (+80d) | 2025-12-24 A → 2026-03-14 A (+80d) |  |  |  |
| DAM3-E-PS-E-0110 | Disconnect switches | 2026-03-15 A → 2026-03-25 A (+10d) | 2026-03-15 A → 2026-03-25 A (+10d) |  |  |  |
| DAM3-E-PS-E-0080 | Main distribution board (MDB) | 2026-02-12 A → 2026-04-19 A (+66d) | 2026-02-14 A → 2026-04-19 A (+64d) |  |  |  |
| DAM3-E-PS-E-0090 | Lighting panel board | 2026-02-12 A → 2026-04-19 A (+66d) | 2026-02-14 A → 2026-04-19 A (+64d) | 5d → 2d |  |  |
| DAM3-E-PS-E-0100 | PP-AC panel | 2026-02-12 A → 2026-04-19 A (+66d) | 2026-02-14 A → 2026-04-19 A (+64d) |  |  |  |

| ID | Task | Start | Finish | Duration | Predecessors | Other |
| --- | --- | --- | --- | --- | --- | --- |
| DAM3-E-PS-E-0210 | Distribution board for pump room | 2026-02-12 A → 2026-04-19 A (+66d) | 2026-02-14 A → 2026-04-19 A (+64d) | 2d → 1d |  | resources Purchaser [32 h] → Purchaser [16 h] |
| DAM3-E-PS-E-0060 | HDPE ducts | 2026-01-03 A → 2026-04-20 A (+107d) | 2026-01-03 A → 2026-04-20 A (+107d) |  |  |  |
| DAM3-E-PS-E-0260 | Main program system & controller | 2026-02-04 A → 2026-04-20 A (+75d) | 2026-02-04 A → 2026-04-20 A (+75d) |  |  | resources Purchaser [32 h] → none |
| DAM3-E-PS-E-0270 | PLC controller | 2026-02-04 A → 2026-04-20 A (+75d) | 2026-02-04 A → 2026-04-20 A (+75d) |  |  | resources Purchaser [32 h] → none |
| 4 | **EXTERNAL** | 2026-03-02 → 2026-06-10 (+100d) | 2026-03-15 → 2026-06-10 (+87d) |  |  |  |
| DAM3-E-PS-EX-0010 | Asphalt works | 2026-03-02 A → 2026-06-10 A (+100d) | 2026-03-02 A → 2026-06-10 A (+100d) |  |  | resources Purchaser [32 h] → Purchaser [16 h] |
| DAM3-E-PS-EX-0020 | Concrete parking bumper | 2026-03-15 A → 2026-06-10 A (+87d) | 2026-03-15 A → 2026-06-10 A (+87d) |  |  | resources Purchaser [32 h] → Purchaser [16 h] |
| DAM3-E-PS-EX-0030 | Road markings | 2026-03-09 A → 2026-06-10 A (+93d) | 2026-03-09 A → 2026-06-10 A (+93d) |  |  | resources Purchaser [32 h] → Purchaser [16 h] |
| DAM3-E-PS-EX-0040 | Road signs | 2026-03-09 A → 2026-06-10 A (+93d) | 2026-03-09 A → 2026-06-10 A (+93d) |  |  | resources Purchaser [32 h] → Purchaser [16 h] |
| DAM3-E-PS-EX-0060 | Interlock tiles | 2026-03-15 A → 2026-06-10 A (+87d) | 2026-03-15 A → 2026-06-10 A (+87d) |  |  | resources Purchaser [32 h] → Purchaser [16 h] |
| DAM3-E-PS-EX-0070 | Curbstones | 2026-03-15 A → 2026-06-10 A (+87d) | 2026-03-15 A → 2026-06-10 A (+87d) |  |  | resources Purchaser [32 h] → Purchaser [16 h] |
| DAM3-E-PS-EX-0080 | Gravel bedding | 2026-03-15 A → 2026-06-10 A (+87d) | 2026-03-15 A → 2026-06-10 A (+87d) |  |  | resources Purchaser [32 h] → Purchaser [16 h] |
| 5 | **ENVIRONMETAL** | 2025-12-24 → 2026-02-03 (+41d) | 2025-12-28 → 2026-03-03 (+65d) |  |  |  |
| DAM3-E-PS-EN-0080 | UPVC pipes | 2025-12-24 A → 2026-02-03 A (+41d) | 2025-12-25 A → 2026-03-03 A (+68d) |  | DAM3-E-PS-M-0160 → DAM3-E-PS-EN-0070 | resources none → Purchaser [32 h] |
| DAM3-E-PS-EN-0010 | HDPE pipes for fire system | 2025-12-28 A → 2026-02-05 A (+39d) | 2025-12-28 A → 2026-02-05 A (+39d) |  |  |  |
| DAM3-E-PS-EN-0030 | HDPE pipes for water supply system | 2025-12-28 A → 2026-02-05 A (+39d) | 2025-12-28 A → 2026-02-05 A (+39d) |  |  |  |
| DAM3-E-PS-EN-0020 | Directly buried gate valve for fire system | 2025-12-24 A → 2026-02-14 A (+52d) | 2025-12-24 A → 2026-02-14 A (+52d) |  |  |  |
| DAM3-E-PS-EN-0040 | Directly buried gate valve for water system | 2025-12-24 A → 2026-02-14 A (+52d) | 2025-12-24 A → 2026-02-14 A (+52d) |  |  |  |
| DAM3-E-PS-EN-0050 | Air valve | 2025-12-24 A → 2026-02-16 A (+54d) | 2025-12-24 A → 2026-02-16 A (+54d) |  |  |  |
| DAM3-E-PS-EN-0060 | Washout valve | 2025-12-24 A → 2026-02-16 A (+54d) | 2025-12-24 A → 2026-02-16 A (+54d) |  |  |  |
| DAM3-E-PS-EN-0070 | Gate valve | 2025-12-24 A → 2026-02-16 A (+54d) | 2025-12-24 A → 2026-02-16 A (+54d) |  |  |  |
| 2 | **REVIEW AND APPROVAL** | 2025-12-08 → 2026-01-15 (+38d) | 2026-03-29 → 2026-06-11 (+74d) |  |  |  |
| 6 | **STRUCTURAL** | 2025-12-16 → 2026-01-15 (+30d) | 2026-01-04 → 2026-01-21 (+17d) |  |  |  |
| DAM3-E-PA-C-0010 | Anti termite | 2026-01-03 A → 2026-01-15 A (+12d) | 2026-01-04 A → 2026-01-20 A (+16d) | 5d → 2d |  |  |
| DAM3-E-PA-C-0020 | Concrete mix | 2025-12-16 A → 2026-01-15 A (+30d) | 2025-12-17 A → 2026-01-20 A (+34d) | 5d → 2d |  |  |
| DAM3-E-PA-C-0040 | Bitumen paint | 2025-12-29 A → 2026-01-15 A (+17d) | 2025-12-30 A → 2026-01-20 A (+21d) |  |  |  |
| DAM3-E-PA-C-0050 | Rebar | 2025-12-29 A → 2026-01-15 A (+17d) | 2025-12-30 A → 2026-01-20 A (+21d) |  |  |  |
| DAM3-E-PA-C-0030 | Polyethylene sheet | 2025-12-29 A → 2026-01-19 A (+21d) | 2025-12-30 A → 2026-01-21 A (+22d) | 2d → 5d |  |  |
| 1 | **ARCHITECTURAL** | 2025-12-18 → 2026-02-08 (+52d) | 2026-03-29 → 2026-06-11 (+74d) |  |  |  |
| DAM3-E-PA-A-0040 | Concrete masonry unit (CMU) | 2026-03-15 A → 2026-02-08 A (-35d) | 2026-03-29 A → 2026-02-09 A (-48d) |  |  |  |
| DAM3-E-PA-A-0130 | Windows | 2026-02-09 A → 2026-02-08 A (-1d) | 2026-03-21 A → 2026-02-09 A (-40d) |  |  |  |
| DAM3-E-PA-A-0200 | Aluminum Composite Panel |  | 2026-02-21 A → 2026-02-10 A (-11d) | 2.62d → 2d |  | resources Purchaser → Purchaser [32 h] |
| DAM3-E-PA-A-0120 | Doors | 2026-01-03 A → 2026-02-16 A (+44d) | 2026-01-04 A → 2026-02-17 A (+44d) |  |  |  |
| DAM3-E-PA-A-0020 | PES -Steel Structure | 2025-12-18 A → 2026-02-17 A (+61d) | 2025-12-20 A → 2026-02-19 A (+61d) |  |  | resources Purchaser → Purchaser [32 h] |
| DAM3-E-PA-A-0050 | Steel ladder | 2025-12-18 A → 2026-02-17 A (+61d) | 2025-12-20 A → 2026-02-19 A (+61d) |  |  |  |
| DAM3-E-PA-A-0190 | Gypsum board | 2026-02-05 A → 2026-02-24 A (+19d) | 2026-02-07 A → 2026-04-12 A (+64d) |  |  |  |
| DAM3-E-PA-A-0140 | Ceramic tiles | 2026-02-26 A → 2026-03-25 A (+27d) | 2026-03-03 A → 2026-03-26 A (+23d) |  |  |  |
| DAM3-E-PA-A-0180 | Internl paint | 2026-01-08 A → 2026-03-25 A (+76d) | 2026-01-10 A → 2026-03-26 A (+75d) |  |  |  |
| DAM3-E-PA-A-0170 | Epoxy paint | 2026-03-15 A → 2026-04-20 A (+36d) | 2026-03-29 A → 2026-04-21 A (+23d) |  |  |  |
| DAM3-E-PA-A-0150 | Granite strip | 2026-02-26 A → 2026-05-03 A (+66d) | 2026-03-03 A → 2026-05-04 A (+62d) |  |  |  |
| DAM3-E-PA-A-0060 | Steel gratings | 2026-02-05 A → 2026-05-19 A (+103d) | 2026-03-29 A → 2026-05-20 A (+52d) |  |  |  |
| DAM3-E-PA-A-0230 | Steel fence and gates | 2026-03-15 A → 2026-05-20 A (+66d) | 2026-03-29 A → 2026-05-21 A (+53d) |  |  | resources Purchaser → Purchaser [16 h] |
| DAM3-E-PA-A-0070 | Steel rails | 2026-02-05 A → 2026-06-10 A (+125d) | 2026-03-29 A → 2026-06-11 A (+74d) |  |  |  |
| DAM3-E-PA-A-0240 | Identification sign; ID01 & ID02 | 2026-03-15 A → 2026-06-10 A (+87d) | 2026-03-29 A → 2026-06-11 A (+74d) |  |  | resources Purchaser → Purchaser [16 h] |
| 2 | **MECHANICAL** | 2025-12-08 → 2026-01-24 (+47d) | 2026-01-31 → 2026-06-11 (+131d) |  |  |  |
| DAM3-E-PA-M-0340 | GRP tank | 2025-12-28 A → 2026-01-24 A (+27d) | 2025-12-31 A → 2026-02-16 A (+47d) |  |  |  |
| DAM3-E-PA-M-0250 | Inline exhaust fans | 2026-01-29 A → 2026-02-02 A (+4d) | 2026-01-31 A → 2026-02-17 A (+17d) |  |  |  |
| DAM3-E-PA-M-0260 | Wall propeller type exhaust fans | 2026-01-29 A → 2026-02-02 A (+4d) | 2026-01-31 A → 2026-02-17 A (+17d) |  |  |  |
| DAM3-E-PA-M-0280 | Fire fighting valves | 2026-01-19 A → 2026-02-02 A (+14d) | 2026-01-19 A → 2026-02-03 A (+15d) |  |  |  |
| DAM3-E-PA-M-0350 | Water supply valves | 2026-01-07 A → 2026-02-02 A (+26d) | 2026-01-08 A → 2026-02-03 A (+26d) |  |  |  |
| DAM3-E-PA-M-0030 | PPR pipes | 2025-12-24 A → 2026-02-03 A (+41d) | 2025-12-25 A → 2026-02-04 A (+41d) |  |  |  |
| DAM3-E-PA-M-0270 | Fire pumps | 2025-12-27 A → 2026-02-03 A (+38d) | 2025-12-28 A → 2026-02-04 A (+38d) |  |  |  |
| DAM3-E-PA-M-0330 | Booster pump | 2025-12-27 A → 2026-02-03 A (+38d) | 2025-12-28 A → 2026-02-04 A (+38d) |  |  |  |
| DAM3-E-PA-M-0070 | U/G HDPE pipes | 2025-12-28 A → 2026-02-04 A (+38d) | 2025-12-29 A → 2026-02-05 A (+38d) |  |  |  |
| DAM3-E-PA-M-0090 | Fire hose cabinet | 2026-01-14 A → 2026-02-04 A (+21d) | 2026-01-15 A → 2026-02-05 A (+21d) |  |  |  |
| DAM3-E-PA-M-0160 | UPVC pipes | 2025-12-27 A → 2026-02-04 A (+39d) | 2025-12-27 A → 2026-02-05 A (+40d) |  | DAM3-E-PS-EN-0080 → DAM3-E-PS-M-0160 | resources Purchaser [32 h]; Construction Cost [6896.1] → none |
| DAM3-E-PA-M-0200 | Electric water heater | 2026-01-03 A → 2026-02-05 A (+33d) | 2026-01-04 A → 2026-02-07 A (+34d) |  |  |  |
| DAM3-E-PA-M-0210 | Western water closet | 2025-12-24 A → 2026-02-05 A (+43d) | 2025-12-25 A → 2026-02-07 A (+44d) |  |  |  |
| DAM3-E-PA-M-0240 | Lavatory / wash basin | 2025-12-24 A → 2026-02-05 A (+43d) | 2025-12-25 A → 2026-02-07 A (+44d) |  |  |  |
| DAM3-E-PA-M-0190 | Gully trap | 2025-12-30 A → 2026-02-07 A (+39d) | 2025-12-31 A → 2026-02-08 A (+39d) |  |  |  |
| DAM3-E-PA-M-0230 | Toilet Fittings | 2026-01-08 A → 2026-02-07 A (+30d) | 2026-01-10 A → 2026-02-08 A (+29d) |  |  |  |
| DAM3-E-PA-M-0010 | Seamless black steel or ERW pipes | 2025-12-08 A → 2026-02-08 A (+62d) | 2026-01-10 A → 2026-02-09 A (+30d) |  |  |  |
| DAM3-E-PA-M-0100 | Automatic air release valve | 2026-01-19 A → 2026-02-08 A (+20d) | 2026-01-19 A → 2026-02-09 A (+21d) |  |  |  |
| DAM3-E-PA-M-0110 | OS & Y gate valve | 2026-01-19 A → 2026-02-08 A (+20d) | 2026-01-19 A → 2026-02-09 A (+21d) |  |  |  |
| DAM3-E-PA-M-0120 | Fire alarm check valve | 2026-01-19 A → 2026-02-08 A (+20d) | 2026-01-19 A → 2026-02-09 A (+21d) |  |  |  |
| DAM3-E-PA-M-0040 | HVAC duct | 2026-01-28 A → 2026-02-09 A (+12d) | 2026-01-29 A → 2026-02-10 A (+12d) |  |  |  |
| DAM3-E-PA-M-0050 | Flexible duct | 2026-01-28 A → 2026-02-09 A (+12d) | 2026-01-29 A → 2026-02-10 A (+12d) |  |  |  |
| DAM3-E-PA-M-0140 | Ball valve | 2026-01-05 A → 2026-02-11 A (+37d) | 2026-01-06 A → 2026-02-11 A (+36d) |  |  |  |
| DAM3-E-PA-M-0320 | Water tap | 2026-01-11 A → 2026-02-11 A (+31d) | 2026-01-12 A → 2026-02-12 A (+31d) |  |  | resources Purchaser → Purchaser [16 h] |
| DAM3-E-PA-M-0080 | Warning tapes | 2026-01-01 A → 2026-02-14 A (+44d) | 2026-01-04 A → 2026-02-15 A (+42d) |  |  |  |

| ID | Task | Start | Finish | Duration | Predecessors | Other |
| --- | --- | --- | --- | --- | --- | --- |
| DAM3-E-PA-M-0170 | Roof vent caps | 2026-01-12 A → 2026-02-16 A (+35d) | 2026-01-13 A → 2026-02-17 A (+35d) |  |  |  |
| DAM3-E-PA-M-0180 | Floor drain | 2026-01-12 A → 2026-02-16 A (+35d) | 2026-01-13 A → 2026-02-17 A (+35d) |  |  |  |
| DAM3-E-PA-M-0220 | Bib tap | 2026-01-11 A → 2026-04-06 A (+85d) | 2026-01-12 A → 2026-04-07 A (+85d) |  |  |  |
| DAM3-E-PA-M-0060 | Exhaust diffuser | 2026-01-27 A → 2026-05-27 A (+120d) | 2026-01-28 A → 2026-05-28 A (+120d) |  |  |  |
| DAM3-E-PA-M-0150 | Capped connection | 2025-12-24 A → 2026-06-10 A (+168d) | 2025-12-25 A → 2026-06-11 A (+168d) |  |  |  |
| 3 | **ELECTRICAL** | 2025-12-21 → 2026-02-07 (+48d) | 2026-03-29 → 2026-04-21 (+23d) |  |  |  |
| DAM3-E-PA-E-0010 | PVC conduits | 2025-12-21 A → 2026-02-07 A (+48d) | 2025-12-22 A → 2026-02-08 A (+48d) |  |  |  |
| DAM3-E-PA-E-0180 | Fire alarm system | 2026-01-20 A → 2026-02-09 A (+20d) | 2026-01-20 A → 2026-02-10 A (+21d) |  |  |  |
| DAM3-E-PA-E-0240 | Access control system | 2026-02-02 A → 2026-02-09 A (+7d) | 2026-02-03 A → 2026-02-10 A (+7d) |  |  |  |
| DAM3-E-PA-E-0170 | Wall mounted, duplex, telephone and data outlet | 2026-01-24 A → 2026-02-11 A (+18d) | 2026-03-29 A → 2026-02-14 A (-43d) |  |  |  |
| DAM3-E-PA-E-0230 | CCTV System | 2026-01-24 A → 2026-02-11 A (+18d) | 2026-02-04 A → 2026-02-14 A (+10d) |  |  |  |
| DAM3-E-PA-E-0250 | Solar system | 2026-01-03 A → 2026-02-24 A (+52d) | 2026-01-04 A → 2026-03-02 A (+57d) |  |  |  |
| DAM3-E-PA-E-0120 | Suspended High Bay LED lights | 2026-01-11 A → 2026-03-01 A (+49d) | 2026-01-12 A → 2026-03-02 A (+49d) |  |  |  |
| DAM3-E-PA-E-0130 | Flood lights | 2026-01-11 A → 2026-03-01 A (+49d) | 2026-01-12 A → 2026-03-02 A (+49d) |  |  |  |
| DAM3-E-PA-E-0140 | Recessed mounted LED downlight | 2026-01-11 A → 2026-03-01 A (+49d) | 2026-01-12 A → 2026-03-02 A (+49d) |  |  |  |
| DAM3-E-PA-E-0150 | LED Emergency Lights wall mounted | 2026-01-11 A → 2026-03-01 A (+49d) | 2026-01-12 A → 2026-03-02 A (+49d) |  |  |  |
| DAM3-E-PA-E-0160 | LED Emergency Exit Light | 2026-01-11 A → 2026-03-01 A (+49d) | 2026-01-12 A → 2026-03-02 A (+49d) |  |  |  |
| DAM3-E-PA-E-0200 | Street Lighting poles | 2026-01-11 A → 2026-03-01 A (+49d) | 2026-01-12 A → 2026-03-02 A (+49d) |  |  |  |
| DAM3-E-PA-E-0220 | Surface mounted lights | 2026-01-11 A → 2026-03-01 A (+49d) | 2026-01-12 A → 2026-03-02 A (+49d) |  |  |  |
| DAM3-E-PA-E-0030 | Cable Tray | 2026-01-03 A → 2026-03-03 A (+59d) | 2026-01-04 A → 2026-03-04 A (+59d) |  |  | resources Purchaser → Purchaser [32 h] |
| DAM3-E-PA-E-0050 | Wiring devices | 2026-01-03 A → 2026-03-03 A (+59d) | 2026-01-04 A → 2026-03-04 A (+59d) |  |  |  |
| DAM3-E-PA-E-0020 | Wires | 2026-01-01 A → 2026-03-14 A (+72d) | 2026-01-03 A → 2026-03-15 A (+71d) |  |  |  |
| DAM3-E-PA-E-0040 | Grounding system | 2026-01-24 A → 2026-03-14 A (+49d) | 2026-01-25 A → 2026-03-15 A (+49d) |  |  |  |
| DAM3-E-PA-E-0070 | Low Voltage cables | 2025-12-24 A → 2026-03-14 A (+80d) | 2025-12-25 A → 2026-03-15 A (+80d) |  |  |  |
| DAM3-E-PA-E-0110 | Disconnect switches | 2026-03-15 A → 2026-03-25 A (+10d) | 2026-03-29 A → 2026-03-26 A (-3d) |  |  |  |
| DAM3-E-PA-E-0080 | Main distribution board (MDB) | 2026-02-14 A → 2026-04-19 A (+64d) | 2026-02-14 A → 2026-04-20 A (+65d) |  |  |  |
| DAM3-E-PA-E-0090 | Lighting panel board | 2026-02-14 A → 2026-04-19 A (+64d) | 2026-02-14 A → 2026-04-20 A (+65d) |  |  | resources Purchaser → Purchaser [32 h] |
| DAM3-E-PA-E-0100 | PP-AC panel | 2026-02-14 A → 2026-04-19 A (+64d) | 2026-02-14 A → 2026-04-20 A (+65d) |  |  | resources Purchaser → Purchaser [32 h] |
| DAM3-E-PA-E-0210 | Distribution board for pump room | 2026-02-14 A → 2026-04-19 A (+64d) | 2026-02-14 A → 2026-04-20 A (+65d) |  |  |  |
| DAM3-E-PA-E-0060 | HDPE ducts | 2026-01-03 A → 2026-04-20 A (+107d) | 2026-01-04 A → 2026-04-21 A (+107d) |  |  |  |
| DAM3-E-PA-E-0260 | Main program system & controller | 2026-02-04 A → 2026-04-20 A (+75d) | 2026-02-05 A → 2026-04-21 A (+75d) |  |  |  |
| DAM3-E-PA-E-0270 | PLC controller | 2026-02-04 A → 2026-04-20 A (+75d) | 2026-02-05 A → 2026-04-21 A (+75d) |  |  |  |
| 4 | **EXTERNAL** | 2026-03-02 → 2026-06-09 (+99d) | 2026-03-29 → 2026-06-10 (+73d) |  |  |  |
| DAM3-E-PA-EX-0010 | Asphalt works | 2026-03-02 A → 2026-06-09 A (+99d) | 2026-03-02 A → 2026-06-10 A (+100d) |  |  |  |
| DAM3-E-PA-EX-0020 | Concrete parking bumper | 2026-03-15 A → 2026-06-09 A (+86d) | 2026-03-29 A → 2026-06-10 A (+73d) |  |  |  |
| DAM3-E-PA-EX-0030 | Road markings | 2026-03-09 A → 2026-06-09 A (+92d) | 2026-03-10 A → 2026-06-10 A (+92d) |  |  |  |
| DAM3-E-PA-EX-0040 | Road signs | 2026-03-09 A → 2026-06-09 A (+92d) | 2026-03-10 A → 2026-06-10 A (+92d) |  |  |  |
| DAM3-E-PA-EX-0060 | Interlock tiles | 2026-03-15 A → 2026-06-09 A (+86d) | 2026-03-29 A → 2026-06-10 A (+73d) |  |  |  |
| DAM3-E-PA-EX-0070 | Curbstones | 2026-03-15 A → 2026-06-09 A (+86d) | 2026-03-29 A → 2026-06-10 A (+73d) |  |  |  |
| DAM3-E-PA-EX-0080 | Gravel bedding | 2026-03-15 A → 2026-06-09 A (+86d) | 2026-03-29 A → 2026-06-10 A (+73d) |  |  |  |
| 5 | **ENVIRONMETAL** | 2025-12-28 → 2026-02-03 (+37d) | 2025-12-29 → 2026-02-17 (+50d) |  |  |  |
| DAM3-E-PA-EN-0080 | UPVC pipes | 2025-12-27 A → 2026-02-03 A (+38d) | 2025-12-31 A → 2026-02-04 A (+35d) | 5d → 2d | DAM3-E-PA-M-0160 → DAM3-E-PS-EN-0080 | resources Construction Cost → none |
| DAM3-E-PA-EN-0010 | HDPE pipes for fire system | 2025-12-28 A → 2026-02-05 A (+39d) | 2025-12-29 A → 2026-02-07 A (+40d) |  |  |  |
| DAM3-E-PA-EN-0030 | HDPE pipes for water supply system | 2025-12-28 A → 2026-02-05 A (+39d) | 2025-12-29 A → 2026-02-07 A (+40d) |  |  |  |
| DAM3-E-PA-EN-0020 | Directly buried gate valve for fire system | 2025-12-28 A → 2026-02-14 A (+48d) | 2025-12-29 A → 2026-02-15 A (+48d) |  |  |  |
| DAM3-E-PA-EN-0040 | Directly buried gate valve for water system | 2025-12-28 A → 2026-02-14 A (+48d) | 2025-12-29 A → 2026-02-15 A (+48d) |  |  |  |
| DAM3-E-PA-EN-0050 | Air valve | 2025-12-28 A → 2026-02-16 A (+50d) | 2025-12-29 A → 2026-02-17 A (+50d) |  |  |  |
| DAM3-E-PA-EN-0060 | Washout valve | 2025-12-28 A → 2026-02-16 A (+50d) | 2025-12-29 A → 2026-02-17 A (+50d) |  |  |  |
| DAM3-E-PA-EN-0070 | Gate valve | 2025-12-28 A → 2026-02-16 A (+50d) | 2025-12-29 A → 2026-02-17 A (+50d) |  |  |  |
| 2 | **MATERIAL SUBMITTAL** | 2025-12-18 → 2026-01-15 (+28d) | 2026-08-16 → 2026-06-14 (-63d) |  |  |  |
| 1 | **PREPARATION AND SUBMITTAL** | 2025-12-18 → 2026-01-15 (+28d) | 2026-08-15 → 2026-06-13 (-63d) |  |  |  |
| 6 | **STRUCTURAL** | 2025-12-18 → 2026-01-15 (+28d) | 2026-01-05 → 2026-03-14 (+68d) |  |  |  |
| DAM3-E-MS-C-0020 | Concrete mix | 2025-12-18 A → 2026-01-15 A (+28d) | 2025-12-18 A → 2026-01-15 A (+28d) |  |  | resources Purchaser [32 h]; Construction Cost [77638.6] → Purchaser [32 h]; Construction Cost |
| DAM3-E-MS-C-0030 | Polyethylene sheet | 2025-12-31 A → 2026-01-22 A (+22d) | 2025-12-31 A → 2026-01-22 A (+22d) |  |  | resources Purchaser [32 h]; Construction Cost [4907.25] → Purchaser [32 h]; Construction Cost |
| DAM3-E-MS-C-0040 | Bitumen paint | 2025-12-31 A → 2026-01-22 A (+22d) | 2025-12-31 A → 2026-01-22 A (+22d) |  |  | resources Purchaser [32 h]; Construction Cost [4506.98] → Purchaser [32 h]; Construction Cost |
| DAM3-E-MS-C-0050 | Rebar | 2025-12-31 A → 2026-01-22 A (+22d) | 2025-12-31 A → 2026-01-22 A (+22d) |  |  | resources Purchaser [32 h]; Construction Cost [116458] → Purchaser [32 h]; Construction Cost |
| DAM3-E-MS-C-0010 | Anti termite | 2026-01-05 A → 2026-03-14 A (+68d) | 2026-01-05 A → 2026-03-14 A (+68d) |  |  | resources Purchaser [32 h]; Construction Cost [6870.15] → Purchaser [32 h]; Construction Cost |
| 1 | **ARCHITECTURAL** | 2025-12-21 → 2026-02-07 (+48d) | 2026-03-24 → 2026-06-13 (+81d) |  |  |  |
| DAM3-E-MS-A-0030 | Steel ladder | 2025-12-21 A → 2026-02-07 A (+48d) | 2026-01-01 A → 2026-02-07 A (+37d) |  |  | resources Purchaser [32 h]; Construction Cost [2322] → Purchaser [32 h]; Construction Cost |
| DAM3-E-MS-A-1700 | PES -Steel Structure | 2025-12-21 A → 2026-02-07 A (+48d) | 2026-01-01 A → 2026-02-07 A (+37d) |  |  | resources Purchaser [32 h]; Construction Cost [380511] → Purchaser [32 h]; Construction Cost |
| DAM3-E-MS-A-0100 | Doors | 2026-01-05 A → 2026-02-19 A (+45d) | 2026-01-05 A → 2026-02-19 A (+45d) |  |  | resources Purchaser [32 h]; Construction Cost [34884] → Purchaser [32 h]; Construction Cost |
| DAM3-E-MS-A-0110 | Windows | 2026-03-11 A → 2026-02-19 A (-20d) | 2026-03-11 A → 2026-02-19 A (-20d) |  |  | resources Purchaser [32 h]; Construction Cost [22140] → Purchaser [32 h]; Construction Cost |
| DAM3-E-MS-A-1720 | Aluminum Composite Panel | 2026-03-11 A → 2026-02-19 A (-20d) | 2026-03-11 A → 2026-02-19 A (-20d) |  |  | resources Purchaser [32 h]; Construction Cost [42889.5] → Purchaser [16 h]; Construction Cost |
| DAM3-E-MS-A-0160 | Internl paint | 2026-01-11 A → 2026-03-29 A (+77d) | 2026-01-11 A → 2026-03-29 A (+77d) |  |  | resources Purchaser [32 h]; Construction Cost [6506.32] → Purchaser [32 h]; Construction Cost |
| DAM3-E-MS-A-0120 | Ceramic tiles | 2026-03-05 A → 2026-03-30 A (+25d) | 2026-03-05 A → 2026-03-30 A (+25d) |  |  | resources Purchaser [32 h]; Construction Cost [17997.5] → Purchaser [32 h]; Construction Cost |
| DAM3-E-MS-A-0170 | Gypsum board | 2026-02-08 A → 2026-04-19 A (+70d) | 2026-02-08 A → 2026-04-19 A (+70d) |  |  | resources Purchaser [32 h]; Construction Cost [10901.2] → Purchaser [32 h]; Construction Cost |
| DAM3-E-MS-A-0020 | Concrete masonry unit (CMU) | 2026-03-10 A → 2026-04-26 A (+47d) | 2026-03-10 A → 2026-04-26 A (+47d) |  |  | resources Purchaser [32 h]; Construction Cost [15724.8] → Purchaser [32 h]; Construction Cost |
| DAM3-E-MS-A-0150 | Epoxy paint | 2026-03-24 A → 2026-04-29 A (+36d) | 2026-03-24 A → 2026-04-29 A (+36d) | 1.12d → 2d |  | resources Purchaser [32 h]; Construction Cost [25029] → Purchaser [32 h]; Construction Cost |
| DAM3-E-MS-A-0130 | Granite strip | 2026-03-05 A → 2026-05-09 A (+65d) | 2026-03-05 A → 2026-05-09 A (+65d) |  |  | resources Purchaser [32 h]; Construction Cost [355.05] → Purchaser [32 h]; Construction Cost |
| DAM3-E-MS-A-0040 | Steel gratings | 2026-02-05 A → 2026-05-21 A (+105d) | 2026-02-05 A → 2026-05-21 A (+105d) |  |  | resources Purchaser [32 h]; Construction Cost [1522.8] → Purchaser [32 h]; Construction Cost |

| ID | Task | Start | Finish | Duration | Predecessors | Other |
| --- | --- | --- | --- | --- | --- | --- |
| DAM3-E-MS-A-1750 | Steel fence and gates | 2026-03-24 A → 2026-05-23 A (+60d) | 2026-03-24 A → 2026-05-23 A (+60d) |  |  | resources Purchaser [32 h]; Construction Cost [549.45] → Purchaser [16 h]; Construction Cost |
| DAM3-E-MS-A-0050 | Steel rails | 2026-02-05 A → 2026-06-13 A (+128d) | 2026-02-05 A → 2026-06-13 A (+128d) |  |  | resources Purchaser [32 h]; Construction Cost [1830.6] → Purchaser [32 h]; Construction Cost |
| DAM3-E-MS-A-1760 | Identification sign; ID01 & ID02 | 2026-03-24 A → 2026-06-13 A (+81d) | 2026-03-24 A → 2026-06-13 A (+81d) |  |  | resources Purchaser [32 h]; Construction Cost [2268] → Purchaser [16 h]; Construction Cost |
| 2 | **MECHANICAL** | 2025-12-27 → 2026-02-05 (+40d) | 2026-02-01 → 2026-06-13 (+132d) |  |  |  |
| DAM3-E-MS-M-0080 | PPR pipes | 2025-12-27 A → 2026-02-05 A (+40d) | 2025-12-27 A → 2026-02-05 A (+40d) |  |  | resources Purchaser [32 h]; Construction Cost [5295.38] → Purchaser [32 h]; Construction Cost |
| DAM3-E-MS-M-0250 | Fire pumps | 2025-12-29 A → 2026-02-05 A (+38d) | 2025-12-29 A → 2026-02-05 A (+38d) |  |  | resources Purchaser [32 h]; Construction Cost [16200] → Purchaser [16 h]; Construction Cost |
| DAM3-E-MS-M-0310 | Booster pump | 2025-12-29 A → 2026-02-05 A (+38d) | 2025-12-29 A → 2026-02-05 A (+38d) | 4d → 2d |  | resources Purchaser [32 h]; Construction Cost [1890] → Purchaser [16 h]; Construction Cost |
| DAM3-E-MS-M-0010 | U/G HDPE pipes | 2025-12-30 A → 2026-02-07 A (+39d) | 2025-12-30 A → 2026-02-07 A (+39d) |  |  | resources Purchaser [32 h]; Construction Cost [7547.64] → Purchaser [32 h]; Construction Cost |
| DAM3-E-MS-M-0030 | Fire hose cabinet | 2026-01-17 A → 2026-02-07 A (+21d) | 2026-01-17 A → 2026-02-07 A (+21d) |  |  | resources Purchaser [32 h]; Construction Cost [3024] → Purchaser [32 h]; Construction Cost |
| DAM3-E-MS-M-0110 | UPVC pipes | 2026-02-24 A → 2026-02-07 A (-17d) | 2026-02-24 A → 2026-02-07 A (-17d) | 4.12d → 2d | DAM3-E-PA-EN-0080, DAM3-P-PO-M-500 → DAM3-E-PA-M-0160 | resources Purchaser [40 h] → Purchaser [16 h]; Construction Cost |
| DAM3-E-MS-M-0150 | Electric water heater | 2026-01-11 A → 2026-02-08 A (+28d) | 2026-01-11 A → 2026-02-08 A (+28d) |  |  | resources Purchaser [32 h]; Construction Cost [432] → Purchaser [16 h]; Construction Cost |
| DAM3-E-MS-M-0160 | Western water closet | 2025-12-27 A → 2026-02-08 A (+43d) | 2025-12-27 A → 2026-02-08 A (+43d) |  |  | resources Purchaser [32 h]; Construction Cost [4406.4] → Purchaser [16 h]; Construction Cost |
| DAM3-E-MS-M-0190 | Lavatory / wash basin | 2025-12-27 A → 2026-02-08 A (+43d) | 2025-12-27 A → 2026-02-08 A (+43d) |  |  | resources Purchaser [32 h]; Construction Cost [4968] → Purchaser [16 h]; Construction Cost |
| DAM3-E-MS-M-0140 | Gully trap | 2026-01-01 A → 2026-02-09 A (+39d) | 2026-01-01 A → 2026-02-09 A (+39d) |  |  | resources Purchaser [32 h]; Construction Cost [1134] → Purchaser [16 h]; Construction Cost |
| DAM3-E-MS-M-0180 | Toilet Fittings | 2026-01-11 A → 2026-02-09 A (+29d) | 2026-01-11 A → 2026-02-09 A (+29d) | 1.62d → 2d |  | resources Purchaser [32 h]; Construction Cost [5294.7] → Purchaser [16 h]; Construction Cost |
| DAM3-E-MS-M-0020 | Seamless black steel or ERW pipes | 2026-01-11 A → 2026-02-10 A (+30d) | 2026-01-11 A → 2026-02-10 A (+30d) |  |  | resources Purchaser [32 h]; Construction Cost [16392] → Purchaser [32 h]; Construction Cost |
| DAM3-E-MS-M-0040 | Automatic air release valve | 2026-01-21 A → 2026-02-10 A (+20d) | 2026-01-21 A → 2026-02-10 A (+20d) |  |  | resources Purchaser [32 h]; Construction Cost [114.75] → Purchaser [32 h]; Construction Cost |
| DAM3-E-MS-M-0050 | OS & Y gate valve | 2026-01-21 A → 2026-02-10 A (+20d) | 2026-01-21 A → 2026-02-10 A (+20d) |  |  | resources Purchaser [32 h]; Construction Cost [1233.9] → Purchaser [32 h]; Construction Cost |
| DAM3-E-MS-M-0060 | Fire alarm check valve | 2026-01-21 A → 2026-02-10 A (+20d) | 2026-01-21 A → 2026-02-10 A (+20d) |  |  | resources Purchaser [32 h]; Construction Cost [1755] → Purchaser [32 h]; Construction Cost |
| DAM3-E-MS-M-0270 | Fire fighting valves | 2026-01-21 A → 2026-02-10 A (+20d) | 2026-01-21 A → 2026-02-10 A (+20d) |  |  | resources Purchaser [32 h]; Construction Cost [3103.65] → Purchaser [16 h]; Construction Cost |
| DAM3-E-MS-M-0330 | Water supply valves | 2026-01-10 A → 2026-02-10 A (+31d) | 2026-01-10 A → 2026-02-10 A (+31d) |  |  | resources Purchaser [32 h]; Construction Cost [2970] → Purchaser [16 h]; Construction Cost |
| DAM3-E-MS-M-0090 | Ball valve | 2026-01-07 A → 2026-02-14 A (+38d) | 2026-01-07 A → 2026-02-14 A (+38d) |  |  | resources Purchaser [32 h]; Construction Cost [872.1] → Purchaser [32 h]; Construction Cost |
| DAM3-E-MS-M-0170 | Bib tap | 2026-01-13 A → 2026-02-14 A (+32d) | 2026-01-13 A → 2026-03-14 A (+60d) |  |  | resources Purchaser [32 h]; Construction Cost [540] → Purchaser [16 h]; Construction Cost |
| DAM3-E-MS-M-3410 | Water tap | 2026-01-13 A → 2026-02-14 A (+32d) | 2026-01-13 A → 2026-02-14 A (+32d) |  |  | resources Purchaser [32 h]; Construction Cost [648] → Purchaser [16 h]; Construction Cost |
| DAM3-E-MS-M-0120 | Roof vent caps | 2026-01-14 A → 2026-02-16 A (+33d) | 2026-01-14 A → 2026-02-16 A (+33d) |  |  | resources Purchaser [32 h]; Construction Cost [202.5] → Purchaser [16 h]; Construction Cost |
| DAM3-E-MS-M-0130 | Floor drain | 2026-01-14 A → 2026-02-16 A (+33d) | 2026-01-14 A → 2026-02-16 A (+33d) |  |  | resources Purchaser [32 h]; Construction Cost [2592] → Purchaser [16 h]; Construction Cost |
| DAM3-E-MS-M-0340 | Warning tapes | 2026-01-06 A → 2026-02-16 A (+41d) | 2026-01-06 A → 2026-02-16 A (+41d) |  |  | resources Purchaser [32 h]; Construction Cost [1667.4] → Purchaser [32 h]; Construction Cost |
| DAM3-E-MS-M-0320 | GRP tank | 2026-01-05 A → 2026-03-02 A (+56d) | 2026-01-05 A → 2026-03-02 A (+56d) | 1.12d → 2d |  | resources Purchaser [32 h]; Construction Cost [18360] → Purchaser [16 h]; Construction Cost |
| DAM3-E-MS-M-0220 | HVAC duct | 2026-01-31 A → 2026-03-04 A (+32d) | 2026-01-31 A → 2026-03-04 A (+32d) |  |  | resources Purchaser [32 h]; Construction Cost [38380.5] → Purchaser [32 h]; Construction Cost |
| DAM3-E-MS-M-0230 | Flexible duct | 2026-01-31 A → 2026-03-04 A (+32d) | 2026-01-31 A → 2026-03-04 A (+32d) |  |  | resources Purchaser [32 h]; Construction Cost [4577.04] → Purchaser [32 h]; Construction Cost |
| DAM3-E-MS-M-0200 | Inline exhaust fans | 2026-02-01 A → 2026-03-18 A (+45d) | 2026-02-01 A → 2026-03-18 A (+45d) |  |  | resources Purchaser [32 h]; Construction Cost [2531.25] → Purchaser [16 h]; Construction Cost |
| DAM3-E-MS-M-0210 | Wall propeller type exhaust fans | 2026-02-01 A → 2026-03-18 A (+45d) | 2026-02-01 A → 2026-03-18 A (+45d) |  |  | resources Purchaser [32 h]; Construction Cost [4725] → Purchaser [16 h]; Construction Cost |
| DAM3-E-MS-M-0240 | Exhaust diffuser | 2026-01-29 A → 2026-06-01 A (+123d) | 2026-01-29 A → 2026-06-01 A (+123d) |  |  | resources Purchaser [32 h]; Construction Cost [2430] → Purchaser [32 h]; Construction Cost |
| DAM3-E-MS-M-0100 | Capped connection | 2025-12-27 A → 2026-06-13 A (+168d) | 2025-12-27 A → 2026-06-13 A (+168d) |  |  | resources Purchaser [32 h]; Construction Cost [70.2] → Purchaser [16 h]; Construction Cost |
| 3 | **ELECTRICAL** | 2025-12-23 → 2026-02-09 (+48d) | 2026-03-24 → 2026-04-30 (+37d) |  |  |  |
| DAM3-E-MS-E-0040 | PVC conduits | 2025-12-23 A → 2026-02-09 A (+48d) | 2025-12-23 A → 2026-02-09 A (+48d) |  |  | resources Purchaser [32 h]; Construction Cost [429.3] → Purchaser [32 h]; Construction Cost |
| DAM3-E-MS-E-0130 | Fire alarm system | 2026-01-21 A → 2026-02-11 A (+21d) | 2026-01-21 A → 2026-02-11 A (+21d) |  |  | resources Purchaser [32 h]; Construction Cost [7622.1] → Purchaser [16 h]; Construction Cost |
| DAM3-E-MS-E-0240 | Access control system | 2026-02-04 A → 2026-02-11 A (+7d) | 2026-02-04 A → 2026-02-11 A (+7d) |  |  | resources Construction Cost [6596.1]; Purchaser [32 h] → Purchaser [16 h]; Construction Cost |
| DAM3-E-MS-E-0060 | Suspended High Bay LED lights | 2026-01-13 A → 2026-03-03 A (+49d) | 2026-01-13 A → 2026-03-03 A (+49d) |  |  | resources Purchaser [32 h]; Construction Cost [5599.8] → Purchaser [16 h]; Construction Cost |
| DAM3-E-MS-E-0070 | Flood lights | 2026-01-13 A → 2026-03-03 A (+49d) | 2026-01-13 A → 2026-03-03 A (+49d) |  |  | resources Purchaser [32 h]; Construction Cost [1026] → Purchaser [16 h]; Construction Cost |
| DAM3-E-MS-E-0080 | Recessed mounted LED downlight | 2026-01-13 A → 2026-03-03 A (+49d) | 2026-01-13 A → 2026-03-03 A (+49d) |  |  | resources Purchaser [32 h]; Construction Cost [3672] → Purchaser [16 h]; Construction Cost |
| DAM3-E-MS-E-0090 | LED Emergency Lights wall mounted | 2026-01-13 A → 2026-03-03 A (+49d) | 2026-01-13 A → 2026-03-03 A (+49d) |  |  | resources Purchaser [32 h]; Construction Cost [1555.2] → Purchaser [16 h]; Construction Cost |
| DAM3-E-MS-E-0100 | LED Emergency Exit Light | 2026-01-13 A → 2026-03-03 A (+49d) | 2026-01-13 A → 2026-03-03 A (+49d) |  |  | resources Purchaser [32 h]; Construction Cost [529.2] → Purchaser [16 h]; Construction Cost |
| DAM3-E-MS-E-0190 | Surface mounted lights | 2026-01-13 A → 2026-03-03 A (+49d) | 2026-01-13 A → 2026-03-03 A (+49d) |  |  | resources Purchaser [32 h]; Construction Cost [7068.6] → Purchaser [16 h]; Construction Cost |
| DAM3-E-MS-E-0250 | Solar system | 2026-01-05 A → 2026-03-03 A (+57d) | 2026-01-05 A → 2026-03-03 A (+57d) | 4d → 2d |  | resources Construction Cost [59400]; Purchaser [32 h] → Purchaser [16 h]; Construction Cost |
| DAM3-E-MS-E-0170 | Street Lighting poles | 2026-01-13 A → 2026-03-04 A (+50d) | 2026-01-13 A → 2026-03-04 A (+50d) |  |  | resources Purchaser [32 h]; Construction Cost [6433.83] → Purchaser [16 h]; Construction Cost |
| DAM3-E-MS-E-0140 | Wiring devices | 2026-01-06 A → 2026-03-07 A (+60d) | 2026-01-06 A → 2026-03-07 A (+60d) |  |  | resources Purchaser [32 h]; Construction Cost [5626.8] → Purchaser [32 h]; Construction Cost |
| DAM3-E-MS-E-210 | Cable Tray | 2026-01-06 A → 2026-03-07 A (+60d) | 2026-01-06 A → 2026-03-07 A (+60d) |  |  | resources Purchaser [32 h]; Construction Cost [78.3] → Purchaser [32 h]; Construction Cost |
| DAM3-E-MS-E-0010 | Low Voltage cables | 2025-12-27 A → 2026-03-16 A (+79d) | 2025-12-27 A → 2026-03-16 A (+79d) |  |  | resources Purchaser [32 h]; Construction Cost [11559] → Purchaser [32 h]; Construction Cost |
| DAM3-E-MS-E-0050 | Wires | 2025-12-27 A → 2026-03-16 A (+79d) | 2025-12-27 A → 2026-03-16 A (+79d) |  |  | resources Purchaser [32 h]; Construction Cost [1215] → Purchaser [32 h]; Construction Cost |
| DAM3-E-MS-E-0120 | Grounding system | 2026-01-29 A → 2026-03-16 A (+46d) | 2026-01-29 A → 2026-03-16 A (+46d) |  |  | resources Purchaser [32 h]; Construction Cost [10612.3] → Purchaser [32 h]; Construction Cost |
| DAM3-E-MS-E-0230 | CCTV System | 2026-02-16 A → 2026-03-28 A (+40d) | 2026-02-16 A → 2026-03-28 A (+40d) |  |  | resources Construction Cost [17952.3]; Purchaser [32 h] → Purchaser [16 h]; Construction Cost |
| DAM3-E-MS-E-0030 | Disconnect switches | 2026-03-24 A → 2026-03-29 A (+5d) | 2026-03-24 A → 2026-03-29 A (+5d) | 1.62d → 2d |  | resources Purchaser [32 h]; Construction Cost [7001.1] → Purchaser [16 h]; Construction Cost |
| DAM3-E-MS-E-0110 | Wall mounted, duplex, telephone and data outlet | 2026-03-12 A → 2026-03-29 A (+17d) | 2026-03-12 A → 2026-03-29 A (+17d) | 2d → 1d |  | resources Purchaser [32 h]; Construction Cost [6320.7] → Purchaser [16 h]; Construction Cost |
| DAM3-E-MS-E-0020 | Main distribution board (MDB) | 2026-02-15 A → 2026-04-26 A (+70d) | 2026-02-15 A → 2026-04-26 A (+70d) |  |  | resources Purchaser [32 h]; Construction Cost [6912] → Purchaser [32 h]; Construction Cost |
| DAM3-E-MS-E-0180 | Distribution board for pump room | 2026-02-15 A → 2026-04-26 A (+70d) | 2026-02-15 A → 2026-04-26 A (+70d) |  |  | resources Purchaser [32 h]; Construction Cost [280.8] → Purchaser [16 h]; Construction Cost |
| DAM3-E-MS-E-190 | Lighting panel board | 2026-02-15 A → 2026-04-26 A (+70d) | 2026-02-15 A → 2026-04-26 A (+70d) |  |  | resources Purchaser [32 h]; Construction Cost [4104] → Purchaser [32 h]; Construction Cost |
| DAM3-E-MS-E-200 | PP-AC panel | 2026-02-15 A → 2026-04-26 A (+70d) | 2026-02-15 A → 2026-04-26 A (+70d) |  |  | resources Purchaser [32 h]; Construction Cost [4941] → Purchaser [32 h]; Construction Cost |
| DAM3-E-MS-E-0160 | HDPE ducts | 2026-01-06 A → 2026-04-30 A (+114d) | 2026-01-06 A → 2026-04-30 A (+114d) |  |  | resources Purchaser [32 h]; Construction Cost [30499.5] → Purchaser [32 h]; Construction Cost |
| DAM3-E-MS-E-0260 | Main program system & controller | 2026-02-10 A → 2026-04-30 A (+79d) | 2026-02-10 A → 2026-04-30 A (+79d) |  |  | resources Construction Cost [4320]; Purchaser [32 h] → Purchaser [16 h]; Construction Cost |
| DAM3-E-MS-E-0270 | PLC controller | 2026-02-10 A → 2026-04-30 A (+79d) | 2026-02-10 A → 2026-04-30 A (+79d) | 1d → 2d |  | resources Construction Cost [8640]; Purchaser [32 h] → Purchaser [16 h]; Construction Cost |
| 4 | **EXTERNAL** | 2026-03-02 → 2026-06-11 (+101d) | 2026-08-15 → 2026-06-11 (-65d) |  |  |  |
| DAM3-E-MS-EX-0010 | Asphalt works | 2026-03-02 A → 2026-06-11 A (+101d) | 2026-03-02 A → 2026-06-11 A (+101d) |  |  | resources Purchaser [32 h]; Construction Cost [127890] → Purchaser [16 h]; Construction Cost |
| DAM3-E-MS-EX-0020 | Concrete parking bumper | 2026-05-20 A → 2026-06-11 A (+22d) | 2026-05-20 A → 2026-06-11 A (+22d) |  |  | resources Purchaser [32 h]; Construction Cost [709.56] → Purchaser [16 h]; Construction Cost |
| DAM3-E-MS-EX-0030 | Road markings | 2026-08-15 A → 2026-06-11 A (-65d) | 2026-08-15 A → 2026-06-11 A (-65d) |  |  | resources Purchaser [32 h]; Construction Cost [1767.15] → Purchaser [16 h]; Construction Cost |
| DAM3-E-MS-EX-0040 | Road signs | 2026-04-16 A → 2026-06-11 A (+56d) | 2026-04-16 A → 2026-06-11 A (+56d) |  |  | resources Purchaser [32 h]; Construction Cost [2443.77] → Purchaser [16 h]; Construction Cost |
| DAM3-E-MS-EX-0060 | Interlock tiles | 2026-05-20 A → 2026-06-11 A (+22d) | 2026-05-20 A → 2026-06-11 A (+22d) |  |  | resources Purchaser [32 h]; Construction Cost [9528.98] → Purchaser [16 h]; Construction Cost |
| DAM3-E-MS-EX-0070 | Curbstones | 2026-05-20 A → 2026-06-11 A (+22d) | 2026-05-20 A → 2026-06-11 A (+22d) |  |  | resources Purchaser [32 h]; Construction Cost [6419.25] → Purchaser [16 h]; Construction Cost |
| DAM3-E-MS-EX-0080 | Gravel bedding | 2026-08-15 A → 2026-06-11 A (-65d) | 2026-08-15 A → 2026-06-11 A (-65d) |  |  | resources Purchaser [32 h]; Construction Cost [3862.65] → Purchaser [16 h]; Construction Cost |
| 5 | **ENVIRONMETAL** | 2025-12-27 → 2026-02-08 (+43d) | 2026-01-24 → 2026-02-18 (+25d) |  |  |  |

| ID | Task | Start | Finish | Duration | Predecessors | Other |
| --- | --- | --- | --- | --- | --- | --- |
| DAM3-E-MS-EN-0010 | HDPE pipes for fire system | 2025-12-30 A → 2026-02-08 A (+40d) | 2025-12-30 A → 2026-02-08 A (+40d) |  |  | resources Purchaser [32 h]; Construction Cost [7290.27] → Purchaser [32 h]; Construction Cost |
| DAM3-E-MS-EN-0030 | HDPE pipes for water supply system | 2025-12-30 A → 2026-02-08 A (+40d) | 2025-12-30 A → 2026-02-08 A (+40d) |  |  | resources Purchaser [32 h]; Construction Cost [7093.2] → Purchaser [32 h]; Construction Cost |
| DAM3-E-MS-EN-0080 | UPVC pipes | 2026-02-24 A → 2026-02-08 A (-16d) | 2026-02-28 A → 2026-02-08 A (-20d) | 81.12d → 2d | DAM3-E-MS-M-0110 → DAM3-E-PA-EN-0080 | resources Loading workers → Purchaser [32 h]; Construction Cost |
| DAM3-E-MS-EN-0020 | Directly buried gate valve for fire system | 2026-01-24 A → 2026-02-16 A (+23d) | 2026-01-24 A → 2026-02-16 A (+23d) |  |  | resources Purchaser [32 h]; Construction Cost [1317.6] → Purchaser [32 h]; Construction Cost |
| DAM3-E-MS-EN-0040 | Directly buried gate valve for water system | 2026-01-24 A → 2026-02-16 A (+23d) | 2026-01-24 A → 2026-02-16 A (+23d) |  |  | resources Purchaser [32 h]; Construction Cost [1328.4] → Purchaser [32 h]; Construction Cost |
| DAM3-E-MS-EN-0050 | Air valve | 2026-01-24 A → 2026-02-18 A (+25d) | 2026-01-24 A → 2026-02-18 A (+25d) |  |  | resources Purchaser [32 h]; Construction Cost [648] → Purchaser [32 h]; Construction Cost |
| DAM3-E-MS-EN-0060 | Washout valve | 2026-01-24 A → 2026-02-18 A (+25d) | 2026-01-24 A → 2026-02-18 A (+25d) |  |  | resources Purchaser [32 h]; Construction Cost [756] → Purchaser [32 h]; Construction Cost |
| DAM3-E-MS-EN-0070 | Gate valve | 2026-01-24 A → 2026-02-18 A (+25d) | 2026-01-24 A → 2026-02-18 A (+25d) |  |  | resources Purchaser [32 h]; Construction Cost [270] → Purchaser [32 h]; Construction Cost |
| 2 | **REVIEW AND APPROVAL** | 2025-12-18 → 2026-01-20 (+33d) | 2026-08-16 → 2026-06-14 (-63d) |  |  |  |
| 6 | **STRUCTURAL** | 2025-12-18 → 2026-01-20 (+33d) | 2026-01-05 → 2026-04-07 (+92d) |  |  |  |
| DAM3-E-MA-C-0020 | Concrete mix | 2025-12-18 A → 2026-01-20 A (+33d) | 2025-12-21 A → 2026-01-20 A (+30d) |  |  | resources Construction Cost → Construction Cost [251752] |
| DAM3-E-MA-C-0030 | Polyethylene sheet | 2025-12-31 A → 2026-01-22 A (+22d) | 2025-12-31 A → 2026-01-29 A (+29d) |  |  | resources Construction Cost → Construction Cost [13036] |
| DAM3-E-MA-C-0040 | Bitumen paint | 2025-12-31 A → 2026-01-22 A (+22d) | 2025-12-31 A → 2026-01-29 A (+29d) |  |  | resources Construction Cost → Construction Cost [28944.1] |
| DAM3-E-MA-C-0050 | Rebar | 2025-12-31 A → 2026-01-22 A (+22d) | 2025-12-31 A → 2026-01-29 A (+29d) |  |  | resources Construction Cost → Construction Cost [167834] |
| DAM3-E-MA-C-0010 | Anti termite | 2026-01-05 A → 2026-03-14 A (+68d) | 2026-01-05 A → 2026-04-07 A (+92d) |  |  | resources Construction Cost → Construction Cost [19546.4] |
| 1 | **ARCHITECTURAL** | 2025-12-21 → 2026-02-07 (+48d) | 2026-03-29 → 2026-06-14 (+77d) |  |  |  |
| DAM3-E-MA-A-0030 | Steel ladder | 2025-12-21 A → 2026-02-07 A (+48d) | 2025-12-22 A → 2026-02-10 A (+50d) |  |  | resources Construction Cost → Construction Cost [4846.16] |
| DAM3-E-MA-A-1700 | PES -Steel Structure | 2025-12-21 A → 2026-02-07 A (+48d) | 2025-12-22 A → 2026-03-17 A (+85d) |  | DAM3-E-MS-A-1700 → DAM3-E-MS-A-1700, DAM3-E-MS-A-0100 | resources Purchaser; Construction Cost → Purchaser [80 h]; Construction Cost [799835] |
| DAM3-E-MA-A-0100 | Doors | 2026-01-05 A → 2026-02-19 A (+45d) | 2026-01-05 A → 2026-02-25 A (+51d) |  |  | resources Construction Cost → Construction Cost [75386.6] |
| DAM3-E-MA-A-0110 | Windows | 2026-03-11 A → 2026-02-19 A (-20d) | 2026-03-25 A → 2026-02-25 A (-28d) | 4.62d → 5d |  | resources Construction Cost → Construction Cost [52525.2] |
| DAM3-E-MA-A-0160 | Internl paint | 2026-01-11 A → 2026-03-29 A (+77d) | 2026-01-15 A → 2026-05-03 A (+108d) |  |  | resources Construction Cost → Construction Cost [21754] |
| DAM3-E-MA-A-0120 | Ceramic tiles | 2026-03-05 A → 2026-03-30 A (+25d) | 2026-03-07 A → 2026-05-04 A (+58d) | 4.12d → 5d |  | resources Construction Cost → Construction Cost [36151.3] |
| DAM3-E-MA-A-0170 | Gypsum board | 2026-02-08 A → 2026-04-19 A (+70d) | 2026-02-11 A → 2026-06-14 A (+123d) | 7d → 5d |  | resources Construction Cost → Construction Cost [23047] |
| DAM3-E-MA-A-0150 | Epoxy paint | 2026-03-24 A → 2026-04-21 A (+28d) | 2026-03-29 A → 2026-04-26 A (+28d) | 4.62d → 4.5d |  | resources Construction Cost → Construction Cost [56848.5] |
| DAM3-E-MA-A-1720 | Aluminum Composite Panel | 2026-03-11 A → 2026-04-21 A (+41d) | 2026-03-25 A → 2026-04-26 A (+32d) | 7d → 5d |  | resources Purchaser; Construction Cost → Purchaser [16 h]; Construction Cost [86631.8] |
| DAM3-E-MA-A-0020 | Concrete masonry unit (CMU) | 2026-03-10 A → 2026-04-26 A (+47d) | 2026-03-10 A → 2026-04-29 A (+50d) |  |  | resources Construction Cost → Construction Cost [62820.4] |
| DAM3-E-MA-A-0130 | Granite strip | 2026-03-05 A → 2026-05-09 A (+65d) | 2026-03-07 A → 2026-05-17 A (+71d) | 4.12d → 5d |  | resources Construction Cost → Construction Cost [330.55] |
| DAM3-E-MA-A-0040 | Steel gratings | 2026-03-24 A → 2026-05-21 A (+58d) | 2026-03-29 A → 2026-05-24 A (+56d) |  |  | resources Construction Cost → Construction Cost [3179.4] |
| DAM3-E-MA-A-1750 | Steel fence and gates | 2026-03-24 A → 2026-05-23 A (+60d) | 2026-03-29 A → 2026-05-25 A (+57d) | 7d → 5d |  | resources Purchaser; Construction Cost → Purchaser [16 h]; Construction Cost [3548.6] |
| DAM3-E-MA-A-1760 | Identification sign; ID01 & ID02 | 2026-03-24 A → 2026-06-08 A (+76d) | 2026-03-29 A → 2026-06-13 A (+76d) | 7d → 5d |  | resources Purchaser; Construction Cost → Purchaser [16 h]; Construction Cost [4743.41] |
| DAM3-E-MA-A-0050 | Steel rails | 2026-03-24 A → 2026-06-13 A (+81d) | 2026-03-29 A → 2026-06-14 A (+77d) |  |  | resources Construction Cost → Construction Cost [755.54] |
| 2 | **MECHANICAL** | 2025-12-27 → 2026-02-05 (+40d) | 2026-02-16 → 2026-06-14 (+118d) |  |  |  |
| DAM3-E-MA-M-0080 | PPR pipes | 2025-12-27 A → 2026-02-05 A (+40d) | 2025-12-29 A → 2026-05-11 A (+133d) |  |  | resources Construction Cost → Construction Cost [11485.2] |
| DAM3-E-MA-M-0250 | Fire pumps | 2025-12-29 A → 2026-02-05 A (+38d) | 2026-01-04 A → 2026-02-24 A (+51d) | 6.62d → 4.62d |  | resources Construction Cost → Construction Cost [15505.3] |
| DAM3-E-MA-M-0310 | Booster pump | 2025-12-29 A → 2026-02-05 A (+38d) | 2026-01-04 A → 2026-02-11 A (+38d) |  |  | resources Construction Cost → Construction Cost [1938.67] |
| DAM3-E-MA-M-0010 | U/G HDPE pipes | 2025-12-30 A → 2026-02-07 A (+39d) | 2026-01-04 A → 2026-03-08 A (+63d) |  |  | resources Construction Cost → Construction Cost [7495.73] |
| DAM3-E-MA-M-0030 | Fire hose cabinet | 2026-01-17 A → 2026-02-07 A (+21d) | 2026-01-19 A → 2026-03-01 A (+41d) |  |  | resources Construction Cost → Construction Cost [7466.16] |
| DAM3-E-MA-M-0110 | UPVC pipes | 2026-03-01 A → 2026-02-07 A (-22d) | 2026-03-01 A → 2026-04-12 A (+42d) | 7d → 5d | DAM3-E-MS-EN-0080 → DAM3-E-MS-M-0110 | resources Unloading workers [224 h]; Construction Cost [62064.9] → Construction Cost [19004] |
| DAM3-E-MA-M-0150 | Electric water heater | 2026-01-05 A → 2026-02-08 A (+34d) | 2026-01-05 A → 2026-03-01 A (+55d) | 4.12d → 5d |  | resources Construction Cost → Construction Cost [896.17] |
| DAM3-E-MA-M-0160 | Western water closet | 2025-12-27 A → 2026-02-08 A (+43d) | 2025-12-31 A → 2026-05-17 A (+137d) | 3.88d → 4.75d | DAM3-E-MS-M-0160, DAM3-E-MA-M-0050, DAM3-E-MA-M-0060 → DAM3-E-MS-M-0160 | resources Construction Cost → Construction Cost [9812.19] |
| DAM3-E-MA-M-0190 | Lavatory / wash basin | 2025-12-27 A → 2026-02-08 A (+43d) | 2025-12-31 A → 2026-05-17 A (+137d) |  |  | resources Construction Cost → Construction Cost [10548.5] |
| DAM3-E-MA-M-0140 | Gully trap | 2026-01-01 A → 2026-02-09 A (+39d) | 2026-01-04 A → 2026-02-26 A (+53d) | 4.12d → 5d |  | resources Construction Cost → Construction Cost [2397.38] |
| DAM3-E-MA-M-0180 | Toilet Fittings | 2026-01-11 A → 2026-02-09 A (+29d) | 2026-01-17 A → 2026-06-01 A (+135d) | 4.25d → 4.75d |  | resources Construction Cost → Construction Cost [11319.1] |
| DAM3-E-MA-M-0020 | Seamless black steel or ERW pipes | 2026-01-11 A → 2026-02-10 A (+30d) | 2026-01-18 A → 2026-02-26 A (+39d) |  |  | resources Construction Cost → Construction Cost [35657.1] |
| DAM3-E-MA-M-0040 | Automatic air release valve | 2026-01-21 A → 2026-02-10 A (+20d) | 2026-01-29 A → 2026-02-26 A (+28d) |  |  | resources Construction Cost → Construction Cost [265.43] |
| DAM3-E-MA-M-0050 | OS & Y gate valve | 2026-01-21 A → 2026-02-10 A (+20d) | 2026-01-29 A → 2026-02-26 A (+28d) | 5d → 4.5d |  | resources Construction Cost → Construction Cost [1744.73] |
| DAM3-E-MA-M-0060 | Fire alarm check valve | 2026-01-21 A → 2026-02-10 A (+20d) | 2026-01-29 A → 2026-02-26 A (+28d) |  |  | resources Construction Cost → Construction Cost [3998.51] |
| DAM3-E-MA-M-0270 | Fire fighting valves | 2026-01-21 A → 2026-02-10 A (+20d) | 2026-01-29 A → 2026-03-26 A (+56d) | 3.75d → 4.62d |  | resources Construction Cost → Construction Cost [1332.84] |
| DAM3-E-MA-M-0330 | Water supply valves | 2026-01-10 A → 2026-02-10 A (+31d) | 2026-01-17 A → 2026-03-26 A (+68d) | 6.62d → 4.62d | DAM3-E-MS-M-0330, DAM3-E-MA-M-0200, DAM3-E-MA-M-0270 → DAM3-E-MS-M-0330 | resources Construction Cost → Construction Cost [467.18] |
| DAM3-E-MA-M-0090 | Ball valve | 2026-01-07 A → 2026-02-14 A (+38d) | 2026-01-08 A → 2026-04-16 A (+98d) |  |  | resources Construction Cost → Construction Cost [2134.82] |
| DAM3-E-MA-M-0170 | Bib tap | 2026-01-13 A → 2026-02-14 A (+32d) | 2026-01-18 A → 2026-04-16 A (+88d) |  |  | resources Construction Cost → Construction Cost [936.14] |
| DAM3-E-MA-M-3410 | Water tap | 2026-01-13 A → 2026-02-14 A (+32d) | 2026-01-18 A → 2026-04-16 A (+88d) |  |  | resources Purchaser; Construction Cost → Purchaser [16 h]; Construction Cost [1415.62] |
| DAM3-E-MA-M-0120 | Roof vent caps | 2026-01-14 A → 2026-02-16 A (+33d) | 2026-01-18 A → 2026-06-14 A (+147d) | 4.12d → 5d |  | resources Construction Cost → Construction Cost [456.64] |
| DAM3-E-MA-M-0130 | Floor drain | 2026-01-14 A → 2026-02-16 A (+33d) | 2026-01-18 A → 2026-06-04 A (+137d) | 4.12d → 5d | DAM3-E-MS-M-0130, DAM3-E-MA-M-0040 → DAM3-E-MS-M-0130 | resources Construction Cost → Construction Cost [11114] |
| DAM3-E-MA-M-0340 | Warning tapes | 2026-01-06 A → 2026-02-16 A (+41d) | 2026-01-07 A → 2026-03-03 A (+55d) |  |  | resources Construction Cost → Construction Cost [2111.55] |
| DAM3-E-MA-M-0320 | GRP tank | 2026-01-05 A → 2026-03-02 A (+56d) | 2026-01-05 A → 2026-04-07 A (+92d) |  |  | resources Construction Cost → Construction Cost [31478] |
| DAM3-E-MA-M-0220 | HVAC duct | 2026-01-31 A → 2026-03-04 A (+32d) | 2026-02-03 A → 2026-05-12 A (+98d) |  |  | resources Construction Cost → Construction Cost [73629.1] |
| DAM3-E-MA-M-0230 | Flexible duct | 2026-01-31 A → 2026-03-04 A (+32d) | 2026-02-03 A → 2026-05-12 A (+98d) |  |  | resources Construction Cost → Construction Cost [10444.5] |
| DAM3-E-MA-M-0200 | Inline exhaust fans | 2026-02-01 A → 2026-03-18 A (+45d) | 2026-02-02 A → 2026-04-19 A (+76d) | 4.62d → 4.75d |  | resources Construction Cost → Construction Cost [4121.24] |
| DAM3-E-MA-M-0210 | Wall propeller type exhaust fans | 2026-02-01 A → 2026-03-18 A (+45d) | 2026-02-02 A → 2026-04-19 A (+76d) | 3.88d → 4.75d | DAM3-E-MS-M-0210 → DAM3-E-MS-M-0210, DAM3-E-MA-M-0180 | resources Construction Cost → Construction Cost [23066.3] |
| DAM3-E-MA-M-0240 | Exhaust diffuser | 2026-01-29 A → 2026-06-01 A (+123d) | 2026-02-16 A → 2026-06-04 A (+108d) |  |  | resources Construction Cost → Construction Cost [1056] |
| DAM3-E-MA-M-0100 | Capped connection | 2025-12-27 A → 2026-06-13 A (+168d) | 2025-12-29 A → 2026-06-14 A (+167d) |  |  | resources Construction Cost → Construction Cost [136.99] |
| 3 | **ELECTRICAL** | 2025-12-23 → 2026-02-09 (+48d) | 2026-03-29 → 2026-06-14 (+77d) |  |  |  |
| DAM3-E-MA-E-0040 | PVC conduits | 2025-12-23 A → 2026-02-09 A (+48d) | 2025-12-25 A → 2026-03-01 A (+66d) |  |  | resources Construction Cost → Construction Cost [2360.8] |
| DAM3-E-MA-E-0130 | Fire alarm system | 2026-01-21 A → 2026-02-11 A (+21d) | 2026-01-29 A → 2026-03-30 A (+60d) | 4.12d → 5d |  | resources Construction Cost → Construction Cost [41920.1] |
| DAM3-E-MA-E-0240 | Access control system | 2026-02-04 A → 2026-02-11 A (+7d) | 2026-02-04 A → 2026-03-07 A (+31d) | 2d → 5d | DAM3-E-MS-E-0240, DAM3-E-SS-E-1040, DAM3-E-SS-M-710 → DAM3-E-MS-E-0240 | resources none → Construction Cost [13602.3] |
| DAM3-E-MA-E-0060 | Suspended High Bay LED lights | 2026-01-13 A → 2026-03-03 A (+49d) | 2026-01-14 A → 2026-03-07 A (+52d) |  |  | resources Construction Cost → Construction Cost [14938] |
| DAM3-E-MA-E-0070 | Flood lights | 2026-01-13 A → 2026-03-03 A (+49d) | 2026-01-14 A → 2026-03-07 A (+52d) |  |  | resources Construction Cost → Construction Cost [2268.18] |
| DAM3-E-MA-E-0080 | Recessed mounted LED downlight | 2026-01-13 A → 2026-03-03 A (+49d) | 2026-01-14 A → 2026-03-07 A (+52d) | 4.12d → 5d |  | resources Construction Cost → Construction Cost [20081.1] |
| DAM3-E-MA-E-0090 | LED Emergency Lights wall mounted | 2026-01-13 A → 2026-03-03 A (+49d) | 2026-01-14 A → 2026-03-07 A (+52d) | 4.12d → 5d |  | resources Construction Cost → Construction Cost [4144.06] |

| ID | Task | Start | Finish | Duration | Predecessors | Other |
| --- | --- | --- | --- | --- | --- | --- |
| DAM3-E-MA-E-0100 | LED Emergency Exit Light | 2026-01-13 A → 2026-03-03 A (+49d) | 2026-01-14 A → 2026-03-07 A (+52d) | 7d → 5d |  | resources Construction Cost → Construction Cost [1145.13] |
| DAM3-E-MA-E-0190 | Surface mounted lights | 2026-01-13 A → 2026-03-03 A (+49d) | 2026-01-14 A → 2026-03-07 A (+52d) | 4.12d → 5d |  | resources Construction Cost → Construction Cost [11068.8] |
| DAM3-E-MA-E-0250 | Solar system | 2026-01-05 A → 2026-03-03 A (+57d) | 2026-01-29 A → 2026-04-25 A (+86d) | 2d → 4d |  | resources none → Construction Cost [124744] |
| DAM3-E-MA-E-0170 | Street Lighting poles | 2026-01-13 A → 2026-03-04 A (+50d) | 2026-01-14 A → 2026-05-20 A (+126d) |  |  | resources Construction Cost → Construction Cost [10525.3] |
| DAM3-E-MA-E-0140 | Wiring devices | 2026-01-06 A → 2026-03-07 A (+60d) | 2026-01-07 A → 2026-03-08 A (+60d) |  |  | resources Construction Cost → Construction Cost [9962.15] |
| DAM3-E-MA-E-210 | Cable Tray | 2026-01-06 A → 2026-03-07 A (+60d) | 2026-01-07 A → 2026-03-08 A (+60d) |  |  | resources Purchaser; Construction Cost → Purchaser [80 h]; Construction Cost [159.57] |
| DAM3-E-MA-E-0010 | Low Voltage cables | 2025-12-27 A → 2026-03-16 A (+79d) | 2026-01-04 A → 2026-03-29 A (+84d) |  |  | resources Construction Cost → Construction Cost [44855.2] |
| DAM3-E-MA-E-0050 | Wires | 2025-12-27 A → 2026-03-16 A (+79d) | 2026-01-04 A → 2026-03-29 A (+84d) |  |  | resources Construction Cost → Construction Cost [1106.91] |
| DAM3-E-MA-E-0120 | Grounding system | 2026-01-29 A → 2026-03-16 A (+46d) | 2026-01-31 A → 2026-03-29 A (+57d) |  |  | resources Construction Cost → Construction Cost [9771.19] |
| DAM3-E-MA-E-0230 | CCTV System | 2026-02-16 A → 2026-03-28 A (+40d) | 2026-02-28 A → 2026-04-13 A (+44d) | 2d → 4d |  | resources none → Construction Cost [37604.8] |
| DAM3-E-MA-E-0030 | Disconnect switches | 2026-03-24 A → 2026-03-29 A (+5d) | 2026-03-29 A → 2026-06-14 A (+77d) | 3.62d → 5d |  | resources Construction Cost → Construction Cost [15086.4] |
| DAM3-E-MA-E-0110 | Wall mounted, duplex, telephone and data outlet | 2026-03-12 A → 2026-03-29 A (+17d) | 2026-03-12 A → 2026-04-13 A (+32d) | 3.88d → 4d |  | resources Construction Cost → Construction Cost [13294.1] |
| DAM3-E-MA-E-0020 | Main distribution board (MDB) | 2026-02-15 A → 2026-04-26 A (+70d) | 2026-03-12 A → 2026-05-12 A (+61d) | 5d → 4.5d |  | resources Construction Cost → Construction Cost [15994] |
| DAM3-E-MA-E-0180 | Distribution board for pump room | 2026-02-15 A → 2026-04-26 A (+70d) | 2026-03-12 A → 2026-05-12 A (+61d) | 5.5d → 4d |  | resources Construction Cost → Construction Cost [11002.7] |
| DAM3-E-MA-E-190 | Lighting panel board | 2026-02-15 A → 2026-04-26 A (+70d) | 2026-03-12 A → 2026-05-12 A (+61d) |  |  | resources Purchaser; Construction Cost → Purchaser [80 h]; Construction Cost [9064.43] |
| DAM3-E-MA-E-200 | PP-AC panel | 2026-02-15 A → 2026-04-26 A (+70d) | 2026-03-12 A → 2026-05-12 A (+61d) | 4.12d → 5d |  | resources Purchaser; Construction Cost → Purchaser [16 h]; Construction Cost [10662.7] |
| DAM3-E-MA-E-0160 | HDPE ducts | 2026-01-06 A → 2026-04-30 A (+114d) | 2026-01-07 A → 2026-05-03 A (+116d) |  |  | resources Construction Cost → Construction Cost [26403] |
| DAM3-E-MA-E-0260 | Main program system & controller | 2026-02-10 A → 2026-04-30 A (+79d) | 2026-02-28 A → 2026-05-12 A (+73d) | 2d → 5d |  | resources none → Construction Cost [12578.1] |
| DAM3-E-MA-E-0270 | PLC controller | 2026-02-10 A → 2026-04-30 A (+79d) | 2026-02-28 A → 2026-05-12 A (+73d) | 2d → 5d |  | resources none → Construction Cost [8486] |
| 4 | **EXTERNAL** | 2026-03-24 → 2026-06-11 (+79d) | 2026-08-16 → 2026-06-13 (-64d) |  |  |  |
| DAM3-E-MA-EX-0010 | Asphalt works | 2026-03-24 A → 2026-06-11 A (+79d) | 2026-03-29 A → 2026-06-13 A (+76d) | 4.38d → 5d |  | resources Construction Cost → Construction Cost [280348] |
| DAM3-E-MA-EX-0020 | Concrete parking bumper | 2026-05-31 A → 2026-06-11 A (+11d) | 2026-06-06 A → 2026-06-13 A (+7d) |  |  | resources Construction Cost → Construction Cost [1433.72] |
| DAM3-E-MA-EX-0030 | Road markings | 2026-08-15 A → 2026-06-11 A (-65d) | 2026-08-16 A → 2026-06-13 A (-64d) |  |  | resources Construction Cost → Construction Cost [1696.34] |
| DAM3-E-MA-EX-0040 | Road signs | 2026-04-16 A → 2026-06-11 A (+56d) | 2026-06-29 A → 2026-06-13 A (-16d) | 6.62d → 4.62d |  | resources Construction Cost → Construction Cost [4654.29] |
| DAM3-E-MA-EX-0060 | Interlock tiles | 2026-05-31 A → 2026-06-11 A (+11d) | 2026-06-06 A → 2026-06-13 A (+7d) | 6.62d → 4.62d |  | resources Construction Cost → Construction Cost [21297] |
| DAM3-E-MA-EX-0070 | Curbstones | 2026-05-31 A → 2026-06-11 A (+11d) | 2026-06-06 A → 2026-06-13 A (+7d) | 6.62d → 4.62d |  | resources Construction Cost → Construction Cost [13036.9] |
| DAM3-E-MA-EX-0080 | Gravel bedding | 2026-08-15 A → 2026-06-11 A (-65d) | 2026-08-16 A → 2026-06-13 A (-64d) | 3.62d → 5d |  | resources Construction Cost → Construction Cost [9917.68] |
| 5 | **ENVIRONMETAL** | 2025-12-29 → 2026-02-08 (+41d) | 2026-01-29 → 2026-06-14 (+136d) |  |  |  |
| DAM3-E-MA-EN-0010 | HDPE pipes for fire system | 2025-12-30 A → 2026-02-08 A (+40d) | 2026-01-04 A → 2026-02-26 A (+53d) |  |  | resources Construction Cost → Construction Cost [21745.9] |
| DAM3-E-MA-EN-0030 | HDPE pipes for water supply system | 2025-12-30 A → 2026-02-08 A (+40d) | 2026-01-04 A → 2026-02-26 A (+53d) |  |  | resources Construction Cost → Construction Cost [1598.26] |
| DAM3-E-MA-EN-0080 | UPVC pipes | 2026-03-01 A → 2026-02-08 A (-21d) | 2026-03-01 A → 2026-02-26 A (-3d) | 7d → 4.5d | DAM3-E-MA-M-0110, DAM3-P-ST-M-490, DAM3-P-ST-M-620 → DAM3-E-MS-EN-0080 | resources none → Construction Cost [20218.3] |
| DAM3-E-MA-EN-0020 | Directly buried gate valve for fire system | 2026-01-24 A → 2026-02-16 A (+23d) | 2026-01-29 A → 2026-05-25 A (+116d) |  |  | resources Construction Cost → Construction Cost [1090.5] |
| DAM3-E-MA-EN-0040 | Directly buried gate valve for water system | 2026-01-24 A → 2026-02-16 A (+23d) | 2026-01-29 A → 2026-05-25 A (+116d) |  |  | resources Construction Cost → Construction Cost [2414.78] |
| DAM3-E-MA-EN-0050 | Air valve | 2026-01-24 A → 2026-02-18 A (+25d) | 2026-01-29 A → 2026-02-26 A (+28d) |  |  | resources Construction Cost → Construction Cost [1963.06] |
| DAM3-E-MA-EN-0060 | Washout valve | 2026-01-24 A → 2026-02-18 A (+25d) | 2026-01-29 A → 2026-06-14 A (+136d) | 4.62d → 5d |  | resources Construction Cost → Construction Cost [2302.04] |
| DAM3-E-MA-EN-0070 | Gate valve | 2026-01-24 A → 2026-02-18 A (+25d) | 2026-01-29 A → 2026-06-14 A (+136d) | 4.12d → 5d |  | resources Construction Cost → Construction Cost [6398.75] |
| 3 | **METHOD STATEMENTS** | 2025-12-18 → 2026-02-07 (+51d) | 2026-08-09 → 2026-06-23 (-47d) |  |  |  |
| 1 | **PREPARATION AND SUBMITTAL** | 2025-12-18 → 2026-02-07 (+51d) | 2026-08-08 → 2026-06-22 (-47d) |  |  |  |
| DAM3-E-MT-C-0010 | Method Statement for Structural Works | 2025-12-18 A → 2026-02-07 A (+51d) | 2026-06-29 A → 2026-06-22 A (-7d) |  |  | resources Engineer [112 h] → Engineer [453 h] |
| DAM3-E-MT-A-0020 | Method Statement for Architectural Works | 2026-05-02 A → 2026-03-05 A (-58d) | 2026-08-08 A → 2026-06-22 A (-47d) |  |  |  |
| DAM3-E-MT-E-0040 | Method Statement for Electrical Works | 2026-01-14 A → 2026-05-10 A (+116d) | 2026-08-08 A → 2026-06-22 A (-47d) | 9d → 7d |  |  |
| DAM3-E-MT-M-0030 | Method Statement for Mechanical Works | 2026-01-28 A → 2026-05-10 A (+102d) | 2026-08-08 A → 2026-06-22 A (-47d) | 6.12d → 7d |  |  |
| DAM3-E-MT-ENV-0060 | Method Statement for Environmental Works | 2026-05-02 A → 2026-06-21 A (+50d) | 2026-06-29 A → 2026-06-22 A (-7d) | 7d → 8d |  | resources Engineer [112 h] → Engineer [128 h] |
| DAM3-E-MT-EX-0050 | Method Statement for External Works | 2026-05-02 A → 2026-06-21 A (+50d) | 2026-08-08 A → 2026-06-22 A (-47d) |  |  |  |
| 2 | **REVIEW AND APPROVAL** | 2025-12-18 → 2026-02-07 (+51d) | 2026-08-09 → 2026-06-23 (-47d) |  |  |  |
| DAM3-E-MT-C-1010 | Method Statement for Structural Works | 2025-12-18 A → 2026-02-07 A (+51d) | 2026-06-30 A → 2026-06-23 A (-7d) |  |  | resources Engineer → Engineer [160 h] |
| DAM3-E-MT-A-1020 | Method Statement for Architectural Works | 2026-05-02 A → 2026-03-05 A (-58d) | 2026-08-09 A → 2026-06-23 A (-47d) | 11.12d → 10d |  | resources Engineer → Engineer [160 h] |
| DAM3-E-MT-E-1040 | Method Statement for Electrical Works | 2026-01-14 A → 2026-05-10 A (+116d) | 2026-08-09 A → 2026-06-23 A (-47d) |  |  | resources Engineer → Engineer [160 h] |
| DAM3-E-MT-M-1030 | Method Statement for Mechanical Works | 2026-02-01 A → 2026-05-10 A (+98d) | 2026-08-09 A → 2026-06-23 A (-47d) |  |  | resources Engineer → Engineer [160 h] |
| DAM3-E-MT-ENV-1060 | Method Statement for Environmental Works | 2026-05-02 A → 2026-06-21 A (+50d) | 2026-06-30 A → 2026-06-23 A (-7d) |  |  | resources Engineer → Engineer [16 h] |
| DAM3-E-MT-EX-1050 | Method Statement for External Works | 2026-05-02 A → 2026-06-21 A (+50d) | 2026-08-09 A → 2026-06-23 A (-47d) |  | DAM3-E-MT-E-1040, DAM3-E-MT-EX-0050, DAM3-E-MT-ENV-0060 → DAM3-E-MT-E-1040, DAM3-E-MT-EX-0050 | resources Engineer → Engineer [160 h] |
| 3 | **STAGING** | 2025-12-18 → 2026-02-09 (+53d) | 2026-08-09 → 2026-06-23 (-47d) |  |  |  |
| DAM3-E-MT-C-2010 | Method Statement for Structural Works | 2025-12-18 A → 2026-02-09 A (+53d) | 2026-07-15 A → 2026-06-23 A (-22d) |  |  | resources Engineer → Engineer [16 h] |
| DAM3-E-MT-E-2040 | Method Statement for Electrical Works | 2026-01-14 A → 2026-05-10 A (+116d) | 2026-08-09 A → 2026-06-23 A (-47d) |  |  | resources Engineer → Engineer [16 h] |
| DAM3-E-MT-M-2030 | Method Statement for Mechanical Works | 2026-02-01 A → 2026-05-10 A (+98d) | 2026-08-09 A → 2026-06-23 A (-47d) |  |  | resources Engineer → Engineer [16 h] |
| DAM3-E-MT-A-2020 | Method Statement for Architectural Works | 2026-05-02 A → 2026-06-21 A (+50d) | 2026-08-09 A → 2026-06-23 A (-47d) | 1d → 4d |  | resources Engineer → Engineer [64 h] |
| DAM3-E-MT-ENV-2060 | Method Statement for Environmental Works | 2026-05-02 A → 2026-06-21 A (+50d) | 2026-07-13 A → 2026-06-23 A (-20d) |  | DAM3-E-MT-ENV-1060, DAM3-E-MT-EX-2050 → DAM3-E-MT-ENV-1060 | resources Engineer → Engineer [16 h] |
| DAM3-E-MT-EX-2050 | Method Statement for External Works | 2026-05-02 A → 2026-06-21 A (+50d) | 2026-08-09 A → 2026-06-23 A (-47d) |  | DAM3-E-MT-EX-1050 → DAM3-E-MT-EX-1050, DAM3-E-MT-E-2040 | resources Engineer → Engineer [16 h] |
| 2 | **LONG LEAD MATERIALS** | 2025-12-15 → 2026-01-14 (+30d) | 2026-09-15 → 2026-09-27 (+12d) |  |  |  |
| 1 | **ARCHITECTURAL** | 2025-12-15 → 2026-01-14 (+30d) | 2026-07-11 → 2026-08-20 (+40d) |  |  |  |
| 1 | **PO ISSUE** | 2025-12-15 → 2026-01-14 (+30d) | 2026-02-24 → 2026-03-22 (+26d) |  |  |  |
| DAM3-E-PO-A-1700 | PES -Steel Structure | 2025-12-15 A → 2026-01-14 A (+30d) | 2025-12-15 A → 2026-01-14 A (+30d) |  |  | resources Purchaser [40 h] → Purchaser [80 h] |
| DAM3-P-PO-A-180 | Doors | 2026-02-24 A → 2026-03-18 A (+22d) | 2026-02-24 A → 2026-03-18 A (+22d) |  |  | resources Purchaser [40 h] → Purchaser [80 h] |
| DAM3-P-PO-A-190 | Windows | 2026-02-05 A → 2026-03-22 A (+45d) | 2026-02-05 A → 2026-03-22 A (+45d) | 4.5d → 5d |  | resources Purchaser [40 h] → Purchaser [80 h] |
| 2 | **MANUFACTURING** | 2025-12-16 → 2026-01-14 (+29d) | 2026-07-11 → 2026-06-23 (-18d) |  |  |  |
| DAM3-E-MF-A-1700 | PES -Steel Structure | 2025-12-16 A → 2026-01-14 A (+29d) | 2026-05-20 A → 2026-05-25 A (+5d) |  |  | resources Purchaser → Purchaser [560 h] |
| DAM3-P-MF-A-180 | Doors | 2026-02-24 A → 2026-03-21 A (+25d) | 2026-07-11 A → 2026-06-23 A (-18d) | 91.12d → 90d |  | resources Loading workers → Loading workers [440 h] |
| DAM3-P-MF-A-190 | Windows | 2026-02-05 A → 2026-03-25 A (+48d) | 2026-07-11 A → 2026-06-23 A (-18d) | 80d → 90d |  | resources Loading workers → Loading workers [60 h] |
| 4 | **DELIVERY TO SITE** | 2026-03-05 → 2026-05-31 (+87d) | 2026-07-11 → 2026-08-20 (+40d) |  |  |  |
| DAM3-P-DL-A-180 | Doors | 2026-05-13 A → 2026-08-18 A (+97d) | 2026-07-11 A → 2026-08-20 A (+40d) |  |  | resources Unloading workers [112 h]; Construction Cost [313956] → Unloading workers [112 h]; Construction Cost [502577] |

| ID | Task | Start | Finish | Duration | Predecessors | Other |
| --- | --- | --- | --- | --- | --- | --- |
| DAM3-P-DL-A-190 | Windows | 2026-07-05 A → 2026-08-19 A (+45d) | 2026-07-11 A → 2026-08-20 A (+40d) |  |  | resources Unloading workers [112 h]; Construction Cost [199260] → Unloading workers [112 h]; Construction Cost [350168] |
| 5 | **STAGING TIME** | 2026-03-05 → 2026-07-21 (+138d) | 2026-07-11 → 2026-08-20 (+40d) |  |  |  |
| DAM3-E-ST-A-1700 | PES -Steel Structure | 2026-03-05 A → 2026-07-21 A (+138d) | 2026-05-21 A → 2026-07-22 A (+62d) | 7d → 2d | DAM3-E-MF-A-1700 → DAM3-P-DL-A-1700 | resources Purchaser [112 h]; Construction Cost [3424599] → none |
| DAM3-P-ST-A-180 | Doors | 2026-05-13 A → 2026-08-18 A (+97d) | 2026-07-11 A → 2026-08-20 A (+40d) |  |  |  |
| DAM3-P-ST-A-190 | Windows | 2026-07-05 A → 2026-08-19 A (+45d) | 2026-07-11 A → 2026-08-20 A (+40d) |  |  |  |
| 3 | **ELECTRICAL** | 2026-01-29 → 2026-03-24 (+54d) | 2026-09-15 → 2026-09-27 (+12d) |  |  |  |
| 1 | **PO ISSUE** | 2026-01-29 → 2026-03-24 (+54d) | 2026-03-16 → 2026-03-24 (+8d) |  |  |  |
| DAM3-E-PO-E-0230 | CCTV System | 2026-03-16 A → 2026-03-24 A (+8d) | 2026-03-16 A → 2026-03-24 A (+8d) |  |  | resources Purchaser [160 h] → none |
| DAM3-E-PO-E-0240 | Access control system | 2026-03-16 A → 2026-03-24 A (+8d) | 2026-03-16 A → 2026-03-24 A (+8d) |  |  | resources Purchaser [160 h] → none |
| DAM3-E-PO-E-0250 | Solar system | 2026-02-19 A → 2026-03-24 A (+33d) | 2026-02-19 A → 2026-03-24 A (+33d) |  |  | resources Purchaser [160 h] → none |
| DAM3-E-PO-E-0260 | Main program system & controller | 2026-02-04 A → 2026-03-24 A (+48d) | 2026-02-04 A → 2026-03-24 A (+48d) |  |  | resources Purchaser [160 h] → none |
| DAM3-E-PO-E-0270 | PLC controller | 2026-02-04 A → 2026-03-24 A (+48d) | 2026-02-04 A → 2026-03-24 A (+48d) |  |  | resources Purchaser [160 h] → none |
| DAM3-E-PO-E-190 | Lighting panel board | 2026-03-16 A → 2026-03-24 A (+8d) | 2026-03-16 A → 2026-03-24 A (+8d) |  |  | resources Purchaser [40 h] → Purchaser [16 h] |
| DAM3-E-PO-E-200 | PP-AC panel | 2026-03-16 A → 2026-03-24 A (+8d) | 2026-03-16 A → 2026-03-24 A (+8d) |  |  | resources Purchaser [40 h] → Purchaser [16 h] |
| DAM3-P-PO-E-190 | Main distribution board (MDB) | 2026-03-16 A → 2026-03-24 A (+8d) | 2026-03-16 A → 2026-03-24 A (+8d) | 4.12d → 5d |  | resources Purchaser [40 h] → Purchaser [16 h] |
| DAM3-P-PO-E-200 | Suspended High Bay LED lights | 2026-01-29 A → 2026-03-24 A (+54d) | 2026-01-29 A → 2026-03-24 A (+54d) |  | DAM3-E-MA-E-0060, DAM3-E-PO-E-200 → DAM3-E-MA-E-0060, DAM3-E-PO-E-200, DAM3-E-SS-C-890, DAM3-E-SS-A-910, DAM3-E-SS-M-660, DAM3-E-SS-E-990, DAM3-E-SS-EX-760, DAM3-E-SA-C-880, DAM3-E-SA-C-870, DAM3-E-SA-C-870 FF | resources Purchaser [40 h] → Purchaser [16 h] |
| DAM3-P-PO-E-210 | Flood lights | 2026-01-29 A → 2026-03-24 A (+54d) | 2026-01-29 A → 2026-03-24 A (+54d) | 7d → 5d | DAM3-E-MA-E-0070, DAM3-P-PO-E-200 → DAM3-E-MA-E-0070, DAM3-P-PO-E-200, DAM3-E-SS-R-960, DAM3-E-SS-R-960 FF, DAM3-C-B10-S-104 | resources Purchaser [40 h] → Purchaser [16 h] |
| DAM3-P-PO-E-220 | Recessed mounted LED downlight | 2026-01-29 A → 2026-03-24 A (+54d) | 2026-01-29 A → 2026-03-24 A (+54d) |  |  | resources Purchaser [40 h] → Purchaser [16 h] |
| DAM3-P-PO-E-230 | LED Emergency Lights wall mounted | 2026-01-29 A → 2026-03-24 A (+54d) | 2026-01-29 A → 2026-03-24 A (+54d) |  |  | resources Purchaser [160 h] → Purchaser [16 h] |
| DAM3-P-PO-E-240 | LED Emergency Exit Light | 2026-01-29 A → 2026-03-24 A (+54d) | 2026-01-29 A → 2026-03-24 A (+54d) |  |  | resources Purchaser [160 h] → Purchaser [16 h] |
| DAM3-P-PO-E-250 | Fire alarm system | 2026-02-11 A → 2026-03-24 A (+41d) | 2026-02-11 A → 2026-03-24 A (+41d) |  |  | resources Purchaser [160 h] → Purchaser [16 h] |
| DAM3-P-PO-E-260 | Street Lighting poles | 2026-02-09 A → 2026-03-24 A (+43d) | 2026-02-09 A → 2026-03-24 A (+43d) |  |  | resources Purchaser [160 h] → Purchaser [16 h] |
| DAM3-P-PO-E-270 | Distribution board for pump room | 2026-03-16 A → 2026-03-24 A (+8d) | 2026-03-16 A → 2026-03-24 A (+8d) |  |  | resources Purchaser [160 h] → Purchaser [80 h] |
| DAM3-P-PO-E-280 | Surface mounted lights | 2026-01-29 A → 2026-03-24 A (+54d) | 2026-01-29 A → 2026-03-24 A (+54d) |  |  | resources Purchaser [160 h] → Purchaser [80 h] |
| 2 | **MANUFACTURING** | 2026-01-29 → 2026-04-01 (+62d) | 2026-09-15 → 2026-09-27 (+12d) |  |  |  |
| DAM3-P-MF-E-190 | Main distribution board (MDB) | 2026-03-16 A → 2026-04-01 A (+16d) | 2026-07-13 A → 2026-08-22 A (+40d) | 91.12d → 90d |  | resources Loading workers → Loading workers [32 h] |
| DAM3-E-MF-E-190 | Lighting panel board | 2026-03-16 A → 2026-04-07 A (+22d) | 2026-07-13 A → 2026-09-20 A (+69d) | 92d → 90d |  | resources Purchaser → Purchaser [32 h] |
| DAM3-E-MF-E-200 | PP-AC panel | 2026-03-16 A → 2026-04-13 A (+28d) | 2026-07-13 A → 2026-09-20 A (+69d) |  |  | resources Purchaser → Purchaser [32 h] |
| DAM3-E-MF-E-0240 | Access control system | 2026-03-16 A → 2026-04-16 A (+31d) | 2026-09-15 A → 2026-09-20 A (+5d) | 60d → 150d |  |  |
| DAM3-P-MF-E-200 | Suspended High Bay LED lights | 2026-01-29 A → 2026-04-20 A (+81d) | 2026-05-18 A → 2026-08-27 A (+101d) | 92d → 90d |  | resources Loading workers → Loading workers [32 h] |
| DAM3-E-MF-E-0230 | CCTV System | 2026-03-16 A → 2026-04-25 A (+40d) | 2026-09-15 A → 2026-09-20 A (+5d) | 90d → 120d |  |  |
| DAM3-E-MF-E-0250 | Solar system | 2026-02-19 A → 2026-04-25 A (+65d) | 2026-07-04 A → 2026-09-20 A (+78d) | 100d → 150d |  |  |
| DAM3-P-MF-E-210 | Flood lights | 2026-01-29 A → 2026-04-28 A (+89d) | 2026-05-18 A → 2026-09-27 A (+132d) |  | DAM3-P-PO-E-210 → DAM3-P-PO-E-210, DAM3-E-SS-A-960, DAM3-E-SS-M-710, DAM3-E-SS-E-1040, DAM3-E-SS-EX-840, DAM3-E-SA-A-950, DAM3-E-SA-A-940, DAM3-E-SA-M-700, DAM3-E-SA-M-690, DAM3-E-SA-M-680, DAM3-E-SA-M-670, DAM3-E-SA-E-1030, DAM3-E-SA-E-1020, DAM3-E-SA-E-1010, DAM3-E-SA-E-1000, DAM3-E-SA-E-990, DAM3-E-SA-R-960 | resources Loading workers → Loading workers [80 h] |
| DAM3-E-MF-E-0260 | Main program system & controller | 2026-02-04 A → 2026-04-29 A (+84d) | 2026-07-16 A → 2026-09-20 A (+66d) | 80d → 155d |  |  |
| DAM3-E-MF-E-0270 | PLC controller | 2026-02-04 A → 2026-05-02 A (+87d) | 2026-07-12 A → 2026-09-20 A (+70d) | 80d → 160d |  |  |
| DAM3-P-MF-E-220 | Recessed mounted LED downlight | 2026-01-29 A → 2026-05-04 A (+95d) | 2026-05-18 A → 2026-09-27 A (+132d) |  |  | resources Loading workers → Loading workers [80 h] |
| DAM3-P-MF-E-230 | LED Emergency Lights wall mounted | 2026-01-29 A → 2026-05-10 A (+101d) | 2026-05-18 A → 2026-09-27 A (+132d) |  |  | resources Loading workers → Loading workers [80 h] |
| DAM3-P-MF-E-240 | LED Emergency Exit Light | 2026-01-29 A → 2026-05-16 A (+107d) | 2026-05-18 A → 2026-09-27 A (+132d) |  |  | resources Loading workers → Loading workers [80 h] |
| DAM3-P-MF-E-250 | Fire alarm system | 2026-02-11 A → 2026-05-21 A (+99d) | 2026-05-24 A → 2026-09-20 A (+119d) | 90d → 130d |  | resources Loading workers → Loading workers [80 h] |
| DAM3-P-MF-E-260 | Street Lighting poles | 2026-02-09 A → 2026-05-31 A (+111d) | 2026-07-21 A → 2026-06-21 A (-30d) |  |  | resources Loading workers → Loading workers [1440 h] |
| DAM3-P-MF-E-270 | Distribution board for pump room | 2026-03-16 A → 2026-06-06 A (+82d) | 2026-07-13 A → 2026-06-21 A (-22d) |  |  | resources Loading workers → Loading workers [1440 h] |
| DAM3-P-MF-E-280 | Surface mounted lights | 2026-01-29 A → 2026-06-11 A (+133d) | 2026-05-18 A → 2026-06-21 A (+34d) |  |  | resources Loading workers → Loading workers [1440 h] |
| 4 | **DELIVERY TO SITE** | 2026-05-18 → 2026-08-24 (+98d) | 2026-09-15 → 2026-09-21 (+6d) |  |  |  |
| DAM3-P-DL-E-190 | Main distribution board (MDB) | 2026-07-14 A → 2026-08-24 A (+41d) | 2026-07-14 A → 2026-08-24 A (+41d) |  |  | resources Unloading workers [112 h]; Construction Cost [62208] → Unloading workers [112 h]; Construction Cost [106627] |
| DAM3-P-DL-E-200 | Suspended High Bay LED lights | 2026-05-18 A → 2026-08-29 A (+103d) | 2026-05-18 A → 2026-08-29 A (+103d) |  |  | resources Unloading workers [112 h]; Construction Cost [50398.2] → Unloading workers [112 h]; Construction Cost [99586.8] |
| DAM3-P-DL-E-210 | Flood lights | 2026-05-18 A → 2026-08-29 A (+103d) | 2026-05-18 A → 2026-08-29 A (+103d) |  |  | resources Unloading workers [112 h]; Construction Cost [9234] → Unloading workers [112 h]; Construction Cost [15121.2] |
| DAM3-P-DL-E-220 | Recessed mounted LED downlight | 2026-05-18 A → 2026-08-29 A (+103d) | 2026-05-18 A → 2026-08-29 A (+103d) |  |  | resources Unloading workers [112 h]; Construction Cost [33048] → Unloading workers [112 h]; Construction Cost [133874] |
| DAM3-P-DL-E-230 | LED Emergency Lights wall mounted | 2026-05-18 A → 2026-08-29 A (+103d) | 2026-05-18 A → 2026-08-29 A (+103d) |  |  | resources Unloading workers [224 h]; Construction Cost [13996.8] → Unloading workers [720 h]; Construction Cost [27627.1] |
| DAM3-P-DL-E-240 | LED Emergency Exit Light | 2026-05-18 A → 2026-08-29 A (+103d) | 2026-05-18 A → 2026-08-29 A (+103d) |  |  | resources Unloading workers [224 h]; Construction Cost [4762.8] → Unloading workers [720 h]; Construction Cost [7634.17] |
| DAM3-P-DL-E-280 | Surface mounted lights | 2026-05-18 A → 2026-08-29 A (+103d) | 2026-05-18 A → 2026-08-29 A (+103d) |  |  | resources Unloading workers [336 h]; Construction Cost [63617.4] → Unloading workers [720 h]; Construction Cost [73792.2] |
| DAM3-P-DL-E-1900 | Lighting panel board | 2026-07-14 A → 2026-09-01 A (+49d) | 2026-07-14 A → 2026-09-21 A (+69d) |  |  | resources Purchaser [112 h]; Construction Cost [36936] → Purchaser [112 h]; Construction Cost [60429.5] |
| DAM3-P-DL-E-2000 | PP-AC panel | 2026-07-14 A → 2026-09-01 A (+49d) | 2026-07-14 A → 2026-09-21 A (+69d) |  | DAM3-E-MF-E-200 → DAM3-E-MF-E-200, DAM3-C-B6-SS-1060 | resources Purchaser [112 h]; Construction Cost [44469] → Purchaser [112 h]; Construction Cost [71084.6] |
| DAM3-P-DL-E-250 | Fire alarm system | 2026-05-24 A → 2026-09-02 A (+101d) | 2026-05-24 A → 2026-09-21 A (+120d) |  |  | resources Unloading workers [336 h]; Construction Cost [68598.9] → Unloading workers [1440 h]; Construction Cost [279467] |
| DAM3-P-DL-E-0230 | CCTV System | 2026-09-15 A → 2026-09-06 A (-9d) | 2026-09-15 A → 2026-09-21 A (+6d) |  |  | resources Construction Cost [161571]; Unloading workers [224 h] → Construction Cost [250699]; Unloading workers [720 h] |
| DAM3-P-DL-E-0260 | Main program system & controller | 2026-07-16 A → 2026-09-06 A (+52d) | 2026-07-16 A → 2026-09-21 A (+67d) |  |  | resources Construction Cost [38880]; Unloading workers [112 h] → Construction Cost [83856.8]; Unloading workers [112 h] |
| DAM3-P-DL-E-0270 | PLC controller | 2026-07-16 A → 2026-09-07 A (+53d) | 2026-07-16 A → 2026-09-21 A (+67d) |  |  | resources Construction Cost [77760]; Unloading workers [112 h] → Construction Cost [56576.6]; Unloading workers [112 h] |
| DAM3-P-DL-E-0250 | Solar system | 2026-07-05 A → 2026-09-09 A (+66d) | 2026-07-05 A → 2026-09-21 A (+78d) |  |  | resources Construction Cost [534600]; Unloading workers [224 h] → Construction Cost [831629]; Unloading workers [112 h] |
| DAM3-P-DL-E-0240 | Access control system | 2026-09-15 A → 2026-09-19 A (+4d) | 2026-09-15 A → 2026-09-21 A (+6d) |  |  | resources Construction Cost [59364.9]; Unloading workers [112 h] → Construction Cost [90682.2]; Unloading workers [112 h] |
| DAM3-P-DL-E-260 | Street Lighting poles | 2026-07-21 A → 2026-09-19 A (+60d) | 2026-07-21 A → 2026-09-21 A (+62d) |  |  | resources Unloading workers [224 h]; Construction Cost [57904.5] → Unloading workers [720 h]; Construction Cost [70168.8] |
| DAM3-P-DL-E-270 | Distribution board for pump room | 2026-07-14 A → 2026-09-19 A (+67d) | 2026-07-14 A → 2026-09-20 A (+68d) |  |  | resources Unloading workers [224 h]; Construction Cost [2527.2] → Unloading workers [720 h]; Construction Cost [73351.4] |
| 5 | **STAGING TIME** | 2026-05-18 → 2026-08-24 (+98d) | 2026-09-15 → 2026-09-21 (+6d) |  |  |  |
| DAM3-P-ST-E-190 | Main distribution board (MDB) | 2026-07-14 A → 2026-08-24 A (+41d) | 2026-07-14 A → 2026-08-24 A (+41d) |  |  |  |
| DAM3-P-ST-E-200 | Suspended High Bay LED lights | 2026-05-18 A → 2026-08-29 A (+103d) | 2026-05-18 A → 2026-08-29 A (+103d) |  | DAM3-P-DL-E-200, DAM3-P-ST-E-190 → DAM3-P-DL-E-200, DAM3-E-ST-E-190, DAM3-P-ST-E-190 |  |
| DAM3-P-ST-E-210 | Flood lights | 2026-05-18 A → 2026-08-29 A (+103d) | 2026-05-18 A → 2026-08-29 A (+103d) |  | DAM3-P-DL-E-210 → DAM3-P-DL-E-210, DAM3-E-ST-E-200 |  |
| DAM3-P-ST-E-220 | Recessed mounted LED downlight | 2026-05-18 A → 2026-08-29 A (+103d) | 2026-05-18 A → 2026-08-29 A (+103d) |  | DAM3-P-DL-E-220, DAM3-P-ST-E-200, DAM3-E-ST-E-200, DAM3-E-ST-E-190, DAM3-P-ST-E-190 → DAM3-P-DL-E-220 |  |
| DAM3-P-ST-E-230 | LED Emergency Lights wall mounted | 2026-05-18 A → 2026-08-29 A (+103d) | 2026-05-18 A → 2026-08-29 A (+103d) |  |  |  |
| DAM3-P-ST-E-240 | LED Emergency Exit Light | 2026-05-18 A → 2026-08-29 A (+103d) | 2026-05-18 A → 2026-08-29 A (+103d) |  | DAM3-P-DL-E-240 → DAM3-P-DL-E-240, DAM3-P-ST-E-220 |  |
| DAM3-P-ST-E-280 | Surface mounted lights | 2026-05-18 A → 2026-08-29 A (+103d) | 2026-05-18 A → 2026-08-29 A (+103d) |  | DAM3-P-DL-E-280 → DAM3-P-DL-E-280, DAM3-P-ST-E-260 |  |
| DAM3-E-ST-E-190 | Lighting panel board | 2026-07-14 A → 2026-09-01 A (+49d) | 2026-07-14 A → 2026-09-21 A (+69d) |  |  |  |
| DAM3-E-ST-E-200 | PP-AC panel | 2026-07-14 A → 2026-09-01 A (+49d) | 2026-07-14 A → 2026-09-21 A (+69d) |  |  |  |

| ID | Task | Start | Finish | Duration | Predecessors | Other |
| --- | --- | --- | --- | --- | --- | --- |
| DAM3-P-ST-E-250 | Fire alarm system | 2026-05-24 A → 2026-09-02 A (+101d) | 2026-05-24 A → 2026-09-21 A (+120d) |  |  |  |
| DAM3-E-ST-E-0230 | CCTV System | 2026-09-15 A → 2026-09-06 A (-9d) | 2026-09-15 A → 2026-09-21 A (+6d) |  |  |  |
| DAM3-E-ST-E-0260 | Main program system & controller | 2026-07-16 A → 2026-09-06 A (+52d) | 2026-07-16 A → 2026-09-21 A (+67d) |  |  |  |
| DAM3-E-ST-E-0270 | PLC controller | 2026-07-16 A → 2026-09-07 A (+53d) | 2026-07-16 A → 2026-09-21 A (+67d) |  |  |  |
| DAM3-E-ST-E-0250 | Solar system | 2026-07-05 A → 2026-09-09 A (+66d) | 2026-07-05 A → 2026-09-21 A (+78d) |  |  |  |
| DAM3-E-ST-E-0240 | Access control system | 2026-09-15 A → 2026-09-19 A (+4d) | 2026-09-15 A → 2026-09-21 A (+6d) |  |  |  |
| DAM3-P-ST-E-260 | Street Lighting poles | 2026-07-21 A → 2026-09-19 A (+60d) | 2026-07-21 A → 2026-09-21 A (+62d) |  | DAM3-P-DL-E-260, DAM3-P-ST-E-240, DAM3-P-ST-E-230, DAM3-P-ST-E-220, DAM3-P-ST-E-210 → DAM3-P-DL-E-260 |  |
| DAM3-P-ST-E-270 | Distribution board for pump room | 2026-07-14 A → 2026-09-19 A (+67d) | 2026-07-14 A → 2026-09-21 A (+69d) |  | DAM3-P-DL-E-270, DAM3-E-ST-E-0230 → DAM3-P-DL-E-270 |  |
| 2 | **MECHANICAL** | 2026-01-17 → 2026-03-01 (+43d) | 2026-08-09 → 2026-09-20 (+42d) |  |  |  |
| 1 | **PO ISSUE** | 2026-01-17 → 2026-03-01 (+43d) | 2026-06-28 → 2026-03-01 (-119d) |  |  |  |
| DAM3-P-PO-M-340 | Seamless black steel or ERW pipes | 2026-01-29 A → 2026-03-01 A (+31d) | 2026-01-29 A → 2026-03-01 A (+31d) |  |  | resources Purchaser [40 h] → Purchaser [80 h] |
| DAM3-P-PO-M-350 | Fire hose cabinet | 2026-01-29 A → 2026-03-01 A (+31d) | 2026-01-29 A → 2026-03-01 A (+31d) |  |  | resources Purchaser [40 h] → Purchaser [80 h] |
| DAM3-P-PO-M-360 | Western water closet | 2026-06-28 A → 2026-03-01 A (-119d) | 2026-06-28 A → 2026-03-01 A (-119d) |  |  | resources Purchaser [40 h] → Purchaser [16 h] |
| DAM3-P-PO-M-370 | Wall propeller type exhaust fans | 2026-02-11 A → 2026-03-01 A (+18d) | 2026-02-11 A → 2026-03-01 A (+18d) |  |  |  |
| DAM3-P-PO-M-380 | Fire pumps | 2026-01-29 A → 2026-03-01 A (+31d) | 2026-01-29 A → 2026-03-01 A (+31d) |  |  |  |
| DAM3-P-PO-M-400 | Booster pump | 2026-02-12 A → 2026-03-01 A (+17d) | 2026-02-12 A → 2026-03-01 A (+17d) |  |  |  |
| DAM3-P-PO-M-410 | GRP tank | 2026-01-17 A → 2026-03-01 A (+43d) | 2026-01-17 A → 2026-03-01 A (+43d) | 7d → 5d |  |  |
| 2 | **MANUFACTURING** | 2026-01-17 → 2026-03-02 (+44d) | 2026-08-08 → 2026-09-19 (+42d) |  |  |  |
| DAM3-P-MF-M-340 | Seamless black steel or ERW pipes | 2026-01-29 A → 2026-03-02 A (+32d) | 2026-05-13 A → 2026-06-29 A (+47d) | 141.12d → 120d |  | resources Loading workers → Loading workers [240 h] |
| DAM3-P-MF-M-350 | Fire hose cabinet | 2026-01-29 A → 2026-03-02 A (+32d) | 2026-06-01 A → 2026-09-19 A (+110d) | 121.12d → 120d |  | resources Loading workers → Loading workers [32 h] |
| DAM3-P-MF-M-360 | Western water closet | 2026-06-28 A → 2026-03-02 A (-118d) | 2026-07-25 A → 2026-09-19 A (+56d) | 30d → 150d |  | resources Loading workers → Loading workers [80 h] |
| DAM3-P-MF-M-370 | Wall propeller type exhaust fans | 2026-02-11 A → 2026-03-02 A (+19d) | 2026-06-27 A → 2026-08-09 A (+43d) | 80d → 100d |  | resources Loading workers → Loading workers [480 h] |
| DAM3-P-MF-M-380 | Fire pumps | 2026-01-29 A → 2026-03-02 A (+32d) | 2026-08-08 A → 2026-09-17 A (+40d) | 100d → 120d |  | resources Loading workers → Loading workers [480 h] |
| DAM3-P-MF-M-400 | Booster pump | 2026-02-12 A → 2026-03-02 A (+18d) | 2026-08-08 A → 2026-09-06 A (+29d) | 80d → 110d |  | resources Loading workers → Loading workers [480 h] |
| DAM3-P-MF-M-410 | GRP tank | 2026-01-17 A → 2026-03-02 A (+44d) | 2026-04-19 A → 2026-08-25 A (+128d) | 102d → 100d |  | resources Loading workers → Loading workers [480 h] |
| 4 | **DELIVERY TO SITE** | 2026-04-20 → 2026-07-01 (+72d) | 2026-08-09 → 2026-09-20 (+42d) |  |  |  |
| DAM3-P-DL-M-340 | Seamless black steel or ERW pipes | 2026-05-13 A → 2026-07-01 A (+49d) | 2026-05-13 A → 2026-08-11 A (+90d) |  |  | resources Unloading workers [224 h]; Construction Cost [147528] → Unloading workers [112 h]; Construction Cost [237714] |
| DAM3-P-DL-M-370 | Wall propeller type exhaust fans | 2026-06-27 A → 2026-08-10 A (+44d) | 2026-06-27 A → 2026-09-20 A (+85d) |  |  | resources Unloading workers [224 h]; Construction Cost [42525] → Unloading workers [720 h]; Construction Cost [153776] |
| DAM3-P-DL-M-410 | GRP tank | 2026-04-20 A → 2026-08-29 A (+131d) | 2026-04-20 A → 2026-08-31 A (+133d) |  |  | resources Unloading workers [224 h]; Construction Cost [165240] → Unloading workers [720 h]; Construction Cost [209853] |
| DAM3-P-DL-M-400 | Booster pump | 2026-08-09 A → 2026-09-07 A (+29d) | 2026-08-09 A → 2026-09-07 A (+29d) |  |  | resources Unloading workers [336 h]; Construction Cost [17010] → Unloading workers [1440 h]; Construction Cost [12924.5] |
| DAM3-P-DL-M-350 | Fire hose cabinet | 2026-06-02 A → 2026-09-19 A (+109d) | 2026-06-02 A → 2026-09-20 A (+110d) |  |  | resources Unloading workers [224 h]; Construction Cost [27216] → Unloading workers [112 h]; Construction Cost [49774.4] |
| DAM3-P-DL-M-360 | Western water closet | 2026-07-25 A → 2026-09-19 A (+56d) | 2026-07-25 A → 2026-09-20 A (+57d) |  | DAM3-P-MF-M-360, DAM3-P-ST-E-280, DAM3-P-ST-E-270 → DAM3-P-MF-M-360 | resources Unloading workers [336 h]; Construction Cost [39657.6] → Unloading workers [1440 h]; Construction Cost [65414.6] |
| DAM3-P-DL-M-380 | Fire pumps | 2026-08-09 A → 2026-09-20 A (+42d) | 2026-08-09 A → 2026-09-20 A (+42d) |  |  | resources Unloading workers [336 h]; Construction Cost [145800] → Unloading workers [1440 h]; Construction Cost [103369] |
| 5 | **STAGING TIME** | 2026-04-20 → 2026-07-01 (+72d) | 2026-08-09 → 2026-09-20 (+42d) |  |  |  |
| DAM3-P-ST-M-340 | Seamless black steel or ERW pipes | 2026-05-13 A → 2026-07-01 A (+49d) | 2026-05-13 A → 2026-08-11 A (+90d) |  |  |  |
| DAM3-P-ST-M-370 | Wall propeller type exhaust fans | 2026-06-27 A → 2026-08-10 A (+44d) | 2026-06-27 A → 2026-09-20 A (+85d) |  | DAM3-P-DL-M-370 → DAM3-P-DL-M-370, DAM3-P-ST-M-350 |  |
| DAM3-P-ST-M-410 | GRP tank | 2026-04-20 A → 2026-08-29 A (+131d) | 2026-04-20 A → 2026-08-31 A (+133d) |  |  |  |
| DAM3-P-ST-M-400 | Booster pump | 2026-08-09 A → 2026-09-07 A (+29d) | 2026-08-09 A → 2026-09-07 A (+29d) |  | DAM3-P-DL-M-400, DAM3-P-ST-M-370 → DAM3-P-DL-M-400 |  |
| DAM3-P-ST-M-350 | Fire hose cabinet | 2026-06-02 A → 2026-09-19 A (+109d) | 2026-06-02 A → 2026-09-20 A (+110d) |  | DAM3-P-DL-M-350 → DAM3-P-DL-M-350, DAM3-P-ST-M-340 |  |
| DAM3-P-ST-M-360 | Western water closet | 2026-07-25 A → 2026-09-19 A (+56d) | 2026-07-25 A → 2026-09-20 A (+57d) |  | DAM3-P-DL-M-360, DAM3-P-ST-M-380, DAM3-P-ST-M-400 → DAM3-P-DL-M-360 |  |
| DAM3-P-ST-M-380 | Fire pumps | 2026-08-09 A → 2026-09-20 A (+42d) | 2026-08-09 A → 2026-09-20 A (+42d) |  | DAM3-P-DL-M-380 → DAM3-P-DL-M-380, DAM3-P-ST-M-410 |  |
| 1 | **SHORT LEAD MATERIALS** | 2025-12-15 → 2026-01-14 (+30d) | 2026-10-15 → 2026-09-21 (-24d) |  |  |  |
| 6 | **STRUCTURAL** | 2025-12-24 → 2026-01-20 (+27d) | 2026-02-21 → 2026-04-29 (+67d) |  |  |  |
| 1 | **PO ISSUE** | 2025-12-24 → 2026-01-20 (+27d) | 2026-01-20 → 2026-03-25 (+64d) |  |  |  |
| DAM3-P-PO-C-60 | Concrete mix | 2025-12-24 A → 2026-01-20 A (+27d) | 2025-12-24 A → 2026-01-20 A (+27d) |  |  |  |
| DAM3-P-PO-C-90 | Rebar | 2026-01-17 A → 2026-02-01 A (+15d) | 2026-01-17 A → 2026-02-01 A (+15d) |  |  |  |
| DAM3-P-PO-C-70 | Polyethylene sheet | 2026-01-03 A → 2026-03-01 A (+57d) | 2026-01-03 A → 2026-03-01 A (+57d) |  |  |  |
| DAM3-P-PO-C-80 | Bitumen paint | 2026-01-20 A → 2026-03-09 A (+48d) | 2026-01-20 A → 2026-03-09 A (+48d) |  |  |  |
| DAM3-P-PO-C-50 | Anti termite | 2026-01-06 A → 2026-03-25 A (+78d) | 2026-01-06 A → 2026-03-25 A (+78d) |  |  |  |
| 4 | **MANUFACTURING** | 2025-12-25 → 2026-01-21 (+27d) | 2026-02-18 → 2026-04-07 (+48d) |  |  |  |
| DAM3-P-MF-C-60 | Concrete mix | 2025-12-25 A → 2026-01-21 A (+27d) | 2026-02-18 A → 2026-02-01 A (-17d) | 2d → 17d |  | resources Loading workers → Loading workers [32 h] |
| DAM3-P-MF-C-90 | Rebar | 2026-01-18 A → 2026-02-02 A (+15d) | 2026-02-18 A → 2026-02-15 A (-3d) | 2d → 7d |  | resources Loading workers → Loading workers [32 h] |
| DAM3-P-MF-C-70 | Polyethylene sheet | 2026-01-04 A → 2026-03-02 A (+57d) | 2026-02-05 A → 2026-03-10 A (+33d) | 2d → 10d |  | resources Loading workers → Loading workers [32 h] |
| DAM3-P-MF-C-80 | Bitumen paint | 2026-01-21 A → 2026-03-10 A (+48d) | 2026-01-27 A → 2026-04-07 A (+70d) | 2d → 10d |  | resources Loading workers → Loading workers [32 h] |
| DAM3-P-MF-C-50 | Anti termite | 2026-01-07 A → 2026-03-26 A (+78d) | 2026-02-18 A → 2026-04-07 A (+48d) | 2d → 12d |  | resources Loading workers → Loading workers [32 h] |
| 2 | **DELIVERY** | 2026-01-05 → 2026-03-12 (+66d) | 2026-02-21 → 2026-04-29 (+67d) |  |  |  |
| DAM3-P-DL-C-50 | Anti termite | 2026-01-11 A → 2026-03-12 A (+60d) | 2026-02-19 A → 2026-04-29 A (+69d) |  |  | resources Unloading workers [32 h]; Construction Cost [61831.3] → Unloading workers [32 h]; Construction Cost [130310] |
| DAM3-P-DL-C-60 | Concrete mix -1 | 2026-01-11 A → 2026-03-12 A (+60d) | 2026-02-07 A → 2026-04-14 A (+66d) |  |  | resources Unloading workers [32 h]; Construction Cost [198747] → Unloading workers [16 h]; Construction Cost [196863] |
| DAM3-P-DL-C-70 | Polyethylene sheet | 2026-01-05 A → 2026-03-12 A (+66d) | 2026-02-07 A → 2026-04-29 A (+81d) |  |  | resources Unloading workers [32 h]; Construction Cost [44165.2] → Unloading workers [32 h]; Construction Cost [86906.6] |
| DAM3-P-DL-C-80 | Bitumen paint | 2026-01-28 A → 2026-03-31 A (+62d) | 2026-01-28 A → 2026-04-29 A (+91d) |  |  | resources Unloading workers [32 h]; Construction Cost [40562.8] → Unloading workers [32 h]; Construction Cost [192961] |
| DAM3-P-DL-C-90 | Rebar-1 | 2026-01-18 A → 2026-03-31 A (+72d) | 2026-02-07 A → 2026-04-29 A (+81d) |  |  | resources Unloading workers [32 h]; Construction Cost [248121] → Unloading workers [32 h]; Construction Cost [218896] |
| DAM3-P-DL-C-100 | Concrete mix -2 | 2026-02-10 A → 2026-04-16 A (+65d) | 2026-02-10 A → 2026-04-29 A (+78d) |  | DAM3-P-DL-C-60, DAM3-P-PO-E-190 → DAM3-P-DL-C-60 FS+14d, DAM3-P-ST-C-90, DAM3-C-B5-S-1257 | resources Unloading workers [32 h]; Construction Cost [250000] → Unloading workers [32 h]; Construction Cost [740741] |
| DAM3-P-DL-C-110 | Concrete mix -3 | 2026-02-19 A → 2026-04-16 A (+56d) | 2026-02-21 A → 2026-04-29 A (+67d) |  | DAM3-P-DL-C-100 → DAM3-P-DL-C-100, DAM3-E-PO-A-1760 | resources Unloading workers [32 h]; Construction Cost [250000] → Unloading workers [32 h]; Construction Cost [740741] |
| DAM3-P-DL-C-120 | Rebar-2 | 2026-02-07 A → 2026-04-16 A (+68d) | 2026-02-08 A → 2026-04-29 A (+80d) |  | DAM3-P-DL-C-90, DAM3-P-DL-C-100 → DAM3-P-DL-C-90, DAM3-C-B5-S-1257 | resources Unloading workers [32 h]; Construction Cost [400000] → Unloading workers [32 h]; Construction Cost [450000] |
| DAM3-P-DL-C-130 | Rebar-3 | 2026-02-10 A → 2026-04-16 A (+65d) | 2026-02-21 A → 2026-04-29 A (+67d) |  |  | resources Unloading workers [32 h]; Construction Cost [400000] → Unloading workers [32 h]; Construction Cost [450000] |
| 3 | **STAGING TIME** | 2026-01-05 → 2026-03-12 (+66d) | 2026-02-21 → 2026-04-29 (+67d) |  |  |  |
| DAM3-P-ST-C-50 | Anti termite | 2026-01-11 A → 2026-03-12 A (+60d) | 2026-02-19 A → 2026-04-29 A (+69d) |  |  |  |
| DAM3-P-ST-C-60 | Concrete mix | 2026-01-11 A → 2026-03-12 A (+60d) | 2026-02-21 A → 2026-04-29 A (+67d) |  |  |  |
| DAM3-P-ST-C-70 | Polyethylene sheet | 2026-01-05 A → 2026-03-12 A (+66d) | 2026-02-07 A → 2026-04-29 A (+81d) |  |  |  |
| DAM3-P-ST-C-80 | Bitumen paint | 2026-01-28 A → 2026-03-31 A (+62d) | 2026-01-28 A → 2026-04-29 A (+91d) |  |  |  |

| ID | Task | Start | Finish | Duration | Predecessors | Other |
| --- | --- | --- | --- | --- | --- | --- |
| DAM3-P-ST-C-90 | Rebar | 2026-01-18 A → 2026-03-31 A (+72d) | 2026-02-21 A → 2026-04-29 A (+67d) |  |  |  |
| 1 | **ARCHITECTURAL** | 2025-12-15 → 2026-01-14 (+30d) | 2026-10-01 → 2026-09-20 (-11d) |  |  |  |
| 1 | **PO ISSUE** | 2025-12-15 → 2026-01-14 (+30d) | 2026-09-22 → 2026-05-24 (-121d) |  |  |  |
| DAM3-P-PO-A-210 | Steel ladder | 2025-12-15 A → 2026-01-14 A (+30d) | 2025-12-15 A → 2026-01-18 A (+34d) |  |  | resources Purchaser [40 h] → Purchaser [80 h] |
| DAM3-P-PO-A-220 | Steel gratings | 2026-06-04 A → 2026-04-02 A (-63d) | 2026-06-04 A → 2026-04-02 A (-63d) | 4.12d → 5d |  | resources Purchaser [40 h] → Purchaser [80 h] |
| DAM3-E-PO-A-1720 | Aluminum Composite Panel | 2026-02-05 A → 2026-04-05 A (+59d) | 2026-02-05 A → 2026-04-05 A (+59d) |  |  | resources Purchaser [40 h] → Purchaser [16 h] |
| DAM3-E-PO-A-1750 | Steel fence and gates | 2026-09-22 A → 2026-04-05 A (-170d) | 2026-09-22 A → 2026-04-05 A (-170d) |  |  | resources Purchaser [40 h] → Purchaser [16 h] |
| DAM3-E-PO-A-1760 | Identification sign; ID01 & ID02 | 2026-09-22 A → 2026-04-05 A (-170d) | 2026-09-22 A → 2026-04-05 A (-170d) |  | DAM3-E-MA-A-1760, DAM3-E-MA-A-1760 FF, DAM3-E-PO-A-1750, DAM3-P-DL-C-130, DAM3-P-DL-C-110 → DAM3-E-MA-A-1760, DAM3-E-MA-A-1760 FF, DAM3-E-PO-A-1750 | resources Purchaser [40 h] → Purchaser [16 h] |
| DAM3-P-PO-A-200 | Concrete masonry unit (CMU) | 2026-05-18 A → 2026-04-05 A (-43d) | 2026-05-18 A → 2026-04-05 A (-43d) |  |  | resources Purchaser [40 h] → Purchaser [80 h] |
| DAM3-P-PO-A-320 | Internl paint | 2026-06-22 A → 2026-04-05 A (-78d) | 2026-06-22 A → 2026-04-05 A (-78d) |  |  | resources Purchaser [40 h] → Purchaser [16 h] |
| DAM3-P-PO-A-330 | Gypsum board | 2026-08-13 A → 2026-04-05 A (-130d) | 2026-08-13 A → 2026-04-05 A (-130d) |  |  | resources Purchaser [40 h] → Purchaser [16 h] |
| DAM3-P-PO-A-280 | Ceramic tiles | 2026-06-22 A → 2026-04-07 A (-76d) | 2026-06-22 A → 2026-04-07 A (-76d) |  |  | resources Purchaser [40 h] → Purchaser [80 h] |
| DAM3-P-PO-A-290 | Granite strip | 2026-06-22 A → 2026-05-12 A (-41d) | 2026-06-22 A → 2026-05-12 A (-41d) |  |  | resources Purchaser [80 h] → Purchaser [16 h] |
| DAM3-P-PO-A-230 | Steel rails | 2025-12-15 A → 2026-05-24 A (+160d) | 2025-12-15 A → 2026-05-24 A (+160d) |  |  | resources Purchaser [40 h] → Purchaser [16 h] |
| DAM3-P-PO-A-310 | Epoxy paint | 2026-06-22 A → 2026-05-24 A (-29d) | 2026-06-22 A → 2026-05-24 A (-29d) |  |  | resources Purchaser [40 h] → Purchaser [16 h] |
| 4 | **MANUFACTURING** | 2025-12-15 → 2026-01-14 (+30d) | 2026-10-01 → 2026-09-19 (-12d) |  |  |  |
| DAM3-P-MF-A-210 | Steel ladder | 2025-12-15 A → 2026-01-14 A (+30d) | 2026-05-21 A → 2026-07-22 A (+62d) | 81.12d → 80d |  | resources Loading workers → Loading workers [240 h] |
| DAM3-E-MF-A-1720 | Aluminum Composite Panel | 2026-02-05 A → 2026-04-06 A (+60d) | 2026-07-11 A → 2026-09-19 A (+70d) | 20d → 80d |  | resources Purchaser → Purchaser [40 h] |
| DAM3-E-MF-A-1750 | Steel fence and gates | 2026-09-22 A → 2026-04-06 A (-169d) | 2026-10-01 A → 2026-09-19 A (-12d) | 5d → 80d |  | resources Purchaser → Purchaser [40 h] |
| DAM3-E-MF-A-1760 | Identification sign; ID01 & ID02 | 2026-09-22 A → 2026-04-06 A (-169d) | 2026-10-01 A → 2026-09-19 A (-12d) | 5d → 80d |  | resources Purchaser → Purchaser [40 h] |
| DAM3-P-MF-A-200 | Concrete masonry unit (CMU) | 2026-05-18 A → 2026-04-06 A (-42d) | 2026-05-20 A → 2026-06-08 A (+19d) | 71.12d → 50d |  | resources Loading workers → Loading workers [240 h] |
| DAM3-P-MF-A-220 | Steel gratings | 2026-06-04 A → 2026-04-06 A (-59d) | 2026-09-14 A → 2026-07-02 A (-74d) | 20d → 80d |  | resources Loading workers → Loading workers [40 h] |
| DAM3-P-MF-A-230 | Steel rails | 2025-12-15 A → 2026-04-06 A (+112d) | 2026-05-21 A → 2026-07-02 A (+42d) |  |  | resources Loading workers → Loading workers [40 h] |
| DAM3-P-MF-A-280 | Ceramic tiles | 2026-06-22 A → 2026-04-06 A (-77d) | 2026-06-24 A → 2026-06-09 A (-15d) | 20d → 80d |  | resources Loading workers → Loading workers [40 h] |
| DAM3-P-MF-A-290 | Granite strip | 2026-06-22 A → 2026-04-06 A (-77d) | 2026-06-24 A → 2026-09-19 A (+87d) | 20d → 80d |  | resources Loading workers → Loading workers [40 h] |
| DAM3-P-MF-A-310 | Epoxy paint | 2026-06-27 A → 2026-04-06 A (-82d) | 2026-07-18 A → 2026-07-20 A (+2d) | 20d → 80d |  | resources Loading workers → Loading workers [40 h] |
| DAM3-P-MF-A-320 | Internl paint | 2026-06-27 A → 2026-04-06 A (-82d) | 2026-07-18 A → 2026-09-19 A (+63d) | 20d → 80d |  | resources Loading workers → Loading workers [40 h] |
| DAM3-P-MF-A-330 | Gypsum board | 2026-08-13 A → 2026-04-06 A (-129d) | 2026-08-16 A → 2026-09-19 A (+34d) | 10d → 80d |  | resources Loading workers → Loading workers [40 h] |
| 2 | **DELIVERY** | 2026-05-21 → 2026-06-10 (+20d) | 2026-10-01 → 2026-09-20 (-11d) |  |  |  |
| DAM3-P-DL-A-200 | Concrete masonry unit (CMU) | 2026-05-21 A → 2026-06-10 A (+20d) | 2026-05-21 A → 2026-06-14 A (+24d) |  |  | resources Unloading workers [896 h]; Construction Cost [141523] → Unloading workers [112 h]; Construction Cost [418802] |
| DAM3-P-DL-A-280 | Ceramic tiles | 2026-06-24 A → 2026-06-11 A (-13d) | 2026-06-24 A → 2026-06-15 A (-9d) |  |  | resources Unloading workers [224 h]; Construction Cost [161978] → Unloading workers [112 h]; Construction Cost [241008] |
| DAM3-P-DL-A-220 | Steel gratings | 2026-09-15 A → 2026-07-05 A (-72d) | 2026-09-15 A → 2026-07-05 A (-72d) |  |  | resources Unloading workers [224 h]; Construction Cost [13705.2] → Unloading workers [112 h]; Construction Cost [21196] |
| DAM3-P-DL-A-310 | Epoxy paint | 2026-07-18 A → 2026-07-23 A (+5d) | 2026-07-18 A → 2026-07-25 A (+7d) |  |  | resources Unloading workers [224 h]; Construction Cost [225261] → Unloading workers [112 h]; Construction Cost [378990] |
| DAM3-P-DL-A-210 | Steel ladder | 2026-05-21 A → 2026-07-28 A (+68d) | 2026-05-21 A → 2026-07-28 A (+68d) |  |  | resources Unloading workers [112 h]; Construction Cost [20898] → Unloading workers [112 h]; Construction Cost [32307.7] |
| DAM3-P-DL-A-230 | Steel rails | 2026-05-21 A → 2026-07-28 A (+68d) | 2026-05-21 A → 2026-07-28 A (+68d) |  |  | resources Unloading workers [224 h]; Construction Cost [16475.4] → Unloading workers [112 h]; Construction Cost [5036.93] |
| DAM3-P-DL-A-320 | Internl paint | 2026-07-18 A → 2026-09-02 A (+46d) | 2026-07-18 A → 2026-09-20 A (+64d) |  |  | resources Unloading workers [224 h]; Construction Cost [58556.9] → Unloading workers [112 h]; Construction Cost [145027] |
| DAM3-P-DL-A-1720 | Aluminum Composite Panel | 2026-07-05 A → 2026-09-07 A (+64d) | 2026-07-11 A → 2026-09-20 A (+71d) |  |  | resources Purchaser [224 h]; Construction Cost [386006] → Purchaser [112 h]; Construction Cost [577545] |
| DAM3-P-DL-A-330 | Gypsum board | 2026-08-16 A → 2026-09-14 A (+29d) | 2026-08-16 A → 2026-09-20 A (+35d) |  |  | resources Unloading workers [224 h]; Construction Cost [98111.2] → Unloading workers [112 h]; Construction Cost [153646] |
| DAM3-P-DL-A-1750 | Steel fence and gates | 2026-10-01 A → 2026-09-20 A (-11d) | 2026-10-01 A → 2026-09-20 A (-11d) |  |  | resources Purchaser [224 h]; Construction Cost [4945.05] → Purchaser [112 h]; Construction Cost [23657.4] |
| DAM3-P-DL-A-1760 | Identification sign; ID01 & ID02 | 2026-10-01 A → 2026-09-20 A (-11d) | 2026-10-01 A → 2026-09-20 A (-11d) | 1d → 7d |  | resources Purchaser [224 h]; Construction Cost [20412] → Purchaser [112 h]; Construction Cost [31622.7] |
| DAM3-P-DL-A-290 | Granite strip | 2026-06-24 A → 2026-09-20 A (+88d) | 2026-06-24 A → 2026-09-20 A (+88d) |  |  | resources Unloading workers [224 h]; Construction Cost [3195.45] → Unloading workers [112 h]; Construction Cost [2203.66] |
| 3 | **STAGING TIME** | 2026-05-21 → 2026-06-15 (+25d) | 2026-10-01 → 2026-09-20 (-11d) |  |  |  |
| DAM3-P-ST-A-200 | Concrete masonry unit (CMU) | 2026-05-21 A → 2026-06-15 A (+25d) | 2026-05-21 A → 2026-06-15 A (+25d) |  |  |  |
| DAM3-P-ST-A-280 | Ceramic tiles | 2026-06-24 A → 2026-06-15 A (-9d) | 2026-06-24 A → 2026-06-15 A (-9d) |  |  |  |
| DAM3-P-ST-A-220 | Steel gratings | 2026-09-15 A → 2026-07-05 A (-72d) | 2026-09-15 A → 2026-07-05 A (-72d) | 1d → 7d |  |  |
| DAM3-P-ST-A-310 | Epoxy paint | 2026-07-18 A → 2026-07-23 A (+5d) | 2026-07-18 A → 2026-07-25 A (+7d) |  | DAM3-P-DL-A-310, DAM3-P-ST-A-210 → DAM3-P-DL-A-310 |  |
| DAM3-P-ST-A-210 | Steel ladder | 2026-05-21 A → 2026-07-28 A (+68d) | 2026-05-21 A → 2026-07-28 A (+68d) |  | DAM3-P-DL-A-210 → DAM3-P-DL-A-210, DAM3-P-ST-A-200 |  |
| DAM3-P-ST-A-230 | Steel rails | 2026-05-21 A → 2026-07-28 A (+68d) | 2026-05-21 A → 2026-07-28 A (+68d) |  |  |  |
| DAM3-P-ST-A-320 | Internl paint | 2026-07-18 A → 2026-09-02 A (+46d) | 2026-07-18 A → 2026-09-20 A (+64d) |  |  |  |
| DAM3-E-ST-A-1720 | Aluminum Composite Panel | 2026-07-05 A → 2026-09-07 A (+64d) | 2026-07-11 A → 2026-09-20 A (+71d) |  |  |  |
| DAM3-P-ST-A-330 | Gypsum board | 2026-08-16 A → 2026-09-14 A (+29d) | 2026-08-16 A → 2026-09-20 A (+35d) |  | DAM3-P-DL-A-330, DAM3-P-ST-A-290, DAM3-P-ST-A-230, DAM3-P-ST-A-220 → DAM3-P-DL-A-330, DAM3-P-ST-A-230 |  |
| DAM3-E-ST-A-1750 | Steel fence and gates | 2026-10-01 A → 2026-09-20 A (-11d) | 2026-10-01 A → 2026-09-20 A (-11d) | 1d → 7d | DAM3-P-DL-A-1750 → DAM3-P-DL-A-1750, DAM3-P-ST-A-280 |  |
| DAM3-E-ST-A-1760 | Identification sign; ID01 & ID02 | 2026-10-01 A → 2026-09-20 A (-11d) | 2026-10-01 A → 2026-09-20 A (-11d) | 1d → 7d | DAM3-P-DL-A-1760, DAM3-P-ST-A-320, DAM3-P-ST-A-310, DAM3-P-ST-A-280 → DAM3-P-DL-A-1760, DAM3-P-ST-A-290, DAM3-P-ST-A-310 |  |
| DAM3-P-ST-A-290 | Granite strip | 2026-06-24 A → 2026-09-20 A (+88d) | 2026-06-24 A → 2026-09-20 A (+88d) |  |  |  |
| 2 | **MECHANICAL** | 2026-01-29 → 2026-04-05 (+66d) | 2026-09-15 → 2026-09-20 (+5d) |  |  |  |
| 1 | **PO ISSUE** | 2026-01-29 → 2026-04-05 (+66d) | 2026-06-28 → 2026-04-26 (-63d) |  |  |  |
| DAM3-P-PO-M-600 | HVAC duct | 2026-06-13 A → 2026-04-05 A (-69d) | 2026-06-13 A → 2026-04-05 A (-69d) |  |  | resources Purchaser [40 h] → Purchaser [80 h] |
| DAM3-E-PO-M-3410 | Water tap | 2026-06-28 A → 2026-04-26 A (-63d) | 2026-06-28 A → 2026-04-26 A (-63d) |  |  |  |
| DAM3-P-PO-M-390 | Fire fighting valves | 2026-01-29 A → 2026-04-26 A (+87d) | 2026-01-29 A → 2026-04-26 A (+87d) |  |  | resources Purchaser [640 h] → Purchaser [80 h] |
| DAM3-P-PO-M-420 | Water supply valves | 2026-05-02 A → 2026-04-26 A (-6d) | 2026-05-02 A → 2026-04-26 A (-6d) | 4.25d → 5d |  |  |
| DAM3-P-PO-M-430 | U/G HDPE pipes | 2026-02-24 A → 2026-04-26 A (+61d) | 2026-02-24 A → 2026-04-26 A (+61d) |  |  | resources Purchaser [40 h] → Purchaser [16 h] |
| DAM3-P-PO-M-440 | Automatic air release valve | 2026-01-29 A → 2026-04-26 A (+87d) | 2026-01-29 A → 2026-04-26 A (+87d) |  |  | resources Purchaser [40 h] → Purchaser [16 h] |
| DAM3-P-PO-M-450 | OS & Y gate valve | 2026-01-29 A → 2026-04-26 A (+87d) | 2026-01-29 A → 2026-04-26 A (+87d) |  |  | resources Purchaser [4.44 h] → Purchaser [16 h] |
| DAM3-P-PO-M-460 | Fire alarm check valve | 2026-01-29 A → 2026-04-26 A (+87d) | 2026-01-29 A → 2026-04-26 A (+87d) |  |  |  |
| DAM3-P-PO-M-480 | PPR pipes | 2026-05-02 A → 2026-04-26 A (-6d) | 2026-05-02 A → 2026-04-26 A (-6d) |  |  | resources Purchaser [40 h] → Purchaser [80 h] |
| DAM3-P-PO-M-490 | Ball valve | 2026-06-28 A → 2026-04-26 A (-63d) | 2026-06-28 A → 2026-04-26 A (-63d) |  |  | resources Purchaser [40 h] → Purchaser [16 h] |
| DAM3-P-PO-M-500 | Capped connection | 2026-06-28 A → 2026-04-26 A (-63d) | 2026-06-28 A → 2026-04-26 A (-63d) |  |  | resources Purchaser [40 h] → Purchaser [16 h] |
| DAM3-P-PO-M-520 | Roof vent caps | 2026-06-28 A → 2026-04-26 A (-63d) | 2026-06-28 A → 2026-04-26 A (-63d) |  | DAM3-E-MA-M-0120, DAM3-E-MS-M-0110 → DAM3-E-MA-M-0120, DAM3-P-PO-M-510 | resources Purchaser [40 h] → Purchaser [16 h] |
| DAM3-P-PO-M-530 | Floor drain | 2026-04-06 A → 2026-04-26 A (+20d) | 2026-04-06 A → 2026-04-26 A (+20d) |  |  |  |
| DAM3-P-PO-M-540 | Gully trap | 2026-02-24 A → 2026-04-26 A (+61d) | 2026-02-24 A → 2026-04-26 A (+61d) |  | DAM3-E-MA-M-0140, DAM3-P-PO-M-530 → DAM3-E-MA-M-0140, DAM3-P-PO-M-530, DAM3-P-PO-M-570 |  |

| ID | Task | Start | Finish | Duration | Predecessors | Other |
| --- | --- | --- | --- | --- | --- | --- |
| DAM3-P-PO-M-550 | Electric water heater | 2026-06-28 A → 2026-04-26 A (-63d) | 2026-06-28 A → 2026-04-26 A (-63d) |  |  |  |
| DAM3-P-PO-M-560 | Bib tap | 2026-06-28 A → 2026-04-26 A (-63d) | 2026-06-28 A → 2026-04-26 A (-63d) |  |  |  |
| DAM3-P-PO-M-570 | Toilet Fittings | 2026-06-28 A → 2026-04-26 A (-63d) | 2026-06-28 A → 2026-04-26 A (-63d) |  |  | resources Purchaser [40 h] → none |
| DAM3-P-PO-M-580 | Lavatory / wash basin | 2026-06-28 A → 2026-04-26 A (-63d) | 2026-06-28 A → 2026-04-26 A (-63d) |  |  |  |
| DAM3-P-PO-M-590 | Inline exhaust fans | 2026-02-11 A → 2026-04-26 A (+74d) | 2026-02-11 A → 2026-04-26 A (+74d) |  |  | resources Purchaser [640 h] → Purchaser [80 h] |
| DAM3-P-PO-M-610 | Flexible duct | 2026-06-13 A → 2026-04-26 A (-48d) | 2026-06-13 A → 2026-04-26 A (-48d) | 4.12d → 5d |  | resources Purchaser [40 h] → Purchaser [80 h] |
| DAM3-P-PO-M-620 | Exhaust diffuser | 2026-06-13 A → 2026-04-26 A (-48d) | 2026-06-13 A → 2026-04-26 A (-48d) |  |  | resources Purchaser [80 h] → Purchaser [16 h] |
| DAM3-P-PO-M-660 | Warning tapes | 2026-03-29 A → 2026-04-26 A (+28d) | 2026-03-29 A → 2026-04-26 A (+28d) |  |  | resources Purchaser [40 h] → Purchaser [16 h] |
| 4 | **MANUFACTURING** | 2026-01-29 → 2026-04-06 (+67d) | 2026-09-14 → 2026-09-19 (+5d) |  |  |  |
| DAM3-P-MF-M-600 | HVAC duct | 2026-06-13 A → 2026-04-06 A (-68d) | 2026-06-14 A → 2026-06-01 A (-13d) | 81.12d → 80d |  | resources Loading workers → Loading workers [240 h] |
| DAM3-E-MF-M-3410 | Water tap | 2026-08-02 A → 2026-04-27 A (-97d) | 2026-09-01 A → 2026-09-19 A (+18d) | 10d → 80d |  | resources Purchaser → Purchaser [80 h] |
| DAM3-P-MF-M-390 | Fire fighting valves | 2026-01-29 A → 2026-04-27 A (+88d) | 2026-06-13 A → 2026-08-09 A (+57d) |  |  | resources Loading workers → Loading workers [2880 h] |
| DAM3-P-MF-M-420 | Water supply valves | 2026-05-02 A → 2026-04-27 A (-5d) | 2026-06-13 A → 2026-08-02 A (+50d) | 81.12d → 80d |  | resources Loading workers → Loading workers [80 h] |
| DAM3-P-MF-M-430 | U/G HDPE pipes | 2026-02-24 A → 2026-04-27 A (+62d) | 2026-02-28 A → 2026-08-02 A (+155d) |  |  | resources Loading workers → Loading workers [40 h] |
| DAM3-P-MF-M-440 | Automatic air release valve | 2026-01-29 A → 2026-04-27 A (+88d) | 2026-06-13 A → 2026-09-19 A (+98d) | 20d → 80d |  | resources Loading workers → Loading workers [40 h] |
| DAM3-P-MF-M-450 | OS & Y gate valve | 2026-01-29 A → 2026-04-27 A (+88d) | 2026-06-13 A → 2026-09-19 A (+98d) | 20d → 80d |  | resources Loading workers → Loading workers [80 h] |
| DAM3-P-MF-M-460 | Fire alarm check valve | 2026-01-29 A → 2026-04-27 A (+88d) | 2026-06-13 A → 2026-09-19 A (+98d) | 20d → 80d |  | resources Loading workers → Loading workers [80 h] |
| DAM3-P-MF-M-480 | PPR pipes | 2026-05-02 A → 2026-04-27 A (-5d) | 2026-05-07 A → 2026-08-03 A (+88d) | 81.12d → 80d |  | resources Loading workers → Loading workers [240 h] |
| DAM3-P-MF-M-490 | Ball valve | 2026-06-28 A → 2026-04-27 A (-62d) | 2026-07-25 A → 2026-09-19 A (+56d) | 20d → 80d |  | resources Loading workers → Loading workers [40 h] |
| DAM3-P-MF-M-500 | Capped connection | 2026-08-08 A → 2026-04-27 A (-103d) | 2026-09-01 A → 2026-09-19 A (+18d) | 10d → 80d |  | resources Loading workers → Loading workers [40 h] |
| DAM3-P-MF-M-520 | Roof vent caps | 2026-06-28 A → 2026-04-27 A (-62d) | 2026-07-25 A → 2026-09-19 A (+56d) | 20d → 80d |  | resources Loading workers → Loading workers [80 h] |
| DAM3-P-MF-M-530 | Floor drain | 2026-04-06 A → 2026-04-27 A (+21d) | 2026-06-06 A → 2026-09-19 A (+105d) | 20d → 80d |  | resources Loading workers → Loading workers [80 h] |
| DAM3-P-MF-M-540 | Gully trap | 2026-02-24 A → 2026-04-27 A (+62d) | 2026-02-28 A → 2026-09-19 A (+203d) |  | DAM3-P-PO-M-540 → DAM3-P-PO-M-540, DAM3-P-MF-M-570 | resources Loading workers → Loading workers [80 h] |
| DAM3-P-MF-M-550 | Electric water heater | 2026-06-28 A → 2026-04-27 A (-62d) | 2026-07-25 A → 2026-09-13 A (+50d) | 20d → 120d |  | resources Loading workers → Loading workers [80 h] |
| DAM3-P-MF-M-560 | Bib tap | 2026-08-19 A → 2026-04-27 A (-114d) | 2026-09-14 A → 2026-09-19 A (+5d) | 10d → 80d |  | resources Loading workers → Loading workers [80 h] |
| DAM3-P-MF-M-570 | Toilet Fittings | 2026-06-28 A → 2026-04-27 A (-62d) | 2026-07-25 A → 2026-09-19 A (+56d) | 20d → 5d |  |  |
| DAM3-P-MF-M-580 | Lavatory / wash basin | 2026-06-28 A → 2026-04-27 A (-62d) | 2026-07-25 A → 2026-09-19 A (+56d) | 20d → 80d |  | resources Loading workers → Loading workers [240 h] |
| DAM3-P-MF-M-590 | Inline exhaust fans | 2026-02-11 A → 2026-04-27 A (+75d) | 2026-06-27 A → 2026-09-19 A (+84d) | 20d → 120d |  | resources Loading workers → Loading workers [2880 h] |
| DAM3-P-MF-M-610 | Flexible duct | 2026-06-13 A → 2026-04-27 A (-47d) | 2026-06-14 A → 2026-09-19 A (+97d) | 81.12d → 80d |  | resources Loading workers → Loading workers [40 h] |
| DAM3-P-MF-M-620 | Exhaust diffuser | 2026-06-13 A → 2026-04-27 A (-47d) | 2026-06-14 A → 2026-09-19 A (+97d) | 20d → 80d |  | resources Loading workers → Loading workers [40 h] |
| DAM3-P-MF-M-660 | Warning tapes | 2026-03-29 A → 2026-04-27 A (+29d) | 2026-07-23 A → 2026-09-19 A (+58d) | 20d → 80d |  | resources Loading workers → Loading workers [40 h] |
| 2 | **DELIVERY** | 2026-03-01 → 2026-05-10 (+70d) | 2026-09-15 → 2026-09-20 (+5d) |  |  |  |
| DAM3-P-DL-M-600 | HVAC duct | 2026-06-14 A → 2026-06-04 A (-10d) |  |  |  | resources Unloading workers [224 h]; Construction Cost [345424] → Unloading workers [112 h]; Construction Cost [490860] |
| DAM3-P-DL-M-420 | Water supply valves | 2026-05-13 A → 2026-07-05 A (+53d) | 2026-06-13 A → 2026-09-15 A (+94d) |  | DAM3-P-MF-M-420, DAM3-E-ST-A-1720 → DAM3-P-MF-M-420 | resources Unloading workers [224 h]; Construction Cost [26730] → Unloading workers [112 h]; Construction Cost [3114.56] |
| DAM3-P-DL-M-480 | PPR pipes | 2026-05-09 A → 2026-07-05 A (+57d) | 2026-05-09 A → 2026-09-15 A (+129d) |  |  | resources Unloading workers [896 h]; Construction Cost [47658.4] → Unloading workers [112 h]; Construction Cost [76567.9] |
| DAM3-P-DL-M-500 | Capped connection | 2026-09-02 A → 2026-07-05 A (-59d) | 2026-09-02 A → 2026-09-14 A (+12d) |  |  | resources Unloading workers [224 h]; Construction Cost [631.8] → Unloading workers [112 h]; Construction Cost [913.27] |
| DAM3-P-DL-M-660 | Warning tapes | 2026-07-25 A → 2026-07-05 A (-20d) | 2026-07-25 A → 2026-07-05 A (-20d) |  |  | resources Unloading workers [112 h]; Construction Cost [15006.6] → Unloading workers [112 h]; Construction Cost [14077] |
| DAM3-P-DL-M-450 | OS & Y gate valve | 2026-05-13 A → 2026-07-15 A (+63d) | 2026-06-13 A → 2026-09-20 A (+99d) |  |  | resources Unloading workers [224 h]; Construction Cost [11105.1] → Unloading workers [112 h]; Construction Cost [11631.5] |
| DAM3-P-DL-M-490 | Ball valve | 2026-07-25 A → 2026-07-18 A (-7d) | 2026-07-25 A → 2026-07-18 A (-7d) |  |  | resources Unloading workers [224 h]; Construction Cost [7848.9] → Unloading workers [112 h]; Construction Cost [14232.2] |
| DAM3-P-DL-M-430 | U/G HDPE pipes | 2026-03-01 A → 2026-08-01 A (+153d) | 2026-03-01 A → 2026-09-20 A (+203d) |  |  | resources Unloading workers [224 h]; Construction Cost [67928.8] → Unloading workers [112 h]; Construction Cost [49971.5] |
| DAM3-P-DL-M-390 | Fire fighting valves | 2026-05-13 A → 2026-08-10 A (+89d) | 2026-06-13 A → 2026-08-10 A (+58d) |  | DAM3-P-MF-M-390, DAM3-P-ST-M-350 → DAM3-P-MF-M-390 | resources Unloading workers [224 h]; Construction Cost [27932.8] → Unloading workers [720 h]; Construction Cost [8885.58] |
| DAM3-P-DL-M-590 | Inline exhaust fans | 2026-06-27 A → 2026-09-05 A (+70d) | 2026-06-27 A → 2026-09-20 A (+85d) |  |  | resources Unloading workers [336 h]; Construction Cost [22781.2] → Unloading workers [1440 h]; Construction Cost [27474.9] |
| DAM3-P-DL-M-540 | Gully trap | 2026-03-01 A → 2026-09-06 A (+189d) | 2026-03-01 A → 2026-09-20 A (+203d) |  | DAM3-P-MF-M-540, DAM3-E-ST-A-1760, DAM3-P-ST-A-330, DAM3-E-ST-A-1750 → DAM3-P-MF-M-540 | resources Unloading workers [224 h]; Construction Cost [10206] → Unloading workers [112 h]; Construction Cost [15982.6] |
| DAM3-P-DL-M-570 | Toilet Fittings | 2026-07-25 A → 2026-09-15 A (+52d) | 2026-07-25 A → 2026-09-20 A (+57d) |  |  | resources Construction Cost [47652.3]; Unloading workers [80 h] → Construction Cost [75460.9] |
| DAM3-P-DL-M-530 | Floor drain | 2026-06-06 A → 2026-09-16 A (+102d) | 2026-06-06 A → 2026-09-20 A (+106d) |  |  | resources Unloading workers [224 h]; Construction Cost [23328] → Unloading workers [112 h]; Construction Cost [74093.3] |
| DAM3-P-DL-M-550 | Electric water heater | 2026-07-25 A → 2026-09-16 A (+53d) | 2026-07-25 A → 2026-09-16 A (+53d) |  |  | resources Unloading workers [336 h]; Construction Cost [3888] → Unloading workers [1440 h]; Construction Cost [5974.5] |
| DAM3-P-DL-M-580 | Lavatory / wash basin | 2026-06-28 A → 2026-09-16 A (+80d) | 2026-07-25 A → 2026-09-20 A (+57d) | 1d → 7d |  | resources Unloading workers [224 h]; Construction Cost [44712] → Unloading workers [720 h]; Construction Cost [70323.4] |
| DAM3-P-DL-M-610 | Flexible duct | 2026-06-14 A → 2026-09-16 A (+94d) | 2026-06-14 A → 2026-09-20 A (+98d) |  |  | resources Unloading workers [224 h]; Construction Cost [41193.4] → Unloading workers [112 h]; Construction Cost [69629.7] |
| DAM3-P-DL-M-3410 | Water tap | 2026-09-02 A → 2026-09-20 A (+18d) | 2026-09-02 A → 2026-09-20 A (+18d) |  |  | resources Purchaser [224 h]; Construction Cost [5832] → Purchaser [720 h]; Construction Cost [9437.47] |
| DAM3-P-DL-M-440 | Automatic air release valve | 2026-05-13 A → 2026-09-20 A (+130d) | 2026-06-13 A → 2026-09-20 A (+99d) |  |  | resources Unloading workers [224 h]; Construction Cost [1032.75] → Unloading workers [112 h]; Construction Cost [1769.5] |
| DAM3-P-DL-M-460 | Fire alarm check valve | 2026-05-13 A → 2026-09-20 A (+130d) | 2026-06-13 A → 2026-09-20 A (+99d) |  |  | resources Unloading workers [224 h]; Construction Cost [15795] → Unloading workers [112 h]; Construction Cost [26656.7] |
| DAM3-P-DL-M-520 | Roof vent caps | 2026-07-25 A → 2026-09-20 A (+57d) | 2026-07-25 A → 2026-09-20 A (+57d) |  |  | resources Unloading workers [224 h]; Construction Cost [1822.5] → Unloading workers [112 h]; Construction Cost [3044.27] |
| DAM3-P-DL-M-560 | Bib tap | 2026-09-15 A → 2026-09-20 A (+5d) | 2026-09-15 A → 2026-09-20 A (+5d) |  |  | resources Unloading workers [224 h]; Construction Cost [4860] → Unloading workers [112 h]; Construction Cost [6240.96] |
| DAM3-P-DL-M-620 | Exhaust diffuser | 2026-06-14 A → 2026-09-20 A (+98d) | 2026-06-14 A → 2026-09-20 A (+98d) |  |  | resources Unloading workers [224 h]; Construction Cost [21870] → Unloading workers [112 h]; Construction Cost [7040] |
| 3 | **STAGING TIME** | 2026-03-01 → 2026-05-10 (+70d) | 2026-09-15 → 2026-09-20 (+5d) |  |  |  |
| DAM3-P-ST-M-600 | HVAC duct | 2026-06-14 A → 2026-06-04 A (-10d) |  |  |  |  |
| DAM3-P-ST-M-420 | Water supply valves | 2026-05-13 A → 2026-07-05 A (+53d) | 2026-06-13 A → 2026-09-15 A (+94d) |  | DAM3-P-DL-M-420, DAM3-P-ST-M-540, DAM3-P-ST-M-460, DAM3-P-ST-M-530, DAM3-P-ST-M-450 → DAM3-P-DL-M-420, DAM3-P-ST-M-460, DAM3-P-ST-M-530, DAM3-P-ST-M-450 |  |
| DAM3-P-ST-M-480 | PPR pipes | 2026-05-09 A → 2026-07-05 A (+57d) | 2026-05-09 A → 2026-09-15 A (+129d) |  |  |  |
| DAM3-P-ST-M-500 | Capped connection | 2026-09-02 A → 2026-07-05 A (-59d) | 2026-09-02 A → 2026-09-14 A (+12d) |  |  |  |
| DAM3-P-ST-M-660 | Warning tapes | 2026-07-25 A → 2026-07-05 A (-20d) | 2026-07-25 A → 2026-07-05 A (-20d) |  |  |  |
| DAM3-P-ST-M-450 | OS & Y gate valve | 2026-06-13 A → 2026-07-15 A (+32d) | 2026-06-13 A → 2026-09-20 A (+99d) |  |  |  |
| DAM3-P-ST-M-490 | Ball valve | 2026-07-25 A → 2026-07-18 A (-7d) | 2026-07-25 A → 2026-07-18 A (-7d) |  | DAM3-P-DL-M-490, DAM3-P-ST-M-610, DAM3-P-ST-M-600, DAM3-P-ST-M-480 → DAM3-P-DL-M-490, DAM3-P-ST-M-600 |  |
| DAM3-P-ST-M-430 | U/G HDPE pipes | 2026-03-01 A → 2026-08-01 A (+153d) | 2026-03-01 A → 2026-09-20 A (+203d) |  | DAM3-P-DL-M-430 → DAM3-P-DL-M-430, DAM3-P-ST-M-610 |  |
| DAM3-P-ST-M-390 | Fire fighting valves | 2026-05-13 A → 2026-08-10 A (+89d) | 2026-06-13 A → 2026-08-10 A (+58d) |  | DAM3-P-DL-M-390 → DAM3-P-DL-M-390, DAM3-P-ST-M-580, DAM3-E-ST-M-3410, DAM3-P-ST-M-560, DAM3-P-ST-M-420 |  |
| DAM3-P-ST-M-590 | Inline exhaust fans | 2026-06-27 A → 2026-09-05 A (+70d) | 2026-06-27 A → 2026-09-20 A (+85d) |  |  |  |
| DAM3-P-ST-M-540 | Gully trap | 2026-03-01 A → 2026-09-06 A (+189d) | 2026-03-01 A → 2026-09-20 A (+203d) |  | DAM3-P-DL-M-540, DAM3-P-ST-M-520, DAM3-P-ST-M-570 → DAM3-P-DL-M-540 |  |
| DAM3-P-ST-M-570 | Toilet Fittings | 2026-07-25 A → 2026-09-15 A (+52d) | 2026-07-25 A → 2026-09-20 A (+57d) |  |  |  |
| DAM3-P-ST-M-530 | Floor drain | 2026-06-06 A → 2026-09-16 A (+102d) | 2026-06-06 A → 2026-09-20 A (+106d) |  |  |  |
| DAM3-P-ST-M-550 | Electric water heater | 2026-07-25 A → 2026-09-16 A (+53d) | 2026-07-25 A → 2026-09-16 A (+53d) |  |  |  |
| DAM3-P-ST-M-580 | Lavatory / wash basin | 2026-07-25 A → 2026-09-16 A (+53d) | 2026-07-25 A → 2026-09-20 A (+57d) |  |  |  |

| ID | Task | Start | Finish | Duration | Predecessors | Other |
| --- | --- | --- | --- | --- | --- | --- |
| DAM3-P-ST-M-610 | Flexible duct | 2026-06-14 A → 2026-09-16 A (+94d) | 2026-06-14 A → 2026-09-20 A (+98d) |  |  |  |
| DAM3-E-ST-M-3410 | Water tap | 2026-09-02 A → 2026-09-20 A (+18d) | 2026-09-02 A → 2026-09-20 A (+18d) |  |  |  |
| DAM3-P-ST-M-440 | Automatic air release valve | 2026-06-13 A → 2026-09-20 A (+99d) | 2026-06-13 A → 2026-09-20 A (+99d) |  |  |  |
| DAM3-P-ST-M-460 | Fire alarm check valve | 2026-06-13 A → 2026-09-20 A (+99d) | 2026-06-13 A → 2026-09-20 A (+99d) |  | DAM3-P-DL-M-460, DAM3-P-ST-M-440 → DAM3-P-DL-M-460 |  |
| DAM3-P-ST-M-520 | Roof vent caps | 2026-07-25 A → 2026-09-20 A (+57d) | 2026-07-25 A → 2026-09-20 A (+57d) |  | DAM3-P-DL-M-520, DAM3-P-ST-M-500 → DAM3-P-DL-M-520 |  |
| DAM3-P-ST-M-560 | Bib tap | 2026-09-15 A → 2026-09-20 A (+5d) | 2026-09-15 A → 2026-09-20 A (+5d) |  | DAM3-P-DL-M-560 → DAM3-P-DL-M-560, DAM3-P-ST-M-540 |  |
| DAM3-P-ST-M-620 | Exhaust diffuser | 2026-06-14 A → 2026-09-20 A (+98d) | 2026-06-14 A → 2026-09-20 A (+98d) |  | DAM3-P-DL-M-620 → DAM3-P-DL-M-620, DAM3-P-ST-M-480 |  |
| 3 | **ELECTRICAL** | 2026-01-29 → 2026-03-10 (+40d) | 2026-10-01 → 2026-09-20 (-11d) |  |  |  |
| 1 | **PO ISSUE** | 2026-01-29 → 2026-03-10 (+40d) | 2026-07-27 → 2026-06-21 (-36d) |  |  |  |
| DAM3-P-PO-E-310 | PVC conduits | 2026-03-11 A → 2026-03-10 A (-1d) | 2026-03-11 A → 2026-03-10 A (-1d) |  |  | resources Purchaser [40 h] → Purchaser [80 h] |
| DAM3-P-PO-E-340 | Grounding system | 2026-03-04 A → 2026-04-26 A (+53d) | 2026-03-04 A → 2026-04-26 A (+53d) | 4.12d → 5d |  | resources Purchaser [80 h] → Purchaser [16 h] |
| DAM3-P-PO-E-370 | HDPE ducts | 2026-06-03 A → 2026-04-26 A (-38d) | 2026-06-03 A → 2026-04-26 A (-38d) |  |  | resources Purchaser [40 h] → Purchaser [16 h] |
| DAM3-E-PO-E-210 | Cable Tray | 2026-07-27 A → 2026-06-21 A (-36d) | 2026-07-27 A → 2026-06-21 A (-36d) |  |  | resources Purchaser [40 h] → Purchaser [80 h] |
| DAM3-P-PO-E-290 | Low Voltage cables | 2026-06-16 A → 2026-06-21 A (+5d) | 2026-06-16 A → 2026-06-21 A (+5d) |  |  | resources Purchaser [40 h] → Purchaser [16 h] |
| DAM3-P-PO-E-300 | Disconnect switches | 2026-07-27 A → 2026-06-21 A (-36d) | 2026-07-27 A → 2026-06-21 A (-36d) |  |  | resources Purchaser [40 h] → Purchaser [16 h] |
| DAM3-P-PO-E-320 | Wires | 2026-06-01 A → 2026-06-21 A (+20d) | 2026-06-01 A → 2026-06-21 A (+20d) |  |  | resources Purchaser [40 h] → Purchaser [80 h] |
| DAM3-P-PO-E-330 | Wall mounted, duplex, telephone and data outlet | 2026-06-03 A → 2026-06-21 A (+18d) | 2026-06-03 A → 2026-06-21 A (+18d) |  |  |  |
| DAM3-P-PO-E-350 | Wiring devices | 2026-01-29 A → 2026-06-21 A (+143d) | 2026-01-29 A → 2026-06-21 A (+143d) |  |  | resources Purchaser [40 h] → Purchaser [16 h] |
| 4 | **MANUFACTURING** | 2026-01-29 → 2026-03-11 (+41d) | 2026-10-01 → 2026-09-16 (-15d) |  |  |  |
| DAM3-P-MF-E-310 | PVC conduits |  | 2026-05-11 A → 2026-05-02 A (-9d) | 40d → 60d |  | resources Loading workers → Loading workers [240 h] |
| DAM3-P-MF-E-340 | Grounding system | 2026-03-04 A → 2026-04-27 A (+54d) | 2026-05-02 A → 2026-05-03 A (+1d) |  |  | resources Loading workers → Loading workers [40 h] |
| DAM3-P-MF-E-370 | HDPE ducts | 2026-06-03 A → 2026-04-27 A (-37d) | 2026-06-04 A → 2026-05-03 A (-32d) |  |  | resources Loading workers → Loading workers [40 h] |
| DAM3-P-MF-E-320 | Wires | 2026-06-01 A → 2026-06-28 A (+27d) | 2026-06-03 A → 2026-09-16 A (+105d) | 81.12d → 80d |  | resources Loading workers → Loading workers [240 h] |
| DAM3-E-MF-E-210 | Cable Tray | 2026-07-27 A → 2026-07-04 A (-23d) | 2026-08-16 A → 2026-09-16 A (+31d) | 20d → 80d |  | resources Purchaser → Purchaser [40 h] |
| DAM3-P-MF-E-350 | Wiring devices | 2026-01-29 A → 2026-07-09 A (+161d) | 2026-06-02 A → 2026-09-16 A (+106d) | 82d → 80d |  | resources Loading workers → Loading workers [40 h] |
| DAM3-P-MF-E-290 | Low Voltage cables | 2026-06-16 A → 2026-07-15 A (+29d) | 2026-07-16 A → 2026-07-22 A (+6d) | 20d → 80d |  | resources Loading workers → Loading workers [40 h] |
| DAM3-P-MF-E-300 | Disconnect switches | 2026-07-27 A → 2026-07-21 A (-6d) | 2026-08-16 A → 2026-07-22 A (-25d) | 20d → 80d |  | resources Loading workers → Loading workers [480 h] |
| DAM3-P-MF-E-330 | Wall mounted, duplex, telephone and data outlet | 2026-06-03 A → 2026-07-27 A (+54d) | 2026-10-01 A → 2026-09-16 A (-15d) | 30d → 80d |  | resources Loading workers → Loading workers [480 h] |
| 2 | **DELIVERY** | 2026-03-12 → 2026-05-03 (+52d) | 2026-10-01 → 2026-09-20 (-11d) |  |  |  |
| DAM3-P-DL-E-310 | PVC conduits | 2026-03-12 A → 2026-05-03 A (+52d) | 2026-03-12 A → 2026-05-20 A (+69d) |  |  | resources Unloading workers [896 h]; Construction Cost [3863.7] → Unloading workers [112 h]; Construction Cost [15738.7] |
| DAM3-P-DL-E-340 | Grounding system | 2026-04-04 A → 2026-05-10 A (+36d) | 2026-05-02 A → 2026-05-19 A (+17d) |  |  | resources Unloading workers [224 h]; Construction Cost [95510.5] → Unloading workers [112 h]; Construction Cost [65141.3] |
| DAM3-P-DL-E-370 | HDPE ducts | 2026-06-04 A → 2026-05-10 A (-25d) | 2026-06-04 A → 2026-05-19 A (-16d) |  |  | resources Unloading workers [112 h]; Construction Cost [274495] → Unloading workers [112 h]; Construction Cost [176020] |
| DAM3-P-DL-E-290 | Low Voltage cables | 2026-07-16 A → 2026-07-23 A (+7d) | 2026-07-16 A → 2026-07-25 A (+9d) |  |  | resources Unloading workers [224 h]; Construction Cost [104031] → Unloading workers [112 h]; Construction Cost [299034] |
| DAM3-P-DL-E-300 | Disconnect switches | 2026-08-16 A → 2026-07-23 A (-24d) | 2026-08-16 A → 2026-07-25 A (-22d) |  |  | resources Unloading workers [224 h]; Construction Cost [63009.9] → Unloading workers [112 h]; Construction Cost [100576] |
| DAM3-P-DL-E-330 | Wall mounted, duplex, telephone and data outlet | 2026-10-01 A → 2026-09-17 A (-14d) | 2026-10-01 A → 2026-09-20 A (-11d) |  |  | resources Unloading workers [224 h]; Construction Cost [56886.3] → Unloading workers [112 h]; Construction Cost [88627.4] |
| DAM3-P-DL-E-350 | Wiring devices | 2026-06-03 A → 2026-09-17 A (+106d) | 2026-06-03 A → 2026-09-20 A (+109d) |  |  | resources Unloading workers [224 h]; Construction Cost [50641.2] → Unloading workers [112 h]; Construction Cost [66414.3] |
| DAM3-P-DL-E-2100 | Cable Tray | 2026-08-16 A → 2026-09-20 A (+35d) | 2026-08-16 A → 2026-09-20 A (+35d) |  |  | resources Purchaser [224 h]; Construction Cost [704.7] → Purchaser [112 h]; Construction Cost [1063.8] |
| DAM3-P-DL-E-320 | Wires | 2026-06-04 A → 2026-09-20 A (+108d) | 2026-06-04 A → 2026-09-20 A (+108d) |  |  | resources Unloading workers [224 h]; Construction Cost [10935] → Unloading workers [112 h]; Construction Cost [7379.37] |
| 3 | **STAGING TIME** | 2026-03-12 → 2026-05-03 (+52d) | 2026-10-01 → 2026-09-20 (-11d) |  |  |  |
| DAM3-P-ST-E-310 | PVC conduits | 2026-03-12 A → 2026-05-03 A (+52d) | 2026-03-12 A → 2026-05-20 A (+69d) |  |  |  |
| DAM3-P-ST-E-340 | Grounding system | 2026-04-04 A → 2026-05-10 A (+36d) | 2026-05-02 A → 2026-05-19 A (+17d) |  | DAM3-P-DL-E-340 → DAM3-P-DL-E-340, DAM3-P-ST-E-320 |  |
| DAM3-P-ST-E-370 | HDPE ducts | 2026-06-04 A → 2026-05-10 A (-25d) | 2026-06-04 A → 2026-05-19 A (-16d) |  |  |  |
| DAM3-P-ST-E-290 | Low Voltage cables | 2026-07-16 A → 2026-07-25 A (+9d) | 2026-07-16 A → 2026-07-25 A (+9d) |  | DAM3-P-DL-E-290 → DAM3-P-DL-E-290, DAM3-P-ST-E-350 |  |
| DAM3-P-ST-E-300 | Disconnect switches | 2026-08-16 A → 2026-07-25 A (-22d) | 2026-08-16 A → 2026-07-25 A (-22d) |  | DAM3-P-DL-E-300 → DAM3-P-DL-E-300, DAM3-P-ST-E-370 |  |
| DAM3-P-ST-E-330 | Wall mounted, duplex, telephone and data outlet | 2026-10-01 A → 2026-09-17 A (-14d) | 2026-10-01 A → 2026-09-20 A (-11d) |  | DAM3-P-DL-E-330 → DAM3-P-DL-E-330, DAM3-P-ST-E-290 |  |
| DAM3-P-ST-E-350 | Wiring devices | 2026-06-03 A → 2026-09-17 A (+106d) | 2026-06-03 A → 2026-09-20 A (+109d) |  |  |  |
| DAM3-E-ST-E-210 | Cable Tray | 2026-08-16 A → 2026-09-20 A (+35d) | 2026-08-16 A → 2026-09-20 A (+35d) |  | DAM3-P-DL-E-2100 → DAM3-P-DL-E-2100, DAM3-P-ST-E-310 |  |
| DAM3-P-ST-E-320 | Wires | 2026-06-04 A → 2026-09-20 A (+108d) | 2026-06-04 A → 2026-09-20 A (+108d) |  |  |  |
| 4 | **EXTERNAL** | 2026-06-17 → 2026-03-02 (-107d) | 2026-10-15 → 2026-09-21 (-24d) |  |  |  |
| 1 | **PO ISSUE** | 2026-06-17 → 2026-03-02 (-107d) | 2026-10-12 → 2026-06-21 (-113d) |  |  |  |
| DAM3-P-PO-EX-80 | Asphalt works | 2026-06-17 A → 2026-03-02 A (-107d) | 2026-06-17 A → 2026-03-02 A (-107d) |  |  |  |
| DAM3-P-PO-EX-100 | Road markings | 2026-10-12 A → 2026-06-21 A (-113d) | 2026-10-12 A → 2026-06-21 A (-113d) |  | DAM3-E-MA-EX-0030 SS → DAM3-E-MA-EX-0030 |  |
| DAM3-P-PO-EX-110 | Road signs | 2026-08-06 A → 2026-06-21 A (-46d) | 2026-08-06 A → 2026-06-21 A (-46d) |  | DAM3-E-MA-EX-0040 SS → DAM3-E-MA-EX-0040 |  |
| DAM3-P-PO-EX-130 | Interlock tiles | 2026-07-24 A → 2026-06-21 A (-33d) | 2026-07-24 A → 2026-06-21 A (-33d) |  | DAM3-E-MA-EX-0060 → DAM3-E-MA-EX-0060, DAM3-P-ST-M-570 |  |
| DAM3-P-PO-EX-140 | Curbstones | 2026-07-24 A → 2026-06-21 A (-33d) | 2026-07-24 A → 2026-06-21 A (-33d) |  |  |  |
| DAM3-P-PO-EX-150 | Gravel bedding | 2026-06-23 A → 2026-06-21 A (-2d) | 2026-06-23 A → 2026-06-21 A (-2d) |  |  |  |
| DAM3-P-PO-EX-90 | Concrete parking bumper | 2026-08-16 A → 2026-06-21 A (-56d) | 2026-08-16 A → 2026-06-21 A (-56d) |  |  |  |
| 4 | **MANUFACTURING** | 2026-06-17 → 2026-03-03 (-106d) | 2026-10-14 → 2026-09-20 (-24d) |  |  |  |
| DAM3-P-MF-EX-80 | Asphalt works | 2026-06-17 A → 2026-03-03 A (-106d) | 2026-06-20 A → 2026-06-07 A (-13d) | 80d → 100d |  | resources Loading workers → Loading workers [480 h] |
| DAM3-P-MF-EX-100 | Road markings | 2026-10-12 A → 2026-06-28 A (-106d) | 2026-10-14 A → 2026-09-19 A (-25d) | 10d → 90d |  | resources Loading workers → Loading workers [480 h] |
| DAM3-P-MF-EX-110 | Road signs | 2026-08-06 A → 2026-06-28 A (-39d) | 2026-08-08 A → 2026-09-17 A (+40d) | 25d → 90d |  | resources Loading workers → Loading workers [480 h] |
| DAM3-P-MF-EX-140 | Curbstones | 2026-07-24 A → 2026-06-28 A (-26d) | 2026-07-25 A → 2026-09-20 A (+57d) | 25d → 90d |  | resources Loading workers → Loading workers [480 h] |
| DAM3-P-MF-EX-150 | Gravel bedding | 2026-06-25 A → 2026-06-28 A (+3d) | 2026-06-27 A → 2026-09-20 A (+85d) | 30d → 90d |  | resources Loading workers → Loading workers [480 h] |
| DAM3-P-MF-EX-90 | Concrete parking bumper | 2026-08-16 A → 2026-06-28 A (-49d) | 2026-09-17 A → 2026-09-19 A (+2d) | 25d → 90d |  | resources Loading workers → Loading workers [480 h] |
| DAM3-P-MF-EX-130 | Interlock tiles | 2026-07-24 A → 2026-07-21 A (-3d) | 2026-07-25 A → 2026-09-20 A (+57d) | 25d → 90d |  | resources Loading workers → Loading workers [480 h] |
| 2 | **DELIVERY** | 2026-06-20 → 2026-06-08 (-12d) | 2026-10-15 → 2026-09-21 (-24d) |  |  |  |
| DAM3-P-DL-EX-80 | Asphalt works | 2026-06-20 A → 2026-06-08 A (-12d) | 2026-06-20 A → 2026-06-17 A (-3d) |  |  | resources Unloading workers [224 h]; Construction Cost [1151009] → Unloading workers [112 h]; Construction Cost [1868985] |
| DAM3-P-DL-EX-130 | Interlock tiles | 2026-07-25 A → 2026-09-17 A (+54d) | 2026-07-25 A → 2026-09-20 A (+57d) | 2d → 7d |  | resources Unloading workers [224 h]; Construction Cost [85760.8] → Unloading workers [720 h]; Construction Cost [141980] |
| DAM3-P-DL-EX-140 | Curbstones | 2026-07-25 A → 2026-09-17 A (+54d) | 2026-07-25 A → 2026-09-20 A (+57d) | 2d → 7d |  | resources Unloading workers [224 h]; Construction Cost [57773.2] → Unloading workers [720 h]; Construction Cost [86912.4] |
| DAM3-P-DL-EX-150 | Gravel bedding | 2026-06-27 A → 2026-09-17 A (+82d) | 2026-06-27 A → 2026-09-21 A (+86d) | 2d → 7d |  | resources Unloading workers [224 h]; Construction Cost [34763.8] → Unloading workers [720 h]; Construction Cost [66111.9] |

| ID | Task | Start | Finish | Duration | Predecessors | Other |
| --- | --- | --- | --- | --- | --- | --- |
| DAM3-P-DL-EX-110 | Road signs | 2026-08-08 A → 2026-09-20 A (+43d) | 2026-08-08 A → 2026-09-20 A (+43d) | 2d → 7d |  | resources Unloading workers [224 h]; Construction Cost [21993.9] → Unloading workers [720 h]; Construction Cost [31028.6] |
| DAM3-P-DL-EX-100 | Road markings | 2026-10-15 A → 2026-09-21 A (-24d) | 2026-10-15 A → 2026-09-21 A (-24d) | 2d → 7d |  | resources Unloading workers [224 h]; Construction Cost [15904.4] → Unloading workers [720 h]; Construction Cost [11308.9] |
| DAM3-P-DL-EX-90 | Concrete parking bumper | 2026-09-19 A → 2026-09-21 A (+2d) | 2026-09-19 A → 2026-09-21 A (+2d) | 2d → 7d |  | resources Unloading workers [224 h]; Construction Cost [6386.04] → Unloading workers [112 h]; Construction Cost [9558.14] |
| 3 | **STAGING TIME** | 2026-06-27 → 2026-06-08 (-19d) | 2026-10-15 → 2026-09-21 (-24d) |  |  |  |
| DAM3-P-ST-EX-80 | Asphalt works | 2026-10-10 A → 2026-06-08 A (-124d) | 2026-10-10 A → 2026-06-08 A (-124d) | 1d → 7d |  |  |
| DAM3-P-ST-EX-130 | Interlock tiles | 2026-07-25 A → 2026-09-17 A (+54d) | 2026-07-25 A → 2026-09-20 A (+57d) |  |  |  |
| DAM3-P-ST-EX-140 | Curbstones | 2026-07-25 A → 2026-09-17 A (+54d) | 2026-07-25 A → 2026-09-20 A (+57d) |  | DAM3-P-DL-EX-140 → DAM3-P-DL-EX-140, DAM3-P-ST-EX-80 |  |
| DAM3-P-ST-EX-150 | Gravel bedding | 2026-06-27 A → 2026-09-17 A (+82d) | 2026-06-27 A → 2026-09-21 A (+86d) |  | DAM3-P-DL-EX-150, DAM3-P-ST-EX-90 → DAM3-P-DL-EX-150 |  |
| DAM3-P-ST-EX-110 | Road signs | 2026-08-08 A → 2026-09-20 A (+43d) | 2026-08-08 A → 2026-09-20 A (+43d) |  |  |  |
| DAM3-P-ST-EX-100 | Road markings | 2026-10-15 A → 2026-09-21 A (-24d) | 2026-10-15 A → 2026-09-21 A (-24d) | 1d → 7d |  |  |
| DAM3-P-ST-EX-90 | Concrete parking bumper | 2026-09-19 A → 2026-09-21 A (+2d) | 2026-09-19 A → 2026-09-21 A (+2d) |  |  |  |
| 5 | **ENVIRONMENTAL** | 2026-02-24 → 2026-06-21 (+117d) | 2026-08-02 → 2026-09-20 (+49d) |  |  |  |
| 1 | **PO ISSUE** | 2026-02-24 → 2026-06-21 (+117d) | 2026-02-24 → 2026-06-21 (+117d) |  |  |  |
| DAM3-P-PO-EN-100 | HDPE pipes for fire system | 2026-02-24 A → 2026-06-21 A (+117d) | 2026-02-24 A → 2026-06-21 A (+117d) |  |  | resources Purchaser [40 h] → Purchaser [80 h] |
| DAM3-P-PO-EN-110 | Directly buried gate valve for fire system | 2026-02-24 A → 2026-06-21 A (+117d) | 2026-02-24 A → 2026-06-21 A (+117d) |  |  | resources Purchaser [40 h] → Purchaser [80 h] |
| DAM3-P-PO-EN-120 | HDPE pipes for water supply system | 2026-02-24 A → 2026-06-21 A (+117d) | 2026-02-24 A → 2026-06-21 A (+117d) |  |  | resources Purchaser [40 h] → Purchaser [80 h] |
| DAM3-P-PO-EN-130 | Directly buried gate valve for water system | 2026-02-24 A → 2026-06-21 A (+117d) | 2026-02-24 A → 2026-06-21 A (+117d) | 0.88d → 5d |  | resources Purchaser [80 h] → Purchaser [16 h] |
| DAM3-P-PO-EN-140 | Air valve | 2026-02-24 A → 2026-06-21 A (+117d) | 2026-02-24 A → 2026-06-21 A (+117d) |  |  | resources Purchaser [40 h] → Purchaser [16 h] |
| DAM3-P-PO-EN-150 | Washout valve | 2026-02-24 A → 2026-06-21 A (+117d) | 2026-02-24 A → 2026-06-21 A (+117d) |  |  | resources Purchaser [40 h] → Purchaser [16 h] |
| DAM3-P-PO-EN-160 | Gate valve | 2026-02-24 A → 2026-06-21 A (+117d) | 2026-02-24 A → 2026-06-21 A (+117d) |  |  | resources Purchaser [40 h] → Purchaser [16 h] |
| 4 | **MANUFACTURING** | 2026-02-24 → 2026-06-22 (+118d) | 2026-08-01 → 2026-09-19 (+49d) |  |  |  |
| DAM3-P-MF-EN-120 | HDPE pipes for water supply system | 2026-02-24 A → 2026-06-22 A (+118d) | 2026-02-28 A → 2026-08-15 A (+168d) | 80d → 90d |  | resources Loading workers → Loading workers [40 h] |
| DAM3-P-MF-EN-130 | Directly buried gate valve for water system | 2026-02-24 A → 2026-06-22 A (+118d) | 2026-08-01 A → 2026-09-19 A (+49d) | 30d → 90d |  | resources Loading workers → Loading workers [40 h] |
| DAM3-P-MF-EN-140 | Air valve | 2026-02-24 A → 2026-06-22 A (+118d) | 2026-05-13 A → 2026-09-19 A (+129d) | 80d → 90d |  | resources Loading workers → Loading workers [40 h] |
| DAM3-P-MF-EN-150 | Washout valve | 2026-02-24 A → 2026-06-22 A (+118d) | 2026-08-01 A → 2026-09-19 A (+49d) | 30d → 90d |  | resources Loading workers → Loading workers [40 h] |
| DAM3-P-MF-EN-160 | Gate valve | 2026-02-24 A → 2026-06-22 A (+118d) | 2026-08-01 A → 2026-09-19 A (+49d) | 30d → 90d |  | resources Loading workers → Loading workers [40 h] |
| DAM3-P-MF-EN-100 | HDPE pipes for fire system | 2026-02-24 A → 2026-06-28 A (+124d) | 2026-02-28 A → 2026-07-23 A (+145d) | 80d → 90d |  | resources Loading workers → Loading workers [1440 h] |
| DAM3-P-MF-EN-110 | Directly buried gate valve for fire system | 2026-02-24 A → 2026-07-04 A (+130d) | 2026-08-01 A → 2026-09-19 A (+49d) | 30d → 90d |  | resources Loading workers → Loading workers [1440 h] |
| 2 | **DELIVERY** | 2026-03-01 → 2026-07-25 (+146d) | 2026-08-02 → 2026-09-20 (+49d) |  |  |  |
| DAM3-P-DL-EN-100 | HDPE pipes for fire system | 2026-03-01 A → 2026-07-25 A (+146d) | 2026-03-01 A → 2026-07-26 A (+147d) |  |  | resources Unloading workers [224 h]; Construction Cost [65612.4] → Unloading workers [112 h]; Construction Cost [144973] |
| DAM3-P-DL-EN-120 | HDPE pipes for water supply system | 2026-03-01 A → 2026-08-17 A (+169d) | 2026-03-01 A → 2026-08-17 A (+169d) |  |  | resources Unloading workers [224 h]; Construction Cost [63838.8] → Unloading workers [112 h]; Construction Cost [10655] |
| DAM3-P-DL-EN-160 | Gate valve | 2026-08-02 A → 2026-09-05 A (+34d) | 2026-08-02 A → 2026-09-20 A (+49d) |  |  | resources Unloading workers [224 h]; Construction Cost [2430] → Unloading workers [112 h]; Construction Cost [42658.4] |
| DAM3-P-DL-EN-110 | Directly buried gate valve for fire system | 2026-08-02 A → 2026-09-20 A (+49d) | 2026-08-02 A → 2026-09-20 A (+49d) |  |  | resources Unloading workers [224 h]; Construction Cost [11858.4] → Unloading workers [112 h]; Construction Cost [7270.01] |
| DAM3-P-DL-EN-130 | Directly buried gate valve for water system | 2026-08-02 A → 2026-09-20 A (+49d) | 2026-08-02 A → 2026-09-20 A (+49d) |  |  | resources Unloading workers [112 h]; Construction Cost [11955.6] → Unloading workers [112 h]; Construction Cost [16098.5] |
| DAM3-P-DL-EN-140 | Air valve | 2026-05-13 A → 2026-09-20 A (+130d) | 2026-05-13 A → 2026-09-20 A (+130d) |  |  | resources Unloading workers [224 h]; Construction Cost [5832] → Unloading workers [112 h]; Construction Cost [13087.1] |
| DAM3-P-DL-EN-150 | Washout valve | 2026-08-02 A → 2026-09-20 A (+49d) | 2026-08-02 A → 2026-09-20 A (+49d) |  |  | resources Unloading workers [224 h]; Construction Cost [6804] → Unloading workers [112 h]; Construction Cost [15346.9] |
| 3 | **STAGING TIME** | 2026-03-01 → 2026-07-25 (+146d) | 2026-08-02 → 2026-09-20 (+49d) |  |  |  |
| DAM3-P-ST-EN-100 | HDPE pipes for fire system | 2026-03-01 A → 2026-07-25 A (+146d) | 2026-03-01 A → 2026-07-26 A (+147d) |  |  |  |
| DAM3-P-ST-EN-120 | HDPE pipes for water supply system | 2026-03-01 A → 2026-08-17 A (+169d) | 2026-03-01 A → 2026-08-17 A (+169d) |  | DAM3-P-DL-EN-120 → DAM3-P-DL-EN-120, DAM3-P-ST-EN-100 |  |
| DAM3-P-ST-EN-160 | Gate valve | 2026-08-02 A → 2026-09-05 A (+34d) | 2026-08-02 A → 2026-09-20 A (+49d) |  |  |  |
| DAM3-P-ST-EN-110 | Directly buried gate valve for fire system | 2026-08-02 A → 2026-09-20 A (+49d) | 2026-08-02 A → 2026-09-20 A (+49d) |  |  |  |
| DAM3-P-ST-EN-130 | Directly buried gate valve for water system | 2026-08-02 A → 2026-09-20 A (+49d) | 2026-08-02 A → 2026-09-20 A (+49d) |  |  |  |
| DAM3-P-ST-EN-140 | Air valve | 2026-05-13 A → 2026-09-20 A (+130d) | 2026-05-13 A → 2026-09-20 A (+130d) |  |  |  |
| DAM3-P-ST-EN-150 | Washout valve | 2026-08-02 A → 2026-09-20 A (+49d) | 2026-08-02 A → 2026-09-20 A (+49d) |  |  |  |
| 1 | **RBF 900 SQM FACTORIES** | 2025-12-22 → 2026-01-14 (+23d) | 2026-10-27 → 2027-02-23 (+119d) |  |  |  |
| 2 | **SITE WORKS** | 2025-12-22 → 2026-01-14 (+23d) | 2026-09-24 → 2026-01-31 (-236d) |  |  |  |
| DAM3-C-GEN-10 | Initial Site Survey and Setting out | 2025-12-22 A → 2026-01-19 A (+28d) | 2025-12-25 A → 2026-01-24 A (+30d) | 10d → 12d |  |  |
| 1 | **STRUCTURAL** | 2025-12-28 → 2026-02-15 (+49d) | 2026-07-16 → 2026-11-04 (+111d) |  |  |  |
| 1 | **FOOTING** | 2025-12-28 → 2026-02-15 (+49d) | 2026-01-28 → 2026-05-10 (+102d) |  |  |  |
| DAM3-C-B6-S-160 | Excavation for footings | 2025-12-28 A → 2026-02-15 A (+49d) | 2026-01-07 A → 2026-03-24 A (+76d) | 7d → 8d | Backfilling to reach target level, Demolition of existing curbstone,side walk & steel fence, DAM3-E-SA-C-750, DAM3-E-SA-R-730, DAM3-E-SA-R-740, DAM3-E-SA-R-750, DAM3-E-SA-R-760, DAM3-E-SA-R-770, DAM3-E-SA-R-780, DAM3-PRE-SUB-1015, DAM3-PRE-SUB-1014, DAM3-PRE-SUB-1013 → DAM3-MOB-SO.0016, DAM3-MOB-SO.0020, DAM3-E-SA-R-730, DAM3-E-SA-R-740, DAM3-E-SA-R-750, DAM3-C-GEN-10 | resources General Labour [112 h]; Equipment Operator [112 h]; Truck [56 h]; Excavator [56 h]; Mini Roller Compactor [56 h]; Construction Cost [66496.4] → General Labour [112 h]; Equipment Operator [112 h]; Truck [32 h]; Excavator [32 h]; Mini Roller Compactor [32 h]; Construction Cost [89859.6] |
| DAM3-C-B6-S-537 | Lean Concrete Below Footings | 2026-01-11 A → 2026-04-22 A (+101d) | 2026-01-11 A → 2026-04-22 A (+101d) |  | DAM3-C-B6-S-687, DAM3-P-ST-C-60, DAM3-E-SA-R-790, DAM3-E-SA-R-800, DAM3-E-SA-R-810, DAM3-E-SA-R-820 → DAM3-C-B6-S-687 | resources Mason [32 h]; Construction Cost [8238.87] → Mason [32 h]; Construction Cost [8229.34] |
| DAM3-C-B6-S-687 | Vapour Barrier for Footings | 2026-01-11 A → 2026-04-22 A (+101d) | 2026-01-11 A → 2026-04-22 A (+101d) |  |  | resources General Labour [16 h]; Construction Cost [6030.16] → General Labour [16 h]; Construction Cost [7940.1] |
| DAM3-C-B6-S-777 | Anti Termite Below Footings | 2026-01-10 A → 2026-04-22 A (+102d) | 2026-01-10 A → 2026-04-22 A (+102d) |  | DAM3-C-B6-S-160, DAM3-P-ST-C-50 → DAM3-P-ST-C-50, DAM3-C-B6-S-6153, DAM3-PRE-SUB-1013, DAM3-PRE-SUB-1014, DAM3-PRE-SUB-1015, DAM3-E-SA-R-760, DAM3-E-SA-R-770, DAM3-E-SA-R-780 | resources Mason [16 h]; Construction Cost [8441.61] → Mason [16 h]; Construction Cost [11905.5] |
| DAM3-C-B6-S-587 | Rebar for Footings | 2026-01-20 A → 2026-05-02 A (+102d) | 2026-01-27 A → 2026-05-05 A (+98d) |  | DAM3-C-B6-S-537, DAM3-E-MT-C-2010, DAM3-P-ST-C-90 → DAM3-C-B6-S-537, DAM3-E-MT-C-2010, DAM3-P-ST-C-90, DAM3-C-GEN-88, DAM3-E-SA-C-750 | resources Steel Fixer [64 h]; Construction Cost [93071.6] → Steel Fixer [64 h]; Construction Cost [101845] |
| DAM3-C-B6-S-597 | Formwork for Footings | 2026-01-13 A → 2026-05-04 A (+111d) | 2026-01-21 A → 2026-05-09 A (+108d) | 3.5d → 4d |  | resources Carperter [64 h]; Construction Cost [23267.9] → Carperter [64 h]; Construction Cost [25461.2] |
| DAM3-C-B6-S-547 | Pouring Concrete for Footings | 2026-01-28 A → 2026-05-10 A (+102d) | 2026-01-28 A → 2026-05-10 A (+102d) |  | DAM3-C-B6-S-597 → DAM3-C-B6-S-597, DAM3-P-ST-C-60 | resources Carperter [16 h]; Mason [16 h]; Steel Fixer [16 h]; Concrete Mixer [8 h]; Equipment Operator [16 h]; Construction Cost [116339] → Carperter [16 h]; Mason [16 h]; Steel Fixer [16 h]; Concrete Mixer [8 h]; Equipment Operator [16 h]; Construction Cost [127306] |
| 2 | **COLUMN NECK** | 2026-01-29 → 2026-05-05 (+96d) | 2026-04-06 → 2026-06-01 (+56d) |  |  |  |
| DAM3-C-B6-S-637 | Rebar for column neck | 2026-01-29 A → 2026-05-05 A (+96d) | 2026-02-03 A → 2026-05-09 A (+95d) |  | DAM3-C-B6-S-547, DAM3-E-SA-R-830, DAM3-E-SA-R-840, DAM3-E-SA-R-850, DAM3-E-SA-R-860, DAM3-E-SA-R-870, DAM3-E-SA-R-880, DAM3-E-SA-R-890, DAM3-E-SA-R-900 → DAM3-C-B6-S-547 | resources Steel Fixer [32 h]; Construction Cost [21993.7] → Steel Fixer [32 h]; Construction Cost [14919.2] |
| DAM3-C-B6-S-647 | Formwork for column neck | 2026-02-03 A → 2026-05-12 A (+98d) | 2026-02-05 A → 2026-05-16 A (+100d) |  | DAM3-C-B6-S-637, DAM3-E-MT-C-2010, DAM3-E-SA-M-600, DAM3-E-SA-M-610, DAM3-E-SA-M-620, DAM3-E-SA-M-630, DAM3-E-SA-M-640, DAM3-E-SA-A-830, DAM3-E-SA-A-840, DAM3-E-SA-A-850, DAM3-E-SA-A-860, DAM3-E-SA-A-1170, DAM3-E-SA-A-870, DAM3-E-SA-A-880, DAM3-E-SA-A-890, DAM3-E-SA-C-840, DAM3-E-SA-C-850, DAM3-E-SA-C-860, DAM3-E-SA-C-870, DAM3-E-SA-C-880, DAM3-E-SA-C-890, DAM3-E-SA-C-750, DAM3-E-SA-C-760, DAM3-E-SA-C-770, DAM3-E-SA-C-780, DAM3-E-SA-C-790, DAM3-E-SA-C-800, DAM3-E-SA-C-810, DAM3-E-SA-C-820, DAM3-E-SA-C-830 → DAM3-C-B6-S-637, DAM3-E-MT-C-2010 | resources Carperter [32 h]; Construction Cost [5498.72] → Carperter [32 h]; Construction Cost [9946.13] |
| DAM3-C-B6-S-627 | Pouring Concrete for column neck | 2026-02-10 A → 2026-05-17 A (+96d) | 2026-03-02 A → 2026-05-17 A (+76d) |  |  | resources Mason [16 h]; Carperter [16 h]; Concrete Mixer [8 h]; Steel Fixer [16 h]; Equipment Operator [16 h]; Construction Cost [27492.4] → Mason [16 h]; Carperter [16 h]; Concrete Mixer [8 h]; Steel Fixer [16 h]; Equipment Operator [16 h]; Construction Cost [24865.3] |
| DAM3-C-B6-S-677 | Damp proof /Bitumin paint on Footings & column neck | 2026-02-07 A → 2026-05-18 A (+100d) | 2026-03-03 A → 2026-05-19 A (+77d) |  |  | resources Painter [32 h]; Construction Cost [6903.81] → Painter [32 h]; Construction Cost [24777.7] |
| DAM3-C-B6-S-737 | Backfilling / Compaction up to Bottom of Grade Beams | 2026-02-14 A → 2026-05-24 A (+99d) | 2026-04-06 A → 2026-06-01 A (+56d) | 14d → 7d | DAM3-C-B6-S-677, DAM3-E-SA-EX-690, DAM3-E-SA-EX-700, DAM3-E-SA-EX-710, DAM3-E-SA-EX-720, DAM3-E-SA-EX-960, DAM3-E-SA-EX-970, DAM3-E-SA-EX-750, DAM3-E-SA-EX-760, DAM3-E-SA-EX-770, DAM3-E-SA-EX-780 → DAM3-C-B6-S-677 | resources General Labour [256 h]; Truck [128 h]; Mini Roller Compactor [128 h]; Equipment Operator [256 h]; Wheel Loader [128 h]; Construction Cost [32707.9] → General Labour [256 h]; Truck [128 h]; Mini Roller Compactor [128 h]; Equipment Operator [256 h]; Wheel Loader [128 h]; Construction Cost [46046.2] |
| 3 | **GRADE BEAM** | 2026-04-14 → 2026-06-04 (+51d) | 2026-05-07 → 2026-06-22 (+46d) |  |  |  |
| DAM3-C-B6-S-557 | Lean Concrete Below Grade Beams | 2026-04-14 A → 2026-06-04 A (+51d) | 2026-04-14 A → 2026-06-04 A (+51d) |  | DAM3-C-B6-S-707, DAM3-E-MT-E-2040, DAM3-E-SA-R-910, DAM3-E-SA-R-920, DAM3-E-SA-R-930, DAM3-E-SA-R-940, DAM3-E-SA-R-950, DAM3-E-SA-R-960 → DAM3-C-B6-S-707 | resources Mason [32 h]; Construction Cost [8238.87] → Mason [32 h]; Construction Cost [4431.19] |
| DAM3-C-B6-S-707 | Vapour barrier for Grade Beams | 2026-04-14 A → 2026-06-04 A (+51d) | 2026-04-14 A → 2026-06-04 A (+51d) |  |  | resources General Labour [32 h]; Construction Cost [4019.9] → General Labour [32 h]; Construction Cost [5293.4] |
| DAM3-C-B6-S-787 | Anti Termite Below Grade Beams | 2026-04-14 A → 2026-06-04 A (+51d) | 2026-04-14 A → 2026-06-04 A (+51d) |  | DAM3-C-B6-S-737, DAM3-E-SA-C-760, DAM3-E-SA-E-1130, DAM3-E-SA-E-950, DAM3-E-SA-E-960, DAM3-E-SA-E-970, DAM3-E-SA-E-980, DAM3-E-SA-E-990, DAM3-E-SA-E-1000, DAM3-E-SA-E-1010, DAM3-E-SA-E-1020, DAM3-E-SA-E-1030, DAM3-E-SA-E-1040, DAM3-E-SA-M-650, DAM3-E-SA-M-660, DAM3-E-SA-M-680, DAM3-E-SA-M-670, DAM3-E-SA-M-690, DAM3-E-SA-M-700, DAM3-E-SA-M-710, DAM3-E-SA-A-900, DAM3-E-SA-A-910, DAM3-E-SA-A-920, DAM3-E-SA-A-930, DAM3-E-SA-A-940, DAM3-E-SA-A-950, DAM3-E-SA-A-960 → DAM3-C-B6-S-737, DAM3-E-SA-C-760 | resources Mason [16 h]; Construction Cost [8441.61] → Mason [16 h]; Construction Cost [11905.5] |
| DAM3-C-B6-S-607 | Rebar for Grade Beams | 2026-04-15 A → 2026-06-08 A (+54d) | 2026-04-29 A → 2026-06-09 A (+41d) |  | DAM3-C-B6-S-557, DAM3-E-SA-C-860, DAM3-E-SA-C-870 → DAM3-C-B6-S-557, DAM3-E-SA-C-860, DAM3-E-SA-C-870, DAM3-P-DL-C-130 | resources Steel Fixer [80 h]; Construction Cost [24993.1] → Steel Fixer [80 h]; Construction Cost [27194.5] |
| DAM3-C-B6-S-617 | Formwork for Grade Beams | 2026-04-15 A → 2026-06-10 A (+56d) | 2026-04-29 A → 2026-06-14 A (+46d) |  | DAM3-C-B6-S-607, DAM3-E-SA-EX-790, DAM3-E-SA-EX-800, DAM3-E-SA-EX-830, DAM3-E-SA-EX-840, DAM3-E-SA-EX-810, DAM3-E-SA-EX-850, DAM3-E-SA-EX-820, DAM3-E-SA-EX-860, DAM3-E-SA-EX-870, DAM3-E-SA-EX-880, DAM3-E-SA-EX-890 → DAM3-C-B6-S-607 | resources Carperter [32 h]; Construction Cost [6248.27] → Carperter [32 h]; Construction Cost [6798.61] |
| DAM3-C-B6-S-767 | Anchor bolts installation | 2026-04-25 A → 2026-06-11 A (+47d) | 2026-04-29 A → 2026-06-13 A (+45d) |  |  | resources Carperter [32 h]; Construction Cost [5667.68] → Carperter [32 h]; Construction Cost [57238.8] |
| DAM3-C-B6-S-567 | Pouring Concrete for Grade Beams | 2026-04-29 A → 2026-06-15 A (+47d) | 2026-04-29 A → 2026-06-15 A (+47d) |  | DAM3-C-B6-S-617, DAM3-C-B6-S-767 → DAM3-C-B6-S-617, DAM3-C-B6-S-767, DAM3-P-DL-C-110 | resources Mason [16 h]; Carperter [16 h]; Concrete Mixer [8 h]; Steel Fixer [16 h]; Equipment Operator [16 h]; Construction Cost [31241.3] → Mason [16 h]; Carperter [16 h]; Concrete Mixer [8 h]; Steel Fixer [16 h]; Equipment Operator [16 h]; Construction Cost [33993.1] |

| ID | Task | Start | Finish | Duration | Complete | Total float | Predecessors | Other |
| --- | --- | --- | --- | --- | --- | --- | --- | --- |
| DAM3-C-B6-S-717 | Damp proof /Bitumin paint on Grade Beams | 2026-05-06 A → 2026-06-20 A (+45d) | 2026-05-07 A → 2026-06-22 A (+46d) |  |  |  |  | resources Painter [32 h]; Construction Cost [6903.81] → Painter [32 h]; Construction Cost [24777.7] |
| 5 | **SLAB ON GRADE** | 2026-05-09 → 2026-06-28 (+50d) | 2026-06-20 → 2026-11-04 (+137d) |  |  |  |  |  |
| DAM3-C-B6-S-747 | Backfilling / Compaction for Slab on Grade | 2026-05-09 A → 2026-06-28 A (+50d) | 2026-05-20 A → 2026-07-06 A (+47d) | 12d → 7d |  |  | DAM3-C-B6-S-717, DAM3-E-SA-E-1050, DAM3-E-SA-E-1060, DAM3-E-SA-E-1070, DAM3-E-SA-E-1080, DAM3-E-SA-E-1090, DAM3-E-SA-E-1100, DAM3-E-SA-E-1110, DAM3-E-SA-M-720, DAM3-E-SA-M-730, DAM3-E-SA-M-740, DAM3-E-SA-M-750, DAM3-E-SA-M-760, DAM3-E-SA-M-770, DAM3-E-SA-M-780, DAM3-E-SA-M-790, DAM3-E-SA-M-800 → DAM3-C-B6-S-717 | resources Mini Roller Compactor [128 h]; General Labour [256 h]; Equipment Operator [256 h]; Wheel Loader [128 h]; Truck [128 h]; Construction Cost [32707.9] → Mini Roller Compactor [128 h]; General Labour [256 h]; Equipment Operator [256 h]; Wheel Loader [128 h]; Truck [128 h]; Construction Cost [23023.1] |
| DAM3-C-B6-S-577 | Pouring Concrete for Ground Slab | 2026-06-01 A → 2026-08-18 A (+78d) | 2026-06-04 A → 2026-08-23 A (+80d) |  |  |  |  | resources Mason [64 h]; Carperter [64 h]; Steel Fixer [64 h]; Concrete Mixer [32 h]; Equipment Operator [64 h]; Construction Cost [304092] → Mason [64 h]; Carperter [64 h]; Steel Fixer [64 h]; Concrete Mixer [32 h]; Equipment Operator [64 h]; Construction Cost [344195] |
| DAM3-C-B6-S-697 | Anti Termite Treatment below Ground Slab | 2026-06-01 A → 2026-08-18 A (+78d) | 2026-06-04 A → 2026-08-23 A (+80d) |  |  |  | DAM3-C-B6-S-747, DAM3-C-B6-S-747 FF, DAM3-E-MT-ENV-2060, DAM3-E-SA-E-1120, DAM3-E-SA-E-940, DAM3-E-SA-E-1140, DAM3-E-SA-E-1150, DAM3-E-SA-E-1160, DAM3-E-SA-E-1170, DAM3-E-SA-E-1180 → DAM3-C-B6-S-747, DAM3-C-B6-S-747 FF | resources General Labour [16 h]; Construction Cost [11255.5] → General Labour [16 h]; Construction Cost [15874.1] |
| DAM3-C-B6-S-727 | Vapour barrier for below Ground Slab | 2026-06-01 A → 2026-08-18 A (+78d) | 2026-06-04 A → 2026-08-23 A (+80d) |  |  |  |  | resources General Labour [32 h]; Construction Cost [10050.1] → General Labour [32 h]; Construction Cost [13233.5] |
| DAM3-C-B6-S-757 | Concrete pad | 2026-06-17 A → 2026-10-28 (+133d) | 2026-06-20 A → 2026-11-04 (+137d) |  | 100% → 0% | none → 9d |  | resources Mason [224 h]; Construction Cost [1803.82] → Mason [112 h]; Construction Cost [907.11] |
| 4 | **COLUMNS & BEAMS** | 2026-02-28 → 2026-06-08 (+100d) | 2026-07-16 → 2026-10-06 (+82d) |  |  |  |  |  |
| DAM3-C-B6-S-6101 | Rebar for Tie Beams | 2026-02-28 A → 2026-06-08 A (+100d) | 2026-03-02 A → 2026-06-13 A (+103d) |  |  |  |  | resources Steel Fixer [64 h]; Construction Cost [7796.52] → Steel Fixer [64 h]; Construction Cost [7263.64] |
| DAM3-C-B6-S-6102 | Formwork for Tie Beams | 2026-03-02 A → 2026-06-11 A (+101d) | 2026-03-04 A → 2026-06-14 A (+102d) |  |  |  |  | resources Carperter [32 h]; Construction Cost [1949.44] → Carperter [32 h]; Construction Cost [1815.91] |
| DAM3-C-B6-S-6103 | Pouring Concrete for Tie Beams | 2026-03-05 A → 2026-06-15 A (+102d) | 2026-03-05 A → 2026-06-15 A (+102d) |  |  |  |  | resources Mason [16 h]; Carperter [16 h]; Concrete Mixer [8 h]; Steel Fixer [16 h]; Equipment Operator [16 h]; Construction Cost [9745.95] → Mason [16 h]; Carperter [16 h]; Concrete Mixer [32 h]; Steel Fixer [16 h]; Equipment Operator [16 h]; Construction Cost [9079.54] |
| DAM3-C-B6-S-5101 | Rebar for column | 2026-06-01 A → 2026-07-18 A (+47d) | 2026-06-04 A → 2026-07-20 A (+46d) | 7d → 5d |  |  | DAM3-C-B6-S-747, DAM3-E-SA-C-820, DAM3-C-B6-M-510 → DAM3-C-B6-S-747, DAM3-E-SA-C-820 | resources Steel Fixer [112 h]; Construction Cost [18494.8] → Steel Fixer [112 h]; Construction Cost [20144] |
| DAM3-C-B6-S-5102 | Formwork for column | 2026-06-09 A → 2026-07-23 A (+44d) | 2026-06-11 A → 2026-08-11 A (+61d) |  |  |  | DAM3-C-B6-S-5101, DAM3-E-SA-EX-1050 → DAM3-C-B6-S-5101 | resources Carperter [64 h]; Construction Cost [4623.84] → Carperter [64 h]; Construction Cost [5036.01] |
| DAM3-C-B6-S-5103 | Pouring Concrete for column | 2026-06-13 A → 2026-07-26 A (+43d) | 2026-06-13 A → 2026-08-13 A (+61d) |  |  |  |  | resources Mason [16 h]; Carperter [16 h]; Concrete Mixer [8 h]; Steel Fixer [16 h]; Equipment Operator [16 h]; Construction Cost [23118.6] → Mason [16 h]; Carperter [16 h]; Concrete Mixer [32 h]; Steel Fixer [16 h]; Equipment Operator [16 h]; Construction Cost [25180.1] |
| DAM3-C-B6-S-6113 | Rebar for Beams | 2026-07-08 A → 2026-09-21 A (+75d) | 2026-07-16 A → 2026-09-22 A (+68d) |  |  |  |  | resources Steel Fixer [64 h]; Construction Cost [11954.6] → Steel Fixer [64 h]; Construction Cost [13379.1] |
| DAM3-C-B6-S-6123 | Formwork for Beams | 2026-07-08 A → 2026-09-28 A (+82d) | 2026-07-16 A → 2026-10-04 A (+80d) |  |  |  |  | resources Carperter [32 h]; Construction Cost [2988.97] → Carperter [32 h]; Construction Cost [3344.77] |
| DAM3-C-B6-S-6133 | Pouring Concrete for Beams | 2026-07-11 A → 2026-10-01 A (+82d) | 2026-07-16 A → 2026-10-06 A (+82d) |  |  |  |  | resources Mason [16 h]; Carperter [16 h]; Concrete Mixer [8 h]; Steel Fixer [16 h]; Equipment Operator [16 h]; Construction Cost [14943.6] → Mason [16 h]; Carperter [16 h]; Concrete Mixer [32 h]; Steel Fixer [16 h]; Equipment Operator [16 h]; Construction Cost [16723.9] |
| 5 | **STRUCTURAL STEEL** | 2026-05-16 → 2026-07-06 (+51d) | 2026-08-15 → 2026-10-27 (+73d) |  |  |  |  |  |
| DAM3-C-B6-SS-150 | Installation of columns | 2026-05-16 A → 2026-07-06 A (+51d) | 2026-05-20 A → 2026-07-06 A (+47d) |  |  |  | DAM3-E-SA-C-790, PES -Steel Structure, DAM3-C-B6-S-717 → DAM3-C-B6-S-577, DAM3-E-SA-C-790, DAM3-E-ST-A-1700 | resources Structural Steel Fixer [80 h]; General Labour [80 h]; Equipment Operator [80 h]; Mobile Crane [40 h]; Construction Cost [164363] → Structural Steel Fixer [80 h]; General Labour [80 h]; Equipment Operator [80 h]; Mobile Crane [24 h]; Construction Cost [217508] |
| DAM3-C-B6-SS-160 | Installation of raft and purlins | 2026-05-16 A → 2026-07-06 A (+51d) | 2026-05-20 A → 2026-07-07 A (+48d) |  |  |  |  | resources Structural Steel Fixer [160 h]; General Labour [160 h]; Mobile Crane [80 h]; Equipment Operator [160 h]; Construction Cost [340061] → Structural Steel Fixer [160 h]; General Labour [160 h]; Mobile Crane [56 h]; Equipment Operator [160 h]; Construction Cost [326261] |
| DAM3-C-B6-SS-1020 | Intumescent paint to steel works | 2026-06-13 A → 2026-07-25 A (+42d) | 2026-06-22 A → 2026-08-17 A (+56d) | 5d → 7d |  |  | DAM3-C-B6-S-747, PES -Steel Structure, DAM3-C-B6-SS-160 → DAM3-C-B6-S-747, DAM3-E-ST-A-1700, DAM3-C-B6-SS-160 | resources Painter [112 h]; Construction Cost [269284] → Painter [112 h]; Construction Cost [317760] |
| DAM3-C-B6-SS-190 | Installation of roof sheet | 2026-06-22 A → 2026-08-24 A (+63d) | 2026-06-30 A → 2026-08-30 A (+61d) | 7d → 5d |  |  | DAM3-C-B6-A-170, DAM3-C-B6-SS-1020, DAM3-C-B6-S-6133, DAM3-E-SA-C-810 → DAM3-C-B6-A-170, DAM3-C-B6-SS-1020, DAM3-C-B6-S-6133, DAM3-E-SA-C-810, DAM3-C-B6-SS-1040, DAM3-P-ST-A-190, DAM3-P-ST-A-180 | resources Roof sheet worker [160 h]; General Labour [160 h]; Mobile Crane [80 h]; Equipment Operator [160 h]; Construction Cost [453414] → Roof sheet worker [160 h]; General Labour [160 h]; Mobile Crane [40 h]; Equipment Operator [160 h]; Construction Cost [217508] |
| DAM3-C-B6-SS-1050 | Steel members for external platform | 2026-05-25 A → 2026-08-30 A (+97d) | 2026-05-31 A → 2026-08-31 A (+92d) | 5d → 7d |  |  | DAM3-C-B6-SS-1030 → DAM3-C-B6-SS-1030, DAM3-C-B6-S-6133 | resources Construction Cost [27249.1]; General Labour [112 h]; Mobile Crane [56 h]; Structural Steel Fixer [112 h]; Equipment Operator [112 h] → Construction Cost [18670.8]; General Labour [112 h]; Mobile Crane [56 h]; Structural Steel Fixer [112 h]; Equipment Operator [112 h] |
| DAM3-C-B6-SS-180 | Installation of wall sandwich panel | 2026-08-01 A → 2026-10-11 A (+71d) | 2026-08-13 A → 2026-10-13 A (+61d) |  |  |  |  | resources Sandwich panel worker [112 h]; General Labour [112 h]; Mobile Crane [56 h]; Equipment Operator [112 h]; Construction Cost [170030] → Sandwich panel worker [112 h]; General Labour [112 h]; Mobile Crane [40 h]; Equipment Operator [112 h]; Construction Cost [326261] |
| DAM3-C-B6-SS-1030 | Steel members for office area | 2026-05-25 A → 2026-10-11 A (+139d) | 2026-05-31 A → 2026-10-12 A (+134d) | 5d → 7d |  |  |  | resources Construction Cost [97318.2]; Equipment Operator [112 h]; General Labour [112 h]; Mobile Crane [56 h]; Structural Steel Fixer [112 h] → Construction Cost [115805]; Equipment Operator [112 h]; General Labour [112 h]; Mobile Crane [40 h]; Structural Steel Fixer [112 h] |
| DAM3-C-B6-SS-1040 | Epoxy paint to steel members at office area | 2026-08-13 A → 2026-10-20 (+68d) | 2026-08-15 A → 2026-10-27 (+73d) | 5d → 7d | 100% → 0% | none → 0d |  | resources Painter [112 h]; Construction Cost [24329.5] → Painter [112 h]; Construction Cost [23161] |
| DAM3-C-B6-SS-1060 | Epoxy paint for external platform | 2026-07-28 A → 2026-10-20 (+84d) | 2026-07-30 A → 2026-10-25 (+87d) |  | 100% → 0% | none → 2d |  | resources Painter [80 h]; Construction Cost [6812.27] → Painter [80 h]; Construction Cost [3734.16] |
| 2 | **ARCHITECTURAL** | 2026-06-17 → 2026-08-15 (+59d) | 2026-10-22 → 2027-01-06 (+76d) |  |  |  |  |  |
| 1 | **MASONARY WORKS** | 2026-06-17 → 2026-08-29 (+73d) | 2026-07-05 → 2026-09-15 (+72d) |  |  |  |  |  |
| DAM3-C-B6-A-170 | Block work at factory area | 2026-06-17 A → 2026-08-29 A (+73d) | 2026-07-05 A → 2026-09-07 A (+64d) |  |  |  | DAM3-C-B6-S-577, DAM3-C-B6-SS-160, DAM3-E-SA-A-830, DAM3-E-SA-A-840, DAM3-E-SA-A-860, DAM3-E-SA-A-870, DAM3-E-MT-A-2020, DAM3-P-ST-A-200, DAM3-C-B6-SS-1060, DAM3-C-B6-SS-1040, DAM3-P-ST-E-370 → DAM3-C-B6-S-577, DAM3-C-B6-SS-160, DAM3-E-SA-A-830, DAM3-E-SA-A-840, DAM3-E-SA-A-860, DAM3-E-SA-A-870, DAM3-E-MT-A-2020, DAM3-P-ST-A-200 | resources AAC panel erector [240 h]; General Labour [240 h]; Equipment Operator [240 h]; Mobile Crane [120 h]; Construction Cost [38856.6] → AAC panel erector [240 h]; General Labour [240 h]; Equipment Operator [240 h]; Mobile Crane [120 h]; Construction Cost [58338.7] |
| DAM3-C-B6-A-200 | Block work at office area | 2026-06-17 A → 2026-08-30 A (+74d) | 2026-07-05 A → 2026-09-09 A (+66d) |  |  |  | DAM3-C-B6-A-170, DAM3-C-B6-SS-190, DAM3-C-B6-SS-1030 → DAM3-C-B6-A-170, DAM3-C-B6-SS-1030, DAM3-C-B6-SS-1060, DAM3-C-B6-SS-1040, DAM3-C-B6-SS-1020 | resources AAC panel erector [160 h]; General Labour [160 h]; Mobile Crane [80 h]; Equipment Operator [160 h]; Construction Cost [9714] → AAC panel erector [160 h]; General Labour [160 h]; Mobile Crane [56 h]; Equipment Operator [160 h]; Construction Cost [6179.18] |
| DAM3-C-B6-A-620 | Block work at toilet area | 2026-06-17 A → 2026-08-31 A (+75d) | 2026-07-05 A → 2026-09-15 A (+72d) |  |  |  | DAM3-C-B6-A-200, DAM3-P-ST-E-320 → DAM3-C-B6-A-200 | resources Mason [112 h]; Construction Cost [15836.3] → Mason [112 h]; Construction Cost [14436.3] |
| 5 | **WALL FINISHES** | 2026-08-02 → 2026-10-15 (+74d) | 2026-10-19 → 2026-12-14 (+56d) |  |  |  |  |  |
| DAM3-C-B6-A-630 | Internal Wall Plaster | 2026-08-02 A → 2026-10-15 A (+74d) | 2026-08-13 A → 2026-10-19 A (+67d) |  |  |  | DAM3-C-B6-A-620, DAM3-C-B6-E-413, DAM3-E-SA-A-1170, DAM3-E-SA-A-880, DAM3-C-B6-S-757, DAM3-P-ST-E-350, DAM3-P-ST-E-340 → DAM3-C-B6-A-620, DAM3-C-B6-E-413, DAM3-E-SA-A-1170, DAM3-E-SA-A-880, DAM3-C-B6-S-757 | resources Mason [240 h]; Construction Cost [29610.2] → Mason [240 h]; Construction Cost [48590.2] |
| DAM3-C-B6-A-680 | Paint to Plaster (Primer, Putty & First Coat) | 2026-08-25 A → 2026-12-07 (+104d) | 2026-10-19 → 2026-12-14 (+56d) |  | 90% → 0% | 9.35d → 3.6d |  | resources Painter [112 h]; Construction Cost [26649.5] → Painter [112 h]; Construction Cost [44167.3] |
| 2 | **CIELING FINISHES** | 2026-09-19 → 2026-11-29 (+71d) | 2026-09-24 → 2026-12-03 (+70d) |  |  |  |  |  |
| DAM3-C-B6-A-690 | Installation of Ceiling Gypsum Board | 2026-09-19 A → 2026-11-29 (+71d) | 2026-09-24 A → 2026-12-03 (+70d) |  | 100% → 0% | none → 0d | DAM3-C-B6-A-670, DAM3-C-B6-S-757, DAM3-E-SA-A-890, DAM3-P-ST-A-330 → DAM3-C-B6-A-670, DAM3-C-B6-S-757, DAM3-E-SA-A-890, DAM3-P-ST-A-330, DAM3-E-ST-E-0230, DAM3-P-ST-E-280, DAM3-P-ST-E-270 | resources Carperter [80 h]; Construction Cost [44650.2] → Carperter [80 h]; Construction Cost [46792.3] |
| 6 | **FLOOR FINISHES** | 2026-09-08 → 2026-11-21 (+74d) | 2026-10-15 → 2027-01-06 (+83d) |  |  |  |  |  |
| DAM3-C-B6-A-670 | Tiles for Toilet | 2026-09-22 A → 2026-11-21 (+60d) | 2026-09-24 A → 2026-11-28 (+65d) |  | 100% → 0% | none → 0d | DAM3-C-B6-A-810, DAM3-E-SA-A-900, DAM3-E-SA-A-910, DAM3-P-ST-A-280, DAM3-P-ST-E-330, DAM3-P-ST-E-300, DAM3-P-ST-E-290 → DAM3-C-B6-A-810, DAM3-E-SA-A-900, DAM3-E-SA-A-910, DAM3-P-ST-A-280, DAM3-C-B6-SS-190 | resources Tile Fixer [112 h]; Construction Cost [48089.6] → Tile Fixer [112 h]; Construction Cost [46530.7] |
| DAM3-C-B6-A-700 | Tiles for Office Area | 2026-09-08 A → 2026-12-05 (+88d) | 2026-09-10 A → 2026-12-06 (+87d) |  | 100% → 0% | none → 0d | DAM3-C-B6-A-690, DAM3-E-ST-M-3410, DAM3-P-ST-M-560, DAM3-P-ST-M-420 → DAM3-C-B6-A-690 | resources Tile Fixer [32 h]; Construction Cost [25626.5] → Tile Fixer [32 h]; Construction Cost [26867.3] |
| DAM3-C-B6-A-830 | Granite strip | 2026-09-22 A → 2026-12-07 (+76d) | 2026-09-24 A → 2026-12-08 (+75d) |  | 100% → 0% | none → 0d | DAM3-C-B6-A-700, DAM3-P-ST-A-290, DAM3-P-ST-M-580 → DAM3-C-B6-A-700, DAM3-P-ST-A-290 | resources Tile Fixer [32 h]; Construction Cost [1454.24] → Tile Fixer [32 h]; Construction Cost [671.12] |
| DAM3-C-B6-A-850 | Epoxy paint | 2026-09-24 A → 2027-01-02 (+100d) | 2026-10-15 A → 2027-01-06 (+83d) | 7d → 5d | 100% → 0% | none → 0d | DAM3-C-B6-A-960, DAM3-P-ST-A-310 → DAM3-C-B6-A-790, DAM3-C-B6-A-960, DAM3-P-ST-A-310 | resources Painter [112 h]; Construction Cost [102516] → Painter [112 h]; Construction Cost [115420] |
| 3 | **DOORS & WINDOWS** | 2026-07-29 → 2026-10-28 (+91d) | 2026-09-26 → 2026-11-15 (+50d) |  |  |  |  |  |
| DAM3-C-B6-A-1010 | Window (CW1) | 2026-07-29 A → 2026-10-28 (+91d) | 2026-09-24 A → 2026-11-04 (+41d) |  | 100% → 0% | none → 0d |  | resources Carperter [112 h]; Construction Cost [90682.8] → Carperter [112 h]; Construction Cost [94173.2] |
| DAM3-C-B6-A-640 | Roll up Shutter Door | 2026-08-13 A → 2026-11-05 (+84d) | 2026-08-15 A → 2026-11-05 (+82d) |  | 100% → 0% | none → 0d |  | resources Carperter [16 h]; Construction Cost [66353.3] → Carperter [16 h]; Construction Cost [68619.2] |
| DAM3-C-B6-A-650 | Supply and install (D5) 1000*2200mm single leaf steel door with door | 2026-08-26 A → 2026-11-07 (+73d) | 2026-09-10 A → 2026-11-07 (+58d) |  | 100% → 0% | none → 0d |  | resources Carperter [16 h]; Construction Cost [15482.4] → Carperter [16 h]; Construction Cost [16016.2] |
| DAM3-C-B6-A-710 | Supply and install (D4) 800*2200 mm single leaf aluminum door with door | 2026-09-14 A → 2026-11-08 (+55d) | 2026-09-26 A → 2026-11-08 (+43d) |  | 100% → 0% | none → 0d |  | resources Carperter [16 h]; Construction Cost [21896.6] → Carperter [16 h]; Construction Cost [22737.8] |
| DAM3-C-B6-A-720 | Supply and install (D7) 1000*2200 mm single leaf aluminum door with door | 2026-09-14 A → 2026-11-09 (+56d) | 2026-09-26 A → 2026-11-09 (+44d) |  | 100% → 0% | none → 0d |  | resources Carperter [16 h]; Construction Cost [7520.04] → Carperter [16 h]; Construction Cost [7811.07] |
| DAM3-C-B6-A-940 | Supply and install (D3) 1000*2200 mm single leaf aluminum door with door | 2026-09-14 A → 2026-11-10 (+57d) | 2026-09-26 A → 2026-11-10 (+45d) |  | 100% → 0% | none → 0d | DAM3-C-B6-A-720, DAM3-P-ST-EN-130 → DAM3-C-B6-A-720 | resources Carperter [16 h]; Construction Cost [15482.4] → Carperter [16 h]; Construction Cost [16016.2] |
| DAM3-C-B6-A-950 | Supply and install fire rated 45 min (D2) 1200*2200 mm single leaf steel door | 2026-08-26 A → 2026-11-11 (+77d) | 2026-09-10 A → 2026-11-11 (+62d) |  | 100% → 0% | none → 0d | DAM3-C-B6-A-940 → DAM3-C-B6-A-940, DAM3-P-DL-E-210 | resources Carperter [16 h]; Construction Cost [16146] → Carperter [16 h]; Construction Cost [16711.5] |
| DAM3-C-B6-A-960 | Skylight fixtures installation | 2026-08-08 A → 2026-11-12 (+96d) | 2026-08-15 A → 2026-11-15 (+92d) | 7d → 3d | 100% → 0% | none → 0d |  | resources Carperter [112 h]; Construction Cost [61929.7] → Carperter [112 h]; Construction Cost [6489.89] |
| 4 | **WATER PROOFING WORKS** | 2026-08-11 → 2026-11-16 (+97d) | 2026-08-13 → 2026-11-19 (+98d) |  |  |  |  |  |
| DAM3-C-B6-A-810 | Waterproofing membrane for toilets | 2026-08-11 A → 2026-11-16 (+97d) | 2026-08-13 A → 2026-11-19 (+98d) |  | 100% → 0% | none → 0d |  | resources General Labour [64 h]; Construction Cost [4653.33] → General Labour [64 h]; Construction Cost [4879.02] |
| 7 | **METAL WORKS** | 2026-08-17 → 2026-08-15 (-2d) | 2026-10-22 → 2026-12-21 (+60d) |  |  |  |  |  |
| DAM3-C-B6-A-750 | Galvanised Steel Gratings | 2026-10-06 A → 2026-08-15 A (-52d) | 2026-10-07 A → 2026-08-15 A (-53d) |  |  |  |  | resources Steel Fixer [32 h]; General Labour [32 h]; Construction Cost [6237.21] → Steel Fixer [32 h]; General Labour [32 h]; Construction Cost [6455.16] |
| DAM3-C-B6-A-740 | Steel Ladder | 2026-08-17 A → 2026-12-09 (+114d) | 2026-08-29 A → 2026-12-10 (+103d) |  | 100% → 0% | none → 0d |  | resources Steel Fixer [32 h]; General Labour [32 h]; Construction Cost [9510.64] → Steel Fixer [32 h]; General Labour [32 h]; Construction Cost [9839.16] |
| DAM3-C-B6-A-840 | Steel railing works | 2026-10-19 → 2026-12-12 (+54d) | 2026-10-22 → 2026-12-15 (+54d) |  |  | 8.75d → 0d | DAM3-C-B6-A-740, DAM3-P-ST-A-230, DAM3-P-ST-EX-150, DAM3-P-DL-EX-140, DAM3-P-ST-EX-140, DAM3-P-ST-EX-130, DAM3-P-DL-EX-110, DAM3-P-DL-EX-100, DAM3-P-DL-EX-90 → DAM3-C-B6-A-740, DAM3-P-ST-A-230 | resources Steel Fixer [64 h]; General Labour [64 h]; Construction Cost [7497.92] → Steel Fixer [64 h]; General Labour [64 h]; Construction Cost [1533.98] |
| DAM3-C-B6-A-760 | Aluminium composite panel | 2026-09-05 A → 2026-12-16 (+102d) | 2026-10-03 A → 2026-12-21 (+79d) |  | 100% → 0% | none → 0d | DAM3-C-B6-A-840 SS, DAM3-E-ST-A-1720 → DAM3-C-B6-A-840, DAM3-E-ST-A-1720 | resources Steel Fixer [80 h]; General Labour [80 h]; Construction Cost [175670] → Steel Fixer [80 h]; General Labour [80 h]; Construction Cost [175889] |
| 8 | **SPECIALTIES** | 2026-09-22 → 2026-12-22 (+91d) | 2026-10-21 → 2026-12-31 (+71d) |  |  |  |  |  |
| DAM3-C-B6-A-770 | Installation of fittings | 2026-09-22 A → 2026-12-22 (+91d) | 2026-09-24 A → 2026-12-27 (+94d) |  | 100% → 0% | none → 0d | DAM3-C-B6-A-750 SS, DAM3-P-ST-M-570 → DAM3-C-B6-A-750, DAM3-P-ST-M-570 | resources Plumber [80 h]; Construction Cost [21686.5] → Plumber [80 h]; Construction Cost [22981.3] |
| DAM3-C-B6-A-1000 | Identification sign; ID01 & ID02 | 2026-10-19 → 2026-12-28 (+70d) | 2026-10-21 → 2026-12-30 (+70d) |  |  | 9.75d → 0d |  | resources Mason [48 h]; Construction Cost [9289.46] → Mason [48 h]; Construction Cost [9630.56] |
| DAM3-C-B6-A-790 | Furniture Installation | 2026-10-19 → 2026-12-31 (+73d) | 2026-10-19 → 2026-12-31 (+73d) |  |  | 9.75d → 0d | DAM3-C-B6-A-1000 SS → DAM3-C-B6-A-1000 | resources General Labour [16 h]; Mason [16 h]; Construction Cost [10561.2] → General Labour [16 h]; Mason [16 h]; Construction Cost [12468.8] |
| 3 | **MECHANICAL** | 2026-04-25 → 2026-07-14 (+80d) | 2026-09-24 → 2027-01-06 (+104d) |  |  |  |  |  |
| 1 | **HVAC** | 2026-07-11 → 2026-12-15 (+157d) | 2026-09-24 → 2027-01-03 (+101d) |  |  |  |  |  |
| 1 | **FIRST STAGE** | 2026-07-11 → 2026-12-22 (+164d) | 2026-08-02 → 2026-12-26 (+146d) |  |  |  |  |  |
| DAM3-C-B6-M-450 | Installation of HVAC Ducts | 2026-07-11 A → 2026-12-22 (+164d) | 2026-08-02 A → 2026-12-23 (+143d) |  | 100% → 0% | none → 14.7d |  | resources Ductman [32 h]; Construction Cost [141482] → Ductman [32 h]; Construction Cost [149489] |
| DAM3-C-B6-M-480 | Installation of Duct insulation | 2026-07-11 A → 2026-12-24 (+166d) | 2026-08-02 A → 2026-12-26 (+146d) |  | 100% → 0% | none → 14.7d |  | resources Ductman [32 h]; Construction Cost [18747.3] → Ductman [32 h]; Construction Cost [21205.4] |
| 2 | **SECOND STAGE** | 2026-08-02 → 2026-12-15 (+135d) | 2026-09-24 → 2027-01-03 (+101d) |  |  |  |  |  |
| DAM3-C-B6-M-440 | Installation of Exhaust Fans | 2026-08-02 A → 2026-12-15 (+135d) | 2026-08-02 A → 2026-12-16 (+136d) |  | 100% → 0% | none → 14.7d |  | resources AC Technician [32 h]; Construction Cost [9331.24] → AC Technician [32 h]; Construction Cost [7938.56] |
| DAM3-C-B6-M-470 | Installation of Wall Propeller Type Exhaust Fan | 2026-09-02 A → 2026-12-17 (+106d) | 2026-09-12 A → 2026-12-21 (+100d) |  | 100% → 0% | none → 14.7d |  | resources AC Technician [64 h]; Construction Cost [17417.7] → AC Technician [64 h]; Construction Cost [46831.6] |

| ID | Task | Start | Finish | Duration | Complete | Total float | Predecessors | Other |
| --- | --- | --- | --- | --- | --- | --- | --- | --- |
| DAM3-C-B6-M-460 | Installation of Diffuser | 2026-09-16 A → 2026-12-27 (+102d) | 2026-09-24 A → 2026-12-28 (+95d) |  | 100% → 0% | none → 14.7d |  | resources Ductman [32 h]; Construction Cost [2764.72] → Ductman [32 h]; Construction Cost [2144] |
| DAM3-C-B6-M-650 | Supply, install, test and commission door grilles & exhaust louvers | 2026-09-02 A → 2027-01-02 (+122d) | 2026-09-12 A → 2027-01-03 (+113d) |  | 100% → 0% | none → 11.7d | DAM3-C-B6-M-460 → DAM3-C-B6-M-460, DAM3-C-B6-A-790 | resources Ductman [32 h]; Construction Cost [7188.28] → Ductman [32 h]; Construction Cost [5574.4] |
| 2 | **FIRE FIGHTING SYSTEM** | 2026-06-24 → 2026-10-11 (+109d) | 2026-09-12 → 2027-01-06 (+116d) |  |  |  |  |  |
| 1 | **FIRST STAGE** | 2026-06-24 → 2026-10-11 (+109d) | 2026-08-08 → 2026-10-15 (+68d) |  |  |  |  |  |
| DAM3-C-B6-M-610 | Installation of Fire Fighting Pipes (Seamless Black Steel) | 2026-06-24 A → 2026-10-11 A (+109d) | 2026-08-08 A → 2026-10-15 A (+68d) |  |  |  |  | resources Pipe Fitter [112 h]; Construction Cost [60425.7] → Pipe Fitter [112 h]; Construction Cost [72394.8] |
| DAM3-C-B6-M-620 | Installation of Fire Fighting Valve | 2026-06-24 A → 2026-10-11 A (+109d) | 2026-08-08 A → 2026-10-15 A (+68d) |  |  |  |  | resources Pipe Fitter [80 h]; Construction Cost [12712.2] → Pipe Fitter [80 h]; Construction Cost [12199.4] |
| 2 | **SECOND STAGE** | 2026-07-11 → 2026-12-15 (+157d) | 2026-09-12 → 2027-01-06 (+116d) |  |  |  |  |  |
| DAM3-C-B6-M-630 | Installation of Fire Hose Cabinet | 2026-07-11 A → 2026-12-15 (+157d) | 2026-09-12 A → 2026-12-17 (+96d) |  | 100% → 0% | none → 17d |  | resources Pipe Fitter [48 h]; Construction Cost [11147.4] → Pipe Fitter [48 h]; Construction Cost [15158.6] |
| DAM3-C-B6-M-680 | Supply, install, test and commission Fire Department Connection(FDC) | 2026-07-11 A → 2027-01-04 (+177d) | 2026-08-08 A → 2027-01-06 (+151d) |  | 100% → 0% | none → 11.7d |  | resources Pipe Fitter [48 h]; Construction Cost [2598.84] → Pipe Fitter [48 h]; Construction Cost [2706.06] |
| 3 | **SEWER AND DRAINAGE SYSTEM** | 2026-04-25 → 2026-07-14 (+80d) | 2026-09-22 → 2026-12-16 (+85d) |  |  |  |  |  |
| 1 | **FIRST STAGE** | 2026-04-25 → 2026-07-14 (+80d) | 2026-08-08 → 2026-11-30 (+114d) |  |  |  |  |  |
| DAM3-C-B6-M-510 | Installation of Sanitary Waste / Drainage Pipes | 2026-04-25 A → 2026-07-14 A (+80d) | 2026-05-16 A → 2026-07-18 A (+63d) |  |  |  |  | resources Plumber [64 h]; Construction Cost [14362.4] → Plumber [64 h]; Construction Cost [18585.1] |
| DAM3-C-B6-M-690 | Installation of Trench drain | 2026-06-17 A → 2026-07-15 A (+28d) | 2026-08-08 A → 2026-07-18 A (-21d) |  |  |  |  | resources Plumber [80 h]; Construction Cost [11379.6] → Plumber [80 h]; Construction Cost [11508.8] |
| DAM3-C-B6-M-530 | Installation of Floor Drain | 2026-06-17 A → 2026-11-29 (+165d) | 2026-08-08 A → 2026-11-30 (+114d) |  | 100% → 0% | none → 14.6d |  | resources Plumber [32 h]; Construction Cost [10616.5] → Plumber [32 h]; Construction Cost [11056] |
| 2 | **SECOND STAGE** | 2026-08-05 → 2026-12-01 (+118d) | 2026-09-22 → 2026-12-16 (+85d) |  |  |  |  |  |
| DAM3-C-B6-M-490 | Installation of Electric Water Heater | 2026-08-06 A → 2026-12-01 (+117d) | 2026-08-06 A → 2026-12-02 (+118d) |  | 100% → 0% | none → 14.6d |  | resources Plumber [32 h]; Construction Cost [1592.48] → Plumber [32 h]; Construction Cost [1819.51] |
| DAM3-C-B6-M-500 | Installation of Sanitary Fixture and Accessories | 2026-09-16 A → 2026-12-03 (+78d) | 2026-09-22 A → 2026-12-07 (+76d) |  | 100% → 0% | none → 14.6d | DAM3-C-B6-M-490, DAM3-P-ST-M-360, DAM3-C-B6-A-850 → DAM3-C-B6-M-490, DAM3-P-ST-M-360 | resources Plumber [64 h]; Construction Cost [16243] → Plumber [64 h]; Construction Cost [19921.7] |
| DAM3-C-B6-M-520 | Installation of Lavotary /Wash Basin | 2026-09-16 A → 2026-12-08 (+83d) | 2026-09-22 A → 2026-12-09 (+78d) |  | 100% → 0% | none → 14.6d |  | resources Plumber [32 h]; Construction Cost [20348.3] → Plumber [32 h]; Construction Cost [21416.7] |
| DAM3-C-B6-M-580 | Installation of Bib Tap | 2026-09-16 A → 2026-12-10 (+85d) | 2026-09-22 A → 2026-12-12 (+81d) |  | 100% → 0% | none → 14.6d |  | resources Plumber [32 h]; Construction Cost [2211.78] → Plumber [32 h]; Construction Cost [1900.66] |
| DAM3-C-B6-M-540 | Installation of Water Tap | 2026-08-25 A → 2026-12-13 (+110d) | 2026-09-16 A → 2026-12-14 (+89d) |  | 100% → 0% | none → 14.6d |  | resources Plumber [32 h]; Construction Cost [2654.13] → Plumber [32 h]; Construction Cost [2874.14] |
| DAM3-C-B6-M-550 | Installation of Roof Vent Cap | 2026-08-05 A → 2026-12-15 (+132d) | 2026-09-05 A → 2026-12-16 (+102d) |  | 100% → 0% | none → 14.6d |  | resources Pipe Fitter [32 h]; Construction Cost [829.41] → Pipe Fitter [32 h]; Construction Cost [927.12] |
| 4 | **WATER SUPPLY SYSTEM** | 2026-07-14 → 2026-10-03 (+81d) | 2026-08-06 → 2026-12-17 (+133d) |  |  |  |  |  |
| 1 | **FIRST STAGE** | 2026-07-14 → 2026-10-03 (+81d) | 2026-08-06 → 2026-10-07 (+62d) |  |  |  |  |  |
| DAM3-C-B6-M-590 | Installation of Water Supply Valve | 2026-08-01 A → 2026-10-03 A (+63d) | 2026-08-06 A → 2026-10-07 A (+62d) |  |  |  |  | resources Plumber [32 h]; Construction Cost [15736.8] → Plumber [32 h]; Construction Cost [18274.3] |
| DAM3-C-B6-M-600 | Installation of Water Supply Pipes | 2026-07-14 A → 2026-10-03 A (+81d) | 2026-08-06 A → 2026-10-07 A (+62d) |  |  |  |  | resources Plumber [64 h]; Construction Cost [19520.2] → Plumber [64 h]; Construction Cost [23318.4] |
| 2 | **SECOND STAGE** | 2026-08-01 → 2026-12-15 (+136d) | 2026-08-06 → 2026-12-17 (+133d) |  |  |  |  |  |
| DAM3-C-B6-M-640 | Capped connection | 2026-08-01 A → 2026-12-15 (+136d) | 2026-08-06 A → 2026-12-17 (+133d) | 5d → 3d | 100% → 0% | none → 11.6d |  | resources Plumber [80 h]; Construction Cost [287.53] → Plumber [80 h]; Construction Cost [278.13] |
| 4 | **ELECTRICAL** | 2026-04-25 → 2026-06-08 (+44d) | 2026-10-21 → 2027-01-17 (+88d) |  |  |  |  |  |
| 1 | **FIRST STAGE** | 2026-04-25 → 2026-06-08 (+44d) | 2026-10-19 → 2027-01-06 (+79d) |  |  |  |  |  |
| DAM3-C-B6-E-343 | Installation of Earthing and Grounding | 2026-04-25 A → 2026-06-08 A (+44d) | 2026-10-19 → 2026-10-20 (+1d) |  | 95% → 90% | 9.95d → 40.7d | DAM3-C-B6-E-453 SS, DAM3-E-SA-E-1050, DAM3-E-SA-E-1060, DAM3-E-SA-E-1070, DAM3-P-ST-E-340 → DAM3-E-SA-E-1050, DAM3-E-SA-E-1060, DAM3-E-SA-E-1070, DAM3-P-ST-E-340 | resources Electrician [64 h]; Construction Cost [17002.4] → Electrician [64 h]; Construction Cost [19646.5] |
| DAM3-C-B6-E-413 | Installation of Sleeves & Power outlet | 2026-04-25 A → 2026-06-08 A (+44d) | 2026-09-10 A → 2026-10-24 (+44d) |  | 100% → 50% | none → 19d | DAM3-C-B6-A-620, DAM3-E-SA-E-1130, DAM3-E-SA-E-950, DAM3-E-SA-E-960, DAM3-E-SA-E-970, DAM3-E-MT-E-2040, DAM3-P-ST-E-310 → DAM3-E-SA-E-940, DAM3-E-SA-E-950, DAM3-E-SA-E-960, DAM3-E-SA-E-970, DAM3-E-MT-E-2040, DAM3-P-ST-E-310 | resources Electrician [128 h]; Construction Cost [2853.19] → Electrician [128 h]; Construction Cost [2920.45] |
| DAM3-C-B6-E-373 | Installation of Conduits and wiring outlets - Fire Alarm System | 2026-06-13 A → 2026-06-09 A (-4d) | 2026-06-20 A → 2026-12-23 (+186d) |  | 100% → 50% | none → 3.6d |  | resources Electrician [64 h]; Construction Cost [2026.84] → Electrician [64 h]; Construction Cost [1768.31] |
| DAM3-C-B6-E-393 | Installation of Conduites for Lighting Fixture | 2026-06-13 A → 2026-10-01 A (+110d) | 2026-06-20 A → 2027-01-02 (+196d) |  | 100% → 90% | none → 3.6d |  | resources Electrician [64 h]; Construction Cost [3983.66] → Electrician [64 h]; Construction Cost [8462.97] |
| DAM3-C-B6-E-453 | Installation of LV Cables | 2026-09-05 A → 2026-10-20 (+45d) | 2026-10-15 A → 2026-10-24 (+9d) |  | 100% → 0% | none → 52.55d | DAM3-C-B6-E-443, DAM3-P-ST-E-290, DAM3-C-B6-M-680 → DAM3-P-ST-E-290 | resources Electrician [64 h]; Construction Cost [31551] → Electrician [64 h]; Construction Cost [36390] |
| DAM3-C-B6-E-463 | Installation of Wires | 2026-06-24 A → 2027-01-02 (+192d) | 2026-09-22 A → 2027-01-06 (+106d) |  | 100% → 0% | none → 3.6d |  | resources Electrician [64 h]; Construction Cost [7966.69] → Electrician [64 h]; Construction Cost [16925.9] |
| 2 | **SECOND STAGE** | 2026-06-17 → 2026-10-10 (+115d) | 2026-10-21 → 2027-01-17 (+88d) |  |  |  |  |  |
| DAM3-C-B6-E-473 | Installation of LP-1 Panel | 2026-08-04 A → 2026-10-10 A (+67d) | 2026-09-10 A → 2026-10-14 A (+34d) |  |  |  |  | resources Electrician [32 h]; Construction Cost [15128.5] → Electrician [32 h]; Construction Cost [18403.5] |
| DAM3-C-B6-E-730 | Installation of Solar power plant | 2026-08-22 A → 2026-10-12 A (+51d) | 2026-10-01 A → 2026-10-27 (+26d) |  | 100% → 10% | none → 38.6d |  | resources Plumber [112 h]; Construction Cost [218966] → Plumber [112 h]; Construction Cost [253269] |
| DAM3-C-B6-E-503 | Installation of Access Control System | 2026-06-17 A → 2026-10-20 (+125d) | 2026-10-20 → 2026-10-24 (+4d) |  | 70% → 0% | 8.55d → 61d |  | resources Electrician [64 h]; Construction Cost [24315.4] → Electrician [64 h]; Construction Cost [27616.9] |
| DAM3-C-B6-E-513 | Monitor Modules for Fire Alarm | 2026-09-24 A → 2026-10-25 (+31d) | 2026-10-21 → 2026-10-26 (+5d) |  | 50% → 0% | 8.55d → 61d |  | resources Electrician [32 h]; Construction Cost [3760.02] → Electrician [32 h]; Construction Cost [3882.38] |
| DAM3-C-B6-E-523 | Line Isolator Modules for Fire Alarm | 2026-09-24 A → 2026-10-27 (+33d) | 2026-10-15 A → 2026-10-28 (+13d) |  | 100% → 0% | none → 61d |  | resources Electrician [32 h]; Construction Cost [163.42] → Electrician [32 h]; Construction Cost [185.4] |
| DAM3-C-B6-E-533 | Firewarning flash light with sounder; wall mounted, Weather proof | 2026-09-24 A → 2026-10-27 (+33d) | 2026-10-01 A → 2026-10-28 (+27d) |  | 100% → 0% | none → 61d | DAM3-C-B6-E-523 → DAM3-C-B6-E-523 SS | resources Electrician [32 h]; Construction Cost [2963.79] → Electrician [32 h]; Construction Cost [3082.69] |
| DAM3-C-B6-E-403 | Installation of Wiring Devices | 2026-09-05 A → 2026-12-15 (+101d) | 2026-10-15 A → 2026-12-19 (+65d) |  | 100% → 0% | none → 3.6d | DAM3-C-B6-E-413, DAM3-P-ST-E-350 → DAM3-C-B6-E-413, DAM3-C-B6-A-680, DAM3-P-ST-E-350 | resources Electrician [64 h]; Construction Cost [20742.2] → Electrician [64 h]; Construction Cost [19435.1] |
| DAM3-C-B6-E-433 | Installation of Disconnect Switches | 2026-09-05 A → 2026-12-20 (+106d) | 2026-10-15 A → 2026-12-21 (+67d) |  | 100% → 0% | none → 3.6d |  | resources Electrician [32 h]; Construction Cost [25808.4] → Electrician [32 h]; Construction Cost [30236] |
| DAM3-C-B6-E-353 | Installation of Fire Alarm Control Panel | 2026-09-24 A → 2026-12-24 (+91d) | 2026-10-15 A → 2026-12-27 (+73d) | 4d → 3d | 100% → 0% | none → 3.6d | DAM3-C-B6-E-373, DAM3-E-SA-E-1020, DAM3-P-ST-E-250, DAM3-C-B6-E-730 → DAM3-C-B6-E-373, DAM3-E-SA-E-1020, DAM3-P-ST-E-250 | resources Electrician [64 h]; Construction Cost [16216.6] → Electrician [64 h]; Construction Cost [19451.4] |
| DAM3-C-B6-E-363 | Installation of Fire Detectors & Accessories | 2026-09-24 A → 2026-12-28 (+95d) | 2026-10-12 A → 2026-12-31 (+80d) |  | 100% → 0% | none → 3.6d | DAM3-C-B6-E-353, DAM3-E-SA-E-1080 → DAM3-C-B6-E-353, DAM3-E-SA-E-1080, DAM3-C-B6-M-640 | resources Electrician [64 h]; Construction Cost [31219.2] → Electrician [64 h]; Construction Cost [56740.4] |
| DAM3-C-B6-E-383 | Installation of Lighting fixtures | 2026-09-24 A → 2027-01-06 (+104d) | 2026-10-15 A → 2027-01-09 (+86d) | 4d → 2d | 100% → 0% | none → 3.6d |  | resources Electrician [64 h]; Construction Cost [59751.1] → Electrician [64 h]; Construction Cost [76166.7] |
| DAM3-C-B6-E-423 | Installation of Main Distribution Board | 2026-09-16 A → 2027-01-09 (+115d) | 2026-10-15 A → 2027-01-11 (+88d) |  | 100% → 0% | none → 3.6d |  | resources Electrician [32 h]; Construction Cost [25479.7] → Electrician [32 h]; Construction Cost [32472.7] |
| DAM3-C-B6-E-483 | Installation of PP-AC panel | 2026-09-05 A → 2027-01-11 (+128d) | 2026-10-15 A → 2027-01-13 (+90d) |  | 100% → 0% | none → 3.6d |  | resources Electrician [32 h]; Construction Cost [18214] → Electrician [32 h]; Construction Cost [21648.5] |
| DAM3-C-B6-E-443 | Installation of Telephone Cabinet | 2026-08-13 A → 2027-01-13 (+153d) | 2026-10-01 A → 2027-01-16 (+107d) |  | 100% → 0% | none → 31.3d |  | resources Electrician [32 h]; Construction Cost [23299.8] → Electrician [32 h]; Construction Cost [26991.1] |
| DAM3-C-B6-E-720 | Installation of CCTV System | 2026-06-17 A → 2027-01-13 (+210d) | 2026-10-12 A → 2027-01-17 (+97d) | 7d → 3d | 100% → 0% | none → 3.6d | DAM3-C-B6-E-483 SS, DAM3-E-SA-E-1030, DAM3-E-ST-E-0230 → DAM3-C-B6-E-483, DAM3-E-SA-E-1030, DAM3-E-ST-E-0230 | resources Plumber [112 h]; Construction Cost [66177.6] → Plumber [112 h]; Construction Cost [76349.2] |
| 1 | **STRUCTURAL** | 2026-01-04 → 2026-02-16 (+43d) | 2026-06-20 → 2026-10-27 (+129d) |  |  |  |  |  |
| 1 | **FOOTING** | 2026-01-04 → 2026-02-16 (+43d) | 2026-02-03 → 2026-05-05 (+91d) |  |  |  |  |  |
| DAM3-C-B5-S-250 | Excavation for footings | 2026-01-04 A → 2026-02-16 A (+43d) | 2026-01-12 A → 2026-03-18 A (+65d) | 7d → 4d |  |  | DAM3-C-B6-S-160, DAM3-PMS-MMS-0030, DAM3-PMS-MMS-0020, DAM3-PMS-MMS-0050, DAM3-PMS-MMS-0040 → DAM3-C-B6-S-160 | resources General Labour [112 h]; Equipment Operator [112 h]; Truck [56 h]; Excavator [56 h]; Mini Roller Compactor [56 h]; Construction Cost [66496.4] → General Labour [112 h]; Equipment Operator [112 h]; Truck [32 h]; Excavator [32 h]; Mini Roller Compactor [32 h]; Construction Cost [89859.6] |
| DAM3-C-B5-S-1057 | Lean Concrete Below Footings | 2026-01-18 A → 2026-04-21 A (+93d) | 2026-01-18 A → 2026-04-21 A (+93d) |  |  |  |  | resources Mason [32 h]; Construction Cost [8238.87] → Mason [32 h]; Construction Cost [8229.34] |
| DAM3-C-B5-S-1207 | Vapour Barrier for Footings | 2026-01-18 A → 2026-04-21 A (+93d) | 2026-01-18 A → 2026-04-21 A (+93d) |  |  |  |  | resources General Labour [16 h]; Construction Cost [6030.16] → General Labour [16 h]; Construction Cost [7940.1] |
| DAM3-C-B5-S-1297 | Anti Termite Below Footings | 2026-01-18 A → 2026-04-21 A (+93d) | 2026-01-18 A → 2026-04-21 A (+93d) |  |  |  | DAM3-C-B5-S-250 → DAM3-C-B5-S-6173 | resources Mason [16 h]; Construction Cost [8441.61] → Mason [16 h]; Construction Cost [11905.5] |
| DAM3-C-B5-S-1107 | Rebar for Footings | 2026-01-25 A → 2026-04-28 A (+93d) | 2026-02-02 A → 2026-04-29 A (+86d) |  |  |  |  | resources Steel Fixer [64 h]; Construction Cost [93071.6] → Steel Fixer [64 h]; Construction Cost [101845] |
| DAM3-C-B5-S-1117 | Formwork for Footings | 2026-01-21 A → 2026-05-02 A (+101d) | 2026-01-27 A → 2026-05-03 A (+96d) | 3.12d → 4d |  |  |  | resources Carperter [64 h]; Construction Cost [23267.9] → Carperter [64 h]; Construction Cost [25461.2] |
| DAM3-C-B5-S-1067 | Pouring Concrete for Footings | 2026-02-03 A → 2026-05-05 A (+91d) | 2026-02-03 A → 2026-05-05 A (+91d) |  |  |  |  | resources Carperter [16 h]; Mason [16 h]; Steel Fixer [16 h]; Concrete Mixer [8 h]; Equipment Operator [16 h]; Construction Cost [116339] → Carperter [16 h]; Mason [16 h]; Steel Fixer [16 h]; Concrete Mixer [8 h]; Equipment Operator [16 h]; Construction Cost [127306] |
| 2 | **COLUMN NECK** | 2026-01-29 → 2026-05-03 (+94d) | 2026-03-18 → 2026-05-24 (+67d) |  |  |  |  |  |
| DAM3-C-B5-S-1157 | Rebar for column neck | 2026-01-29 A → 2026-05-03 A (+94d) | 2026-02-07 A → 2026-05-05 A (+87d) |  |  |  |  | resources Steel Fixer [32 h]; Construction Cost [21993.7] → Steel Fixer [32 h]; Construction Cost [14919.2] |
| DAM3-C-B5-S-1167 | Formwork for column neck | 2026-02-10 A → 2026-05-06 A (+85d) | 2026-02-11 A → 2026-05-09 A (+87d) |  |  |  |  | resources Carperter [32 h]; Construction Cost [5498.72] → Carperter [32 h]; Construction Cost [9946.13] |
| DAM3-C-B5-S-1147 | Pouring Concrete for column neck | 2026-02-12 A → 2026-05-10 A (+87d) | 2026-03-02 A → 2026-05-10 A (+69d) | 0.82d → 1d |  |  |  | resources Mason [16 h]; Carperter [16 h]; Concrete Mixer [8 h]; Steel Fixer [16 h]; Equipment Operator [16 h]; Construction Cost [27492.4] → Mason [16 h]; Carperter [16 h]; Concrete Mixer [8 h]; Steel Fixer [16 h]; Equipment Operator [16 h]; Construction Cost [24865.3] |
| DAM3-C-B5-S-1197 | Damp proof /Bitumin paint on Footings & column neck | 2026-02-15 A → 2026-05-11 A (+85d) | 2026-03-03 A → 2026-05-12 A (+70d) | 1.3d → 2d |  |  |  | resources Painter [32 h]; Construction Cost [6903.81] → Painter [32 h]; Construction Cost [24777.7] |
| DAM3-C-B5-S-1257 | Backfilling / Compaction up to Bottom of Grade Beams | 2026-02-17 A → 2026-05-20 A (+92d) | 2026-03-18 A → 2026-05-24 A (+67d) | 12d → 7d |  |  |  | resources General Labour [256 h]; Truck [128 h]; Mini Roller Compactor [128 h]; Equipment Operator [256 h]; Wheel Loader [128 h]; Construction Cost [32707.9] → General Labour [256 h]; Truck [128 h]; Mini Roller Compactor [128 h]; Equipment Operator [256 h]; Wheel Loader [128 h]; Construction Cost [46046.2] |
| 3 | **GRADE BEAM** | 2026-03-07 → 2026-06-01 (+86d) | 2026-04-04 → 2026-06-18 (+75d) |  |  |  |  |  |
| DAM3-C-B5-S-1077 | Lean Concrete Below Grade Beams | 2026-03-07 A → 2026-06-01 A (+86d) | 2026-03-24 A → 2026-06-01 A (+69d) |  |  |  |  | resources Mason [32 h]; Construction Cost [8238.87] → Mason [32 h]; Construction Cost [4431.19] |
| DAM3-C-B5-S-1227 | Vapour barrier for Grade Beams | 2026-03-07 A → 2026-06-01 A (+86d) | 2026-03-24 A → 2026-06-01 A (+69d) |  |  |  |  | resources General Labour [32 h]; Construction Cost [4019.9] → General Labour [32 h]; Construction Cost [5293.4] |
| DAM3-C-B5-S-1307 | Anti Termite Below Grade Beams | 2026-03-07 A → 2026-06-01 A (+86d) | 2026-03-24 A → 2026-06-01 A (+69d) |  |  |  |  | resources Mason [16 h]; Construction Cost [8441.61] → Mason [16 h]; Construction Cost [11905.5] |

| ID | Task | Start | Finish | Duration | Complete | Total float | Predecessors | Other |
| --- | --- | --- | --- | --- | --- | --- | --- | --- |
| DAM3-C-B5-S-1287 | Anchor bolts installation | 2026-03-28 A → 2026-06-02 A (+66d) | 2026-03-29 A → 2026-06-04 A (+67d) |  |  |  |  | resources Carperter [32 h]; Construction Cost [5667.68] → Carperter [32 h]; Construction Cost [57238.8] |
| DAM3-C-B5-S-1127 | Rebar for Grade Beams | 2026-03-16 A → 2026-06-03 A (+79d) | 2026-03-28 A → 2026-06-04 A (+68d) |  |  |  |  | resources Steel Fixer [80 h]; Construction Cost [24993.1] → Steel Fixer [80 h]; Construction Cost [27194.5] |
| DAM3-C-B5-S-1137 | Formwork for Grade Beams | 2026-03-26 A → 2026-06-03 A (+69d) | 2026-03-29 A → 2026-06-07 A (+70d) |  |  |  |  | resources Carperter [32 h]; Construction Cost [6248.27] → Carperter [32 h]; Construction Cost [6798.61] |
| DAM3-C-B5-S-1087 | Pouring Concrete for Grade Beams | 2026-03-29 A → 2026-06-11 A (+74d) | 2026-03-29 A → 2026-06-11 A (+74d) |  |  |  |  | resources Mason [16 h]; Carperter [16 h]; Concrete Mixer [8 h]; Steel Fixer [16 h]; Equipment Operator [16 h]; Construction Cost [31241.3] → Mason [16 h]; Carperter [16 h]; Concrete Mixer [8 h]; Steel Fixer [16 h]; Equipment Operator [16 h]; Construction Cost [33993.1] |
| DAM3-C-B5-S-1237 | Damp proof /Bitumin paint on Grade Beams | 2026-04-04 A → 2026-06-14 A (+71d) | 2026-04-04 A → 2026-06-18 A (+75d) |  |  |  |  | resources Painter [32 h]; Construction Cost [6903.81] → Painter [32 h]; Construction Cost [24777.7] |
| 5 | **SLAB ON GRADE** | 2026-04-13 → 2026-06-21 (+69d) | 2026-06-20 → 2026-10-27 (+129d) |  |  |  |  |  |
| DAM3-C-B5-S-1267 | Backfilling / Compaction for Slab on Grade | 2026-04-13 A → 2026-06-21 A (+69d) | 2026-04-19 A → 2026-06-24 A (+66d) | 12d → 7d |  |  |  | resources Mini Roller Compactor [128 h]; General Labour [256 h]; Equipment Operator [256 h]; Wheel Loader [128 h]; Truck [128 h]; Construction Cost [32707.9] → Mini Roller Compactor [128 h]; General Labour [256 h]; Equipment Operator [256 h]; Wheel Loader [128 h]; Truck [128 h]; Construction Cost [23023.1] |
| DAM3-C-B5-S-1097 | Pouring Concrete for Ground Slab | 2026-05-10 A → 2026-08-01 A (+83d) | 2026-05-13 A → 2026-08-04 A (+83d) |  |  |  |  | resources Mason [64 h]; Carperter [64 h]; Steel Fixer [64 h]; Concrete Mixer [32 h]; Equipment Operator [64 h]; Construction Cost [304092] → Mason [64 h]; Carperter [64 h]; Steel Fixer [64 h]; Concrete Mixer [32 h]; Equipment Operator [64 h]; Construction Cost [344195] |
| DAM3-C-B5-S-1217 | Anti Termite Treatment below Ground Slab | 2026-05-09 A → 2026-08-01 A (+84d) | 2026-05-12 A → 2026-08-04 A (+84d) |  |  |  |  | resources General Labour [16 h]; Construction Cost [11255.5] → General Labour [16 h]; Construction Cost [15874.1] |
| DAM3-C-B5-S-1247 | Vapour barrier for below Ground Slab | 2026-05-09 A → 2026-08-01 A (+84d) | 2026-05-12 A → 2026-08-04 A (+84d) |  |  |  |  | resources General Labour [32 h]; Construction Cost [10050.1] → General Labour [32 h]; Construction Cost [13233.5] |
| DAM3-C-B5-S-1277 | Concrete pad | 2026-06-17 A → 2026-10-20 (+125d) | 2026-06-20 A → 2026-10-27 (+129d) |  | 100% → 0% | none → 18.6d |  | resources Mason [112 h]; Construction Cost [1803.82] → Mason [112 h]; Construction Cost [907.11] |
| 4 | **COLUMNS & BEAMS** | 2026-02-28 → 2026-06-03 (+95d) | 2026-06-20 → 2026-09-22 (+94d) |  |  |  |  |  |
| DAM3-C-B5-S-6101 | Rebar for Tie Beams | 2026-02-28 A → 2026-06-03 A (+95d) | 2026-03-02 A → 2026-06-09 A (+99d) |  |  |  |  | resources Steel Fixer [64 h]; Construction Cost [7796.52] → Steel Fixer [64 h]; Construction Cost [7263.64] |
| DAM3-C-B5-S-6102 | Formwork for Tie Beams | 2026-03-02 A → 2026-06-04 A (+94d) | 2026-03-04 A → 2026-06-10 A (+98d) |  |  |  |  | resources Carperter [32 h]; Construction Cost [1949.44] → Carperter [32 h]; Construction Cost [1815.91] |
| DAM3-C-B5-S-6103 | Pouring Concrete for Tie Beams | 2026-03-05 A → 2026-06-11 A (+98d) | 2026-03-05 A → 2026-06-11 A (+98d) |  |  |  |  | resources Mason [16 h]; Carperter [16 h]; Concrete Mixer [8 h]; Steel Fixer [16 h]; Equipment Operator [16 h]; Construction Cost [9745.95] → Mason [16 h]; Carperter [16 h]; Concrete Mixer [32 h]; Steel Fixer [16 h]; Equipment Operator [16 h]; Construction Cost [9079.54] |
| DAM3-C-B5-S-5101 | Rebar for column | 2026-04-27 A → 2026-07-14 A (+78d) | 2026-05-24 A → 2026-07-16 A (+53d) | 7d → 5d |  |  | DAM3-C-B5-S-1267, DAM3-C-B5-M-1130 → DAM3-C-B5-S-1267 | resources Steel Fixer [112 h]; Construction Cost [18494.8] → Steel Fixer [112 h]; Construction Cost [20144] |
| DAM3-C-B5-S-5102 | Formwork for column | 2026-05-17 A → 2026-07-16 A (+60d) | 2026-05-24 A → 2026-07-20 A (+57d) |  |  |  |  | resources Carperter [64 h]; Construction Cost [4623.84] → Carperter [64 h]; Construction Cost [5036.01] |
| DAM3-C-B5-S-5103 | Pouring Concrete for column | 2026-05-23 A → 2026-07-18 A (+56d) | 2026-05-31 A → 2026-07-21 A (+51d) |  |  |  |  | resources Mason [16 h]; Carperter [16 h]; Concrete Mixer [8 h]; Steel Fixer [16 h]; Equipment Operator [16 h]; Construction Cost [23118.6] → Mason [16 h]; Carperter [16 h]; Concrete Mixer [32 h]; Steel Fixer [16 h]; Equipment Operator [16 h]; Construction Cost [25180.1] |
| DAM3-C-B5-S-6113 | Rebar for Beams | 2026-04-30 A → 2026-09-07 A (+130d) | 2026-06-17 A → 2026-09-15 A (+90d) |  |  |  | DAM3-C-B5-S-6103 → DAM3-C-B5-S-6103, S001-C-TC-A-90 | resources Steel Fixer [64 h]; Construction Cost [11954.6] → Steel Fixer [64 h]; Construction Cost [13379.1] |
| DAM3-C-B5-S-6123 | Formwork for Beams | 2026-06-17 A → 2026-09-15 A (+90d) | 2026-06-18 A → 2026-09-20 A (+94d) |  |  |  |  | resources Carperter [32 h]; Construction Cost [2988.97] → Carperter [32 h]; Construction Cost [3344.77] |
| DAM3-C-B5-S-6133 | Pouring Concrete for Beams | 2026-06-20 A → 2026-09-17 A (+89d) | 2026-06-20 A → 2026-09-22 A (+94d) |  |  |  |  | resources Mason [16 h]; Carperter [16 h]; Concrete Mixer [8 h]; Steel Fixer [16 h]; Equipment Operator [16 h]; Construction Cost [14943.6] → Mason [16 h]; Carperter [16 h]; Concrete Mixer [32 h]; Steel Fixer [16 h]; Equipment Operator [16 h]; Construction Cost [16723.9] |
| 5 | **STRUCTURAL STEEL** | 2026-04-25 → 2026-07-02 (+68d) | 2026-08-06 → 2026-10-27 (+82d) |  |  |  |  |  |
| DAM3-C-B5-SS-270 | Installation of columns | 2026-04-25 A → 2026-07-02 A (+68d) | 2026-04-26 A → 2026-07-05 A (+70d) |  |  |  | DAM3-C-B6-SS-150 → DAM3-C-B5-S-1097 | resources Structural Steel Fixer [80 h]; General Labour [80 h]; Equipment Operator [80 h]; Mobile Crane [40 h]; Construction Cost [164363] → Structural Steel Fixer [80 h]; General Labour [80 h]; Equipment Operator [80 h]; Mobile Crane [24 h]; Construction Cost [217508] |
| DAM3-C-B5-SS-280 | Installation of raft and purlins | 2026-04-26 A → 2026-07-02 A (+67d) | 2026-04-30 A → 2026-07-06 A (+67d) |  |  |  |  | resources Structural Steel Fixer [160 h]; General Labour [160 h]; Mobile Crane [80 h]; Equipment Operator [160 h]; Construction Cost [340061] → Structural Steel Fixer [160 h]; General Labour [160 h]; Mobile Crane [56 h]; Equipment Operator [160 h]; Construction Cost [326261] |
| DAM3-C-B5-SS-1840 | Intumescent paint to steel works | 2026-05-09 A → 2026-07-12 A (+64d) | 2026-05-31 A → 2026-07-20 A (+50d) | 5d → 7d |  |  |  | resources Painter [112 h]; Construction Cost [269284] → Painter [112 h]; Construction Cost [317760] |
| DAM3-C-B5-SS-310 | Installation of roof sheet | 2026-06-03 A → 2026-07-29 A (+56d) | 2026-06-04 A → 2026-08-08 A (+65d) | 7d → 5d |  |  |  | resources Roof sheet worker [160 h]; General Labour [160 h]; Mobile Crane [80 h]; Equipment Operator [160 h]; Construction Cost [453414] → Roof sheet worker [160 h]; General Labour [160 h]; Mobile Crane [40 h]; Equipment Operator [160 h]; Construction Cost [217508] |
| DAM3-C-B5-SS-1030 | Steel members for external platform | 2026-05-02 A → 2026-08-31 A (+121d) | 2026-05-25 A → 2026-09-01 A (+99d) | 5d → 7d |  |  |  | resources Construction Cost [27249.1]; General Labour [112 h]; Mobile Crane [56 h]; Structural Steel Fixer [112 h]; Equipment Operator [112 h] → Construction Cost [18670.8]; General Labour [112 h]; Mobile Crane [56 h]; Structural Steel Fixer [112 h]; Equipment Operator [112 h] |
| DAM3-C-B5-SS-300 | Installation of wall sandwich panel | 2026-06-27 A → 2026-10-04 A (+99d) | 2026-07-30 A → 2026-10-08 A (+70d) |  |  |  |  | resources Sandwich panel worker [112 h]; General Labour [112 h]; Mobile Crane [56 h]; Equipment Operator [112 h]; Construction Cost [170030] → Sandwich panel worker [112 h]; General Labour [112 h]; Mobile Crane [40 h]; Equipment Operator [112 h]; Construction Cost [326261] |
| DAM3-C-B5-SS-1850 | Steel members for office area | 2026-05-02 A → 2026-10-05 A (+156d) | 2026-05-25 A → 2026-10-06 A (+134d) | 5d → 7d |  |  |  | resources Construction Cost [97318.2]; Equipment Operator [112 h]; General Labour [112 h]; Mobile Crane [56 h]; Structural Steel Fixer [112 h] → Construction Cost [115805]; Equipment Operator [112 h]; General Labour [112 h]; Mobile Crane [56 h]; Structural Steel Fixer [112 h] |
| DAM3-C-B5-SS-1020 | Epoxy paint to steel members at office area | 2026-08-01 A → 2026-10-20 (+80d) | 2026-08-06 A → 2026-10-27 (+82d) | 5d → 7d | 100% → 0% | none → 5d |  | resources Painter [112 h]; Construction Cost [24329.5] → Painter [112 h]; Construction Cost [23161] |
| DAM3-C-B5-SS-1040 | Epoxy paint for external platform | 2026-07-18 A → 2026-10-20 (+94d) | 2026-07-19 A → 2026-10-25 (+98d) |  | 100% → 0% | none → 7d |  | resources Painter [80 h]; Construction Cost [6812.27] → Painter [80 h]; Construction Cost [3734.16] |
| 2 | **ARCHITECTURAL** | 2026-05-31 → 2026-08-08 (+69d) | 2026-10-27 → 2026-12-08 (+42d) |  |  |  |  |  |
| 1 | **MASONARY WORKS** | 2026-05-31 → 2026-08-09 (+70d) | 2026-06-24 → 2026-09-09 (+77d) |  |  |  |  |  |
| DAM3-C-B5-A-290 | Block work at factory area | 2026-05-31 A → 2026-08-09 A (+70d) | 2026-06-24 A → 2026-08-12 A (+49d) |  |  |  | DAM3-C-B5-SS-280, DAM3-C-B5-S-1097, DAM3-C-B6-A-170, DAM3-C-B5-SS-1040, DAM3-C-B5-SS-1020 → DAM3-C-B5-SS-280, DAM3-C-B5-S-1097 | resources AAC panel erector [240 h]; General Labour [240 h]; Equipment Operator [240 h]; Mobile Crane [120 h]; Construction Cost [38856.6] → AAC panel erector [240 h]; General Labour [240 h]; Equipment Operator [240 h]; Mobile Crane [120 h]; Construction Cost [58338.7] |
| DAM3-C-B5-A-320 | Block work at office area | 2026-05-31 A → 2026-08-13 A (+74d) | 2026-06-24 A → 2026-09-09 A (+77d) |  |  |  | DAM3-C-B5-SS-310, DAM3-C-B5-SS-1850 → DAM3-C-B5-SS-1850 | resources AAC panel erector [160 h]; General Labour [160 h]; Mobile Crane [80 h]; Equipment Operator [160 h]; Construction Cost [9714] → AAC panel erector [160 h]; General Labour [160 h]; Mobile Crane [56 h]; Equipment Operator [160 h]; Construction Cost [6179.18] |
| DAM3-C-B5-A-1440 | Block work at toilet area | 2026-05-31 A → 2026-08-15 A (+76d) | 2026-06-24 A → 2026-09-09 A (+77d) |  |  |  |  | resources Mason [112 h]; Construction Cost [15836.3] → Mason [112 h]; Construction Cost [14436.3] |
| 5 | **WALL FINISHES** | 2026-07-05 → 2026-09-26 (+83d) | 2026-10-19 → 2026-11-07 (+19d) |  |  |  |  |  |
| DAM3-C-B5-A-1450 | Internal Wall Plaster | 2026-07-05 A → 2026-09-26 A (+83d) | 2026-07-16 A → 2026-10-11 A (+87d) |  |  |  | DAM3-C-B5-A-1440, DAM3-C-B5-E-873, DAM3-C-B5-S-1277 → DAM3-C-B5-A-1440, DAM3-C-B5-E-873 | resources Mason [240 h]; Construction Cost [29610.2] → Mason [240 h]; Construction Cost [48590.2] |
| DAM3-C-B5-A-1500 | Paint to Plaster (Primer, Putty & First Coat) | 2026-07-22 A → 2026-10-11 A (+81d) | 2026-10-19 → 2026-11-07 (+19d) |  | 90% → 85% | 9.35d → 42.55d | DAM3-C-B5-A-1520 → DAM3-C-B5-A-1520, DAM3-C-B5-SS-310, DAM3-C-B6-E-453 | resources Painter [112 h]; Construction Cost [26649.5] → Painter [112 h]; Construction Cost [44167.3] |
| 2 | **CIELING FINISHES** | 2026-08-31 → 2026-10-28 (+58d) | 2026-10-15 → 2026-11-02 (+18d) |  |  |  |  |  |
| DAM3-C-B5-A-1510 | Installation of Ceiling Gypsum Board | 2026-08-31 A → 2026-10-28 (+58d) | 2026-10-15 A → 2026-11-02 (+18d) |  | 100% → 0% | none → 36d |  | resources Carperter [80 h]; Construction Cost [44650.2] → Carperter [80 h]; Construction Cost [46792.3] |
| 6 | **FLOOR FINISHES** | 2026-07-21 → 2026-10-11 (+82d) | 2026-10-15 → 2026-12-08 (+54d) |  |  |  |  |  |
| DAM3-C-B5-A-1490 | Tiles for Toilet | 2026-07-21 A → 2026-10-11 A (+82d) | 2026-08-02 A → 2026-10-13 A (+72d) |  |  |  |  | resources Tile Fixer [112 h]; Construction Cost [48089.6] → Tile Fixer [112 h]; Construction Cost [46530.7] |
| DAM3-C-B5-A-1520 | Tiles for Office Area | 2026-08-09 A → 2026-11-03 (+86d) | 2026-08-13 A → 2026-11-04 (+83d) |  | 100% → 0% | none → 36d |  | resources Tile Fixer [32 h]; Construction Cost [25626.5] → Tile Fixer [32 h]; Construction Cost [26867.3] |
| DAM3-C-B5-A-1650 | Granite strip | 2026-08-29 A → 2026-11-05 (+68d) | 2026-08-31 A → 2026-11-07 (+68d) |  | 100% → 0% | none → 36d |  | resources Tile Fixer [32 h]; Construction Cost [1454.24] → Tile Fixer [32 h]; Construction Cost [671.12] |
| DAM3-C-B5-A-1670 | Epoxy paint | 2026-09-03 A → 2026-12-01 (+89d) | 2026-10-15 A → 2026-12-08 (+54d) |  | 100% → 0% | none → 36d |  | resources Painter [112 h]; Construction Cost [102516] → Painter [112 h]; Construction Cost [115420] |
| 3 | **DOORS & WINDOWS** | 2026-07-11 → 2026-10-20 (+101d) | 2026-09-10 → 2026-11-04 (+55d) |  |  |  |  |  |
| DAM3-C-B5-A-1830 | Window (CW1) | 2026-07-11 A → 2026-10-20 (+101d) | 2026-09-10 A → 2026-10-27 (+47d) |  | 100% → 0% | none → 12d |  | resources Carperter [112 h]; Construction Cost [90682.8] → Carperter [112 h]; Construction Cost [94173.2] |
| DAM3-C-B5-A-1460 | Roll up Shutter Door | 2026-07-29 A → 2026-10-28 (+91d) | 2026-08-06 A → 2026-10-28 (+83d) |  | 100% → 0% | none → 12d |  | resources Carperter [16 h]; Construction Cost [66353.3] → Carperter [16 h]; Construction Cost [68619.2] |
| DAM3-C-B5-A-1470 | Supply and install (D5) 1000*2200mm single leaf steel door with door | 2026-08-09 A → 2026-10-29 (+81d) | 2026-09-10 A → 2026-10-29 (+49d) |  | 100% → 0% | none → 12d |  | resources Carperter [16 h]; Construction Cost [15482.4] → Carperter [16 h]; Construction Cost [16016.2] |
| DAM3-C-B5-A-1530 | Supply and install (D4) 800*2200 mm single leaf aluminum door with door | 2026-08-23 A → 2026-10-31 (+69d) | 2026-09-06 A → 2026-10-31 (+55d) |  | 100% → 0% | none → 12d |  | resources Carperter [16 h]; Construction Cost [21896.6] → Carperter [16 h]; Construction Cost [22737.8] |
| DAM3-C-B5-A-1540 | Supply and install (D7) 1000*2200 mm single leaf aluminum door with door | 2026-08-23 A → 2026-11-01 (+70d) | 2026-09-06 A → 2026-11-01 (+56d) |  | 100% → 0% | none → 12d |  | resources Carperter [16 h]; Construction Cost [7520.04] → Carperter [16 h]; Construction Cost [7811.07] |
| DAM3-C-B5-A-1760 | Supply and install (D3) 1000*2200 mm single leaf aluminum door with door | 2026-08-23 A → 2026-11-02 (+71d) | 2026-09-06 A → 2026-11-02 (+57d) |  | 100% → 0% | none → 12d |  | resources Carperter [16 h]; Construction Cost [15482.4] → Carperter [16 h]; Construction Cost [16016.2] |
| DAM3-C-B5-A-1770 | Supply and install fire rated 45 min (D2) 1200*2200 mm single leaf steel door | 2026-08-09 A → 2026-11-03 (+86d) | 2026-09-10 A → 2026-11-03 (+54d) |  | 100% → 0% | none → 12d |  | resources Carperter [16 h]; Construction Cost [16146] → Carperter [16 h]; Construction Cost [16711.5] |
| DAM3-C-B5-A-1780 | Skylight fixtures installation | 2026-07-27 A → 2026-11-04 (+100d) | 2026-08-05 A → 2026-11-04 (+91d) |  | 100% → 0% | none → 12d |  | resources Carperter [16 h]; Construction Cost [61929.7] → Carperter [16 h]; Construction Cost [6489.89] |
| 4 | **WATER PROOFING WORKS** | 2026-07-18 → 2026-10-14 (+88d) | 2026-07-18 → 2026-10-17 (+91d) |  |  |  |  |  |
| DAM3-C-B5-A-1630 | Waterproofing membrane for toilets | 2026-07-18 A → 2026-10-14 A (+88d) | 2026-07-18 A → 2026-10-17 A (+91d) |  |  |  | DAM3-C-B5-M-1130, DAM3-C-B5-A-1450, DAM3-C-B5-A-1780 → DAM3-C-B5-M-1130, DAM3-C-B5-A-1450 | resources General Labour [64 h]; Construction Cost [4653.33] → General Labour [64 h]; Construction Cost [4879.02] |
| 7 | **METAL WORKS** | 2026-07-29 → 2026-08-08 (+10d) | 2026-10-22 → 2026-11-19 (+28d) |  |  |  |  |  |
| DAM3-C-B5-A-1570 | Galvanised Steel Gratings | 2026-10-06 A → 2026-08-08 A (-59d) | 2026-10-07 A → 2026-08-08 A (-60d) |  |  |  |  | resources Steel Fixer [32 h]; General Labour [32 h]; Construction Cost [6237.21] → Steel Fixer [32 h]; General Labour [32 h]; Construction Cost [6455.16] |
| DAM3-C-B5-A-1560 | Steel Ladder | 2026-08-17 A → 2026-11-08 (+83d) | 2026-08-29 A → 2026-11-09 (+72d) |  | 100% → 0% | none → 36d |  | resources Steel Fixer [32 h]; General Labour [32 h]; Construction Cost [9510.64] → Steel Fixer [32 h]; General Labour [32 h]; Construction Cost [9839.16] |
| DAM3-C-B5-A-1660 | Steel railing works | 2026-10-19 → 2026-11-10 (+22d) | 2026-10-22 → 2026-11-14 (+23d) |  |  | 2.75d → 36d |  | resources Steel Fixer [64 h]; General Labour [64 h]; Construction Cost [7497.92] → Steel Fixer [64 h]; General Labour [64 h]; Construction Cost [1533.98] |
| DAM3-C-B5-A-1580 | Aluminium composite panel | 2026-07-29 A → 2026-11-15 (+109d) | 2026-10-03 A → 2026-11-19 (+47d) |  | 100% → 0% | none → 36d |  | resources Steel Fixer [80 h]; General Labour [80 h]; Construction Cost [175670] → Steel Fixer [80 h]; General Labour [80 h]; Construction Cost [175889] |
| 8 | **SPECIALTIES** | 2026-09-22 → 2026-11-21 (+60d) | 2026-10-27 → 2026-11-30 (+34d) |  |  |  |  |  |
| DAM3-C-B5-A-1590 | Installation of fittings | 2026-09-22 A → 2026-11-21 (+60d) | 2026-09-24 A → 2026-11-25 (+62d) |  | 100% → 0% | none → 36d |  | resources Plumber [80 h]; Construction Cost [21686.5] → Plumber [80 h]; Construction Cost [22981.3] |
| DAM3-C-B5-A-1820 | Identification sign; ID01 & ID02 | 2026-10-24 → 2026-11-26 (+33d) | 2026-10-26 → 2026-11-29 (+34d) |  |  | 2.75d → 36d |  | resources Mason [48 h]; Construction Cost [9289.46] → Mason [48 h]; Construction Cost [9630.56] |
| DAM3-C-B5-A-1610 | Furniture Installation | 2026-10-27 → 2026-11-30 (+34d) | 2026-10-27 → 2026-11-30 (+34d) |  |  | 2.75d → 36d |  | resources General Labour [16 h]; Mason [16 h]; Construction Cost [10561.2] → General Labour [16 h]; Mason [16 h]; Construction Cost [12468.8] |
| 3 | **MECHANICAL** | 2026-04-01 → 2026-07-08 (+98d) | 2026-09-24 → 2026-11-26 (+63d) |  |  |  |  |  |
| 1 | **HVAC** | 2026-06-23 → 2026-11-07 (+137d) | 2026-09-22 → 2026-11-23 (+62d) |  |  |  |  |  |
| 1 | **FIRST STAGE** | 2026-06-23 → 2026-11-14 (+144d) | 2026-08-01 → 2026-11-18 (+109d) |  |  |  |  |  |
| DAM3-C-B5-M-1070 | Installation of HVAC Ducts | 2026-06-23 A → 2026-11-14 (+144d) | 2026-08-01 A → 2026-11-16 (+107d) |  | 100% → 0% | none → 42.55d |  | resources Ductman [32 h]; Construction Cost [141482] → Ductman [32 h]; Construction Cost [149489] |

| ID | Task | Start | Finish | Duration | Complete | Total float | Predecessors | Other |
| --- | --- | --- | --- | --- | --- | --- | --- | --- |
| DAM3-C-B5-M-1100 | Installation of Duct insulation | 2026-06-23 A → 2026-11-16 (+146d) | 2026-08-01 A → 2026-11-18 (+109d) |  | 100% → 0% | none → 42.55d |  | resources Ductman [32 h]; Construction Cost [18747.3] → Ductman [32 h]; Construction Cost [21205.4] |
| 2 | **SECOND STAGE** | 2026-07-27 → 2026-11-07 (+103d) | 2026-09-22 → 2026-11-23 (+62d) |  |  |  |  |  |
| DAM3-C-B5-M-1060 | Installation of Exhaust Fans | 2026-07-27 A → 2026-11-07 (+103d) | 2026-07-27 A → 2026-11-09 (+105d) |  | 100% → 0% | none → 42.55d |  | resources AC Technician [32 h]; Construction Cost [9331.24] → AC Technician [32 h]; Construction Cost [7938.56] |
| DAM3-C-B5-M-1090 | Installation of Wall Propeller Type Exhaust Fan | 2026-09-15 A → 2026-11-09 (+55d) | 2026-09-20 A → 2026-11-14 (+55d) |  | 100% → 0% | none → 42.55d |  | resources AC Technician [64 h]; Construction Cost [17417.7] → AC Technician [64 h]; Construction Cost [46831.6] |
| DAM3-C-B5-M-1080 | Installation of Diffuser | 2026-09-16 A → 2026-11-18 (+63d) | 2026-09-22 A → 2026-11-21 (+60d) |  | 100% → 0% | none → 42.55d |  | resources Ductman [32 h]; Construction Cost [2764.72] → Ductman [32 h]; Construction Cost [2144] |
| DAM3-C-B5-M-1270 | Supply, install, test and commission door grilles & exhaust louvers | 2026-09-02 A → 2026-11-21 (+80d) | 2026-09-10 A → 2026-11-23 (+74d) |  | 100% → 0% | none → 42.55d |  | resources Ductman [32 h]; Construction Cost [7188.28] → Ductman [32 h]; Construction Cost [5574.4] |
| 2 | **FIRE FIGHTING SYSTEM** | 2026-05-23 → 2026-10-11 (+141d) | 2026-08-22 → 2026-11-26 (+96d) |  |  |  |  |  |
| 1 | **FIRST STAGE** | 2026-05-23 → 2026-10-11 (+141d) | 2026-08-06 → 2026-10-13 (+68d) |  |  |  |  |  |
| DAM3-C-B5-M-1230 | Installation of Fire Fighting Pipes (Seamless Black Steel) | 2026-05-23 A → 2026-10-11 A (+141d) | 2026-08-06 A → 2026-10-13 A (+68d) |  |  |  |  | resources Pipe Fitter [112 h]; Construction Cost [60425.7] → Pipe Fitter [112 h]; Construction Cost [72394.8] |
| DAM3-C-B5-M-1240 | Installation of Fire Fighting Valve | 2026-06-11 A → 2026-10-11 A (+122d) | 2026-08-06 A → 2026-10-13 A (+68d) |  |  |  |  | resources Pipe Fitter [80 h]; Construction Cost [12712.2] → Pipe Fitter [80 h]; Construction Cost [12199.4] |
| 2 | **SECOND STAGE** | 2026-06-11 → 2026-11-07 (+149d) | 2026-08-22 → 2026-11-26 (+96d) |  |  |  |  |  |
| DAM3-C-B5-M-1250 | Installation of Fire Hose Cabinet | 2026-06-11 A → 2026-11-07 (+149d) | 2026-08-22 A → 2026-11-10 (+80d) |  | 100% → 0% | none → 56.55d |  | resources Pipe Fitter [48 h]; Construction Cost [11147.4] → Pipe Fitter [48 h]; Construction Cost [15158.6] |
| DAM3-C-B5-M-1300 | Supply, install, test and commission Fire Department Connection(FDC) | 2026-06-11 A → 2026-11-23 (+165d) | 2026-08-04 A → 2026-11-26 (+114d) |  | 100% → 0% | none → 42.55d |  | resources Pipe Fitter [48 h]; Construction Cost [2598.84] → Pipe Fitter [48 h]; Construction Cost [2706.06] |
| 3 | **SEWER AND DRAINAGE SYSTEM** | 2026-04-01 → 2026-07-08 (+98d) | 2026-09-24 → 2026-11-11 (+48d) |  |  |  |  |  |
| 1 | **FIRST STAGE** | 2026-04-01 → 2026-07-08 (+98d) | 2026-08-04 → 2026-10-26 (+83d) |  |  |  |  |  |
| DAM3-C-B5-M-1130 | Installation of Sanitary Waste / Drainage Pipes | 2026-04-01 A → 2026-07-08 A (+98d) | 2026-04-19 A → 2026-07-12 A (+84d) |  |  |  |  | resources Plumber [64 h]; Construction Cost [14362.4] → Plumber [64 h]; Construction Cost [18585.1] |
| DAM3-C-B5-M-1310 | Installation of Trench drain | 2026-06-11 A → 2026-07-11 A (+30d) | 2026-08-04 A → 2026-07-14 A (-21d) |  |  |  |  | resources Plumber [80 h]; Construction Cost [11379.6] → Plumber [80 h]; Construction Cost [11508.8] |
| DAM3-C-B5-M-1150 | Installation of Floor Drain | 2026-06-11 A → 2026-10-25 (+136d) | 2026-08-04 A → 2026-10-26 (+83d) |  | 100% → 0% | none → 48.6d |  | resources Plumber [32 h]; Construction Cost [10616.5] → Plumber [32 h]; Construction Cost [11056] |
| 2 | **SECOND STAGE** | 2026-07-11 → 2026-10-27 (+108d) | 2026-09-24 → 2026-11-11 (+48d) |  |  |  |  |  |
| DAM3-C-B5-M-1110 | Installation of Electric Water Heater | 2026-08-04 A → 2026-10-27 (+84d) | 2026-08-04 A → 2026-10-28 (+85d) |  | 100% → 0% | none → 48.6d |  | resources Plumber [32 h]; Construction Cost [1592.48] → Plumber [32 h]; Construction Cost [1819.51] |
| DAM3-C-B5-M-1120 | Installation of Sanitary Fixture and Accessories | 2026-09-17 A → 2026-10-29 (+42d) | 2026-09-24 A → 2026-11-02 (+39d) |  | 100% → 0% | none → 48.6d |  | resources Plumber [64 h]; Construction Cost [16243] → Plumber [64 h]; Construction Cost [19921.7] |
| DAM3-C-B5-M-1140 | Installation of Lavotary /Wash Basin | 2026-09-17 A → 2026-11-03 (+47d) | 2026-09-24 A → 2026-11-04 (+41d) |  | 100% → 0% | none → 48.6d |  | resources Plumber [32 h]; Construction Cost [20348.3] → Plumber [32 h]; Construction Cost [21416.7] |
| DAM3-C-B5-M-1200 | Installation of Bib Tap | 2026-09-17 A → 2026-11-05 (+49d) | 2026-09-24 A → 2026-11-07 (+44d) |  | 100% → 0% | none → 48.6d |  | resources Plumber [32 h]; Construction Cost [2211.78] → Plumber [32 h]; Construction Cost [1900.66] |
| DAM3-C-B5-M-1160 | Installation of Water Tap | 2026-08-24 A → 2026-11-08 (+76d) | 2026-09-16 A → 2026-11-09 (+54d) |  | 100% → 0% | none → 48.6d |  | resources Plumber [32 h]; Construction Cost [2654.13] → Plumber [32 h]; Construction Cost [2874.14] |
| DAM3-C-B5-M-1170 | Installation of Roof Vent Cap | 2026-07-11 A → 2026-11-10 (+122d) | 2026-08-22 A → 2026-11-11 (+81d) |  | 100% → 0% | none → 48.6d |  | resources Pipe Fitter [32 h]; Construction Cost [829.41] → Pipe Fitter [32 h]; Construction Cost [927.12] |
| 4 | **WATER SUPPLY SYSTEM** | 2026-06-24 → 2026-09-29 (+97d) | 2026-08-04 → 2026-11-12 (+100d) |  |  |  |  |  |
| 1 | **FIRST STAGE** | 2026-06-24 → 2026-09-29 (+97d) | 2026-08-04 → 2026-10-03 (+60d) |  |  |  |  |  |
| DAM3-C-B5-M-1210 | Installation of Water Supply Valve | 2026-08-01 A → 2026-09-29 A (+59d) | 2026-08-04 A → 2026-10-03 A (+60d) |  |  |  |  | resources Plumber [32 h]; Construction Cost [15736.8] → Plumber [32 h]; Construction Cost [18274.3] |
| DAM3-C-B5-M-1220 | Installation of Water Supply Pipes | 2026-06-24 A → 2026-09-29 A (+97d) | 2026-08-04 A → 2026-10-03 A (+60d) |  |  |  |  | resources Plumber [64 h]; Construction Cost [19520.2] → Plumber [64 h]; Construction Cost [23318.4] |
| 2 | **SECOND STAGE** | 2026-07-04 → 2026-11-07 (+126d) | 2026-08-04 → 2026-11-12 (+100d) |  |  |  |  |  |
| DAM3-C-B5-M-1260 | Capped connection | 2026-07-04 A → 2026-11-07 (+126d) | 2026-08-04 A → 2026-11-12 (+100d) |  | 100% → 0% | none → 53.65d |  | resources Plumber [80 h]; Construction Cost [287.53] → Plumber [80 h]; Construction Cost [278.13] |
| 4 | **ELECTRICAL** | 2026-04-01 → 2026-06-04 (+64d) | 2026-10-19 → 2026-12-23 (+65d) |  |  |  |  |  |
| 1 | **FIRST STAGE** | 2026-04-01 → 2026-06-04 (+64d) | 2026-10-12 → 2026-12-16 (+65d) |  |  |  |  |  |
| DAM3-C-B5-E-803 | Installation of Earthing and Grounding | 2026-04-01 A → 2026-06-04 A (+64d) | 2026-10-12 A → 2026-12-12 (+61d) |  | 100% → 90% | none → 57.85d |  | resources Electrician [64 h]; Construction Cost [17002.4] → Electrician [64 h]; Construction Cost [19646.5] |
| DAM3-C-B5-E-833 | Installation of Conduits and wiring outlets - Fire Alarm System | 2026-05-20 A → 2026-06-04 A (+15d) | 2026-06-02 A → 2026-11-16 (+167d) |  | 100% → 50% | none → 48.25d |  | resources Electrician [64 h]; Construction Cost [2026.84] → Electrician [64 h]; Construction Cost [1768.31] |
| DAM3-C-B5-E-873 | Installation of Sleeves & Power outlet | 2026-04-01 A → 2026-06-04 A (+64d) | 2026-07-11 A → 2026-10-24 (+105d) |  | 100% → 50% | none → 39d |  | resources Electrician [128 h]; Construction Cost [2853.19] → Electrician [128 h]; Construction Cost [2920.45] |
| DAM3-C-B5-E-853 | Installation of Conduites for Lighting Fixture | 2026-05-19 A → 2026-09-20 A (+124d) | 2026-06-02 A → 2026-11-25 (+176d) |  | 100% → 90% | none → 48.25d |  | resources Electrician [64 h]; Construction Cost [3983.66] → Electrician [64 h]; Construction Cost [8462.97] |
| DAM3-C-B5-E-923 | Installation of Wires | 2026-06-25 A → 2026-11-25 (+153d) | 2026-08-29 A → 2026-11-30 (+93d) |  | 100% → 0% | none → 48.25d |  | resources Electrician [64 h]; Construction Cost [7966.69] → Electrician [64 h]; Construction Cost [16925.9] |
| DAM3-C-B5-E-913 | Installation of LV Cables | 2026-09-05 A → 2026-12-12 (+98d) | 2026-10-12 A → 2026-12-16 (+65d) | 2d → 4d | 100% → 0% | none → 54.25d | DAM3-C-B5-E-903 SS → DAM3-C-B5-E-903 | resources Electrician [64 h]; Construction Cost [31551] → Electrician [64 h]; Construction Cost [36390] |
| 2 | **SECOND STAGE** | 2026-06-17 → 2026-10-10 (+115d) | 2026-10-19 → 2026-12-23 (+65d) |  |  |  |  |  |
| DAM3-C-B5-E-933 | Installation of LP-1 Panel | 2026-07-25 A → 2026-10-10 A (+77d) | 2026-09-10 A → 2026-10-14 A (+34d) |  |  |  |  | resources Electrician [32 h]; Construction Cost [15128.5] → Electrician [32 h]; Construction Cost [18403.5] |
| DAM3-C-B5-E-1350 | Installation of Solar power plant | 2026-08-12 A → 2026-10-11 A (+60d) | 2026-10-01 A → 2026-11-10 (+40d) | 7d → 14d | 100% → 10% | none → 38.6d |  | resources Plumber [112 h]; Construction Cost [218966] → Plumber [112 h]; Construction Cost [253269] |
| DAM3-C-B5-E-863 | Installation of Wiring Devices | 2026-08-29 A → 2026-11-07 (+70d) | 2026-09-24 A → 2026-11-11 (+48d) |  | 100% → 0% | none → 48.25d | DAM3-C-B5-E-873 → DAM3-C-B5-E-873, DAM3-C-B5-A-1500 | resources Electrician [64 h]; Construction Cost [20742.2] → Electrician [64 h]; Construction Cost [19435.1] |
| DAM3-C-B5-E-893 | Installation of Disconnect Switches | 2026-08-29 A → 2026-11-11 (+74d) | 2026-09-24 A → 2026-11-14 (+51d) |  | 100% → 0% | none → 48.25d |  | resources Electrician [32 h]; Construction Cost [25808.4] → Electrician [32 h]; Construction Cost [30236] |
| DAM3-C-B5-E-813 | Installation of Fire Alarm Control Panel | 2026-09-24 A → 2026-11-16 (+53d) | 2026-10-12 A → 2026-11-21 (+40d) |  | 100% → 0% | none → 48.25d | DAM3-C-B5-E-833, DAM3-C-B6-E-353 → DAM3-C-B5-E-833 | resources Electrician [64 h]; Construction Cost [16216.6] → Electrician [64 h]; Construction Cost [19451.4] |
| DAM3-C-B5-E-823 | Installation of Fire Detectors & Accessories | 2026-09-16 A → 2026-11-21 (+66d) | 2026-10-12 A → 2026-11-25 (+44d) |  | 100% → 0% | none → 48.25d | DAM3-C-B5-E-813 SS → DAM3-C-B5-E-813 | resources Electrician [64 h]; Construction Cost [31219.2] → Electrician [64 h]; Construction Cost [56740.4] |
| DAM3-C-B5-E-843 | Installation of Lighting fixtures | 2026-09-10 A → 2026-11-30 (+81d) | 2026-10-12 A → 2026-12-05 (+54d) |  | 100% → 0% | none → 48.25d |  | resources Electrician [64 h]; Construction Cost [59751.1] → Electrician [64 h]; Construction Cost [76166.7] |
| DAM3-C-B5-E-883 | Installation of Main Distribution Board | 2026-09-03 A → 2026-12-05 (+93d) | 2026-10-12 A → 2026-12-07 (+56d) |  | 100% → 0% | none → 48.25d |  | resources Electrician [32 h]; Construction Cost [25479.7] → Electrician [32 h]; Construction Cost [32472.7] |
| DAM3-C-B5-E-943 | Installation of PP-AC panel | 2026-09-01 A → 2026-12-07 (+97d) | 2026-10-12 A → 2026-12-09 (+58d) |  | 100% → 0% | none → 48.25d |  | resources Electrician [32 h]; Construction Cost [18214] → Electrician [32 h]; Construction Cost [21648.5] |
| DAM3-C-B5-E-1340 | Installation of CCTV System | 2026-06-17 A → 2026-12-09 (+175d) | 2026-10-12 A → 2026-12-17 (+66d) | 2d → 7d | 100% → 0% | none → 53.25d |  | resources Plumber [112 h]; Construction Cost [66177.6] → Plumber [112 h]; Construction Cost [76349.2] |
| DAM3-C-B5-E-903 | Installation of Telephone Cabinet | 2026-07-29 A → 2026-12-09 (+133d) | 2026-10-01 A → 2026-12-12 (+72d) |  | 100% → 0% | none → 48.25d |  | resources Electrician [32 h]; Construction Cost [23299.8] → Electrician [32 h]; Construction Cost [26991.1] |
| DAM3-C-B5-E-963 | Installation of Access Control System | 2026-06-17 A → 2026-12-12 (+178d) | 2026-10-19 → 2026-12-16 (+58d) | 2d → 4d | 70% → 0% | 10.55d → 48.25d |  | resources Electrician [64 h]; Construction Cost [24315.4] → Electrician [64 h]; Construction Cost [27616.9] |
| DAM3-C-B5-E-973 | Monitor Modules for Fire Alarm | 2026-09-22 A → 2026-12-16 (+85d) | 2026-10-19 → 2026-12-19 (+61d) |  | 50% → 0% | 10.75d → 48.25d | DAM3-C-B5-E-963 SS → DAM3-C-B5-E-963 | resources Electrician [32 h]; Construction Cost [3760.02] → Electrician [32 h]; Construction Cost [3882.38] |
| DAM3-C-B5-E-983 | Line Isolator Modules for Fire Alarm | 2026-09-24 A → 2026-12-19 (+86d) | 2026-10-12 A → 2026-12-21 (+70d) |  | 100% → 0% | none → 48.25d | DAM3-C-B5-E-973 SS → DAM3-C-B5-E-973 | resources Electrician [32 h]; Construction Cost [163.42] → Electrician [32 h]; Construction Cost [185.4] |
| DAM3-C-B5-E-993 | Firewarning flash light with sounder; wall mounted, Weather proof | 2026-09-22 A → 2026-12-21 (+90d) | 2026-09-24 A → 2026-12-23 (+90d) |  | 100% → 0% | none → 48.25d | DAM3-C-B5-E-983 SS → DAM3-C-B5-E-983 | resources Electrician [32 h]; Construction Cost [2963.79] → Electrician [32 h]; Construction Cost [3082.69] |
| 1 | **STRUCTURAL** | 2026-02-03 → 2026-02-17 (+14d) | 2026-08-26 → 2026-11-12 (+78d) |  |  |  |  |  |
| 1 | **FOOTING** | 2026-02-03 → 2026-02-17 (+14d) | 2026-05-25 → 2026-04-30 (-25d) |  |  |  |  |  |
| DAM3-C-B4-S-210 | Excavation for footings | 2026-02-03 A → 2026-02-17 A (+14d) | 2026-05-16 A → 2026-03-24 A (-53d) | 6.12d → 4d |  |  |  | resources General Labour [112 h]; Equipment Operator [112 h]; Truck [56 h]; Excavator [56 h]; Mini Roller Compactor [56 h]; Construction Cost [132992] → General Labour [112 h]; Equipment Operator [112 h]; Truck [32 h]; Excavator [32 h]; Mini Roller Compactor [32 h]; Construction Cost [89859.6] |
| DAM3-C-B4-S-1037 | Anti Termite Below Footings | 2026-02-10 A → 2026-04-15 A (+64d) | 2026-05-20 A → 2026-04-15 A (-35d) |  |  |  | DAM3-C-B4-S-210 → DAM3-C-B4-S-6193 | resources Mason [16 h]; Construction Cost [8441.61] → Mason [16 h]; Construction Cost [11905.5] |
| DAM3-C-B4-S-797 | Lean Concrete Below Footings | 2026-02-10 A → 2026-04-15 A (+64d) | 2026-05-20 A → 2026-04-15 A (-35d) |  |  |  |  | resources Mason [32 h]; Construction Cost [8238.87] → Mason [32 h]; Construction Cost [8229.34] |
| DAM3-C-B4-S-947 | Vapour Barrier for Footings | 2026-02-10 A → 2026-04-15 A (+64d) | 2026-05-20 A → 2026-04-15 A (-35d) |  |  |  |  | resources General Labour [16 h]; Construction Cost [6030.16] → General Labour [16 h]; Construction Cost [7940.1] |
| DAM3-C-B4-S-857 | Formwork for Footings | 2026-02-17 A → 2026-04-20 A (+62d) | 2026-05-24 A → 2026-04-22 A (-32d) |  |  |  |  | resources Carperter [64 h]; Construction Cost [23267.9] → Carperter [64 h]; Construction Cost [25461.2] |
| DAM3-C-B4-S-847 | Rebar for Footings | 2026-02-18 A → 2026-04-23 A (+64d) | 2026-05-24 A → 2026-04-28 A (-26d) | 6d → 4d |  |  |  | resources Steel Fixer [64 h]; Construction Cost [93071.6] → Steel Fixer [64 h]; Construction Cost [101845] |
| DAM3-C-B4-S-807 | Pouring Concrete for Footings | 2026-02-25 A → 2026-04-30 A (+64d) | 2026-05-25 A → 2026-04-30 A (-25d) |  |  |  |  | resources Carperter [16 h]; Mason [16 h]; Steel Fixer [16 h]; Concrete Mixer [8 h]; Equipment Operator [16 h]; Construction Cost [116339] → Carperter [16 h]; Mason [16 h]; Steel Fixer [16 h]; Concrete Mixer [8 h]; Equipment Operator [16 h]; Construction Cost [127306] |
| 2 | **COLUMN NECK** | 2026-02-24 → 2026-04-23 (+58d) | 2026-06-22 → 2026-05-19 (-34d) |  |  |  |  |  |
| DAM3-C-B4-S-897 | Rebar for column neck | 2026-02-24 A → 2026-04-23 A (+58d) | 2026-05-24 A → 2026-04-28 A (-26d) |  |  |  |  | resources Steel Fixer [32 h]; Construction Cost [21993.7] → Steel Fixer [32 h]; Construction Cost [14919.2] |
| DAM3-C-B4-S-907 | Formwork for column neck | 2026-02-28 A → 2026-05-03 A (+64d) | 2026-06-02 A → 2026-05-05 A (-28d) |  |  |  |  | resources Carperter [32 h]; Construction Cost [5498.72] → Carperter [32 h]; Construction Cost [9946.13] |
| DAM3-C-B4-S-887 | Pouring Concrete for column neck | 2026-03-02 A → 2026-05-05 A (+64d) | 2026-06-02 A → 2026-05-05 A (-28d) |  |  |  |  | resources Mason [16 h]; Carperter [16 h]; Concrete Mixer [8 h]; Steel Fixer [16 h]; Equipment Operator [16 h]; Construction Cost [27492.4] → Mason [16 h]; Carperter [16 h]; Concrete Mixer [8 h]; Steel Fixer [16 h]; Equipment Operator [16 h]; Construction Cost [24865.3] |
| DAM3-C-B4-S-937 | Damp proof /Bitumin paint on Footings & column neck | 2026-03-28 A → 2026-05-07 A (+40d) | 2026-06-04 A → 2026-05-10 A (-25d) |  |  |  |  | resources Painter [32 h]; Construction Cost [6903.81] → Painter [32 h]; Construction Cost [24777.7] |
| DAM3-C-B4-S-997 | Backfilling / Compaction up to Bottom of Grade Beams | 2026-03-29 A → 2026-05-13 A (+45d) | 2026-06-22 A → 2026-05-19 A (-34d) | 12d → 7d |  |  |  | resources General Labour [256 h]; Truck [128 h]; Mini Roller Compactor [128 h]; Equipment Operator [256 h]; Wheel Loader [128 h]; Construction Cost [32707.9] → General Labour [256 h]; Truck [128 h]; Mini Roller Compactor [128 h]; Equipment Operator [256 h]; Wheel Loader [128 h]; Construction Cost [46046.2] |

| ID | Task | Start | Finish | Duration | Complete | Total float | Predecessors | Other |
| --- | --- | --- | --- | --- | --- | --- | --- | --- |
| 3 | **GRADE BEAM** | 2026-06-13 → 2026-05-20 (-24d) | 2026-06-30 → 2026-06-09 (-21d) |  |  |  |  |  |
| DAM3-C-B4-S-1047 | Anti Termite Below Grade Beams | 2026-06-13 A → 2026-05-20 A (-24d) | 2026-06-14 A → 2026-05-20 A (-25d) |  |  |  |  | resources Mason [16 h]; Construction Cost [8441.61] → Mason [16 h]; Construction Cost [11905.5] |
| DAM3-C-B4-S-817 | Lean Concrete Below Grade Beams | 2026-06-13 A → 2026-05-20 A (-24d) | 2026-06-14 A → 2026-05-20 A (-25d) |  |  |  |  | resources Mason [32 h]; Construction Cost [8238.87] → Mason [32 h]; Construction Cost [4431.19] |
| DAM3-C-B4-S-967 | Vapour barrier for Grade Beams | 2026-06-13 A → 2026-05-20 A (-24d) | 2026-06-14 A → 2026-05-20 A (-25d) |  |  |  |  | resources General Labour [32 h]; Construction Cost [4019.9] → General Labour [32 h]; Construction Cost [5293.4] |
| DAM3-C-B4-S-867 | Rebar for Grade Beams | 2026-06-17 A → 2026-05-21 A (-27d) | 2026-06-23 A → 2026-05-24 A (-30d) |  |  |  |  | resources Steel Fixer [80 h]; Construction Cost [24993.1] → Steel Fixer [80 h]; Construction Cost [27194.5] |
| DAM3-C-B4-S-877 | Formwork for Grade Beams | 2026-06-17 A → 2026-05-24 A (-24d) | 2026-06-23 A → 2026-06-02 A (-21d) |  |  |  |  | resources Carperter [32 h]; Construction Cost [6248.27] → Carperter [32 h]; Construction Cost [6798.61] |
| DAM3-C-B4-S-1027 | Anchor bolts installation | 2026-06-17 A → 2026-05-31 A (-17d) | 2026-06-23 A → 2026-06-01 A (-22d) |  |  |  |  | resources Carperter [32 h]; Construction Cost [5667.68] → Carperter [32 h]; Construction Cost [57238.8] |
| DAM3-C-B4-S-827 | Pouring Concrete for Grade Beams | 2026-06-24 A → 2026-06-03 A (-21d) | 2026-06-24 A → 2026-06-03 A (-21d) |  |  |  |  | resources Mason [16 h]; Carperter [16 h]; Concrete Mixer [8 h]; Steel Fixer [16 h]; Equipment Operator [16 h]; Construction Cost [31241.3] → Mason [16 h]; Carperter [16 h]; Concrete Mixer [8 h]; Steel Fixer [16 h]; Equipment Operator [16 h]; Construction Cost [33993.1] |
| DAM3-C-B4-S-977 | Damp proof /Bitumin paint on Grade Beams | 2026-06-25 A → 2026-06-07 A (-18d) | 2026-06-30 A → 2026-06-09 A (-21d) |  |  |  |  | resources Painter [80 h]; Construction Cost [6903.81] → Painter [80 h]; Construction Cost [24777.7] |
| 5 | **SLAB ON GRADE** | 2026-06-17 → 2026-06-14 (-3d) | 2026-08-26 → 2026-11-12 (+78d) |  |  |  |  |  |
| DAM3-C-B4-S-1007 | Backfilling / Compaction for Slab on Grade | 2026-07-01 A → 2026-06-14 A (-17d) | 2026-07-16 A → 2026-06-22 A (-24d) | 12d → 7d |  |  |  | resources Mini Roller Compactor [128 h]; General Labour [256 h]; Equipment Operator [256 h]; Wheel Loader [128 h]; Truck [128 h]; Construction Cost [32707.9] → Mini Roller Compactor [128 h]; General Labour [256 h]; Equipment Operator [256 h]; Wheel Loader [128 h]; Truck [128 h]; Construction Cost [23023.1] |
| DAM3-C-B4-S-837 | Pouring Concrete for Ground Slab | 2026-08-23 A → 2026-07-29 A (-25d) | 2026-08-26 A → 2026-08-01 A (-25d) |  |  |  |  | resources Mason [64 h]; Carperter [64 h]; Steel Fixer [64 h]; Concrete Mixer [32 h]; Equipment Operator [64 h]; Construction Cost [304092] → Mason [64 h]; Carperter [64 h]; Steel Fixer [64 h]; Concrete Mixer [32 h]; Equipment Operator [64 h]; Construction Cost [344195] |
| DAM3-C-B4-S-957 | Anti Termite Treatment below Ground Slab | 2026-08-23 A → 2026-07-29 A (-25d) | 2026-08-26 A → 2026-08-01 A (-25d) |  |  |  |  | resources General Labour [16 h]; Construction Cost [11255.5] → General Labour [16 h]; Construction Cost [15874.1] |
| DAM3-C-B4-S-987 | Vapour barrier for below Ground Slab | 2026-08-23 A → 2026-07-29 A (-25d) | 2026-08-26 A → 2026-08-01 A (-25d) |  |  |  |  | resources General Labour [32 h]; Construction Cost [10050.1] → General Labour [32 h]; Construction Cost [13233.5] |
| DAM3-C-B4-S-1017 | Concrete pad | 2026-06-17 A → 2026-11-05 (+141d) | 2026-06-20 A → 2026-11-12 (+145d) |  | 100% → 0% | none → 5d |  | resources Mason [112 h]; Construction Cost [1803.82] → Mason [112 h]; Construction Cost [907.11] |
| 4 | **COLUMNS & BEAMS** | 2026-03-28 → 2026-05-21 (+54d) | 2026-08-15 → 2026-09-14 (+30d) |  |  |  |  |  |
| DAM3-C-B4-S-6101 | Rebar for Tie Beams | 2026-03-28 A → 2026-05-21 A (+54d) | 2026-03-31 A → 2026-05-24 A (+54d) |  |  |  |  | resources Steel Fixer [64 h]; Construction Cost [7796.52] → Steel Fixer [64 h]; Construction Cost [7263.64] |
| DAM3-C-B4-S-6102 | Formwork for Tie Beams | 2026-03-29 A → 2026-05-24 A (+56d) | 2026-04-01 A → 2026-06-02 A (+62d) |  |  |  |  | resources Carperter [32 h]; Construction Cost [1949.44] → Carperter [32 h]; Construction Cost [1815.91] |
| DAM3-C-B4-S-6103 | Pouring Concrete for Tie Beams | 2026-04-02 A → 2026-06-03 A (+62d) | 2026-04-02 A → 2026-06-03 A (+62d) |  |  |  |  | resources Mason [16 h]; Carperter [16 h]; Concrete Mixer [8 h]; Steel Fixer [16 h]; Equipment Operator [16 h]; Construction Cost [9745.95] → Mason [16 h]; Carperter [16 h]; Concrete Mixer [32 h]; Steel Fixer [16 h]; Equipment Operator [16 h]; Construction Cost [9079.54] |
| DAM3-C-B4-S-5101 | Rebar for column | 2026-07-20 A → 2026-06-22 A (-28d) | 2026-07-23 A → 2026-07-02 A (-21d) | 7d → 5d |  |  |  | resources Steel Fixer [112 h]; Construction Cost [18494.8] → Steel Fixer [112 h]; Construction Cost [20144] |
| DAM3-C-B4-S-5102 | Formwork for column | 2026-07-27 A → 2026-06-29 A (-28d) | 2026-08-01 A → 2026-07-05 A (-27d) |  |  |  |  | resources Carperter [64 h]; Construction Cost [4623.84] → Carperter [64 h]; Construction Cost [5036.01] |
| DAM3-C-B4-S-5103 | Pouring Concrete for column | 2026-07-28 A → 2026-07-09 A (-19d) | 2026-08-01 A → 2026-07-12 A (-20d) |  |  |  |  | resources Mason [16 h]; Carperter [16 h]; Concrete Mixer [8 h]; Steel Fixer [16 h]; Equipment Operator [16 h]; Construction Cost [23118.6] → Mason [16 h]; Carperter [16 h]; Concrete Mixer [32 h]; Steel Fixer [16 h]; Equipment Operator [16 h]; Construction Cost [25180.1] |
| DAM3-C-B4-S-6113 | Rebar for Beams | 2026-08-01 A → 2026-08-30 A (+29d) | 2026-08-13 A → 2026-09-01 A (+19d) |  |  |  |  | resources Steel Fixer [64 h]; Construction Cost [11954.6] → Steel Fixer [64 h]; Construction Cost [13379.1] |
| DAM3-C-B4-S-6123 | Formwork for Beams | 2026-08-11 A → 2026-09-02 A (+22d) | 2026-08-15 A → 2026-09-08 A (+24d) |  |  |  |  | resources Carperter [32 h]; Construction Cost [2988.97] → Carperter [32 h]; Construction Cost [3344.77] |
| DAM3-C-B4-S-6133 | Pouring Concrete for Beams | 2026-08-15 A → 2026-09-08 A (+24d) | 2026-08-15 A → 2026-09-14 A (+30d) |  |  |  |  | resources Mason [16 h]; Carperter [16 h]; Concrete Mixer [8 h]; Steel Fixer [16 h]; Equipment Operator [16 h]; Construction Cost [14943.6] → Mason [16 h]; Carperter [16 h]; Concrete Mixer [32 h]; Steel Fixer [16 h]; Equipment Operator [16 h]; Construction Cost [16723.9] |
| 5 | **STRUCTURAL STEEL** | 2026-06-13 → 2026-06-24 (+11d) | 2026-09-14 → 2026-11-04 (+51d) |  |  |  |  |  |
| DAM3-C-B4-A-210 | Installation of columns | 2026-07-02 A → 2026-06-24 A (-8d) | 2026-07-08 A → 2026-06-24 A (-14d) |  |  |  | DAM3-C-B4-S-837 → DAM3-C-B4-S-837, DAM3-C-B5-SS-280 | resources Structural Steel Fixer [80 h]; General Labour [80 h]; Equipment Operator [80 h]; Mobile Crane [40 h]; Construction Cost [164363] → Structural Steel Fixer [80 h]; General Labour [80 h]; Equipment Operator [80 h]; Mobile Crane [24 h]; Construction Cost [217508] |
| DAM3-C-B4-A-220 | Installation of raft and purlins | 2026-07-02 A → 2026-06-25 A (-7d) | 2026-07-09 A → 2026-06-25 A (-14d) |  |  |  |  | resources Structural Steel Fixer [160 h]; General Labour [160 h]; Mobile Crane [80 h]; Equipment Operator [160 h]; Construction Cost [340061] → Structural Steel Fixer [160 h]; General Labour [160 h]; Mobile Crane [56 h]; Equipment Operator [160 h]; Construction Cost [326261] |
| DAM3-C-B4-A-1430 | Intumescent paint to steel works | 2026-07-25 A → 2026-07-08 A (-17d) | 2026-08-02 A → 2026-07-14 A (-19d) | 5d → 7d |  |  | PES -Steel Structure, DAM3-C-B4-A-220 → DAM3-E-ST-A-1700, DAM3-C-B4-A-220 | resources Painter [112 h]; Construction Cost [269284] → Painter [112 h]; Construction Cost [317760] |
| DAM3-C-B4-A-250 | Installation of roof sheet | 2026-08-01 A → 2026-07-26 A (-6d) | 2026-08-09 A → 2026-07-30 A (-10d) |  |  |  | DAM3-C-B4-A-230, DAM3-C-B4-A-1430, DAM3-C-B4-S-6133, DAM3-C-B4-SS-1020 → DAM3-C-B4-A-230, DAM3-C-B4-A-1430, DAM3-C-B4-S-6133 | resources Roof sheet worker [160 h]; General Labour [160 h]; Mobile Crane [80 h]; Equipment Operator [160 h]; Construction Cost [453414] → Roof sheet worker [160 h]; General Labour [160 h]; Mobile Crane [40 h]; Equipment Operator [160 h]; Construction Cost [217508] |
| DAM3-C-B4-SS-1030 | Steel members for external platform | 2026-06-13 A → 2026-09-01 A (+80d) | 2026-07-23 A → 2026-09-02 A (+41d) | 5d → 7d |  |  |  | resources Construction Cost [27249.1]; General Labour [112 h]; Mobile Crane [56 h]; Structural Steel Fixer [112 h]; Equipment Operator [112 h] → Construction Cost [18670.8]; General Labour [112 h]; Mobile Crane [56 h]; Structural Steel Fixer [112 h]; Equipment Operator [112 h] |
| DAM3-C-B4-A-1440 | Steel members for office area | 2026-07-20 A → 2026-10-01 A (+73d) | 2026-07-23 A → 2026-10-04 A (+73d) | 5d → 7d |  |  |  | resources Construction Cost [97318.2]; Structural Steel Fixer [112 h]; Mobile Crane [56 h]; General Labour [112 h]; Equipment Operator [112 h] → Construction Cost [115805]; Structural Steel Fixer [112 h]; Mobile Crane [56 h]; General Labour [112 h]; Equipment Operator [112 h] |
| DAM3-C-B4-A-240 | Installation of wall sandwich panel | 2026-08-19 A → 2026-10-03 A (+45d) | 2026-08-29 A → 2026-10-20 A (+52d) |  |  |  |  | resources Sandwich panel worker [112 h]; General Labour [112 h]; Mobile Crane [56 h]; Equipment Operator [112 h]; Construction Cost [170030] → Sandwich panel worker [112 h]; General Labour [112 h]; Mobile Crane [40 h]; Equipment Operator [112 h]; Construction Cost [326261] |
| DAM3-C-B4-SS-1040 | Epoxy paint for external platform | 2026-08-03 A → 2026-10-20 (+78d) | 2026-08-06 A → 2026-10-25 (+80d) |  | 100% → 0% | none → 17d |  | resources Painter [80 h]; Construction Cost [6812.27] → Painter [80 h]; Construction Cost [3734.16] |
| DAM3-C-B4-SS-1020 | Epoxy paint to steel members at office area | 2026-09-13 A → 2026-10-28 (+45d) | 2026-09-14 A → 2026-11-04 (+51d) | 5d → 7d | 100% → 0% | none → 5d | DAM3-C-B4-A-1440 → DAM3-C-B4-A-1440, DAM3-C-B5-SS-1040, DAM3-C-B5-SS-1020 | resources Painter [112 h]; Construction Cost [24329.5] → Painter [112 h]; Construction Cost [23161] |
| 2 | **ARCHITECTURAL** | 2026-08-01 → 2026-08-03 (+2d) | 2026-10-26 → 2026-12-27 (+62d) |  |  |  |  |  |
| 1 | **MASONARY WORKS** | 2026-08-01 → 2026-08-05 (+4d) | 2026-08-15 → 2026-09-01 (+17d) |  |  |  |  |  |
| DAM3-C-B4-A-1030 | Block work at toilet area | 2026-08-01 A → 2026-08-05 A (+4d) | 2026-08-15 A → 2026-08-24 A (+9d) |  |  |  | DAM3-C-B4-A-260 → DAM3-C-B4-A-260, DAM3-C-B4-SS-1040 | resources Mason [112 h]; Construction Cost [15836.3] → Mason [112 h]; Construction Cost [14436.3] |
| DAM3-C-B4-A-230 | Block work at factory area | 2026-08-01 A → 2026-08-05 A (+4d) | 2026-08-15 A → 2026-08-10 A (-5d) | 12d → 10d |  |  | DAM3-C-B4-S-837 → DAM3-C-B4-S-837, DAM3-C-B4-A-220, DAM3-C-B5-A-290 | resources AAC panel erector [240 h]; General Labour [240 h]; Equipment Operator [240 h]; Mobile Crane [120 h]; Construction Cost [38856.6] → AAC panel erector [240 h]; General Labour [240 h]; Equipment Operator [240 h]; Mobile Crane [120 h]; Construction Cost [58338.7] |
| DAM3-C-B4-A-260 | Block work at office area | 2026-08-01 A → 2026-08-05 A (+4d) | 2026-08-15 A → 2026-09-01 A (+17d) | 8d → 7d |  |  | DAM3-C-B4-A-230 SS+3d → DAM3-C-B4-A-250, DAM3-C-B4-A-1440, DAM3-C-B4-SS-1020 | resources AAC panel erector [160 h]; General Labour [160 h]; Mobile Crane [80 h]; Equipment Operator [160 h]; Construction Cost [9714] → AAC panel erector [160 h]; General Labour [160 h]; Mobile Crane [56 h]; Equipment Operator [160 h]; Construction Cost [6179.18] |
| 5 | **WALL FINISHES** | 2026-09-08 → 2026-09-24 (+16d) | 2026-10-19 → 2026-11-23 (+35d) |  |  |  |  |  |
| DAM3-C-B4-A-1040 | Internal Wall Plaster | 2026-09-08 A → 2026-09-24 A (+16d) | 2026-09-12 A → 2026-10-06 A (+24d) | 15d → 10d |  |  | DAM3-C-B4-A-1030, DAM3-C-B4-E-643 SS, DAM3-C-B4-S-1017 → DAM3-C-B4-A-1030, DAM3-C-B4-E-643, DAM3-C-B4-S-1017, DAM3-C-B5-A-1780 | resources Mason [240 h]; Construction Cost [29610.2] → Mason [240 h]; Construction Cost [48590.2] |
| DAM3-C-B4-A-1090 | Paint to Plaster (Primer, Putty & First Coat) | 2026-09-15 A → 2026-10-07 A (+22d) | 2026-10-19 → 2026-11-23 (+35d) |  | 90% → 85% | 9.35d → 44.65d |  | resources Painter [112 h]; Construction Cost [26649.5] → Painter [112 h]; Construction Cost [44167.3] |
| 2 | **CIELING FINISHES** | 2026-09-17 → 2026-11-14 (+58d) | 2026-10-15 → 2026-11-18 (+34d) |  |  |  |  |  |
| DAM3-C-B4-A-1100 | Installation of Ceiling Gypsum Board | 2026-09-17 A → 2026-11-14 (+58d) | 2026-10-15 A → 2026-11-18 (+34d) |  | 100% → 0% | none → 27d |  | resources Carperter [80 h]; Construction Cost [44650.2] → Carperter [80 h]; Construction Cost [46792.3] |
| 6 | **FLOOR FINISHES** | 2026-09-16 → 2026-10-05 (+19d) | 2026-10-15 → 2026-12-27 (+73d) |  |  |  |  |  |
| DAM3-C-B4-A-1080 | Tiles for Toilet | 2026-09-16 A → 2026-10-05 A (+19d) | 2026-09-19 A → 2026-10-10 A (+21d) |  |  |  | DAM3-C-B4-A-1220, DAM3-P-ST-EX-110 → DAM3-C-B4-A-1220 | resources Tile Fixer [112 h]; Construction Cost [48089.6] → Tile Fixer [112 h]; Construction Cost [46530.7] |
| DAM3-C-B4-A-1110 | Tiles for Office Area | 2026-09-24 A → 2026-11-19 (+56d) | 2026-09-26 A → 2026-11-21 (+56d) |  | 100% → 0% | none → 27d |  | resources Tile Fixer [32 h]; Construction Cost [25626.5] → Tile Fixer [32 h]; Construction Cost [26867.3] |
| DAM3-C-B4-A-1240 | Granite strip | 2026-09-24 A → 2026-11-22 (+59d) | 2026-10-03 A → 2026-11-23 (+51d) |  | 100% → 0% | none → 27d |  | resources Tile Fixer [32 h]; Construction Cost [1454.24] → Tile Fixer [32 h]; Construction Cost [671.12] |
| DAM3-C-B4-A-1260 | Epoxy paint | 2026-09-24 A → 2026-12-20 (+87d) | 2026-10-15 A → 2026-12-27 (+73d) |  | 100% → 0% | none → 27d | DAM3-C-B4-A-1240 → DAM3-C-B4-A-1200, DAM3-C-B5-A-1670 | resources Painter [112 h]; Construction Cost [102516] → Painter [112 h]; Construction Cost [115420] |
| 3 | **DOORS & WINDOWS** | 2026-08-13 → 2026-11-05 (+84d) | 2026-10-15 → 2026-11-21 (+37d) |  |  |  |  |  |
| DAM3-C-B4-A-1420 | Window (CW1) | 2026-09-08 A → 2026-11-05 (+58d) | 2026-09-24 A → 2026-11-12 (+49d) |  | 100% → 0% | none → 26.2d |  | resources Carperter [112 h]; Construction Cost [90682.8] → Carperter [112 h]; Construction Cost [94173.2] |
| DAM3-C-B4-A-1050 | Roll up Shutter Door | 2026-08-17 A → 2026-11-14 (+89d) | 2026-09-20 A → 2026-11-14 (+55d) |  | 100% → 0% | none → 26.2d |  | resources Carperter [16 h]; Construction Cost [66353.3] → Carperter [16 h]; Construction Cost [68619.2] |
| DAM3-C-B4-A-1060 | Supply and install (D5) 1000*2200mm single leaf steel door with door | 2026-09-17 A → 2026-11-15 (+59d) | 2026-09-19 A → 2026-11-15 (+57d) |  | 100% → 0% | none → 26.2d |  | resources Carperter [16 h]; Construction Cost [15482.4] → Carperter [16 h]; Construction Cost [16016.2] |
| DAM3-C-B4-A-1120 | Supply and install (D4) 800*2200 mm single leaf aluminum door with door | 2026-09-24 A → 2026-11-16 (+53d) | 2026-10-15 A → 2026-11-16 (+32d) |  | 100% → 0% | none → 26.2d |  | resources Carperter [16 h]; Construction Cost [21896.6] → Carperter [16 h]; Construction Cost [22737.8] |
| DAM3-C-B4-A-1130 | Supply and install (D7) 1000*2200 mm single leaf aluminum door with door | 2026-09-24 A → 2026-11-17 (+54d) | 2026-10-15 A → 2026-11-17 (+33d) |  | 100% → 0% | none → 26.2d |  | resources Carperter [16 h]; Construction Cost [7520.04] → Carperter [16 h]; Construction Cost [7811.07] |
| DAM3-C-B4-A-1350 | Supply and install (D3) 1000*2200 mm single leaf aluminum door with door | 2026-09-24 A → 2026-11-18 (+55d) | 2026-10-15 A → 2026-11-18 (+34d) |  | 100% → 0% | none → 26.2d |  | resources Carperter [16 h]; Construction Cost [15482.4] → Carperter [16 h]; Construction Cost [16016.2] |
| DAM3-C-B4-A-1360 | Supply and install fire rated 45 min (D2) 1200*2200 mm single leaf steel door | 2026-09-17 A → 2026-11-19 (+63d) | 2026-09-19 A → 2026-11-19 (+61d) |  | 100% → 0% | none → 26.2d |  | resources Carperter [16 h]; Construction Cost [16146] → Carperter [16 h]; Construction Cost [16711.5] |
| DAM3-C-B4-A-1370 | Skylight fixtures installation | 2026-08-13 A → 2026-11-21 (+100d) | 2026-08-22 A → 2026-11-21 (+91d) |  | 100% → 0% | none → 26.2d |  | resources Carperter [16 h]; Construction Cost [61929.7] → Carperter [16 h]; Construction Cost [6489.89] |
| 4 | **WATER PROOFING WORKS** | 2026-09-14 → 2026-10-18 (+34d) | 2026-09-15 → 2026-10-20 (+35d) |  |  |  |  |  |
| DAM3-C-B4-A-1220 | Waterproofing membrane for toilets | 2026-09-14 A → 2026-10-18 A (+34d) | 2026-09-15 A → 2026-10-20 A (+35d) |  |  |  | DAM3-C-B4-M-820, DAM3-C-B4-A-1040, DAM3-C-B4-A-1370 → DAM3-C-B4-M-820, DAM3-C-B4-A-1040 | resources General Labour [64 h]; Construction Cost [4653.33] → General Labour [64 h]; Construction Cost [4879.02] |
| 7 | **METAL WORKS** | 2026-08-18 → 2026-08-03 (-15d) | 2026-10-22 → 2026-12-06 (+45d) |  |  |  |  |  |
| DAM3-C-B4-A-1160 | Galvanised Steel Gratings | 2026-10-10 A → 2026-08-03 A (-68d) | 2026-10-11 A → 2026-08-03 A (-69d) |  |  |  | DAM3-C-B4-A-1170 SS → DAM3-C-B4-A-1170 | resources Steel Fixer [32 h]; General Labour [32 h]; Construction Cost [6237.21] → Steel Fixer [32 h]; General Labour [32 h]; Construction Cost [6455.16] |
| DAM3-C-B4-A-1150 | Steel Ladder | 2026-08-18 A → 2026-11-24 (+98d) | 2026-08-29 A → 2026-11-25 (+88d) |  | 100% → 0% | none → 27d |  | resources Steel Fixer [32 h]; General Labour [32 h]; Construction Cost [9510.64] → Steel Fixer [32 h]; General Labour [32 h]; Construction Cost [9839.16] |
| DAM3-C-B4-A-1250 | Steel railing works | 2026-10-19 → 2026-11-26 (+38d) | 2026-10-22 → 2026-11-30 (+39d) |  |  | 5.75d → 27d | DAM3-C-B4-A-1150 SS → DAM3-C-B4-A-1150 | resources Steel Fixer [64 h]; General Labour [64 h]; Construction Cost [7497.92] → Steel Fixer [64 h]; General Labour [64 h]; Construction Cost [1533.98] |
| DAM3-C-B4-A-1170 | Aluminium composite panel | 2026-09-14 A → 2026-12-01 (+78d) | 2026-10-03 A → 2026-12-06 (+64d) |  | 100% → 0% | none → 27d |  | resources Steel Fixer [80 h]; General Labour [80 h]; Construction Cost [175670] → Steel Fixer [80 h]; General Labour [80 h]; Construction Cost [175889] |
| 8 | **SPECIALTIES** | 2026-09-22 → 2026-12-07 (+76d) | 2026-10-26 → 2026-12-19 (+54d) |  |  |  |  |  |
| DAM3-C-B4-A-1180 | Installation of fittings | 2026-09-22 A → 2026-12-07 (+76d) | 2026-09-24 A → 2026-12-14 (+81d) | 4d → 7d | 100% → 0% | none → 27d | DAM3-C-B4-A-1160 SS → DAM3-C-B4-A-1160 | resources Plumber [112 h]; Construction Cost [21686.5] → Plumber [112 h]; Construction Cost [22981.3] |
| DAM3-C-B4-A-1410 | Identification sign; ID01 & ID02 | 2026-10-24 → 2026-12-15 (+52d) | 2026-10-26 → 2026-12-17 (+52d) |  |  | 5.75d → 27d | DAM3-C-B4-A-1180 SS → DAM3-C-B4-A-1180 | resources Mason [48 h]; Construction Cost [9289.46] → Mason [48 h]; Construction Cost [9630.56] |
| DAM3-C-B4-A-1200 | Furniture Installation | 2026-10-24 → 2026-12-19 (+56d) | 2026-10-24 → 2026-12-19 (+56d) |  |  | 6.75d → 27d | DAM3-C-B4-A-1410 SS → DAM3-C-B4-A-1410 | resources General Labour [16 h]; Mason [16 h]; Construction Cost [10561.2] → General Labour [16 h]; Mason [16 h]; Construction Cost [12468.8] |

| ID | Task | Start | Finish | Duration | Complete | Total float | Predecessors | Other |
| --- | --- | --- | --- | --- | --- | --- | --- | --- |
| 3 | **MECHANICAL** | 2026-07-11 → 2026-06-25 (-16d) | 2026-10-08 → 2026-12-13 (+66d) |  |  |  |  |  |
| 1 | **HVAC** | 2026-08-06 → 2026-11-23 (+109d) | 2026-10-04 → 2026-12-09 (+66d) |  |  |  |  |  |
| 1 | **FIRST STAGE** | 2026-08-06 → 2026-11-30 (+116d) | 2026-09-16 → 2026-12-05 (+80d) |  |  |  |  |  |
| DAM3-C-B4-M-760 | Installation of HVAC Ducts | 2026-08-06 A → 2026-11-30 (+116d) | 2026-09-16 A → 2026-12-02 (+77d) |  | 100% → 0% | none → 46.65d |  | resources Ductman [32 h]; Construction Cost [141482] → Ductman [32 h]; Construction Cost [149489] |
| DAM3-C-B4-M-790 | Installation of Duct insulation | 2026-08-06 A → 2026-12-02 (+118d) | 2026-09-16 A → 2026-12-05 (+80d) |  | 100% → 0% | none → 46.65d |  | resources Ductman [32 h]; Construction Cost [18747.3] → Ductman [32 h]; Construction Cost [21205.4] |
| 2 | **SECOND STAGE** | 2026-09-10 → 2026-11-23 (+74d) | 2026-10-04 → 2026-12-09 (+66d) |  |  |  |  |  |
| DAM3-C-B4-M-750 | Installation of Exhaust Fans | 2026-09-16 A → 2026-11-23 (+68d) | 2026-09-17 A → 2026-11-25 (+69d) |  | 100% → 0% | none → 46.65d |  | resources AC Technician [32 h]; Construction Cost [9331.24] → AC Technician [32 h]; Construction Cost [7938.56] |
| DAM3-C-B4-M-780 | Installation of Wall Propeller Type Exhaust Fan | 2026-09-10 A → 2026-11-25 (+76d) | 2026-09-12 A → 2026-11-30 (+79d) |  | 100% → 0% | none → 46.65d |  | resources AC Technician [64 h]; Construction Cost [17417.7] → AC Technician [64 h]; Construction Cost [46831.6] |
| DAM3-C-B4-M-770 | Installation of Diffuser | 2026-09-16 A → 2026-12-05 (+80d) | 2026-10-04 A → 2026-12-07 (+64d) |  | 100% → 0% | none → 46.65d |  | resources Ductman [32 h]; Construction Cost [2764.72] → Ductman [32 h]; Construction Cost [2144] |
| DAM3-C-B4-M-960 | Supply, install, test and commission door grilles & exhaust louvers | 2026-09-16 A → 2026-12-07 (+82d) | 2026-10-04 A → 2026-12-09 (+66d) |  | 100% → 0% | none → 46.65d |  | resources Ductman [32 h]; Construction Cost [7188.28] → Ductman [32 h]; Construction Cost [5574.4] |
| 2 | **FIRE FIGHTING SYSTEM** | 2026-08-06 → 2026-09-30 (+55d) | 2026-09-24 → 2026-12-13 (+80d) |  |  |  |  |  |
| 1 | **FIRST STAGE** | 2026-08-06 → 2026-09-30 (+55d) | 2026-09-17 → 2026-10-04 (+17d) |  |  |  |  |  |
| DAM3-C-B4-M-920 | Installation of Fire Fighting Pipes (Seamless Black Steel) | 2026-08-06 A → 2026-09-30 A (+55d) | 2026-09-17 A → 2026-10-04 A (+17d) |  |  |  |  | resources Pipe Fitter [112 h]; Construction Cost [60425.7] → Pipe Fitter [112 h]; Construction Cost [72394.8] |
| DAM3-C-B4-M-930 | Installation of Fire Fighting Valve | 2026-08-06 A → 2026-09-30 A (+55d) | 2026-09-05 A → 2026-10-04 A (+29d) |  |  |  |  | resources Pipe Fitter [80 h]; Construction Cost [12712.2] → Pipe Fitter [80 h]; Construction Cost [12199.4] |
| 2 | **SECOND STAGE** | 2026-09-17 → 2026-11-23 (+67d) | 2026-09-24 → 2026-12-13 (+80d) |  |  |  |  |  |
| DAM3-C-B4-M-940 | Installation of Fire Hose Cabinet | 2026-09-22 A → 2026-11-23 (+62d) | 2026-09-24 A → 2026-11-26 (+63d) |  | 100% → 0% | none → 60.25d |  | resources Pipe Fitter [48 h]; Construction Cost [11147.4] → Pipe Fitter [48 h]; Construction Cost [15158.6] |
| DAM3-C-B4-M-990 | Supply, install, test and commission Fire Department Connection(FDC) | 2026-09-17 A → 2026-12-09 (+83d) | 2026-09-19 A → 2026-12-13 (+85d) |  | 100% → 0% | none → 46.65d | DAM3-C-B4-M-960 SS → DAM3-C-B4-M-960 | resources Pipe Fitter [48 h]; Construction Cost [2598.84] → Pipe Fitter [48 h]; Construction Cost [2706.06] |
| 3 | **SEWER AND DRAINAGE SYSTEM** | 2026-07-11 → 2026-06-25 (-16d) | 2026-10-08 → 2026-12-01 (+54d) |  |  |  |  |  |
| 1 | **FIRST STAGE** | 2026-07-11 → 2026-06-25 (-16d) | 2026-08-06 → 2026-11-15 (+101d) |  |  |  |  |  |
| DAM3-C-B4-M-1000 | Installation of Trench drain | 2026-07-11 A → 2026-06-25 A (-16d) | 2026-08-06 A → 2026-06-28 A (-39d) |  |  |  |  | resources Plumber [80 h]; Construction Cost [11379.6] → Plumber [80 h]; Construction Cost [11508.8] |
| DAM3-C-B4-M-820 | Installation of Sanitary Waste / Drainage Pipes | 2026-07-11 A → 2026-06-27 A (-14d) | 2026-08-06 A → 2026-06-29 A (-38d) |  |  |  |  | resources Plumber [64 h]; Construction Cost [14362.4] → Plumber [64 h]; Construction Cost [18585.1] |
| DAM3-C-B4-M-840 | Installation of Floor Drain | 2026-07-11 A → 2026-11-14 (+126d) | 2026-08-06 A → 2026-11-15 (+101d) |  | 100% → 0% | none → 5d |  | resources Plumber [32 h]; Construction Cost [10616.5] → Plumber [32 h]; Construction Cost [11056] |
| 2 | **SECOND STAGE** | 2026-07-11 → 2026-11-16 (+128d) | 2026-10-08 → 2026-12-01 (+54d) |  |  |  |  |  |
| DAM3-C-B4-M-800 | Installation of Electric Water Heater | 2026-09-05 A → 2026-11-16 (+72d) | 2026-09-10 A → 2026-11-17 (+68d) |  | 100% → 0% | none → 5d |  | resources Plumber [32 h]; Construction Cost [1592.48] → Plumber [32 h]; Construction Cost [1819.51] |
| DAM3-C-B4-M-810 | Installation of Sanitary Fixture and Accessories | 2026-10-04 A → 2026-11-18 (+45d) | 2026-10-08 A → 2026-11-22 (+45d) |  | 100% → 0% | none → 5d |  | resources Plumber [64 h]; Construction Cost [16243] → Plumber [64 h]; Construction Cost [19921.7] |
| DAM3-C-B4-M-830 | Installation of Lavotary /Wash Basin | 2026-10-04 A → 2026-11-23 (+50d) | 2026-10-08 A → 2026-11-24 (+47d) |  | 100% → 0% | none → 44.7d |  | resources Plumber [32 h]; Construction Cost [20348.3] → Plumber [32 h]; Construction Cost [21416.7] |
| DAM3-C-B4-M-890 | Installation of Bib Tap | 2026-10-04 A → 2026-11-25 (+52d) | 2026-10-08 A → 2026-11-26 (+49d) |  | 100% → 0% | none → 44.7d |  | resources Plumber [32 h]; Construction Cost [2211.78] → Plumber [32 h]; Construction Cost [1900.66] |
| DAM3-C-B4-M-850 | Installation of Water Tap | 2026-10-04 A → 2026-11-28 (+55d) | 2026-10-08 A → 2026-11-29 (+52d) |  | 100% → 0% | none → 44.7d |  | resources Plumber [32 h]; Construction Cost [2654.13] → Plumber [32 h]; Construction Cost [2874.14] |
| DAM3-C-B4-M-860 | Installation of Roof Vent Cap | 2026-07-11 A → 2026-11-30 (+142d) | 2026-09-10 A → 2026-12-01 (+82d) |  | 100% → 0% | none → 44.7d |  | resources Pipe Fitter [32 h]; Construction Cost [829.41] → Pipe Fitter [32 h]; Construction Cost [927.12] |
| 4 | **WATER SUPPLY SYSTEM** | 2026-09-03 → 2026-09-22 (+19d) | 2026-09-12 → 2026-11-29 (+78d) |  |  |  |  |  |
| 1 | **FIRST STAGE** | 2026-09-03 → 2026-09-22 (+19d) | 2026-09-12 → 2026-09-29 (+17d) |  |  |  |  |  |
| DAM3-C-B4-M-910 | Installation of Water Supply Pipes | 2026-09-03 A → 2026-09-22 A (+19d) | 2026-09-10 A → 2026-09-29 A (+19d) |  |  |  |  | resources Plumber [64 h]; Construction Cost [19520.2] → Plumber [64 h]; Construction Cost [23318.4] |
| DAM3-C-B4-M-900 | Installation of Water Supply Valve | 2026-09-10 A → 2026-09-24 A (+14d) | 2026-09-12 A → 2026-09-29 A (+17d) |  |  |  |  | resources Plumber [32 h]; Construction Cost [15736.8] → Plumber [32 h]; Construction Cost [18274.3] |
| 2 | **SECOND STAGE** | 2026-09-12 → 2026-11-23 (+72d) | 2026-09-12 → 2026-11-29 (+78d) |  |  |  |  |  |
| DAM3-C-B4-M-950 | Capped connection | 2026-09-12 A → 2026-11-23 (+72d) | 2026-09-12 A → 2026-11-29 (+78d) |  | 100% → 0% | none → 51.65d |  | resources Plumber [80 h]; Construction Cost [287.53] → Plumber [80 h]; Construction Cost [278.13] |
| 4 | **ELECTRICAL** | 2026-06-17 → 2026-05-24 (-24d) | 2026-10-20 → 2027-01-03 (+75d) |  |  |  |  |  |
| 1 | **FIRST STAGE** | 2026-06-17 → 2026-05-24 (-24d) | 2026-10-20 → 2027-01-02 (+74d) |  |  |  |  |  |
| DAM3-C-B4-E-573 | Installation of Earthing and Grounding | 2026-06-17 A → 2026-05-24 A (-24d) | 2026-10-20 → 2026-12-29 (+70d) |  |  | 9.95d → 46.3d |  | resources Electrician [64 h]; Construction Cost [17002.4] → Electrician [64 h]; Construction Cost [19646.5] |
| DAM3-C-B4-E-603 | Installation of Conduits and wiring outlets - Fire Alarm System | 2026-08-11 A → 2026-05-24 A (-79d) | 2026-09-24 A → 2026-12-02 (+69d) |  | 100% → 50% | none → 44.65d | DAM3-C-B4-E-663 SS → DAM3-C-B4-E-663 | resources Electrician [64 h]; Construction Cost [2026.84] → Electrician [64 h]; Construction Cost [1768.31] |
| DAM3-C-B4-E-643 | Installation of Sleeves & Power outlet | 2026-06-17 A → 2026-05-24 A (-24d) | 2026-09-15 A → 2026-11-09 (+55d) |  | 100% → 50% | none → 8d |  | resources Electrician [128 h]; Construction Cost [2853.19] → Electrician [128 h]; Construction Cost [2920.45] |
| DAM3-C-B4-E-623 | Installation of Conduites for Lighting Fixture | 2026-08-11 A → 2026-09-12 A (+32d) | 2026-09-24 A → 2026-12-12 (+79d) |  | 100% → 90% | none → 47.25d | DAM3-C-B4-E-603 → DAM3-C-B4-E-593, DAM3-C-B4-M-940 | resources Electrician [64 h]; Construction Cost [3983.66] → Electrician [64 h]; Construction Cost [8462.97] |
| DAM3-C-B4-E-693 | Installation of Wires | 2026-08-22 A → 2026-12-20 (+120d) | 2026-09-24 A → 2026-12-23 (+90d) |  | 100% → 0% | none → 40.7d | DAM3-C-B4-E-623 → DAM3-C-B4-E-623, DAM3-C-B4-M-990, DAM3-C-B4-A-1200 | resources Electrician [64 h]; Construction Cost [7966.69] → Electrician [64 h]; Construction Cost [16925.9] |
| DAM3-C-B4-E-683 | Installation of LV Cables | 2026-09-22 A → 2026-12-29 (+98d) | 2026-10-17 A → 2027-01-02 (+77d) | 2d → 4d | 100% → 0% | none → 42.7d |  | resources Electrician [64 h]; Construction Cost [31551] → Electrician [64 h]; Construction Cost [36390] |
| 2 | **SECOND STAGE** | 2026-08-22 → 2026-10-10 (+49d) | 2026-10-20 → 2027-01-03 (+75d) |  |  |  |  |  |
| DAM3-C-B4-E-1040 | Installation of Solar power plant | 2026-08-22 A → 2026-10-10 A (+49d) | 2026-10-12 A → 2026-11-18 (+37d) | 2d → 7d | 100% → 10% | none → 38.6d |  | resources Plumber [112 h]; Construction Cost [218966] → Plumber [112 h]; Construction Cost [253269] |
| DAM3-C-B4-E-703 | Installation of LP-1 Panel | 2026-09-10 A → 2026-10-10 A (+30d) | 2026-10-01 A → 2026-10-14 A (+13d) |  |  |  | DAM3-C-B4-E-653 SS → DAM3-C-B4-E-653 | resources Electrician [32 h]; Construction Cost [15128.5] → Electrician [32 h]; Construction Cost [18403.5] |
| DAM3-C-B4-E-633 | Installation of Wiring Devices | 2026-09-24 A → 2026-11-23 (+60d) | 2026-10-17 A → 2026-11-28 (+42d) |  | 100% → 0% | none → 44.65d | DAM3-C-B4-E-643, DAM3-C-B4-A-1090 → DAM3-C-B4-E-643, DAM3-C-B4-A-1090, DAM3-C-B5-M-1260 | resources Electrician [64 h]; Construction Cost [20742.2] → Electrician [64 h]; Construction Cost [19435.1] |
| DAM3-C-B4-E-663 | Installation of Disconnect Switches | 2026-09-24 A → 2026-11-28 (+65d) | 2026-10-17 A → 2026-11-30 (+44d) |  | 100% → 0% | none → 44.65d |  | resources Electrician [32 h]; Construction Cost [25808.4] → Electrician [32 h]; Construction Cost [30236] |
| DAM3-C-B4-E-583 | Installation of Fire Alarm Control Panel | 2026-09-24 A → 2026-12-02 (+69d) | 2026-10-17 A → 2026-12-07 (+51d) |  | 100% → 0% | none → 44.65d | DAM3-C-B4-E-603 SS → DAM3-C-B4-E-603, DAM3-C-B4-M-860 | resources Electrician [64 h]; Construction Cost [16216.6] → Electrician [64 h]; Construction Cost [19451.4] |
| DAM3-C-B4-E-593 | Installation of Fire Detectors & Accessories | 2026-10-01 A → 2026-12-07 (+67d) | 2026-10-17 A → 2026-12-12 (+56d) |  | 100% → 0% | none → 44.65d | DAM3-C-B4-E-583 SS, DAM3-C-B4-M-950 SS → DAM3-C-B4-E-583, DAM3-C-B4-M-950 | resources Electrician [64 h]; Construction Cost [31219.2] → Electrician [64 h]; Construction Cost [56740.4] |
| DAM3-C-B4-E-733 | Installation of Access Control System | 2026-08-22 A → 2026-12-12 (+112d) | 2026-10-20 → 2026-12-17 (+58d) | 2d → 5d | 70% → 0% | 9.85d → 44.65d | DAM3-C-B4-E-593 SS, DAM3-C-B4-M-990 SS → DAM3-C-B4-E-593 | resources Electrician [80 h]; Construction Cost [24315.4] → Electrician [80 h]; Construction Cost [27616.9] |
| DAM3-C-B4-E-743 | Monitor Modules for Fire Alarm | 2026-09-24 A → 2026-12-17 (+84d) | 2026-10-20 → 2026-12-20 (+61d) |  | 50% → 0% | 10.05d → 44.65d | DAM3-C-B4-E-733 SS → DAM3-C-B4-E-733 | resources Electrician [32 h]; Construction Cost [3760.02] → Electrician [32 h]; Construction Cost [3882.38] |
| DAM3-C-B4-E-753 | Line Isolator Modules for Fire Alarm | 2026-09-24 A → 2026-12-20 (+87d) | 2026-10-17 A → 2026-12-22 (+66d) |  | 100% → 0% | none → 44.65d | DAM3-C-B4-E-743 SS → DAM3-C-B4-E-743 | resources Electrician [32 h]; Construction Cost [163.42] → Electrician [32 h]; Construction Cost [185.4] |
| DAM3-C-B4-E-763 | Firewarning flash light with sounder; wall mounted, Weather proof | 2026-09-22 A → 2026-12-22 (+91d) | 2026-09-24 A → 2026-12-24 (+91d) |  | 100% → 0% | none → 44.65d | DAM3-C-B4-E-753 SS → DAM3-C-B4-E-753 | resources Electrician [32 h]; Construction Cost [2963.79] → Electrician [32 h]; Construction Cost [3082.69] |
| DAM3-C-B4-E-613 | Installation of Lighting fixtures | 2026-09-22 A → 2026-12-24 (+93d) | 2026-10-20 → 2026-12-28 (+69d) | 2d → 4d | 80% → 0% | 9.95d → 40.7d | DAM3-C-B4-E-693 SS → DAM3-C-B4-E-693 | resources Electrician [64 h]; Construction Cost [59751.1] → Electrician [64 h]; Construction Cost [76166.7] |
| DAM3-C-B4-E-653 | Installation of Main Distribution Board | 2026-10-07 A → 2026-12-24 (+78d) | 2026-10-17 A → 2026-12-26 (+70d) |  | 100% → 0% | none → 41.7d | DAM3-C-B4-E-693 SS → DAM3-C-B4-E-693 | resources Electrician [32 h]; Construction Cost [25479.7] → Electrician [32 h]; Construction Cost [32472.7] |
| DAM3-C-B4-E-1030 | Installation of CCTV System | 2026-08-22 A → 2026-12-27 (+127d) | 2026-10-17 A → 2027-01-03 (+78d) | 2d → 7d | 100% → 0% | none → 41.7d |  | resources Plumber [112 h]; Construction Cost [66177.6] → Plumber [112 h]; Construction Cost [76349.2] |
| DAM3-C-B4-E-713 | Installation of PP-AC panel | 2026-10-07 A → 2026-12-27 (+81d) | 2026-10-17 A → 2026-12-28 (+72d) |  | 100% → 0% | none → 41.7d | DAM3-C-B4-E-703 SS → DAM3-C-B4-E-703 | resources Electrician [32 h]; Construction Cost [18214] → Electrician [32 h]; Construction Cost [21648.5] |
| DAM3-C-B4-E-673 | Installation of Telephone Cabinet | 2026-10-01 A → 2026-12-29 (+89d) | 2026-10-12 A → 2026-12-30 (+79d) |  | 100% → 0% | none → 42.7d | DAM3-C-B4-E-713 SS → DAM3-C-B4-E-713 | resources Electrician [32 h]; Construction Cost [23299.8] → Electrician [32 h]; Construction Cost [26991.1] |
| 1 | **STRUCTURAL** | 2026-01-17 → 2026-02-17 (+31d) | 2026-07-08 → 2026-10-27 (+111d) |  |  |  |  |  |
| 1 | **FOOTING** | 2026-01-17 → 2026-02-17 (+31d) | 2026-02-19 → 2026-05-17 (+87d) |  |  |  |  |  |
| DAM3-C-B3-S-210 | Excavation for footings | 2026-01-17 A → 2026-02-17 A (+31d) | 2026-02-04 A → 2026-03-12 A (+36d) | 7d → 4d |  |  | DAM3-C-B4-S-210, DAM3-PMS-MMS-0070 → DAM3-C-B4-S-210 | resources General Labour [112 h]; Equipment Operator [112 h]; Truck [56 h]; Excavator [56 h]; Mini Roller Compactor [56 h]; Construction Cost [166241] → General Labour [112 h]; Equipment Operator [112 h]; Truck [32 h]; Excavator [32 h]; Mini Roller Compactor [32 h]; Construction Cost [89859.6] |
| DAM3-C-B3-S-1037 | Anti Termite Below Footings | 2026-02-10 A → 2026-04-11 A (+60d) | 2026-02-10 A → 2026-04-11 A (+60d) |  |  |  | DAM3-C-B3-S-210 → DAM3-C-B3-S-6213 | resources Mason [16 h]; Construction Cost [8441.61] → Mason [16 h]; Construction Cost [11905.5] |
| DAM3-C-B3-S-797 | Lean Concrete Below Footings | 2026-02-10 A → 2026-04-11 A (+60d) | 2026-02-10 A → 2026-04-11 A (+60d) |  |  |  | DAM3-C-B3-S-947 → DAM3-C-B3-S-947, DAM3-C-B9-S-103 | resources Mason [32 h]; Construction Cost [8238.87] → Mason [32 h]; Construction Cost [8229.34] |
| DAM3-C-B3-S-947 | Vapour Barrier for Footings | 2026-02-10 A → 2026-04-11 A (+60d) | 2026-02-10 A → 2026-04-11 A (+60d) |  |  |  |  | resources General Labour [16 h]; Construction Cost [6030.16] → General Labour [16 h]; Construction Cost [7940.1] |
| DAM3-C-B3-S-847 | Rebar for Footings | 2026-02-12 A → 2026-05-06 A (+83d) | 2026-02-18 A → 2026-05-11 A (+82d) |  |  |  |  | resources Steel Fixer [64 h]; Construction Cost [93071.6] → Steel Fixer [64 h]; Construction Cost [101845] |
| DAM3-C-B3-S-857 | Formwork for Footings | 2026-02-11 A → 2026-05-11 A (+89d) | 2026-02-14 A → 2026-05-13 A (+88d) | 6d → 4d |  |  |  | resources Carperter [64 h]; Construction Cost [23267.9] → Carperter [64 h]; Construction Cost [25461.2] |
| DAM3-C-B3-S-807 | Pouring Concrete for Footings | 2026-02-19 A → 2026-05-17 A (+87d) | 2026-02-19 A → 2026-05-17 A (+87d) |  |  |  |  | resources Carperter [16 h]; Mason [16 h]; Steel Fixer [16 h]; Concrete Mixer [8 h]; Equipment Operator [16 h]; Construction Cost [116339] → Carperter [16 h]; Mason [16 h]; Steel Fixer [16 h]; Concrete Mixer [8 h]; Equipment Operator [16 h]; Construction Cost [127306] |
| 2 | **COLUMN NECK** | 2026-02-12 → 2026-05-11 (+88d) | 2026-03-25 → 2026-06-09 (+76d) |  |  |  |  |  |
| DAM3-C-B3-S-897 | Rebar for column neck | 2026-02-12 A → 2026-05-11 A (+88d) | 2026-02-18 A → 2026-05-14 A (+85d) |  |  |  |  | resources Steel Fixer [32 h]; Construction Cost [21993.7] → Steel Fixer [32 h]; Construction Cost [14919.2] |

| ID | Task | Start | Finish | Duration | Complete | Total float | Predecessors | Other |
| --- | --- | --- | --- | --- | --- | --- | --- | --- |
| DAM3-C-B3-S-887 | Pouring Concrete for column neck | 2026-02-25 A → 2026-05-20 A (+84d) | 2026-03-02 A → 2026-05-20 A (+79d) |  |  |  |  | resources Mason [16 h]; Carperter [16 h]; Concrete Mixer [8 h]; Steel Fixer [16 h]; Equipment Operator [16 h]; Construction Cost [27492.4] → Mason [16 h]; Carperter [16 h]; Concrete Mixer [8 h]; Steel Fixer [16 h]; Equipment Operator [16 h]; Construction Cost [24865.3] |
| DAM3-C-B3-S-937 | Damp proof /Bitumin paint on Footings & column neck | 2026-02-28 A → 2026-05-20 A (+81d) | 2026-03-03 A → 2026-05-23 A (+81d) |  |  |  |  | resources Painter [32 h]; Construction Cost [6903.81] → Painter [32 h]; Construction Cost [24777.7] |
| DAM3-C-B3-S-907 | Formwork for column neck | 2026-02-21 A → 2026-05-21 A (+89d) | 2026-03-02 A → 2026-05-23 A (+82d) |  |  |  |  | resources Carperter [32 h]; Construction Cost [5498.72] → Carperter [32 h]; Construction Cost [9946.13] |
| DAM3-C-B3-S-997 | Backfilling / Compaction up to Bottom of Grade Beams | 2026-03-04 A → 2026-05-24 A (+81d) | 2026-03-25 A → 2026-06-09 A (+76d) | 12d → 7d |  |  |  | resources General Labour [256 h]; Truck [128 h]; Mini Roller Compactor [128 h]; Equipment Operator [256 h]; Wheel Loader [128 h]; Construction Cost [32707.9] → General Labour [256 h]; Truck [128 h]; Mini Roller Compactor [128 h]; Equipment Operator [256 h]; Wheel Loader [128 h]; Construction Cost [46046.2] |
| 3 | **GRADE BEAM** | 2026-03-28 → 2026-06-14 (+78d) | 2026-04-22 → 2026-06-30 (+69d) |  |  |  |  |  |
| DAM3-C-B3-S-1047 | Anti Termite Below Grade Beams | 2026-03-28 A → 2026-06-14 A (+78d) | 2026-03-28 A → 2026-06-14 A (+78d) |  |  |  |  | resources Mason [16 h]; Construction Cost [8441.61] → Mason [16 h]; Construction Cost [11905.5] |
| DAM3-C-B3-S-817 | Lean Concrete Below Grade Beams | 2026-03-28 A → 2026-06-14 A (+78d) | 2026-03-28 A → 2026-06-14 A (+78d) |  |  |  |  | resources Mason [32 h]; Construction Cost [8238.87] → Mason [32 h]; Construction Cost [4431.19] |
| DAM3-C-B3-S-967 | Vapour barrier for Grade Beams | 2026-03-28 A → 2026-06-14 A (+78d) | 2026-03-28 A → 2026-06-14 A (+78d) |  |  |  |  | resources General Labour [32 h]; Construction Cost [4019.9] → General Labour [32 h]; Construction Cost [5293.4] |
| DAM3-C-B3-S-867 | Rebar for Grade Beams | 2026-04-02 A → 2026-06-16 A (+75d) | 2026-04-16 A → 2026-06-20 A (+65d) |  |  |  | DAM3-C-B3-S-817, DAM3-PMS-MMS-0060 → DAM3-C-B3-S-817 | resources Steel Fixer [80 h]; Construction Cost [24993.1] → Steel Fixer [80 h]; Construction Cost [27194.5] |
| DAM3-C-B3-S-1027 | Anchor bolts installation | 2026-04-12 A → 2026-06-18 A (+67d) | 2026-04-16 A → 2026-06-20 A (+65d) |  |  |  |  | resources Carperter [32 h]; Construction Cost [5667.68] → Carperter [32 h]; Construction Cost [57238.8] |
| DAM3-C-B3-S-877 | Formwork for Grade Beams | 2026-04-02 A → 2026-06-18 A (+77d) | 2026-04-16 A → 2026-06-22 A (+67d) |  |  |  |  | resources Carperter [32 h]; Construction Cost [6248.27] → Carperter [32 h]; Construction Cost [6798.61] |
| DAM3-C-B3-S-827 | Pouring Concrete for Grade Beams | 2026-04-18 A → 2026-06-24 A (+67d) | 2026-04-18 A → 2026-06-24 A (+67d) |  |  |  |  | resources Mason [16 h]; Carperter [16 h]; Concrete Mixer [8 h]; Steel Fixer [16 h]; Equipment Operator [16 h]; Construction Cost [31241.3] → Mason [16 h]; Carperter [16 h]; Concrete Mixer [8 h]; Steel Fixer [16 h]; Equipment Operator [16 h]; Construction Cost [33993.1] |
| DAM3-C-B3-S-977 | Damp proof /Bitumin paint on Grade Beams | 2026-04-20 A → 2026-06-27 A (+68d) | 2026-04-22 A → 2026-06-30 A (+69d) |  |  |  |  | resources Painter [80 h]; Construction Cost [6903.81] → Painter [80 h]; Construction Cost [24777.7] |
| 5 | **SLAB ON GRADE** | 2026-04-27 → 2026-07-06 (+70d) | 2026-06-20 → 2026-10-27 (+129d) |  |  |  |  |  |
| DAM3-C-B3-S-1007 | Backfilling / Compaction for Slab on Grade | 2026-04-27 A → 2026-07-06 A (+70d) | 2026-04-30 A → 2026-07-09 A (+70d) | 12d → 7d |  |  |  | resources Mini Roller Compactor [128 h]; General Labour [256 h]; Equipment Operator [256 h]; Wheel Loader [128 h]; Truck [128 h]; Construction Cost [32707.9] → Mini Roller Compactor [128 h]; General Labour [256 h]; Equipment Operator [256 h]; Wheel Loader [128 h]; Truck [128 h]; Construction Cost [23023.1] |
| DAM3-C-B3-S-837 | Pouring Concrete for Ground Slab | 2026-05-19 A → 2026-08-11 A (+84d) | 2026-05-25 A → 2026-08-15 A (+82d) |  |  |  |  | resources Mason [64 h]; Carperter [64 h]; Steel Fixer [64 h]; Concrete Mixer [32 h]; Equipment Operator [64 h]; Construction Cost [304092] → Mason [64 h]; Carperter [64 h]; Steel Fixer [64 h]; Concrete Mixer [32 h]; Equipment Operator [64 h]; Construction Cost [344195] |
| DAM3-C-B3-S-957 | Anti Termite Treatment below Ground Slab | 2026-05-18 A → 2026-08-11 A (+85d) | 2026-05-25 A → 2026-08-15 A (+82d) |  |  |  |  | resources General Labour [16 h]; Construction Cost [11255.5] → General Labour [16 h]; Construction Cost [15874.1] |
| DAM3-C-B3-S-987 | Vapour barrier for below Ground Slab | 2026-05-18 A → 2026-08-11 A (+85d) | 2026-05-25 A → 2026-08-15 A (+82d) |  |  |  |  | resources General Labour [32 h]; Construction Cost [10050.1] → General Labour [32 h]; Construction Cost [13233.5] |
| DAM3-C-B3-S-1017 | Concrete pad | 2026-06-17 A → 2026-10-20 (+125d) | 2026-06-20 A → 2026-10-27 (+129d) |  | 100% → 0% | none → 38.2d |  | resources Mason [112 h]; Construction Cost [1803.82] → Mason [112 h]; Construction Cost [907.11] |
| 4 | **COLUMNS & BEAMS** | 2026-03-02 → 2026-06-16 (+106d) | 2026-07-08 → 2026-10-05 (+89d) |  |  |  |  |  |
| DAM3-C-B3-S-6101 | Rebar for Tie Beams | 2026-03-02 A → 2026-06-16 A (+106d) | 2026-03-04 A → 2026-06-20 A (+108d) |  |  |  |  | resources Steel Fixer [64 h]; Construction Cost [7796.52] → Steel Fixer [64 h]; Construction Cost [7263.64] |
| DAM3-C-B3-S-6102 | Formwork for Tie Beams | 2026-03-02 A → 2026-06-18 A (+108d) | 2026-03-04 A → 2026-06-22 A (+110d) |  |  |  |  | resources Carperter [32 h]; Construction Cost [1949.44] → Carperter [32 h]; Construction Cost [1815.91] |
| DAM3-C-B3-S-6103 | Pouring Concrete for Tie Beams | 2026-03-07 A → 2026-06-24 A (+109d) | 2026-03-07 A → 2026-06-24 A (+109d) |  |  |  |  | resources Mason [16 h]; Carperter [16 h]; Concrete Mixer [8 h]; Steel Fixer [16 h]; Equipment Operator [16 h]; Construction Cost [9745.95] → Mason [16 h]; Carperter [16 h]; Concrete Mixer [32 h]; Steel Fixer [16 h]; Equipment Operator [16 h]; Construction Cost [9079.54] |
| DAM3-C-B3-S-5101 | Rebar for column | 2026-05-02 A → 2026-07-22 A (+81d) | 2026-05-16 A → 2026-07-25 A (+70d) | 7d → 5d |  |  |  | resources Steel Fixer [112 h]; Construction Cost [18494.8] → Steel Fixer [112 h]; Construction Cost [20144] |
| DAM3-C-B3-S-5102 | Formwork for column | 2026-05-09 A → 2026-07-27 A (+79d) | 2026-05-17 A → 2026-08-02 A (+77d) |  |  |  |  | resources Carperter [64 h]; Construction Cost [4623.84] → Carperter [64 h]; Construction Cost [5036.01] |
| DAM3-C-B3-S-5103 | Pouring Concrete for column | 2026-05-16 A → 2026-07-29 A (+74d) | 2026-05-20 A → 2026-08-03 A (+75d) |  |  |  |  | resources Mason [16 h]; Carperter [16 h]; Concrete Mixer [8 h]; Steel Fixer [16 h]; Equipment Operator [16 h]; Construction Cost [23118.6] → Mason [16 h]; Carperter [16 h]; Concrete Mixer [32 h]; Steel Fixer [16 h]; Equipment Operator [16 h]; Construction Cost [25180.1] |
| DAM3-C-B3-S-6113 | Rebar for Beams | 2026-05-07 A → 2026-09-08 A (+124d) | 2026-07-06 A → 2026-09-15 A (+71d) |  |  |  |  | resources Steel Fixer [64 h]; Construction Cost [11954.6] → Steel Fixer [64 h]; Construction Cost [13379.1] |
| DAM3-C-B3-S-6123 | Formwork for Beams | 2026-06-20 A → 2026-09-23 A (+95d) | 2026-07-07 A → 2026-09-29 A (+84d) |  |  |  | DAM3-C-B3-S-6113, DAM3-C-B3-S-6113 FF → DAM3-C-B3-S-6113, DAM3-C-B3-S-6113 FF, DAM3-C-B4-S-6133 | resources Carperter [32 h]; Construction Cost [2988.97] → Carperter [32 h]; Construction Cost [3344.77] |
| DAM3-C-B3-S-6133 | Pouring Concrete for Beams | 2026-07-08 A → 2026-09-26 A (+80d) | 2026-07-08 A → 2026-10-05 A (+89d) |  |  |  |  | resources Mason [16 h]; Carperter [16 h]; Concrete Mixer [8 h]; Steel Fixer [16 h]; Equipment Operator [16 h]; Construction Cost [14943.6] → Mason [16 h]; Carperter [16 h]; Concrete Mixer [32 h]; Steel Fixer [16 h]; Equipment Operator [16 h]; Construction Cost [16723.9] |
| 5 | **STRUCTURAL STEEL** | 2026-05-04 → 2026-07-15 (+72d) | 2026-08-12 → 2026-11-02 (+82d) |  |  |  |  |  |
| DAM3-C-B3-A-210 | Installation of columns | 2026-05-06 A → 2026-07-15 A (+70d) | 2026-05-13 A → 2026-07-15 A (+63d) |  |  |  | DAM3-C-B3-S-837, DAM3-C-B4-A-220 → DAM3-C-B3-S-837, DAM3-C-B4-A-220, DAM3-P-DL-A-1770 | resources Structural Steel Fixer [80 h]; General Labour [80 h]; Equipment Operator [80 h]; Mobile Crane [40 h]; Construction Cost [164363] → Structural Steel Fixer [80 h]; General Labour [80 h]; Equipment Operator [80 h]; Mobile Crane [24 h]; Construction Cost [217508] |
| DAM3-C-B3-A-220 | Installation of raft and purlins | 2026-05-06 A → 2026-07-15 A (+70d) | 2026-05-13 A → 2026-07-16 A (+64d) |  |  |  |  | resources Structural Steel Fixer [160 h]; General Labour [160 h]; Mobile Crane [80 h]; Equipment Operator [160 h]; Construction Cost [340061] → Structural Steel Fixer [160 h]; General Labour [160 h]; Mobile Crane [56 h]; Equipment Operator [160 h]; Construction Cost [326261] |
| DAM3-C-B3-A-1430 | Intumescent paint to steel works | 2026-06-02 A → 2026-07-25 A (+53d) | 2026-06-22 A → 2026-07-29 A (+37d) | 5d → 7d |  |  |  | resources Painter [112 h]; Construction Cost [269284] → Painter [112 h]; Construction Cost [317760] |
| DAM3-C-B3-A-250 | Installation of roof sheet | 2026-06-14 A → 2026-08-16 A (+63d) | 2026-06-18 A → 2026-08-23 A (+66d) |  |  |  | DAM3-C-B3-A-230, DAM3-C-B3-A-1430, DAM3-C-B3-S-6133, DAM3-C-B3-SS-1040, DAM3-C-B3-SS-1020 → DAM3-C-B3-A-230, DAM3-C-B3-A-1430, DAM3-C-B3-S-6133 | resources Roof sheet worker [160 h]; General Labour [160 h]; Mobile Crane [80 h]; Equipment Operator [160 h]; Construction Cost [453414] → Roof sheet worker [160 h]; General Labour [160 h]; Mobile Crane [40 h]; Equipment Operator [160 h]; Construction Cost [217508] |
| DAM3-C-B3-A-1440 | Steel members for office area | 2026-05-04 A → 2026-10-07 A (+156d) | 2026-05-25 A → 2026-10-20 A (+148d) | 5d → 7d |  |  |  | resources Construction Cost [97318.2]; Equipment Operator [112 h]; General Labour [112 h]; Mobile Crane [56 h]; Structural Steel Fixer [112 h] → Construction Cost [115805]; Equipment Operator [112 h]; General Labour [112 h]; Mobile Crane [56 h]; Structural Steel Fixer [112 h] |
| DAM3-C-B3-A-240 | Installation of wall sandwich panel | 2026-07-08 A → 2026-10-12 A (+96d) | 2026-07-30 A → 2026-10-20 A (+82d) |  |  |  |  | resources Sandwich panel worker [112 h]; General Labour [112 h]; Mobile Crane [56 h]; Equipment Operator [112 h]; Construction Cost [170030] → Sandwich panel worker [112 h]; General Labour [112 h]; Mobile Crane [40 h]; Equipment Operator [112 h]; Construction Cost [326261] |
| DAM3-C-B3-SS-1020 | Epoxy paint to steel members at office area | 2026-08-11 A → 2026-10-20 (+70d) | 2026-08-12 A → 2026-10-27 (+76d) | 5d → 7d | 100% → 0% | none → 7.75d |  | resources Painter [112 h]; Construction Cost [24329.5] → Painter [112 h]; Construction Cost [23161] |
| DAM3-C-B3-SS-1030 | Steel members for external platform | 2026-05-04 A → 2026-10-20 (+169d) | 2026-05-25 A → 2026-10-27 (+155d) | 5d → 7d | 100% → 0% | none → 29.1d |  | resources Construction Cost [27249.1]; General Labour [112 h]; Mobile Crane [56 h]; Structural Steel Fixer [112 h]; Equipment Operator [112 h] → Construction Cost [18670.8]; General Labour [112 h]; Mobile Crane [56 h]; Structural Steel Fixer [112 h]; Equipment Operator [112 h] |
| DAM3-C-B3-SS-1040 | Epoxy paint for external platform | 2026-07-19 A → 2026-10-28 (+101d) | 2026-07-20 A → 2026-11-02 (+105d) |  | 100% → 0% | none → 29.1d |  | resources Painter [80 h]; Construction Cost [6812.27] → Painter [80 h]; Construction Cost [3734.16] |
| 2 | **ARCHITECTURAL** | 2026-06-06 → 2026-08-18 (+73d) | 2026-10-26 → 2027-02-10 (+107d) |  |  |  |  |  |
| 1 | **MASONARY WORKS** | 2026-06-06 → 2026-08-24 (+79d) | 2026-06-24 → 2026-09-09 (+77d) |  |  |  |  |  |
| DAM3-C-B3-A-230 | Block work at factory area | 2026-06-06 A → 2026-08-24 A (+79d) | 2026-06-24 A → 2026-09-01 A (+69d) | 15d → 10d |  |  |  | resources AAC panel erector [240 h]; General Labour [240 h]; Equipment Operator [240 h]; Mobile Crane [120 h]; Construction Cost [38856.6] → AAC panel erector [240 h]; General Labour [240 h]; Equipment Operator [240 h]; Mobile Crane [120 h]; Construction Cost [58338.7] |
| DAM3-C-B3-A-1030 | Block work at toilet area | 2026-06-06 A → 2026-08-25 A (+80d) | 2026-06-24 A → 2026-09-03 A (+71d) |  |  |  | DAM3-C-B3-A-260 → DAM3-C-B3-A-260, DAM3-C-B3-SS-1020 | resources Mason [112 h]; Construction Cost [15836.3] → Mason [112 h]; Construction Cost [14436.3] |
| DAM3-C-B3-A-260 | Block work at office area | 2026-06-06 A → 2026-08-25 A (+80d) | 2026-06-24 A → 2026-09-09 A (+77d) | 10d → 7d |  |  |  | resources AAC panel erector [160 h]; General Labour [160 h]; Mobile Crane [80 h]; Equipment Operator [160 h]; Construction Cost [9714] → AAC panel erector [160 h]; General Labour [160 h]; Mobile Crane [56 h]; Equipment Operator [160 h]; Construction Cost [6179.18] |
| 5 | **WALL FINISHES** | 2026-07-14 → 2026-10-12 (+90d) | 2026-10-19 → 2027-01-17 (+90d) |  |  |  |  |  |
| DAM3-C-B3-A-1040 | Internal Wall Plaster | 2026-07-14 A → 2026-10-12 A (+90d) | 2026-07-23 A → 2026-10-20 A (+89d) | 15d → 10d |  |  | DAM3-C-B3-A-1030, DAM3-C-B3-E-643, DAM3-C-B3-S-1017, DAM3-PMS-DMS-2310 → DAM3-C-B3-A-1030, DAM3-C-B3-E-643 | resources Mason [240 h]; Construction Cost [29610.2] → Mason [240 h]; Construction Cost [48590.2] |
| DAM3-C-B3-A-1090 | Paint to Plaster (Primer, Putty & First Coat) | 2026-07-27 A → 2027-01-16 (+173d) | 2026-10-19 → 2027-01-17 (+90d) | 7d → 2d | 90% → 0% | 9.35d → 4.7d | DAM3-C-B3-A-1110 → DAM3-C-B3-A-1110, DAM3-C-B6-M-680 | resources Painter [112 h]; Construction Cost [26649.5] → Painter [112 h]; Construction Cost [44167.3] |
| 2 | **CIELING FINISHES** | 2026-09-05 → 2027-01-07 (+124d) | 2026-09-24 → 2027-01-12 (+110d) |  |  |  |  |  |
| DAM3-C-B3-A-1100 | Installation of Ceiling Gypsum Board | 2026-09-05 A → 2027-01-07 (+124d) | 2026-09-24 A → 2027-01-12 (+110d) |  | 100% → 0% | none → 0d | DAM3-C-B3-A-1080, DAM3-C-B3-S-1017 → DAM3-C-B3-A-1080, DAM3-C-B3-S-1017, DAM3-C-B6-M-630, DAM3-C-B6-A-850 | resources Carperter [80 h]; Construction Cost [44650.2] → Carperter [80 h]; Construction Cost [46792.3] |
| 6 | **FLOOR FINISHES** | 2026-07-29 → 2026-10-18 (+81d) | 2026-10-15 → 2027-02-10 (+118d) |  |  |  |  |  |
| DAM3-C-B3-A-1080 | Tiles for Toilet | 2026-07-29 A → 2026-10-18 A (+81d) | 2026-08-02 A → 2026-11-07 (+97d) |  | 100% → 75% | none → 7.75d |  | resources Tile Fixer [112 h]; Construction Cost [48089.6] → Tile Fixer [112 h]; Construction Cost [46530.7] |
| DAM3-C-B3-A-1110 | Tiles for Office Area | 2026-08-19 A → 2027-01-13 (+147d) | 2026-08-29 A → 2027-01-14 (+138d) |  | 100% → 0% | none → 0d |  | resources Tile Fixer [32 h]; Construction Cost [25626.5] → Tile Fixer [32 h]; Construction Cost [26867.3] |
| DAM3-C-B3-A-1240 | Granite strip | 2026-08-30 A → 2027-01-16 (+139d) | 2026-08-31 A → 2027-01-17 (+139d) |  | 100% → 0% | none → 0d |  | resources Tile Fixer [32 h]; Construction Cost [1454.24] → Tile Fixer [32 h]; Construction Cost [671.12] |
| DAM3-C-B3-A-1260 | Epoxy paint | 2026-09-03 A → 2027-02-08 (+158d) | 2026-10-15 A → 2027-02-10 (+118d) | 2d → 3d | 100% → 0% | none → 0d | DAM3-C-B3-A-1200 SS → DAM3-C-B3-A-1200 | resources Painter [112 h]; Construction Cost [102516] → Painter [112 h]; Construction Cost [115420] |
| 3 | **DOORS & WINDOWS** | 2026-07-12 → 2026-10-18 (+98d) | 2026-09-12 → 2026-11-03 (+52d) |  |  |  |  |  |
| DAM3-C-B3-A-1370 | Skylight fixtures installation | 2026-07-25 A → 2026-10-18 A (+85d) | 2026-07-27 A → 2026-10-20 A (+85d) |  |  |  |  | resources Carperter [16 h]; Construction Cost [61929.7] → Carperter [16 h]; Construction Cost [6489.89] |
| DAM3-C-B3-A-1420 | Window (CW1) | 2026-07-12 A → 2026-10-20 (+100d) | 2026-09-12 A → 2026-10-27 (+45d) |  | 100% → 0% | none → 36.6d |  | resources Carperter [112 h]; Construction Cost [90682.8] → Carperter [112 h]; Construction Cost [94173.2] |
| DAM3-C-B3-A-1050 | Roll up Shutter Door | 2026-08-02 A → 2026-10-28 (+87d) | 2026-08-06 A → 2026-10-28 (+83d) |  | 100% → 0% | none → 36.6d |  | resources Carperter [16 h]; Construction Cost [66353.3] → Carperter [16 h]; Construction Cost [68619.2] |
| DAM3-C-B3-A-1060 | Supply and install (D5) 1000*2200mm single leaf steel door with door | 2026-08-11 A → 2026-10-29 (+79d) | 2026-09-10 A → 2026-10-29 (+49d) |  | 100% → 0% | none → 36.6d |  | resources Carperter [16 h]; Construction Cost [15482.4] → Carperter [16 h]; Construction Cost [16016.2] |
| DAM3-C-B3-A-1120 | Supply and install (D4) 800*2200 mm single leaf aluminum door with door | 2026-09-03 A → 2026-10-31 (+58d) | 2026-09-06 A → 2026-10-31 (+55d) |  | 100% → 0% | none → 36.6d |  | resources Carperter [16 h]; Construction Cost [21896.6] → Carperter [16 h]; Construction Cost [22737.8] |
| DAM3-C-B3-A-1130 | Supply and install (D7) 1000*2200 mm single leaf aluminum door with door | 2026-09-03 A → 2026-11-01 (+59d) | 2026-09-06 A → 2026-11-01 (+56d) |  | 100% → 0% | none → 36.6d |  | resources Carperter [16 h]; Construction Cost [7520.04] → Carperter [16 h]; Construction Cost [7811.07] |
| DAM3-C-B3-A-1350 | Supply and install (D3) 1000*2200 mm single leaf aluminum door with door | 2026-09-03 A → 2026-11-02 (+60d) | 2026-09-06 A → 2026-11-02 (+57d) |  | 100% → 0% | none → 36.6d |  | resources Carperter [16 h]; Construction Cost [15482.4] → Carperter [16 h]; Construction Cost [16016.2] |
| DAM3-C-B3-A-1360 | Supply and install fire rated 45 min (D2) 1200*2200 mm single leaf steel door | 2026-08-11 A → 2026-11-03 (+84d) | 2026-09-10 A → 2026-11-03 (+54d) |  | 100% → 0% | none → 36.6d |  | resources Carperter [16 h]; Construction Cost [16146] → Carperter [16 h]; Construction Cost [16711.5] |
| 4 | **WATER PROOFING WORKS** | 2026-07-25 → 2026-10-31 (+98d) | 2026-07-25 → 2026-11-04 (+102d) |  |  |  |  |  |
| DAM3-C-B3-A-1220 | Waterproofing membrane for toilets | 2026-07-25 A → 2026-10-31 (+98d) | 2026-07-25 A → 2026-11-04 (+102d) |  | 100% → 0% | none → 7.75d | DAM3-C-B3-M-820, DAM3-C-B3-A-1040, DAM3-C-B3-A-1370 → DAM3-C-B3-M-820, DAM3-C-B3-A-1040 | resources General Labour [64 h]; Construction Cost [4653.33] → General Labour [64 h]; Construction Cost [4879.02] |
| 7 | **METAL WORKS** | 2026-08-02 → 2026-08-18 (+16d) | 2026-10-22 → 2027-01-30 (+100d) |  |  |  |  |  |
| DAM3-C-B3-A-1160 | Galvanised Steel Gratings | 2026-10-07 A → 2026-08-18 A (-50d) | 2026-10-08 A → 2026-08-18 A (-51d) |  |  |  |  | resources Steel Fixer [32 h]; General Labour [32 h]; Construction Cost [6237.21] → Steel Fixer [32 h]; General Labour [32 h]; Construction Cost [6455.16] |
| DAM3-C-B3-A-1150 | Steel Ladder | 2026-08-18 A → 2027-01-18 (+153d) | 2026-08-29 A → 2027-01-19 (+143d) |  | 100% → 0% | none → 0d |  | resources Steel Fixer [32 h]; General Labour [32 h]; Construction Cost [9510.64] → Steel Fixer [32 h]; General Labour [32 h]; Construction Cost [9839.16] |
| DAM3-C-B3-A-1250 | Steel railing works | 2026-10-19 → 2027-01-20 (+93d) | 2026-10-22 → 2027-01-24 (+94d) |  |  | 5.75d → 0d |  | resources Steel Fixer [64 h]; General Labour [64 h]; Construction Cost [7497.92] → Steel Fixer [64 h]; General Labour [64 h]; Construction Cost [1533.98] |
| DAM3-C-B3-A-1170 | Aluminium composite panel | 2026-08-02 A → 2027-01-25 (+176d) | 2026-10-03 A → 2027-01-30 (+119d) |  | 100% → 0% | none → 0d |  | resources Steel Fixer [80 h]; General Labour [80 h]; Construction Cost [175670] → Steel Fixer [80 h]; General Labour [80 h]; Construction Cost [175889] |

| ID | Task | Start | Finish | Duration | Complete | Total float | Predecessors | Other |
| --- | --- | --- | --- | --- | --- | --- | --- | --- |
| 8 | **SPECIALTIES** | 2026-09-22 → 2027-01-31 (+131d) | 2026-10-26 → 2027-02-07 (+104d) |  |  |  |  |  |
| DAM3-C-B3-A-1180 | Installation of fittings | 2026-09-22 A → 2027-01-31 (+131d) | 2026-09-24 A → 2027-02-02 (+131d) | 4d → 3d | 100% → 0% | none → 0d |  | resources Plumber [112 h]; Construction Cost [21686.5] → Plumber [112 h]; Construction Cost [22981.3] |
| DAM3-C-B3-A-1410 | Identification sign; ID01 & ID02 | 2026-10-24 → 2027-02-03 (+102d) | 2026-10-26 → 2027-02-06 (+103d) |  |  | 5.75d → 0d | DAM3-C-B3-A-1180 SS → DAM3-C-B3-A-1180 | resources Mason [48 h]; Construction Cost [9289.46] → Mason [48 h]; Construction Cost [9630.56] |
| DAM3-C-B3-A-1200 | Furniture Installation | 2026-10-24 → 2027-02-07 (+106d) | 2026-10-24 → 2027-02-07 (+106d) |  |  | 6.75d → 0d | DAM3-C-B3-A-1410 SS → DAM3-C-B3-A-1410 | resources General Labour [16 h]; Mason [16 h]; Construction Cost [10561.2] → General Labour [16 h]; Mason [16 h]; Construction Cost [12468.8] |
| 3 | **MECHANICAL** | 2026-04-16 → 2026-07-30 (+105d) | 2026-09-24 → 2027-02-06 (+135d) |  |  |  |  |  |
| 1 | **HVAC** | 2026-06-24 → 2027-01-18 (+208d) | 2026-09-22 → 2027-02-02 (+133d) |  |  |  |  |  |
| 1 | **FIRST STAGE** | 2026-06-24 → 2027-01-25 (+215d) | 2026-07-30 → 2027-01-28 (+182d) |  |  |  |  |  |
| DAM3-C-B3-M-760 | Installation of HVAC Ducts | 2026-06-24 A → 2027-01-25 (+215d) | 2026-07-30 A → 2027-01-26 (+180d) |  | 100% → 0% | none → 4.7d |  | resources Ductman [32 h]; Construction Cost [141482] → Ductman [32 h]; Construction Cost [149489] |
| DAM3-C-B3-M-790 | Installation of Duct insulation | 2026-06-24 A → 2027-01-27 (+217d) | 2026-07-30 A → 2027-01-28 (+182d) |  | 100% → 0% | none → 4.7d |  | resources Ductman [32 h]; Construction Cost [18747.3] → Ductman [32 h]; Construction Cost [21205.4] |
| 2 | **SECOND STAGE** | 2026-07-28 → 2027-01-18 (+174d) | 2026-09-22 → 2027-02-02 (+133d) |  |  |  |  |  |
| DAM3-C-B3-M-750 | Installation of Exhaust Fans | 2026-07-28 A → 2027-01-18 (+174d) | 2026-07-28 A → 2027-01-19 (+175d) |  | 100% → 0% | none → 4.7d |  | resources AC Technician [32 h]; Construction Cost [9331.24] → AC Technician [32 h]; Construction Cost [7938.56] |
| DAM3-C-B3-M-780 | Installation of Wall Propeller Type Exhaust Fan | 2026-09-02 A → 2027-01-20 (+140d) | 2026-09-05 A → 2027-01-24 (+141d) |  | 100% → 0% | none → 4.7d |  | resources AC Technician [64 h]; Construction Cost [17417.7] → AC Technician [64 h]; Construction Cost [46831.6] |
| DAM3-C-B3-M-770 | Installation of Diffuser | 2026-09-19 A → 2027-01-30 (+133d) | 2026-09-22 A → 2027-01-31 (+131d) |  | 100% → 0% | none → 4.7d |  | resources Ductman [32 h]; Construction Cost [2764.72] → Ductman [32 h]; Construction Cost [2144] |
| DAM3-C-B3-M-960 | Supply, install, test and commission door grilles & exhaust louvers | 2026-09-05 A → 2027-02-01 (+149d) | 2026-09-10 A → 2027-02-02 (+145d) |  | 100% → 0% | none → 4.7d |  | resources Ductman [32 h]; Construction Cost [7188.28] → Ductman [32 h]; Construction Cost [5574.4] |
| 2 | **FIRE FIGHTING SYSTEM** | 2026-06-17 → 2026-09-21 (+96d) | 2026-08-22 → 2027-02-06 (+168d) |  |  |  |  |  |
| 1 | **FIRST STAGE** | 2026-06-17 → 2026-09-21 (+96d) | 2026-08-05 → 2026-09-28 (+54d) |  |  |  |  |  |
| DAM3-C-B3-M-920 | Installation of Fire Fighting Pipes (Seamless Black Steel) | 2026-06-17 A → 2026-09-21 A (+96d) | 2026-08-05 A → 2026-09-28 A (+54d) |  |  |  |  | resources Pipe Fitter [112 h]; Construction Cost [60425.7] → Pipe Fitter [112 h]; Construction Cost [72394.8] |
| DAM3-C-B3-M-930 | Installation of Fire Fighting Valve | 2026-06-17 A → 2026-09-22 A (+97d) | 2026-08-05 A → 2026-09-28 A (+54d) |  |  |  |  | resources Pipe Fitter [80 h]; Construction Cost [12712.2] → Pipe Fitter [80 h]; Construction Cost [12199.4] |
| 2 | **SECOND STAGE** | 2026-06-17 → 2027-01-18 (+215d) | 2026-08-22 → 2027-02-06 (+168d) |  |  |  |  |  |
| DAM3-C-B3-M-940 | Installation of Fire Hose Cabinet | 2026-06-17 A → 2027-01-18 (+215d) | 2026-08-22 A → 2027-01-20 (+151d) |  | 100% → 0% | none → 18.3d |  | resources Pipe Fitter [48 h]; Construction Cost [11147.4] → Pipe Fitter [48 h]; Construction Cost [15158.6] |
| DAM3-C-B3-M-990 | Supply, install, test and commission Fire Department Connection(FDC) | 2026-07-25 A → 2027-02-03 (+193d) | 2026-08-05 A → 2027-02-06 (+185d) |  | 100% → 0% | none → 4.7d | DAM3-C-B3-M-960 SS → DAM3-C-B3-M-960 | resources Pipe Fitter [48 h]; Construction Cost [2598.84] → Pipe Fitter [48 h]; Construction Cost [2706.06] |
| 3 | **SEWER AND DRAINAGE SYSTEM** | 2026-04-16 → 2026-07-30 (+105d) | 2026-09-24 → 2026-11-25 (+62d) |  |  |  |  |  |
| 1 | **FIRST STAGE** | 2026-04-16 → 2026-07-30 (+105d) | 2026-08-05 → 2026-11-09 (+96d) |  |  |  |  |  |
| DAM3-C-B3-M-820 | Installation of Sanitary Waste / Drainage Pipes | 2026-04-16 A → 2026-07-30 A (+105d) | 2026-04-30 A → 2026-08-03 A (+95d) |  |  |  |  | resources Plumber [64 h]; Construction Cost [14362.4] → Plumber [64 h]; Construction Cost [18585.1] |
| DAM3-C-B3-M-1000 | Installation of Trench drain | 2026-06-17 A → 2026-08-08 A (+52d) | 2026-08-05 A → 2026-08-09 A (+4d) |  |  |  |  | resources Plumber [80 h]; Construction Cost [11379.6] → Plumber [80 h]; Construction Cost [11508.8] |
| DAM3-C-B3-M-840 | Installation of Floor Drain | 2026-06-17 A → 2026-11-07 (+143d) | 2026-08-05 A → 2026-11-09 (+96d) |  | 100% → 0% | none → 7.75d |  | resources Plumber [32 h]; Construction Cost [10616.5] → Plumber [32 h]; Construction Cost [11056] |
| 2 | **SECOND STAGE** | 2026-07-11 → 2026-11-09 (+121d) | 2026-09-24 → 2026-11-25 (+62d) |  |  |  |  |  |
| DAM3-C-B3-M-800 | Installation of Electric Water Heater | 2026-08-05 A → 2026-11-09 (+96d) | 2026-08-05 A → 2026-11-11 (+98d) |  | 100% → 0% | none → 7.75d |  | resources Plumber [32 h]; Construction Cost [1592.48] → Plumber [32 h]; Construction Cost [1819.51] |
| DAM3-C-B3-M-810 | Installation of Sanitary Fixture and Accessories | 2026-09-19 A → 2026-11-11 (+53d) | 2026-09-24 A → 2026-11-16 (+53d) |  | 100% → 0% | none → 7.75d |  | resources Plumber [64 h]; Construction Cost [16243] → Plumber [64 h]; Construction Cost [19921.7] |
| DAM3-C-B3-M-830 | Installation of Lavotary /Wash Basin | 2026-09-19 A → 2026-11-16 (+58d) | 2026-09-24 A → 2026-11-18 (+55d) |  | 100% → 0% | none → 7.75d |  | resources Plumber [32 h]; Construction Cost [20348.3] → Plumber [32 h]; Construction Cost [21416.7] |
| DAM3-C-B3-M-890 | Installation of Bib Tap | 2026-09-19 A → 2026-11-18 (+60d) | 2026-09-24 A → 2026-11-21 (+58d) |  | 100% → 0% | none → 7.75d |  | resources Plumber [32 h]; Construction Cost [2211.78] → Plumber [32 h]; Construction Cost [1900.66] |
| DAM3-C-B3-M-850 | Installation of Water Tap | 2026-09-17 A → 2026-11-21 (+65d) | 2026-09-19 A → 2026-11-23 (+65d) |  | 100% → 0% | none → 7.75d |  | resources Plumber [32 h]; Construction Cost [2654.13] → Plumber [32 h]; Construction Cost [2874.14] |
| DAM3-C-B3-M-860 | Installation of Roof Vent Cap | 2026-07-11 A → 2026-11-23 (+135d) | 2026-08-25 A → 2026-11-25 (+92d) |  | 100% → 0% | none → 7.75d |  | resources Pipe Fitter [32 h]; Construction Cost [829.41] → Pipe Fitter [32 h]; Construction Cost [927.12] |
| 4 | **WATER SUPPLY SYSTEM** | 2026-07-01 → 2026-10-01 (+92d) | 2026-08-05 → 2027-01-23 (+171d) |  |  |  |  |  |
| 1 | **FIRST STAGE** | 2026-07-01 → 2026-10-01 (+92d) | 2026-08-05 → 2026-10-04 (+60d) |  |  |  |  |  |
| DAM3-C-B3-M-900 | Installation of Water Supply Valve | 2026-08-02 A → 2026-10-01 A (+60d) | 2026-08-05 A → 2026-10-04 A (+60d) |  |  |  |  | resources Plumber [32 h]; Construction Cost [15736.8] → Plumber [32 h]; Construction Cost [18274.3] |
| DAM3-C-B3-M-910 | Installation of Water Supply Pipes | 2026-07-01 A → 2026-10-01 A (+92d) | 2026-08-05 A → 2026-10-04 A (+60d) |  |  |  |  | resources Plumber [64 h]; Construction Cost [19520.2] → Plumber [64 h]; Construction Cost [23318.4] |
| 2 | **SECOND STAGE** | 2026-07-04 → 2027-01-18 (+198d) | 2026-08-05 → 2027-01-23 (+171d) |  |  |  |  |  |
| DAM3-C-B3-M-950 | Capped connection | 2026-07-04 A → 2027-01-18 (+198d) | 2026-08-05 A → 2027-01-23 (+171d) |  | 100% → 0% | none → 16.3d |  | resources Plumber [80 h]; Construction Cost [287.53] → Plumber [80 h]; Construction Cost [278.13] |
| 4 | **ELECTRICAL** | 2026-04-16 → 2026-06-17 (+62d) | 2026-10-20 → 2027-02-15 (+118d) |  |  |  |  |  |
| 1 | **FIRST STAGE** | 2026-04-16 → 2026-06-17 (+62d) | 2026-10-19 → 2027-02-13 (+117d) |  |  |  |  |  |
| DAM3-C-B3-E-573 | Installation of Earthing and Grounding | 2026-04-16 A → 2026-06-17 A (+62d) | 2026-10-19 → 2027-02-09 (+113d) |  | 95% → 90% | 9.95d → 10.3d |  | resources Electrician [64 h]; Construction Cost [17002.4] → Electrician [64 h]; Construction Cost [19646.5] |
| DAM3-C-B3-E-643 | Installation of Sleeves & Power outlet | 2026-04-16 A → 2026-06-17 A (+62d) | 2026-08-01 A → 2026-10-31 (+91d) | 8d → 5d | 100% → 50% | none → 7.75d |  | resources Electrician [128 h]; Construction Cost [2853.19] → Electrician [128 h]; Construction Cost [2920.45] |
| DAM3-C-B3-E-603 | Installation of Conduits and wiring outlets - Fire Alarm System | 2026-06-08 A → 2026-07-21 A (+43d) | 2026-06-13 A → 2027-01-26 (+227d) |  | 100% → 50% | none → 4.7d | DAM3-C-B3-E-663 SS → DAM3-C-B3-E-663 | resources Electrician [64 h]; Construction Cost [2026.84] → Electrician [64 h]; Construction Cost [1768.31] |
| DAM3-C-B3-E-623 | Installation of Conduites for Lighting Fixture | 2026-06-08 A → 2026-09-23 A (+107d) | 2026-06-13 A → 2027-02-06 (+238d) |  | 100% → 90% | none → 5.3d | DAM3-C-B3-E-603 SS → DAM3-C-B3-E-593, DAM3-C-B3-M-950, DAM3-C-B3-M-940 | resources Electrician [64 h]; Construction Cost [3983.66] → Electrician [64 h]; Construction Cost [8462.97] |
| DAM3-C-B3-E-693 | Installation of Wires | 2026-06-25 A → 2027-02-07 (+227d) | 2026-09-12 A → 2027-02-08 (+149d) |  | 100% → 0% | none → 4.7d | DAM3-C-B3-E-623 SS → DAM3-C-B3-E-623, DAM3-C-B3-M-990 | resources Electrician [64 h]; Construction Cost [7966.69] → Electrician [64 h]; Construction Cost [16925.9] |
| DAM3-C-B3-E-683 | Installation of LV Cables | 2026-09-05 A → 2027-02-09 (+157d) | 2026-10-13 A → 2027-02-13 (+123d) |  | 100% → 0% | none → 6.7d |  | resources Electrician [64 h]; Construction Cost [31551] → Electrician [64 h]; Construction Cost [36390] |
| 2 | **SECOND STAGE** | 2026-06-17 → 2026-10-10 (+115d) | 2026-10-20 → 2027-02-15 (+118d) |  |  |  |  |  |
| DAM3-C-B3-E-703 | Installation of LP-1 Panel | 2026-07-23 A → 2026-10-10 A (+79d) | 2026-09-24 A → 2026-10-14 A (+20d) |  |  |  |  | resources Electrician [32 h]; Construction Cost [15128.5] → Electrician [32 h]; Construction Cost [18403.5] |
| DAM3-C-B3-E-1040 | Installation of Solar power plant | 2026-08-15 A → 2026-10-12 A (+58d) | 2026-10-12 A → 2026-11-25 (+44d) | 2d → 7d | 100% → 10% | none → 38.6d | DAM3-C-B3-E-733 SS → DAM3-C-B4-E-1040 | resources Plumber [112 h]; Construction Cost [218966] → Plumber [112 h]; Construction Cost [253269] |
| DAM3-C-B3-E-633 | Installation of Wiring Devices | 2026-08-29 A → 2027-01-18 (+142d) | 2026-10-01 A → 2027-01-21 (+112d) |  | 100% → 0% | none → 4.7d |  | resources Electrician [64 h]; Construction Cost [20742.2] → Electrician [64 h]; Construction Cost [19435.1] |
| DAM3-C-B3-E-663 | Installation of Disconnect Switches | 2026-08-29 A → 2027-01-23 (+147d) | 2026-10-12 A → 2027-01-24 (+104d) |  | 100% → 0% | none → 4.7d |  | resources Electrician [32 h]; Construction Cost [25808.4] → Electrician [32 h]; Construction Cost [30236] |
| DAM3-C-B3-E-583 | Installation of Fire Alarm Control Panel | 2026-09-22 A → 2027-01-27 (+127d) | 2026-09-24 A → 2027-01-31 (+129d) |  | 100% → 0% | none → 4.7d | DAM3-C-B3-E-603 → DAM3-C-B3-E-603, DAM3-C-B3-M-860 | resources Electrician [64 h]; Construction Cost [16216.6] → Electrician [64 h]; Construction Cost [19451.4] |
| DAM3-C-B3-E-593 | Installation of Fire Detectors & Accessories | 2026-09-22 A → 2027-02-01 (+132d) | 2026-10-12 A → 2027-02-04 (+115d) |  | 100% → 0% | none → 4.7d | DAM3-C-B3-E-583 SS → DAM3-C-B3-E-583 | resources Electrician [64 h]; Construction Cost [31219.2] → Electrician [64 h]; Construction Cost [56740.4] |
| DAM3-C-B3-E-733 | Installation of Access Control System | 2026-06-17 A → 2027-02-06 (+234d) | 2026-10-20 → 2027-02-08 (+111d) | 2d → 3d | 70% → 0% | 9.85d → 4.7d |  | resources Electrician [80 h]; Construction Cost [24315.4] → Electrician [80 h]; Construction Cost [27616.9] |
| DAM3-C-B3-E-613 | Installation of Lighting fixtures | 2026-09-08 A → 2027-02-09 (+154d) | 2026-10-12 A → 2027-02-13 (+124d) |  | 100% → 0% | none → 6.7d | DAM3-C-B3-E-693 SS → DAM3-C-B3-E-693 | resources Electrician [64 h]; Construction Cost [59751.1] → Electrician [64 h]; Construction Cost [76166.7] |
| DAM3-C-B3-E-653 | Installation of Main Distribution Board | 2026-09-03 A → 2027-02-09 (+159d) | 2026-10-12 A → 2027-02-10 (+121d) |  | 100% → 0% | none → 4.7d | DAM3-C-B3-E-693 SS → DAM3-C-B3-E-693, DAM3-C-B4-E-763, DAM3-C-B4-E-613 | resources Electrician [32 h]; Construction Cost [25479.7] → Electrician [32 h]; Construction Cost [32472.7] |
| DAM3-C-B3-E-743 | Monitor Modules for Fire Alarm | 2026-09-24 A → 2027-02-09 (+138d) | 2026-10-20 → 2027-02-10 (+113d) |  | 50% → 0% | 10.05d → 4.7d | DAM3-C-B3-E-733 SS → DAM3-C-B3-E-733 | resources Electrician [32 h]; Construction Cost [3760.02] → Electrician [32 h]; Construction Cost [3882.38] |
| DAM3-C-B3-E-1030 | Installation of CCTV System | 2026-06-17 A → 2027-02-11 (+239d) | 2026-10-12 A → 2027-02-14 (+125d) | 2d → 3d | 100% → 0% | none → 5.7d |  | resources Plumber [112 h]; Construction Cost [66177.6] → Plumber [112 h]; Construction Cost [76349.2] |
| DAM3-C-B3-E-713 | Installation of PP-AC panel | 2026-09-02 A → 2027-02-11 (+162d) | 2026-10-12 A → 2027-02-13 (+124d) |  | 100% → 0% | none → 4.7d |  | resources Electrician [32 h]; Construction Cost [18214] → Electrician [32 h]; Construction Cost [21648.5] |
| DAM3-C-B3-E-753 | Line Isolator Modules for Fire Alarm | 2026-09-24 A → 2027-02-11 (+140d) | 2026-10-13 A → 2027-02-13 (+123d) |  | 100% → 0% | none → 4.7d | DAM3-C-B3-E-743 SS → DAM3-C-B3-E-743 | resources Electrician [32 h]; Construction Cost [163.42] → Electrician [32 h]; Construction Cost [185.4] |
| DAM3-C-B3-E-673 | Installation of Telephone Cabinet | 2026-07-29 A → 2027-02-14 (+200d) | 2026-10-01 A → 2027-02-15 (+137d) |  | 100% → 0% | none → 4.7d | DAM3-C-B3-E-713 SS → DAM3-C-B3-E-713 | resources Electrician [32 h]; Construction Cost [23299.8] → Electrician [32 h]; Construction Cost [26991.1] |
| DAM3-C-B3-E-763 | Firewarning flash light with sounder; wall mounted, Weather proof | 2026-09-22 A → 2027-02-14 (+145d) | 2026-09-24 A → 2027-02-15 (+144d) |  | 100% → 0% | none → 4.7d | DAM3-C-B3-E-753 SS → DAM3-C-B3-E-753 | resources Electrician [32 h]; Construction Cost [2963.79] → Electrician [32 h]; Construction Cost [3082.69] |
| 1 | **STRUCTURAL** | 2026-01-13 → 2026-02-17 (+35d) | 2026-07-09 → 2026-11-28 (+142d) |  |  |  |  |  |
| 1 | **FOOTING** | 2026-01-13 → 2026-02-17 (+35d) | 2026-02-11 → 2026-05-13 (+91d) |  |  |  |  |  |
| DAM3-C-B2-S-150 | Excavation for footings | 2026-01-13 A → 2026-02-17 A (+35d) | 2026-01-24 A → 2026-03-24 A (+59d) | 6.12d → 4d |  |  |  | resources General Labour [112 h]; Equipment Operator [112 h]; Truck [56 h]; Excavator [56 h]; Mini Roller Compactor [56 h]; Construction Cost [232737] → General Labour [112 h]; Equipment Operator [112 h]; Truck [64 h]; Excavator [64 h]; Mini Roller Compactor [64 h]; Construction Cost [89859.6] |
| DAM3-C-B2-S-101 | Anti Termite Below Footings | 2026-02-03 A → 2026-04-13 A (+69d) | 2026-02-03 A → 2026-04-13 A (+69d) |  |  |  | DAM3-C-B2-S-150 → DAM3-C-B2-S-6233 | resources Mason [16 h]; Construction Cost [8441.61] → Mason [16 h]; Construction Cost [11905.5] |
| DAM3-C-B2-S-102 | Vapour Barrier for Footings | 2026-02-03 A → 2026-04-13 A (+69d) | 2026-02-03 A → 2026-04-13 A (+69d) |  |  |  |  | resources General Labour [16 h]; Construction Cost [6030.16] → General Labour [16 h]; Construction Cost [7940.1] |
| DAM3-C-B2-S-103 | Lean Concrete Below Footings | 2026-02-03 A → 2026-04-13 A (+69d) | 2026-02-03 A → 2026-04-13 A (+69d) |  |  |  |  | resources Mason [32 h]; Construction Cost [8238.87] → Mason [32 h]; Construction Cost [8229.34] |
| DAM3-C-B2-S-104 | Rebar for Footings | 2026-02-05 A → 2026-05-06 A (+90d) | 2026-02-10 A → 2026-05-11 A (+90d) |  |  |  |  | resources Steel Fixer [64 h]; Construction Cost [93071.6] → Steel Fixer [64 h]; Construction Cost [101845] |

| ID | Task | Start | Finish | Duration | Complete | Total float | Predecessors | Other |
| --- | --- | --- | --- | --- | --- | --- | --- | --- |
| DAM3-C-B2-S-105 | Formwork for Footings | 2026-02-04 A → 2026-05-10 A (+95d) | 2026-02-04 A → 2026-05-12 A (+97d) | 6d → 4d |  |  |  | resources Carperter [64 h]; Construction Cost [23267.9] → Carperter [64 h]; Construction Cost [25461.2] |
| DAM3-C-B2-S-106 | Pouring Concrete for Footings | 2026-02-11 A → 2026-05-13 A (+91d) | 2026-02-11 A → 2026-05-13 A (+91d) |  |  |  |  | resources Carperter [16 h]; Mason [16 h]; Steel Fixer [16 h]; Concrete Mixer [8 h]; Equipment Operator [16 h]; Construction Cost [116339] → Carperter [16 h]; Mason [16 h]; Steel Fixer [16 h]; Concrete Mixer [8 h]; Equipment Operator [16 h]; Construction Cost [127306] |
| 2 | **COLUMN NECK** | 2026-02-07 → 2026-05-10 (+92d) | 2026-03-18 → 2026-06-09 (+83d) |  |  |  |  |  |
| DAM3-C-B2-S-257 | Rebar for column neck | 2026-02-07 A → 2026-05-10 A (+92d) | 2026-02-10 A → 2026-05-12 A (+91d) |  |  |  |  | resources Steel Fixer [64 h]; Construction Cost [21993.7] → Steel Fixer [64 h]; Construction Cost [14919.2] |
| DAM3-C-B2-S-267 | Formwork for column neck | 2026-02-14 A → 2026-05-14 A (+89d) | 2026-03-02 A → 2026-05-16 A (+75d) |  |  |  |  | resources Carperter [32 h]; Construction Cost [5498.72] → Carperter [32 h]; Construction Cost [9946.13] |
| DAM3-C-B2-S-297 | Pouring Concrete for column neck | 2026-02-19 A → 2026-05-17 A (+87d) | 2026-03-02 A → 2026-05-18 A (+77d) |  |  |  |  | resources Mason [16 h]; Carperter [16 h]; Concrete Mixer [8 h]; Steel Fixer [16 h]; Equipment Operator [16 h]; Construction Cost [27492.4] → Mason [16 h]; Carperter [16 h]; Concrete Mixer [8 h]; Steel Fixer [16 h]; Equipment Operator [16 h]; Construction Cost [24865.3] |
| DAM3-C-B2-S-307 | Damp proof /Bitumin paint on Footings & column neck | 2026-02-25 A → 2026-05-19 A (+83d) | 2026-03-03 A → 2026-05-20 A (+78d) |  |  |  |  | resources Painter [32 h]; Construction Cost [6903.81] → Painter [32 h]; Construction Cost [24777.7] |
| DAM3-C-B2-S-367 | Backfilling / Compaction up to Bottom of Grade Beams | 2026-03-02 A → 2026-05-24 A (+83d) | 2026-03-18 A → 2026-06-09 A (+83d) | 12d → 7d |  |  |  | resources General Labour [256 h]; Truck [128 h]; Mini Roller Compactor [128 h]; Equipment Operator [256 h]; Wheel Loader [128 h]; Construction Cost [32707.9] → General Labour [256 h]; Truck [128 h]; Mini Roller Compactor [128 h]; Equipment Operator [256 h]; Wheel Loader [128 h]; Construction Cost [46046.2] |
| 3 | **GRADE BEAM** | 2026-03-10 → 2026-06-13 (+95d) | 2026-04-12 → 2026-06-25 (+74d) |  |  |  |  |  |
| DAM3-C-B2-S-337 | Vapour barrier for Grade Beams | 2026-03-10 A → 2026-06-13 A (+95d) | 2026-03-24 A → 2026-06-13 A (+81d) |  |  |  |  | resources General Labour [32 h]; Construction Cost [4019.9] → General Labour [32 h]; Construction Cost [5293.4] |
| DAM3-C-B2-S-338 | Lean Concrete Below Grade Beams | 2026-03-10 A → 2026-06-13 A (+95d) | 2026-03-24 A → 2026-06-13 A (+81d) |  |  |  |  | resources Mason [32 h]; Construction Cost [8238.87] → Mason [32 h]; Construction Cost [4431.19] |
| DAM3-C-B2-S-527 | Anti Termite Below Grade Beams | 2026-03-10 A → 2026-06-13 A (+95d) | 2026-03-24 A → 2026-06-13 A (+81d) |  |  |  |  | resources Mason [16 h]; Construction Cost [8441.61] → Mason [16 h]; Construction Cost [11905.5] |
| DAM3-C-B2-S-339 | Rebar for Grade Beams | 2026-03-24 A → 2026-06-15 A (+83d) | 2026-04-04 A → 2026-06-18 A (+75d) |  |  |  | DAM3-C-B2-S-338, Backfilling to reach target level → DAM3-C-B2-S-338 | resources Steel Fixer [80 h]; Construction Cost [24993.1] → Steel Fixer [80 h]; Construction Cost [27194.5] |
| DAM3-C-B2-S-340 | Formwork for Grade Beams | 2026-03-24 A → 2026-06-17 A (+85d) | 2026-04-04 A → 2026-06-21 A (+78d) |  |  |  |  | resources Carperter [32 h]; Construction Cost [6248.27] → Carperter [32 h]; Construction Cost [6798.61] |
| DAM3-C-B2-S-341 | Anchor bolts installation | 2026-04-02 A → 2026-06-18 A (+77d) | 2026-04-04 A → 2026-06-20 A (+77d) |  |  |  |  | resources Carperter [32 h]; Construction Cost [5667.68] → Carperter [32 h]; Construction Cost [57238.8] |
| DAM3-C-B2-S-342 | Pouring Concrete for Grade Beams | 2026-04-05 A → 2026-06-22 A (+78d) | 2026-04-05 A → 2026-06-22 A (+78d) |  |  |  |  | resources Mason [16 h]; Carperter [16 h]; Concrete Mixer [8 h]; Steel Fixer [16 h]; Equipment Operator [16 h]; Construction Cost [31241.3] → Mason [16 h]; Carperter [16 h]; Concrete Mixer [8 h]; Steel Fixer [16 h]; Equipment Operator [16 h]; Construction Cost [33993.1] |
| DAM3-C-B2-S-347 | Damp proof /Bitumin paint on Grade Beams | 2026-04-11 A → 2026-06-24 A (+74d) | 2026-04-12 A → 2026-06-25 A (+74d) |  |  |  |  | resources Painter [80 h]; Construction Cost [6903.81] → Painter [80 h]; Construction Cost [24777.7] |
| 5 | **SLAB ON GRADE** | 2026-04-14 → 2026-07-02 (+79d) | 2026-06-20 → 2026-11-28 (+161d) |  |  |  |  |  |
| DAM3-C-B2-S-377 | Backfilling / Compaction for Slab on Grade | 2026-04-14 A → 2026-07-02 A (+79d) | 2026-04-25 A → 2026-07-06 A (+72d) | 12d → 7d |  |  | DAM3-C-B2-S-347, Architectural Snagg works -1 → DAM3-C-B2-S-347 | resources Mini Roller Compactor [128 h]; General Labour [256 h]; Equipment Operator [256 h]; Wheel Loader [128 h]; Truck [128 h]; Construction Cost [32707.9] → Mini Roller Compactor [128 h]; General Labour [256 h]; Equipment Operator [256 h]; Wheel Loader [128 h]; Truck [128 h]; Construction Cost [23023.1] |
| DAM3-C-B2-S-378 | Anti Termite Treatment below Ground Slab | 2026-05-14 A → 2026-08-09 A (+87d) | 2026-05-19 A → 2026-08-10 A (+83d) |  |  |  | DAM3-C-B2-S-377 → DAM3-C-B2-S-377, P001-C-TC-M-3406 | resources General Labour [16 h]; Construction Cost [11255.5] → General Labour [16 h]; Construction Cost [15874.1] |
| DAM3-C-B2-S-379 | Vapour barrier for below Ground Slab | 2026-05-14 A → 2026-08-09 A (+87d) | 2026-05-19 A → 2026-08-10 A (+83d) |  |  |  |  | resources General Labour [32 h]; Construction Cost [10050.1] → General Labour [32 h]; Construction Cost [13233.5] |
| DAM3-C-B2-S-382 | Pouring Concrete for Ground Slab | 2026-05-16 A → 2026-08-09 A (+85d) | 2026-05-20 A → 2026-08-10 A (+82d) |  |  |  | DAM3-C-B2-S-379 → DAM3-C-B2-S-379, DAM3-C-B5-S-6133, DAM3-C-B11-S-6133 | resources Mason [64 h]; Carperter [64 h]; Steel Fixer [64 h]; Concrete Mixer [32 h]; Equipment Operator [64 h]; Construction Cost [304092] → Mason [64 h]; Carperter [64 h]; Steel Fixer [64 h]; Concrete Mixer [32 h]; Equipment Operator [64 h]; Construction Cost [344195] |
| DAM3-C-B2-S-517 | Concrete pad | 2026-06-17 A → 2026-11-21 (+157d) | 2026-06-20 A → 2026-11-28 (+161d) |  | 100% → 0% | none → 15.6d |  | resources Mason [112 h]; Construction Cost [1803.82] → Mason [112 h]; Construction Cost [907.11] |
| 4 | **COLUMNS & BEAMS** | 2026-03-07 → 2026-06-15 (+100d) | 2026-07-09 → 2026-10-04 (+87d) |  |  |  |  |  |
| DAM3-C-B2-S-6101 | Rebar for Tie Beams | 2026-03-07 A → 2026-06-15 A (+100d) | 2026-03-09 A → 2026-06-18 A (+101d) |  |  |  |  | resources Steel Fixer [64 h]; Construction Cost [7796.52] → Steel Fixer [64 h]; Construction Cost [7263.64] |
| DAM3-C-B2-S-6102 | Formwork for Tie Beams | 2026-03-07 A → 2026-06-17 A (+102d) | 2026-03-09 A → 2026-06-21 A (+104d) |  |  |  |  | resources Carperter [32 h]; Construction Cost [1949.44] → Carperter [32 h]; Construction Cost [1815.91] |
| DAM3-C-B2-S-6103 | Pouring Concrete for Tie Beams | 2026-03-10 A → 2026-06-22 A (+104d) | 2026-03-10 A → 2026-06-22 A (+104d) |  |  |  | DAM3-C-B2-S-6102 → DAM3-C-B2-S-6102, DAM3-C-B3-S-6133 | resources Mason [16 h]; Carperter [16 h]; Concrete Mixer [8 h]; Steel Fixer [16 h]; Equipment Operator [16 h]; Construction Cost [9745.95] → Mason [16 h]; Carperter [16 h]; Concrete Mixer [32 h]; Steel Fixer [16 h]; Equipment Operator [16 h]; Construction Cost [9079.54] |
| DAM3-C-B2-S-5101 | Rebar for column | 2026-05-16 A → 2026-07-22 A (+67d) | 2026-05-24 A → 2026-07-30 A (+67d) | 7d → 5d |  |  |  | resources Steel Fixer [112 h]; Construction Cost [18494.8] → Steel Fixer [112 h]; Construction Cost [20144] |
| DAM3-C-B2-S-5102 | Formwork for column | 2026-06-01 A → 2026-08-11 A (+71d) | 2026-06-02 A → 2026-08-18 A (+77d) |  |  |  | DAM3-C-B2-S-5101, P001-C-TC-M-3406 → DAM3-C-B2-S-5101 | resources Carperter [64 h]; Construction Cost [4623.84] → Carperter [64 h]; Construction Cost [5036.01] |
| DAM3-C-B2-S-5103 | Pouring Concrete for column | 2026-06-04 A → 2026-08-13 A (+70d) | 2026-06-04 A → 2026-08-22 A (+79d) |  |  |  |  | resources Mason [16 h]; Carperter [16 h]; Concrete Mixer [8 h]; Steel Fixer [16 h]; Equipment Operator [16 h]; Construction Cost [23118.6] → Mason [16 h]; Carperter [16 h]; Concrete Mixer [32 h]; Steel Fixer [16 h]; Equipment Operator [16 h]; Construction Cost [25180.1] |
| DAM3-C-B2-S-6113 | Rebar for Beams | 2026-06-04 A → 2026-09-17 A (+105d) | 2026-07-08 A → 2026-09-20 A (+74d) |  |  |  |  | resources Steel Fixer [64 h]; Construction Cost [11954.6] → Steel Fixer [64 h]; Construction Cost [13379.1] |
| DAM3-C-B2-S-6123 | Formwork for Beams | 2026-07-08 A → 2026-09-28 A (+82d) | 2026-07-08 A → 2026-10-01 A (+85d) |  |  |  |  | resources Carperter [32 h]; Construction Cost [2988.97] → Carperter [32 h]; Construction Cost [3344.77] |
| DAM3-C-B2-S-6133 | Pouring Concrete for Beams | 2026-07-09 A → 2026-10-03 A (+86d) | 2026-07-09 A → 2026-10-04 A (+87d) |  |  |  |  | resources Mason [16 h]; Carperter [16 h]; Concrete Mixer [8 h]; Steel Fixer [16 h]; Equipment Operator [16 h]; Construction Cost [14943.6] → Mason [16 h]; Carperter [16 h]; Concrete Mixer [32 h]; Steel Fixer [16 h]; Equipment Operator [16 h]; Construction Cost [16723.9] |
| 5 | **STRUCTURAL STEEL** | 2026-04-30 → 2026-07-12 (+73d) | 2026-08-13 → 2026-12-03 (+112d) |  |  |  |  |  |
| DAM3-C-B2-SS-0100 | Installation of columns | 2026-04-30 A → 2026-07-12 A (+73d) | 2026-05-06 A → 2026-07-13 A (+68d) |  |  |  | DAM3-C-B2-S-382, DAM3-C-B3-A-220 → DAM3-C-B2-S-382, DAM3-C-B3-A-220, DAM3-P-ST-E-210, DAM3-P-ST-E-200 | resources Structural Steel Fixer [80 h]; General Labour [80 h]; Equipment Operator [80 h]; Mobile Crane [40 h]; Construction Cost [164363] → Structural Steel Fixer [80 h]; General Labour [80 h]; Equipment Operator [80 h]; Mobile Crane [24 h]; Construction Cost [217508] |
| DAM3-C-B2-SS-0110 | Installation of raft and purlins | 2026-04-30 A → 2026-07-12 A (+73d) | 2026-05-09 A → 2026-07-14 A (+66d) |  |  |  | DAM3-C-B2-SS-0100 → DAM3-C-B2-SS-0100, DAM3-C-B6-A-950 | resources Structural Steel Fixer [160 h]; General Labour [160 h]; Mobile Crane [80 h]; Equipment Operator [160 h]; Construction Cost [340061] → Structural Steel Fixer [160 h]; General Labour [160 h]; Mobile Crane [56 h]; Equipment Operator [160 h]; Construction Cost [326261] |
| DAM3-C-B2-SS-610 | Intumescent paint to steel works | 2026-05-16 A → 2026-07-30 A (+75d) | 2026-06-02 A → 2026-08-01 A (+60d) | 5d → 7d |  |  | DAM3-C-B2-SS-0110 → DAM3-C-B2-SS-0110, DAM3-C-B5-S-1277, DAM3-P-ST-E-240, DAM3-P-ST-E-230, DAM3-P-ST-M-370 | resources Painter [112 h]; Construction Cost [269284] → Painter [112 h]; Construction Cost [317760] |
| DAM3-C-B2-SS-0140 | Installation of roof sheet | 2026-06-07 A → 2026-08-06 A (+60d) | 2026-06-10 A → 2026-08-13 A (+64d) |  |  |  | DAM3-C-B2-A-0120, DAM3-C-B2-SS-610, DAM3-C-B2-S-6133 → DAM3-C-B2-A-0120, DAM3-C-B2-SS-610, DAM3-C-B2-S-6133, DAM3-C-B3-SS-1040 | resources Roof sheet worker [160 h]; General Labour [160 h]; Mobile Crane [80 h]; Equipment Operator [160 h]; Construction Cost [453414] → Roof sheet worker [160 h]; General Labour [160 h]; Mobile Crane [40 h]; Equipment Operator [160 h]; Construction Cost [217508] |
| DAM3-C-B2-SS-0130 | Installation of wall sandwich panel | 2026-07-16 A → 2026-10-18 A (+94d) | 2026-07-30 A → 2026-12-02 (+125d) |  | 100% → 30% | none → 7.1d | DAM3-C-B2-A-0150 → DAM3-C-B2-A-0150, DAM3-C-B2-SS-1020, DAM3-P-ST-M-380 | resources Sandwich panel worker [112 h]; General Labour [112 h]; Mobile Crane [56 h]; Equipment Operator [112 h]; Construction Cost [170030] → Sandwich panel worker [112 h]; General Labour [112 h]; Mobile Crane [40 h]; Equipment Operator [112 h]; Construction Cost [326261] |
| DAM3-C-B2-SS-620 | Steel members for office area | 2026-05-03 A → 2026-11-12 (+193d) | 2026-05-25 A → 2026-11-19 (+178d) | 5d → 7d | 100% → 0% | none → 5.6d |  | resources Construction Cost [97318.2]; Structural Steel Fixer [112 h]; Mobile Crane [56 h]; General Labour [112 h]; Equipment Operator [112 h] → Construction Cost [115805]; Structural Steel Fixer [112 h]; Mobile Crane [56 h]; General Labour [112 h]; Equipment Operator [112 h] |
| DAM3-C-B2-SS-1020 | Epoxy paint to steel members at office area | 2026-08-12 A → 2026-11-21 (+101d) | 2026-08-13 A → 2026-11-28 (+107d) | 5d → 7d | 100% → 0% | none → 7.1d |  | resources Painter [112 h]; Construction Cost [24329.5] → Painter [112 h]; Construction Cost [23161] |
| DAM3-C-B2-SS-1030 | Steel members for external platform | 2026-05-03 A → 2026-11-21 (+202d) | 2026-05-25 A → 2026-11-28 (+187d) | 5d → 7d | 100% → 0% | none → 5.6d |  | resources Construction Cost [27249.1]; General Labour [112 h]; Mobile Crane [56 h]; Structural Steel Fixer [112 h]; Equipment Operator [112 h] → Construction Cost [18670.8]; General Labour [112 h]; Mobile Crane [56 h]; Structural Steel Fixer [112 h]; Equipment Operator [112 h] |
| DAM3-C-B2-SS-1040 | Epoxy paint for external platform | 2026-07-20 A → 2026-11-29 (+132d) | 2026-07-21 A → 2026-12-03 (+135d) |  | 100% → 0% | none → 5.6d |  | resources Painter [80 h]; Construction Cost [6812.27] → Painter [80 h]; Construction Cost [3734.16] |
| 2 | **ARCHITECTURAL** | 2026-06-10 → 2026-08-12 (+63d) | 2026-10-27 → 2027-02-15 (+111d) |  |  |  |  |  |
| 1 | **MASONARY WORKS** | 2026-06-10 → 2026-08-22 (+73d) | 2026-07-02 → 2026-09-27 (+87d) |  |  |  |  |  |
| DAM3-C-B2-A-0120 | Block work at factory area | 2026-06-10 A → 2026-08-22 A (+73d) | 2026-07-02 A → 2026-08-25 A (+54d) | 15d → 8d |  |  | DAM3-C-B2-S-382, DAM3-C-B2-SS-0110 → DAM3-C-B2-S-382, DAM3-C-B2-SS-0110, DAM3-C-B6-E-343 | resources AAC panel erector [240 h]; General Labour [240 h]; Equipment Operator [240 h]; Mobile Crane [120 h]; Construction Cost [38856.6] → AAC panel erector [240 h]; General Labour [240 h]; Equipment Operator [240 h]; Mobile Crane [120 h]; Construction Cost [58338.7] |
| DAM3-C-B2-A-0150 | Block work at office area | 2026-06-10 A → 2026-08-22 A (+73d) | 2026-07-02 A → 2026-09-08 A (+68d) | 10d → 7d |  |  | DAM3-C-B2-SS-0140 SS, DAM3-C-B2-SS-620, Civil Snagg works → DAM3-C-B2-SS-0140 SS, DAM3-C-B2-SS-620 | resources AAC panel erector [160 h]; General Labour [160 h]; Mobile Crane [80 h]; Equipment Operator [160 h]; Construction Cost [9714] → AAC panel erector [160 h]; General Labour [160 h]; Mobile Crane [56 h]; Equipment Operator [160 h]; Construction Cost [6179.18] |
| DAM3-C-B2-A-170 | Block work at toilet area | 2026-06-10 A → 2026-08-22 A (+73d) | 2026-07-02 A → 2026-09-27 A (+87d) |  |  |  | DAM3-C-B2-A-0150, DAM3-C-B2-SS-1040, DAM3-C-B2-SS-1020, S001-C-TC-M-100 → DAM3-C-B2-A-0150, DAM3-C-B3-S-1017, DAM3-P-ST-M-400 | resources Mason [112 h]; Construction Cost [15836.3] → Mason [112 h]; Construction Cost [14436.3] |
| 5 | **WALL FINISHES** | 2026-07-26 → 2026-10-04 (+70d) | 2026-10-24 → 2026-12-23 (+60d) |  |  |  |  |  |
| DAM3-C-B2-A-180 | Internal Wall Plaster | 2026-07-26 A → 2026-10-04 A (+70d) | 2026-08-05 A → 2026-10-15 A (+71d) |  |  |  | DAM3-C-B2-A-170, DAM3-C-B2-E-183, DAM3-C-B2-S-517 → DAM3-C-B2-A-170, DAM3-C-B2-E-183 | resources Mason [240 h]; Construction Cost [29610.2] → Mason [240 h]; Construction Cost [48590.2] |
| DAM3-C-B2-A-230 | Paint to Plaster (Primer, Putty & First Coat) | 2026-08-12 A → 2026-12-16 (+126d) | 2026-10-24 → 2026-12-23 (+60d) |  | 90% → 0% | 5.85d → 27d |  | resources Painter [112 h]; Construction Cost [26649.5] → Painter [112 h]; Construction Cost [44167.3] |
| 2 | **CIELING FINISHES** | 2026-09-08 → 2026-12-08 (+91d) | 2026-09-24 → 2026-12-13 (+80d) |  |  |  |  |  |
| DAM3-C-B2-A-240 | Installation of Ceiling Gypsum Board | 2026-09-08 A → 2026-12-08 (+91d) | 2026-09-24 A → 2026-12-13 (+80d) |  | 100% → 0% | none → 27d |  | resources Carperter [80 h]; Construction Cost [44650.2] → Carperter [80 h]; Construction Cost [46792.3] |
| 6 | **FLOOR FINISHES** | 2026-08-02 → 2026-11-30 (+120d) | 2026-10-15 → 2027-02-15 (+123d) |  |  |  |  |  |
| DAM3-C-B2-A-220 | Tiles for Toilet | 2026-08-02 A → 2026-11-30 (+120d) | 2026-08-13 A → 2026-12-07 (+116d) |  | 100% → 0% | none → 27d |  | resources Tile Fixer [112 h]; Construction Cost [48089.6] → Tile Fixer [112 h]; Construction Cost [46530.7] |
| DAM3-C-B2-A-250 | Tiles for Office Area | 2026-08-27 A → 2026-12-14 (+109d) | 2026-08-30 A → 2026-12-15 (+107d) |  | 100% → 0% | none → 27d | DAM3-C-B2-A-240, DAM3-C-B2-E-303 → DAM3-C-B2-A-240 | resources Tile Fixer [32 h]; Construction Cost [25626.5] → Tile Fixer [32 h]; Construction Cost [26867.3] |
| DAM3-C-B2-A-390 | Granite strip | 2026-09-22 A → 2026-12-17 (+86d) | 2026-09-24 A → 2026-12-19 (+86d) |  | 100% → 0% | none → 27d | DAM3-C-B2-A-558 → DAM3-C-B2-A-558, DAM3-C-B2-A-250 | resources Tile Fixer [32 h]; Construction Cost [1454.24] → Tile Fixer [32 h]; Construction Cost [671.12] |
| DAM3-C-B2-A-420 | Epoxy paint | 2026-09-05 A → 2027-02-13 (+161d) | 2026-10-15 A → 2027-02-15 (+123d) | 5d → 3d | 100% → 0% | none → 0d | DAM3-C-B2-A-340 SS → DAM3-C-B2-A-340 | resources Painter [112 h]; Construction Cost [102516] → Painter [112 h]; Construction Cost [115420] |
| 3 | **DOORS & WINDOWS** | 2026-07-14 → 2026-10-11 (+89d) | 2026-09-13 → 2026-12-16 (+94d) |  |  |  |  |  |
| DAM3-C-B2-A-558 | Skylight fixtures installation | 2026-08-03 A → 2026-10-11 A (+69d) | 2026-08-06 A → 2026-10-14 A (+69d) |  |  |  | DAM3-C-B2-A-557, S001-C-TC-E-3676 → DAM3-C-B2-A-557 | resources Carperter [16 h]; Construction Cost [61929.7] → Carperter [16 h]; Construction Cost [6489.89] |
| DAM3-C-B2-A-552 | Window (CW1) | 2026-07-14 A → 2026-12-05 (+144d) | 2026-09-13 A → 2026-12-09 (+87d) | 7d → 5d | 100% → 0% | none → 5.6d | DAM3-C-B2-SS-0130 → DAM3-C-B2-SS-0130, DAM3-C-B2-SS-1040 | resources Carperter [112 h]; Construction Cost [90682.8] → Carperter [112 h]; Construction Cost [94173.2] |
| DAM3-C-B2-A-553 | Roll up Shutter Door | 2026-08-11 A → 2026-12-10 (+121d) | 2026-08-12 A → 2026-12-10 (+120d) |  | 100% → 0% | none → 5.6d | DAM3-C-B2-A-552 → DAM3-C-B2-A-552, DAM3-C-B2-S-517, DAM3-C-B3-A-1370 | resources Carperter [16 h]; Construction Cost [66353.3] → Carperter [16 h]; Construction Cost [68619.2] |
| DAM3-C-B2-A-200 | Supply and install (D5) 1000*2200mm single leaf steel door with door | 2026-08-13 A → 2026-12-12 (+121d) | 2026-09-10 A → 2026-12-12 (+93d) |  | 100% → 0% | none → 5.6d |  | resources Carperter [16 h]; Construction Cost [15482.4] → Carperter [16 h]; Construction Cost [16016.2] |
| DAM3-C-B2-A-554 | Supply and install (D4) 800*2200 mm single leaf aluminum door with door | 2026-09-08 A → 2026-12-13 (+96d) | 2026-09-10 A → 2026-12-13 (+94d) |  | 100% → 0% | none → 5.6d |  | resources Carperter [16 h]; Construction Cost [21896.6] → Carperter [16 h]; Construction Cost [22737.8] |
| DAM3-C-B2-A-555 | Supply and install (D7) 1000*2200 mm single leaf aluminum door with door | 2026-09-08 A → 2026-12-14 (+97d) | 2026-09-10 A → 2026-12-14 (+95d) |  | 100% → 0% | none → 5.6d |  | resources Carperter [16 h]; Construction Cost [7520.04] → Carperter [16 h]; Construction Cost [7811.07] |
| DAM3-C-B2-A-556 | Supply and install (D3) 1000*2200 mm single leaf aluminum door with door | 2026-09-08 A → 2026-12-15 (+98d) | 2026-09-10 A → 2026-12-15 (+96d) |  | 100% → 0% | none → 5.6d |  | resources Carperter [16 h]; Construction Cost [15482.4] → Carperter [16 h]; Construction Cost [16016.2] |
| DAM3-C-B2-A-557 | Supply and install fire rated 45 min (D2) 1200*2200 mm single leaf steel door | 2026-08-13 A → 2026-12-16 (+125d) | 2026-09-10 A → 2026-12-16 (+97d) |  | 100% → 0% | none → 5.6d |  | resources Carperter [16 h]; Construction Cost [16146] → Carperter [16 h]; Construction Cost [16711.5] |
| 4 | **WATER PROOFING WORKS** | 2026-08-05 → 2026-11-25 (+112d) | 2026-08-06 → 2026-11-29 (+115d) |  |  |  |  |  |
| DAM3-C-B2-A-370 | Waterproofing membrane for toilets | 2026-08-05 A → 2026-11-25 (+112d) | 2026-08-06 A → 2026-11-29 (+115d) |  | 100% → 0% | none → 27d | DAM3-C-B2-M-200, DAM3-C-B2-A-180, Architectural Snagg works-2 → DAM3-C-B2-M-200, DAM3-C-B2-A-180 | resources General Labour [64 h]; Construction Cost [4653.33] → General Labour [64 h]; Construction Cost [4879.02] |
| 7 | **METAL WORKS** | 2026-08-13 → 2026-08-12 (-1d) | 2026-10-22 → 2026-12-31 (+70d) |  |  |  |  |  |

| ID | Task | Start | Finish | Duration | Complete | Total float | Predecessors | Other |
| --- | --- | --- | --- | --- | --- | --- | --- | --- |
| DAM3-C-B2-A-300 | Galvanised Steel Gratings | 2026-10-08 A → 2026-08-12 A (-57d) | 2026-10-10 A → 2026-08-12 A (-59d) |  |  |  |  | resources Steel Fixer [32 h]; General Labour [32 h]; Construction Cost [6237.21] → Steel Fixer [32 h]; General Labour [32 h]; Construction Cost [6455.16] |
| DAM3-C-B2-A-290 | Steel Ladder | 2026-08-20 A → 2026-12-20 (+122d) | 2026-08-29 A → 2026-12-21 (+114d) |  | 100% → 0% | none → 27d |  | resources Steel Fixer [32 h]; General Labour [32 h]; Construction Cost [9510.64] → Steel Fixer [32 h]; General Labour [32 h]; Construction Cost [9839.16] |
| DAM3-C-B2-A-291 | Steel railing works | 2026-10-19 → 2026-12-22 (+64d) | 2026-10-22 → 2026-12-26 (+65d) |  |  | 2.75d → 27d |  | resources Steel Fixer [64 h]; General Labour [64 h]; Construction Cost [7497.92] → Steel Fixer [64 h]; General Labour [64 h]; Construction Cost [1533.98] |
| DAM3-C-B2-A-292 | Aluminium composite panel | 2026-08-13 A → 2026-12-27 (+136d) | 2026-10-03 A → 2026-12-31 (+89d) |  | 100% → 0% | none → 27d |  | resources Steel Fixer [80 h]; General Labour [80 h]; Construction Cost [175670] → Steel Fixer [80 h]; General Labour [80 h]; Construction Cost [175889] |
| 8 | **SPECIALTIES** | 2026-09-22 → 2027-01-02 (+102d) | 2026-10-27 → 2027-02-11 (+107d) |  |  |  |  |  |
| DAM3-C-B2-A-320 | Installation of fittings | 2026-09-22 A → 2027-01-02 (+102d) | 2026-09-24 A → 2027-01-06 (+104d) |  | 100% → 0% | none → 27d | DAM3-C-B2-A-300 SS → DAM3-C-B2-A-300 | resources Plumber [80 h]; Construction Cost [21686.5] → Plumber [80 h]; Construction Cost [22981.3] |
| DAM3-C-B2-A-570 | Identification sign; ID01 & ID02 | 2026-10-24 → 2027-01-07 (+75d) | 2026-10-26 → 2027-01-10 (+76d) |  |  | 2.75d → 27d | DAM3-C-B2-A-320 SS → DAM3-C-B2-A-320 | resources Mason [48 h]; Construction Cost [9289.46] → Mason [48 h]; Construction Cost [9630.56] |
| DAM3-C-B2-A-340 | Furniture Installation | 2026-10-27 → 2027-02-11 (+107d) | 2026-10-27 → 2027-02-11 (+107d) |  |  | 2.75d → 0d | DAM3-C-B2-A-570 → DAM3-C-B2-A-570, DAM3-C-B3-A-1260 | resources General Labour [16 h]; Mason [16 h]; Construction Cost [10561.2] → General Labour [16 h]; Mason [16 h]; Construction Cost [12468.8] |
| 3 | **MECHANICAL** | 2026-04-05 → 2026-07-23 (+109d) | 2026-09-26 → 2027-01-12 (+108d) |  |  |  |  |  |
| 1 | **HVAC** | 2026-06-17 → 2026-12-24 (+190d) | 2026-09-24 → 2027-01-09 (+107d) |  |  |  |  |  |
| 1 | **FIRST STAGE** | 2026-06-17 → 2026-12-31 (+197d) | 2026-07-30 → 2027-01-04 (+158d) |  |  |  |  |  |
| DAM3-C-B2-M-140 | Installation of HVAC Ducts | 2026-06-17 A → 2026-12-31 (+197d) | 2026-07-30 A → 2027-01-02 (+156d) |  | 100% → 0% | none → 27d |  | resources Ductman [32 h]; Construction Cost [141482] → Ductman [32 h]; Construction Cost [149489] |
| DAM3-C-B2-M-170 | Installation of Duct insulation | 2026-06-17 A → 2027-01-03 (+200d) | 2026-07-30 A → 2027-01-04 (+158d) |  | 100% → 0% | none → 27d |  | resources Ductman [32 h]; Construction Cost [18747.3] → Ductman [32 h]; Construction Cost [21205.4] |
| 2 | **SECOND STAGE** | 2026-07-30 → 2026-12-24 (+147d) | 2026-09-24 → 2027-01-09 (+107d) |  |  |  |  |  |
| DAM3-C-B2-M-130 | Installation of Exhaust Fans | 2026-07-30 A → 2026-12-24 (+147d) | 2026-07-30 A → 2026-12-26 (+149d) |  | 100% → 0% | none → 27d |  | resources AC Technician [32 h]; Construction Cost [9331.24] → AC Technician [32 h]; Construction Cost [7938.56] |
| DAM3-C-B2-M-160 | Installation of Wall Propeller Type Exhaust Fan | 2026-09-03 A → 2026-12-27 (+115d) | 2026-09-05 A → 2026-12-30 (+116d) |  | 100% → 0% | none → 27d |  | resources AC Technician [64 h]; Construction Cost [17417.7] → AC Technician [64 h]; Construction Cost [46831.6] |
| DAM3-C-B2-M-339 | Installation of Diffuser | 2026-09-19 A → 2027-01-05 (+108d) | 2026-09-24 A → 2027-01-06 (+104d) |  | 100% → 0% | none → 27d |  | resources Ductman [32 h]; Construction Cost [2764.72] → Ductman [32 h]; Construction Cost [2144] |
| DAM3-C-B2-M-340 | Supply, install, test and commission door grilles & exhaust louvers | 2026-09-05 A → 2027-01-07 (+124d) | 2026-09-10 A → 2027-01-09 (+121d) |  | 100% → 0% | none → 27d |  | resources Ductman [32 h]; Construction Cost [7188.28] → Ductman [32 h]; Construction Cost [5574.4] |
| 2 | **FIRE FIGHTING SYSTEM** | 2026-06-11 → 2026-09-10 (+91d) | 2026-08-25 → 2027-01-12 (+140d) |  |  |  |  |  |
| 1 | **FIRST STAGE** | 2026-06-11 → 2026-09-10 (+91d) | 2026-08-06 → 2026-09-21 (+46d) |  |  |  |  |  |
| DAM3-C-B2-M-300 | Installation of Fire Fighting Pipes (Seamless Black Steel) | 2026-06-11 A → 2026-09-10 A (+91d) | 2026-08-06 A → 2026-09-21 A (+46d) |  |  |  |  | resources Pipe Fitter [112 h]; Construction Cost [60425.7] → Pipe Fitter [112 h]; Construction Cost [72394.8] |
| DAM3-C-B2-M-310 | Installation of Fire Fighting Valve | 2026-06-13 A → 2026-09-10 A (+89d) | 2026-08-06 A → 2026-09-21 A (+46d) |  |  |  |  | resources Pipe Fitter [80 h]; Construction Cost [12712.2] → Pipe Fitter [80 h]; Construction Cost [12199.4] |
| 2 | **SECOND STAGE** | 2026-06-17 → 2026-12-24 (+190d) | 2026-08-25 → 2027-01-12 (+140d) |  |  |  |  |  |
| DAM3-C-B2-M-320 | Installation of Fire Hose Cabinet | 2026-06-17 A → 2026-12-24 (+190d) | 2026-08-25 A → 2026-12-27 (+124d) |  | 100% → 0% | none → 41d |  | resources Pipe Fitter [48 h]; Construction Cost [11147.4] → Pipe Fitter [48 h]; Construction Cost [15158.6] |
| DAM3-C-B2-M-370 | Supply, install, test and commission Fire Department Connection(FDC) | 2026-06-17 A → 2027-01-10 (+207d) | 2026-08-06 A → 2027-01-12 (+159d) |  | 100% → 0% | none → 27d |  | resources Pipe Fitter [48 h]; Construction Cost [2598.84] → Pipe Fitter [48 h]; Construction Cost [2706.06] |
| 3 | **SEWER AND DRAINAGE SYSTEM** | 2026-04-05 → 2026-07-23 (+109d) | 2026-09-26 → 2026-12-26 (+91d) |  |  |  |  |  |
| 1 | **FIRST STAGE** | 2026-04-05 → 2026-07-23 (+109d) | 2026-08-06 → 2026-12-09 (+125d) |  |  |  |  |  |
| DAM3-C-B2-M-200 | Installation of Sanitary Waste / Drainage Pipes | 2026-04-05 A → 2026-07-23 A (+109d) | 2026-05-02 A → 2026-07-27 A (+86d) |  |  |  |  | resources Plumber [64 h]; Construction Cost [14362.4] → Plumber [64 h]; Construction Cost [18585.1] |
| DAM3-C-B2-M-380 | Installation of Trench drain | 2026-06-17 A → 2026-08-03 A (+47d) | 2026-08-06 A → 2026-08-04 A (-2d) |  |  |  |  | resources Plumber [80 h]; Construction Cost [11379.6] → Plumber [80 h]; Construction Cost [11508.8] |
| DAM3-C-B2-M-220 | Installation of Floor Drain | 2026-06-17 A → 2026-12-08 (+174d) | 2026-08-06 A → 2026-12-09 (+125d) |  | 100% → 0% | none → 35.25d |  | resources Plumber [32 h]; Construction Cost [10616.5] → Plumber [32 h]; Construction Cost [11056] |
| 2 | **SECOND STAGE** | 2026-08-15 → 2026-12-10 (+117d) | 2026-09-26 → 2026-12-26 (+91d) |  |  |  |  |  |
| DAM3-C-B2-M-180 | Installation of Electric Water Heater | 2026-08-15 A → 2026-12-10 (+117d) | 2026-08-15 A → 2026-12-12 (+119d) |  | 100% → 0% | none → 35.25d |  | resources Plumber [32 h]; Construction Cost [1592.48] → Plumber [32 h]; Construction Cost [1819.51] |
| DAM3-C-B2-M-190 | Installation of Sanitary Fixture and Accessories | 2026-09-20 A → 2026-12-13 (+84d) | 2026-09-26 A → 2026-12-16 (+81d) |  | 100% → 0% | none → 35.25d |  | resources Plumber [64 h]; Construction Cost [16243] → Plumber [64 h]; Construction Cost [19921.7] |
| DAM3-C-B2-M-210 | Installation of Lavotary /Wash Basin | 2026-09-20 A → 2026-12-17 (+88d) | 2026-09-26 A → 2026-12-19 (+84d) |  | 100% → 0% | none → 35.25d |  | resources Plumber [32 h]; Construction Cost [20348.3] → Plumber [32 h]; Construction Cost [21416.7] |
| DAM3-C-B2-M-270 | Installation of Bib Tap | 2026-09-20 A → 2026-12-20 (+91d) | 2026-09-26 A → 2026-12-21 (+86d) |  | 100% → 0% | none → 35.25d |  | resources Plumber [32 h]; Construction Cost [2211.78] → Plumber [32 h]; Construction Cost [1900.66] |
| DAM3-C-B2-M-428 | Installation of Water Tap | 2026-08-27 A → 2026-12-22 (+117d) | 2026-09-19 A → 2026-12-23 (+95d) |  | 100% → 0% | none → 35.25d |  | resources Plumber [32 h]; Construction Cost [2654.13] → Plumber [32 h]; Construction Cost [2874.14] |
| DAM3-C-B2-M-429 | Installation of Roof Vent Cap | 2026-08-19 A → 2026-12-24 (+127d) | 2026-08-22 A → 2026-12-26 (+126d) |  | 100% → 0% | none → 35.25d |  | resources Pipe Fitter [32 h]; Construction Cost [829.41] → Pipe Fitter [32 h]; Construction Cost [927.12] |
| 4 | **WATER SUPPLY SYSTEM** | 2026-07-02 → 2026-10-01 (+91d) | 2026-08-15 → 2026-12-29 (+136d) |  |  |  |  |  |
| 1 | **FIRST STAGE** | 2026-07-02 → 2026-10-01 (+91d) | 2026-08-15 → 2026-10-04 (+50d) |  |  |  |  |  |
| DAM3-C-B2-M-280 | Installation of Water Supply Valve | 2026-08-06 A → 2026-10-01 A (+56d) | 2026-08-15 A → 2026-10-04 A (+50d) |  |  |  |  | resources Plumber [32 h]; Construction Cost [15736.8] → Plumber [32 h]; Construction Cost [18274.3] |
| DAM3-C-B2-M-290 | Installation of Water Supply Pipes | 2026-07-02 A → 2026-10-01 A (+91d) | 2026-08-15 A → 2026-10-04 A (+50d) |  |  |  |  | resources Plumber [64 h]; Construction Cost [19520.2] → Plumber [64 h]; Construction Cost [23318.4] |
| 2 | **SECOND STAGE** | 2026-07-04 → 2026-12-24 (+173d) | 2026-08-08 → 2026-12-29 (+143d) |  |  |  |  |  |
| DAM3-C-B2-M-330 | Capped connection | 2026-07-04 A → 2026-12-24 (+173d) | 2026-08-08 A → 2026-12-29 (+143d) |  | 100% → 0% | none → 38.25d |  | resources Plumber [80 h]; Construction Cost [287.53] → Plumber [80 h]; Construction Cost [278.13] |
| 4 | **ELECTRICAL** | 2026-04-05 → 2026-06-17 (+73d) | 2026-10-22 → 2027-01-13 (+83d) |  |  |  |  |  |
| 1 | **FIRST STAGE** | 2026-04-05 → 2026-06-17 (+73d) | 2026-10-19 → 2027-01-03 (+76d) |  |  |  |  |  |
| DAM3-C-B2-E-143 | Installation of Conduits and wiring outlets - Fire Alarm System | 2026-05-25 A → 2026-06-17 A (+23d) | 2026-06-11 A → 2026-11-22 (+164d) |  | 100% → 50% | none → 18.2d |  | resources Electrician [64 h]; Construction Cost [2026.84] → Electrician [64 h]; Construction Cost [1768.31] |
| DAM3-C-B2-E-113 | Installation of Earthing and Grounding | 2026-04-05 A → 2026-06-18 A (+74d) | 2026-10-19 → 2027-01-03 (+76d) |  | 95% → 90% | 10.4d → 5.6d |  | resources Electrician [80 h]; Construction Cost [17002.4] → Electrician [80 h]; Construction Cost [19646.5] |
| DAM3-C-B2-E-183 | Installation of Sleeves & Power outlet | 2026-04-05 A → 2026-06-18 A (+74d) | 2026-09-22 A → 2026-11-24 (+63d) |  | 100% → 50% | none → 27d |  | resources Electrician [128 h]; Construction Cost [2853.19] → Electrician [128 h]; Construction Cost [2920.45] |
| DAM3-C-B2-E-163 | Installation of Conduites for Lighting Fixture | 2026-05-25 A → 2026-09-29 A (+127d) | 2026-06-11 A → 2026-12-02 (+174d) |  | 100% → 90% | none → 18.2d |  | resources Electrician [64 h]; Construction Cost [3983.66] → Electrician [64 h]; Construction Cost [8462.97] |
| DAM3-C-B2-E-233 | Installation of Wires | 2026-06-09 A → 2026-12-17 (+191d) | 2026-09-09 A → 2026-12-21 (+103d) |  | 100% → 0% | none → 5.6d | DAM3-C-B2-E-163 → DAM3-C-B2-E-163, DAM3-C-B2-A-558 | resources Electrician [64 h]; Construction Cost [7966.69] → Electrician [64 h]; Construction Cost [16925.9] |
| DAM3-C-B2-E-223 | Installation of LV Cables | 2026-09-05 A → 2026-12-29 (+115d) | 2026-10-14 A → 2027-01-02 (+80d) |  | 100% → 0% | none → 5.6d |  | resources Electrician [64 h]; Construction Cost [31551] → Electrician [64 h]; Construction Cost [36390] |
| 2 | **SECOND STAGE** | 2026-06-17 → 2026-10-10 (+115d) | 2026-10-22 → 2027-01-13 (+83d) |  |  |  |  |  |
| DAM3-C-B2-E-243 | Installation of LP-1 Panel | 2026-07-26 A → 2026-10-10 A (+76d) | 2026-10-01 A → 2026-10-14 A (+13d) |  |  |  |  | resources Electrician [32 h]; Construction Cost [15128.5] → Electrician [32 h]; Construction Cost [18403.5] |
| DAM3-C-B2-E-420 | Installation of Solar power plant | 2026-08-17 A → 2026-10-13 A (+57d) | 2026-10-12 A → 2027-01-13 (+93d) | 2d → 10d | 100% → 10% | none → 5.6d | DAM3-C-B3-E-1040 SS → DAM3-C-B3-E-1040, DAM3-C-B2-E-113 | resources Plumber [112 h]; Construction Cost [218966] → Plumber [112 h]; Construction Cost [253269] |
| DAM3-C-B2-E-123 | Installation of Fire Alarm Control Panel | 2026-09-22 A → 2026-11-23 (+62d) | 2026-09-24 A → 2026-11-26 (+63d) |  | 100% → 0% | none → 18.2d |  | resources Electrician [64 h]; Construction Cost [16216.6] → Electrician [64 h]; Construction Cost [19451.4] |
| DAM3-C-B2-E-133 | Installation of Fire Detectors & Accessories | 2026-09-22 A → 2026-11-28 (+67d) | 2026-10-12 A → 2026-12-01 (+50d) |  | 100% → 0% | none → 18.2d |  | resources Electrician [64 h]; Construction Cost [31219.2] → Electrician [64 h]; Construction Cost [56740.4] |
| DAM3-C-B2-E-153 | Installation of Lighting fixtures | 2026-09-15 A → 2026-12-22 (+98d) | 2026-10-12 A → 2026-12-26 (+75d) |  | 100% → 0% | none → 20.25d |  | resources Electrician [64 h]; Construction Cost [59751.1] → Electrician [64 h]; Construction Cost [76166.7] |
| DAM3-C-B2-E-193 | Installation of Main Distribution Board | 2026-09-08 A → 2026-12-22 (+105d) | 2026-10-14 A → 2026-12-23 (+70d) |  | 100% → 0% | none → 5.6d |  | resources Electrician [32 h]; Construction Cost [25479.7] → Electrician [32 h]; Construction Cost [32472.7] |
| DAM3-C-B2-E-410 | Installation of CCTV System | 2026-06-17 A → 2026-12-22 (+188d) | 2026-10-14 A → 2026-12-28 (+75d) | 7d → 6d | 100% → 0% | none → 18.25d |  | resources Plumber [112 h]; Construction Cost [66177.6] → Plumber [112 h]; Construction Cost [76349.2] |
| DAM3-C-B2-E-173 | Installation of Wiring Devices | 2026-08-29 A → 2026-12-24 (+117d) | 2026-10-01 A → 2026-12-28 (+88d) |  | 100% → 0% | none → 29.25d | DAM3-C-B2-E-183, DAM3-C-B2-A-230, DAM3-C-B2-E-113 → DAM3-C-B2-E-183, DAM3-C-B2-A-230 | resources Electrician [64 h]; Construction Cost [20742.2] → Electrician [64 h]; Construction Cost [19435.1] |
| DAM3-C-B2-E-253 | Installation of PP-AC panel | 2026-09-17 A → 2026-12-24 (+98d) | 2026-10-14 A → 2026-12-26 (+73d) |  | 100% → 0% | none → 5.6d |  | resources Electrician [32 h]; Construction Cost [18214] → Electrician [32 h]; Construction Cost [21648.5] |
| DAM3-C-B2-E-213 | Installation of Telephone Cabinet | 2026-07-30 A → 2026-12-27 (+150d) | 2026-10-01 A → 2026-12-28 (+88d) |  | 100% → 0% | none → 5.6d |  | resources Electrician [32 h]; Construction Cost [23299.8] → Electrician [32 h]; Construction Cost [26991.1] |
| DAM3-C-B2-E-203 | Installation of Disconnect Switches | 2026-08-29 A → 2026-12-29 (+122d) | 2026-10-12 A → 2026-12-30 (+79d) |  | 100% → 0% | none → 29.25d |  | resources Electrician [32 h]; Construction Cost [25808.4] → Electrician [32 h]; Construction Cost [30236] |
| DAM3-C-B2-E-273 | Installation of Access Control System | 2026-06-17 A → 2026-12-29 (+195d) | 2026-10-21 → 2027-01-03 (+74d) |  | 50% → 0% | 5.85d → 18.25d |  | resources Electrician [80 h]; Construction Cost [24315.4] → Electrician [80 h]; Construction Cost [27616.9] |
| DAM3-C-B2-E-283 | Monitor Modules for Fire Alarm | 2026-09-24 A → 2027-01-04 (+102d) | 2026-10-22 → 2027-01-05 (+75d) |  | 50% → 0% | 5.85d → 18.25d | DAM3-C-B2-E-273, DAM3-C-B2-E-253, DAM3-C-B2-E-213 → DAM3-C-B2-E-273, DAM3-C-B2-E-213 | resources Electrician [32 h]; Construction Cost [3760.02] → Electrician [32 h]; Construction Cost [3882.38] |
| DAM3-C-B2-E-293 | Line Isolator Modules for Fire Alarm | 2026-09-24 A → 2027-01-06 (+104d) | 2026-10-14 A → 2027-01-07 (+85d) |  | 100% → 0% | none → 18.25d |  | resources Electrician [32 h]; Construction Cost [163.42] → Electrician [32 h]; Construction Cost [185.4] |
| DAM3-C-B2-E-303 | Firewarning flash light with sounder; wall mounted, Weather proof | 2026-09-22 A → 2027-01-09 (+109d) | 2026-09-24 A → 2027-01-10 (+108d) |  | 100% → 0% | none → 18.25d |  | resources Electrician [32 h]; Construction Cost [2963.79] → Electrician [32 h]; Construction Cost [3082.69] |
| DAM3-C-B1-S-102 | Vapour Barrier for Footings | 2026-05-07 A → 2026-04-25 A (-12d) | 2026-05-07 A → 2026-04-25 A (-12d) | 2d → 1d |  |  | DAM3-C-PR-S-108 → DAM3-C-B1-S-101 | resources General Labour [32 h]; Construction Cost [691.18] → General Labour [16 h]; Construction Cost [7940.1] |
| DAM3-C-B1-S-103 | Lean Concrete Below Footings | 2026-05-07 A → 2026-04-25 A (-12d) | 2026-05-07 A → 2026-04-25 A (-12d) |  |  |  | DAM3-C-B1-S-102 → DAM3-C-B1-S-102, DAM3-E-MT-EX-2050 | resources Mason [32 h]; Construction Cost [691.18] → Mason [32 h]; Construction Cost [8229.34] |
| DAM3-C-B1-S-104 | Rebar for Footings | 2026-05-07 A → 2026-05-02 A (-5d) | 2026-05-11 A → 2026-05-05 A (-6d) |  |  |  | DAM3-C-B1-S-103 → DAM3-C-B1-S-103, DAM3-E-SA-EX-860, DAM3-E-SA-EX-870, DAM3-E-SA-EX-880, DAM3-E-SA-EX-890, DAM3-E-SA-EX-900, DAM3-E-SA-EX-910, DAM3-E-SA-EX-920, DAM3-E-SA-E-990, DAM3-E-SA-E-1000, DAM3-E-SA-E-1010, DAM3-E-SA-E-1020, DAM3-E-SA-E-1030, DAM3-E-SA-E-1040, DAM3-E-SA-E-1050, DAM3-E-SA-E-1060, DAM3-E-SA-E-1070, DAM3-E-SA-E-1080, DAM3-E-SA-E-1090, DAM3-E-SA-E-1100, DAM3-E-SA-M-660, DAM3-E-SA-M-670, DAM3-E-SA-M-680, DAM3-E-SA-M-690, DAM3-E-SA-M-700, DAM3-E-SA-M-710, DAM3-E-SA-M-720, DAM3-E-SA-M-730, DAM3-E-SA-M-740, DAM3-E-SA-M-750, DAM3-E-SA-M-760, DAM3-E-SA-M-770 | resources Steel Fixer [64 h]; Construction Cost [1382.36] → Steel Fixer [64 h]; Construction Cost [101845] |

| ID | Task | Start | Finish | Duration | Complete | Total float | Predecessors | Other |
| --- | --- | --- | --- | --- | --- | --- | --- | --- |
| DAM3-C-B1-S-105 | Formwork for Footings | 2026-05-07 A → 2026-05-05 A (-2d) | 2026-05-12 A → 2026-05-06 A (-6d) |  |  |  |  | resources Carperter [64 h]; Construction Cost [691.18] → Carperter [64 h]; Construction Cost [25461.2] |
| DAM3-C-B1-S-106 | Pouring Concrete for Footings | 2026-05-16 A → 2026-05-07 A (-9d) | 2026-05-16 A → 2026-05-07 A (-9d) |  |  |  | DAM3-C-B1-S-105 → DAM3-C-B1-S-105, DAM3-E-SA-M-780, DAM3-E-SA-M-790, DAM3-E-SA-M-800, DAM3-E-MT-ENV-2060 | resources Carperter [16 h]; Mason [16 h]; Steel Fixer [16 h]; Concrete Mixer [8 h]; Construction Cost [6911.8] → Carperter [16 h]; Mason [16 h]; Steel Fixer [16 h]; Concrete Mixer [8 h]; Equipment Operator [16 h]; Construction Cost [127306] |
| DAM3-C-B1-S-337 | Vapour barrier for Grade Beams | 2026-06-01 A → 2026-06-06 A (+5d) | 2026-06-01 A → 2026-06-06 A (+5d) |  |  |  | DAM3-C-PR-S-378 → DAM3-C-B1-S-527 | resources General Labour [32 h]; Construction Cost [691.18] → General Labour [32 h]; Construction Cost [5293.4] |
| DAM3-C-B1-S-338 | Lean Concrete Below Grade Beams | 2026-06-01 A → 2026-06-06 A (+5d) | 2026-06-01 A → 2026-06-06 A (+5d) |  |  |  |  | resources Mason [32 h]; Construction Cost [691.18] → Mason [32 h]; Construction Cost [4431.19] |
| DAM3-C-B1-S-339 | Rebar for Grade Beams | 2026-06-02 A → 2026-06-08 A (+6d) | 2026-06-04 A → 2026-06-09 A (+5d) | 2d → 5d |  |  |  | resources Steel Fixer [32 h]; Construction Cost [1382.36] → Steel Fixer [80 h]; Construction Cost [27194.5] |
| DAM3-C-B1-S-340 | Formwork for Grade Beams | 2026-06-04 A → 2026-06-11 A (+7d) | 2026-06-06 A → 2026-06-15 A (+9d) |  |  |  |  | resources Carperter [32 h]; Construction Cost [691.18] → Carperter [32 h]; Construction Cost [6798.61] |
| DAM3-C-B1-S-342 | Pouring Concrete for Grade Beams | 2026-06-06 A → 2026-06-17 A (+11d) | 2026-06-06 A → 2026-06-17 A (+11d) |  |  |  | DAM3-C-B1-S-340 → DAM3-C-B1-S-340, DAM3-C-B1-S-341 | resources Mason [16 h]; Carperter [16 h]; Concrete Mixer [8 h]; Steel Fixer [16 h]; Construction Cost [3455.9] → Mason [16 h]; Carperter [16 h]; Concrete Mixer [8 h]; Steel Fixer [16 h]; Equipment Operator [16 h]; Construction Cost [33993.1] |
| DAM3-C-B1-S-347 | Damp proof /Bitumin paint on Grade Beams | 2026-06-13 A → 2026-06-23 A (+10d) | 2026-06-14 A → 2026-06-25 A (+11d) | 2d → 5d |  |  | DAM3-C-B1-S-342, DAM3-C-PR-S-188 → DAM3-C-B1-S-342 | resources Painter [32 h]; Construction Cost [691.18] → Painter [80 h]; Construction Cost [24777.7] |
| DAM3-C-B1-S-377 | Backfilling / Compaction for Slab on Grade | 2026-06-29 A → 2026-06-27 A (-2d) | 2026-07-02 A → 2026-07-05 A (+3d) | 5d → 7d |  |  |  | resources Mini Roller Compactor [40 h]; General Labour [80 h]; Wheel Loader [40 h]; Construction Cost [1382.36] → Mini Roller Compactor [128 h]; General Labour [256 h]; Equipment Operator [256 h]; Wheel Loader [128 h]; Truck [128 h]; Construction Cost [23023.1] |
| DAM3-C-B1-S-378 | Anti Termite Treatment below Ground Slab | 2026-07-15 A → 2026-08-06 A (+22d) | 2026-07-15 A → 2026-08-08 A (+24d) |  |  |  |  | resources General Labour [16 h]; Construction Cost [691.18] → General Labour [16 h]; Construction Cost [15874.1] |
| DAM3-C-B1-S-379 | Vapour barrier for below Ground Slab | 2026-07-15 A → 2026-08-06 A (+22d) | 2026-07-15 A → 2026-08-08 A (+24d) |  |  |  |  | resources General Labour [32 h]; Construction Cost [691.18] → General Labour [32 h]; Construction Cost [13233.5] |
| DAM3-C-B1-S-382 | Pouring Concrete for Ground Slab | 2026-07-18 A → 2026-08-06 A (+19d) | 2026-07-18 A → 2026-08-08 A (+21d) | 1d → 4d |  |  | DAM3-C-PR-S-278 → DAM3-C-B1-S-379 | resources Mason [16 h]; Carperter [16 h]; Steel Fixer [16 h]; Concrete Mixer [8 h]; Construction Cost [17168.9] → Mason [64 h]; Carperter [64 h]; Steel Fixer [64 h]; Concrete Mixer [32 h]; Equipment Operator [64 h]; Construction Cost [344195] |
| 3 | **MECHANICAL** | 2026-04-09 → 2026-07-18 (+100d) | 2026-10-08 → 2027-02-09 (+124d) |  |  |  |  |  |
| 4 | **WATER SUPPLY SYSTEM** | 2026-05-05 → 2026-10-13 (+161d) | 2026-09-10 → 2027-01-28 (+140d) |  |  |  |  |  |
| 4 | **ELECTRICAL** | 2026-07-25 → 2026-06-08 (-47d) | 2026-10-21 → 2027-01-30 (+101d) |  |  |  |  |  |
| DAM3-C-B1-E-113 | Installation of Earthing and Grounding | 2026-07-25 A → 2026-06-08 A (-47d) | 2026-10-21 → 2027-01-03 (+74d) |  | 50% → 90% | 7.75d → 14.6d | DAM3-C-ENV-E-176, DAM3-E-SA-E-1160 → DAM3-C-B1-E-223 | resources Electrician [80 h]; Construction Cost [1219.55] → Electrician [80 h]; Construction Cost [19646.5] |
| DAM3-C-B1-E-163 | Installation of Conduites for Lighting Fixture | 2026-08-19 A → 2026-10-01 A (+43d) | 2026-10-01 A → 2026-12-15 (+75d) |  | 100% → 90% | none → 16.2d | DAM3-C-B1-E-113, DAM3-E-SA-E-940, DAM3-E-SA-E-1140, DAM3-E-SA-E-1170 → DAM3-C-B1-E-133 | resources Electrician [64 h]; Construction Cost [353.88] → Electrician [64 h]; Construction Cost [8462.97] |
| DAM3-C-B1-E-233 | Installation of Wires | 2026-10-10 A → 2026-12-17 (+68d) | 2026-10-12 A → 2026-12-21 (+70d) | 2d → 4d | 100% → 0% | none → 14.6d | DAM3-C-B1-E-163 SS → DAM3-C-B1-E-163, DAM3-C-B1-A-558 | resources Electrician [32 h]; Construction Cost [707.77] → Electrician [64 h]; Construction Cost [16925.9] |
| DAM3-C-B1-E-223 | Installation of LV Cables | 2026-09-24 A → 2026-12-29 (+96d) | 2026-10-12 A → 2027-01-02 (+82d) | 2d → 4d | 100% → 0% | none → 14.6d | DAM3-C-ENV-E-176 SS, DAM3-C-ENV-E-1341 SS → DAM3-C-B1-E-213, DAM3-C-B5-M-1300, DAM3-C-B5-M-1250, DAM3-C-B5-A-1610 | resources Electrician [80 h]; Construction Cost [2281.82] → Electrician [64 h]; Construction Cost [36390] |
| DAM3-C-B1-E-153 | Installation of Lighting fixtures | 2026-09-24 A → 2026-12-22 (+89d) | 2026-10-12 A → 2026-12-26 (+75d) | 2d → 4d | 100% → 0% | none → 38d | DAM3-C-B1-E-233, DAM3-C-ENV-M-1351, DAM3-E-SA-E-1150, DAM3-P-ST-E-280 → DAM3-C-B1-E-233 | resources Electrician [32 h]; Construction Cost [5310.11] → Electrician [64 h]; Construction Cost [76166.7] |
| DAM3-C-B7-S-104 | Rebar for Footings | 2026-08-26 A → 2026-04-05 A (-143d) | 2026-08-26 A → 2026-04-09 A (-139d) | 7d → 4d |  |  | DAM3-C-ENV-S-1274 → DAM3-C-B7-S-103 | resources Steel Fixer [112 h]; Construction Cost [920.96] → Steel Fixer [64 h]; Construction Cost [101845] |
| DAM3-C-B7-S-105 | Formwork for Footings | 2026-08-25 A → 2026-04-06 A (-141d) | 2026-08-25 A → 2026-04-09 A (-138d) |  |  |  | DAM3-C-B7-S-104 → DAM3-C-B7-S-104, DAM3-C-B8-S-104 | resources Carperter [64 h]; Construction Cost [460.17] → Carperter [64 h]; Construction Cost [25461.2] |
| DAM3-C-B7-S-106 | Pouring Concrete for Footings | 2026-08-27 A → 2026-04-11 A (-138d) | 2026-08-27 A → 2026-04-11 A (-138d) | 2d → 1d |  |  |  | resources Carperter [32 h]; Mason [32 h]; Steel Fixer [32 h]; Concrete Mixer [16 h]; Equipment Operator [32 h]; Construction Cost [1381.13] → Carperter [16 h]; Mason [16 h]; Steel Fixer [16 h]; Concrete Mixer [8 h]; Equipment Operator [16 h]; Construction Cost [127306] |
| 3 | **MECHANICAL** | 2026-04-25 → 2026-06-10 (+46d) | 2026-10-24 → 2026-12-06 (+43d) |  |  |  |  |  |
| 4 | **ELECTRICAL** | 2026-09-15 → 2026-05-16 (-122d) | 2026-10-25 → 2026-12-22 (+58d) |  |  |  |  |  |
| DAM3-C-B7-E-113 | Installation of Earthing and Grounding | 2026-09-10 A → 2026-05-16 A (-117d) | 2026-10-22 → 2026-12-14 (+53d) |  | 20% → 90% | 2.75d → 38.2d | DAM3-C-ENV-E-460 → DAM3-C-B7-E-223 | resources Electrician [80 h]; Construction Cost [9726.29] → Electrician [80 h]; Construction Cost [19646.5] |
| DAM3-C-B7-E-223 | Installation of LV Cables | 2026-10-01 A → 2026-12-08 (+68d) | 2026-10-12 A → 2026-12-13 (+62d) | 7d → 4d | 100% → 0% | none → 38.2d | DAM3-C-ENV-E-430 → DAM3-C-B7-E-213 | resources Electrician [112 h]; Construction Cost [49118] → Electrician [64 h]; Construction Cost [36390] |
| 2 | **SITE INFRASTRUCTURE** | 2026-01-20 → 2026-01-19 (-1d) | 2026-11-01 → 2027-02-16 (+107d) |  |  |  |  |  |
| 1 | **SITE WORKS** | 2026-01-20 → 2026-01-19 (-1d) | 2026-08-29 → 2026-02-28 (-182d) |  |  |  |  |  |
| DAM3-C-GEN-180 | Initial Site Survey and Setting out | 2026-01-20 A → 2026-01-19 A (-1d) | 2026-01-21 A → 2026-01-24 A (+3d) |  |  |  |  |  |
| DAM3-C-GEN-190 | Excavation to the target grading level | 2025-12-27 A → 2026-02-10 A (+45d) | 2026-01-31 A → 2026-02-28 A (+28d) | 7d → 20d |  |  | DAM3-C-GEN-10, DAM3-PMS-DMS-2360 → DAM3-C-GEN-180 | resources General Labour [112 h]; Equipment Operator [112 h]; Truck [56 h]; Excavator [56 h]; Mini Roller Compactor [56 h]; Construction Cost [99312.5] → General Labour [320 h]; Equipment Operator [320 h]; Truck [40 h]; Excavator [40 h]; Mini Roller Compactor [40 h]; Construction Cost [197691] |
| 4 | **NETWORKS** | 2026-05-05 → 2026-08-01 (+88d) | 2026-09-19 → 2027-01-25 (+128d) |  |  |  |  |  |
| 6 | **INTERNAL FIRE FIGHTING WATER SUPPLY SYSTEM (OUTSIDE BUILDING UNITS)** | 2026-05-05 → 2026-08-01 (+88d) | 2026-08-04 → 2026-11-25 (+113d) |  |  |  |  |  |
| DAM3-C-ENV-F-212 | Excavation for External Fire Fighting Works | 2026-05-05 A → 2026-08-01 A (+88d) | 2026-08-03 A → 2026-11-12 (+101d) |  | 100% → 90% | none → 13.3d | DAM3-C-B5-SS-310, Backfilling to reach target level, DAM3-E-SA-EX-700, DAM3-E-SA-EX-720, DAM3-E-MT-ENV-2060 → DAM3-E-SA-EX-700, DAM3-E-SA-EX-720, DAM3-E-MT-ENV-2060, DAM3-C-B1-SS-0140, DAM3-C-GEN-190 | resources General Labour [112 h]; Equipment Operator [112 h]; Excavator [56 h]; Construction Cost [7464.74] → General Labour [112 h]; Equipment Operator [112 h]; Excavator [56 h]; Construction Cost [40471.6] |
| DAM3-C-ENV-F-172 | Installation of HDPE PN16 Pipes (200 Dia) | 2026-05-16 A → 2026-08-02 A (+78d) | 2026-08-03 A → 2026-11-14 (+103d) |  | 100% → 90% | none → 48.4d |  | resources Pipe Fitter [160 h]; Construction Cost [111975] → Pipe Fitter [160 h]; Construction Cost [364244] |
| DAM3-C-ENV-F-192 | Installation of Valves | 2026-07-14 A → 2026-08-02 A (+19d) | 2026-07-25 A → 2026-11-22 (+120d) |  | 100% → 80% | none → 43.1d |  | resources Plumber [80 h]; Construction Cost [26983.7] → Plumber [80 h]; Construction Cost [86057.9] |
| DAM3-C-ENV-F-202 | Warning Tapes | 2026-05-16 A → 2026-08-03 A (+79d) | 2026-08-03 A → 2026-11-21 (+110d) |  | 100% → 80% | none → 43.1d | DAM3-C-ENV-F-172, DAM3-P-ST-M-660 → DAM3-C-ENV-F-172, DAM3-P-ST-M-660, DAM3-C-B7-S-517 | resources Plumber [32 h]; Construction Cost [7464.74] → Plumber [32 h]; Construction Cost [40471.6] |
| DAM3-C-ENV-F-222 | Backfilling for External Fire Fighting Works | 2026-06-17 A → 2026-08-05 A (+49d) | 2026-08-04 A → 2026-11-25 (+113d) |  | 100% → 80% | none → 54.5d |  | resources General Labour [224 h]; Equipment Operator [224 h]; Mini Roller Compactor [112 h]; Construction Cost [7464.74] → General Labour [224 h]; Equipment Operator [224 h]; Mini Roller Compactor [112 h]; Construction Cost [40471.6] |
| DAM3-C-ENV-WS-806 | Construction of Washout Chamber | 2026-08-04 A → 2026-10-04 A (+61d) | 2026-09-05 A → 2026-12-02 (+88d) |  | 100% → 80% | none → 44.6d |  | resources Mason [112 h]; Construction Cost [15482.4] → Mason [112 h]; Construction Cost [17314.2] |
| DAM3-C-ENV-WS-846 | Construction of Air Valve Chamber | 2026-06-17 A → 2026-10-04 A (+109d) | 2026-08-15 A → 2026-12-03 (+110d) |  | 100% → 80% | none → 44.6d |  | resources Mason [112 h]; Construction Cost [13270.7] → Mason [112 h]; Construction Cost [16236.4] |
| DAM3-C-ENV-WS-786 | Excavation for Water Suppy Works | 2026-05-05 A → 2026-10-12 A (+160d) | 2026-08-03 A → 2026-11-26 (+115d) |  | 100% → 50% | none → 5d | DAM3-C-ENV-F-212, DAM3-E-SA-EX-690, DAM3-E-SA-EX-710 → DAM3-C-ENV-F-212, DAM3-E-SA-EX-690, DAM3-E-SA-EX-710, DAM3-C-B4-M-810 | resources General Labour [112 h]; Equipment Operator [112 h]; Excavator [56 h]; Construction Cost [4191.31] → General Labour [112 h]; Equipment Operator [112 h]; Excavator [56 h]; Construction Cost [13950.4] |
| DAM3-C-ENV-WS-746 | Installation of HDPE PN16 Pipes for Cold Water Supply | 2026-05-16 A → 2026-10-17 A (+154d) | 2026-08-03 A → 2026-11-30 (+119d) | 10d → 7d | 100% → 50% | none → 15d |  | resources Pipe Fitter [160 h]; Construction Cost [62869.8] → Pipe Fitter [160 h]; Construction Cost [125553] |
| DAM3-C-ENV-WS-766 | Installation of Valves | 2026-06-17 A → 2026-10-17 A (+122d) | 2026-08-15 A → 2026-12-06 (+113d) |  | 100% → 50% | none → 44.6d | DAM3-C-ENV-WS-776, DAM3-E-SA-EX-970, DAM3-E-SA-EX-790, DAM3-P-ST-EN-130, DAM3-P-ST-EN-160 → DAM3-C-ENV-WS-776, DAM3-E-SA-EX-740, DAM3-E-SA-EX-790, DAM3-P-ST-EN-130, DAM3-P-ST-EN-160, DAM3-E-ST-E-0270 | resources Plumber [80 h]; Construction Cost [27204.8] → Plumber [80 h]; Construction Cost [53930.1] |
| DAM3-C-ENV-WS-776 | Warning Tape | 2026-05-16 A → 2026-10-18 A (+155d) | 2026-08-15 A → 2026-12-03 (+110d) |  | 100% → 50% | none → 44.6d |  | resources Plumber [32 h]; Construction Cost [4191.31] → Plumber [32 h]; Construction Cost [13950.4] |
| DAM3-C-ENV-WS-796 | Backfilling for Water Supply | 2026-06-17 A → 2026-10-18 A (+123d) | 2026-08-15 A → 2026-12-14 (+121d) |  | 100% → 50% | none → 44.8d |  | resources General Labour [224 h]; Equipment Operator [224 h]; Mini Roller Compactor [112 h]; Construction Cost [4191.31] → General Labour [224 h]; Equipment Operator [224 h]; Mini Roller Compactor [112 h]; Construction Cost [13950.4] |
| DAM3-C-ENV-WS-826 | Supply and install Service connection -HDPE | 2026-08-03 A → 2026-12-14 (+133d) | 2026-09-10 A → 2026-12-30 (+111d) |  | 100% → 0% | none → 44.8d |  | resources Plumber [224 h]; Construction Cost [8294.16] → Plumber [224 h]; Construction Cost [35694.4] |
| 9 | **SEWER & DRAINAGE SYSTEM** | 2026-05-16 → 2026-08-22 (+98d) | 2026-09-10 → 2026-12-20 (+101d) |  |  |  |  |  |
| DAM3-C-ENV-SW-496 | Construction of inspection chambers | 2026-07-04 A → 2026-08-22 A (+49d) | 2026-07-23 A → 2026-10-03 A (+72d) |  |  |  |  | resources Mason [112 h]; Construction Cost [107824] → Mason [112 h]; Construction Cost [249925] |
| DAM3-C-ENV-SW-516 | Excavation for Sewer Works | 2026-05-23 A → 2026-08-22 A (+91d) | 2026-08-04 A → 2026-10-04 A (+61d) |  |  |  |  | resources General Labour [112 h]; Equipment Operator [112 h]; Excavator [56 h]; Construction Cost [6012.35] → General Labour [112 h]; Equipment Operator [112 h]; Excavator [56 h]; Construction Cost [22261.9] |
| DAM3-C-ENV-SW-536 | Construction of Manhole | 2026-05-16 A → 2026-08-22 A (+98d) | 2026-07-23 A → 2026-09-10 A (+49d) |  |  |  | Installation of GRP Pipes for Sewer, DAM3-E-SA-EX-960, DAM3-E-SA-EX-900, DAM3-E-SA-EX-910, DAM3-E-SA-EX-920, DAM3-E-SA-EX-930, DAM3-E-SA-EX-940 → DAM3-C-ENV-SW-486, DAM3-E-SA-EX-730, DAM3-E-SA-EX-900, DAM3-E-SA-EX-910, DAM3-E-SA-EX-920, DAM3-E-SA-EX-930, DAM3-E-SA-EX-940 | resources Mason [112 h]; Construction Cost [85153.4] → Mason [112 h]; Construction Cost [166049] |
| DAM3-C-ENV-SW-526 | Backfilling for Sewer Drainage | 2026-06-17 A → 2026-09-17 A (+92d) | 2026-08-04 A → 2026-10-06 A (+63d) |  |  |  |  | resources General Labour [224 h]; Equipment Operator [224 h]; Mini Roller Compactor [112 h]; Construction Cost [6012.35] → General Labour [224 h]; Equipment Operator [224 h]; Mini Roller Compactor [112 h]; Construction Cost [22261.9] |
| DAM3-C-ENV-SW-506 | Gully trap | 2026-08-15 A → 2026-12-01 (+108d) | 2026-09-10 A → 2026-12-12 (+93d) |  | 100% → 0% | none → 55.7d |  | resources Plumber [160 h]; Construction Cost [23223.7] → Plumber [160 h]; Construction Cost [53541.6] |
| 2 | **IRRIGATION SYSTEM** | 2026-06-17 → 2026-12-01 (+167d) | 2026-09-19 → 2027-01-25 (+128d) |  |  |  |  |  |
| DAM3-C-ENV-SW-556 | Excavation for HDPE pipes | 2026-09-15 A → 2026-12-01 (+77d) | 2026-09-16 A → 2026-12-08 (+83d) | 3d → 7d | 100% → 0% | none → 15d | DAM3-C-ENV-SW-516 SS, DAM3-E-SA-EX-950, DAM3-E-SA-EX-730 → DAM3-C-ENV-SW-516 SS, DAM3-E-SA-EX-950, DAM3-E-SA-EX-960 | resources General Labour [112 h]; Equipment Operator [112 h]; Excavator [56 h]; Construction Cost [171.41] → General Labour [112 h]; Equipment Operator [112 h]; Excavator [56 h]; Construction Cost [6309.39] |
| DAM3-C-ENV-SW-566 | Installation of HDPE Pipes | 2026-09-15 A → 2026-12-09 (+85d) | 2026-09-16 A → 2026-12-20 (+95d) | 5d → 10d | 100% → 0% | none → 15d |  | resources Pipe Fitter [160 h]; Construction Cost [2742.6] → Pipe Fitter [160 h]; Construction Cost [63093.9] |
| DAM3-C-ENV-SW-576 | Construction of Air valve chamber | 2026-06-17 A → 2026-12-21 (+187d) | 2026-08-05 A → 2026-12-26 (+143d) |  | 100% → 0% | none → 15d |  | resources Mason [80 h]; Construction Cost [3096.48] → Mason [80 h]; Construction Cost [3786.75] |
| DAM3-C-ENV-SW-586 | Construction of Washout valve chamber | 2026-09-15 A → 2026-12-21 (+97d) | 2026-09-19 A → 2026-12-26 (+98d) |  | 100% → 0% | none → 15d |  | resources Mason [80 h]; Construction Cost [3594.13] → Mason [80 h]; Construction Cost [3247.85] |
| DAM3-C-ENV-SW-596 | Backfilling for HDPE pipes | 2026-09-17 A → 2026-12-27 (+101d) | 2026-09-19 A → 2027-01-11 (+114d) | 7d → 14d | 100% → 0% | none → 15d | DAM3-C-ENV-SW-586 → DAM3-C-ENV-SW-586, S001-C-TC-ENV-F-1051 | resources General Labour [224 h]; Equipment Operator [224 h]; Mini Roller Compactor [112 h]; Construction Cost [171.41] → General Labour [224 h]; Equipment Operator [224 h]; Mini Roller Compactor [112 h]; Construction Cost [6309.39] |
| DAM3-C-ENV-SW-606 | Installation of valves | 2026-09-17 A → 2027-01-12 (+117d) | 2026-09-17 A → 2027-01-17 (+122d) |  | 100% → 0% | none → 15d | DAM3-C-ENV-SW-596, DAM3-E-SA-EX-740 → DAM3-C-ENV-SW-596, DAM3-E-SA-EX-970, S001-C-TC-ENV-WS-11 | resources Plumber [80 h]; Construction Cost [31694.8] → Plumber [80 h]; Construction Cost [84556] |
| DAM3-C-ENV-SW-616 | Main program system and controller for irrigation system | 2026-09-17 A → 2027-01-18 (+123d) | 2026-09-19 A → 2027-01-25 (+128d) |  | 100% → 0% | none → 15d |  | resources Plumber [112 h]; Construction Cost [79624]; Electrician [112 h] → Plumber [112 h]; Construction Cost [100118]; Electrician [112 h] |
| 3 | **EXTERNAL WORKS** | 2026-04-09 → 2026-07-01 (+83d) | 2026-11-01 → 2027-02-16 (+107d) |  |  |  |  |  |
| DAM3-C-ENV-M-1371 | Installation of GRP Tanks | 2026-05-13 A → 2026-08-08 A (+87d) | 2026-06-06 A → 2026-10-08 A (+124d) |  |  |  |  | resources Pipe Fitter [160 h]; Plumber [160 h]; Construction Cost [282002] → Pipe Fitter [160 h]; Plumber [160 h]; Construction Cost [585840] |
| DAM3-C-ENV-M-1301 | Installation of Fire Fighting Pump | 2026-08-29 A → 2026-09-22 A (+24d) | 2026-08-29 A → 2026-09-22 A (+24d) |  |  |  | DAM3-P-ST-M-380, DAM3-C-ENV-M-1341 → DAM3-P-ST-M-380, DAM3-C-ENV-M-1341, DAM3-P-ST-M-380 FF | resources Pipe Fitter [64 h]; Equipment Operator [64 h]; Mobile Crane [32 h]; Construction Cost [298590] → Pipe Fitter [64 h]; Equipment Operator [64 h]; Mobile Crane [32 h]; Construction Cost [345880] |
| DAM3-C-ENV-M-1341 | Installation of Booster Pump | 2026-08-15 A → 2026-10-07 A (+53d) | 2026-08-29 A → 2026-10-07 A (+39d) |  |  |  | DAM3-P-ST-M-400, DAM3-C-B1-S-382 SS → DAM3-P-ST-M-400, DAM3-C-PR-S-178 | resources Plumber [80 h]; Mobile Crane [40 h]; Equipment Operator [80 h]; Construction Cost [29029.6] → Plumber [80 h]; Mobile Crane [40 h]; Equipment Operator [80 h]; Construction Cost [38967.3] |
| DAM3-C-ENV-M-1311 | CO2 fire extinguisher | 2026-10-07 A → 2026-12-01 (+55d) | 2026-10-08 A → 2026-12-01 (+54d) |  | 100% → 0% | none → 64d |  | resources Plumber [16 h]; Construction Cost [193.53] → Plumber [16 h]; Construction Cost [217.29] |
| DAM3-C-ENV-M-1361 | Powder fire extinguisher | 2026-10-07 A → 2026-12-02 (+56d) | 2026-10-08 A → 2026-12-02 (+55d) |  | 100% → 0% | none → 64d |  | resources Pipe Fitter [16 h]; Construction Cost [165.89] → Pipe Fitter [16 h]; Construction Cost [188.33] |
| DAM3-C-ENV-M-1351 | Valves for Water Supply Pump | 2026-08-29 A → 2026-12-03 (+96d) | 2026-08-30 A → 2026-12-05 (+97d) |  | 100% → 0% | none → 61d |  | resources Plumber [32 h]; Construction Cost [5805.91] → Plumber [32 h]; Construction Cost [4329.7] |
| DAM3-C-ENV-M-1381 | Valves for GRP Tank | 2026-06-08 A → 2026-12-06 (+181d) | 2026-06-13 A → 2026-12-09 (+179d) |  | 100% → 0% | none → 63.9d | DAM3-C-ENV-M-1371 → DAM3-C-ENV-M-1371, DAM3-C-B7-M-370 | resources Plumber [48 h]; Construction Cost [37600.2] → Plumber [48 h]; Construction Cost [58584] |
| DAM3-C-ENV-M-1391 | Access Ladder for GRP Tank | 2026-06-08 A → 2026-12-09 (+184d) | 2026-06-13 A → 2026-12-12 (+182d) |  | 100% → 0% | none → 63.9d |  | resources Plumber [32 h]; Construction Cost [18800.1] → Plumber [32 h]; Construction Cost [58584] |
| 1 | **GRP Tank Foundation** | 2026-04-09 → 2026-07-27 (+109d) | 2026-05-24 → 2026-08-27 (+95d) |  |  |  |  |  |

| ID | Task | Start | Finish | Duration | Complete | Total float | Predecessors | Other |
| --- | --- | --- | --- | --- | --- | --- | --- | --- |
| DAM3-C-GRP-S-0101 | Excavation for Foundation | 2026-04-09 A → 2026-07-27 A (+109d) | 2026-04-16 A → 2026-07-27 A (+102d) |  |  |  |  | resources General Labour [64 h]; Truck [32 h]; Excavator [32 h]; Mini Roller Compactor [32 h]; Construction Cost [4998.62] → General Labour [64 h]; Truck [32 h]; Excavator [32 h]; Mini Roller Compactor [32 h]; Construction Cost [9001.87] |
| DAM3-C-GRP-S-0102 | Vapour Barrier for Foundation | 2026-04-20 A → 2026-08-06 A (+108d) | 2026-04-20 A → 2026-08-06 A (+108d) |  |  |  |  | resources General Labour [32 h]; Construction Cost [4998.62] → General Labour [32 h]; Construction Cost [9001.87] |
| DAM3-C-GRP-S-0103 | Lean Concrete Below Foundation | 2026-04-20 A → 2026-08-06 A (+108d) | 2026-04-20 A → 2026-08-06 A (+108d) |  |  |  |  | resources Mason [32 h]; Construction Cost [9997.23] → Mason [32 h]; Construction Cost [18003.8] |
| DAM3-C-GRP-S-0104 | Rebar for Foundation | 2026-04-22 A → 2026-08-11 A (+111d) | 2026-04-27 A → 2026-08-16 A (+111d) |  |  |  |  | resources Steel Fixer [64 h]; Construction Cost [19994.5] → Steel Fixer [64 h]; Construction Cost [36007.5] |
| DAM3-C-GRP-S-0105 | Formwork for Foundation | 2026-04-22 A → 2026-08-12 A (+112d) | 2026-04-30 A → 2026-08-23 A (+115d) |  |  |  |  | resources Carperter [64 h]; Construction Cost [9997.23] → Carperter [64 h]; Construction Cost [18003.8] |
| DAM3-C-GRP-S-0106 | Pouring Concrete for Foundation | 2026-05-02 A → 2026-08-18 A (+108d) | 2026-05-02 A → 2026-08-23 A (+113d) |  |  |  |  | resources Carperter [16 h]; Mason [16 h]; Steel Fixer [16 h]; Concrete Mixer [8 h]; Construction Cost [34990.3] → Carperter [16 h]; Mason [16 h]; Steel Fixer [16 h]; Concrete Mixer [8 h]; Construction Cost [63013.1] |
| DAM3-C-GRP-S-0107 | Damp proof /Bitumin paint on Foundation | 2026-05-18 A → 2026-08-24 A (+98d) | 2026-05-20 A → 2026-08-25 A (+97d) |  |  |  |  | resources Painter [32 h]; Construction Cost [4998.62] → Painter [32 h]; Construction Cost [9001.87] |
| DAM3-C-GRP-S-0108 | Backfilling / Compaction Around Foundation | 2026-05-21 A → 2026-08-26 A (+97d) | 2026-05-24 A → 2026-08-27 A (+95d) |  |  |  |  | resources General Labour [112 h]; Truck [56 h]; Mini Roller Compactor [56 h]; Wheel Loader [56 h]; Construction Cost [9997.23] → General Labour [112 h]; Truck [56 h]; Mini Roller Compactor [56 h]; Wheel Loader [56 h]; Construction Cost [18003.8] |
| 2 | **Pump Shed** | 2026-05-02 → 2026-07-01 (+60d) | 2026-07-30 → 2026-12-06 (+129d) |  |  |  |  |  |
| DAM3-C-PR-S-108 | Excavation for Footings | 2026-05-02 A → 2026-07-01 A (+60d) | 2026-05-05 A → 2026-07-02 A (+58d) |  |  |  | Installation of GRP Pipes for Sewer SS, DAM3-E-SA-C-890 → DAM3-C-ENV-SW-486, DAM3-E-SA-C-890 | resources General Labour [64 h]; Truck [32 h]; Excavator [32 h]; Mini Roller Compactor [32 h]; Construction Cost [691.18] → General Labour [64 h]; Truck [32 h]; Excavator [32 h]; Mini Roller Compactor [32 h]; Construction Cost [649.57] |
| DAM3-C-PR-S-298 | Damp proof /Bitumin paint on Footing Sides | 2026-05-18 A → 2026-07-28 A (+71d) | 2026-05-20 A → 2026-07-28 A (+69d) |  |  |  | DAM3-C-B1-S-106 → DAM3-C-PR-S-148 | resources Painter [32 h]; Construction Cost [691.18] → Painter [32 h]; Construction Cost [649.57] |
| DAM3-C-PR-S-378 | Backfilling / Compaction Around Footings to Bottom of Grade Beams | 2026-05-21 A → 2026-07-29 A (+69d) | 2026-05-31 A → 2026-08-03 A (+64d) |  |  |  |  | resources General Labour [80 h]; Truck [40 h]; Mini Roller Compactor [40 h]; Wheel Loader [40 h]; Construction Cost [1382.36] → General Labour [80 h]; Truck [40 h]; Mini Roller Compactor [40 h]; Wheel Loader [40 h]; Construction Cost [1299.14] |
| DAM3-C-PR-S-188 | Pedestal including anchor bolts | 2026-06-04 A → 2026-08-17 A (+74d) | 2026-06-06 A → 2026-08-17 A (+72d) |  |  |  | DAM3-C-B1-S-340 SS → DAM3-C-PR-S-228 SS | resources Mason [16 h]; Structural Steel Fixer [16 h]; Construction Cost [691.18] → Mason [16 h]; Structural Steel Fixer [16 h]; Construction Cost [1299.14] |
| DAM3-C-PR-S-268 | Rebar for Ground Slab | 2026-07-15 A → 2026-08-25 A (+41d) | 2026-07-16 A → 2026-08-26 A (+41d) |  |  |  | DAM3-C-B1-S-379 → DAM3-C-PR-S-348 | resources Steel Fixer [64 h]; Construction Cost [13735.1] → Steel Fixer [64 h]; Construction Cost [12070.6] |
| DAM3-C-PR-S-278 | Formwork for Ground Slab | 2026-07-16 A → 2026-08-26 A (+41d) | 2026-07-16 A → 2026-08-26 A (+41d) |  |  |  | DAM3-C-PR-S-268, DAM3-C-PR-S-268 FF, DAM3-C-ENV-M-1391 → DAM3-C-PR-S-268 | resources Carperter [64 h]; Construction Cost [3433.78] → Carperter [64 h]; Construction Cost [8263.6] |
| DAM3-C-PR-S-128 | Installation of Columns | 2026-07-07 A → 2026-08-30 A (+54d) | 2026-07-07 A → 2026-08-30 A (+54d) |  |  |  |  | resources Structural Steel Fixer [48 h]; Mobile Crane [24 h]; Construction Cost [8985.34] → Structural Steel Fixer [48 h]; Mobile Crane [24 h]; Construction Cost [7794.85] |
| DAM3-C-PR-S-358 | Installation of Raft & Purlins | 2026-07-08 A → 2026-08-30 A (+53d) | 2026-07-08 A → 2026-08-30 A (+53d) |  |  |  |  | resources Structural Steel Fixer [64 h]; Mobile Crane [32 h]; Construction Cost [13823.6] → Structural Steel Fixer [64 h]; Mobile Crane [32 h]; Construction Cost [11042.7] |
| DAM3-C-PR-S-368 | Installation of Roof Sheet | 2026-07-11 A → 2026-08-31 A (+51d) | 2026-07-30 A → 2026-08-31 A (+32d) |  |  |  | DAM3-C-PR-S-358 SS → DAM3-C-PR-S-358 | resources Structural Steel Fixer [32 h]; Mobile Crane [16 h]; Construction Cost [20735.4] → Structural Steel Fixer [32 h]; Mobile Crane [16 h]; Construction Cost [19487.1] |
| DAM3-C-PR-S-288 | Concrete Pad | 2026-06-17 A → 2026-12-01 (+167d) | 2026-06-20 A → 2026-12-06 (+169d) |  | 100% → 0% | none → 68d | DAM3-C-B1-S-382 → DAM3-C-PR-S-178 | resources Mason [80 h]; Construction Cost [1382.36] → Mason [80 h]; Construction Cost [1299.14] |
| DAM3-C-ENV-E-176 | Installation of Main MCC | 2026-09-24 A → 2026-12-01 (+68d) | 2026-10-12 A → 2026-12-02 (+51d) |  | 100% → 0% | none → 54d | DAM3-C-ENV-M-1341 SS → DAM3-C-ENV-M-1341 | resources Electrician [32 h]; Construction Cost [12828.3] → Electrician [32 h]; Construction Cost [13498.4] |
| DAM3-C-ENV-E-236 | Installation of panel boards | 2026-09-24 A → 2026-12-01 (+68d) | 2026-10-12 A → 2026-12-02 (+51d) |  | 100% → 0% | none → 58d |  | resources Electrician [32 h]; Construction Cost [5175.56] → Electrician [32 h]; Construction Cost [5953.91] |
| DAM3-C-ENV-E-1321 | Installation of wiring devices | 2026-09-24 A → 2026-12-03 (+70d) | 2026-10-12 A → 2026-12-08 (+57d) | 2d → 5d | 100% → 0% | none → 64d | DAM3-C-ENV-M-1301 SS, DAM3-C-ENV-M-1361 SS → DAM3-C-ENV-M-1301, DAM3-C-ENV-M-1361 | resources Electrician [80 h]; Construction Cost [3826.99] → Electrician [80 h]; Construction Cost [5632.31] |
| DAM3-C-ENV-E-1341 | Installation of Cable tray | 2026-09-05 A → 2026-12-03 (+89d) | 2026-10-01 A → 2026-12-08 (+68d) | 2d → 5d | 100% → 0% | none → 58d | DAM3-C-ENV-E-236 SS, DAM3-E-ST-E-210 → DAM3-C-ENV-E-236, DAM3-E-ST-E-210 | resources Electrician [80 h]; Construction Cost [1603.54] → Electrician [80 h]; Construction Cost [3563.73] |
| DAM3-C-ENV-E-1331 | Installation of Programmable Logis Controller | 2026-09-15 A → 2026-12-16 (+92d) | 2026-09-19 A → 2026-12-20 (+92d) | 1d → 4d | 100% → 0% | none → 54d | DAM3-C-B1-E-153 SS, DAM3-E-SA-E-1180, DAM3-E-ST-E-0270 → DAM3-C-ENV-E-196, DAM3-E-SA-E-1180, DAM3-E-ST-E-0270 | resources Electrician [112 h]; Construction Cost [159248] → Electrician [112 h]; Construction Cost [189531] |
| 4 | **EXTERNAL ELECTRICAL WORKS** | 2026-08-01 → 2026-11-23 (+114d) | 2026-10-27 → 2027-01-26 (+91d) |  |  |  |  |  |
| DAM3-C-ENV-E-400 | Installation of UPVC Pipe | 2026-09-02 A → 2026-11-23 (+82d) | 2026-09-24 A → 2026-11-28 (+65d) |  | 100% → 0% | none → 5d | DAM3-C-B6-A-620 → DAM3-C-ENV-WS-786 SS | resources Electrician [80 h]; Construction Cost [67472.1] → Electrician [80 h]; Construction Cost [76356.2] |
| DAM3-C-ENV-E-410 | Construction of Concrete encased duct bank | 2026-08-25 A → 2026-11-29 (+96d) | 2026-09-24 A → 2026-12-07 (+74d) | 10d → 8d | 100% → 0% | none → 5d | DAM3-C-ENV-E-400, DAM3-C-ENV-E-400 FF → DAM3-C-ENV-E-400, DAM3-P-ST-M-510, DAM3-P-ST-E-370, DAM3-C-B3-M-860 | resources Electrician [160 h]; Construction Cost [269888] → Electrician [160 h]; Construction Cost [687206] |
| DAM3-C-ENV-E-420 | Installation of Sleeves for lighting poles | 2026-09-05 A → 2026-12-08 (+94d) | 2026-09-08 A → 2026-12-13 (+96d) |  | 100% → 0% | none → 5d |  | resources Electrician [80 h]; Construction Cost [6588.03] → Electrician [80 h]; Construction Cost [19588.8] |
| DAM3-C-ENV-E-390 | Installation of Telecom manhole | 2026-09-02 A → 2026-12-14 (+103d) | 2026-09-09 A → 2026-12-17 (+99d) | 10d → 4d | 100% → 0% | none → 5d |  | resources Electrician [160 h]; Construction Cost [54888.3] → Electrician [160 h]; Construction Cost [120350] |
| DAM3-C-ENV-E-450 | Foundation for Lighting poles | 2026-08-01 A → 2026-12-19 (+140d) | 2026-09-09 A → 2026-12-23 (+105d) |  | 100% → 0% | none → 5d |  | resources Excavator [40 h]; Electrician [80 h]; Construction Cost [13176] → Excavator [40 h]; Electrician [80 h]; Construction Cost [19588.8] |
| DAM3-C-ENV-E-440 | Installation of Lighting poles | 2026-09-24 A → 2026-12-24 (+91d) | 2026-10-12 A → 2026-12-29 (+78d) | 7d → 5d | 100% → 0% | none → 5d | DAM3-C-ENV-E-450, DAM3-P-ST-E-260, S001-C-TC-ENV-F-1051 → DAM3-C-ENV-E-450, DAM3-P-ST-E-260 | resources Mobile Crane [56 h]; Excavator [56 h]; Electrician [112 h]; Construction Cost [72468.9] → Mobile Crane [56 h]; Excavator [56 h]; Electrician [112 h]; Construction Cost [156710] |
| DAM3-C-ENV-E-430 | Installation of Lighting Fixture | 2026-10-01 A → 2026-12-30 (+90d) | 2026-10-03 A → 2027-01-04 (+93d) |  | 100% → 0% | none → 5d |  | resources Mobile Crane [40 h]; Electrician [80 h]; Construction Cost [26352.1] → Mobile Crane [40 h]; Electrician [80 h]; Construction Cost [39177.6] |
| DAM3-C-ENV-E-460 | Electrical Manhole | 2026-08-01 A → 2027-01-13 (+165d) | 2026-09-05 A → 2027-01-20 (+137d) |  | 100% → 0% | none → 17d | DAM3-C-B7-E-223 → DAM3-C-ENV-E-380 | resources Electrician [112 h]; Construction Cost [111551] → Electrician [112 h]; Construction Cost [253329] |
| DAM3-C-ENV-E-480 | Installation of Street Lighting Feeder pillars & KWH meter | 2026-09-10 A → 2027-01-21 (+133d) | 2026-10-27 → 2027-01-26 (+91d) |  | 20% → 0% | 2.75d → 23.7d | DAM3-C-B7-E-113 → DAM3-C-ENV-E-470 SS | resources Electrician [80 h]; Construction Cost [105502] → Electrician [80 h]; Construction Cost [220842] |
| 3 | **FENCES AND GATES** | 2026-08-22 → 2027-01-05 (+136d) | 2026-11-01 → 2027-02-16 (+107d) |  |  |  |  |  |
| DAM3-C-ENV-S-1374 | Excavation for Fence | 2026-08-22 A → 2027-01-05 (+136d) | 2026-08-24 A → 2027-01-06 (+135d) | 7d → 2d | 100% → 0% | none → 5d | DAM3-C-ENV-E-400 → DAM3-C-ENV-E-430 | resources General Labour [112 h]; Equipment Operator [112 h]; Truck [56 h]; Excavator [56 h]; Mini Roller Compactor [56 h]; Construction Cost [460.17] → General Labour [112 h]; Equipment Operator [112 h]; Truck [56 h]; Excavator [56 h]; Mini Roller Compactor [56 h]; Construction Cost [597.56] |
| DAM3-C-ENV-S-1354 | Vapour Barrier for Fence | 2026-08-24 A → 2027-01-07 (+136d) | 2026-08-25 A → 2027-01-11 (+139d) |  | 100% → 0% | none → 6d |  | resources General Labour [64 h]; Construction Cost [230.39] → General Labour [64 h]; Construction Cost [298.78] |
| DAM3-C-ENV-S-1274 | Lean Concrete Below Fence | 2026-08-24 A → 2027-01-12 (+141d) | 2026-08-25 A → 2027-01-16 (+144d) |  | 100% → 0% | none → 6d |  | resources Mason [64 h]; Construction Cost [460.17] → Mason [64 h]; Construction Cost [597.56] |
| DAM3-C-ENV-S-1344 | Damp proof /Bitumin paint on Footing Sides | 2026-08-29 A → 2027-02-01 (+156d) | 2026-08-29 A → 2027-02-02 (+157d) |  | 100% → 0% | none → 6d | DAM3-C-B7-S-106 → DAM3-C-ENV-S-1284 | resources Painter [32 h]; Construction Cost [230.39] → Painter [32 h]; Construction Cost [298.78] |
| DAM3-C-ENV-S-1364 | Backfilling / Compaction Around Footings | 2026-08-30 A → 2027-02-03 (+157d) | 2026-08-31 A → 2027-02-07 (+160d) | 7d → 4d | 100% → 0% | none → 6d |  | resources General Labour [112 h]; Truck [56 h]; Mini Roller Compactor [56 h]; Equipment Operator [112 h]; Wheel Loader [56 h]; Construction Cost [460.17] → General Labour [112 h]; Truck [56 h]; Mini Roller Compactor [56 h]; Equipment Operator [112 h]; Wheel Loader [56 h]; Construction Cost [597.56] |
| DAM3-C-ENV-S-1334 | Installation of base plate | 2026-10-19 → 2027-02-08 (+112d) | 2026-10-24 → 2027-02-09 (+108d) | 5d → 2d |  | 0.75d → 6d |  | resources Carperter [80 h]; Construction Cost [920.96] → Carperter [80 h]; Construction Cost [1195.12] |
| DAM3-C-ENV-S-1324 | Installation of steel members | 2026-10-25 → 2027-02-10 (+108d) | 2026-11-01 → 2027-02-11 (+102d) | 7d → 2d |  | 0.75d → 6d |  | resources Steel Fixer [112 h]; Construction Cost [1841.3] → Steel Fixer [112 h]; Construction Cost [2390.24] |
| DAM3-C-ENV-S-1294 | Installation of steel fence | 2026-10-25 → 2027-02-13 (+111d) | 2026-10-26 → 2027-02-14 (+111d) |  |  | 1.75d → 6d | DAM3-C-ENV-S-1324 SS → DAM3-C-ENV-S-1324 | resources Mason [32 h]; Carperter [32 h]; Concrete Mixer [16 h]; Steel Fixer [32 h]; Equipment Operator [32 h]; Construction Cost [1841.3] → Mason [32 h]; Carperter [32 h]; Concrete Mixer [16 h]; Steel Fixer [32 h]; Equipment Operator [32 h]; Construction Cost [2390.24] |
| DAM3-C-ENV-S-1384 | Installation of steel gates | 2026-10-27 → 2027-02-15 (+111d) | 2026-10-28 → 2027-02-16 (+111d) |  |  | 1.75d → 6d |  | resources Mason [32 h]; Carperter [32 h]; Concrete Mixer [16 h]; Steel Fixer [32 h]; Equipment Operator [32 h]; Construction Cost [2045.89] → Mason [32 h]; Carperter [32 h]; Concrete Mixer [16 h]; Steel Fixer [32 h]; Equipment Operator [32 h]; Construction Cost [2343.91] |
| 2 | **ROAD WORKS** | 2026-07-25 → 2027-01-07 (+166d) | 2026-10-31 → 2027-02-15 (+107d) |  |  |  |  |  |
| DAM3-C-ENV-R-1390 | SubGrade Preparation & Compaction | 2026-07-25 A → 2027-01-07 (+166d) | 2026-09-09 A → 2027-01-12 (+125d) | 7d → 5d | 100% → 0% | none → 5d | DAM3-E-MT-EX-2050, DAM3-C-ENV-E-410 → DAM3-E-MT-EX-2050, DAM3-C-ENV-S-1374 | resources General Labour [112 h]; Equipment Operator [112 h]; Motor Grader [56 h]; Roller Compactor [56 h]; Construction Cost [156634] → General Labour [112 h]; Equipment Operator [112 h]; Motor Grader [56 h]; Roller Compactor [56 h]; Construction Cost [319796] |
| DAM3-C-ENV-R-1400 | Aggregate Base Course Layer | 2026-09-09 A → 2027-01-13 (+126d) | 2026-09-24 A → 2027-01-18 (+116d) | 2d → 5d | 100% → 0% | none → 5d |  | resources General Labour [32 h]; Mini Roller Compactor [16 h]; Equipment Operator [32 h]; Construction Cost [134468] → General Labour [32 h]; Mini Roller Compactor [16 h]; Equipment Operator [32 h]; Construction Cost [262382] |
| DAM3-C-ENV-R-1460 | Curb Stones | 2026-09-19 A → 2027-01-19 (+122d) | 2026-10-19 → 2027-01-23 (+96d) | 7d → 4d | 98% → 0% | 0d → 5d | DAM3-E-SA-R-790, DAM3-E-SA-R-800, DAM3-E-SA-R-810, DAM3-E-SA-R-820, DAM3-E-SA-R-850, DAM3-P-ST-EX-140, DAM3-C-ENV-R-1400 SS → DAM3-E-SA-R-790, DAM3-E-SA-R-800, DAM3-E-SA-R-810, DAM3-E-SA-R-820, DAM3-E-SA-R-850, DAM3-P-ST-EX-140, DAM3-C-ENV-R-1400 | resources Mason [224 h]; Construction Cost [131462] → Mason [224 h]; Construction Cost [291157] |
| DAM3-C-ENV-R-1480 | Interlock Tiles | 2026-09-24 A → 2027-01-24 (+122d) | 2026-10-21 → 2027-01-26 (+97d) | 7d → 3d | 60% → 0% | 0d → 5d | DAM3-C-ENV-R-1460 SS, DAM3-P-ST-EX-130 → DAM3-C-ENV-R-1460, DAM3-P-ST-EX-130 | resources Mason [224 h]; Construction Cost [195148] → Mason [224 h]; Construction Cost [475634] |
| DAM3-C-ENV-R-890 | Supply and install geotextile sheet | 2026-10-19 → 2027-01-27 (+100d) | 2026-10-20 → 2027-01-28 (+100d) |  |  | 0d → 5d | DAM3-C-ENV-R-1480 SS → DAM3-C-ENV-R-1480 | resources General Labour [32 h]; Construction Cost [12773] → General Labour [32 h]; Construction Cost [47639] |
| DAM3-C-ENV-R-1490 | Gravel Bedding | 2026-10-21 → 2027-01-30 (+101d) | 2026-10-22 → 2027-01-31 (+101d) |  |  | 0d → 5d | DAM3-E-SA-R-880, DAM3-E-SA-R-890, DAM3-E-SA-R-910, DAM3-C-ENV-R-890 → DAM3-E-SA-R-880, DAM3-E-SA-R-890, DAM3-E-SA-R-910, DAM3-P-ST-EX-150, DAM3-C-ENV-R-890 | resources General Labour [32 h]; Mini Roller Compactor [16 h]; Truck [16 h]; Construction Cost [17666.6] → General Labour [32 h]; Mini Roller Compactor [24 h]; Truck [24 h]; Construction Cost [57375.4] |
| DAM3-C-ENV-R-1500 | Road Signs | 2026-09-24 A → 2027-02-01 (+130d) | 2026-10-26 → 2027-02-03 (+100d) | 5d → 3d | 50% → 0% | 0d → 5d |  | resources Mason [80 h]; Construction Cost [50047] → Mason [80 h]; Construction Cost [103946] |
| DAM3-C-ENV-R-1450 | Prime Coat | 2026-10-11 A → 2027-02-04 (+116d) | 2026-10-12 A → 2027-02-04 (+115d) |  | 100% → 0% | none → 7d |  | resources General Labour [16 h]; Construction Cost [34870.5] → General Labour [16 h]; Construction Cost [71708] |
| DAM3-C-ENV-R-1410 | Asphalt Concrete Base Course Layer | 2026-10-11 A → 2027-02-06 (+118d) | 2026-10-31 A → 2027-02-07 (+99d) |  | 100% → 0% | none → 7d |  | resources General Labour [32 h]; Paver [16 h]; Equipment Operator [32 h]; Construction Cost [313833] → General Labour [32 h]; Paver [16 h]; Equipment Operator [32 h]; Construction Cost [645372] |
| DAM3-C-ENV-R-1470 | Tack Coat | 2026-10-17 A → 2027-02-08 (+114d) | 2026-10-27 → 2027-02-08 (+104d) |  | 25% → 0% | 0d → 7d |  | resources General Labour [16 h]; Construction Cost [25698.4] → General Labour [16 h]; Construction Cost [52885.1] |
| DAM3-C-ENV-R-1420 | Asphalt Concrete Wearing Course Layer | 2026-10-18 A → 2027-02-09 (+114d) | 2026-10-28 → 2027-02-10 (+105d) |  | 25% → 0% | 0d → 7d |  | resources General Labour [32 h]; Paver [16 h]; Equipment Operator [32 h]; Construction Cost [231283] → General Labour [32 h]; Paver [16 h]; Equipment Operator [32 h]; Construction Cost [475966] |
| DAM3-C-ENV-R-1430 | Retroreflective Thermoplastic White Traffic lines | 2026-10-28 → 2027-02-11 (+106d) | 2026-10-31 → 2027-02-13 (+105d) |  |  | 0d → 7d |  | resources General Labour [32 h]; Construction Cost [36190.2] → General Labour [32 h]; Construction Cost [37884.8] |
| DAM3-C-ENV-R-1440 | Installation of Concrete wheel bumper | 2026-10-28 → 2027-02-14 (+109d) | 2026-10-31 → 2027-02-15 (+107d) |  |  | 0d → 7d | DAM3-C-ENV-R-1430 SS, DAM3-P-ST-EX-90 → DAM3-C-ENV-R-1430, DAM3-P-ST-EX-90 | resources Mason [64 h]; Construction Cost [14531.4] → Mason [64 h]; Construction Cost [32019.8] |
| 5 | **LANDSCAPING** | 2026-10-21 → 2027-02-01 (+103d) | 2026-10-27 → 2027-02-14 (+110d) |  |  |  |  |  |
| DAM3-C-ENV-R-1510 | Planting of trees | 2026-10-21 → 2027-02-01 (+103d) | 2026-10-24 → 2027-02-06 (+105d) | 3d → 5d |  | 2.75d → 8d | DAM3-C-ENV-R-1490 SS, DAM3-E-SA-R-900, DAM3-E-SA-R-920, DAM3-E-SA-R-950, DAM3-E-SA-R-960 → DAM3-C-ENV-R-1490, DAM3-E-SA-R-900, DAM3-E-SA-R-920, DAM3-E-SA-R-950, DAM3-E-SA-R-960 | resources General Labour [80 h]; Mini Roller Compactor [40 h]; Truck [40 h]; Construction Cost [22117.8] → General Labour [80 h]; Mini Roller Compactor [40 h]; Truck [40 h]; Construction Cost [110132] |
| DAM3-C-ENV-R-1520 | Planting of shrubs | 2026-10-25 → 2027-02-07 (+105d) | 2026-10-27 → 2027-02-14 (+110d) | 3d → 7d |  | 2.75d → 8d |  | resources General Labour [112 h]; Mini Roller Compactor [56 h]; Truck [56 h]; Construction Cost [25399.9] → General Labour [112 h]; Mini Roller Compactor [56 h]; Truck [56 h]; Construction Cost [53968] |
| 6 | **TESTING AND COMMISSIONING (10%)** | 2026-04-25 → 2026-06-17 (+53d) | 2026-10-25 → 2027-02-24 (+122d) |  |  |  |  |  |
| 3 | **TESTING AND COMMISSIONING 900 Sq.m-2** | 2026-04-25 → 2026-06-28 (+64d) | 2026-10-25 → 2027-02-24 (+122d) |  |  |  |  |  |
| P001-C-TC-M-3406 | Testing & Commissioning of Sewer & Drainage Pipes | 2026-04-25 A → 2026-06-28 A (+64d) | 2026-09-24 A → 2026-10-08 A (+14d) |  |  |  | DAM3-C-B6-M-510, DAM3-C-B5-M-1130, DAM3-C-B4-M-820, DAM3-C-B3-M-820, DAM3-C-B2-M-200 → DAM3-C-B6-M-510, DAM3-C-B5-M-1130, DAM3-C-B4-M-820, DAM3-C-B3-M-820, DAM3-C-B2-M-200, DAM3-C-B11-M-200 | resources Plumber [112 h]; Construction Cost [12987] → Plumber [112 h]; Construction Cost [63346.6] |
| P001-C-TC-M-3416 | Testing and Commissioning of Electric Water Heater | 2026-09-15 A → 2026-10-19 A (+34d) | 2026-10-19 → 2026-12-13 (+55d) |  |  | 9.85d → 50d |  | resources Plumber [112 h]; Construction Cost [1440] → Plumber [1440 h]; Construction Cost [2987.25] |
| P001-C-TC-M-3426 | Testing and Commissioning of Sanitary Fixtures | 2026-09-24 A → 2026-12-17 (+84d) | 2026-10-19 → 2026-12-24 (+66d) |  | 90% → 0% | 9.85d → 44.7d | DAM3-C-B6-M-500, DAM3-C-B5-M-1120, DAM3-C-B4-M-810, DAM3-C-B3-M-810, DAM3-C-B2-M-190, P001-C-TC-M-3416 SS → DAM3-C-B6-M-500, DAM3-C-B5-M-1120, DAM3-C-B4-M-810, DAM3-C-B3-M-810, DAM3-C-B2-M-190 | resources Plumber [112 h]; Construction Cost [14688] → Plumber [112 h]; Construction Cost [32707.3] |
| P001-C-TC-M-3376 | Testing and Commissioning of Fire Fighting Pipes | 2026-09-08 A → 2027-01-18 (+132d) | 2026-10-24 → 2027-01-25 (+93d) |  | 90% → 0% | 5.85d → 22.7d |  | resources Pipe Fitter [112 h]; Construction Cost [54639.9] → Pipe Fitter [112 h]; Construction Cost [118857] |
| P001-C-TC-M-3396 | Testing & Commissioning of Water Supply Pipes | 2026-09-08 A → 2027-01-18 (+132d) | 2026-09-24 A → 2027-01-25 (+123d) |  | 100% → 0% | none → 19.7d |  | resources Plumber [112 h]; Construction Cost [17651.2] → Plumber [112 h]; Construction Cost [38284] |
| P001-C-TC-M3446 | Testing and Commissioning of Exhaust Fan | 2026-09-15 A → 2027-01-20 (+127d) | 2026-10-24 → 2027-01-27 (+95d) |  | 90% → 0% | 6.55d → 15d |  | resources AC Technician [112 h]; Construction Cost [8437.5] → AC Technician [112 h]; Construction Cost [13737.5] |
| P001-C-TC-M-3456 | Testing and Commissioning of Wall propeller type exhaust fans | 2026-09-15 A → 2027-01-25 (+132d) | 2026-10-24 → 2027-02-01 (+100d) |  | 90% → 0% | 6.45d → 11d |  | resources AC Technician [112 h]; Construction Cost [15750] → AC Technician [112 h]; Construction Cost [76887.8] |

| ID | Task | Start | Finish | Duration | Complete | Total float | Predecessors | Other |
| --- | --- | --- | --- | --- | --- | --- | --- | --- |
| P001-C-TC-M-3436 | Testing and Commissioning of HVAC Duct | 2026-07-21 A → 2027-01-27 (+190d) | 2026-09-24 A → 2027-02-03 (+132d) | 2d → 7d | 100% → 0% | none → 9d | DAM3-C-B6-M-450, DAM3-C-B5-M-1070, DAM3-C-B4-M-760, DAM3-C-B3-M-760, DAM3-C-B2-M-140, P001-C-TC-M-3416 → DAM3-C-B6-M-450, DAM3-C-B5-M-1070, DAM3-C-B4-M-760, DAM3-C-B3-M-760, DAM3-C-B2-M-140 | resources AC Technician [112 h]; Construction Cost [127935] → AC Technician [112 h]; Construction Cost [245430] |
| P001-C-TC-M-3386 | Testing and Commissioning of Fire Hose Cabinet | 2026-09-24 A → 2027-02-20 (+149d) | 2026-10-24 → 2027-02-23 (+122d) |  | 90% → 0% | 6.25d → 0d | DAM3-C-B6-M-630, DAM3-C-B5-M-1250, DAM3-C-B4-M-940, DAM3-C-B3-M-940, DAM3-C-B2-M-320 → DAM3-C-B6-M-630, DAM3-C-B5-M-1250, DAM3-C-B4-M-940, DAM3-C-B3-M-940, DAM3-C-B2-M-320, DAM3-C-B1-M-320, DAM3-C-B7-M-320, DAM3-C-B8-M-320, DAM3-C-B9-M-320, DAM3-C-B10-M-320, DAM3-C-B11-M-320 | resources Pipe Fitter [112 h]; Construction Cost [10080] → Pipe Fitter [720 h]; Construction Cost [24887.2] |
| P001-C-TC-E-3506 | Testing and Commissioning of Wiring Devices | 2026-10-08 A → 2027-01-23 (+107d) | 2026-10-24 → 2027-01-30 (+98d) | 4d → 7d | 90% → 0% | 6.55d → 15.7d | DAM3-C-B6-E-403, DAM3-C-B5-E-863, DAM3-C-B4-E-633, DAM3-C-B3-E-633, DAM3-C-B2-E-173, DAM3-C-B2-E-203 → DAM3-C-B6-E-403, DAM3-C-B5-E-863, DAM3-C-B4-E-633, DAM3-C-B3-E-633, DAM3-C-B2-E-173, P001-C-TC-M-3416, DAM3-C-B9-E-213 | resources Electrician [112 h]; Construction Cost [18756] → Electrician [112 h]; Construction Cost [33207.2] |
| P001-C-TC-E-3496 | Testing and Commissioning of Fire Alarm System | 2026-10-08 A → 2027-02-01 (+116d) | 2026-10-19 → 2027-02-02 (+106d) |  | 90% → 0% | 9.85d → 12.7d | P001-C-TC-M-3426, P001-C-TC-M-3416, DAM3-C-B6-E-353, DAM3-C-B5-E-813, DAM3-C-B4-E-583 SS, DAM3-C-B3-E-583, DAM3-C-B2-E-123 → P001-C-TC-M-3426, P001-C-TC-M-3416, DAM3-C-B6-E-353, DAM3-C-B5-E-813, DAM3-C-B4-E-583, DAM3-C-B3-E-583, DAM3-C-B2-E-123 | resources Electrician [32 h]; Construction Cost [16497] → Electrician [32 h]; Construction Cost [139734] |
| P001-C-TC-E-3466 | Testing and Commissioning of Disconnect Switches | 2026-10-08 A → 2027-02-04 (+119d) | 2026-10-24 → 2027-02-11 (+110d) | 1d → 7d | 90% → 0% | 6.45d → 9d | P001-C-TC-M-3436, P001-C-TC-M-3456 SS, DAM3-C-B6-E-433, DAM3-C-B5-E-893, DAM3-C-B4-E-663, DAM3-C-B3-E-663, DAM3-C-B2-E-203 → P001-C-TC-M-3436, P001-C-TC-M-3456, P001-C-TC-M3446, DAM3-C-B6-E-433, DAM3-C-B5-E-893, DAM3-C-B4-E-663, DAM3-C-B3-E-663, DAM3-C-B2-E-203, DAM3-C-B1-E-203, DAM3-C-B7-E-203, DAM3-C-B8-E-203, DAM3-C-B9-E-203, DAM3-C-B10-E-203, DAM3-C-B11-E-203 | resources Electrician [112 h]; Construction Cost [23337] → Electrician [720 h]; Construction Cost [50288] |
| P001-C-TC-E-3546 | Testing and Commissioning of Access Control System | 2026-10-08 A → 2027-02-09 (+124d) | 2026-10-19 → 2027-02-10 (+114d) |  | 90% → 0% | 9.85d → 8.7d | DAM3-C-B6-E-503 SS, DAM3-C-B5-E-963 SS, DAM3-C-B4-E-733 SS, DAM3-C-B3-E-733 SS, DAM3-C-B2-E-273 SS → DAM3-C-B6-E-503, DAM3-C-B5-E-963, DAM3-C-B4-E-733, DAM3-C-B3-E-733, DAM3-C-B2-E-273 | resources Electrician [32 h]; Construction Cost [21987] → Electrician [32 h]; Construction Cost [45341.1] |
| P001-C-TC-E-3486 | Testing and Commissioning of Grounding | 2026-10-08 A → 2027-02-09 (+124d) | 2026-10-19 → 2027-02-11 (+115d) | 1d → 2d | 90% → 0% | 9.95d → 10.3d | DAM3-C-B6-E-343 SS, DAM3-C-B5-E-803 SS, DAM3-C-B4-E-573 SS, DAM3-C-B3-E-573 SS, DAM3-C-B2-E-113 SS → DAM3-C-B6-E-343, DAM3-C-B5-E-803, DAM3-C-B4-E-573, DAM3-C-B3-E-573, DAM3-C-B2-E-113, DAM3-C-B1-E-113, DAM3-C-B7-E-113, DAM3-C-B8-E-113, DAM3-C-B9-E-113, DAM3-C-B10-E-113, DAM3-C-B11-E-113 | resources Electrician [32 h]; Construction Cost [15374.2] → Electrician [32 h]; Construction Cost [32570.6] |
| P001-C-TC-E-3456 | Testing and Commissioning of Main Distribution Board | 2026-10-08 A → 2027-02-11 (+126d) | 2026-10-25 → 2027-02-14 (+112d) | 2d → 3d | 90% → 0% | 5.85d → 5.7d | DAM3-C-B6-E-423, DAM3-C-B5-E-883, DAM3-C-B4-E-653 SS, DAM3-C-B3-E-653, DAM3-C-B2-E-193, P001-C-TC-M-3376, P001-C-TC-M-3396, P001-C-TC-M3446 SS → DAM3-C-B6-E-423, DAM3-C-B5-E-883, DAM3-C-B4-E-653, DAM3-C-B3-E-653, DAM3-C-B2-E-193, P001-C-TC-E-3496, P001-C-TC-E-3506, P001-C-TC-M-3396, P001-C-TC-M3446, DAM3-C-B11-E-153, DAM3-C-B10-E-153, DAM3-C-B5-E-993, DAM3-C-B5-E-1340, DAM3-C-B5-E-913, DAM3-C-B5-E-803 | resources Electrician [112 h]; Construction Cost [23040] → Electrician [112 h]; Construction Cost [53313.4] |
| P001-C-TC-E-3446 | Testing and Commissioning of LV cables | 2026-10-08 A → 2027-02-14 (+129d) | 2026-10-19 → 2027-02-15 (+119d) | 1d → 2d | 90% → 0% | 9.95d → 6.7d | DAM3-C-B6-E-453, DAM3-C-B5-E-913, DAM3-C-B4-E-683 SS, DAM3-C-B3-E-683 SS, DAM3-C-B2-E-223 → DAM3-C-B6-E-453, DAM3-C-B5-E-913, DAM3-C-B4-E-683, DAM3-C-B3-E-683, DAM3-C-B2-E-223, P001-C-TC-M-3436 | resources Electrician [32 h]; Construction Cost [28530] → Electrician [32 h]; Construction Cost [149517] |
| P001-C-TC-E-3526 | Testing and Commissioning of PP-AC panel | 2026-10-08 A → 2027-02-14 (+129d) | 2026-10-19 → 2027-02-15 (+119d) | 1d → 2d | 90% → 0% | 10.05d → 6.7d | DAM3-C-B6-E-483, DAM3-C-B5-E-943, DAM3-C-B4-E-713, DAM3-C-B3-E-713 SS, DAM3-C-B2-E-253 → DAM3-C-B6-E-483, DAM3-C-B5-E-943, DAM3-C-B4-E-713, DAM3-C-B3-E-713, DAM3-C-B2-E-253, P001-C-TC-M-3376, P001-C-TC-M-3456 | resources Electrician [80 h]; Construction Cost [16470] → Electrician [80 h]; Construction Cost [35542.3] |
| P001-C-TC-E-3516 | Testing and Commissioning of LP panel board | 2026-10-08 A → 2027-02-15 (+130d) | 2026-10-24 → 2027-02-16 (+115d) | 1d → 2d | 90% → 0% | 5.85d → 5.7d | P001-C-TC-E-3456 SS, DAM3-C-B6-E-473, DAM3-C-B5-E-933, DAM3-C-B4-E-703, DAM3-C-B3-E-703 SS, DAM3-C-B2-E-243 → P001-C-TC-E-3456, DAM3-C-B6-E-473, DAM3-C-B5-E-933, DAM3-C-B4-E-703, DAM3-C-B3-E-703, DAM3-C-B2-E-243 | resources Electrician [32 h]; Construction Cost [13680] → Electrician [32 h]; Construction Cost [30214.8] |
| P001-C-TC-E-3566 | Testing and Commissioning of CCTV System | 2026-10-08 A → 2027-02-15 (+130d) | 2026-10-19 → 2027-02-16 (+120d) | 1d → 2d | 90% → 0% | 10.05d → 5.7d | DAM3-C-B6-E-720, DAM3-C-B5-E-1340, DAM3-C-B4-E-1030 SS, DAM3-C-B3-E-1030 SS, DAM3-C-B2-E-410 → DAM3-C-B6-E-720, DAM3-C-B5-E-1340, DAM3-C-B4-E-1030, DAM3-C-B3-E-1030, DAM3-C-B2-E-410 | resources Electrician [32 h]; Construction Cost [59841] → Electrician [32 h]; Construction Cost [125349] |
| P001-C-TC-E-3556 | Testing and Commissioning of Solar power plant | 2026-09-15 A → 2027-02-15 (+153d) | 2026-10-19 → 2027-02-17 (+121d) | 1d → 2d | 90% → 0% | 9.95d → 5.6d | DAM3-C-B6-E-730, DAM3-C-B5-E-1350, DAM3-C-B4-E-1040 SS, DAM3-C-B3-E-1040 SS, DAM3-C-B2-E-420 SS → DAM3-C-B6-E-730, DAM3-C-B5-E-1350, DAM3-C-B4-E-1040, DAM3-C-B3-E-1040, DAM3-C-B2-E-420, DAM3-C-B11-E-420 | resources Electrician [32 h]; Construction Cost [198000] → Electrician [720 h]; Construction Cost [415814] |
| P001-C-TC-E-3536 | Testing and Commissioning of Telephone and data system | 2026-10-08 A → 2027-02-16 (+131d) | 2026-10-19 → 2027-02-17 (+121d) | 1d → 2d | 90% → 0% | 10.05d → 4.7d | DAM3-C-B6-E-443, DAM3-C-B5-E-903, DAM3-C-B4-E-673, DAM3-C-B3-E-673 SS, DAM3-C-B2-E-213 → DAM3-C-B6-E-443, DAM3-C-B5-E-903, DAM3-C-B4-E-673, DAM3-C-B3-E-673, DAM3-C-B2-E-213, P001-C-TC-E-3546, DAM3-C-ENV-WS-826, DAM3-C-B9-E-303, DAM3-C-B3-E-763, DAM3-C-B3-E-613 | resources Electrician [80 h]; Construction Cost [21069] → Electrician [80 h]; Construction Cost [44313.7] |
| P001-C-TC-E-3476 | Testing and Commissioning of Lighting Fixtures | 2026-10-01 A → 2027-02-24 (+146d) | 2026-10-19 → 2027-02-24 (+128d) |  | 90% → 0% | 9.95d → 0d | DAM3-C-B6-E-383, DAM3-C-B5-E-843, DAM3-C-B4-E-613 SS, DAM3-C-B3-E-613 SS, DAM3-C-B2-E-153 → P001-C-TC-E-3496, P001-C-TC-E-3466, P001-C-TC-E-3506, P001-C-TC-M-3396, P001-C-TC-M-3386, DAM3-C-B6-E-383, DAM3-C-B5-E-843, DAM3-C-B4-E-613, DAM3-C-B3-E-613, DAM3-C-B2-E-153, DAM3-C-B1-E-153, DAM3-C-B7-E-153, DAM3-C-B8-E-153, DAM3-C-B9-E-153, DAM3-C-B10-E-153, DAM3-C-B11-E-153 | resources Electrician [16 h]; Construction Cost [64836] → Electrician [16 h]; Construction Cost [171257] |
| 4 | **TESTING AND COMMISSIONING SITE INFRASTRUCTURE** | 2026-06-22 → 2026-10-13 (+113d) | 2026-10-24 → 2027-02-18 (+117d) |  |  |  |  |  |
| 6 | **PUMP ROOM SHED** | 2026-07-22 → 2026-12-01 (+132d) | 2026-10-21 → 2026-12-22 (+62d) |  |  |  |  |  |
| S001-C-TC-M-3576 | Testing & Commissioning of Fire Fighting pump | 2026-09-15 A → 2026-12-01 (+77d) | 2026-10-19 → 2026-12-06 (+48d) | 2d → 5d | 90% → 0% | 9.85d → 68d | DAM3-C-ENV-M-1301, P001-C-TC-E-3496 SS → DAM3-C-ENV-M-1301 | resources Pipe Fitter [80 h]; General Labour [80 h]; Construction Cost [54000] → Pipe Fitter [80 h]; General Labour [80 h]; Construction Cost [51684.5] |
| S001-C-TC-M-3586 | Testing & Commissioning of Booster pump | 2026-09-15 A → 2026-12-01 (+77d) | 2026-10-19 → 2026-12-08 (+50d) | 2d → 7d | 90% → 0% | 9.85d → 66d | DAM3-C-ENV-M-1341, P001-C-TC-M-3426 → DAM3-C-ENV-M-1341 | resources Pipe Fitter [112 h]; General Labour [112 h]; Construction Cost [6300] → Pipe Fitter [360 h]; General Labour [360 h]; Construction Cost [6462.23] |
| S001-C-TC-M-3596 | Testing & Commissioning of GRP tank | 2026-07-22 A → 2026-12-01 (+132d) | 2026-07-23 A → 2026-12-03 (+133d) |  | 100% → 0% | none → 70d |  | resources Plumber [48 h]; General Labour [48 h]; Construction Cost [61200] → Plumber [360 h]; General Labour [360 h]; Construction Cost [104927] |
| S001-C-TC-E-3616 | Testing and Commissioning of Panel Board | 2026-10-12 A → 2026-12-03 (+52d) | 2026-10-19 → 2026-12-05 (+47d) | 1d → 2d | 90% → 0% | 10.65d → 69d |  | resources Electrician [32 h]; Construction Cost [936] → Electrician [32 h]; Construction Cost [36675.7] |
| S001-C-TC-E-3636 | Testing and Commissioning of Grounding | 2026-10-12 A → 2026-12-07 (+56d) | 2026-10-21 → 2026-12-12 (+52d) |  | 90% → 0% | 7.75d → 63d | DAM3-C-B1-E-113 → DAM3-C-ENV-E-186 | resources Electrician [80 h]; Construction Cost [220.5] → Electrician [80 h]; Construction Cost [208.86] |
| S001-C-TC-E-3646 | Testing and Commissioning of Wiring devices | 2026-10-12 A → 2026-12-09 (+58d) | 2026-10-19 → 2026-12-10 (+52d) |  | 90% → 0% | 10.55d → 64d | DAM3-C-ENV-E-1321 SS → DAM3-C-ENV-E-1321 | resources Electrician [32 h]; Construction Cost [692.1] → Electrician [32 h]; Construction Cost [193.73] |
| S001-C-TC-E-3621 | Testing and Commissioning of LV cables | 2026-10-12 A → 2026-12-15 (+64d) | 2026-10-19 → 2026-12-17 (+59d) | 2d → 3d | 90% → 0% | 10.55d → 58d | DAM3-C-B1-E-223 SS → DAM3-C-ENV-E-216 | resources Electrician [80 h]; Construction Cost [412.65] → Electrician [80 h]; Construction Cost [76378.1] |
| S001-C-TC-E-3626 | Testing and Commissioning of Lighting Fixtures | 2026-10-12 A → 2026-12-16 (+65d) | 2026-10-21 → 2026-12-17 (+57d) |  | 90% → 0% | 8.05d → 58d | DAM3-C-B1-E-153 SS → DAM3-C-ENV-E-196 | resources Electrician [32 h]; Construction Cost [1152.45] → Electrician [32 h]; Construction Cost [1429.61] |
| S001-C-TC-E-3656 | Testing and Commissioning of Programmable Logic Controller | 2026-10-12 A → 2026-12-21 (+70d) | 2026-10-21 → 2026-12-22 (+62d) |  | 90% → 0% | 8.05d → 54d | DAM3-C-ENV-E-1331 SS → DAM3-C-ENV-E-1331 | resources Electrician [32 h]; Construction Cost [28800] → Electrician [64 h]; Construction Cost [28288.3] |
| 7 | **EXTERNAL** | 2026-10-15 → 2027-01-05 (+82d) | 2026-10-24 → 2027-02-03 (+102d) |  |  |  |  |  |
| S001-C-TC-EX-E-3646 | Testing and Commissioning of Street Lighting pole | 2026-10-15 A → 2027-01-05 (+82d) | 2026-10-19 → 2027-01-21 (+94d) | 7d → 15d | 90% → 0% | 10.05d → 18d | DAM3-C-ENV-E-430 → DAM3-C-ENV-E-430, DAM3-C-B10-E-153 | resources Electrician [240 h]; Construction Cost [21446.1] → Electrician [240 h]; Construction Cost [35084.4] |
| S001-C-TC-EX-E-3626 | Testing and Commissioning of LV cables | 2026-10-15 A → 2027-01-13 (+90d) | 2026-10-19 → 2027-01-20 (+93d) |  | 90% → 0% | 10.05d → 19d | DAM3-C-B7-E-223 → DAM3-C-ENV-E-380 | resources Electrician [112 h]; Construction Cost [8883] → Electrician [112 h]; Construction Cost [14763.4] |
| S001-C-TC-EX-E-3656 | Testing and Commissioning of Grounding | 2026-10-20 A → 2027-01-27 (+99d) | 2026-10-24 → 2027-02-03 (+102d) |  | 90% → 0% | 6.05d → 17d | DAM3-C-B7-E-113 → DAM3-C-ENV-E-470 | resources Electrician [112 h]; Construction Cost [1759.05] → Electrician [112 h]; Construction Cost [2931.87] |
| 5 | **ENVIRONMENTAL** | 2026-06-22 → 2026-10-13 (+113d) | 2026-10-19 → 2027-02-18 (+122d) |  |  |  |  |  |
| S001-C-TC-ENV-F-1051 | Testing & Commissioning of External Fire Fighting System 200 Dia | 2026-06-22 A → 2026-10-13 A (+113d) | 2026-09-24 A → 2026-11-23 (+60d) |  | 100% → 90% | none → 43.1d |  | resources Pipe Fitter [240 h]; Construction Cost [24300.9] → Pipe Fitter [1440 h]; Construction Cost [72486.4] |
| S001-C-TC-ENV-SW-60 | Testing & Commissioning of Sewer & Drainage System | 2026-06-22 A → 2026-10-13 A (+113d) | 2026-09-24 A → 2027-02-18 (+147d) | 15d → 3d | 100% → 90% | none → 4.7d | GRP pipe service connection → DAM3-C-ENV-SW-546, P001-C-TC-E-3566, P001-C-TC-E-3516, P001-C-TC-E-3486, P001-C-TC-E-3536, P001-C-TC-E-3446, P001-C-TC-E-3526, DAM3-C-ENV-E-480, DAM3-C-B11-E-303, DAM3-C-B10-E-303 | resources Plumber [240 h]; Construction Cost [19571.4] → Plumber [720 h]; Construction Cost [67394.2] |
| S001-C-TC-ENV-WS-11 | Testing & Commissioning of Water Supply System | 2026-06-22 A → 2026-10-19 A (+119d) | 2026-09-24 A → 2026-12-08 (+75d) |  | 100% → 90% | none → 44.6d |  | resources Plumber [240 h]; Construction Cost [13644] → Plumber [1440 h]; Construction Cost [5327.52] |
| S001-C-TC-ENV-SW-70 | Testing & Commissioning of Irrigaiton System | 2026-09-15 A → 2027-01-18 (+125d) | 2026-10-19 → 2027-02-03 (+107d) | 5d → 15d | 90% → 0% | 10.25d → 17d |  | resources Plumber [80 h]; Construction Cost [558] → Plumber [240 h]; Construction Cost [11300.4] |
| S001-C-TC-ENV-3666 | Testing and Commissioning of Main program system & controller | 2026-09-15 A → 2027-01-26 (+133d) | 2026-10-19 → 2027-02-06 (+110d) | 5d → 10d | 90% → 0% | 10.25d → 15d | DAM3-C-ENV-SW-616 SS → DAM3-C-ENV-SW-616, S001-C-TC-EX-E-3626, S001-C-TC-EX-E-3646 | resources Electrician [240 h]; Construction Cost [14400] → Electrician [240 h]; Construction Cost [14943] |
| 1 | **SNAGG WORKS** | 2026-04-25 → 2026-06-17 (+53d) | 2026-06-20 → 2026-10-21 (+123d) |  |  |  |  |  |
| S001-C-TC-E-3676 | External Snagg works | 2026-06-17 A → 2026-06-22 A (+5d) | 2026-06-20 A → 2026-07-05 A (+15d) |  |  |  | DAM3-C-ENV-E-390 → DAM3-C-B3-A-1440 | resources Construction Cost [173196] → Construction Cost [3231301] |
| S001-C-TC-E-3606 | Electrical Snagg works | 2026-06-13 A → 2026-07-05 A (+22d) | 2026-06-20 A → 2026-10-21 (+123d) |  | 100% → 75% | none → 68.05d | DAM3-C-ENV-E-400 → S001-C-TC-E-3676 | resources Construction Cost [199158] → Construction Cost [167105] |
| S001-C-TC-M-100 | Mechanical Snagg works | 2026-06-01 A → 2026-07-05 A (+34d) | 2026-06-04 A → 2026-07-06 A (+32d) | 10d → 5d |  |  | DAM3-C-ENV-E-400 → DAM3-C-B3-A-210 | resources Construction Cost [340975] → Construction Cost [1206604] |
| 7 | **PREOJECT CLOSEOUT** | 2026-10-19 → 2027-02-01 (+105d) | 2026-11-02 → 2027-03-02 (+120d) |  |  |  |  |  |
| 1 | **ENGINEERING** | 2026-10-19 → 2027-02-01 (+105d) | 2026-10-21 → 2027-02-09 (+111d) |  |  |  |  |  |
| 1 | **AS BUILT DRAWINGS** | 2026-10-19 → 2027-02-01 (+105d) | 2026-10-20 → 2027-02-07 (+110d) |  |  |  |  |  |
| 4 | **CIVIL DRAWINGS** | 2026-10-19 → 2027-02-01 (+105d) | 2026-10-19 → 2027-02-02 (+106d) |  |  |  |  |  |
| 1 | **PREPARATION AND SUBMITTALS** | 2026-10-19 → 2027-02-01 (+105d) | 2026-10-19 → 2027-02-02 (+106d) |  |  |  |  |  |
| DAM3-AB-1010 | Civil drawings | 2026-10-19 → 2027-02-01 (+105d) | 2026-10-19 → 2027-02-02 (+106d) | 1d → 2d |  | 3.75d → 5d | DAM3-C-ENV-R-1480 SS → DAM3-C-ENV-R-1500 SS |  |
| 2 | **REVIEW AND APPROVALS** | 2026-10-19 → 2027-02-01 (+105d) | 2026-10-19 → 2027-02-02 (+106d) |  |  |  |  |  |
| DAM3-AB-1053 | Civil drawings | 2026-10-19 → 2027-02-01 (+105d) | 2026-10-19 → 2027-02-02 (+106d) | 1d → 2d |  | 5.75d → 14d |  |  |
| 1 | **ARCHITECTURAL DRAWINGS** | 2026-10-19 → 2027-02-03 (+107d) | 2026-10-19 → 2027-02-07 (+111d) |  |  |  |  |  |
| 1 | **PREPARATION AND SUBMITTALS** | 2026-10-19 → 2027-02-03 (+107d) | 2026-10-19 → 2027-02-04 (+108d) |  |  |  |  |  |
| DAM3-AB-1011 | Architectural drawings | 2026-10-19 → 2027-02-03 (+107d) | 2026-10-19 → 2027-02-04 (+108d) | 1d → 2d |  | 3.75d → 5d | DAM3-AB-1010 SS → DAM3-AB-1010 |  |
| 2 | **REVIEW AND APPROVALS** | 2026-10-19 → 2027-02-06 (+110d) | 2026-10-19 → 2027-02-07 (+111d) |  |  |  |  |  |
| DAM3-AB-1023 | Architectural drawings | 2026-10-19 → 2027-02-06 (+110d) | 2026-10-19 → 2027-02-07 (+111d) | 1d → 2d |  | 5.75d → 10d | DAM3-AB-1011 SS → DAM3-AB-1011 |  |
| 2 | **MECHANICAL DRAWINGS** | 2026-10-19 → 2027-02-03 (+107d) | 2026-10-19 → 2027-02-07 (+111d) |  |  |  |  |  |
| 1 | **PREPARATION AND SUBMITTALS** | 2026-10-19 → 2027-02-03 (+107d) | 2026-10-19 → 2027-02-04 (+108d) |  |  |  |  |  |
| DAM3-AB-1013 | Mechanical drawings | 2026-10-19 → 2027-02-03 (+107d) | 2026-10-19 → 2027-02-04 (+108d) | 1d → 2d |  | 3.75d → 5d |  |  |
| 2 | **REVIEW AND APPROVALS** | 2026-10-19 → 2027-02-06 (+110d) | 2026-10-19 → 2027-02-07 (+111d) |  |  |  |  |  |
| DAM3-AB-1033 | Mechanical drawings | 2026-10-19 → 2027-02-06 (+110d) | 2026-10-19 → 2027-02-07 (+111d) | 1d → 2d |  | 5.75d → 10d | DAM3-AB-1013 SS → DAM3-AB-1013 |  |
| 3 | **ELECTRICAL DRAWINGS** | 2026-10-19 → 2027-02-03 (+107d) | 2026-10-19 → 2027-02-07 (+111d) |  |  |  |  |  |
| 1 | **PREPARATION AND SUBMITTALS** | 2026-10-19 → 2027-02-03 (+107d) | 2026-10-19 → 2027-02-04 (+108d) |  |  |  |  |  |
| DAM3-AB-1012 | Electrical drawings | 2026-10-19 → 2027-02-03 (+107d) | 2026-10-19 → 2027-02-04 (+108d) | 1d → 2d |  | 3.75d → 5d |  |  |
| 2 | **REVIEW AND APPROVALS** | 2026-10-19 → 2027-02-06 (+110d) | 2026-10-19 → 2027-02-07 (+111d) |  |  |  |  |  |
| DAM3-AB-1043 | Electrical drawings | 2026-10-19 → 2027-02-06 (+110d) | 2026-10-19 → 2027-02-07 (+111d) | 1d → 2d |  | 5.75d → 10d | DAM3-AB-1012 SS → DAM3-AB-1012 |  |
| 5 | **EXTERNAL WORKS DRAWINGS** | 2026-10-19 → 2027-02-03 (+107d) | 2026-10-20 → 2027-02-07 (+110d) |  |  |  |  |  |
| 1 | **PREPARATION AND SUBMITTALS** | 2026-10-19 → 2027-02-03 (+107d) | 2026-10-19 → 2027-02-04 (+108d) |  |  |  |  |  |
| DAM3-AB-1054 | External works drawings | 2026-10-19 → 2027-02-03 (+107d) | 2026-10-19 → 2027-02-04 (+108d) | 1d → 2d |  | 3.75d → 5d |  |  |
| 2 | **REVIEW AND APPROVALS** | 2026-10-20 → 2027-02-06 (+109d) | 2026-10-20 → 2027-02-07 (+110d) |  |  |  |  |  |
| DAM3-AB-1055 | External works drawings | 2026-10-20 → 2027-02-06 (+109d) | 2026-10-20 → 2027-02-07 (+110d) | 1d → 2d |  | 3.75d → 5d |  |  |
| 2 | **WARRANTIES AND GUARANTEES** | 2026-10-20 → 2027-02-06 (+109d) | 2026-10-21 → 2027-02-09 (+111d) |  |  |  |  |  |
| 1 | **SYSTEM** | 2026-10-20 → 2027-02-06 (+109d) | 2026-10-21 → 2027-02-09 (+111d) |  |  |  |  |  |

| ID | Task | Start | Finish | Duration | Total float | Predecessors |
| --- | --- | --- | --- | --- | --- | --- |
| 1 | **PREPARATION AND SUBMITTALS** | 2026-10-20 → 2027-02-06 (+109d) | 2026-10-20 → 2027-02-07 (+110d) |  |  |  |
| DAM3-WG-1010 | Warraties and Guarantees For Mechanical Equipments | 2026-10-20 → 2027-02-06 (+109d) | 2026-10-20 → 2027-02-07 (+110d) | 1d → 2d | 3.75d → 5d |  |
| DAM3-WG-1011 | Warraties and Guarantees For Electrical Systems | 2026-10-20 → 2027-02-06 (+109d) | 2026-10-20 → 2027-02-07 (+110d) | 1d → 2d | 3.75d → 5d |  |
| 2 | **REVIEW AND APPROVAL** | 2026-10-21 → 2027-02-08 (+110d) | 2026-10-21 → 2027-02-09 (+111d) |  |  |  |
| DAM3-WG-1012 | Warraties and Guarantees For Mechanical Equipments | 2026-10-21 → 2027-02-08 (+110d) | 2026-10-21 → 2027-02-09 (+111d) | 1d → 2d | 3.75d → 5d |  |
| DAM3-WG-1013 | Warraties and Guarantees For Electrical Systems | 2026-10-21 → 2027-02-08 (+110d) | 2026-10-21 → 2027-02-09 (+111d) | 1d → 2d | 3.75d → 5d |  |
| 2 | **TRAINING AND MANUALS** | 2026-10-22 → 2027-02-10 (+111d) | 2026-10-27 → 2027-02-21 (+117d) |  |  |  |
| 1 | **TRAINING** | 2026-10-22 → 2027-02-10 (+111d) | 2026-10-25 → 2027-02-16 (+114d) |  |  |  |
| 1 | **SYSTEM** | 2026-10-22 → 2027-02-10 (+111d) | 2026-10-25 → 2027-02-16 (+114d) |  |  |  |
| 1 | **PREPARATION AND SUBMITTALS** | 2026-10-22 → 2027-02-10 (+111d) | 2026-10-22 → 2027-02-11 (+112d) |  |  |  |
| DAM3-WG-1014 | The Proposed Coursework For Mechanical Equipment | 2026-10-22 → 2027-02-10 (+111d) | 2026-10-22 → 2027-02-11 (+112d) | 1d → 2d | 3.75d → 5d |  |
| DAM3-WG-1015 | The Proposed Coursework For Electircal systems | 2026-10-22 → 2027-02-10 (+111d) | 2026-10-22 → 2027-02-11 (+112d) | 1d → 2d | 3.75d → 5d |  |
| 2 | **REVIEW AND APPROVAL** | 2026-10-24 → 2027-02-13 (+112d) | 2026-10-24 → 2027-02-14 (+113d) |  |  |  |
| DAM3-WG-1016 | The Proposed Coursework For Mechanical Equipment | 2026-10-24 → 2027-02-13 (+112d) | 2026-10-24 → 2027-02-14 (+113d) | 1d → 2d | 3.75d → 5d |  |
| DAM3-WG-1017 | The Proposed Coursework For Electircal systems | 2026-10-24 → 2027-02-13 (+112d) | 2026-10-24 → 2027-02-14 (+113d) | 1d → 2d | 3.75d → 5d |  |
| 3 | **DELIVERY** | 2026-10-25 → 2027-02-15 (+113d) | 2026-10-25 → 2027-02-16 (+114d) |  |  |  |
| DAM3-WG-1018 | The Proposed Coursework For Mechanical Equipment | 2026-10-25 → 2027-02-15 (+113d) | 2026-10-25 → 2027-02-16 (+114d) | 1d → 2d | 3.75d → 5d |  |
| DAM3-WG-1019 | The Proposed Coursework For Electircal systems | 2026-10-25 → 2027-02-15 (+113d) | 2026-10-25 → 2027-02-16 (+114d) | 1d → 2d | 3.75d → 5d | DAM3-WG-1018 SS, DAM3-WG-1017, DAM3-WG-1017 FF → DAM3-WG-1018 SS, DAM3-WG-1017 |
| 2 | **MANUALS** | 2026-10-26 → 2027-02-17 (+114d) | 2026-10-27 → 2027-02-21 (+117d) |  |  |  |
| 1 | **SYSTEM** | 2026-10-26 → 2027-02-17 (+114d) | 2026-10-27 → 2027-02-21 (+117d) |  |  |  |
| 1 | **PREPARATION AND SUBMITTALS** | 2026-10-26 → 2027-02-17 (+114d) | 2026-10-26 → 2027-02-18 (+115d) |  |  |  |
| DAM3-WG-1020 | Manual and Catalogue For Mechanical Equipment | 2026-10-26 → 2027-02-17 (+114d) | 2026-10-26 → 2027-02-18 (+115d) | 1d → 2d | 3.75d → 6d |  |
| DAM3-WG-1021 | Manual and Catalogue For For Electircal systems | 2026-10-26 → 2027-02-17 (+114d) | 2026-10-26 → 2027-02-18 (+115d) | 1d → 2d | 3.75d → 5d |  |
| 2 | **REVIEW AND APPROVAL** | 2026-10-27 → 2027-02-20 (+116d) | 2026-10-27 → 2027-02-21 (+117d) |  |  |  |
| DAM3-WG-1022 | Manual and Catalogue For Mechanical Equipment | 2026-10-27 → 2027-02-20 (+116d) | 2026-10-27 → 2027-02-21 (+117d) | 1d → 2d | 3.75d → 6d |  |
| DAM3-WG-1023 | Manual and Catalogue For For Electircal systems | 2026-10-27 → 2027-02-20 (+116d) | 2026-10-27 → 2027-02-21 (+117d) | 1d → 2d | 3.75d → 5d |  |
| 4 | **DEMOBILIZATION** | 2026-10-21 → 2027-02-08 (+110d) | 2026-10-27 → 2027-02-23 (+119d) |  |  |  |
| DAM3-D.MOB-1013 | Demobilization of manpower | 2026-10-21 → 2027-02-08 (+110d) | 2026-10-22 → 2027-02-09 (+110d) |  | 4.75d → 10d |  |
| DAM3-D.MOB-1020 | Demobilization of equipment | 2026-10-24 → 2027-02-10 (+109d) | 2026-10-25 → 2027-02-11 (+109d) |  | 4.75d → 10d |  |
| DAM3-D.MOB-1010 | Dismantling and removal offices | 2026-10-27 → 2027-02-23 (+119d) | 2026-10-27 → 2027-02-23 (+119d) |  | 3.75d → 5d | DAM3-WG-1023 SS → DAM3-WG-1023 |
| 5 | **FINAL HANDOVER** | 2026-10-31 → 2027-02-25 (+117d) | 2026-11-02 → 2027-03-02 (+120d) |  |  |  |
| DAM3-FH-1000 | Snag List Rectification | 2026-10-31 → 2027-02-25 (+117d) | 2026-11-01 → 2027-02-28 (+119d) | 1d → 3d |  | DAM3-D.MOB-1013 SS, DAM3-D.MOB-1020, S001-C-TC-M-3586, S001-C-TC-M-3576, S001-C-TC-M-3596, S001-C-TC-E-3636, S001-C-TC-E-3626, S001-C-TC-E-3621, S001-C-TC-E-3616, S001-C-TC-E-3646, S001-C-TC-EX-E-3656, S001-C-TC-EX-E-3626, S001-C-TC-EX-E-3646, S001-C-TC-ENV-F-1051, S001-C-TC-ENV-SW-60, S001-C-TC-ENV-WS-11, P001-C-TC-M-3406, P001-C-TC-E-3546, DAM3-C-ENV-M-1391, DAM3-C-ENV-E-480, DAM3-C-ENV-S-1384, DAM3-C-ENV-R-1440 SS, P001-C-TC-E-3446, P001-C-TC-E-3486, P001-C-TC-E-3536 SS, P001-C-TC-E-3526 SS, P001-C-TC-E-3516 SS, DAM3-PMS-MMS-0030, DAM3-PMS-MMS-0020, DAM3-PMS-MMS-0070, DAM3-PMS-MMS-0040, DAM3-PMS-MMS-0060, DAM3-PMS-MMS-0050, DAM3-PMS-MMS-0080, DAM3-PMS-DMS-2320, DAM3-PMS-DMS-2370, DAM3-PMS-DMS-2460, DAM3-PMS-DMS-2450, GRP pipe service connection, DAM3-C-B4-E-763, P001-C-TC-M-3376, Block Wall, DAM3-C-B6-SS-1040, DAM3-C-B6-SS-1060, DAM3-C-B6-M-680, DAM3-C-B6-M-550, DAM3-C-B6-M-640, DAM3-C-B6-E-533, DAM3-C-B5-SS-1020, DAM3-C-B5-SS-1040, DAM3-C-B5-A-1780, DAM3-C-B5-M-1300, DAM3-C-B5-M-1170, DAM3-C-B5-M-1260, DAM3-C-B5-E-993, DAM3-C-B4-SS-1020, DAM3-C-B4-SS-1040, DAM3-C-B4-A-1370, DAM3-C-B4-M-990, DAM3-C-B4-M-860, DAM3-C-B4-M-950, DAM3-C-B3-SS-1020, DAM3-C-B3-SS-1040, DAM3-C-B3-A-1260, DAM3-C-B3-A-1370, DAM3-C-B3-M-990, DAM3-C-B3-M-860, DAM3-C-B3-M-950, DAM3-C-B3-E-763, DAM3-C-B2-SS-1020, DAM3-C-B2-SS-1040, DAM3-C-B2-A-420, DAM3-C-B2-M-370, DAM3-C-B2-M-429, DAM3-C-B2-M-330, DAM3-C-B2-E-303, DAM3-C-ENV-WS-826, DAM3-C-PR-S-368, DAM3-C-ENV-R-1520, P001-C-TC-E-3566 SS, P001-C-TC-E-3556, S001-C-TC-E-3656, S001-C-TC-ENV-SW-70, S001-C-TC-ENV-3666, P001-C-TC-E-3476, S001-C-TC-M-100, Architectural Snagg works -1, Civil Snagg works, S001-C-TC-E-3606, Architectural Snagg works-2, P001-C-TC-E-3466, P001-C-TC-E-3506 SS, P001-C-TC-E-3496, P001-C-TC-M-3386, P001-C-TC-M-3396, DAM3-C-B4-A-250, DAM3-C-B6-A-790, DAM3-E-MA-EN-0080, DAM3-C-B4-A-1200 SS → DAM3-D.MOB-1013 SS, DAM3-D.MOB-1020, S001-C-TC-M-3586, S001-C-TC-M-3576, S001-C-TC-M-3596, S001-C-TC-E-3636, S001-C-TC-E-3626, S001-C-TC-E-3621, S001-C-TC-E-3616, S001-C-TC-E-3646, S001-C-TC-EX-E-3656, S001-C-TC-EX-E-3626, S001-C-TC-EX-E-3646, S001-C-TC-ENV-F-1051, S001-C-TC-ENV-SW-60, S001-C-TC-ENV-WS-11, P001-C-TC-M-3406, P001-C-TC-E-3546, DAM3-C-ENV-M-1391, DAM3-C-ENV-E-480, DAM3-C-ENV-S-1384, DAM3-C-ENV-R-1440, P001-C-TC-E-3446, P001-C-TC-E-3486, P001-C-TC-E-3536, P001-C-TC-E-3526, P001-C-TC-E-3516, DAM3-PMS-MMS-0030, DAM3-PMS-MMS-0020, DAM3-PMS-MMS-0070, DAM3-PMS-MMS-0040, DAM3-PMS-MMS-0060, DAM3-PMS-MMS-0050, DAM3-PMS-MMS-0080, DAM3-PMS-DMS-2320, DAM3-PMS-DMS-2370, DAM3-PMS-DMS-2460, DAM3-PMS-DMS-2450, DAM3-C-ENV-SW-546, DAM3-C-B4-E-763, P001-C-TC-M-3376, DAM3-C-B6-SS-1040, DAM3-C-B6-SS-1060, DAM3-C-B6-M-680, DAM3-C-B6-M-550, DAM3-C-B6-M-640, DAM3-C-B6-E-533, DAM3-C-B5-SS-1020, DAM3-C-B5-SS-1040, DAM3-C-B5-A-1780, DAM3-C-B5-M-1300, DAM3-C-B5-M-1170, DAM3-C-B5-M-1260, DAM3-C-B5-E-993, DAM3-C-B4-SS-1020, DAM3-C-B4-SS-1040, DAM3-C-B4-A-1370, DAM3-C-B4-M-990, DAM3-C-B4-M-860, DAM3-C-B4-M-950, DAM3-C-B3-SS-1020, DAM3-C-B3-SS-1040, DAM3-C-B3-A-1260, DAM3-C-B3-A-1370, DAM3-C-B3-M-990, DAM3-C-B3-M-860, DAM3-C-B3-M-950, DAM3-C-B3-E-763, DAM3-C-B2-SS-1020, DAM3-C-B2-SS-1040, DAM3-C-B2-A-420, DAM3-C-B2-M-370, DAM3-C-B2-M-429, DAM3-C-B2-M-330, DAM3-C-B2-E-303, DAM3-C-ENV-WS-826, DAM3-C-PR-S-368, DAM3-C-ENV-R-1520, P001-C-TC-E-3566, P001-C-TC-E-3556, S001-C-TC-E-3656, S001-C-TC-ENV-SW-70, S001-C-TC-ENV-3666, P001-C-TC-E-3476, DAM3-C-B1-SS-1020, DAM3-C-B1-SS-1040, DAM3-C-B1-A-420, DAM3-C-B1-M-370, DAM3-C-B1-M-429, DAM3-C-B1-M-330, DAM3-C-B1-E-303, DAM3-C-B7-SS-1020, DAM3-C-B7-SS-1040, DAM3-C-B7-A-420, DAM3-C-B7-M-370, DAM3-C-B7-M-429, DAM3-C-B7-M-330, DAM3-C-B7-E-303, DAM3-C-B8-SS-1020, DAM3-C-B8-SS-1040, DAM3-C-B8-A-420, DAM3-C-B8-M-370, DAM3-C-B8-M-429, DAM3-C-B8-M-330, DAM3-C-B8-E-303, DAM3-C-B9-SS-1020, DAM3-C-B9-SS-1040, DAM3-C-B9-A-420, DAM3-C-B9-M-370, DAM3-C-B9-M-429, DAM3-C-B9-M-330, DAM3-C-B9-E-303, DAM3-C-B10-SS-1020, DAM3-C-B10-SS-1040, DAM3-C-B10-A-420, DAM3-C-B10-M-370, DAM3-C-B10-M-429, DAM3-C-B10-M-330, DAM3-C-B10-E-303, DAM3-C-B11-SS-1020, DAM3-C-B11-SS-1040, DAM3-C-B11-A-420, DAM3-C-B11-M-370, DAM3-C-B11-M-429, DAM3-C-B11-M-330, DAM3-C-B11-E-303, S001-C-TC-A-90, S001-C-TC-E-3606, S001-C-TC-M-100, DAM3-C-B11-A-340 |
| DAM3-FH-1010 | Handover Letter | 2026-11-01 → 2027-03-01 (+120d) | 2026-11-02 → 2027-03-01 (+119d) |  |  |  |
| DAM3-FH-1020 | Intial Handingover | 2026-11-01 → 2027-03-02 (+121d) | 2026-11-02 → 2027-03-02 (+120d) |  |  | DAM3-FH-1010 SS, DAM3-WG-1022, DAM3-D.MOB-1010, S001-C-TC-E-3676 → DAM3-FH-1010, DAM3-WG-1022, DAM3-D.MOB-1010 |

## Version 10 (data date 2026-10-26, saved 2026-10-25, file 02.HAL1-05-009  Updated.xer)

Note of the change: Name weekly folders by the Thursday each week starts on (W01 - 01-Oct-2026 … W10 - 03-Dec-2026); tidy step keeps uploads in place

Last finish 2027-03-02 → 2026-11-04 (-118d). Complete tasks 1728 → 1759.

Added:

| ID | Task | Duration | Start | Finish | Predecessors | Resources |
| --- | --- | --- | --- | --- | --- | --- |
| HAL-E-PS-EN-0080 | GRP pipes | 2d | 2025-12-24 A | 2025-12-24 A | HAL-E-PS-EN-0070 | Purchaser [32 h] |
| HAL-E-PA-EN-0080 | GRP pipes | 2d | 2025-12-28 A | 2025-12-29 A | HAL-E-PS-EN-0080 |  |
| HAL-E-MS-EN-0080 | GRP pipes | 2d | 2025-12-27 A | 2025-12-27 A | HAL-E-PA-EN-0080 | Purchaser [32 h]; Construction Cost [9637.17] |
| HAL-E-MA-EN-0080 | GRP pipes | 4.12d | 2025-12-29 A | 2025-12-29 A | HAL-E-MS-EN-0080 | Construction Cost |
| 4 | **PROCUREMENT (27%)** |  | 2025-12-15 | 2026-10-15 |  |  |
| HAL-E-ST-A-1700 | PES -Steel Structure | 2d | 2026-03-05 A | 2026-05-21 A | HAL-E-DL-A-1700 |  |
| HAL-P-PO-EN-170 | GRP pipes | 5d | 2026-02-24 A | 2026-02-24 A | HAL-E-MA-EN-0080, HAL-P-PO-EN-160 | Purchaser [40 h] |
| HAL-P-MF-EN-170 | GRP pipes | 80d | 2026-02-24 A | 2026-02-28 A | HAL-P-PO-EN-170 | Loading workers |
| HAL-P-DL-EN-170 | GRP pipes | 7d | 2026-03-01 A | 2026-03-01 A | HAL-P-MF-EN-170 | Unloading workers [224 h]; Construction Cost [86734.5] |
| HAL-P-ST-EN-170 | GRP pipes | 7d | 2026-03-01 A | 2026-03-01 A | HAL-P-DL-EN-170 |  |
| 5 | **CONSTRUCTION (60%)** |  | 2025-12-22 | 2026-11-02 |  |  |
| HAL-C-GEN-1440 | Relocating of existing Tress | 5d | 2026-01-18 A | 2026-01-21 A | HAL-C-GEN-99 | Construction Cost [2211.78]; Helper [80 h] |
| HAL-C-GEN-99 | Demolition of existing structure | 14.12d | 2026-04-09 A | 2026-04-11 A | HAL-C-GEN-88 | Construction Cost [11058.9]; POKLIN [120 h]; Truck [120 h]; Wheel Loader [120 h]; Helper [240 h]; Equipment Operator [240 h] |
| HAL-C-GEN-88 | Demolition of existing curbstone,side walk & steel fence | 12d | 2026-06-17 A | 2026-06-20 A | HAL-C-GEN-10 | Construction Cost [12277.8]; Helper [192 h]; Equipment Operator [192 h]; Wheel Loader [96 h]; Truck [96 h]; POKLIN [96 h] |
| HAL-C-GEN-78 | Backfilling to reach target level | 5d | 2026-08-22 A | 2026-08-29 A | HAL-C-GEN-77, HAL-C-GEN-180, HAL-MOB-SO.0020 | General Labour [80 h]; Equipment Operator [80 h]; Motor Grader [40 h]; Roller Compactor [40 h]; Truck [40 h]; Construction Cost [18171] |
| HAL-C-GEN-620 | Block Wall | 10d | 2026-09-22 A | 2026-09-24 A | HAL-C-GEN-1440 | Mason [160 h]; Construction Cost [8979.81] |
| 4 | **BLOCK B** |  | 2025-12-28 | 2026-10-28 |  |  |
| 8 | **BLOCK C** |  | 2026-01-04 | 2026-10-28 |  |  |
| 3 | **BLOCK A** |  | 2026-02-03 | 2026-10-28 |  |  |
| 6 | **BLOCK D** |  | 2026-01-17 | 2026-10-28 |  |  |
| 5 | **BLOCK E** |  | 2026-01-13 | 2026-10-28 |  |  |
| HAL-C-GEN-190 | Excavation to the target grading level | 20d | 2026-01-24 A | 2026-02-19 A | HAL-C-GEN-180, HAL-C-GEN-620 | General Labour [320 h]; Equipment Operator [320 h]; Truck [160 h]; Excavator [160 h]; Mini Roller Compactor [160 h]; Construction Cost [99293.3] |
| HAL-C-GEN-200 | Backfilling to reach target level | 20d | 2026-08-22 A | 2026-08-29 A | HAL-C-GEN-190 | General Labour [320 h]; Equipment Operator [320 h]; Motor Grader [160 h]; Roller Compactor [160 h]; Truck [160 h]; Construction Cost [18171] |
| HAL-C-ENV-SW-486 | Installation of GRP Pipes for Sewer | 10d | 2026-05-23 A | 2026-08-04 A | HAL-C-ENV-SW-516, HAL-P-ST-EN-170 | Pipe Fitter [160 h]; Construction Cost [96194.5] |
| HAL-C-ENV-SW-546 | GRP pipe service connection | 7d | 2026-09-03 A | 2026-09-10 A | HAL-C-ENV-SW-506, HAL-C-ENV-WS-826 | Plumber [112 h]; Construction Cost [16588.3] |
| HAL-C-TC-S-9100 | Architectural Snagg works -1 | 10d | 2026-04-25 A | 2026-04-30 A | HAL-C-B-S-697 | Construction Cost [1700245] |
| HAL-C-TC-S-9090 | Civil Snagg works | 7d | 2026-06-01 A | 2026-06-04 A | HAL-C-E-S-6101 | Construction Cost [200001] |
| HAL-C-TC-S-9110 | Architectural Snagg works-2 | 10d | 2026-06-02 A | 2026-06-02 A | HAL-C-TC-ENV-F-1051 | Construction Cost [799865] |

Removed: PROCUREMENT (20%); DAM3-P-DL-A-1700 PES -Steel Structure -1; DAM3-P-DL-A-1770 PES -Steel Structure -2; DAM3-P-DL-A-1780 PES -Steel Structure -3; DAM3-P-DL-A-1790 PES -Steel Structure -4; DAM3-P-PO-M-510 UPVC pipes; DAM3-P-MF-M-510 UPVC pipes; DAM3-P-DL-M-510 UPVC pipes; DAM3-P-ST-M-510 UPVC pipes; DAM3-P-PO-EN-170 UPVC pipes; DAM3-P-MF-EN-170 UPVC pipes; DAM3-P-DL-EN-170 UPVC pipes; DAM3-P-ST-EN-170 UPVC pipes; CONSTRUCTION (67%); DAM3-C-GEN-88 Demolition of the existing pavement; BLOCK B6; DAM3-C-B6-S-6143 Soil replacement - rock fill; DAM3-C-B6-S-6153 Engineering fill; BLOCK B5; DAM3-C-B5-S-6163 Soil replacement - rock fill; DAM3-C-B5-S-6173 Engineering fill; BLOCK B4; DAM3-C-B4-S-6183 Soil replacement - rock fill; DAM3-C-B4-S-6193 Engineering fill; BLOCK B3; DAM3-C-B3-S-6203 Soil replacement - rock fill; DAM3-C-B3-S-6213 Engineering fill; BLOCK B2; DAM3-C-B2-S-6223 Soil replacement - rock fill; DAM3-C-B2-S-6233 Engineering fill; BLOCK B1; STRUCTURAL; FOOTING; DAM3-C-B1-S-150 Excavation for footings; DAM3-C-B1-S-6243 Soil replacement - rock fill; DAM3-C-B1-S-6253 Engineering fill; DAM3-C-B1-S-101 Anti Termite Below Footings; COLUMN NECK; DAM3-C-B1-S-257 Rebar for column neck; DAM3-C-B1-S-267 Formwork for column neck; DAM3-C-B1-S-297 Pouring Concrete for column neck; DAM3-C-B1-S-307 Damp proof /Bitumin paint on Footings & column neck; DAM3-C-B1-S-367 Backfilling / Compaction up to Bottom of Grade Beams; GRADE BEAM; DAM3-C-B1-S-527 Anti Termite Below Grade Beams; DAM3-C-B1-S-341 Anchor bolts installation; SLAB ON GRADE; DAM3-C-B1-S-517 Concrete pad; COLUMNS & BEAMS; DAM3-C-B1-S-6101 Rebar for Tie Beams; DAM3-C-B1-S-6102 Formwork for Tie Beams; DAM3-C-B1-S-6103 Pouring Concrete for Tie Beams; DAM3-C-B1-S-5101 Rebar for column; DAM3-C-B1-S-5102 Formwork for column; DAM3-C-B1-S-5103 Pouring Concrete for column; DAM3-C-B1-S-6113 Rebar for Beams; DAM3-C-B1-S-6123 Formwork for Beams; DAM3-C-B1-S-6133 Pouring Concrete for Beams; STRUCTURAL STEEL; DAM3-C-B1-SS-0100 Installation of columns; DAM3-C-B1-SS-0110 Installation of raft and purlins; DAM3-C-B1-SS-610 Intumescent paint to steel works; DAM3-C-B1-SS-0140 Installation of roof sheet; DAM3-C-B1-SS-0130 Installation of wall sandwich panel; DAM3-C-B1-SS-620 Steel members for office area; DAM3-C-B1-SS-1020 Epoxy paint to steel members at office area; DAM3-C-B1-SS-1030 Steel members for external platform; DAM3-C-B1-SS-1040 Epoxy paint for external platform; ARCHITECTURAL; MASONARY WORKS; DAM3-C-B1-A-0120 Block work at factory area; DAM3-C-B1-A-0150 Block work at office area; DAM3-C-B1-A-170 Block work at toilet area; WALL FINISHES; DAM3-C-B1-A-180 Internal Wall Plaster; DAM3-C-B1-A-230 Paint to Plaster (Primer, Putty & First Coat); CIELING FINISHES; DAM3-C-B1-A-240 Installation of Ceiling Gypsum Board; FLOOR FINISHES; DAM3-C-B1-A-220 Tiles for Toilet; DAM3-C-B1-A-250 Tiles for Office Area; DAM3-C-B1-A-390 Granite strip; DAM3-C-B1-A-420 Epoxy paint; DOORS & WINDOWS; DAM3-C-B1-A-558 Skylight fixtures installation; DAM3-C-B1-A-552 Window (CW1); DAM3-C-B1-A-553 Roll up Shutter Door; DAM3-C-B1-A-200 Supply and install (D5) 1000*2200mm single leaf steel door with door; DAM3-C-B1-A-554 Supply and install (D4) 800*2200 mm single leaf aluminum door with door; DAM3-C-B1-A-555 Supply and install (D7) 1000*2200 mm single leaf aluminum door with door; DAM3-C-B1-A-556 Supply and install (D3) 1000*2200 mm single leaf aluminum door with door; DAM3-C-B1-A-557 Supply and install fire rated 45 min (D2) 1200*2200 mm single leaf steel door; WATER PROOFING WORKS; DAM3-C-B1-A-370 Waterproofing membrane for toilets; METAL WORKS; DAM3-C-B1-A-300 Galvanised Steel Gratings; DAM3-C-B1-A-290 Steel Ladder; DAM3-C-B1-A-291 Steel railing works; DAM3-C-B1-A-292 Aluminium composite panel; SPECIALTIES; DAM3-C-B1-A-320 Installation of fittings; DAM3-C-B1-A-570 Identification sign; ID01 & ID02; DAM3-C-B1-A-340 Furniture Installation; HVAC; FIRST STAGE; DAM3-C-B1-M-140 Installation of HVAC Ducts; DAM3-C-B1-M-170 Installation of Duct insulation; SECOND STAGE; DAM3-C-B1-M-130 Installation of Exhaust Fans; DAM3-C-B1-M-160 Installation of Wall Propeller Type Exhaust Fan; DAM3-C-B1-M-339 Installation of Diffuser; DAM3-C-B1-M-340 Supply, install, test and commission door grilles & exhaust louvers; FIRE FIGHTING SYSTEM; FIRST STAGE; DAM3-C-B1-M-300 Installation of Fire Fighting Pipes (Seamless Black Steel); DAM3-C-B1-M-310 Installation of Fire Fighting Valve; SECOND STAGE; DAM3-C-B1-M-320 Installation of Fire Hose Cabinet; DAM3-C-B1-M-370 Supply, install, test and commission Fire Department Connection(FDC); SEWER AND DRAINAGE SYSTEM; FIRST STAGE; DAM3-C-B1-M-200 Installation of Sanitary Waste / Drainage Pipes; DAM3-C-B1-M-380 Installation of Trench drain; DAM3-C-B1-M-220 Installation of Floor Drain; SECOND STAGE; DAM3-C-B1-M-180 Installation of Electric Water Heater; DAM3-C-B1-M-190 Installation of Sanitary Fixture and Accessories; DAM3-C-B1-M-210 Installation of Lavotary /Wash Basin; DAM3-C-B1-M-270 Installation of Bib Tap; DAM3-C-B1-M-428 Installation of Water Tap; DAM3-C-B1-M-429 Installation of Roof Vent Cap; FIRST STAGE; DAM3-C-B1-M-280 Installation of Water Supply Valve; DAM3-C-B1-M-290 Installation of Water Supply Pipes; SECOND STAGE; DAM3-C-B1-M-330 Capped connection; FIRST STAGE; DAM3-C-B1-E-183 Installation of Sleeves & Power outlet; DAM3-C-B1-E-143 Installation of Conduits and wiring outlets - Fire Alarm System; SECOND STAGE; DAM3-C-B1-E-243 Installation of LP-1 Panel; DAM3-C-B1-E-420 Installation of Solar power plant; DAM3-C-B1-E-123 Installation of Fire Alarm Control Panel; DAM3-C-B1-E-133 Installation of Fire Detectors & Accessories; DAM3-C-B1-E-193 Installation of Main Distribution Board; DAM3-C-B1-E-410 Installation of CCTV System; DAM3-C-B1-E-253 Installation of PP-AC panel; DAM3-C-B1-E-213 Installation of Telephone Cabinet; DAM3-C-B1-E-273 Installation of Access Control System; DAM3-C-B1-E-283 Monitor Modules for Fire Alarm; DAM3-C-B1-E-293 Line Isolator Modules for Fire Alarm; DAM3-C-B1-E-303 Firewarning flash light with sounder; wall mounted, Weather proof; DAM3-C-B1-E-173 Installation of Wiring Devices; DAM3-C-B1-E-203 Installation of Disconnect Switches; BLOCK B7; STRUCTURAL; FOOTING; DAM3-C-B7-S-150 Excavation for footings; DAM3-C-B7-S-6263 Soil replacement - rock fill; DAM3-C-B7-S-6273 Engineering fill; DAM3-C-B7-S-101 Anti Termite Below Footings; DAM3-C-B7-S-102 Vapour Barrier for Footings; DAM3-C-B7-S-103 Lean Concrete Below Footings; COLUMN NECK; DAM3-C-B7-S-257 Rebar for column neck; DAM3-C-B7-S-267 Formwork for column neck; DAM3-C-B7-S-297 Pouring Concrete for column neck; DAM3-C-B7-S-307 Damp proof /Bitumin paint on Footings & column neck; DAM3-C-B7-S-367 Backfilling / Compaction up to Bottom of Grade Beams; GRADE BEAM; DAM3-C-B7-S-337 Vapour barrier for Grade Beams; DAM3-C-B7-S-338 Lean Concrete Below Grade Beams; DAM3-C-B7-S-527 Anti Termite Below Grade Beams; DAM3-C-B7-S-339 Rebar for Grade Beams; DAM3-C-B7-S-341 Anchor bolts installation; DAM3-C-B7-S-340 Formwork for Grade Beams; DAM3-C-B7-S-342 Pouring Concrete for Grade Beams; DAM3-C-B7-S-347 Damp proof /Bitumin paint on Grade Beams; SLAB ON GRADE; DAM3-C-B7-S-377 Backfilling / Compaction for Slab on Grade; DAM3-C-B7-S-378 Anti Termite Treatment below Ground Slab; DAM3-C-B7-S-379 Vapour barrier for below Ground Slab; DAM3-C-B7-S-382 Pouring Concrete for Ground Slab; DAM3-C-B7-S-517 Concrete pad; COLUMNS & BEAMS; DAM3-C-B7-S-6101 Rebar for Tie Beams; DAM3-C-B7-S-6102 Formwork for Tie Beams; DAM3-C-B7-S-6103 Pouring Concrete for Tie Beams; DAM3-C-B7-S-5102 Formwork for column; DAM3-C-B7-S-5101 Rebar for column; DAM3-C-B7-S-5103 Pouring Concrete for column; DAM3-C-B7-S-6113 Rebar for Beams; DAM3-C-B7-S-6123 Formwork for Beams; DAM3-C-B7-S-6133 Pouring Concrete for Beams; STRUCTURAL STEEL; DAM3-C-B7-SS-0100 Installation of columns; DAM3-C-B7-SS-0110 Installation of raft and purlins; DAM3-C-B7-SS-610 Intumescent paint to steel works; DAM3-C-B7-SS-0140 Installation of roof sheet; DAM3-C-B7-SS-1030 Steel members for external platform; DAM3-C-B7-SS-0130 Installation of wall sandwich panel; DAM3-C-B7-SS-620 Steel members for office area; DAM3-C-B7-SS-1020 Epoxy paint to steel members at office area; DAM3-C-B7-SS-1040 Epoxy paint for external platform; ARCHITECTURAL; MASONARY WORKS; DAM3-C-B7-A-0120 Block work at factory area; DAM3-C-B7-A-0150 Block work at office area; DAM3-C-B7-A-170 Block work at toilet area; WALL FINISHES; DAM3-C-B7-A-180 Internal Wall Plaster; DAM3-C-B7-A-230 Paint to Plaster (Primer, Putty & First Coat); CIELING FINISHES; DAM3-C-B7-A-240 Installation of Ceiling Gypsum Board; FLOOR FINISHES; DAM3-C-B7-A-220 Tiles for Toilet; DAM3-C-B7-A-250 Tiles for Office Area; DAM3-C-B7-A-390 Granite strip; DAM3-C-B7-A-420 Epoxy paint; DOORS & WINDOWS; DAM3-C-B7-A-558 Skylight fixtures installation; DAM3-C-B7-A-552 Window (CW1); DAM3-C-B7-A-553 Roll up Shutter Door; DAM3-C-B7-A-200 Supply and install (D5) 1000*2200mm single leaf steel door with door; DAM3-C-B7-A-554 Supply and install (D4) 800*2200 mm single leaf aluminum door with door; DAM3-C-B7-A-555 Supply and install (D7) 1000*2200 mm single leaf aluminum door with door; DAM3-C-B7-A-556 Supply and install (D3) 1000*2200 mm single leaf aluminum door with door; DAM3-C-B7-A-557 Supply and install fire rated 45 min (D2) 1200*2200 mm single leaf steel door; WATER PROOFING WORKS; DAM3-C-B7-A-370 Waterproofing membrane for toilets; METAL WORKS; DAM3-C-B7-A-300 Galvanised Steel Gratings; DAM3-C-B7-A-292 Aluminium composite panel; DAM3-C-B7-A-290 Steel Ladder; DAM3-C-B7-A-291 Steel railing works; SPECIALTIES; DAM3-C-B7-A-320 Installation of fittings; DAM3-C-B7-A-570 Identification sign; ID01 & ID02; DAM3-C-B7-A-340 Furniture Installation; HVAC; FIRST STAGE; DAM3-C-B7-M-140 Installation of HVAC Ducts; DAM3-C-B7-M-170 Installation of Duct insulation; SECOND STAGE; DAM3-C-B7-M-130 Installation of Exhaust Fans; DAM3-C-B7-M-160 Installation of Wall Propeller Type Exhaust Fan; DAM3-C-B7-M-339 Installation of Diffuser; DAM3-C-B7-M-340 Supply, install, test and commission door grilles & exhaust louvers; FIRE FIGHTING SYSTEM; FIRST STAGE; DAM3-C-B7-M-300 Installation of Fire Fighting Pipes (Seamless Black Steel); DAM3-C-B7-M-310 Installation of Fire Fighting Valve; SECOND STAGE; DAM3-C-B7-M-320 Installation of Fire Hose Cabinet; DAM3-C-B7-M-370 Supply, install, test and commission Fire Department Connection(FDC); SEWER AND DRAINAGE SYSTEM; FIRST STAGE; DAM3-C-B7-M-200 Installation of Sanitary Waste / Drainage Pipes; DAM3-C-B7-M-380 Installation of Trench drain; DAM3-C-B7-M-220 Installation of Floor Drain; SECOND STAGE; DAM3-C-B7-M-180 Installation of Electric Water Heater; DAM3-C-B7-M-190 Installation of Sanitary Fixture and Accessories; DAM3-C-B7-M-210 Installation of Lavotary /Wash Basin; DAM3-C-B7-M-270 Installation of Bib Tap; DAM3-C-B7-M-428 Installation of Water Tap; DAM3-C-B7-M-429 Installation of Roof Vent Cap; WATER SUPPLY SYSTEM; FIRST STAGE; DAM3-C-B7-M-290 Installation of Water Supply Pipes; DAM3-C-B7-M-280 Installation of Water Supply Valve; SECOND STAGE; DAM3-C-B7-M-330 Capped connection; FIRST STAGE; DAM3-C-B7-E-143 Installation of Conduits and wiring outlets - Fire Alarm System; DAM3-C-B7-E-183 Installation of Sleeves & Power outlet; DAM3-C-B7-E-163 Installation of Conduites for Lighting Fixture; DAM3-C-B7-E-233 Installation of Wires; SECOND STAGE; DAM3-C-B7-E-153 Installation of Lighting fixtures; DAM3-C-B7-E-420 Installation of Solar power plant; DAM3-C-B7-E-243 Installation of LP-1 Panel; DAM3-C-B7-E-123 Installation of Fire Alarm Control Panel; DAM3-C-B7-E-133 Installation of Fire Detectors & Accessories; DAM3-C-B7-E-173 Installation of Wiring Devices; DAM3-C-B7-E-203 Installation of Disconnect Switches; DAM3-C-B7-E-193 Installation of Main Distribution Board; DAM3-C-B7-E-410 Installation of CCTV System; DAM3-C-B7-E-253 Installation of PP-AC panel; DAM3-C-B7-E-213 Installation of Telephone Cabinet; DAM3-C-B7-E-273 Installation of Access Control System; DAM3-C-B7-E-283 Monitor Modules for Fire Alarm; DAM3-C-B7-E-293 Line Isolator Modules for Fire Alarm; DAM3-C-B7-E-303 Firewarning flash light with sounder; wall mounted, Weather proof; BLOCK B8; STRUCTURAL; FOOTING; DAM3-C-B8-S-150 Excavation for footings; DAM3-C-B8-S-6283 Soil replacement - rock fill; DAM3-C-B8-S-6293 Engineering fill; DAM3-C-B8-S-101 Anti Termite Below Footings; DAM3-C-B8-S-102 Vapour Barrier for Footings; DAM3-C-B8-S-103 Lean Concrete Below Footings; DAM3-C-B8-S-104 Rebar for Footings; DAM3-C-B8-S-105 Formwork for Footings; DAM3-C-B8-S-106 Pouring Concrete for Footings; COLUMN NECK; DAM3-C-B8-S-257 Rebar for column neck; DAM3-C-B8-S-267 Formwork for column neck; DAM3-C-B8-S-297 Pouring Concrete for column neck; DAM3-C-B8-S-307 Damp proof /Bitumin paint on Footings & column neck; DAM3-C-B8-S-367 Backfilling / Compaction up to Bottom of Grade Beams; GRADE BEAM; DAM3-C-B8-S-337 Vapour barrier for Grade Beams; DAM3-C-B8-S-338 Lean Concrete Below Grade Beams; DAM3-C-B8-S-527 Anti Termite Below Grade Beams; DAM3-C-B8-S-339 Rebar for Grade Beams; DAM3-C-B8-S-341 Anchor bolts installation; DAM3-C-B8-S-340 Formwork for Grade Beams; DAM3-C-B8-S-342 Pouring Concrete for Grade Beams; DAM3-C-B8-S-347 Damp proof /Bitumin paint on Grade Beams; SLAB ON GRADE; DAM3-C-B8-S-377 Backfilling / Compaction for Slab on Grade; DAM3-C-B8-S-378 Anti Termite Treatment below Ground Slab; DAM3-C-B8-S-379 Vapour barrier for below Ground Slab; DAM3-C-B8-S-382 Pouring Concrete for Ground Slab; DAM3-C-B8-S-517 Concrete pad; COLUMNS & BEAMS; DAM3-C-B8-S-6101 Rebar for Tie Beams; DAM3-C-B8-S-6102 Formwork for Tie Beams; DAM3-C-B8-S-6103 Pouring Concrete for Tie Beams; DAM3-C-B8-S-5101 Rebar for column; DAM3-C-B8-S-5102 Formwork for column; DAM3-C-B8-S-5103 Pouring Concrete for column; DAM3-C-B8-S-6113 Rebar for Beams; DAM3-C-B8-S-6123 Formwork for Beams; DAM3-C-B8-S-6133 Pouring Concrete for Beams; STRUCTURAL STEEL; DAM3-C-B8-SS-0100 Installation of columns; DAM3-C-B8-SS-0110 Installation of raft and purlins; DAM3-C-B8-SS-610 Intumescent paint to steel works; DAM3-C-B8-SS-0140 Installation of roof sheet; DAM3-C-B8-SS-0130 Installation of wall sandwich panel; DAM3-C-B8-SS-1030 Steel members for external platform; DAM3-C-B8-SS-620 Steel members for office area; DAM3-C-B8-SS-1020 Epoxy paint to steel members at office area; DAM3-C-B8-SS-1040 Epoxy paint for external platform; ARCHITECTURAL; MASONARY WORKS; DAM3-C-B8-A-0120 Block work at factory area; DAM3-C-B8-A-0150 Block work at office area; DAM3-C-B8-A-170 Block work at toilet area; WALL FINISHES; DAM3-C-B8-A-180 Internal Wall Plaster; DAM3-C-B8-A-230 Paint to Plaster (Primer, Putty & First Coat); CIELING FINISHES; DAM3-C-B8-A-240 Installation of Ceiling Gypsum Board; FLOOR FINISHES; DAM3-C-B8-A-220 Tiles for Toilet; DAM3-C-B8-A-250 Tiles for Office Area; DAM3-C-B8-A-390 Granite strip; DAM3-C-B8-A-420 Epoxy paint; DOORS & WINDOWS; DAM3-C-B8-A-558 Skylight fixtures installation; DAM3-C-B8-A-552 Window (CW1); DAM3-C-B8-A-553 Roll up Shutter Door; DAM3-C-B8-A-200 Supply and install (D5) 1000*2200mm single leaf steel door with door; DAM3-C-B8-A-554 Supply and install (D4) 800*2200 mm single leaf aluminum door with door; DAM3-C-B8-A-555 Supply and install (D7) 1000*2200 mm single leaf aluminum door with door; DAM3-C-B8-A-556 Supply and install (D3) 1000*2200 mm single leaf aluminum door with door; DAM3-C-B8-A-557 Supply and install fire rated 45 min (D2) 1200*2200 mm single leaf steel door; WATER PROOFING WORKS; DAM3-C-B8-A-370 Waterproofing membrane for toilets; METAL WORKS; DAM3-C-B8-A-300 Galvanised Steel Gratings; DAM3-C-B8-A-292 Aluminium composite panel; DAM3-C-B8-A-290 Steel Ladder; DAM3-C-B8-A-291 Steel railing works; SPECIALTIES; DAM3-C-B8-A-320 Installation of fittings; DAM3-C-B8-A-570 Identification sign; ID01 & ID02; DAM3-C-B8-A-340 Furniture Installation; MECHANICAL; HVAC; FIRST STAGE; DAM3-C-B8-M-140 Installation of HVAC Ducts; DAM3-C-B8-M-170 Installation of Duct insulation; SECOND STAGE; DAM3-C-B8-M-130 Installation of Exhaust Fans; DAM3-C-B8-M-160 Installation of Wall Propeller Type Exhaust Fan; DAM3-C-B8-M-339 Installation of Diffuser; DAM3-C-B8-M-340 Supply, install, test and commission door grilles & exhaust louvers; FIRE FIGHTING SYSTEM; FIRST STAGE; DAM3-C-B8-M-300 Installation of Fire Fighting Pipes (Seamless Black Steel); DAM3-C-B8-M-310 Installation of Fire Fighting Valve; SECOND STAGE; DAM3-C-B8-M-370 Supply, install, test and commission Fire Department Connection(FDC); DAM3-C-B8-M-320 Installation of Fire Hose Cabinet; SEWER AND DRAINAGE SYSTEM; FIRST STAGE; DAM3-C-B8-M-200 Installation of Sanitary Waste / Drainage Pipes; DAM3-C-B8-M-380 Installation of Trench drain; DAM3-C-B8-M-220 Installation of Floor Drain; SECOND STAGE; DAM3-C-B8-M-180 Installation of Electric Water Heater; DAM3-C-B8-M-190 Installation of Sanitary Fixture and Accessories; DAM3-C-B8-M-210 Installation of Lavotary /Wash Basin; DAM3-C-B8-M-270 Installation of Bib Tap; DAM3-C-B8-M-428 Installation of Water Tap; DAM3-C-B8-M-429 Installation of Roof Vent Cap; WATER SUPPLY SYSTEM; FIRST STAGE; DAM3-C-B8-M-290 Installation of Water Supply Pipes; DAM3-C-B8-M-280 Installation of Water Supply Valve; SECOND STAGE; DAM3-C-B8-M-330 Capped connection; ELECTRICAL; FIRST STAGE; DAM3-C-B8-E-113 Installation of Earthing and Grounding; DAM3-C-B8-E-143 Installation of Conduits and wiring outlets - Fire Alarm System; DAM3-C-B8-E-183 Installation of Sleeves & Power outlet; DAM3-C-B8-E-163 Installation of Conduites for Lighting Fixture; DAM3-C-B8-E-233 Installation of Wires; DAM3-C-B8-E-223 Installation of LV Cables; SECOND STAGE; DAM3-C-B8-E-420 Installation of Solar power plant; DAM3-C-B8-E-243 Installation of LP-1 Panel; DAM3-C-B8-E-123 Installation of Fire Alarm Control Panel; DAM3-C-B8-E-133 Installation of Fire Detectors & Accessories; DAM3-C-B8-E-153 Installation of Lighting fixtures; DAM3-C-B8-E-193 Installation of Main Distribution Board; DAM3-C-B8-E-410 Installation of CCTV System; DAM3-C-B8-E-253 Installation of PP-AC panel; DAM3-C-B8-E-273 Installation of Access Control System; DAM3-C-B8-E-213 Installation of Telephone Cabinet; DAM3-C-B8-E-283 Monitor Modules for Fire Alarm; DAM3-C-B8-E-293 Line Isolator Modules for Fire Alarm; DAM3-C-B8-E-303 Firewarning flash light with sounder; wall mounted, Weather proof; DAM3-C-B8-E-173 Installation of Wiring Devices; DAM3-C-B8-E-203 Installation of Disconnect Switches; BLOCK B9; STRUCTURAL; FOOTING; DAM3-C-B9-S-150 Excavation for footings; DAM3-C-B9-S-6303 Soil replacement - rock fill; DAM3-C-B9-S-6313 Engineering fill; DAM3-C-B9-S-101 Anti Termite Below Footings; DAM3-C-B9-S-102 Vapour Barrier for Footings; DAM3-C-B9-S-103 Lean Concrete Below Footings; DAM3-C-B9-S-104 Rebar for Footings; DAM3-C-B9-S-105 Formwork for Footings; DAM3-C-B9-S-106 Pouring Concrete for Footings; COLUMN NECK; DAM3-C-B9-S-257 Rebar for column neck; DAM3-C-B9-S-267 Formwork for column neck; DAM3-C-B9-S-297 Pouring Concrete for column neck; DAM3-C-B9-S-307 Damp proof /Bitumin paint on Footings & column neck; DAM3-C-B9-S-367 Backfilling / Compaction up to Bottom of Grade Beams; GRADE BEAM; DAM3-C-B9-S-337 Vapour barrier for Grade Beams; DAM3-C-B9-S-338 Lean Concrete Below Grade Beams; DAM3-C-B9-S-527 Anti Termite Below Grade Beams; DAM3-C-B9-S-339 Rebar for Grade Beams; DAM3-C-B9-S-341 Anchor bolts installation; DAM3-C-B9-S-340 Formwork for Grade Beams; DAM3-C-B9-S-342 Pouring Concrete for Grade Beams; DAM3-C-B9-S-347 Damp proof /Bitumin paint on Grade Beams; SLAB ON GRADE; DAM3-C-B9-S-377 Backfilling / Compaction for Slab on Grade; DAM3-C-B9-S-378 Anti Termite Treatment below Ground Slab; DAM3-C-B9-S-379 Vapour barrier for below Ground Slab; DAM3-C-B9-S-382 Pouring Concrete for Ground Slab; DAM3-C-B9-S-517 Concrete pad; COLUMNS & BEAMS; DAM3-C-B9-S-6101 Rebar for Tie Beams; DAM3-C-B9-S-6102 Formwork for Tie Beams; DAM3-C-B9-S-6103 Pouring Concrete for Tie Beams; DAM3-C-B9-S-5101 Rebar for column; DAM3-C-B9-S-5102 Formwork for column; DAM3-C-B9-S-5103 Pouring Concrete for column; DAM3-C-B9-S-6113 Rebar for Beams; DAM3-C-B9-S-6123 Formwork for Beams; DAM3-C-B9-S-6133 Pouring Concrete for Beams; STRUCTURAL STEEL; DAM3-C-B9-SS-0100 Installation of columns; DAM3-C-B9-SS-0110 Installation of raft and purlins; DAM3-C-B9-SS-610 Intumescent paint to steel works; DAM3-C-B9-SS-0140 Installation of roof sheet; DAM3-C-B9-SS-0130 Installation of wall sandwich panel; DAM3-C-B9-SS-1030 Steel members for external platform; DAM3-C-B9-SS-620 Steel members for office area; DAM3-C-B9-SS-1020 Epoxy paint to steel members at office area; DAM3-C-B9-SS-1040 Epoxy paint for external platform; ARCHITECTURAL; MASONARY WORKS; DAM3-C-B9-A-0120 Block work at factory area; DAM3-C-B9-A-0150 Block work at office area; DAM3-C-B9-A-170 Block work at toilet area; WALL FINISHES; DAM3-C-B9-A-180 Internal Wall Plaster; DAM3-C-B9-A-230 Paint to Plaster (Primer, Putty & First Coat); CIELING FINISHES; DAM3-C-B9-A-240 Installation of Ceiling Gypsum Board; FLOOR FINISHES; DAM3-C-B9-A-220 Tiles for Toilet; DAM3-C-B9-A-250 Tiles for Office Area; DAM3-C-B9-A-390 Granite strip; DAM3-C-B9-A-420 Epoxy paint; DOORS & WINDOWS; DAM3-C-B9-A-558 Skylight fixtures installation; DAM3-C-B9-A-552 Window (CW1); DAM3-C-B9-A-553 Roll up Shutter Door; DAM3-C-B9-A-200 Supply and install (D5) 1000*2200mm single leaf steel door with door; DAM3-C-B9-A-554 Supply and install (D4) 800*2200 mm single leaf aluminum door with door; DAM3-C-B9-A-555 Supply and install (D7) 1000*2200 mm single leaf aluminum door with door; DAM3-C-B9-A-556 Supply and install (D3) 1000*2200 mm single leaf aluminum door with door; DAM3-C-B9-A-557 Supply and install fire rated 45 min (D2) 1200*2200 mm single leaf steel door; WATER PROOFING WORKS; DAM3-C-B9-A-370 Waterproofing membrane for toilets; METAL WORKS; DAM3-C-B9-A-300 Galvanised Steel Gratings; DAM3-C-B9-A-292 Aluminium composite panel; DAM3-C-B9-A-290 Steel Ladder; DAM3-C-B9-A-291 Steel railing works; SPECIALTIES; DAM3-C-B9-A-320 Installation of fittings; DAM3-C-B9-A-570 Identification sign; ID01 & ID02; DAM3-C-B9-A-340 Furniture Installation; MECHANICAL; HVAC; FIRST STAGE; DAM3-C-B9-M-140 Installation of HVAC Ducts; DAM3-C-B9-M-170 Installation of Duct insulation; SECOND STAGE; DAM3-C-B9-M-130 Installation of Exhaust Fans; DAM3-C-B9-M-160 Installation of Wall Propeller Type Exhaust Fan; DAM3-C-B9-M-339 Installation of Diffuser; DAM3-C-B9-M-340 Supply, install, test and commission door grilles & exhaust louvers; FIRE FIGHTING SYSTEM; FIRST STAGE; DAM3-C-B9-M-300 Installation of Fire Fighting Pipes (Seamless Black Steel); DAM3-C-B9-M-310 Installation of Fire Fighting Valve; SECOND STAGE; DAM3-C-B9-M-320 Installation of Fire Hose Cabinet; DAM3-C-B9-M-370 Supply, install, test and commission Fire Department Connection(FDC); SEWER AND DRAINAGE SYSTEM; FIRST STAGE; DAM3-C-B9-M-200 Installation of Sanitary Waste / Drainage Pipes; DAM3-C-B9-M-380 Installation of Trench drain; DAM3-C-B9-M-220 Installation of Floor Drain; SECOND STAGE; DAM3-C-B9-M-180 Installation of Electric Water Heater; DAM3-C-B9-M-190 Installation of Sanitary Fixture and Accessories; DAM3-C-B9-M-210 Installation of Lavotary /Wash Basin; DAM3-C-B9-M-270 Installation of Bib Tap; DAM3-C-B9-M-428 Installation of Water Tap; DAM3-C-B9-M-429 Installation of Roof Vent Cap; WATER SUPPLY SYSTEM; FIRST STAGE; DAM3-C-B9-M-290 Installation of Water Supply Pipes; DAM3-C-B9-M-280 Installation of Water Supply Valve; SECOND STAGE; DAM3-C-B9-M-330 Capped connection; ELECTRICAL; FIRST STAGE; DAM3-C-B9-E-113 Installation of Earthing and Grounding; DAM3-C-B9-E-143 Installation of Conduits and wiring outlets - Fire Alarm System; DAM3-C-B9-E-183 Installation of Sleeves & Power outlet; DAM3-C-B9-E-163 Installation of Conduites for Lighting Fixture; DAM3-C-B9-E-233 Installation of Wires; DAM3-C-B9-E-223 Installation of LV Cables; SECOND STAGE; DAM3-C-B9-E-420 Installation of Solar power plant; DAM3-C-B9-E-243 Installation of LP-1 Panel; DAM3-C-B9-E-123 Installation of Fire Alarm Control Panel; DAM3-C-B9-E-133 Installation of Fire Detectors & Accessories; DAM3-C-B9-E-173 Installation of Wiring Devices; DAM3-C-B9-E-203 Installation of Disconnect Switches; DAM3-C-B9-E-153 Installation of Lighting fixtures; DAM3-C-B9-E-193 Installation of Main Distribution Board; DAM3-C-B9-E-410 Installation of CCTV System; DAM3-C-B9-E-253 Installation of PP-AC panel; DAM3-C-B9-E-213 Installation of Telephone Cabinet; DAM3-C-B9-E-273 Installation of Access Control System; DAM3-C-B9-E-283 Monitor Modules for Fire Alarm; DAM3-C-B9-E-293 Line Isolator Modules for Fire Alarm; DAM3-C-B9-E-303 Firewarning flash light with sounder; wall mounted, Weather proof; BLOCK B10; STRUCTURAL; FOOTING; DAM3-C-B10-S-150 Excavation for footings; DAM3-C-B10-S-6323 Soil replacement - rock fill; DAM3-C-B10-S-6333 Engineering fill; DAM3-C-B10-S-101 Anti Termite Below Footings; DAM3-C-B10-S-102 Vapour Barrier for Footings; DAM3-C-B10-S-103 Lean Concrete Below Footings; DAM3-C-B10-S-104 Rebar for Footings; DAM3-C-B10-S-105 Formwork for Footings; DAM3-C-B10-S-106 Pouring Concrete for Footings; COLUMN NECK; DAM3-C-B10-S-257 Rebar for column neck; DAM3-C-B10-S-267 Formwork for column neck; DAM3-C-B10-S-297 Pouring Concrete for column neck; DAM3-C-B10-S-307 Damp proof /Bitumin paint on Footings & column neck; DAM3-C-B10-S-367 Backfilling / Compaction up to Bottom of Grade Beams; GRADE BEAM; DAM3-C-B10-S-337 Vapour barrier for Grade Beams; DAM3-C-B10-S-338 Lean Concrete Below Grade Beams; DAM3-C-B10-S-527 Anti Termite Below Grade Beams; DAM3-C-B10-S-339 Rebar for Grade Beams; DAM3-C-B10-S-341 Anchor bolts installation; DAM3-C-B10-S-340 Formwork for Grade Beams; DAM3-C-B10-S-342 Pouring Concrete for Grade Beams; DAM3-C-B10-S-347 Damp proof /Bitumin paint on Grade Beams; SLAB ON GRADE; DAM3-C-B10-S-377 Backfilling / Compaction for Slab on Grade; DAM3-C-B10-S-378 Anti Termite Treatment below Ground Slab; DAM3-C-B10-S-379 Vapour barrier for below Ground Slab; DAM3-C-B10-S-382 Pouring Concrete for Ground Slab; DAM3-C-B10-S-517 Concrete pad; COLUMNS & BEAMS; DAM3-C-B10-S-6101 Rebar for Tie Beams; DAM3-C-B10-S-6102 Formwork for Tie Beams; DAM3-C-B10-S-6103 Pouring Concrete for Tie Beams; DAM3-C-B10-S-5101 Rebar for column; DAM3-C-B10-S-5102 Formwork for column; DAM3-C-B10-S-5103 Pouring Concrete for column; DAM3-C-B10-S-6113 Rebar for Beams; DAM3-C-B10-S-6123 Formwork for Beams; DAM3-C-B10-S-6133 Pouring Concrete for Beams; STRUCTURAL STEEL; DAM3-C-B10-SS-0100 Installation of columns; DAM3-C-B10-SS-0110 Installation of raft and purlins; DAM3-C-B10-SS-610 Intumescent paint to steel works; DAM3-C-B10-SS-0140 Installation of roof sheet; DAM3-C-B10-SS-0130 Installation of wall sandwich panel; DAM3-C-B10-SS-1030 Steel members for external platform; DAM3-C-B10-SS-620 Steel members for office area; DAM3-C-B10-SS-1020 Epoxy paint to steel members at office area; DAM3-C-B10-SS-1040 Epoxy paint for external platform; ARCHITECTURAL; MASONARY WORKS; DAM3-C-B10-A-0120 Block work at factory area; DAM3-C-B10-A-0150 Block work at office area; DAM3-C-B10-A-170 Block work at toilet area; WALL FINISHES; DAM3-C-B10-A-180 Internal Wall Plaster; DAM3-C-B10-A-230 Paint to Plaster (Primer, Putty & First Coat); CIELING FINISHES; DAM3-C-B10-A-240 Installation of Ceiling Gypsum Board; FLOOR FINISHES; DAM3-C-B10-A-220 Tiles for Toilet; DAM3-C-B10-A-250 Tiles for Office Area; DAM3-C-B10-A-390 Granite strip; DAM3-C-B10-A-420 Epoxy paint; DOORS & WINDOWS; DAM3-C-B10-A-558 Skylight fixtures installation; DAM3-C-B10-A-552 Window (CW1); DAM3-C-B10-A-553 Roll up Shutter Door; DAM3-C-B10-A-200 Supply and install (D5) 1000*2200mm single leaf steel door with door; DAM3-C-B10-A-554 Supply and install (D4) 800*2200 mm single leaf aluminum door with door; DAM3-C-B10-A-555 Supply and install (D7) 1000*2200 mm single leaf aluminum door with door; DAM3-C-B10-A-556 Supply and install (D3) 1000*2200 mm single leaf aluminum door with door; DAM3-C-B10-A-557 Supply and install fire rated 45 min (D2) 1200*2200 mm single leaf steel door; WATER PROOFING WORKS; DAM3-C-B10-A-370 Waterproofing membrane for toilets; METAL WORKS; DAM3-C-B10-A-300 Galvanised Steel Gratings; DAM3-C-B10-A-292 Aluminium composite panel; DAM3-C-B10-A-290 Steel Ladder; DAM3-C-B10-A-291 Steel railing works; SPECIALTIES; DAM3-C-B10-A-320 Installation of fittings; DAM3-C-B10-A-570 Identification sign; ID01 & ID02; DAM3-C-B10-A-340 Furniture Installation; MECHANICAL; HVAC; FIRST STAGE; DAM3-C-B10-M-140 Installation of HVAC Ducts; DAM3-C-B10-M-170 Installation of Duct insulation; SECOND STAGE; DAM3-C-B10-M-130 Installation of Exhaust Fans; DAM3-C-B10-M-160 Installation of Wall Propeller Type Exhaust Fan; DAM3-C-B10-M-339 Installation of Diffuser; DAM3-C-B10-M-340 Supply, install, test and commission door grilles & exhaust louvers; FIRE FIGHTING SYSTEM; FIRST STAGE; DAM3-C-B10-M-300 Installation of Fire Fighting Pipes (Seamless Black Steel); DAM3-C-B10-M-310 Installation of Fire Fighting Valve; SECOND STAGE; DAM3-C-B10-M-320 Installation of Fire Hose Cabinet; DAM3-C-B10-M-370 Supply, install, test and commission Fire Department Connection(FDC); SEWER AND DRAINAGE SYSTEM; FIRST STAGE; DAM3-C-B10-M-200 Installation of Sanitary Waste / Drainage Pipes; DAM3-C-B10-M-380 Installation of Trench drain; DAM3-C-B10-M-220 Installation of Floor Drain; SECOND STAGE; DAM3-C-B10-M-180 Installation of Electric Water Heater; DAM3-C-B10-M-190 Installation of Sanitary Fixture and Accessories; DAM3-C-B10-M-210 Installation of Lavotary /Wash Basin; DAM3-C-B10-M-270 Installation of Bib Tap; DAM3-C-B10-M-428 Installation of Water Tap; DAM3-C-B10-M-429 Installation of Roof Vent Cap; WATER SUPPLY SYSTEM; FIRST STAGE; DAM3-C-B10-M-280 Installation of Water Supply Valve; DAM3-C-B10-M-290 Installation of Water Supply Pipes; SECOND STAGE; DAM3-C-B10-M-330 Capped connection; ELECTRICAL; FIRST STAGE; DAM3-C-B10-E-113 Installation of Earthing and Grounding; DAM3-C-B10-E-143 Installation of Conduits and wiring outlets - Fire Alarm System; DAM3-C-B10-E-183 Installation of Sleeves & Power outlet; DAM3-C-B10-E-163 Installation of Conduites for Lighting Fixture; DAM3-C-B10-E-233 Installation of Wires; DAM3-C-B10-E-223 Installation of LV Cables; SECOND STAGE; DAM3-C-B10-E-420 Installation of Solar power plant; DAM3-C-B10-E-243 Installation of LP-1 Panel; DAM3-C-B10-E-123 Installation of Fire Alarm Control Panel; DAM3-C-B10-E-133 Installation of Fire Detectors & Accessories; DAM3-C-B10-E-153 Installation of Lighting fixtures; DAM3-C-B10-E-193 Installation of Main Distribution Board; DAM3-C-B10-E-410 Installation of CCTV System; DAM3-C-B10-E-253 Installation of PP-AC panel; DAM3-C-B10-E-213 Installation of Telephone Cabinet; DAM3-C-B10-E-173 Installation of Wiring Devices; DAM3-C-B10-E-273 Installation of Access Control System; DAM3-C-B10-E-203 Installation of Disconnect Switches; DAM3-C-B10-E-283 Monitor Modules for Fire Alarm; DAM3-C-B10-E-293 Line Isolator Modules for Fire Alarm; DAM3-C-B10-E-303 Firewarning flash light with sounder; wall mounted, Weather proof; BLOCK B11; STRUCTURAL; FOOTING; DAM3-C-B11-S-150 Excavation for footings; DAM3-C-B11-S-6343 Soil replacement - rock fill; DAM3-C-B11-S-6353 Engineering fill; DAM3-C-B11-S-101 Anti Termite Below Footings; DAM3-C-B11-S-102 Vapour Barrier for Footings; DAM3-C-B11-S-103 Lean Concrete Below Footings; DAM3-C-B11-S-104 Rebar for Footings; DAM3-C-B11-S-105 Formwork for Footings; DAM3-C-B11-S-106 Pouring Concrete for Footings; COLUMN NECK; DAM3-C-B11-S-257 Rebar for column neck; DAM3-C-B11-S-267 Formwork for column neck; DAM3-C-B11-S-297 Pouring Concrete for column neck; DAM3-C-B11-S-307 Damp proof /Bitumin paint on Footings & column neck; DAM3-C-B11-S-367 Backfilling / Compaction up to Bottom of Grade Beams; GRADE BEAM; DAM3-C-B11-S-337 Vapour barrier for Grade Beams; DAM3-C-B11-S-338 Lean Concrete Below Grade Beams; DAM3-C-B11-S-527 Anti Termite Below Grade Beams; DAM3-C-B11-S-339 Rebar for Grade Beams; DAM3-C-B11-S-340 Formwork for Grade Beams; DAM3-C-B11-S-341 Anchor bolts installation; DAM3-C-B11-S-342 Pouring Concrete for Grade Beams; DAM3-C-B11-S-347 Damp proof /Bitumin paint on Grade Beams; SLAB ON GRADE; DAM3-C-B11-S-377 Backfilling / Compaction for Slab on Grade; DAM3-C-B11-S-378 Anti Termite Treatment below Ground Slab; DAM3-C-B11-S-379 Vapour barrier for below Ground Slab; DAM3-C-B11-S-382 Pouring Concrete for Ground Slab; DAM3-C-B11-S-517 Concrete pad; COLUMNS & BEAMS; DAM3-C-B11-S-6101 Rebar for Tie Beams; DAM3-C-B11-S-6102 Formwork for Tie Beams; DAM3-C-B11-S-6103 Pouring Concrete for Tie Beams; DAM3-C-B11-S-5101 Rebar for column; DAM3-C-B11-S-5102 Formwork for column; DAM3-C-B11-S-5103 Pouring Concrete for column; DAM3-C-B11-S-6113 Rebar for Beams; DAM3-C-B11-S-6123 Formwork for Beams; DAM3-C-B11-S-6133 Pouring Concrete for Beams; STRUCTURAL STEEL; DAM3-C-B11-SS-0100 Installation of columns; DAM3-C-B11-SS-0110 Installation of raft and purlins; DAM3-C-B11-SS-610 Intumescent paint to steel works; DAM3-C-B11-SS-0140 Installation of roof sheet; DAM3-C-B11-SS-0130 Installation of wall sandwich panel; DAM3-C-B11-SS-620 Steel members for office area; DAM3-C-B11-SS-1030 Steel members for external platform; DAM3-C-B11-SS-1020 Epoxy paint to steel members at office area; DAM3-C-B11-SS-1040 Epoxy paint for external platform; ARCHITECTURAL; MASONARY WORKS; DAM3-C-B11-A-0120 Block work at factory area; DAM3-C-B11-A-0150 Block work at office area; DAM3-C-B11-A-170 Block work at toilet area; WALL FINISHES; DAM3-C-B11-A-180 Internal Wall Plaster; DAM3-C-B11-A-230 Paint to Plaster (Primer, Putty & First Coat); CIELING FINISHES; DAM3-C-B11-A-240 Installation of Ceiling Gypsum Board; FLOOR FINISHES; DAM3-C-B11-A-220 Tiles for Toilet; DAM3-C-B11-A-250 Tiles for Office Area; DAM3-C-B11-A-390 Granite strip; DAM3-C-B11-A-420 Epoxy paint; DOORS & WINDOWS; DAM3-C-B11-A-558 Skylight fixtures installation; DAM3-C-B11-A-552 Window (CW1); DAM3-C-B11-A-553 Roll up Shutter Door; DAM3-C-B11-A-200 Supply and install (D5) 1000*2200mm single leaf steel door with door; DAM3-C-B11-A-554 Supply and install (D4) 800*2200 mm single leaf aluminum door with door; DAM3-C-B11-A-555 Supply and install (D7) 1000*2200 mm single leaf aluminum door with door; DAM3-C-B11-A-556 Supply and install (D3) 1000*2200 mm single leaf aluminum door with door; DAM3-C-B11-A-557 Supply and install fire rated 45 min (D2) 1200*2200 mm single leaf steel door; WATER PROOFING WORKS; DAM3-C-B11-A-370 Waterproofing membrane for toilets; METAL WORKS; DAM3-C-B11-A-300 Galvanised Steel Gratings; DAM3-C-B11-A-292 Aluminium composite panel; DAM3-C-B11-A-290 Steel Ladder; DAM3-C-B11-A-291 Steel railing works; SPECIALTIES; DAM3-C-B11-A-320 Installation of fittings; DAM3-C-B11-A-570 Identification sign; ID01 & ID02; DAM3-C-B11-A-340 Furniture Installation; MECHANICAL; HVAC; FIRST STAGE; DAM3-C-B11-M-140 Installation of HVAC Ducts; DAM3-C-B11-M-170 Installation of Duct insulation; SECOND STAGE; DAM3-C-B11-M-130 Installation of Exhaust Fans; DAM3-C-B11-M-160 Installation of Wall Propeller Type Exhaust Fan; DAM3-C-B11-M-339 Installation of Diffuser; DAM3-C-B11-M-340 Supply, install, test and commission door grilles & exhaust louvers; FIRE FIGHTING SYSTEM; FIRST STAGE; DAM3-C-B11-M-300 Installation of Fire Fighting Pipes (Seamless Black Steel); DAM3-C-B11-M-310 Installation of Fire Fighting Valve; SECOND STAGE; DAM3-C-B11-M-320 Installation of Fire Hose Cabinet; DAM3-C-B11-M-370 Supply, install, test and commission Fire Department Connection(FDC); SEWER AND DRAINAGE SYSTEM; FIRST STAGE; DAM3-C-B11-M-200 Installation of Sanitary Waste / Drainage Pipes; DAM3-C-B11-M-380 Installation of Trench drain; DAM3-C-B11-M-220 Installation of Floor Drain; SECOND STAGE; DAM3-C-B11-M-180 Installation of Electric Water Heater; DAM3-C-B11-M-190 Installation of Sanitary Fixture and Accessories; DAM3-C-B11-M-210 Installation of Lavotary /Wash Basin; DAM3-C-B11-M-270 Installation of Bib Tap; DAM3-C-B11-M-428 Installation of Water Tap; DAM3-C-B11-M-429 Installation of Roof Vent Cap; WATER SUPPLY SYSTEM; FIRST STAGE; DAM3-C-B11-M-280 Installation of Water Supply Valve; DAM3-C-B11-M-290 Installation of Water Supply Pipes; SECOND STAGE; DAM3-C-B11-M-330 Capped connection; ELECTRICAL; FIRST STAGE; DAM3-C-B11-E-113 Installation of Earthing and Grounding; DAM3-C-B11-E-143 Installation of Conduits and wiring outlets - Fire Alarm System; DAM3-C-B11-E-183 Installation of Sleeves & Power outlet; DAM3-C-B11-E-163 Installation of Conduites for Lighting Fixture; DAM3-C-B11-E-233 Installation of Wires; DAM3-C-B11-E-223 Installation of LV Cables; SECOND STAGE; DAM3-C-B11-E-420 Installation of Solar power plant; DAM3-C-B11-E-243 Installation of LP-1 Panel; DAM3-C-B11-E-123 Installation of Fire Alarm Control Panel; DAM3-C-B11-E-133 Installation of Fire Detectors & Accessories; DAM3-C-B11-E-153 Installation of Lighting fixtures; DAM3-C-B11-E-193 Installation of Main Distribution Board; DAM3-C-B11-E-410 Installation of CCTV System; DAM3-C-B11-E-253 Installation of PP-AC panel; DAM3-C-B11-E-213 Installation of Telephone Cabinet; DAM3-C-B11-E-173 Installation of Wiring Devices; DAM3-C-B11-E-273 Installation of Access Control System; DAM3-C-B11-E-203 Installation of Disconnect Switches; DAM3-C-B11-E-283 Monitor Modules for Fire Alarm; DAM3-C-B11-E-293 Line Isolator Modules for Fire Alarm; DAM3-C-B11-E-303 Firewarning flash light with sounder; wall mounted, Weather proof; WATER SUPPLY SYSTEM; DAM3-C-ENV-SW-486 Installation of UPVC Pipes for Sewer; DAM3-C-ENV-SW-546 UPVC pipe service connection; MECHANICAL; DAM3-C-PR-S-138 Lean Concrete Below Footings; DAM3-C-PR-S-308 Vapour Barrier for Footings; DAM3-C-PR-S-198 Rebar for Footings; DAM3-C-PR-S-208 Formwork for Footings; DAM3-C-PR-S-148 Pouring Concrete for Footings; DAM3-C-PR-S-158 Lean Concrete Below Grade Beams; DAM3-C-PR-S-328 Vapour barrier for Grade Beams; DAM3-C-PR-S-218 Rebar for Grade Beams; DAM3-C-PR-S-228 Formwork for Grade Beams; DAM3-C-PR-S-168 Pouring Concrete for Grade Beams; DAM3-C-PR-S-338 Damp proof /Bitumin paint on Grade Beams; DAM3-C-PR-S-388 Backfilling / Compaction for Slab on Grade; DAM3-C-PR-S-318 Anti Termite Treatment below Ground Slab; DAM3-C-PR-S-348 Vapour barrier for below Ground Slab; DAM3-C-PR-S-178 Pouring Concrete for Ground Slab; ELECTRICAL; DAM3-C-ENV-E-186 Installation of Earthing and Grounding; DAM3-C-ENV-E-206 Installation of Conduites for Lighting Fixture; DAM3-C-ENV-E-216 Installation of LV Cables; DAM3-C-ENV-E-226 Installation of Wires; DAM3-C-ENV-E-196 Installation of Lighting fixtures; DAM3-C-ENV-E-380 Installation of LV Cables; DAM3-C-ENV-E-470 Installation of Earthing and Grounding; DAM3-C-ENV-S-1304 Rebar for Footings; DAM3-C-ENV-S-1314 Formwork for Footings; DAM3-C-ENV-S-1284 Pouring Concrete for Footings; MECHANICAL; ELECTRICAL; S001-C-TC-C-80 Civil & Architectural Snagg works-1; S001-C-TC-A-90 Civil & Architectural Snagg works-2

Changed:

| ID | Task | Start | Finish | Duration | Complete | Total float | Predecessors | Other |
| --- | --- | --- | --- | --- | --- | --- | --- | --- |
| 1 | **PROJECT MILESTONES** | 2026-01-07 → 2025-12-04 (-34d) | 2027-03-02 → 2026-11-04 (-118d) |  |  |  |  |  |
| 1 | **CONTRACTUAL MILESTONES** | 2026-01-07 → 2025-12-04 (-34d) | 2027-03-02 → 2026-11-04 (-118d) |  |  |  |  |  |
| HAL-PMS-MMS-0010 | Project Start Date | 2026-01-07 A → 2025-12-04 A (-34d) | 2026-01-07 A → 2025-12-04 A (-34d) |  |  |  |  |  |
| HAL-PMS-MMS-0030 | Completion of Site Suvey Works | 2026-02-12 A → 2025-12-04 A (-70d) | 2026-02-12 A → 2025-12-04 A (-70d) |  |  |  |  |  |
| HAL-PMS-MMS-0040 | Completion of Time Schedule submission | 2026-02-11 A → 2025-12-22 A (-51d) | 2026-02-11 A → 2025-12-22 A (-51d) |  |  |  |  |  |
| HAL-PMS-MMS-0050 | Completion of Plans (PEP,PQP,HSE, Procurement Plan) | 2026-05-04 A → 2025-12-31 A (-124d) | 2026-05-04 A → 2025-12-31 A (-124d) |  |  |  |  |  |
| HAL-PMS-MMS-0020 | Completion of Mobilization Works | 2026-01-18 A → 2026-01-05 A (-13d) | 2026-01-18 A → 2026-01-05 A (-13d) |  |  |  |  |  |
| HAL-PMS-MMS-0070 | Completion of Site levelling, local roads & parkings | 2026-10-20 → 2026-01-05 A (-288d) | 2026-10-20 → 2026-01-05 A (-288d) |  | 0% → 100% | 0d → none |  |  |
| HAL-PMS-MMS-0080 | Network start | 2026-08-01 A → 2026-05-05 A (-88d) | 2026-08-01 A → 2026-05-05 A (-88d) |  |  |  |  |  |
| HAL-PMS-MMS-0060 | Completion of Engineering and Materials | 2026-07-05 A → 2026-10-19 A (+106d) | 2026-07-05 A → 2026-10-19 A (+106d) |  |  |  |  |  |
| HAL-PMS-MMS-0110 | Competion of Testing and Commissioning | 2026-12-22 → 2026-10-27 (-56d) | 2026-12-22 → 2026-10-27 (-56d) |  |  | 59d → 7.5d |  |  |
| HAL-PMS-MMS-0090 | Completion of Construction | 2027-02-15 → 2026-10-28 (-110d) | 2027-02-15 → 2026-10-28 (-110d) |  |  | 12d → 6.7d |  |  |
| HAL-PMS-MMS-0100 | Project Completion Date | 2027-03-02 → 2026-11-04 (-118d) | 2027-03-02 → 2026-11-04 (-118d) |  |  |  | HAL-FH-1020, HAL-PMS-MMS-0090, HAL-PMS-MMS-0110 → HAL-FH-1020, HAL-PMS-MMS-0090, HAL-PMS-MMS-0110, HAL-FH-1020 FF |  |
| 3 | **DISCIPLINE MILESTONES** | 2026-02-15 → 2025-12-28 (-49d) | 2027-02-15 → 2026-10-28 (-110d) |  |  |  |  |  |
| 6 | **900 SQM FACTORIES** | 2026-02-15 → 2025-12-28 (-49d) | 2027-02-15 → 2026-10-28 (-110d) |  |  |  |  |  |
| HAL-PMS-DMS-2360 | Construction Start | 2026-02-15 A → 2025-12-28 A (-49d) | 2026-02-15 A → 2025-12-28 A (-49d) |  |  |  |  |  |
| HAL-PMS-DMS-2310 | Completion of Civil works | 2026-12-02 → 2026-08-26 A (-98d) | 2026-12-02 → 2026-08-26 A (-98d) |  | 0% → 100% | 29.8d → none |  |  |
| HAL-PMS-DMS-2330 | Completion of Mechanical works | 2027-01-12 → 2026-10-08 A (-96d) | 2027-01-12 → 2026-10-08 A (-96d) |  | 0% → 100% | 36d → none |  |  |
| HAL-PMS-DMS-2370 | Construction Finish | 2027-02-15 → 2026-10-28 (-110d) | 2027-02-15 → 2026-10-28 (-110d) |  |  | 7d → 4.7d |  |  |
| HAL-PMS-DMS-2320 | Completion of Electrical works | 2027-02-11 → 2026-10-28 (-106d) | 2027-02-11 → 2026-10-28 (-106d) |  |  | 10d → 4d |  |  |
| HAL-PMS-DMS-2340 | Completion of Architectural works | 2027-02-11 → 2026-10-28 (-106d) | 2027-02-11 → 2026-10-28 (-106d) |  |  | 10d → 4d |  |  |
| 1 | **SITE INFRASTRUCTURE** | 2027-01-25 → 2026-09-19 (-128d) | 2027-02-15 → 2026-10-28 (-110d) |  |  |  |  |  |
| HAL-PMS-DMS-2460 | Completion of Environmentall works | 2027-01-25 → 2026-09-19 A (-128d) | 2027-01-25 → 2026-09-19 A (-128d) |  | 0% → 100% | 25d → none |  |  |
| HAL-PMS-DMS-2450 | Completion of External works | 2027-02-15 → 2026-10-28 (-110d) | 2027-02-15 → 2026-10-28 (-110d) |  |  | 7d → 4.7d |  |  |
| 2 | **MOBILIZATION** | 2026-01-07 → 2025-12-04 (-34d) | 2026-05-04 → 2026-01-05 (-119d) |  |  |  |  |  |
| 3 | **SITE FACILITIES AND OFFICES** | 2026-01-07 → 2025-12-04 (-34d) | 2026-02-23 → 2026-01-05 (-49d) |  |  |  |  |  |
| HAL-MOB-SO.0010 | Site Survey | 2026-02-12 A → 2025-12-04 A (-70d) | 2026-02-12 A → 2025-12-04 A (-70d) |  |  |  |  |  |
| HAL-MOB-SO.0011 | Site Layout Plan Prep | 2026-02-04 A → 2025-12-04 A (-62d) | 2026-02-04 A → 2025-12-06 A (-60d) |  |  |  |  |  |
| HAL-MOB-SO.0014 | Clear and Grub for Offices and Access Roads | 2026-01-11 A → 2025-12-04 A (-38d) | 2026-02-16 A → 2025-12-08 A (-70d) |  |  |  |  |  |
| HAL-MOB-SO.0012 | Site Layout Plan Submittal | 2026-02-04 A → 2025-12-06 A (-60d) | 2026-02-04 A → 2025-12-07 A (-59d) |  |  |  |  |  |
| HAL-MOB-SO.0013 | Site Layout Plan Owner Approval | 2026-02-04 A → 2025-12-06 A (-60d) | 2026-02-16 A → 2025-12-08 A (-70d) |  |  |  |  |  |
| HAL-MOB-SO.0019 | Mobilization of Manpower | 2026-01-07 A → 2025-12-16 A (-22d) | 2026-02-23 A → 2026-01-04 A (-50d) |  |  |  | HAL-MOB-SO.0018, HAL-PMS-MMS-0040 → HAL-MOB-SO.0018 |  |
| HAL-MOB-SO.0015 | Construct Site Offices | 2026-01-19 A → 2025-12-18 A (-32d) | 2026-02-10 A → 2025-12-25 A (-47d) |  |  |  |  |  |
| HAL-MOB-SO.0016 | Electrical Works and Connections | 2026-02-09 A → 2025-12-23 A (-48d) | 2026-02-23 A → 2025-12-24 A (-61d) |  |  |  |  |  |
| HAL-MOB-SO.0020 | Mobilization of Equipment | 2026-01-25 A → 2025-12-23 A (-33d) | 2026-02-23 A → 2026-01-04 A (-50d) |  |  |  |  |  |
| HAL-MOB-SO.0018 | Install Project Signs | 2026-02-03 A → 2025-12-24 A (-41d) | 2026-02-04 A → 2026-01-05 A (-30d) |  |  |  |  |  |
| HAL-MOB-SO.0017 | Site Utilities | 2026-02-11 A → 2025-12-27 A (-46d) | 2026-02-23 A → 2026-01-04 A (-50d) |  |  |  |  |  |
| 2 | **PRELIMINARY SUBMITTALS** | 2026-01-14 → 2025-12-10 (-35d) | 2026-05-04 → 2025-12-31 (-124d) |  |  |  |  |  |
| 1 | **PREPARATION AND SUBMITTALS** | 2026-01-14 → 2025-12-10 (-35d) | 2026-02-21 → 2025-12-21 (-62d) |  |  |  |  |  |
| HAL-PRE-SUB-0014 | Communication Plan | 2026-02-21 A → 2025-12-10 A (-73d) | 2026-02-21 A → 2025-12-10 A (-73d) |  |  |  |  |  |
| HAL-PRE-SUB-0013 | Risk Management plan | 2026-01-28 A → 2025-12-15 A (-44d) | 2026-01-28 A → 2025-12-15 A (-44d) |  |  |  | HAL-PRE-SUB-0011 SS, HAL-PRE-SUB-0012, HAL-PMS-DMS-2360 → HAL-PRE-SUB-0011 SS, HAL-PRE-SUB-0012 |  |
| HAL-PRE-SUB-0015 | Quality Control Plan | 2026-01-28 A → 2025-12-15 A (-44d) | 2026-01-28 A → 2025-12-15 A (-44d) |  |  |  |  |  |
| HAL-PRE-SUB-0011 | Health & Safety Plan | 2026-01-26 A → 2025-12-17 A (-40d) | 2026-01-26 A → 2025-12-17 A (-40d) |  |  |  |  |  |
| HAL-PRE-SUB-0012 | Baseline Schedule | 2026-01-14 A → 2025-12-18 A (-27d) | 2026-01-14 A → 2025-12-18 A (-27d) |  |  |  |  |  |
| HAL-PRE-SUB-0010 | Project Execution Plan | 2026-02-21 A → 2025-12-21 A (-62d) | 2026-02-21 A → 2025-12-21 A (-62d) |  |  |  |  |  |
| 2 | **REVIEW AND APPROVALS** | 2026-01-14 → 2025-12-10 (-35d) | 2026-05-04 → 2025-12-31 (-124d) |  |  |  |  |  |
| HAL-PRE-SUB-1013 | Communication Plan | 2026-02-21 A → 2025-12-10 A (-73d) | 2026-05-03 A → 2025-12-10 A (-144d) |  |  |  |  |  |
| HAL-PRE-SUB-1012 | Risk Management plan | 2026-01-28 A → 2025-12-15 A (-44d) | 2026-02-03 A → 2025-12-28 A (-37d) |  |  |  |  |  |
| HAL-PRE-SUB-1014 | Quality Control Plan | 2026-01-28 A → 2025-12-15 A (-44d) | 2026-05-04 A → 2025-12-28 A (-127d) |  |  |  |  |  |
| HAL-PRE-SUB-1011 | Health & Safety Plan | 2026-01-26 A → 2025-12-17 A (-40d) | 2026-01-28 A → 2025-12-31 A (-28d) |  |  |  |  |  |
| HAL-PRE-SUB-1015 | Baseline Schedule | 2026-01-14 A → 2025-12-18 A (-27d) | 2026-02-10 A → 2025-12-22 A (-50d) |  |  |  |  |  |
| HAL-PRE-SUB-1010 | Project Execution Plan | 2026-02-21 A → 2025-12-21 A (-62d) | 2026-05-03 A → 2025-12-22 A (-132d) |  |  |  |  |  |
| 3 | **ENGINEERING (3%)** | 2026-01-15 → 2025-12-08 (-38d) | 2026-07-05 → 2026-08-16 (+42d) |  |  |  |  |  |
| 1 | **SHOP DRAWINGS** | 2026-01-20 → 2025-12-11 (-40d) | 2026-07-05 → 2026-03-29 (-98d) |  |  |  |  |  |
| 1 | **PREPARATION AND SUBMITTAL** | 2026-01-20 → 2025-12-11 (-40d) | 2026-07-01 → 2026-02-07 (-144d) |  |  |  |  |  |
| 5 | **STRUCTURAL** | 2026-02-03 → 2025-12-24 (-41d) | 2026-06-02 → 2026-02-02 (-120d) |  |  |  |  |  |
| HAL-E-SS-C-830 | SECTIONS | 2026-02-03 A → 2025-12-24 A (-41d) | 2026-02-03 A → 2025-12-24 A (-41d) | 2d → 1.62d |  |  |  | resources Engineer [4 h]; Draftman [4 h] → Engineer [16 h]; Draftman [16 h] |
| HAL-E-SS-C-840 | EXTERNAL WALL SECTION DETAILS | 2026-02-03 A → 2025-12-24 A (-41d) | 2026-02-03 A → 2025-12-24 A (-41d) | 2d → 0.62d |  |  |  | resources Engineer [4 h]; Draftman [4 h] → Engineer [32 h]; Draftman [32 h] |
| HAL-E-SS-C-750 | FOUNDATION LAYOUT | 2026-02-18 A → 2025-12-30 A (-50d) | 2026-02-18 A → 2025-12-30 A (-50d) | 2d → 4d |  |  | HAL-E-SS-R-780, HAL-PMS-MMS-0020, HAL-PMS-MMS-0050 → HAL-E-SS-R-780 | resources Draftman [32 h]; Engineer [32 h] → Draftman [16 h]; Engineer [16 h] |
| HAL-E-SS-C-820 | COLUMNS AND AXIS LAYOUT | 2026-02-07 A → 2026-01-01 A (-37d) | 2026-02-07 A → 2026-01-01 A (-37d) |  |  |  |  | resources Engineer [4 h]; Draftman [4 h] → Engineer [16 h]; Draftman [16 h] |
| HAL-E-SS-C-860 | TYPICAL STRUCTURAL SECTION DETAILS | 2026-04-21 A → 2026-01-01 A (-110d) | 2026-04-21 A → 2026-01-01 A (-110d) |  |  |  |  | resources Engineer [4 h]; Draftman [4 h] → Engineer [32 h]; Draftman [32 h] |
| HAL-E-SS-C-870 | STRUCTURAL SCHEDULE | 2026-06-02 A → 2026-01-01 A (-152d) | 2026-06-02 A → 2026-01-01 A (-152d) | 2d → 1.62d |  |  |  | resources Engineer [4 h]; Draftman [4 h] → Engineer [32 h]; Draftman [32 h] |
| HAL-E-SS-C-780 | TIE BEAM @ 4500mm EL. | 2026-03-01 A → 2026-01-08 A (-52d) | 2026-03-01 A → 2026-01-08 A (-52d) |  |  |  | HAL-E-SS-C-770, HAL-PRE-SUB-1015, HAL-PRE-SUB-1014, HAL-PRE-SUB-1013 → HAL-E-SS-C-770 | resources Engineer [32 h]; Draftman [32 h] → Engineer [16 h]; Draftman [16 h] |
| HAL-E-SS-C-880 | PUMP SHED AND GRP WATER TANK STRUCTURAL DETAILS (1-2) | 2026-03-29 A → 2026-01-22 A (-66d) | 2026-03-29 A → 2026-01-22 A (-66d) |  |  |  |  | resources Engineer [4 h]; Draftman [4 h] → Engineer [32 h]; Draftman [32 h] |
| HAL-E-SS-C-890 | PUMP SHED AND GRP WATER TANK STRUCTURAL DETAILS (2-2) | 2026-03-29 A → 2026-01-22 A (-66d) | 2026-03-29 A → 2026-01-22 A (-66d) |  |  |  |  | resources Engineer [4 h]; Draftman [4 h] → Engineer [32 h]; Draftman [32 h] |
| HAL-E-SS-C-760 | GRADE BEAM / SLAB ON GRADE LAYOUT | 2026-04-21 A → 2026-01-28 A (-83d) | 2026-04-21 A → 2026-01-28 A (-83d) | 2d → 3d |  |  | HAL-E-SS-C-750, HAL-PMS-MMS-0030 → HAL-E-SS-C-750 | resources Engineer [32 h]; Draftman [32 h] → Engineer [16 h]; Draftman [16 h] |
| HAL-E-SS-C-770 | BASE PLATE LAYOUT | 2026-02-07 A → 2026-02-02 A (-5d) | 2026-02-07 A → 2026-02-02 A (-5d) |  |  |  | HAL-E-SS-C-760, HAL-PMS-MMS-0070 → HAL-E-SS-C-760 | resources Engineer [32 h]; Draftman [32 h] → Engineer [16 h]; Draftman [16 h] |
| HAL-E-SS-C-790 | ROOF FRAMING LAYOUT | 2026-02-07 A → 2026-02-02 A (-5d) | 2026-02-07 A → 2026-02-02 A (-5d) |  |  |  |  | resources Engineer [32 h]; Draftman [32 h] → Engineer [16 h]; Draftman [16 h] |
| HAL-E-SS-C-800 | PURLINS FRAMING LAYOUT | 2026-02-07 A → 2026-02-02 A (-5d) | 2026-02-07 A → 2026-02-02 A (-5d) |  |  |  |  | resources Engineer [32 h]; Draftman [32 h] → Engineer [16 h]; Draftman [16 h] |
| HAL-E-SS-C-810 | ROOF SHEETING LAYOUT | 2026-02-07 A → 2026-02-02 A (-5d) | 2026-02-07 A → 2026-02-02 A (-5d) |  |  |  |  | resources Engineer [32 h]; Draftman [32 h] → Engineer [16 h]; Draftman [16 h] |

| ID | Task | Start | Finish | Duration | Predecessors | Other |
| --- | --- | --- | --- | --- | --- | --- |
| HAL-E-SS-C-850 | BASE PLATE DETAILS | 2026-02-03 A → 2026-02-02 A (-1d) | 2026-02-03 A → 2026-02-02 A (-1d) |  |  | resources Engineer [4 h]; Draftman [4 h] → Engineer [32 h]; Draftman [32 h] |
| 2 | **ARCHITECTURAL** | 2026-02-03 → 2025-12-23 (-42d) | 2026-06-02 → 2026-02-04 (-118d) |  |  |  |
| HAL-E-SS-A-830 | GROUND FLOOR LAYOUT PLAN | 2026-02-03 A → 2025-12-23 A (-42d) | 2026-02-03 A → 2025-12-23 A (-42d) |  |  | resources Engineer [32 h]; Draftman [32 h] → Engineer [16 h]; Draftman [16 h] |
| HAL-E-SS-A-840 | GROUND FLOOR ENLARGED LAYOUT PLAN | 2026-02-03 A → 2025-12-23 A (-42d) | 2026-02-03 A → 2025-12-23 A (-42d) | 2d → 1.12d |  | resources Engineer [4 h]; Draftman [4 h] → Engineer [16 h]; Draftman [16 h] |
| HAL-E-SS-A-850 | SKYLIGHT DISTRIBUTION - ROOF LAYOUT PLAN | 2026-06-02 A → 2025-12-23 A (-161d) | 2026-06-02 A → 2025-12-23 A (-161d) |  |  | resources Engineer [4 h]; Draftman [4 h] → Engineer [16 h]; Draftman [16 h] |
| HAL-E-SS-A-1170 | ELEVATIONS (SHEET 01 0F 02) | 2026-02-03 A → 2025-12-24 A (-41d) | 2026-02-03 A → 2025-12-24 A (-41d) | 5d → 2d |  | resources none → Engineer [32 h]; Draftman [32 h] |
| HAL-E-SS-A-860 | ELEVATIONS (SHEET 01 0F 02) | 2026-02-03 A → 2025-12-24 A (-41d) | 2026-02-03 A → 2025-12-24 A (-41d) |  |  | resources Engineer [4 h]; Draftman [4 h] → Engineer [32 h]; Draftman [32 h] |
| HAL-E-SS-A-870 | BUILDING SECTIONS | 2026-02-03 A → 2025-12-24 A (-41d) | 2026-02-03 A → 2025-12-24 A (-41d) | 2d → 1.62d |  | resources Engineer [4 h]; Draftman [4 h] → Engineer [32 h]; Draftman [32 h] |
| HAL-E-SS-A-880 | WALL SECTIONS | 2026-02-03 A → 2025-12-24 A (-41d) | 2026-02-03 A → 2025-12-24 A (-41d) |  | HAL-E-SS-A-870, HAL-E-SS-A-1170 → HAL-E-SS-A-870 | resources Engineer [4 h]; Draftman [4 h] → Engineer [32 h]; Draftman [32 h] |
| HAL-E-SS-A-890 | CEILING LAYOUT PLAN | 2026-02-05 A → 2026-01-11 A (-25d) | 2026-02-05 A → 2026-01-11 A (-25d) |  |  | resources Engineer [4 h]; Draftman [4 h] → Engineer [32 h]; Draftman [32 h] |
| HAL-E-SS-A-900 | FINISHING LAYOUT PLAN | 2026-02-09 A → 2026-01-11 A (-29d) | 2026-02-09 A → 2026-01-11 A (-29d) | 2d → 1.62d |  | resources Engineer [4 h]; Draftman [4 h] → Engineer [32 h]; Draftman [32 h] |
| HAL-E-SS-A-910 | TOILET DETAILS | 2026-02-11 A → 2026-01-11 A (-31d) | 2026-02-11 A → 2026-01-11 A (-31d) | 2d → 1.5d | HAL-E-SS-A-900, HAL-E-SA-A-890, HAL-E-SA-A-1170, HAL-E-SA-A-880 → HAL-E-SS-A-900 | resources Engineer [4 h]; Draftman [4 h] → Engineer [32 h]; Draftman [32 h] |
| HAL-E-SS-A-930 | MISCELLANEOUS DETAILS - 01 | 2026-02-11 A → 2026-01-21 A (-21d) | 2026-02-11 A → 2026-01-21 A (-21d) |  |  | resources Engineer [4 h]; Draftman [4 h] → Engineer [32 h]; Draftman [32 h] |
| HAL-E-SS-A-940 | MISCELLANEOUS DETAILS - 02 | 2026-02-11 A → 2026-01-21 A (-21d) | 2026-02-11 A → 2026-01-21 A (-21d) | 2d → 1.5d |  | resources Engineer [4 h]; Draftman [4 h] → Engineer [32 h]; Draftman [32 h] |
| HAL-E-SS-A-950 | SIGNAGE LOCATION PLAN | 2026-02-11 A → 2026-01-21 A (-21d) | 2026-02-11 A → 2026-01-21 A (-21d) |  | HAL-E-SS-A-940, HAL-C-C-S-1167, HAL-C-B-S-647 → HAL-E-SS-A-940 | resources Engineer [4 h]; Draftman [4 h] → Engineer [32 h]; Draftman [32 h] |
| HAL-E-SS-A-960 | SIGNAGE DESIGN DETAILS | 2026-02-11 A → 2026-01-21 A (-21d) | 2026-02-11 A → 2026-01-21 A (-21d) |  | HAL-E-SS-A-950, HAL-C-A-S-897 → HAL-E-SS-A-950 | resources Engineer [8 h]; Draftman [8 h] → Engineer [32 h]; Draftman [32 h] |
| HAL-E-SS-A-920 | DOORS & WINDOWS SCHEDULE | 2026-02-11 A → 2026-02-04 A (-7d) | 2026-02-11 A → 2026-02-04 A (-7d) | 2d → 1.5d |  | resources Engineer [4 h]; Draftman [4 h] → Engineer [32 h]; Draftman [32 h] |
| 3 | **MECHANICAL** | 2026-02-04 → 2026-01-14 (-21d) | 2026-04-16 → 2026-02-03 (-72d) |  |  |  |
| HAL-E-SS-M-600 | TYPICAL GROUND FLOOR PLAN-PLUMBING- DRAINAGE | 2026-03-17 A → 2026-01-14 A (-62d) | 2026-03-17 A → 2026-01-14 A (-62d) | 2d → 4d |  | resources Engineer [4 h]; Draftman [4 h] → Engineer [16 h]; Draftman [16 h] |
| HAL-E-SS-M-610 | TOILETS DETAILS PLUMBING-DRAINAGE | 2026-03-11 A → 2026-01-17 A (-53d) | 2026-03-11 A → 2026-01-19 A (-51d) |  |  | resources Engineer [4 h]; Draftman [4 h] → Engineer [32 h]; Draftman [32 h] |
| HAL-E-SS-M-630 | GROUND FLOOR WATER SUPPLY PLAN | 2026-03-17 A → 2026-01-17 A (-59d) | 2026-03-17 A → 2026-01-17 A (-59d) | 2d → 1.5d |  | resources Engineer [4 h]; Draftman [4 h] → Engineer [32 h]; Draftman [32 h] |
| HAL-E-SS-M-640 | TOILET DETAILS PLUMBING-WATER | 2026-03-11 A → 2026-01-17 A (-53d) | 2026-03-11 A → 2026-01-17 A (-53d) | 2d → 1.5d | HAL-E-SS-M-630, HAL-C-GEN-77 → HAL-E-SS-M-630 | resources Engineer [4 h]; Draftman [4 h] → Engineer [32 h]; Draftman [32 h] |
| HAL-E-SS-M-680 | GENERAL MISELLANEOUS DETAILS PLUMBING | 2026-02-04 A → 2026-01-17 A (-18d) | 2026-02-04 A → 2026-01-17 A (-18d) |  | HAL-E-SS-M-660 → HAL-E-SS-M-670 | resources Engineer [4 h]; Draftman [4 h] → Engineer [32 h]; Draftman [32 h] |
| HAL-E-SS-M-690 | SCHEDULE- PLUMBING | 2026-03-17 A → 2026-01-17 A (-59d) | 2026-03-17 A → 2026-01-17 A (-59d) | 2d → 4d | HAL-E-SS-M-670 → HAL-E-SS-M-680 | resources Engineer [4 h]; Draftman [4 h] → Engineer [32 h]; Draftman [32 h] |
| HAL-E-SS-M-750 | GENERAL-INSTRUMENTATION & CONTROL | 2026-02-04 A → 2026-01-17 A (-18d) | 2026-02-04 A → 2026-01-17 A (-18d) |  |  | resources Engineer [8 h]; Draftman [8 h] → Engineer [32 h]; Draftman [32 h] |
| HAL-E-SS-M-770 | TYPICAL GROUND FLOOR PLAN FIREFIGHTING | 2026-03-14 A → 2026-01-17 A (-56d) | 2026-03-14 A → 2026-01-17 A (-56d) |  |  | resources Engineer [8 h]; Draftman [8 h] → Engineer [32 h]; Draftman [32 h] |
| HAL-E-SS-M-800 | MISCELLANEOUS DETAILS | 2026-02-04 A → 2026-01-17 A (-18d) | 2026-02-04 A → 2026-01-17 A (-18d) |  |  | resources Engineer [8 h]; Draftman [8 h] → Engineer [32 h]; Draftman [32 h] |
| HAL-E-SS-M-620 | TYPICAL ROOF PLUMBING PLAN | 2026-03-16 A → 2026-01-20 A (-55d) | 2026-03-16 A → 2026-01-20 A (-55d) |  |  | resources Engineer [4 h]; Draftman [4 h] → Engineer [32 h]; Draftman [32 h] |
| HAL-E-SS-M-650 | SCHEMATIC RISER DIAGRAM PLUMBING-DRAINAGE | 2026-02-04 A → 2026-01-20 A (-15d) | 2026-02-04 A → 2026-01-20 A (-15d) | 2d → 1.62d |  | resources Engineer [4 h]; Draftman [4 h] → Engineer [32 h]; Draftman [32 h] |
| HAL-E-SS-M-660 | SCHEMATIC RISER DIAGRAM PLUMBING-WATER | 2026-02-04 A → 2026-01-20 A (-15d) | 2026-02-04 A → 2026-01-20 A (-15d) | 2d → 1.5d |  | resources Engineer [4 h]; Draftman [4 h] → Engineer [32 h]; Draftman [32 h] |
| HAL-E-SS-M-670 | GENERAL MISELLANEOUS DETAILS PLUMBING | 2026-02-04 A → 2026-01-20 A (-15d) | 2026-02-04 A → 2026-01-20 A (-15d) |  | HAL-E-SS-M-680 → HAL-E-SS-M-660 | resources Engineer [4 h]; Draftman [4 h] → Engineer [32 h]; Draftman [32 h] |
| HAL-E-SS-M-720 | SCHEDULES | 2026-03-17 A → 2026-01-20 A (-56d) | 2026-03-17 A → 2026-01-20 A (-56d) |  |  | resources Engineer [8 h]; Draftman [8 h] → Engineer [32 h]; Draftman [32 h] |
| HAL-E-SS-M-760 | GENERAL MISCELLANEOUS DETAILS - HVAC | 2026-02-05 A → 2026-01-20 A (-16d) | 2026-02-05 A → 2026-01-20 A (-16d) | 2d → 1.62d |  | resources Engineer [8 h]; Draftman [8 h] → Engineer [32 h]; Draftman [32 h] |
| HAL-E-SS-M-780 | SCHEMATIC RISER DIAGRAM FIREFIGHTING | 2026-02-04 A → 2026-01-20 A (-15d) | 2026-02-04 A → 2026-01-20 A (-15d) |  |  | resources Engineer [8 h]; Draftman [8 h] → Engineer [32 h]; Draftman [32 h] |
| HAL-E-SS-M-790 | GENERAL-MISCELLANEOUS DETAILS- FIRE FIGHTING | 2026-02-04 A → 2026-01-20 A (-15d) | 2026-02-04 A → 2026-01-20 A (-15d) | 2d → 4d |  | resources Engineer [8 h]; Draftman [8 h] → Engineer [32 h]; Draftman [32 h] |
| HAL-E-SS-M-700 | PUMP ROOM LAYOUT | 2026-04-16 A → 2026-02-01 A (-74d) | 2026-04-16 A → 2026-02-01 A (-74d) |  |  | resources Engineer [4 h]; Draftman [4 h] → Engineer [32 h]; Draftman [32 h] |
| HAL-E-SS-M-710 | PUMP ROOM 3D & SECTIONS VIEW | 2026-04-16 A → 2026-02-01 A (-74d) | 2026-04-16 A → 2026-02-01 A (-74d) | 2d → 1.62d |  | resources Engineer [8 h]; Draftman [8 h] → Engineer [32 h]; Draftman [32 h] |
| HAL-E-SS-M-730 | GROUND FLOOR PLAN-HVAC SYSTEM | 2026-03-26 A → 2026-02-03 A (-51d) | 2026-03-26 A → 2026-02-03 A (-51d) | 2d → 1.5d |  | resources Engineer [8 h]; Draftman [8 h] → Engineer [32 h]; Draftman [32 h] |
| HAL-E-SS-M-740 | TYPICAL ROOF HVAC PLAN | 2026-03-26 A → 2026-02-03 A (-51d) | 2026-03-26 A → 2026-02-03 A (-51d) | 2d → 1.5d |  | resources Engineer [8 h]; Draftman [8 h] → Engineer [32 h]; Draftman [32 h] |
| 4 | **ELECTRICAL** | 2026-02-09 → 2025-12-22 (-49d) | 2026-06-25 → 2026-02-07 (-138d) |  |  |  |
| HAL-E-SS-E-1150 | GROUND FLOOR LIGHTING PLAN | 2026-02-09 A → 2025-12-22 A (-49d) | 2026-02-09 A → 2025-12-22 A (-49d) |  |  | resources Engineer [8 h]; Draftman [8 h] → Engineer [32 h]; Draftman [32 h] |
| HAL-E-SS-E-940 | GROUND FLOOR POWER PLAN | 2026-02-09 A → 2025-12-22 A (-49d) | 2026-02-09 A → 2025-12-22 A (-49d) | 2d → 4d |  | resources Engineer [4 h]; Draftman [4 h] → Engineer [32 h]; Draftman [32 h] |
| HAL-E-SS-E-1000 | ROOF FLOOR LIGHTING PLAN | 2026-02-09 A → 2025-12-24 A (-47d) | 2026-02-09 A → 2025-12-24 A (-47d) |  |  | resources Engineer [4 h]; Draftman [4 h] → Engineer [32 h]; Draftman [32 h] |
| HAL-E-SS-E-1140 | POWER FOR MECHANICAL | 2026-02-09 A → 2025-12-24 A (-47d) | 2026-02-09 A → 2025-12-24 A (-47d) |  |  | resources Engineer [8 h]; Draftman [8 h] → Engineer [32 h]; Draftman [32 h] |
| HAL-E-SS-E-950 | GROUND FLOOR POWER FOR MECHANICAL | 2026-02-09 A → 2025-12-24 A (-47d) | 2026-02-09 A → 2025-12-24 A (-47d) |  |  | resources Engineer [4 h]; Draftman [4 h] → Engineer [32 h]; Draftman [32 h] |
| HAL-E-SS-E-1070 | POWER RISER DIAGRAM | 2026-03-29 A → 2026-01-10 A (-78d) | 2026-03-29 A → 2026-01-10 A (-78d) |  |  | resources Engineer [8 h]; Draftman [8 h] → Engineer [32 h]; Draftman [32 h] |
| HAL-E-SS-E-1030 | GROUND FLOOR CCTV PLAN | 2026-03-01 A → 2026-01-13 A (-47d) | 2026-03-01 A → 2026-01-13 A (-47d) |  |  | resources Engineer [4 h]; Draftman [4 h] → Engineer [32 h]; Draftman [32 h] |
| HAL-E-SS-E-1040 | GROUND FLOOR DATA & TELECOM PLAN | 2026-03-01 A → 2026-01-13 A (-47d) | 2026-03-01 A → 2026-01-13 A (-47d) |  |  | resources Engineer [8 h]; Draftman [8 h] → Engineer [32 h]; Draftman [32 h] |
| HAL-E-SS-E-1060 | ROOF FLOOR LIGHTENING PLAN | 2026-02-09 A → 2026-01-13 A (-27d) | 2026-02-09 A → 2026-01-13 A (-27d) |  |  | resources Engineer [8 h]; Draftman [8 h] → Engineer [32 h]; Draftman [32 h] |
| HAL-E-SS-E-1110 | SCHEDULES | 2026-03-29 A → 2026-01-13 A (-75d) | 2026-03-29 A → 2026-01-13 A (-75d) |  |  | resources Engineer [8 h]; Draftman [8 h] → Engineer [32 h]; Draftman [32 h] |
| HAL-E-SS-E-1130 | GROUND FLOOR POWER PLAN | 2026-02-09 A → 2026-01-13 A (-27d) | 2026-02-09 A → 2026-01-13 A (-27d) | 1d → 2d |  | resources Engineer [8 h]; Draftman [8 h] → Engineer [32 h]; Draftman [32 h] |
| HAL-E-SS-E-960 | ROOF FLOOR POWER FOR MECHANICAL | 2026-02-09 A → 2026-01-13 A (-27d) | 2026-02-09 A → 2026-01-13 A (-27d) |  |  | resources Engineer [4 h]; Draftman [4 h] → Engineer [32 h]; Draftman [32 h] |
| HAL-E-SS-E-990 | GROUND FLOOR LIGHTING PLAN | 2026-02-09 A → 2026-01-13 A (-27d) | 2026-02-09 A → 2026-01-13 A (-27d) | 2d → 1.5d |  | resources Engineer [4 h]; Draftman [4 h] → Engineer [32 h]; Draftman [32 h] |
| HAL-E-SS-E-1020 | GROUND FLOOR FIRE ALARM PLAN | 2026-03-29 A → 2026-01-21 A (-67d) | 2026-03-29 A → 2026-01-21 A (-67d) |  |  | resources Engineer [4 h]; Draftman [4 h] → Engineer [32 h]; Draftman [32 h] |
| HAL-E-SS-E-1050 | GROUND FLOOR GROUNDING PLAN | 2026-03-01 A → 2026-01-21 A (-39d) | 2026-03-01 A → 2026-01-21 A (-39d) |  |  | resources Engineer [8 h]; Draftman [8 h] → Engineer [32 h]; Draftman [32 h] |
| HAL-E-SS-E-1080 | FIRE ALARM RISER DIAGRAM | 2026-03-29 A → 2026-01-21 A (-67d) | 2026-03-29 A → 2026-01-21 A (-67d) |  |  | resources Engineer [8 h]; Draftman [8 h] → Engineer [32 h]; Draftman [32 h] |
| HAL-E-SS-E-1160 | GROUND FLOOR GROUNDING PLAN | 2026-03-01 A → 2026-01-21 A (-39d) | 2026-03-01 A → 2026-01-21 A (-39d) |  |  | resources Engineer [8 h]; Draftman [8 h] → Engineer [32 h]; Draftman [32 h] |
| HAL-E-SS-E-1090 | DATA & TELECOME RISER DIAGRAM | 2026-03-29 A → 2026-02-04 A (-53d) | 2026-03-29 A → 2026-02-04 A (-53d) |  |  | resources Engineer [8 h]; Draftman [8 h] → Engineer [32 h]; Draftman [32 h] |
| HAL-E-SS-E-1100 | ACCESS CONTROL RISER DIAGRAM | 2026-03-29 A → 2026-02-04 A (-53d) | 2026-03-29 A → 2026-02-04 A (-53d) |  |  | resources Engineer [8 h]; Draftman [8 h] → Engineer [32 h]; Draftman [32 h] |
| HAL-E-SS-E-1170 | RISER DIAGRAM | 2026-04-27 A → 2026-02-04 A (-82d) | 2026-04-27 A → 2026-02-04 A (-82d) |  |  |  |
| HAL-E-SS-E-1010 | GOUND FLOOR ACCESS CONTROL | 2026-03-29 A → 2026-02-05 A (-52d) | 2026-03-29 A → 2026-02-05 A (-52d) | 2d → 1.62d |  | resources Engineer [4 h]; Draftman [4 h] → Engineer [32 h]; Draftman [32 h] |
| HAL-E-SS-E-1120 | ELECTRICAL DETAILS | 2026-03-01 A → 2026-02-07 A (-22d) | 2026-03-01 A → 2026-02-07 A (-22d) |  |  | resources Engineer [8 h]; Draftman [8 h] → Engineer [32 h]; Draftman [32 h] |
| HAL-E-SS-E-1180 | ELECTRICAL DETAILS | 2026-03-01 A → 2026-02-07 A (-22d) | 2026-03-01 A → 2026-02-07 A (-22d) |  |  |  |
| HAL-E-SS-E-970 | ROOF FLOOR POWER | 2026-04-08 A → 2026-02-07 A (-60d) | 2026-04-09 A → 2026-02-07 A (-61d) | 2d → 1.62d |  | resources Engineer [4 h]; Draftman [4 h] → Engineer [32 h]; Draftman [32 h] |
| HAL-E-SS-E-980 | PV SYSTEM CALCULATION | 2026-06-25 A → 2026-02-07 A (-138d) | 2026-06-25 A → 2026-02-07 A (-138d) | 2d → 1.5d |  | resources Engineer [4 h]; Draftman [4 h] → Engineer [32 h]; Draftman [32 h] |
| 1 | **ROAD DRAWINGS** | 2026-01-20 → 2025-12-11 (-40d) | 2026-07-01 → 2026-02-04 (-147d) |  |  |  |
| HAL-E-SS-R-780 | TOPOGRAPHIC SURVEY-CONTOURS MAP | 2026-01-20 A → 2025-12-11 A (-40d) | 2026-01-20 A → 2025-12-11 A (-40d) |  |  | resources Engineer [32 h]; Draftman [32 h] → Engineer [16 h]; Draftman [16 h] |
| HAL-E-SS-R-730 | GRADING LAYOUT PLAN | 2026-02-03 A → 2025-12-18 A (-47d) | 2026-02-03 A → 2025-12-18 A (-47d) |  |  |  |
| HAL-E-SS-R-740 | ROAD LAYOUT PLAN | 2026-03-16 A → 2026-01-14 A (-61d) | 2026-03-16 A → 2026-01-14 A (-61d) |  |  |  |
| HAL-E-SS-R-820 | SWEPT PATH LAYOUT PLAN | 2026-06-14 A → 2026-01-14 A (-151d) | 2026-06-14 A → 2026-02-04 A (-130d) |  |  | resources Engineer [32 h]; Draftman [32 h] → Engineer [16 h]; Draftman [16 h] |

| ID | Task | Start | Finish | Duration | Predecessors | Other |
| --- | --- | --- | --- | --- | --- | --- |
| HAL-E-SS-R-840 | ROAD STANDARD DETAILS-TYPICAL PAVEMENT DETAILS | 2026-04-21 A → 2026-01-14 A (-97d) | 2026-04-21 A → 2026-01-14 A (-97d) |  |  | resources Engineer [32 h]; Draftman [32 h] → Engineer [16 h]; Draftman [16 h] |
| HAL-E-SS-R-850 | ROAD STANDARD DETAILS-TYPICAL CURB DETAILS | 2026-04-21 A → 2026-01-14 A (-97d) | 2026-04-21 A → 2026-01-14 A (-97d) |  |  | resources Engineer [32 h]; Draftman [32 h] → Engineer [16 h]; Draftman [16 h] |
| HAL-E-SS-R-860 | ROAD STANDARD DETAILS-ROAD SIGN DETAILS | 2026-04-21 A → 2026-01-14 A (-97d) | 2026-04-21 A → 2026-01-14 A (-97d) |  |  | resources Engineer [4 h]; Draftman [4 h] → Engineer [16 h]; Draftman [16 h] |
| HAL-E-SS-R-870 | ROAD STANDARD DETAILS-ROAD MARKING DETAILS | 2026-04-21 A → 2026-01-14 A (-97d) | 2026-04-21 A → 2026-01-14 A (-97d) | 2d → 1.12d |  | resources Engineer [4 h]; Draftman [4 h] → Engineer [16 h]; Draftman [16 h] |
| HAL-E-SS-R-750 | TYPICAL CROSS SECTIONS - KEY PLAN | 2026-03-16 A → 2026-01-18 A (-57d) | 2026-03-16 A → 2026-01-18 A (-57d) |  |  |  |
| HAL-E-SS-R-760 | TYPICAL CROSS SECTIONS | 2026-03-16 A → 2026-01-18 A (-57d) | 2026-03-16 A → 2026-01-18 A (-57d) |  |  |  |
| HAL-E-SS-R-880 | GENERAL SITE PLAN - OVERALL | 2026-03-08 A → 2026-01-18 A (-49d) | 2026-03-08 A → 2026-01-18 A (-49d) |  |  | resources Engineer [4 h]; Draftman [4 h] → Engineer [32 h]; Draftman [32 h] |
| HAL-E-SS-R-890 | SITE SETTING-OUT PLAN - OVERALL | 2026-03-08 A → 2026-01-18 A (-49d) | 2026-03-08 A → 2026-01-18 A (-49d) |  |  | resources Engineer [4 h]; Draftman [4 h] → Engineer [32 h]; Draftman [32 h] |
| HAL-E-SS-R-770 | ROAD PROFILES | 2026-03-16 A → 2026-01-20 A (-55d) | 2026-03-16 A → 2026-01-20 A (-55d) |  |  | resources Engineer [32 h]; Draftman [32 h] → Engineer [16 h]; Draftman [16 h] |
| HAL-E-SS-R-800 | ALIGNMENT & CURB SETTING OUT TABLES | 2026-06-14 A → 2026-01-20 A (-145d) | 2026-06-14 A → 2026-01-20 A (-145d) |  |  | resources Engineer [32 h]; Draftman [32 h] → Engineer [16 h]; Draftman [16 h] |
| HAL-E-SS-R-810 | ALIGNMNET GEOMETRIC DATA | 2026-06-14 A → 2026-01-20 A (-145d) | 2026-06-14 A → 2026-01-20 A (-145d) |  |  | resources Engineer [32 h]; Draftman [32 h] → Engineer [16 h]; Draftman [16 h] |
| HAL-E-SS-R-920 | GENERAL SOFTSCAPE LAYOUT | 2026-03-08 A → 2026-01-20 A (-47d) | 2026-03-08 A → 2026-01-20 A (-47d) | 2d → 4d |  | resources Engineer [4 h]; Draftman [4 h] → Engineer [32 h]; Draftman [32 h] |
| HAL-E-SS-R-790 | ALIGNMENT & CURB SETTING OUT | 2026-06-14 A → 2026-01-21 A (-144d) | 2026-06-14 A → 2026-01-21 A (-144d) | 2d → 5d |  | resources Engineer [32 h]; Draftman [32 h] → Engineer [16 h]; Draftman [16 h] |
| HAL-E-SS-R-830 | SIGNING & MARKING LAYOUT PLAN | 2026-04-21 A → 2026-01-21 A (-90d) | 2026-04-21 A → 2026-01-21 A (-90d) | 2d → 1.62d |  | resources Engineer [32 h]; Draftman [32 h] → Engineer [16 h]; Draftman [16 h] |
| HAL-E-SS-R-900 | GENERAL LANDSCAPE LAYOUT | 2026-03-08 A → 2026-01-21 A (-46d) | 2026-03-08 A → 2026-01-21 A (-46d) |  |  | resources Engineer [4 h]; Draftman [4 h] → Engineer [32 h]; Draftman [32 h] |
| HAL-E-SS-R-910 | GENERAL HARDSCAPE LAYOUT | 2026-03-08 A → 2026-01-21 A (-46d) | 2026-03-08 A → 2026-01-21 A (-46d) | 2d → 4d |  | resources Engineer [4 h]; Draftman [4 h] → Engineer [32 h]; Draftman [32 h] |
| HAL-E-SS-R-930 | PUMP ROOM DETAILS | 2026-03-14 A → 2026-01-22 A (-51d) | 2026-03-14 A → 2026-01-22 A (-51d) | 1d → 1.62d |  | resources Engineer [4 h]; Draftman [4 h] → Engineer [32 h]; Draftman [32 h] |
| HAL-E-SS-R-940 | GENERAL DETAILS | 2026-03-18 A → 2026-02-04 A (-42d) | 2026-03-18 A → 2026-02-04 A (-42d) | 1d → 2d | HAL-E-SS-R-930, HAL-E-SA-M-650, HAL-E-SA-E-980, HAL-E-SA-E-970, HAL-E-SA-E-960, HAL-E-SA-R-920, HAL-E-SA-EX-750 → HAL-E-SS-R-930 | resources Engineer [4 h]; Draftman [4 h] → Engineer [32 h]; Draftman [32 h] |
| HAL-E-SS-R-950 | LANDSCAPE DETAILS | 2026-07-01 A → 2026-02-04 A (-147d) | 2026-07-01 A → 2026-02-04 A (-147d) | 1d → 2d | HAL-E-SS-R-940, Engineering fill → HAL-E-SS-R-940 | resources Engineer [4 h]; Draftman [4 h] → Engineer [32 h]; Draftman [32 h] |
| HAL-E-SS-R-960 | LANDSCAPE SCHEDULES | 2026-03-08 A → 2026-02-04 A (-32d) | 2026-03-08 A → 2026-02-04 A (-32d) |  |  | resources none → Draftman [32 h]; Engineer [32 h] |
| 6 | **EXTERNAL** | 2026-02-10 → 2026-01-17 (-24d) | 2026-06-02 → 2026-01-28 (-125d) |  |  |  |
| HAL-E-SS-EX-1000 | WASHOUT CHAMBER DETAILS | 2026-02-10 A → 2026-01-17 A (-24d) | 2026-02-10 A → 2026-01-17 A (-24d) |  |  | resources none → Engineer [32 h]; Draftman [32 h] |
| HAL-E-SS-EX-1010 | AIR RELEASE VALVE CHAMBER DETAILS | 2026-02-10 A → 2026-01-17 A (-24d) | 2026-02-10 A → 2026-01-17 A (-24d) |  |  | resources none → Engineer [32 h]; Draftman [32 h] |
| HAL-E-SS-EX-1020 | THRUST BLOCK DETAILS (SHEET 1 OF 4) | 2026-02-10 A → 2026-01-17 A (-24d) | 2026-02-10 A → 2026-01-17 A (-24d) |  |  | resources none → Engineer [64 h]; Draftman [64 h] |
| HAL-E-SS-EX-1030 | THRUST BLOCK DETAILS (SHEET 2 OF 4) | 2026-02-10 A → 2026-01-17 A (-24d) | 2026-02-10 A → 2026-01-17 A (-24d) |  |  | resources none → Engineer [64 h]; Draftman [64 h] |
| HAL-E-SS-EX-1040 | THRUST BLOCK DETAILS (SHEET 3 OF 4) | 2026-02-10 A → 2026-01-17 A (-24d) | 2026-02-10 A → 2026-01-17 A (-24d) |  |  | resources none → Engineer [64 h]; Draftman [64 h] |
| HAL-E-SS-EX-1050 | THRUST BLOCK DETAILS (SHEET 4 OF 4) | 2026-02-10 A → 2026-01-17 A (-24d) | 2026-02-10 A → 2026-01-17 A (-24d) |  |  | resources none → Engineer [64 h]; Draftman [64 h] |
| HAL-E-SS-EX-760 | DOUBLE VALVE CHAMBER DETAILS | 2026-04-21 A → 2026-01-17 A (-94d) | 2026-04-21 A → 2026-01-17 A (-94d) |  |  | resources Engineer [4 h]; Draftman [4 h] → Engineer [32 h]; Draftman [32 h] |
| HAL-E-SS-EX-800 | FLOW METER REINFORCEMENT DETAILS | 2026-06-02 A → 2026-01-17 A (-136d) | 2026-06-02 A → 2026-01-17 A (-136d) |  |  | resources Engineer [4 h]; Draftman [4 h] → Engineer [32 h]; Draftman [32 h] |
| HAL-E-SS-EX-810 | THRUST BLOCK DETAILS (SHEET 1 OF 4) | 2026-02-10 A → 2026-01-17 A (-24d) | 2026-02-10 A → 2026-01-17 A (-24d) |  |  | resources Engineer [8 h]; Draftman [8 h] → Engineer [32 h]; Draftman [32 h] |
| HAL-E-SS-EX-820 | THRUST BLOCK DETAILS (SHEET 2 OF 4) | 2026-02-10 A → 2026-01-17 A (-24d) | 2026-02-10 A → 2026-01-17 A (-24d) |  |  | resources Engineer [8 h]; Draftman [8 h] → Engineer [32 h]; Draftman [32 h] |
| HAL-E-SS-EX-830 | THRUST BLOCK DETAILS (SHEET 3 OF 4) | 2026-02-10 A → 2026-01-17 A (-24d) | 2026-02-10 A → 2026-01-17 A (-24d) |  |  | resources Engineer [8 h]; Draftman [8 h] → Engineer [32 h]; Draftman [32 h] |
| HAL-E-SS-EX-840 | THRUST BLOCK DETAILS (SHEET 4 OF 4) | 2026-02-10 A → 2026-01-17 A (-24d) | 2026-02-10 A → 2026-01-17 A (-24d) |  |  | resources Engineer [8 h]; Draftman [8 h] → Engineer [32 h]; Draftman [32 h] |
| HAL-E-SS-EX-870 | GENERAL NOTES | 2026-02-10 A → 2026-01-17 A (-24d) | 2026-02-10 A → 2026-01-17 A (-24d) |  |  | resources none → Engineer [32 h]; Draftman [32 h] |
| HAL-E-SS-EX-880 | PIPE TRENCHES DETAILS (1) | 2026-02-10 A → 2026-01-17 A (-24d) | 2026-02-10 A → 2026-01-17 A (-24d) |  |  | resources none → Engineer [32 h]; Draftman [32 h] |
| HAL-E-SS-EX-890 | PIPE TRENCHES DETAILS (2) | 2026-02-10 A → 2026-01-17 A (-24d) | 2026-02-10 A → 2026-01-17 A (-24d) |  |  | resources none → Engineer [32 h]; Draftman [32 h] |
| HAL-E-SS-EX-910 | CAST IN PLACE MANHOLE DETAILS FOR DEPTH < 6000MM (TYPE-B) | 2026-02-12 A → 2026-01-17 A (-26d) | 2026-02-12 A → 2026-01-17 A (-26d) |  |  | resources none → Engineer [32 h]; Draftman [32 h] |
| HAL-E-SS-EX-930 | BACKDROP DETAIL OF PRECAST MANHOLE DEPTH FROM 3000MM TO 6000MM | 2026-02-10 A → 2026-01-17 A (-24d) | 2026-02-10 A → 2026-01-17 A (-24d) |  |  | resources none → Engineer [32 h]; Draftman [32 h] |
| HAL-E-SS-EX-940 | PRECAST MANHOLE DETAILS | 2026-04-15 A → 2026-01-17 A (-88d) | 2026-04-15 A → 2026-01-17 A (-88d) |  |  | resources none → Engineer [32 h]; Draftman [32 h] |
| HAL-E-SS-EX-960 | PIPE TRENCH DETAILS | 2026-02-10 A → 2026-01-17 A (-24d) | 2026-02-10 A → 2026-01-17 A (-24d) |  | HAL-E-SS-EX-720 → HAL-E-SS-EX-950 | resources Engineer [4 h]; Draftman [4 h] → Engineer [32 h]; Draftman [32 h] |
| HAL-E-SS-EX-970 | BURIED GATE VALVE DETAILS | 2026-02-10 A → 2026-01-17 A (-24d) | 2026-02-10 A → 2026-01-17 A (-24d) |  |  | resources Engineer [4 h]; Draftman [4 h] → Engineer [32 h]; Draftman [32 h] |
| HAL-E-SS-EX-990 | DOUBLE VALVE CHAMBER DETAILS | 2026-04-21 A → 2026-01-17 A (-94d) | 2026-04-21 A → 2026-01-17 A (-94d) |  |  | resources none → Engineer [32 h]; Draftman [32 h] |
| HAL-E-SS-EX-730 | PIPE TRENCH DETAILS | 2026-02-10 A → 2026-01-20 A (-21d) | 2026-02-10 A → 2026-01-20 A (-21d) |  | HAL-E-SS-EX-950 → HAL-E-SS-EX-720 | resources none → Engineer [32 h]; Draftman [32 h] |
| HAL-E-SS-EX-740 | BURIED GATE VALVE DETAILS | 2026-02-10 A → 2026-01-20 A (-21d) | 2026-02-10 A → 2026-01-20 A (-21d) |  |  | resources none → Engineer [32 h]; Draftman [32 h] |
| HAL-E-SS-EX-750 | SINGLE VALVE CHAMBER DETAILS | 2026-04-21 A → 2026-01-21 A (-90d) | 2026-04-21 A → 2026-01-21 A (-90d) |  | HAL-E-SS-EX-970 → HAL-E-SS-EX-740 | resources Engineer [4 h]; Draftman [4 h] → Engineer [32 h]; Draftman [32 h] |
| HAL-E-SS-EX-770 | WASHOUT CHAMBER DETAILS | 2026-02-10 A → 2026-01-21 A (-20d) | 2026-02-10 A → 2026-01-21 A (-20d) |  |  | resources Engineer [4 h]; Draftman [4 h] → Engineer [32 h]; Draftman [32 h] |
| HAL-E-SS-EX-780 | AIR RELEASE VALVE CHAMBER DETAILS | 2026-02-10 A → 2026-01-21 A (-20d) | 2026-02-10 A → 2026-01-21 A (-20d) |  |  | resources Engineer [4 h]; Draftman [4 h] → Engineer [32 h]; Draftman [32 h] |
| HAL-E-SS-EX-900 | CAST IN PLACE MANHOLE DETAILS FOR DEPTH < 6000MM (TYPE-A) | 2026-02-10 A → 2026-01-21 A (-20d) | 2026-02-10 A → 2026-01-21 A (-20d) |  |  | resources none → Engineer [32 h]; Draftman [32 h] |
| HAL-E-SS-EX-920 | BACKDROP DETAIL OF PRECAST MANHOLE DEPTH < 3000MM | 2026-02-10 A → 2026-01-21 A (-20d) | 2026-02-10 A → 2026-01-21 A (-20d) |  |  | resources none → Engineer [32 h]; Draftman [32 h] |
| HAL-E-SS-EX-980 | SINGLE VALVE CHAMBER DETAILS | 2026-04-21 A → 2026-01-21 A (-90d) | 2026-04-21 A → 2026-01-21 A (-90d) | 2d → 1.5d | HAL-E-SS-EX-740 → HAL-E-SS-EX-970 | resources none → Engineer [32 h]; Draftman [32 h] |
| HAL-E-SS-EX-690 | POTABLE WATER NETWORK | 2026-05-11 A → 2026-01-28 A (-103d) | 2026-05-11 A → 2026-01-28 A (-103d) | 2d → 3.62d |  | resources Engineer [4 h]; Draftman [4 h] → Engineer [16 h]; Draftman [16 h] |
| HAL-E-SS-EX-700 | FIRE FIGHTING WATER NETWORK | 2026-05-11 A → 2026-01-28 A (-103d) | 2026-05-11 A → 2026-01-28 A (-103d) | 2d → 1.5d |  | resources Engineer [4 h]; Draftman [4 h] → Engineer [32 h]; Draftman [32 h] |
| HAL-E-SS-EX-710 | POTABLE WATER NETWORK PROFILES | 2026-05-11 A → 2026-01-28 A (-103d) | 2026-05-11 A → 2026-01-28 A (-103d) |  |  | resources Engineer [4 h]; Draftman [4 h] → Engineer [32 h]; Draftman [32 h] |
| HAL-E-SS-EX-720 | FIRE FIGHTING NETWORK PROFILE | 2026-05-11 A → 2026-01-28 A (-103d) | 2026-05-11 A → 2026-01-28 A (-103d) | 2d → 1.62d |  | resources Engineer [4 h]; Draftman [4 h] → Engineer [32 h]; Draftman [32 h] |
| HAL-E-SS-EX-790 | FLOW METER DETAILS | 2026-06-02 A → 2026-01-28 A (-125d) | 2026-06-02 A → 2026-01-28 A (-125d) | 2d → 1.5d |  | resources Engineer [4 h]; Draftman [4 h] → Engineer [32 h]; Draftman [32 h] |
| HAL-E-SS-EX-850 | SEWAGE NETWORK | 2026-05-14 A → 2026-01-28 A (-106d) | 2026-05-14 A → 2026-01-28 A (-106d) |  |  | resources Engineer [8 h]; Draftman [8 h] → Engineer [32 h]; Draftman [32 h] |
| HAL-E-SS-EX-860 | SEWAGE NETWORK PROFILES | 2026-05-14 A → 2026-01-28 A (-106d) | 2026-05-14 A → 2026-01-28 A (-106d) |  |  | resources none → Engineer [32 h]; Draftman [32 h] |
| HAL-E-SS-EX-950 | IRRIGATION NETWORK LAYOUT SHEET 1 OF 1 | 2026-05-12 A → 2026-01-28 A (-104d) | 2026-05-12 A → 2026-01-28 A (-104d) |  |  | resources none → Engineer [32 h]; Draftman [32 h] |
| 2 | **REVIEW AND APPROVAL** | 2026-01-20 → 2025-12-11 (-40d) | 2026-07-05 → 2026-03-29 (-98d) |  |  |  |
| 5 | **STRUCTURAL** | 2026-02-03 → 2025-12-24 (-41d) | 2026-06-03 → 2026-03-29 (-66d) |  |  |  |
| HAL-E-SA-C-830 | SECTIONS | 2026-02-03 A → 2025-12-24 A (-41d) | 2026-02-05 A → 2026-01-17 A (-19d) | 2d → 0.62d |  | resources Engineer [4 h]; Draftman [4 h] → Engineer; Draftman |
| HAL-E-SA-C-840 | EXTERNAL WALL SECTION DETAILS | 2026-02-03 A → 2025-12-24 A (-41d) | 2026-02-05 A → 2026-01-17 A (-19d) |  | HAL-E-SS-C-840, HAL-E-SA-C-820, HAL-E-SA-C-810, HAL-E-SA-C-790 → HAL-E-SS-C-840 | resources Engineer [4 h]; Draftman [4 h] → Engineer; Draftman |
| HAL-E-SA-C-750 | FOUNDATION LAYOUT | 2026-02-18 A → 2025-12-30 A (-50d) | 2026-03-07 A → 2026-01-08 A (-58d) |  |  | resources Draftman [32 h]; Engineer [32 h] → Draftman; Engineer |
| HAL-E-SA-C-820 | COLUMNS AND AXIS LAYOUT | 2026-02-07 A → 2026-01-01 A (-37d) | 2026-03-07 A → 2026-01-08 A (-58d) |  |  | resources Engineer [4 h]; Draftman [4 h] → Engineer; Draftman |
| HAL-E-SA-C-860 | TYPICAL STRUCTURAL SECTION DETAILS | 2026-04-21 A → 2026-01-01 A (-110d) | 2026-05-12 A → 2026-01-04 A (-128d) | 2d → 1.62d | HAL-E-SS-C-860, HAL-E-SA-C-840, HAL-E-SA-C-830 → HAL-E-SS-C-860 | resources Engineer [4 h]; Draftman [4 h] → Engineer; Draftman |
| HAL-E-SA-C-870 | STRUCTURAL SCHEDULE | 2026-06-02 A → 2026-01-01 A (-152d) | 2026-06-03 A → 2026-01-08 A (-146d) | 2d → 1.5d |  | resources Engineer [4 h]; Draftman [4 h] → Engineer; Draftman |
| HAL-E-SA-C-780 | TIE BEAM @ 4500mm EL. | 2026-03-01 A → 2026-01-08 A (-52d) | 2026-05-17 A → 2026-02-28 A (-78d) |  | HAL-E-SS-C-780, HAL-E-SA-C-770 → HAL-E-SS-C-780 | resources Engineer [32 h]; Draftman [32 h] → Engineer; Draftman |
| HAL-E-SA-C-880 | PUMP SHED AND GRP WATER TANK STRUCTURAL DETAILS (1-2) | 2026-03-29 A → 2026-01-22 A (-66d) | 2026-05-17 A → 2026-02-12 A (-94d) |  |  | resources Engineer [4 h]; Draftman [4 h] → Engineer; Draftman |
| HAL-E-SA-C-890 | PUMP SHED AND GRP WATER TANK STRUCTURAL DETAILS (2-2) | 2026-03-29 A → 2026-01-22 A (-66d) | 2026-05-17 A → 2026-02-12 A (-94d) |  |  | resources Engineer [4 h]; Draftman [4 h] → Engineer; Draftman |
| HAL-E-SA-C-760 | GRADE BEAM / SLAB ON GRADE LAYOUT | 2026-04-21 A → 2026-01-28 A (-83d) | 2026-05-03 A → 2026-03-29 A (-35d) |  |  | resources Engineer [32 h]; Draftman [32 h] → Engineer; Draftman |

| ID | Task | Start | Finish | Duration | Predecessors | Other |
| --- | --- | --- | --- | --- | --- | --- |
| HAL-E-SA-C-770 | BASE PLATE LAYOUT | 2026-02-07 A → 2026-02-02 A (-5d) | 2026-03-17 A → 2026-02-05 A (-40d) |  | HAL-E-SS-C-770, HAL-E-SA-C-760 → HAL-E-SS-C-770 | resources Engineer [32 h]; Draftman [32 h] → Engineer; Draftman |
| HAL-E-SA-C-790 | ROOF FRAMING LAYOUT | 2026-02-07 A → 2026-02-02 A (-5d) | 2026-03-17 A → 2026-02-05 A (-40d) |  |  | resources Engineer [32 h]; Draftman [32 h] → Engineer; Draftman |
| HAL-E-SA-C-800 | PURLINS FRAMING LAYOUT | 2026-02-07 A → 2026-02-02 A (-5d) | 2026-03-17 A → 2026-02-05 A (-40d) |  | HAL-E-SS-C-800, HAL-E-SA-C-780 → HAL-E-SS-C-800 | resources Engineer [32 h]; Draftman [32 h] → Engineer; Draftman |
| HAL-E-SA-C-810 | ROOF SHEETING LAYOUT | 2026-02-07 A → 2026-02-02 A (-5d) | 2026-03-17 A → 2026-02-05 A (-40d) | 2d → 1.62d |  | resources Engineer [4 h]; Draftman [4 h] → Engineer; Draftman |
| HAL-E-SA-C-850 | BASE PLATE DETAILS | 2026-02-03 A → 2026-02-02 A (-1d) |  |  |  | resources Engineer [4 h]; Draftman [4 h] → Engineer; Draftman |
| 2 | **ARCHITECTURAL** | 2026-02-03 → 2025-12-23 (-42d) | 2026-06-03 → 2026-03-04 (-91d) |  |  |  |
| HAL-E-SA-A-830 | GROUND FLOOR LAYOUT PLAN | 2026-02-03 A → 2025-12-23 A (-42d) | 2026-02-08 A → 2025-12-24 A (-46d) | 2d → 1.12d |  | resources Engineer [4 h]; Draftman [4 h] → Engineer; Draftman |
| HAL-E-SA-A-840 | GROUND FLOOR ENLARGED LAYOUT PLAN | 2026-02-03 A → 2025-12-23 A (-42d) | 2026-02-08 A → 2025-12-24 A (-46d) |  | HAL-E-SS-A-840, HAL-E-SA-A-830 → HAL-E-SS-A-840 | resources Engineer [4 h]; Draftman [4 h] → Engineer; Draftman |
| HAL-E-SA-A-850 | SKYLIGHT DISTRIBUTION - ROOF LAYOUT PLAN | 2026-06-02 A → 2025-12-23 A (-161d) | 2026-06-03 A → 2026-01-24 A (-130d) | 2d → 1.62d | HAL-E-SS-A-850, HAL-E-SA-A-840 → HAL-E-SS-A-850 | resources Engineer [4 h]; Draftman [4 h] → Engineer; Draftman |
| HAL-E-SA-A-1170 | BUILDING SECTIONS | 2026-02-03 A → 2025-12-24 A (-41d) | 2026-02-05 A → 2026-01-17 A (-19d) |  | HAL-E-SS-A-1170, HAL-E-SA-A-870 → HAL-E-SS-A-1170 |  |
| HAL-E-SA-A-860 | ELEVATIONS (SHEET 01 0F 02) | 2026-02-03 A → 2025-12-24 A (-41d) | 2026-02-05 A → 2026-01-15 A (-21d) |  | HAL-E-SS-A-860, HAL-E-SA-A-850 → HAL-E-SS-A-860 | resources Engineer [4 h]; Draftman [4 h] → Engineer; Draftman |
| HAL-E-SA-A-870 | ELEVATIONS (SHEET 01 0F 02) | 2026-02-03 A → 2025-12-24 A (-41d) | 2026-02-05 A → 2026-01-15 A (-21d) |  | HAL-E-SS-A-870, HAL-E-SA-A-860 → HAL-E-SS-A-870 | resources Engineer [4 h]; Draftman [4 h] → Engineer; Draftman |
| HAL-E-SA-A-880 | WALL SECTIONS | 2026-02-03 A → 2025-12-24 A (-41d) | 2026-02-05 A → 2026-01-17 A (-19d) |  |  | resources Engineer [4 h]; Draftman [4 h] → Engineer; Draftman |
| HAL-E-SA-A-890 | CEILING LAYOUT PLAN | 2026-02-05 A → 2026-01-11 A (-25d) | 2026-02-09 A → 2026-03-04 A (+23d) | 2d → 1.62d |  | resources Engineer [4 h]; Draftman [4 h] → Engineer; Draftman |
| HAL-E-SA-A-900 | FINISHING LAYOUT PLAN | 2026-02-09 A → 2026-01-11 A (-29d) | 2026-02-14 A → 2026-01-17 A (-28d) | 2d → 1.5d | HAL-E-SS-A-900, HAL-E-SA-A-890, HAL-E-SA-A-880 → HAL-E-SS-A-900 | resources Engineer [4 h]; Draftman [4 h] → Engineer; Draftman |
| HAL-E-SA-A-910 | TOILET DETAILS | 2026-02-11 A → 2026-01-11 A (-31d) | 2026-02-25 A → 2026-01-18 A (-38d) |  | HAL-E-SS-A-910, HAL-E-SA-A-1170 → HAL-E-SS-A-910 | resources Engineer [4 h]; Draftman [4 h] → Engineer; Draftman |
| HAL-E-SA-A-930 | MISCELLANEOUS DETAILS - 01 | 2026-02-11 A → 2026-01-21 A (-21d) | 2026-02-25 A → 2026-01-26 A (-30d) |  | HAL-E-SS-A-930, HAL-E-SA-C-890 → HAL-E-SS-A-930 | resources Engineer [4 h]; Draftman [4 h] → Engineer; Draftman |
| HAL-E-SA-A-940 | MISCELLANEOUS DETAILS - 02 | 2026-02-11 A → 2026-01-21 A (-21d) | 2026-02-25 A → 2026-01-26 A (-30d) | 2d → 1.62d | HAL-E-SS-A-940, HAL-E-SA-A-910, HAL-E-SA-A-900 → HAL-E-SS-A-940 | resources Engineer [4 h]; Draftman [4 h] → Engineer; Draftman |
| HAL-E-SA-A-950 | SIGNAGE LOCATION PLAN | 2026-02-11 A → 2026-01-21 A (-21d) | 2026-02-25 A → 2026-01-28 A (-28d) |  | HAL-E-SS-A-950, HAL-E-SA-A-930, HAL-E-SA-A-920 → HAL-E-SS-A-950 | resources Engineer [8 h]; Draftman [8 h] → Engineer; Draftman |
| HAL-E-SA-A-960 | SIGNAGE DESIGN DETAILS | 2026-02-11 A → 2026-01-21 A (-21d) | 2026-02-25 A → 2026-01-28 A (-28d) |  | HAL-E-SS-A-960, HAL-E-SA-A-940 → HAL-E-SS-A-960 | resources Engineer [8 h]; Draftman [8 h] → Engineer; Draftman |
| HAL-E-SA-A-920 | DOORS & WINDOWS SCHEDULE | 2026-02-11 A → 2026-02-04 A (-7d) | 2026-02-25 A → 2026-02-08 A (-17d) | 2d → 1.5d | HAL-E-SS-A-920, HAL-E-SA-C-880 → HAL-E-SS-A-920 | resources Engineer [4 h]; Draftman [4 h] → Engineer; Draftman |
| 3 | **MECHANICAL** | 2026-02-04 → 2026-01-14 (-21d) | 2026-06-09 → 2026-03-02 (-99d) |  |  |  |
| HAL-E-SA-M-600 | TYPICAL GROUND FLOOR PLAN-PLUMBING- DRAINAGE | 2026-03-17 A → 2026-01-14 A (-62d) | 2026-05-12 A → 2026-03-02 A (-71d) |  |  | resources Engineer [4 h]; Draftman [4 h] → Engineer; Draftman |
| HAL-E-SA-M-610 | TOILETS DETAILS PLUMBING-DRAINAGE | 2026-03-11 A → 2026-01-17 A (-53d) | 2026-05-10 A → 2026-01-17 A (-113d) |  | HAL-E-SS-M-610, HAL-E-SA-M-600 → HAL-E-SS-M-610 | resources Engineer [4 h]; Draftman [4 h] → Engineer; Draftman |
| HAL-E-SA-M-630 | GROUND FLOOR WATER SUPPLY PLAN | 2026-03-17 A → 2026-01-17 A (-59d) | 2026-05-12 A → 2026-01-20 A (-112d) |  | HAL-E-SS-M-630, HAL-E-SA-M-610 → HAL-E-SS-M-630 | resources Engineer [4 h]; Draftman [4 h] → Engineer; Draftman |
| HAL-E-SA-M-640 | TOILET DETAILS PLUMBING-WATER | 2026-03-11 A → 2026-01-17 A (-53d) | 2026-05-10 A → 2026-01-17 A (-113d) | 2d → 1.62d | HAL-E-SS-M-640, HAL-E-SA-M-620 → HAL-E-SS-M-640 | resources Engineer [4 h]; Draftman [4 h] → Engineer; Draftman |
| HAL-E-SA-M-680 | GENERAL MISELLANEOUS DETAILS PLUMBING | 2026-02-04 A → 2026-01-17 A (-18d) | 2026-03-03 A → 2026-01-17 A (-45d) |  |  | resources Engineer [4 h]; Draftman [4 h] → Engineer; Draftman |
| HAL-E-SA-M-690 | SCHEDULE- PLUMBING | 2026-03-17 A → 2026-01-17 A (-59d) | 2026-05-11 A → 2026-01-17 A (-114d) |  |  | resources Engineer [4 h]; Draftman [4 h] → Engineer; Draftman |
| HAL-E-SA-M-720 | SCHEDULES | 2026-03-17 A → 2026-01-17 A (-59d) | 2026-05-11 A → 2026-01-17 A (-114d) |  | HAL-E-SS-M-720, HAL-E-SA-A-950 → HAL-E-SS-M-720 | resources Engineer [8 h]; Draftman [8 h] → Engineer; Draftman |
| HAL-E-SA-M-750 | GENERAL-INSTRUMENTATION & CONTROL | 2026-02-04 A → 2026-01-17 A (-18d) | 2026-06-09 A → 2026-01-17 A (-143d) |  |  | resources Engineer [8 h]; Draftman [8 h] → Engineer; Draftman |
| HAL-E-SA-M-770 | TYPICAL GROUND FLOOR PLAN FIREFIGHTING | 2026-03-14 A → 2026-01-17 A (-56d) | 2026-05-12 A → 2026-01-28 A (-104d) |  |  | resources Engineer [8 h]; Draftman [8 h] → Engineer; Draftman |
| HAL-E-SA-M-800 | MISCELLANEOUS DETAILS | 2026-02-04 A → 2026-01-17 A (-18d) | 2026-03-03 A → 2026-01-17 A (-45d) |  |  | resources Engineer [8 h]; Draftman [8 h] → Engineer; Draftman |
| HAL-E-SA-M-620 | TYPICAL ROOF PLUMBING PLAN | 2026-03-16 A → 2026-01-20 A (-55d) | 2026-05-12 A → 2026-01-20 A (-112d) | 2d → 1.62d | HAL-E-SS-M-620, HAL-E-SA-M-610 → HAL-E-SS-M-620 | resources Engineer [4 h]; Draftman [4 h] → Engineer; Draftman |
| HAL-E-SA-M-650 | SCHEMATIC RISER DIAGRAM PLUMBING-DRAINAGE | 2026-02-04 A → 2026-01-20 A (-15d) | 2026-03-03 A → 2026-01-20 A (-42d) | 2d → 1.5d | HAL-E-SS-M-650, HAL-E-SA-M-640, HAL-E-SA-M-630 → HAL-E-SS-M-650 | resources Engineer [4 h]; Draftman [4 h] → Engineer; Draftman |
| HAL-E-SA-M-660 | SCHEMATIC RISER DIAGRAM PLUMBING-WATER | 2026-02-04 A → 2026-01-20 A (-15d) | 2026-04-13 A → 2026-01-20 A (-83d) |  | HAL-E-SS-M-660, HAL-E-SA-M-650 → HAL-E-SS-M-660 | resources Engineer [4 h]; Draftman [4 h] → Engineer; Draftman |
| HAL-E-SA-M-670 | GENERAL MISELLANEOUS DETAILS PLUMBING | 2026-02-04 A → 2026-01-20 A (-15d) | 2026-03-03 A → 2026-01-20 A (-42d) |  | HAL-E-SS-M-670, HAL-E-SA-M-660 → HAL-E-SS-M-670 | resources Engineer [4 h]; Draftman [4 h] → Engineer; Draftman |
| HAL-E-SA-M-760 | GENERAL MISCELLANEOUS DETAILS - HVAC | 2026-02-05 A → 2026-01-20 A (-16d) | 2026-03-03 A → 2026-01-20 A (-42d) |  |  | resources Engineer [8 h]; Draftman [8 h] → Engineer; Draftman |
| HAL-E-SA-M-780 | SCHEMATIC RISER DIAGRAM FIREFIGHTING | 2026-02-04 A → 2026-01-20 A (-15d) | 2026-06-09 A → 2026-01-20 A (-140d) | 2d → 4d |  | resources Engineer [8 h]; Draftman [8 h] → Engineer; Draftman |
| HAL-E-SA-M-790 | GENERAL-MISCELLANEOUS DETAILS- FIRE FIGHTING | 2026-02-04 A → 2026-01-20 A (-15d) | 2026-06-09 A → 2026-01-20 A (-140d) |  |  | resources Engineer [8 h]; Draftman [8 h] → Engineer; Draftman |
| HAL-E-SA-M-700 | PUMP ROOM LAYOUT | 2026-04-16 A → 2026-02-01 A (-74d) | 2026-05-17 A → 2026-02-04 A (-102d) | 2d → 1.62d |  | resources Engineer [8 h]; Draftman [8 h] → Engineer; Draftman |
| HAL-E-SA-M-710 | PUMP ROOM 3D & SECTIONS VIEW | 2026-04-21 A → 2026-02-01 A (-79d) | 2026-05-17 A → 2026-02-04 A (-102d) | 2d → 1.5d | HAL-E-SS-M-710, HAL-E-SA-M-680 → HAL-E-SS-M-710 | resources Engineer [8 h]; Draftman [8 h] → Engineer; Draftman |
| HAL-E-SA-M-730 | GROUND FLOOR PLAN-HVAC SYSTEM | 2026-03-26 A → 2026-02-03 A (-51d) | 2026-05-12 A → 2026-02-12 A (-89d) | 2d → 1.5d | HAL-E-SS-M-730, HAL-E-SA-A-960 → HAL-E-SS-M-730 | resources Engineer [8 h]; Draftman [8 h] → Engineer; Draftman |
| HAL-E-SA-M-740 | TYPICAL ROOF HVAC PLAN | 2026-03-26 A → 2026-02-03 A (-51d) | 2026-05-12 A → 2026-02-05 A (-96d) | 2d → 1.62d |  | resources Engineer [8 h]; Draftman [8 h] → Engineer; Draftman |
| 4 | **ELECTRICAL** | 2026-02-09 → 2025-12-22 (-49d) | 2026-06-28 → 2026-03-29 (-91d) |  |  |  |
| HAL-E-SA-E-1150 | GROUND FLOOR LIGHTING PLAN | 2026-02-09 A → 2025-12-22 A (-49d) | 2026-02-17 A → 2026-01-14 A (-34d) |  |  | resources Engineer [8 h]; Draftman [8 h] → Engineer; Draftman |
| HAL-E-SA-E-940 | GROUND FLOOR POWER PLAN | 2026-02-09 A → 2025-12-22 A (-49d) | 2026-02-17 A → 2026-01-14 A (-34d) |  | HAL-E-SS-E-1130 → HAL-E-SS-E-940 | resources Engineer [8 h]; Draftman [8 h] → Engineer; Draftman |
| HAL-E-SA-E-1000 | ROOF FLOOR LIGHTING PLAN | 2026-02-09 A → 2025-12-24 A (-47d) | 2026-02-17 A → 2026-01-15 A (-33d) |  | HAL-E-SS-E-1000, HAL-E-SA-E-980, HAL-E-SA-E-960 → HAL-E-SS-E-1000 | resources Engineer [4 h]; Draftman [4 h] → Engineer; Draftman |
| HAL-E-SA-E-1140 | POWER FOR MECHANICAL | 2026-02-09 A → 2025-12-24 A (-47d) | 2026-02-18 A → 2026-01-15 A (-34d) |  |  | resources Engineer [8 h]; Draftman [8 h] → Engineer; Draftman |
| HAL-E-SA-E-950 | GROUND FLOOR POWER FOR MECHANICAL | 2026-02-09 A → 2025-12-24 A (-47d) | 2026-04-18 A → 2026-01-15 A (-93d) |  | HAL-E-SS-E-950, HAL-E-SA-E-1130 → HAL-E-SS-E-950, HAL-E-SA-E-940 | resources Engineer [4 h]; Draftman [4 h] → Engineer; Draftman |
| HAL-E-SA-E-1030 | GROUND FLOOR CCTV PLAN | 2026-03-01 A → 2026-01-13 A (-47d) | 2026-03-03 A → 2026-01-14 A (-48d) |  |  | resources Engineer [8 h]; Draftman [8 h] → Engineer; Draftman |
| HAL-E-SA-E-1040 | GROUND FLOOR DATA & TELECOM PLAN | 2026-03-01 A → 2026-01-13 A (-47d) | 2026-03-03 A → 2026-01-14 A (-48d) |  |  | resources Engineer [8 h]; Draftman [8 h] → Engineer; Draftman |
| HAL-E-SA-E-1070 | POWER RISER DIAGRAM | 2026-03-29 A → 2026-01-13 A (-75d) | 2026-06-23 A → 2026-01-14 A (-160d) |  |  | resources Engineer [8 h]; Draftman [8 h] → Engineer; Draftman |
| HAL-E-SA-E-1110 | SCHEDULES | 2026-03-29 A → 2026-01-13 A (-75d) | 2026-06-23 A → 2026-01-14 A (-160d) |  |  | resources Engineer [8 h]; Draftman [8 h] → Engineer; Draftman |
| HAL-E-SA-E-1130 | GROUND FLOOR POWER PLAN | 2026-02-09 A → 2026-01-13 A (-27d) | 2026-02-10 A → 2026-01-14 A (-27d) |  | HAL-E-SS-E-940 → HAL-E-SS-E-1130 | resources Engineer [4 h]; Draftman [4 h] → Engineer; Draftman |
| HAL-E-SA-E-960 | ROOF FLOOR POWER FOR MECHANICAL | 2026-02-09 A → 2026-01-13 A (-27d) | 2026-04-15 A → 2026-01-15 A (-90d) | 2d → 1.62d |  | resources Engineer [4 h]; Draftman [4 h] → Engineer; Draftman |
| HAL-E-SA-E-990 | GROUND FLOOR LIGHTING PLAN | 2026-02-09 A → 2026-01-13 A (-27d) | 2026-02-17 A → 2026-01-14 A (-34d) | 2d → 1.62d | HAL-E-SS-E-990, HAL-E-SA-E-970 → HAL-E-SS-E-990 | resources Engineer [4 h]; Draftman [4 h] → Engineer; Draftman |
| HAL-E-SA-E-1060 | ROOF FLOOR LIGHTENING PLAN | 2026-02-09 A → 2026-01-15 A (-25d) | 2026-02-17 A → 2026-01-15 A (-33d) |  |  | resources Engineer [8 h]; Draftman [8 h] → Engineer; Draftman |
| HAL-E-SA-E-1020 | GROUND FLOOR FIRE ALARM PLAN | 2026-03-29 A → 2026-01-21 A (-67d) | 2026-04-15 A → 2026-03-29 A (-17d) |  |  | resources Engineer [4 h]; Draftman [4 h] → Engineer; Draftman |
| HAL-E-SA-E-1050 | GROUND FLOOR GROUNDING PLAN | 2026-03-01 A → 2026-01-21 A (-39d) | 2026-03-03 A → 2026-02-01 A (-30d) |  |  | resources Engineer [8 h]; Draftman [8 h] → Engineer; Draftman |
| HAL-E-SA-E-1080 | FIRE ALARM RISER DIAGRAM | 2026-03-29 A → 2026-01-21 A (-67d) | 2026-05-11 A → 2026-03-29 A (-43d) |  |  | resources Engineer [8 h]; Draftman [8 h] → Engineer; Draftman |
| HAL-E-SA-E-1160 | GROUND FLOOR GROUNDING PLAN | 2026-03-01 A → 2026-01-21 A (-39d) | 2026-03-03 A → 2026-02-01 A (-30d) |  |  | resources Engineer [32 h]; Draftman [32 h] → Engineer; Draftman |
| HAL-E-SA-E-1090 | DATA & TELECOME RISER DIAGRAM | 2026-03-29 A → 2026-02-04 A (-53d) | 2026-03-30 A → 2026-02-04 A (-54d) |  |  | resources Engineer [8 h]; Draftman [8 h] → Engineer; Draftman |
| HAL-E-SA-E-1100 | ACCESS CONTROL RISER DIAGRAM | 2026-03-29 A → 2026-02-04 A (-53d) | 2026-03-30 A → 2026-02-04 A (-54d) |  |  | resources Engineer [8 h]; Draftman [8 h] → Engineer; Draftman |
| HAL-E-SA-E-1170 | RISER DIAGRAM | 2026-04-27 A → 2026-02-04 A (-82d) | 2026-06-23 A → 2026-02-04 A (-139d) |  |  | resources Engineer [32 h]; Draftman [32 h] → Engineer; Draftman |
| HAL-E-SA-E-1010 | GOUND FLOOR ACCESS CONTROL | 2026-03-29 A → 2026-02-05 A (-52d) | 2026-04-18 A → 2026-02-05 A (-72d) |  |  | resources Engineer [4 h]; Draftman [4 h] → Engineer; Draftman |
| HAL-E-SA-E-1120 | ELECTRICAL DETAILS | 2026-03-01 A → 2026-02-07 A (-22d) | 2026-03-03 A → 2026-02-28 A (-3d) |  |  | resources Engineer [8 h]; Draftman [8 h] → Engineer; Draftman |
| HAL-E-SA-E-1180 | ELECTRICAL DETAILS | 2026-03-01 A → 2026-02-07 A (-22d) | 2026-03-03 A → 2026-02-28 A (-3d) |  |  | resources Engineer [32 h]; Draftman [32 h] → Engineer; Draftman |
| HAL-E-SA-E-970 | ROOF FLOOR POWER | 2026-04-08 A → 2026-02-07 A (-60d) | 2026-04-09 A → 2026-02-28 A (-40d) | 2d → 1.5d | HAL-E-SS-E-970, HAL-E-SA-E-950 → HAL-E-SS-E-970 | resources Engineer [4 h]; Draftman [4 h] → Engineer; Draftman |
| HAL-E-SA-E-980 | PV SYSTEM CALCULATION | 2026-06-25 A → 2026-02-07 A (-138d) | 2026-06-28 A → 2026-02-28 A (-120d) |  |  | resources Engineer [4 h]; Draftman [4 h] → Engineer; Draftman |
| 1 | **ROAD DRAWINGS** | 2026-01-20 → 2025-12-11 (-40d) | 2026-07-05 → 2026-02-28 (-127d) |  |  |  |

| ID | Task | Start | Finish | Duration | Predecessors | Other |
| --- | --- | --- | --- | --- | --- | --- |
| HAL-E-SA-R-780 | TOPOGRAPHIC SURVEY-CONTOURS MAP | 2026-01-20 A → 2025-12-11 A (-40d) | 2026-01-22 A → 2025-12-13 A (-40d) |  |  | resources Engineer [32 h]; Draftman [32 h] → Engineer; Draftman |
| HAL-E-SA-R-730 | GRADING LAYOUT PLAN | 2026-02-03 A → 2025-12-18 A (-47d) | 2026-05-03 A → 2026-01-04 A (-119d) |  |  | resources Engineer [32 h]; Draftman [32 h] → Engineer; Draftman |
| HAL-E-SA-R-740 | ROAD LAYOUT PLAN | 2026-03-16 A → 2026-01-14 A (-61d) | 2026-04-29 A → 2026-01-22 A (-97d) |  |  | resources Engineer [32 h]; Draftman [32 h] → Engineer; Draftman |
| HAL-E-SA-R-840 | ROAD STANDARD DETAILS-TYPICAL PAVEMENT DETAILS | 2026-04-21 A → 2026-01-14 A (-97d) | 2026-05-04 A → 2026-01-18 A (-106d) |  | HAL-E-SS-R-840, HAL-E-SA-R-830 → HAL-E-SS-R-840 | resources Engineer [32 h]; Draftman [32 h] → Engineer; Draftman |
| HAL-E-SA-R-850 | ROAD STANDARD DETAILS-TYPICAL CURB DETAILS | 2026-04-21 A → 2026-01-14 A (-97d) | 2026-05-04 A → 2026-01-18 A (-106d) |  | HAL-E-SS-R-850, HAL-E-SA-R-840 → HAL-E-SS-R-850 | resources Engineer [4 h]; Draftman [4 h] → Engineer; Draftman |
| HAL-E-SA-R-860 | ROAD STANDARD DETAILS-ROAD SIGN DETAILS | 2026-04-21 A → 2026-01-14 A (-97d) | 2026-05-04 A → 2026-01-18 A (-106d) |  | HAL-E-SS-R-860, HAL-E-SA-R-850 → HAL-E-SS-R-860 | resources Engineer [4 h]; Draftman [4 h] → Engineer; Draftman |
| HAL-E-SA-R-870 | ROAD STANDARD DETAILS-ROAD MARKING DETAILS | 2026-04-21 A → 2026-01-14 A (-97d) | 2026-05-04 A → 2026-01-18 A (-106d) |  | HAL-E-SS-R-870, HAL-E-SA-R-860 → HAL-E-SS-R-870 | resources Engineer [4 h]; Draftman [4 h] → Engineer; Draftman |
| HAL-E-SA-R-750 | TYPICAL CROSS SECTIONS - KEY PLAN | 2026-03-16 A → 2026-01-18 A (-57d) | 2026-05-04 A → 2026-01-22 A (-102d) |  |  | resources Engineer [32 h]; Draftman [32 h] → Engineer; Draftman |
| HAL-E-SA-R-760 | TYPICAL CROSS SECTIONS | 2026-03-16 A → 2026-01-18 A (-57d) | 2026-05-04 A → 2026-01-22 A (-102d) |  |  | resources Engineer [32 h]; Draftman [32 h] → Engineer; Draftman |
| HAL-E-SA-R-880 | GENERAL SITE PLAN - OVERALL | 2026-03-08 A → 2026-01-18 A (-49d) | 2026-05-20 A → 2026-01-18 A (-122d) |  | HAL-E-SS-R-880, HAL-E-SA-R-870 → HAL-E-SS-R-880 | resources Engineer [4 h]; Draftman [4 h] → Engineer; Draftman |
| HAL-E-SA-R-890 | SITE SETTING-OUT PLAN - OVERALL | 2026-03-08 A → 2026-01-18 A (-49d) | 2026-05-03 A → 2026-01-18 A (-105d) |  | HAL-E-SS-R-890, HAL-E-SA-R-880 → HAL-E-SS-R-890 | resources Engineer [4 h]; Draftman [4 h] → Engineer; Draftman |
| HAL-E-SA-R-770 | ROAD PROFILES | 2026-03-16 A → 2026-01-20 A (-55d) | 2026-04-29 A → 2026-01-22 A (-97d) |  |  | resources Engineer [32 h]; Draftman [32 h] → Engineer; Draftman |
| HAL-E-SA-R-800 | ALIGNMENT & CURB SETTING OUT TABLES | 2026-06-14 A → 2026-01-20 A (-145d) | 2026-06-14 A → 2026-01-21 A (-144d) |  | HAL-E-SS-R-800, HAL-E-SA-R-790 → HAL-E-SS-R-800 | resources Engineer [32 h]; Draftman [32 h] → Engineer; Draftman |
| HAL-E-SA-R-810 | ALIGNMNET GEOMETRIC DATA | 2026-06-14 A → 2026-01-20 A (-145d) | 2026-06-14 A → 2026-01-22 A (-143d) |  | HAL-E-SS-R-810, HAL-E-SA-R-800 → HAL-E-SS-R-810 | resources Engineer [32 h]; Draftman [32 h] → Engineer; Draftman |
| HAL-E-SA-R-920 | GENERAL SOFTSCAPE LAYOUT | 2026-03-08 A → 2026-01-20 A (-47d) | 2026-05-09 A → 2026-01-20 A (-109d) |  | HAL-E-SS-R-920, HAL-E-SA-R-910 → HAL-E-SS-R-920 | resources Engineer [4 h]; Draftman [4 h] → Engineer; Draftman |
| HAL-E-SA-R-790 | ALIGNMENT & CURB SETTING OUT | 2026-06-14 A → 2026-01-21 A (-144d) | 2026-06-14 A → 2026-01-21 A (-144d) |  |  | resources Engineer [32 h]; Draftman [32 h] → Engineer; Draftman |
| HAL-E-SA-R-830 | SIGNING & MARKING LAYOUT PLAN | 2026-04-21 A → 2026-01-21 A (-90d) | 2026-04-29 A → 2026-01-22 A (-97d) | 2d → 1.5d | HAL-E-SS-R-830, HAL-E-SA-R-820 → HAL-E-SS-R-830 | resources Engineer [32 h]; Draftman [32 h] → Engineer; Draftman |
| HAL-E-SA-R-900 | GENERAL LANDSCAPE LAYOUT | 2026-03-08 A → 2026-01-21 A (-46d) | 2026-05-06 A → 2026-01-22 A (-104d) |  | HAL-E-SS-R-900, HAL-E-SA-R-890 → HAL-E-SS-R-900 | resources Engineer [4 h]; Draftman [4 h] → Engineer; Draftman |
| HAL-E-SA-R-910 | GENERAL HARDSCAPE LAYOUT | 2026-03-08 A → 2026-01-21 A (-46d) | 2026-05-07 A → 2026-01-22 A (-105d) | 2d → 4d | HAL-E-SS-R-910, HAL-E-SA-R-900 → HAL-E-SS-R-910 | resources Engineer [4 h]; Draftman [4 h] → Engineer; Draftman |
| HAL-E-SA-R-930 | PUMP ROOM DETAILS | 2026-03-14 A → 2026-01-22 A (-51d) | 2026-05-06 A → 2026-02-28 A (-67d) |  | HAL-E-SS-R-930, HAL-E-SA-R-920 → HAL-E-SS-R-930 | resources Engineer [4 h]; Draftman [4 h] → Engineer; Draftman |
| HAL-E-SA-R-820 | SWEPT PATH LAYOUT PLAN | 2026-06-14 A → 2026-02-04 A (-130d) | 2026-06-14 A → 2026-02-07 A (-127d) |  | HAL-E-SS-R-820, HAL-E-SA-R-810 → HAL-E-SS-R-820 | resources Engineer [32 h]; Draftman [32 h] → Engineer; Draftman |
| HAL-E-SA-R-940 | GENERAL DETAILS | 2026-03-18 A → 2026-02-04 A (-42d) | 2026-05-11 A → 2026-02-08 A (-92d) |  | HAL-E-SS-R-940, HAL-E-SA-R-930 → HAL-E-SS-R-940 | resources Engineer [4 h]; Draftman [4 h] → Engineer; Draftman |
| HAL-E-SA-R-950 | LANDSCAPE DETAILS | 2026-07-01 A → 2026-02-04 A (-147d) | 2026-07-05 A → 2026-02-12 A (-143d) |  | HAL-E-SS-R-950, HAL-E-SA-R-940 → HAL-E-SS-R-950 | resources Engineer [4 h]; Draftman [4 h] → Engineer; Draftman |
| HAL-E-SA-R-960 | LANDSCAPE SCHEDULES | 2026-03-08 A → 2026-02-04 A (-32d) | 2026-05-06 A → 2026-02-12 A (-83d) |  | HAL-E-SS-R-960, HAL-E-SA-R-950 → HAL-E-SS-R-960 |  |
| 6 | **EXTERNAL** | 2026-02-10 → 2026-01-17 (-24d) | 2026-06-08 → 2026-03-29 (-71d) |  |  |  |
| HAL-E-SA-EX-1000 | WASHOUT CHAMBER DETAILS | 2026-02-10 A → 2026-01-17 A (-24d) | 2026-05-11 A → 2026-01-17 A (-114d) |  |  |  |
| HAL-E-SA-EX-1010 | AIR RELEASE VALVE CHAMBER DETAILS | 2026-02-10 A → 2026-01-17 A (-24d) | 2026-05-25 A → 2026-01-17 A (-128d) |  |  |  |
| HAL-E-SA-EX-1020 | THRUST BLOCK DETAILS (SHEET 1 OF 4) | 2026-02-10 A → 2026-01-17 A (-24d) | 2026-03-18 A → 2026-01-17 A (-60d) |  |  |  |
| HAL-E-SA-EX-1030 | THRUST BLOCK DETAILS (SHEET 2 OF 4) | 2026-02-10 A → 2026-01-17 A (-24d) | 2026-03-18 A → 2026-01-17 A (-60d) |  |  |  |
| HAL-E-SA-EX-1040 | THRUST BLOCK DETAILS (SHEET 3 OF 4) | 2026-02-10 A → 2026-01-17 A (-24d) | 2026-03-18 A → 2026-01-17 A (-60d) |  |  |  |
| HAL-E-SA-EX-1050 | THRUST BLOCK DETAILS (SHEET 4 OF 4) | 2026-02-10 A → 2026-01-17 A (-24d) | 2026-03-18 A → 2026-01-17 A (-60d) |  |  |  |
| HAL-E-SA-EX-760 | DOUBLE VALVE CHAMBER DETAILS | 2026-04-21 A → 2026-01-17 A (-94d) | 2026-04-27 A → 2026-01-17 A (-100d) |  | HAL-E-SS-EX-760, HAL-E-SA-EX-960, HAL-E-SA-EX-970 → HAL-E-SS-EX-760 | resources Engineer [4 h]; Draftman [4 h] → Engineer; Draftman |
| HAL-E-SA-EX-800 | FLOW METER REINFORCEMENT DETAILS | 2026-06-02 A → 2026-01-17 A (-136d) | 2026-06-03 A → 2026-01-17 A (-137d) | 2d → 4d | HAL-E-SS-EX-800, HAL-E-SA-EX-780, HAL-E-SA-R-960 → HAL-E-SS-EX-800 | resources Engineer [8 h]; Draftman [8 h] → Engineer; Draftman |
| HAL-E-SA-EX-810 | THRUST BLOCK DETAILS (SHEET 1 OF 4) | 2026-02-10 A → 2026-01-17 A (-24d) | 2026-03-18 A → 2026-01-17 A (-60d) | 2d → 4d | HAL-E-SS-EX-810, HAL-E-SA-EX-800 → HAL-E-SS-EX-810 | resources Engineer [8 h]; Draftman [8 h] → Engineer; Draftman |
| HAL-E-SA-EX-820 | THRUST BLOCK DETAILS (SHEET 2 OF 4) | 2026-02-10 A → 2026-01-17 A (-24d) | 2026-03-18 A → 2026-01-17 A (-60d) |  |  | resources Engineer [8 h]; Draftman [8 h] → Engineer; Draftman |
| HAL-E-SA-EX-830 | THRUST BLOCK DETAILS (SHEET 3 OF 4) | 2026-02-10 A → 2026-01-17 A (-24d) | 2026-03-18 A → 2026-01-17 A (-60d) | 2d → 4d | HAL-E-SS-EX-830, HAL-E-SA-EX-790 → HAL-E-SS-EX-830 | resources Engineer [8 h]; Draftman [8 h] → Engineer; Draftman |
| HAL-E-SA-EX-840 | THRUST BLOCK DETAILS (SHEET 4 OF 4) | 2026-02-10 A → 2026-01-17 A (-24d) | 2026-03-18 A → 2026-01-17 A (-60d) | 2d → 4d |  | resources Engineer [8 h]; Draftman [8 h] → Engineer; Draftman |
| HAL-E-SA-EX-870 | GENERAL NOTES | 2026-02-10 A → 2026-01-17 A (-24d) | 2026-03-18 A → 2026-01-17 A (-60d) |  | HAL-E-SS-EX-870, HAL-E-SA-EX-820, HAL-E-SA-EX-850, HAL-E-SA-EX-850 FF → HAL-E-SS-EX-870 |  |
| HAL-E-SA-EX-880 | PIPE TRENCHES DETAILS (1) | 2026-02-10 A → 2026-01-17 A (-24d) | 2026-03-18 A → 2026-01-17 A (-60d) |  |  |  |
| HAL-E-SA-EX-890 | PIPE TRENCHES DETAILS (2) | 2026-02-10 A → 2026-01-17 A (-24d) | 2026-03-18 A → 2026-01-17 A (-60d) |  |  |  |
| HAL-E-SA-EX-910 | CAST IN PLACE MANHOLE DETAILS FOR DEPTH < 6000MM (TYPE-B) | 2026-02-12 A → 2026-01-17 A (-26d) | 2026-05-11 A → 2026-01-17 A (-114d) |  |  |  |
| HAL-E-SA-EX-920 | BACKDROP DETAIL OF PRECAST MANHOLE DEPTH FROM 3000MM TO 6000MM | 2026-02-10 A → 2026-01-17 A (-24d) | 2026-05-19 A → 2026-01-17 A (-122d) |  |  |  |
| HAL-E-SA-EX-940 | PRECAST MANHOLE DETAILS | 2026-04-15 A → 2026-01-17 A (-88d) | 2026-06-08 A → 2026-01-17 A (-142d) |  |  |  |
| HAL-E-SA-EX-960 | PIPE TRENCH DETAILS | 2026-02-10 A → 2026-01-17 A (-24d) | 2026-05-10 A → 2026-01-17 A (-113d) |  | HAL-E-SS-EX-960, HAL-E-SA-EX-710, HAL-E-SA-EX-710 FF → HAL-E-SS-EX-960, HAL-E-SA-EX-940, HAL-E-SA-EX-930, HAL-E-SA-EX-920, HAL-E-SA-EX-910, HAL-E-SA-EX-900 | resources Engineer [4 h]; Draftman [4 h] → none |
| HAL-E-SA-EX-970 | BURIED GATE VALVE DETAILS | 2026-02-10 A → 2026-01-17 A (-24d) | 2026-05-31 A → 2026-01-17 A (-134d) |  | HAL-E-SS-EX-970, HAL-E-SA-EX-720, HAL-E-SA-EX-700 → HAL-E-SS-EX-970 | resources Engineer [4 h]; Draftman [4 h] → none |
| HAL-E-SA-EX-990 | DOUBLE VALVE CHAMBER DETAILS | 2026-04-21 A → 2026-01-17 A (-94d) | 2026-04-27 A → 2026-01-17 A (-100d) |  | HAL-E-SA-EX-980 → HAL-E-SA-EX-980, HAL-E-SA-EX-950, HAL-E-SA-EX-960 |  |
| HAL-E-SA-EX-730 | PIPE TRENCH DETAILS | 2026-02-10 A → 2026-01-20 A (-21d) | 2026-03-18 A → 2026-01-20 A (-57d) | 2d → 1.5d | HAL-E-SS-EX-730, HAL-E-SA-EX-940 → HAL-E-SS-EX-730 | resources none → Engineer; Draftman |
| HAL-E-SA-EX-740 | BURIED GATE VALVE DETAILS | 2026-02-10 A → 2026-01-20 A (-21d) | 2026-05-31 A → 2026-01-20 A (-131d) | 2d → 1.5d | HAL-E-SS-EX-740, HAL-E-SA-EX-950 → HAL-E-SS-EX-740 | resources none → Engineer; Draftman |
| HAL-E-SA-EX-750 | SINGLE VALVE CHAMBER DETAILS | 2026-04-21 A → 2026-01-21 A (-90d) | 2026-04-27 A → 2026-01-21 A (-96d) | 2d → 1.5d |  | resources Engineer [4 h]; Draftman [4 h] → Engineer; Draftman |
| HAL-E-SA-EX-770 | WASHOUT CHAMBER DETAILS | 2026-02-10 A → 2026-01-21 A (-20d) | 2026-05-11 A → 2026-01-28 A (-103d) |  | HAL-E-SS-EX-770, HAL-E-SA-EX-750 → HAL-E-SS-EX-770 | resources Engineer [4 h]; Draftman [4 h] → Engineer; Draftman |
| HAL-E-SA-EX-780 | AIR RELEASE VALVE CHAMBER DETAILS | 2026-02-10 A → 2026-01-21 A (-20d) | 2026-05-25 A → 2026-01-28 A (-117d) |  | HAL-E-SS-EX-780, HAL-E-SA-EX-760 → HAL-E-SS-EX-780 | resources Engineer [4 h]; Draftman [4 h] → Engineer; Draftman |
| HAL-E-SA-EX-900 | CAST IN PLACE MANHOLE DETAILS FOR DEPTH < 6000MM (TYPE-A) | 2026-02-10 A → 2026-01-21 A (-20d) | 2026-05-11 A → 2026-01-28 A (-103d) |  |  |  |
| HAL-E-SA-EX-930 | BACKDROP DETAIL OF PRECAST MANHOLE DEPTH < 3000MM | 2026-02-10 A → 2026-01-21 A (-20d) | 2026-05-19 A → 2026-01-28 A (-111d) |  |  |  |
| HAL-E-SA-EX-980 | SINGLE VALVE CHAMBER DETAILS | 2026-04-21 A → 2026-01-21 A (-90d) | 2026-04-27 A → 2026-01-21 A (-96d) |  | HAL-E-SA-EX-740, HAL-E-SA-EX-730 → HAL-E-SA-EX-970 |  |
| HAL-E-SA-EX-690 | POTABLE WATER NETWORK | 2026-05-11 A → 2026-01-28 A (-103d) | 2026-06-01 A → 2026-02-05 A (-116d) |  |  | resources Engineer [4 h]; Draftman [4 h] → Engineer; Draftman |
| HAL-E-SA-EX-700 | FIRE FIGHTING WATER NETWORK | 2026-05-11 A → 2026-01-28 A (-103d) | 2026-05-12 A → 2026-02-05 A (-96d) |  | HAL-E-SS-EX-700, HAL-E-SA-EX-690 → HAL-E-SS-EX-700 | resources Engineer [4 h]; Draftman [4 h] → Engineer; Draftman |
| HAL-E-SA-EX-710 | POTABLE WATER NETWORK PROFILES | 2026-05-11 A → 2026-01-28 A (-103d) | 2026-05-25 A → 2026-02-05 A (-109d) | 2d → 1.62d | HAL-E-SS-EX-710, HAL-E-SA-EX-700, HAL-E-SA-EX-690 → HAL-E-SS-EX-710 | resources Engineer [4 h]; Draftman [4 h] → Engineer; Draftman |
| HAL-E-SA-EX-720 | FIRE FIGHTING NETWORK PROFILE | 2026-05-11 A → 2026-01-28 A (-103d) | 2026-05-12 A → 2026-02-05 A (-96d) | 2d → 1.5d |  | resources Engineer [4 h]; Draftman [4 h] → Engineer; Draftman |
| HAL-E-SA-EX-790 | FLOW METER DETAILS | 2026-06-02 A → 2026-01-28 A (-125d) | 2026-06-03 A → 2026-02-05 A (-118d) |  | HAL-E-SS-EX-790, HAL-E-SA-EX-770 → HAL-E-SS-EX-790 | resources Engineer [4 h]; Draftman [4 h] → Engineer; Draftman |
| HAL-E-SA-EX-850 | SEWAGE NETWORK | 2026-05-14 A → 2026-01-28 A (-106d) | 2026-05-17 A → 2026-02-05 A (-101d) |  | HAL-E-SS-EX-850, HAL-E-SA-EX-840, HAL-E-SA-EX-830 → HAL-E-SS-EX-850 | resources Engineer [8 h]; Draftman [8 h] → Engineer; Draftman |
| HAL-E-SA-EX-860 | SEWAGE NETWORK PROFILES | 2026-05-14 A → 2026-01-28 A (-106d) | 2026-05-17 A → 2026-02-05 A (-101d) |  |  |  |
| HAL-E-SA-EX-950 | IRRIGATION NETWORK LAYOUT SHEET 1 OF 1 | 2026-05-12 A → 2026-01-28 A (-104d) | 2026-05-17 A → 2026-03-29 A (-49d) |  | HAL-E-SS-EX-950, HAL-E-SA-EX-930 → HAL-E-SS-EX-950 |  |
| 4 | **PRE QUALIFACTION FOR MATERIALS** | 2026-01-15 → 2025-12-08 (-38d) | 2026-06-11 → 2026-03-29 (-74d) |  |  |  |
| 1 | **PREPARATION AND SUBMITTAL** | 2026-01-15 → 2025-12-16 (-30d) | 2026-06-10 → 2026-03-15 (-87d) |  |  |  |
| 6 | **STRUCTURAL** | 2026-01-15 → 2025-12-16 (-30d) | 2026-01-19 → 2026-01-03 (-16d) |  |  |  |
| HAL-E-PS-C-0020 | Concrete mix | 2026-01-15 A → 2025-12-16 A (-30d) | 2026-01-15 A → 2025-12-16 A (-30d) |  |  |  |
| HAL-E-PS-C-0030 | Polyethylene sheet | 2026-01-19 A → 2025-12-29 A (-21d) | 2026-01-19 A → 2025-12-29 A (-21d) |  |  |  |
| HAL-E-PS-C-0040 | Bitumen paint | 2026-01-15 A → 2025-12-29 A (-17d) | 2026-01-15 A → 2025-12-29 A (-17d) |  |  |  |
| HAL-E-PS-C-0050 | Rebar | 2026-01-15 A → 2025-12-29 A (-17d) | 2026-01-15 A → 2025-12-29 A (-17d) |  |  |  |
| HAL-E-PS-C-0010 | Anti termite | 2026-01-15 A → 2026-01-03 A (-12d) | 2026-01-15 A → 2026-01-03 A (-12d) |  | HAL-MOB-SO.0015 → HAL-MOB-SO.0016 |  |

| ID | Task | Start | Finish | Duration | Predecessors | Other |
| --- | --- | --- | --- | --- | --- | --- |
| 1 | **ARCHITECTURAL** | 2026-02-08 → 2025-12-18 (-52d) | 2026-06-10 → 2026-03-15 (-87d) |  |  |  |
| HAL-E-PS-A-0020 | PES -Steel Structure | 2026-02-19 A → 2025-12-18 A (-63d) | 2026-02-23 A → 2025-12-18 A (-67d) |  | HAL-E-PS-C-0010 → HAL-E-PS-C-0010, HAL-E-PS-C-0050 |  |
| HAL-E-PS-A-0050 | Steel ladder | 2026-02-25 A → 2025-12-18 A (-69d) | 2026-02-28 A → 2025-12-18 A (-72d) |  |  |  |
| HAL-E-PS-A-0120 | Doors | 2026-02-16 A → 2026-01-03 A (-44d) | 2026-02-16 A → 2026-01-03 A (-44d) |  |  |  |
| HAL-E-PS-A-0180 | Internl paint | 2026-03-25 A → 2026-01-08 A (-76d) | 2026-03-25 A → 2026-01-08 A (-76d) |  |  |  |
| HAL-E-PS-A-0060 | Steel gratings | 2026-05-19 A → 2026-02-05 A (-103d) | 2026-05-19 A → 2026-02-05 A (-103d) |  |  |  |
| HAL-E-PS-A-0070 | Steel rails | 2026-06-10 A → 2026-02-05 A (-125d) | 2026-06-10 A → 2026-02-05 A (-125d) |  |  |  |
| HAL-E-PS-A-0190 | Gypsum board | 2026-02-24 A → 2026-02-05 A (-19d) | 2026-02-24 A → 2026-02-05 A (-19d) |  |  |  |
| HAL-E-PS-A-0130 | Windows | 2026-02-08 A → 2026-02-09 A (+1d) | 2026-02-08 A → 2026-02-09 A (+1d) |  |  |  |
| HAL-E-PS-A-0200 | Aluminum Composite Panel | 2026-02-10 A → 2026-02-09 A (-1d) | 2026-02-10 A → 2026-02-09 A (-1d) | 2d → 1.12d |  |  |
| HAL-E-PS-A-0140 | Ceramic tiles | 2026-03-25 A → 2026-02-26 A (-27d) | 2026-03-25 A → 2026-02-26 A (-27d) |  |  |  |
| HAL-E-PS-A-0150 | Granite strip | 2026-05-03 A → 2026-02-26 A (-66d) | 2026-05-03 A → 2026-02-26 A (-66d) |  |  |  |
| HAL-E-PS-A-0040 | Concrete masonry unit (CMU) | 2026-02-08 A → 2026-03-15 A (+35d) | 2026-02-08 A → 2026-03-15 A (+35d) |  | HAL-E-PS-A-0020 → HAL-E-PS-C-0020 |  |
| HAL-E-PS-A-0170 | Epoxy paint | 2026-04-20 A → 2026-03-15 A (-36d) | 2026-04-20 A → 2026-03-15 A (-36d) |  |  |  |
| HAL-E-PS-A-0230 | Steel fence and gates | 2026-05-20 A → 2026-03-15 A (-66d) | 2026-05-20 A → 2026-03-15 A (-66d) |  |  |  |
| HAL-E-PS-A-0240 | Identification sign; ID01 & ID02 | 2026-06-10 A → 2026-03-15 A (-87d) | 2026-06-10 A → 2026-03-15 A (-87d) |  |  | resources Purchaser [16 h] → Purchaser [32 h] |
| 2 | **MECHANICAL** | 2026-01-24 → 2025-12-24 (-31d) | 2026-06-10 → 2026-01-29 (-132d) |  |  |  |
| HAL-E-PS-M-0030 | PPR pipes | 2026-02-03 A → 2025-12-24 A (-41d) | 2026-02-03 A → 2025-12-24 A (-41d) |  |  |  |
| HAL-E-PS-M-0150 | Capped connection | 2026-06-10 A → 2025-12-24 A (-168d) | 2026-06-10 A → 2025-12-24 A (-168d) |  |  |  |
| HAL-E-PS-M-0160 | UPVC pipes | 2026-02-04 A → 2025-12-24 A (-42d) | 2026-02-04 A → 2025-12-24 A (-42d) |  |  |  |
| HAL-E-PS-M-0210 | Western water closet | 2026-02-05 A → 2025-12-24 A (-43d) | 2026-02-05 A → 2025-12-24 A (-43d) |  |  | resources Purchaser [16 h] → Purchaser [32 h] |
| HAL-E-PS-M-0240 | Lavatory / wash basin | 2026-02-05 A → 2025-12-24 A (-43d) | 2026-02-05 A → 2025-12-24 A (-43d) | 2d → 1.12d |  | resources Purchaser [16 h] → Purchaser [32 h] |
| HAL-E-PS-M-0270 | Fire pumps | 2026-02-03 A → 2025-12-27 A (-38d) | 2026-02-03 A → 2025-12-27 A (-38d) |  |  | resources Purchaser [16 h] → Purchaser [32 h] |
| HAL-E-PS-M-0320 | Booster pump | 2026-02-03 A → 2025-12-27 A (-38d) | 2026-02-03 A → 2025-12-27 A (-38d) |  |  | resources Purchaser [16 h] → Purchaser [32 h] |
| HAL-E-PS-M-0070 | U/G HDPE pipes | 2026-02-04 A → 2025-12-28 A (-38d) | 2026-02-04 A → 2025-12-28 A (-38d) |  |  |  |
| HAL-E-PS-M-0330 | GRP tank | 2026-01-24 A → 2025-12-28 A (-27d) | 2026-01-28 A → 2025-12-28 A (-31d) |  |  | resources Purchaser [16 h] → Purchaser [32 h] |
| HAL-E-PS-M-0190 | Gully trap | 2026-02-07 A → 2025-12-30 A (-39d) | 2026-02-07 A → 2025-12-30 A (-39d) |  |  | resources Purchaser [16 h] → Purchaser [32 h] |
| HAL-E-PS-M-0080 | Warning tapes | 2026-02-14 A → 2026-01-01 A (-44d) | 2026-02-14 A → 2026-01-01 A (-44d) |  |  |  |
| HAL-E-PS-M-0200 | Electric water heater | 2026-02-05 A → 2026-01-03 A (-33d) | 2026-02-05 A → 2026-01-03 A (-33d) |  |  | resources Purchaser [16 h] → Purchaser [32 h] |
| HAL-E-PS-M-0140 | Ball valve | 2026-02-11 A → 2026-01-05 A (-37d) | 2026-02-12 A → 2026-01-05 A (-38d) |  |  |  |
| HAL-E-PS-M-0340 | Water supply valves | 2026-02-02 A → 2026-01-07 A (-26d) | 2026-02-02 A → 2026-01-07 A (-26d) |  |  | resources Purchaser [16 h] → Purchaser [32 h] |
| HAL-E-PS-M-0010 | Seamless black steel or ERW pipes | 2026-02-08 A → 2026-01-08 A (-31d) | 2026-02-08 A → 2026-01-08 A (-31d) |  | HAL-E-PS-A-0020 → HAL-E-PS-C-0020 |  |
| HAL-E-PS-M-0230 | Toilet Fittings | 2026-02-07 A → 2026-01-08 A (-30d) | 2026-02-07 A → 2026-01-08 A (-30d) |  |  | resources Purchaser [16 h] → Purchaser [32 h] |
| HAL-E-PS-M-0220 | Bib tap | 2026-04-04 A → 2026-01-11 A (-83d) | 2026-04-05 A → 2026-01-11 A (-84d) |  |  | resources Purchaser [16 h] → Purchaser [32 h] |
| HAL-E-PS-M-0350 | Water tap | 2026-02-11 A → 2026-01-11 A (-31d) | 2026-02-11 A → 2026-01-11 A (-31d) |  |  | resources Purchaser [16 h] → Purchaser [32 h] |
| HAL-E-PS-M-0170 | Roof vent caps | 2026-02-16 A → 2026-01-12 A (-35d) | 2026-02-16 A → 2026-01-12 A (-35d) |  |  | resources Purchaser [16 h] → Purchaser [32 h] |
| HAL-E-PS-M-0180 | Floor drain | 2026-02-16 A → 2026-01-12 A (-35d) | 2026-02-16 A → 2026-01-12 A (-35d) |  |  | resources Purchaser [16 h] → Purchaser [32 h] |
| HAL-E-PS-M-0090 | Fire hose cabinet | 2026-02-04 A → 2026-01-14 A (-21d) | 2026-02-04 A → 2026-01-14 A (-21d) |  |  |  |
| HAL-E-PS-M-0100 | Automatic air release valve | 2026-02-08 A → 2026-01-19 A (-20d) | 2026-02-08 A → 2026-01-19 A (-20d) |  |  |  |
| HAL-E-PS-M-0110 | OS & Y gate valve | 2026-02-08 A → 2026-01-19 A (-20d) | 2026-02-08 A → 2026-01-19 A (-20d) |  |  |  |
| HAL-E-PS-M-0120 | Fire alarm check valve | 2026-02-08 A → 2026-01-19 A (-20d) | 2026-02-08 A → 2026-01-19 A (-20d) |  |  |  |
| HAL-E-PS-M-0280 | Fire fighting valves | 2026-02-02 A → 2026-01-19 A (-14d) | 2026-02-02 A → 2026-01-19 A (-14d) |  |  | resources Purchaser [16 h] → Purchaser [32 h] |
| HAL-E-PS-M-0060 | Exhaust diffuser | 2026-05-27 A → 2026-01-27 A (-120d) | 2026-05-27 A → 2026-01-27 A (-120d) |  |  |  |
| HAL-E-PS-M-0040 | HVAC duct | 2026-02-09 A → 2026-01-28 A (-12d) | 2026-02-09 A → 2026-01-28 A (-12d) |  |  |  |
| HAL-E-PS-M-0050 | Flexible duct | 2026-02-09 A → 2026-01-28 A (-12d) | 2026-02-09 A → 2026-01-28 A (-12d) |  |  |  |
| HAL-E-PS-M-0250 | Inline exhaust fans | 2026-02-02 A → 2026-01-29 A (-4d) | 2026-02-02 A → 2026-01-29 A (-4d) |  |  | resources Purchaser [16 h] → Purchaser [32 h] |
| HAL-E-PS-M-0260 | Wall propeller type exhaust fans | 2026-02-02 A → 2026-01-29 A (-4d) | 2026-02-02 A → 2026-01-29 A (-4d) |  |  | resources Purchaser [16 h] → Purchaser [32 h] |
| 3 | **ELECTRICAL** | 2026-02-07 → 2025-12-21 (-48d) | 2026-04-20 → 2026-03-15 (-36d) |  |  |  |
| HAL-E-PS-E-0010 | PVC conduits | 2026-02-07 A → 2025-12-21 A (-48d) | 2026-02-07 A → 2025-12-21 A (-48d) |  |  |  |
| HAL-E-PS-E-0070 | Low Voltage cables | 2026-03-14 A → 2025-12-24 A (-80d) | 2026-03-14 A → 2025-12-24 A (-80d) |  |  |  |
| HAL-E-PS-E-0020 | Wires | 2026-03-14 A → 2026-01-01 A (-72d) | 2026-03-14 A → 2026-01-01 A (-72d) |  |  |  |
| HAL-E-PS-E-0030 | Cable Tray | 2026-03-03 A → 2026-01-03 A (-59d) | 2026-03-03 A → 2026-01-03 A (-59d) |  |  |  |
| HAL-E-PS-E-0050 | Wiring devices | 2026-03-03 A → 2026-01-03 A (-59d) | 2026-03-03 A → 2026-01-03 A (-59d) |  |  |  |
| HAL-E-PS-E-0060 | HDPE ducts | 2026-04-20 A → 2026-01-03 A (-107d) | 2026-04-20 A → 2026-01-03 A (-107d) |  |  |  |
| HAL-E-PS-E-0250 | Solar system | 2026-02-24 A → 2026-01-03 A (-52d) | 2026-03-01 A → 2026-01-03 A (-57d) |  | HAL-E-PS-E-0240, HAL-E-MS-M-0190, HAL-E-MS-M-0180, HAL-E-MS-M-0170, HAL-E-MS-M-0160, HAL-E-MS-M-0200 → HAL-E-PS-E-0240 | resources none → Purchaser [32 h] |
| HAL-E-PS-E-0120 | Suspended High Bay LED lights | 2026-03-01 A → 2026-01-11 A (-49d) | 2026-03-01 A → 2026-01-11 A (-49d) |  |  |  |
| HAL-E-PS-E-0130 | Flood lights | 2026-03-01 A → 2026-01-11 A (-49d) | 2026-03-01 A → 2026-01-11 A (-49d) |  |  | resources Purchaser [16 h] → Purchaser [32 h] |
| HAL-E-PS-E-0140 | Recessed mounted LED downlight | 2026-03-01 A → 2026-01-11 A (-49d) | 2026-03-01 A → 2026-01-11 A (-49d) |  |  | resources Purchaser [16 h] → Purchaser [32 h] |
| HAL-E-PS-E-0150 | LED Emergency Lights wall mounted | 2026-03-01 A → 2026-01-11 A (-49d) | 2026-03-01 A → 2026-01-11 A (-49d) |  |  | resources Purchaser [16 h] → Purchaser [32 h] |
| HAL-E-PS-E-0160 | LED Emergency Exit Light | 2026-03-01 A → 2026-01-11 A (-49d) | 2026-03-01 A → 2026-01-11 A (-49d) |  | HAL-E-PS-E-0150 → HAL-E-PS-E-0150, HAL-E-SS-R-900 | resources Purchaser [16 h] → Purchaser [32 h] |
| HAL-E-PS-E-0200 | Street Lighting poles | 2026-03-01 A → 2026-01-11 A (-49d) | 2026-03-01 A → 2026-01-11 A (-49d) | 1d → 4d | HAL-E-PS-E-0180 → HAL-E-PS-E-0180, HAL-E-SS-C-890 | resources Purchaser [16 h] → Purchaser [32 h] |
| HAL-E-PS-E-0220 | Surface mounted lights | 2026-03-01 A → 2026-01-11 A (-49d) | 2026-03-01 A → 2026-01-11 A (-49d) |  |  | resources Purchaser [16 h] → Purchaser [32 h] |
| HAL-E-PS-E-0180 | Fire alarm system | 2026-02-09 A → 2026-01-19 A (-21d) | 2026-02-09 A → 2026-01-20 A (-20d) |  | HAL-E-PS-E-0170 → HAL-E-PS-E-0170, HAL-E-PS-M-0210 | resources Purchaser [16 h] → Purchaser [32 h] |
| HAL-E-PS-E-0040 | Grounding system | 2026-03-14 A → 2026-01-24 A (-49d) | 2026-03-14 A → 2026-01-24 A (-49d) |  |  |  |
| HAL-E-PS-E-0170 | Wall mounted, duplex, telephone and data outlet | 2026-02-11 A → 2026-01-24 A (-18d) | 2026-02-11 A → 2026-01-24 A (-18d) |  |  | resources Purchaser [16 h] → Purchaser [32 h] |
| HAL-E-PS-E-0230 | CCTV System | 2026-02-11 A → 2026-01-24 A (-18d) | 2026-02-11 A → 2026-01-24 A (-18d) |  | HAL-E-PS-E-0220 → HAL-E-PS-E-0220, HAL-E-SS-M-680, HAL-E-SS-EX-780 | resources none → Purchaser [32 h] |
| HAL-E-PS-E-0240 | Access control system | 2026-02-09 A → 2026-02-02 A (-7d) | 2026-02-09 A → 2026-02-02 A (-7d) | 2d → 1.62d | HAL-E-PS-E-0230 → HAL-E-PS-E-0230, HAL-E-SS-R-960 | resources none → Purchaser [32 h] |
| HAL-E-PS-E-0260 | Main program system & controller | 2026-04-20 A → 2026-02-04 A (-75d) | 2026-04-20 A → 2026-02-04 A (-75d) |  |  | resources none → Purchaser [32 h] |
| HAL-E-PS-E-0270 | PLC controller | 2026-04-20 A → 2026-02-04 A (-75d) | 2026-04-20 A → 2026-02-04 A (-75d) |  |  | resources none → Purchaser [32 h] |
| HAL-E-PS-E-0080 | Main distribution board (MDB) | 2026-04-19 A → 2026-02-12 A (-66d) | 2026-04-19 A → 2026-02-14 A (-64d) |  |  |  |

| ID | Task | Start | Finish | Duration | Predecessors | Other |
| --- | --- | --- | --- | --- | --- | --- |
| HAL-E-PS-E-0090 | Lighting panel board | 2026-04-19 A → 2026-02-12 A (-66d) | 2026-04-19 A → 2026-02-14 A (-64d) | 2d → 5d |  |  |
| HAL-E-PS-E-0100 | PP-AC panel | 2026-04-19 A → 2026-02-12 A (-66d) | 2026-04-19 A → 2026-02-14 A (-64d) |  |  |  |
| HAL-E-PS-E-0210 | Distribution board for pump room | 2026-04-19 A → 2026-02-12 A (-66d) | 2026-04-19 A → 2026-02-14 A (-64d) | 1d → 2d |  | resources Purchaser [16 h] → Purchaser [32 h] |
| HAL-E-PS-E-0110 | Disconnect switches | 2026-03-25 A → 2026-03-15 A (-10d) | 2026-03-25 A → 2026-03-15 A (-10d) |  |  |  |
| 4 | **EXTERNAL** | 2026-06-10 → 2026-03-02 (-100d) | 2026-06-10 → 2026-03-15 (-87d) |  |  |  |
| HAL-E-PS-EX-0010 | Asphalt works | 2026-06-10 A → 2026-03-02 A (-100d) | 2026-06-10 A → 2026-03-02 A (-100d) |  |  | resources Purchaser [16 h] → Purchaser [32 h] |
| HAL-E-PS-EX-0030 | Road markings | 2026-06-10 A → 2026-03-09 A (-93d) | 2026-06-10 A → 2026-03-09 A (-93d) |  |  | resources Purchaser [16 h] → Purchaser [32 h] |
| HAL-E-PS-EX-0040 | Road signs | 2026-06-10 A → 2026-03-09 A (-93d) | 2026-06-10 A → 2026-03-09 A (-93d) |  |  | resources Purchaser [16 h] → Purchaser [32 h] |
| HAL-E-PS-EX-0020 | Concrete parking bumper | 2026-06-10 A → 2026-03-15 A (-87d) | 2026-06-10 A → 2026-03-15 A (-87d) |  |  | resources Purchaser [16 h] → Purchaser [32 h] |
| HAL-E-PS-EX-0060 | Interlock tiles | 2026-06-10 A → 2026-03-15 A (-87d) | 2026-06-10 A → 2026-03-15 A (-87d) |  |  | resources Purchaser [16 h] → Purchaser [32 h] |
| HAL-E-PS-EX-0070 | Curbstones | 2026-06-10 A → 2026-03-15 A (-87d) | 2026-06-10 A → 2026-03-15 A (-87d) |  |  | resources Purchaser [16 h] → Purchaser [32 h] |
| HAL-E-PS-EX-0080 | Gravel bedding | 2026-06-10 A → 2026-03-15 A (-87d) | 2026-06-10 A → 2026-03-15 A (-87d) |  |  | resources Purchaser [16 h] → Purchaser [32 h] |
| 5 | **ENVIRONMETAL** | 2026-02-03 → 2025-12-24 (-41d) | 2026-03-03 → 2025-12-28 (-65d) |  |  |  |
| HAL-E-PS-EN-0020 | Directly buried gate valve for fire system | 2026-02-14 A → 2025-12-24 A (-52d) | 2026-02-14 A → 2025-12-24 A (-52d) |  |  |  |
| HAL-E-PS-EN-0040 | Directly buried gate valve for water system | 2026-02-14 A → 2025-12-24 A (-52d) | 2026-02-14 A → 2025-12-24 A (-52d) |  |  |  |
| HAL-E-PS-EN-0050 | Air valve | 2026-02-16 A → 2025-12-24 A (-54d) | 2026-02-16 A → 2025-12-24 A (-54d) |  |  |  |
| HAL-E-PS-EN-0060 | Washout valve | 2026-02-16 A → 2025-12-24 A (-54d) | 2026-02-16 A → 2025-12-24 A (-54d) |  |  |  |
| HAL-E-PS-EN-0070 | Gate valve | 2026-02-16 A → 2025-12-24 A (-54d) | 2026-02-16 A → 2025-12-24 A (-54d) |  |  |  |
| HAL-E-PS-EN-0010 | HDPE pipes for fire system | 2026-02-05 A → 2025-12-28 A (-39d) | 2026-02-05 A → 2025-12-28 A (-39d) |  |  |  |
| HAL-E-PS-EN-0030 | HDPE pipes for water supply system | 2026-02-05 A → 2025-12-28 A (-39d) | 2026-02-05 A → 2025-12-28 A (-39d) |  |  |  |
| 2 | **REVIEW AND APPROVAL** | 2026-01-15 → 2025-12-08 (-38d) | 2026-06-11 → 2026-03-29 (-74d) |  |  |  |
| 6 | **STRUCTURAL** | 2026-01-15 → 2025-12-16 (-30d) | 2026-01-21 → 2026-01-04 (-17d) |  |  |  |
| HAL-E-PA-C-0020 | Concrete mix | 2026-01-15 A → 2025-12-16 A (-30d) | 2026-01-20 A → 2025-12-17 A (-34d) | 2d → 5d |  |  |
| HAL-E-PA-C-0030 | Polyethylene sheet | 2026-01-19 A → 2025-12-29 A (-21d) | 2026-01-21 A → 2025-12-30 A (-22d) | 5d → 2d |  |  |
| HAL-E-PA-C-0040 | Bitumen paint | 2026-01-15 A → 2025-12-29 A (-17d) | 2026-01-20 A → 2025-12-30 A (-21d) |  |  |  |
| HAL-E-PA-C-0050 | Rebar | 2026-01-15 A → 2025-12-29 A (-17d) | 2026-01-20 A → 2025-12-30 A (-21d) |  |  |  |
| HAL-E-PA-C-0010 | Anti termite | 2026-01-15 A → 2026-01-03 A (-12d) | 2026-01-20 A → 2026-01-04 A (-16d) | 2d → 5d |  |  |
| 1 | **ARCHITECTURAL** | 2026-02-08 → 2025-12-18 (-52d) | 2026-06-11 → 2026-03-29 (-74d) |  |  |  |
| HAL-E-PA-A-0020 | PES -Steel Structure | 2026-02-17 A → 2025-12-18 A (-61d) | 2026-02-19 A → 2025-12-20 A (-61d) |  |  | resources Purchaser [32 h] → Purchaser |
| HAL-E-PA-A-0050 | Steel ladder | 2026-02-17 A → 2025-12-18 A (-61d) | 2026-02-19 A → 2025-12-20 A (-61d) |  |  |  |
| HAL-E-PA-A-0120 | Doors | 2026-02-16 A → 2026-01-03 A (-44d) | 2026-02-17 A → 2026-01-04 A (-44d) |  |  |  |
| HAL-E-PA-A-0180 | Internl paint | 2026-03-25 A → 2026-01-08 A (-76d) | 2026-03-26 A → 2026-01-10 A (-75d) |  |  |  |
| HAL-E-PA-A-0060 | Steel gratings | 2026-05-19 A → 2026-02-05 A (-103d) | 2026-05-20 A → 2026-03-29 A (-52d) |  |  |  |
| HAL-E-PA-A-0070 | Steel rails | 2026-06-10 A → 2026-02-05 A (-125d) | 2026-06-11 A → 2026-03-29 A (-74d) |  |  |  |
| HAL-E-PA-A-0190 | Gypsum board | 2026-02-24 A → 2026-02-05 A (-19d) | 2026-04-12 A → 2026-02-07 A (-64d) |  |  |  |
| HAL-E-PA-A-0130 | Windows | 2026-02-08 A → 2026-02-09 A (+1d) | 2026-02-09 A → 2026-03-21 A (+40d) |  |  |  |
| HAL-E-PA-A-0200 | Aluminum Composite Panel |  | 2026-02-10 A → 2026-02-21 A (+11d) | 2d → 2.62d |  | resources Purchaser [32 h] → Purchaser |
| HAL-E-PA-A-0140 | Ceramic tiles | 2026-03-25 A → 2026-02-26 A (-27d) | 2026-03-26 A → 2026-03-03 A (-23d) |  |  |  |
| HAL-E-PA-A-0150 | Granite strip | 2026-05-03 A → 2026-02-26 A (-66d) | 2026-05-04 A → 2026-03-03 A (-62d) |  |  |  |
| HAL-E-PA-A-0040 | Concrete masonry unit (CMU) | 2026-02-08 A → 2026-03-15 A (+35d) | 2026-02-09 A → 2026-03-29 A (+48d) |  |  |  |
| HAL-E-PA-A-0170 | Epoxy paint | 2026-04-20 A → 2026-03-15 A (-36d) | 2026-04-21 A → 2026-03-29 A (-23d) |  |  |  |
| HAL-E-PA-A-0230 | Steel fence and gates | 2026-05-20 A → 2026-03-15 A (-66d) | 2026-05-21 A → 2026-03-29 A (-53d) |  |  | resources Purchaser [16 h] → Purchaser |
| HAL-E-PA-A-0240 | Identification sign; ID01 & ID02 | 2026-06-10 A → 2026-03-15 A (-87d) | 2026-06-11 A → 2026-03-29 A (-74d) |  |  | resources Purchaser [16 h] → Purchaser |
| 2 | **MECHANICAL** | 2026-01-24 → 2025-12-08 (-47d) | 2026-06-11 → 2026-01-31 (-131d) |  |  |  |
| HAL-E-PA-M-0010 | Seamless black steel or ERW pipes | 2026-02-08 A → 2025-12-08 A (-62d) | 2026-02-09 A → 2026-01-10 A (-30d) |  |  |  |
| HAL-E-PA-M-0030 | PPR pipes | 2026-02-03 A → 2025-12-24 A (-41d) | 2026-02-04 A → 2025-12-25 A (-41d) |  |  |  |
| HAL-E-PA-M-0150 | Capped connection | 2026-06-10 A → 2025-12-24 A (-168d) | 2026-06-11 A → 2025-12-25 A (-168d) |  |  |  |
| HAL-E-PA-M-0160 | UPVC pipes | 2026-02-03 A → 2025-12-24 A (-41d) | 2026-03-03 A → 2025-12-25 A (-68d) |  | HAL-E-PS-EN-0070 → HAL-E-PS-M-0160 | resources Purchaser [32 h] → none |
| HAL-E-PA-M-0210 | Western water closet | 2026-02-05 A → 2025-12-24 A (-43d) | 2026-02-07 A → 2025-12-25 A (-44d) |  |  |  |
| HAL-E-PA-M-0240 | Lavatory / wash basin | 2026-02-05 A → 2025-12-24 A (-43d) | 2026-02-07 A → 2025-12-25 A (-44d) |  |  |  |
| HAL-E-PA-M-0270 | Fire pumps | 2026-02-03 A → 2025-12-27 A (-38d) | 2026-02-04 A → 2025-12-28 A (-38d) |  |  |  |
| HAL-E-PA-M-0330 | Booster pump | 2026-02-03 A → 2025-12-27 A (-38d) | 2026-02-04 A → 2025-12-28 A (-38d) |  |  |  |
| HAL-E-PA-M-0070 | U/G HDPE pipes | 2026-02-04 A → 2025-12-28 A (-38d) | 2026-02-05 A → 2025-12-29 A (-38d) |  |  |  |
| HAL-E-PA-M-0340 | GRP tank | 2026-01-24 A → 2025-12-28 A (-27d) | 2026-02-16 A → 2025-12-31 A (-47d) |  |  |  |
| HAL-E-PA-M-0190 | Gully trap | 2026-02-07 A → 2025-12-30 A (-39d) | 2026-02-08 A → 2025-12-31 A (-39d) |  |  |  |
| HAL-E-PA-M-0080 | Warning tapes | 2026-02-14 A → 2026-01-01 A (-44d) | 2026-02-15 A → 2026-01-04 A (-42d) |  |  |  |
| HAL-E-PA-M-0200 | Electric water heater | 2026-02-05 A → 2026-01-03 A (-33d) | 2026-02-07 A → 2026-01-04 A (-34d) |  |  |  |
| HAL-E-PA-M-0140 | Ball valve | 2026-02-11 A → 2026-01-05 A (-37d) | 2026-02-11 A → 2026-01-06 A (-36d) |  |  |  |
| HAL-E-PA-M-0350 | Water supply valves | 2026-02-02 A → 2026-01-07 A (-26d) | 2026-02-03 A → 2026-01-08 A (-26d) |  |  |  |
| HAL-E-PA-M-0230 | Toilet Fittings | 2026-02-07 A → 2026-01-08 A (-30d) | 2026-02-08 A → 2026-01-10 A (-29d) |  |  |  |
| HAL-E-PA-M-0220 | Bib tap | 2026-04-06 A → 2026-01-11 A (-85d) | 2026-04-07 A → 2026-01-12 A (-85d) |  |  |  |
| HAL-E-PA-M-0320 | Water tap | 2026-02-11 A → 2026-01-11 A (-31d) | 2026-02-12 A → 2026-01-12 A (-31d) |  |  | resources Purchaser [16 h] → Purchaser |
| HAL-E-PA-M-0170 | Roof vent caps | 2026-02-16 A → 2026-01-12 A (-35d) | 2026-02-17 A → 2026-01-13 A (-35d) |  |  |  |
| HAL-E-PA-M-0180 | Floor drain | 2026-02-16 A → 2026-01-12 A (-35d) | 2026-02-17 A → 2026-01-13 A (-35d) |  |  |  |
| HAL-E-PA-M-0090 | Fire hose cabinet | 2026-02-04 A → 2026-01-14 A (-21d) | 2026-02-05 A → 2026-01-15 A (-21d) |  |  |  |
| HAL-E-PA-M-0100 | Automatic air release valve | 2026-02-08 A → 2026-01-19 A (-20d) | 2026-02-09 A → 2026-01-19 A (-21d) |  |  |  |
| HAL-E-PA-M-0110 | OS & Y gate valve | 2026-02-08 A → 2026-01-19 A (-20d) | 2026-02-09 A → 2026-01-19 A (-21d) |  |  |  |
| HAL-E-PA-M-0120 | Fire alarm check valve | 2026-02-08 A → 2026-01-19 A (-20d) | 2026-02-09 A → 2026-01-19 A (-21d) |  |  |  |
| HAL-E-PA-M-0280 | Fire fighting valves | 2026-02-02 A → 2026-01-19 A (-14d) | 2026-02-03 A → 2026-01-19 A (-15d) |  |  |  |
| HAL-E-PA-M-0060 | Exhaust diffuser | 2026-05-27 A → 2026-01-27 A (-120d) | 2026-05-28 A → 2026-01-28 A (-120d) |  |  |  |

| ID | Task | Start | Finish | Duration | Other |
| --- | --- | --- | --- | --- | --- |
| HAL-E-PA-M-0040 | HVAC duct | 2026-02-09 A → 2026-01-28 A (-12d) | 2026-02-10 A → 2026-01-29 A (-12d) |  |  |
| HAL-E-PA-M-0050 | Flexible duct | 2026-02-09 A → 2026-01-28 A (-12d) | 2026-02-10 A → 2026-01-29 A (-12d) |  |  |
| HAL-E-PA-M-0250 | Inline exhaust fans | 2026-02-02 A → 2026-01-29 A (-4d) | 2026-02-17 A → 2026-01-31 A (-17d) |  |  |
| HAL-E-PA-M-0260 | Wall propeller type exhaust fans | 2026-02-02 A → 2026-01-29 A (-4d) | 2026-02-17 A → 2026-01-31 A (-17d) |  |  |
| 3 | **ELECTRICAL** | 2026-02-07 → 2025-12-21 (-48d) | 2026-04-21 → 2026-03-29 (-23d) |  |  |
| HAL-E-PA-E-0010 | PVC conduits | 2026-02-07 A → 2025-12-21 A (-48d) | 2026-02-08 A → 2025-12-22 A (-48d) |  |  |
| HAL-E-PA-E-0070 | Low Voltage cables | 2026-03-14 A → 2025-12-24 A (-80d) | 2026-03-15 A → 2025-12-25 A (-80d) |  |  |
| HAL-E-PA-E-0020 | Wires | 2026-03-14 A → 2026-01-01 A (-72d) | 2026-03-15 A → 2026-01-03 A (-71d) |  |  |
| HAL-E-PA-E-0030 | Cable Tray | 2026-03-03 A → 2026-01-03 A (-59d) | 2026-03-04 A → 2026-01-04 A (-59d) |  | resources Purchaser [32 h] → Purchaser |
| HAL-E-PA-E-0050 | Wiring devices | 2026-03-03 A → 2026-01-03 A (-59d) | 2026-03-04 A → 2026-01-04 A (-59d) |  |  |
| HAL-E-PA-E-0060 | HDPE ducts | 2026-04-20 A → 2026-01-03 A (-107d) | 2026-04-21 A → 2026-01-04 A (-107d) |  |  |
| HAL-E-PA-E-0250 | Solar system | 2026-02-24 A → 2026-01-03 A (-52d) | 2026-03-02 A → 2026-01-04 A (-57d) |  |  |
| HAL-E-PA-E-0120 | Suspended High Bay LED lights | 2026-03-01 A → 2026-01-11 A (-49d) | 2026-03-02 A → 2026-01-12 A (-49d) |  |  |
| HAL-E-PA-E-0130 | Flood lights | 2026-03-01 A → 2026-01-11 A (-49d) | 2026-03-02 A → 2026-01-12 A (-49d) |  |  |
| HAL-E-PA-E-0140 | Recessed mounted LED downlight | 2026-03-01 A → 2026-01-11 A (-49d) | 2026-03-02 A → 2026-01-12 A (-49d) |  |  |
| HAL-E-PA-E-0150 | LED Emergency Lights wall mounted | 2026-03-01 A → 2026-01-11 A (-49d) | 2026-03-02 A → 2026-01-12 A (-49d) |  |  |
| HAL-E-PA-E-0160 | LED Emergency Exit Light | 2026-03-01 A → 2026-01-11 A (-49d) | 2026-03-02 A → 2026-01-12 A (-49d) |  |  |
| HAL-E-PA-E-0200 | Street Lighting poles | 2026-03-01 A → 2026-01-11 A (-49d) | 2026-03-02 A → 2026-01-12 A (-49d) |  |  |
| HAL-E-PA-E-0220 | Surface mounted lights | 2026-03-01 A → 2026-01-11 A (-49d) | 2026-03-02 A → 2026-01-12 A (-49d) |  |  |
| HAL-E-PA-E-0180 | Fire alarm system | 2026-02-09 A → 2026-01-20 A (-20d) | 2026-02-10 A → 2026-01-20 A (-21d) |  |  |
| HAL-E-PA-E-0170 | Wall mounted, duplex, telephone and data outlet | 2026-02-11 A → 2026-01-24 A (-18d) | 2026-02-14 A → 2026-03-29 A (+43d) |  |  |
| HAL-E-PA-E-0230 | CCTV System | 2026-02-11 A → 2026-01-24 A (-18d) | 2026-02-14 A → 2026-02-04 A (-10d) |  |  |
| HAL-E-PA-E-0040 | Grounding system | 2026-03-14 A → 2026-01-24 A (-49d) | 2026-03-15 A → 2026-01-25 A (-49d) |  |  |
| HAL-E-PA-E-0240 | Access control system | 2026-02-09 A → 2026-02-02 A (-7d) | 2026-02-10 A → 2026-02-03 A (-7d) |  |  |
| HAL-E-PA-E-0260 | Main program system & controller | 2026-04-20 A → 2026-02-04 A (-75d) | 2026-04-21 A → 2026-02-05 A (-75d) |  |  |
| HAL-E-PA-E-0270 | PLC controller | 2026-04-20 A → 2026-02-04 A (-75d) | 2026-04-21 A → 2026-02-05 A (-75d) |  |  |
| HAL-E-PA-E-0080 | Main distribution board (MDB) | 2026-04-19 A → 2026-02-14 A (-64d) | 2026-04-20 A → 2026-02-14 A (-65d) |  |  |
| HAL-E-PA-E-0090 | Lighting panel board | 2026-04-19 A → 2026-02-14 A (-64d) | 2026-04-20 A → 2026-02-14 A (-65d) |  | resources Purchaser [32 h] → Purchaser |
| HAL-E-PA-E-0100 | PP-AC panel | 2026-04-19 A → 2026-02-14 A (-64d) | 2026-04-20 A → 2026-02-14 A (-65d) |  | resources Purchaser [32 h] → Purchaser |
| HAL-E-PA-E-0210 | Distribution board for pump room | 2026-04-19 A → 2026-02-14 A (-64d) | 2026-04-20 A → 2026-02-14 A (-65d) |  |  |
| HAL-E-PA-E-0110 | Disconnect switches | 2026-03-25 A → 2026-03-15 A (-10d) | 2026-03-26 A → 2026-03-29 A (+3d) |  |  |
| 4 | **EXTERNAL** | 2026-06-09 → 2026-03-02 (-99d) | 2026-06-10 → 2026-03-29 (-73d) |  |  |
| HAL-E-PA-EX-0010 | Asphalt works | 2026-06-09 A → 2026-03-02 A (-99d) | 2026-06-10 A → 2026-03-02 A (-100d) |  |  |
| HAL-E-PA-EX-0030 | Road markings | 2026-06-09 A → 2026-03-09 A (-92d) | 2026-06-10 A → 2026-03-10 A (-92d) |  |  |
| HAL-E-PA-EX-0040 | Road signs | 2026-06-09 A → 2026-03-09 A (-92d) | 2026-06-10 A → 2026-03-10 A (-92d) |  |  |
| HAL-E-PA-EX-0020 | Concrete parking bumper | 2026-06-09 A → 2026-03-15 A (-86d) | 2026-06-10 A → 2026-03-29 A (-73d) |  |  |
| HAL-E-PA-EX-0060 | Interlock tiles | 2026-06-09 A → 2026-03-15 A (-86d) | 2026-06-10 A → 2026-03-29 A (-73d) |  |  |
| HAL-E-PA-EX-0070 | Curbstones | 2026-06-09 A → 2026-03-15 A (-86d) | 2026-06-10 A → 2026-03-29 A (-73d) |  |  |
| HAL-E-PA-EX-0080 | Gravel bedding | 2026-06-09 A → 2026-03-15 A (-86d) | 2026-06-10 A → 2026-03-29 A (-73d) |  |  |
| 5 | **ENVIRONMETAL** | 2026-02-03 → 2025-12-28 (-37d) | 2026-02-17 → 2025-12-29 (-50d) |  |  |
| HAL-E-PA-EN-0010 | HDPE pipes for fire system | 2026-02-05 A → 2025-12-28 A (-39d) | 2026-02-07 A → 2025-12-29 A (-40d) |  |  |
| HAL-E-PA-EN-0020 | Directly buried gate valve for fire system | 2026-02-14 A → 2025-12-28 A (-48d) | 2026-02-15 A → 2025-12-29 A (-48d) |  |  |
| HAL-E-PA-EN-0030 | HDPE pipes for water supply system | 2026-02-05 A → 2025-12-28 A (-39d) | 2026-02-07 A → 2025-12-29 A (-40d) |  |  |
| HAL-E-PA-EN-0040 | Directly buried gate valve for water system | 2026-02-14 A → 2025-12-28 A (-48d) | 2026-02-15 A → 2025-12-29 A (-48d) |  |  |
| HAL-E-PA-EN-0050 | Air valve | 2026-02-16 A → 2025-12-28 A (-50d) | 2026-02-17 A → 2025-12-29 A (-50d) |  |  |
| HAL-E-PA-EN-0060 | Washout valve | 2026-02-16 A → 2025-12-28 A (-50d) | 2026-02-17 A → 2025-12-29 A (-50d) |  |  |
| HAL-E-PA-EN-0070 | Gate valve | 2026-02-16 A → 2025-12-28 A (-50d) | 2026-02-17 A → 2025-12-29 A (-50d) |  |  |
| 2 | **MATERIAL SUBMITTAL** | 2026-01-15 → 2025-12-18 (-28d) | 2026-06-14 → 2026-08-16 (+63d) |  |  |
| 1 | **PREPARATION AND SUBMITTAL** | 2026-01-15 → 2025-12-18 (-28d) | 2026-06-13 → 2026-08-15 (+63d) |  |  |
| 6 | **STRUCTURAL** | 2026-01-15 → 2025-12-18 (-28d) | 2026-03-14 → 2026-01-05 (-68d) |  |  |
| HAL-E-MS-C-0020 | Concrete mix | 2026-01-15 A → 2025-12-18 A (-28d) | 2026-01-15 A → 2025-12-18 A (-28d) |  | resources Purchaser [32 h]; Construction Cost → Purchaser [32 h]; Construction Cost [77638.6] |
| HAL-E-MS-C-0030 | Polyethylene sheet | 2026-01-22 A → 2025-12-31 A (-22d) | 2026-01-22 A → 2025-12-31 A (-22d) |  | resources Purchaser [32 h]; Construction Cost → Purchaser [32 h]; Construction Cost [4907.25] |
| HAL-E-MS-C-0040 | Bitumen paint | 2026-01-22 A → 2025-12-31 A (-22d) | 2026-01-22 A → 2025-12-31 A (-22d) |  | resources Purchaser [32 h]; Construction Cost → Purchaser [32 h]; Construction Cost [4506.98] |
| HAL-E-MS-C-0050 | Rebar | 2026-01-22 A → 2025-12-31 A (-22d) | 2026-01-22 A → 2025-12-31 A (-22d) |  | resources Purchaser [32 h]; Construction Cost → Purchaser [32 h]; Construction Cost [116458] |
| HAL-E-MS-C-0010 | Anti termite | 2026-03-14 A → 2026-01-05 A (-68d) | 2026-03-14 A → 2026-01-05 A (-68d) |  | resources Purchaser [32 h]; Construction Cost → Purchaser [32 h]; Construction Cost [6870.15] |
| 1 | **ARCHITECTURAL** | 2026-02-07 → 2025-12-21 (-48d) | 2026-06-13 → 2026-03-24 (-81d) |  |  |
| HAL-E-MS-A-0030 | Steel ladder | 2026-02-07 A → 2025-12-21 A (-48d) | 2026-02-07 A → 2026-01-01 A (-37d) |  | resources Purchaser [32 h]; Construction Cost → Purchaser [32 h]; Construction Cost [2322] |
| HAL-E-MS-A-1700 | PES -Steel Structure | 2026-02-07 A → 2025-12-21 A (-48d) | 2026-02-07 A → 2026-01-01 A (-37d) |  | resources Purchaser [32 h]; Construction Cost → Purchaser [32 h]; Construction Cost [380511] |
| HAL-E-MS-A-0100 | Doors | 2026-02-19 A → 2026-01-05 A (-45d) | 2026-02-19 A → 2026-01-05 A (-45d) |  | resources Purchaser [32 h]; Construction Cost → Purchaser [32 h]; Construction Cost [34884] |
| HAL-E-MS-A-0160 | Internl paint | 2026-03-29 A → 2026-01-11 A (-77d) | 2026-03-29 A → 2026-01-11 A (-77d) |  | resources Purchaser [32 h]; Construction Cost → Purchaser [32 h]; Construction Cost [6506.32] |
| HAL-E-MS-A-0040 | Steel gratings | 2026-05-21 A → 2026-02-05 A (-105d) | 2026-05-21 A → 2026-02-05 A (-105d) |  | resources Purchaser [32 h]; Construction Cost → Purchaser [32 h]; Construction Cost [1522.8] |
| HAL-E-MS-A-0050 | Steel rails | 2026-06-13 A → 2026-02-05 A (-128d) | 2026-06-13 A → 2026-02-05 A (-128d) |  | resources Purchaser [32 h]; Construction Cost → Purchaser [32 h]; Construction Cost [1830.6] |
| HAL-E-MS-A-0170 | Gypsum board | 2026-04-19 A → 2026-02-08 A (-70d) | 2026-04-19 A → 2026-02-08 A (-70d) |  | resources Purchaser [32 h]; Construction Cost → Purchaser [32 h]; Construction Cost [10901.2] |
| HAL-E-MS-A-0120 | Ceramic tiles | 2026-03-30 A → 2026-03-05 A (-25d) | 2026-03-30 A → 2026-03-05 A (-25d) |  | resources Purchaser [32 h]; Construction Cost → Purchaser [32 h]; Construction Cost [17997.5] |
| HAL-E-MS-A-0130 | Granite strip | 2026-05-09 A → 2026-03-05 A (-65d) | 2026-05-09 A → 2026-03-05 A (-65d) |  | resources Purchaser [32 h]; Construction Cost → Purchaser [32 h]; Construction Cost [355.05] |
| HAL-E-MS-A-0020 | Concrete masonry unit (CMU) | 2026-04-26 A → 2026-03-10 A (-47d) | 2026-04-26 A → 2026-03-10 A (-47d) |  | resources Purchaser [32 h]; Construction Cost → Purchaser [32 h]; Construction Cost [15724.8] |
| HAL-E-MS-A-0110 | Windows | 2026-02-19 A → 2026-03-11 A (+20d) | 2026-02-19 A → 2026-03-11 A (+20d) |  | resources Purchaser [32 h]; Construction Cost → Purchaser [32 h]; Construction Cost [22140] |
| HAL-E-MS-A-1720 | Aluminum Composite Panel | 2026-02-19 A → 2026-03-11 A (+20d) | 2026-02-19 A → 2026-03-11 A (+20d) |  | resources Purchaser [16 h]; Construction Cost → Purchaser [32 h]; Construction Cost [42889.5] |
| HAL-E-MS-A-0150 | Epoxy paint | 2026-04-29 A → 2026-03-24 A (-36d) | 2026-04-29 A → 2026-03-24 A (-36d) | 2d → 1.12d | resources Purchaser [32 h]; Construction Cost → Purchaser [32 h]; Construction Cost [25029] |
| HAL-E-MS-A-1750 | Steel fence and gates | 2026-05-23 A → 2026-03-24 A (-60d) | 2026-05-23 A → 2026-03-24 A (-60d) |  | resources Purchaser [16 h]; Construction Cost → Purchaser [32 h]; Construction Cost [549.45] |

| ID | Task | Start | Finish | Duration | Predecessors | Other |
| --- | --- | --- | --- | --- | --- | --- |
| HAL-E-MS-A-1760 | Identification sign; ID01 & ID02 | 2026-06-13 A → 2026-03-24 A (-81d) | 2026-06-13 A → 2026-03-24 A (-81d) |  |  | resources Purchaser [16 h]; Construction Cost → Purchaser [32 h]; Construction Cost [2268] |
| 2 | **MECHANICAL** | 2026-02-05 → 2025-12-27 (-40d) | 2026-06-13 → 2026-02-01 (-132d) |  |  |  |
| HAL-E-MS-M-0080 | PPR pipes | 2026-02-05 A → 2025-12-27 A (-40d) | 2026-02-05 A → 2025-12-27 A (-40d) |  |  | resources Purchaser [32 h]; Construction Cost → Purchaser [32 h]; Construction Cost [5295.38] |
| HAL-E-MS-M-0100 | Capped connection | 2026-06-13 A → 2025-12-27 A (-168d) | 2026-06-13 A → 2025-12-27 A (-168d) |  |  | resources Purchaser [16 h]; Construction Cost → Purchaser [32 h]; Construction Cost [70.2] |
| HAL-E-MS-M-0110 | UPVC pipes | 2026-02-04 A → 2025-12-27 A (-39d) | 2026-02-05 A → 2025-12-27 A (-40d) |  | HAL-E-PS-M-0160 → HAL-E-PA-M-0160 | resources none → Purchaser [32 h]; Construction Cost [6896.1] |
| HAL-E-MS-M-0160 | Western water closet | 2026-02-08 A → 2025-12-27 A (-43d) | 2026-02-08 A → 2025-12-27 A (-43d) |  |  | resources Purchaser [16 h]; Construction Cost → Purchaser [32 h]; Construction Cost [4406.4] |
| HAL-E-MS-M-0190 | Lavatory / wash basin | 2026-02-08 A → 2025-12-27 A (-43d) | 2026-02-08 A → 2025-12-27 A (-43d) |  |  | resources Purchaser [16 h]; Construction Cost → Purchaser [32 h]; Construction Cost [4968] |
| HAL-E-MS-M-0250 | Fire pumps | 2026-02-05 A → 2025-12-29 A (-38d) | 2026-02-05 A → 2025-12-29 A (-38d) |  |  | resources Purchaser [16 h]; Construction Cost → Purchaser [32 h]; Construction Cost [16200] |
| HAL-E-MS-M-0310 | Booster pump | 2026-02-05 A → 2025-12-29 A (-38d) | 2026-02-05 A → 2025-12-29 A (-38d) | 2d → 4d |  | resources Purchaser [16 h]; Construction Cost → Purchaser [32 h]; Construction Cost [1890] |
| HAL-E-MS-M-0010 | U/G HDPE pipes | 2026-02-07 A → 2025-12-30 A (-39d) | 2026-02-07 A → 2025-12-30 A (-39d) |  |  | resources Purchaser [32 h]; Construction Cost → Purchaser [32 h]; Construction Cost [7547.64] |
| HAL-E-MS-M-0140 | Gully trap | 2026-02-09 A → 2026-01-01 A (-39d) | 2026-02-09 A → 2026-01-01 A (-39d) |  |  | resources Purchaser [16 h]; Construction Cost → Purchaser [32 h]; Construction Cost [1134] |
| HAL-E-MS-M-0320 | GRP tank | 2026-03-02 A → 2026-01-05 A (-56d) | 2026-03-02 A → 2026-01-05 A (-56d) | 2d → 1.12d |  | resources Purchaser [16 h]; Construction Cost → Purchaser [32 h]; Construction Cost [18360] |
| HAL-E-MS-M-0340 | Warning tapes | 2026-02-16 A → 2026-01-06 A (-41d) | 2026-02-16 A → 2026-01-06 A (-41d) |  |  | resources Purchaser [32 h]; Construction Cost → Purchaser [32 h]; Construction Cost [1667.4] |
| HAL-E-MS-M-0090 | Ball valve | 2026-02-14 A → 2026-01-07 A (-38d) | 2026-02-14 A → 2026-01-07 A (-38d) |  |  | resources Purchaser [32 h]; Construction Cost → Purchaser [32 h]; Construction Cost [872.1] |
| HAL-E-MS-M-0330 | Water supply valves | 2026-02-10 A → 2026-01-10 A (-31d) | 2026-02-10 A → 2026-01-10 A (-31d) |  |  | resources Purchaser [16 h]; Construction Cost → Purchaser [32 h]; Construction Cost [2970] |
| HAL-E-MS-M-0020 | Seamless black steel or ERW pipes | 2026-02-10 A → 2026-01-11 A (-30d) | 2026-02-10 A → 2026-01-11 A (-30d) |  |  | resources Purchaser [32 h]; Construction Cost → Purchaser [32 h]; Construction Cost [16392] |
| HAL-E-MS-M-0150 | Electric water heater | 2026-02-08 A → 2026-01-11 A (-28d) | 2026-02-08 A → 2026-01-11 A (-28d) |  |  | resources Purchaser [16 h]; Construction Cost → Purchaser [32 h]; Construction Cost [432] |
| HAL-E-MS-M-0180 | Toilet Fittings | 2026-02-09 A → 2026-01-11 A (-29d) | 2026-02-09 A → 2026-01-11 A (-29d) | 2d → 1.62d |  | resources Purchaser [16 h]; Construction Cost → Purchaser [32 h]; Construction Cost [5294.7] |
| HAL-E-MS-M-0170 | Bib tap | 2026-02-14 A → 2026-01-13 A (-32d) | 2026-03-14 A → 2026-01-13 A (-60d) |  |  | resources Purchaser [16 h]; Construction Cost → Purchaser [32 h]; Construction Cost [540] |
| HAL-E-MS-M-3410 | Water tap | 2026-02-14 A → 2026-01-13 A (-32d) | 2026-02-14 A → 2026-01-13 A (-32d) |  |  | resources Purchaser [16 h]; Construction Cost → Purchaser [32 h]; Construction Cost [648] |
| HAL-E-MS-M-0120 | Roof vent caps | 2026-02-16 A → 2026-01-14 A (-33d) | 2026-02-16 A → 2026-01-14 A (-33d) |  |  | resources Purchaser [16 h]; Construction Cost → Purchaser [32 h]; Construction Cost [202.5] |
| HAL-E-MS-M-0130 | Floor drain | 2026-02-16 A → 2026-01-14 A (-33d) | 2026-02-16 A → 2026-01-14 A (-33d) |  |  | resources Purchaser [16 h]; Construction Cost → Purchaser [32 h]; Construction Cost [2592] |
| HAL-E-MS-M-0030 | Fire hose cabinet | 2026-02-07 A → 2026-01-17 A (-21d) | 2026-02-07 A → 2026-01-17 A (-21d) |  |  | resources Purchaser [32 h]; Construction Cost → Purchaser [32 h]; Construction Cost [3024] |
| HAL-E-MS-M-0040 | Automatic air release valve | 2026-02-10 A → 2026-01-21 A (-20d) | 2026-02-10 A → 2026-01-21 A (-20d) |  |  | resources Purchaser [32 h]; Construction Cost → Purchaser [32 h]; Construction Cost [114.75] |
| HAL-E-MS-M-0050 | OS & Y gate valve | 2026-02-10 A → 2026-01-21 A (-20d) | 2026-02-10 A → 2026-01-21 A (-20d) |  |  | resources Purchaser [32 h]; Construction Cost → Purchaser [32 h]; Construction Cost [1233.9] |
| HAL-E-MS-M-0060 | Fire alarm check valve | 2026-02-10 A → 2026-01-21 A (-20d) | 2026-02-10 A → 2026-01-21 A (-20d) |  |  | resources Purchaser [32 h]; Construction Cost → Purchaser [32 h]; Construction Cost [1755] |
| HAL-E-MS-M-0270 | Fire fighting valves | 2026-02-10 A → 2026-01-21 A (-20d) | 2026-02-10 A → 2026-01-21 A (-20d) |  |  | resources Purchaser [16 h]; Construction Cost → Purchaser [32 h]; Construction Cost [3103.65] |
| HAL-E-MS-M-0240 | Exhaust diffuser | 2026-06-01 A → 2026-01-29 A (-123d) | 2026-06-01 A → 2026-01-29 A (-123d) |  |  | resources Purchaser [32 h]; Construction Cost → Purchaser [32 h]; Construction Cost [2430] |
| HAL-E-MS-M-0220 | HVAC duct | 2026-03-04 A → 2026-01-31 A (-32d) | 2026-03-04 A → 2026-01-31 A (-32d) |  |  | resources Purchaser [32 h]; Construction Cost → Purchaser [32 h]; Construction Cost [38380.5] |
| HAL-E-MS-M-0230 | Flexible duct | 2026-03-04 A → 2026-01-31 A (-32d) | 2026-03-04 A → 2026-01-31 A (-32d) |  |  | resources Purchaser [32 h]; Construction Cost → Purchaser [32 h]; Construction Cost [4577.04] |
| HAL-E-MS-M-0200 | Inline exhaust fans | 2026-03-18 A → 2026-02-01 A (-45d) | 2026-03-18 A → 2026-02-01 A (-45d) |  |  | resources Purchaser [16 h]; Construction Cost → Purchaser [32 h]; Construction Cost [2531.25] |
| HAL-E-MS-M-0210 | Wall propeller type exhaust fans | 2026-03-18 A → 2026-02-01 A (-45d) | 2026-03-18 A → 2026-02-01 A (-45d) |  |  | resources Purchaser [16 h]; Construction Cost → Purchaser [32 h]; Construction Cost [4725] |
| 3 | **ELECTRICAL** | 2026-02-09 → 2025-12-23 (-48d) | 2026-04-30 → 2026-03-24 (-37d) |  |  |  |
| HAL-E-MS-E-0040 | PVC conduits | 2026-02-09 A → 2025-12-23 A (-48d) | 2026-02-09 A → 2025-12-23 A (-48d) |  |  | resources Purchaser [32 h]; Construction Cost → Purchaser [32 h]; Construction Cost [429.3] |
| HAL-E-MS-E-0010 | Low Voltage cables | 2026-03-16 A → 2025-12-27 A (-79d) | 2026-03-16 A → 2025-12-27 A (-79d) |  |  | resources Purchaser [32 h]; Construction Cost → Purchaser [32 h]; Construction Cost [11559] |
| HAL-E-MS-E-0050 | Wires | 2026-03-16 A → 2025-12-27 A (-79d) | 2026-03-16 A → 2025-12-27 A (-79d) |  |  | resources Purchaser [32 h]; Construction Cost → Purchaser [32 h]; Construction Cost [1215] |
| HAL-E-MS-E-0250 | Solar system | 2026-03-03 A → 2026-01-05 A (-57d) | 2026-03-03 A → 2026-01-05 A (-57d) | 2d → 4d |  | resources Purchaser [16 h]; Construction Cost → Construction Cost [59400]; Purchaser [32 h] |
| HAL-E-MS-E-0140 | Wiring devices | 2026-03-07 A → 2026-01-06 A (-60d) | 2026-03-07 A → 2026-01-06 A (-60d) |  |  | resources Purchaser [32 h]; Construction Cost → Purchaser [32 h]; Construction Cost [5626.8] |
| HAL-E-MS-E-0160 | HDPE ducts | 2026-04-30 A → 2026-01-06 A (-114d) | 2026-04-30 A → 2026-01-06 A (-114d) |  |  | resources Purchaser [32 h]; Construction Cost → Purchaser [32 h]; Construction Cost [30499.5] |
| HAL-E-MS-E-210 | Cable Tray | 2026-03-07 A → 2026-01-06 A (-60d) | 2026-03-07 A → 2026-01-06 A (-60d) |  |  | resources Purchaser [32 h]; Construction Cost → Purchaser [32 h]; Construction Cost [78.3] |
| HAL-E-MS-E-0060 | Suspended High Bay LED lights | 2026-03-03 A → 2026-01-13 A (-49d) | 2026-03-03 A → 2026-01-13 A (-49d) |  |  | resources Purchaser [16 h]; Construction Cost → Purchaser [32 h]; Construction Cost [5599.8] |
| HAL-E-MS-E-0070 | Flood lights | 2026-03-03 A → 2026-01-13 A (-49d) | 2026-03-03 A → 2026-01-13 A (-49d) |  |  | resources Purchaser [16 h]; Construction Cost → Purchaser [32 h]; Construction Cost [1026] |
| HAL-E-MS-E-0080 | Recessed mounted LED downlight | 2026-03-03 A → 2026-01-13 A (-49d) | 2026-03-03 A → 2026-01-13 A (-49d) |  |  | resources Purchaser [16 h]; Construction Cost → Purchaser [32 h]; Construction Cost [3672] |
| HAL-E-MS-E-0090 | LED Emergency Lights wall mounted | 2026-03-03 A → 2026-01-13 A (-49d) | 2026-03-03 A → 2026-01-13 A (-49d) |  |  | resources Purchaser [16 h]; Construction Cost → Purchaser [32 h]; Construction Cost [1555.2] |
| HAL-E-MS-E-0100 | LED Emergency Exit Light | 2026-03-03 A → 2026-01-13 A (-49d) | 2026-03-03 A → 2026-01-13 A (-49d) |  |  | resources Purchaser [16 h]; Construction Cost → Purchaser [32 h]; Construction Cost [529.2] |
| HAL-E-MS-E-0170 | Street Lighting poles | 2026-03-04 A → 2026-01-13 A (-50d) | 2026-03-04 A → 2026-01-13 A (-50d) |  |  | resources Purchaser [16 h]; Construction Cost → Purchaser [32 h]; Construction Cost [6433.83] |
| HAL-E-MS-E-0190 | Surface mounted lights | 2026-03-03 A → 2026-01-13 A (-49d) | 2026-03-03 A → 2026-01-13 A (-49d) |  |  | resources Purchaser [16 h]; Construction Cost → Purchaser [32 h]; Construction Cost [7068.6] |
| HAL-E-MS-E-0130 | Fire alarm system | 2026-02-11 A → 2026-01-21 A (-21d) | 2026-02-11 A → 2026-01-21 A (-21d) |  |  | resources Purchaser [16 h]; Construction Cost → Purchaser [32 h]; Construction Cost [7622.1] |
| HAL-E-MS-E-0120 | Grounding system | 2026-03-16 A → 2026-01-29 A (-46d) | 2026-03-16 A → 2026-01-29 A (-46d) |  |  | resources Purchaser [32 h]; Construction Cost → Purchaser [32 h]; Construction Cost [10612.3] |
| HAL-E-MS-E-0240 | Access control system | 2026-02-11 A → 2026-02-04 A (-7d) | 2026-02-11 A → 2026-02-04 A (-7d) |  |  | resources Purchaser [16 h]; Construction Cost → Construction Cost [6596.1]; Purchaser [32 h] |
| HAL-E-MS-E-0260 | Main program system & controller | 2026-04-30 A → 2026-02-10 A (-79d) | 2026-04-30 A → 2026-02-10 A (-79d) |  |  | resources Purchaser [16 h]; Construction Cost → Construction Cost [4320]; Purchaser [32 h] |
| HAL-E-MS-E-0270 | PLC controller | 2026-04-30 A → 2026-02-10 A (-79d) | 2026-04-30 A → 2026-02-10 A (-79d) | 2d → 1d |  | resources Purchaser [16 h]; Construction Cost → Construction Cost [8640]; Purchaser [32 h] |
| HAL-E-MS-E-0020 | Main distribution board (MDB) | 2026-04-26 A → 2026-02-15 A (-70d) | 2026-04-26 A → 2026-02-15 A (-70d) |  |  | resources Purchaser [32 h]; Construction Cost → Purchaser [32 h]; Construction Cost [6912] |
| HAL-E-MS-E-0180 | Distribution board for pump room | 2026-04-26 A → 2026-02-15 A (-70d) | 2026-04-26 A → 2026-02-15 A (-70d) |  |  | resources Purchaser [16 h]; Construction Cost → Purchaser [32 h]; Construction Cost [280.8] |
| HAL-E-MS-E-190 | Lighting panel board | 2026-04-26 A → 2026-02-15 A (-70d) | 2026-04-26 A → 2026-02-15 A (-70d) |  |  | resources Purchaser [32 h]; Construction Cost → Purchaser [32 h]; Construction Cost [4104] |
| HAL-E-MS-E-200 | PP-AC panel | 2026-04-26 A → 2026-02-15 A (-70d) | 2026-04-26 A → 2026-02-15 A (-70d) |  |  | resources Purchaser [32 h]; Construction Cost → Purchaser [32 h]; Construction Cost [4941] |
| HAL-E-MS-E-0230 | CCTV System | 2026-03-28 A → 2026-02-16 A (-40d) | 2026-03-28 A → 2026-02-16 A (-40d) |  |  | resources Purchaser [16 h]; Construction Cost → Construction Cost [17952.3]; Purchaser [32 h] |
| HAL-E-MS-E-0110 | Wall mounted, duplex, telephone and data outlet | 2026-03-29 A → 2026-03-12 A (-17d) | 2026-03-29 A → 2026-03-12 A (-17d) | 1d → 2d |  | resources Purchaser [16 h]; Construction Cost → Purchaser [32 h]; Construction Cost [6320.7] |
| HAL-E-MS-E-0030 | Disconnect switches | 2026-03-29 A → 2026-03-24 A (-5d) | 2026-03-29 A → 2026-03-24 A (-5d) | 2d → 1.62d |  | resources Purchaser [16 h]; Construction Cost → Purchaser [32 h]; Construction Cost [7001.1] |
| 4 | **EXTERNAL** | 2026-06-11 → 2026-03-02 (-101d) | 2026-06-11 → 2026-08-15 (+65d) |  |  |  |
| HAL-E-MS-EX-0010 | Asphalt works | 2026-06-11 A → 2026-03-02 A (-101d) | 2026-06-11 A → 2026-03-02 A (-101d) |  |  | resources Purchaser [16 h]; Construction Cost → Purchaser [32 h]; Construction Cost [127890] |
| HAL-E-MS-EX-0040 | Road signs | 2026-06-11 A → 2026-04-16 A (-56d) | 2026-06-11 A → 2026-04-16 A (-56d) |  |  | resources Purchaser [16 h]; Construction Cost → Purchaser [32 h]; Construction Cost [2443.77] |
| HAL-E-MS-EX-0020 | Concrete parking bumper | 2026-06-11 A → 2026-05-20 A (-22d) | 2026-06-11 A → 2026-05-20 A (-22d) |  |  | resources Purchaser [16 h]; Construction Cost → Purchaser [32 h]; Construction Cost [709.56] |
| HAL-E-MS-EX-0060 | Interlock tiles | 2026-06-11 A → 2026-05-20 A (-22d) | 2026-06-11 A → 2026-05-20 A (-22d) |  |  | resources Purchaser [16 h]; Construction Cost → Purchaser [32 h]; Construction Cost [9528.98] |
| HAL-E-MS-EX-0070 | Curbstones | 2026-06-11 A → 2026-05-20 A (-22d) | 2026-06-11 A → 2026-05-20 A (-22d) |  |  | resources Purchaser [16 h]; Construction Cost → Purchaser [32 h]; Construction Cost [6419.25] |
| HAL-E-MS-EX-0030 | Road markings | 2026-06-11 A → 2026-08-15 A (+65d) | 2026-06-11 A → 2026-08-15 A (+65d) |  |  | resources Purchaser [16 h]; Construction Cost → Purchaser [32 h]; Construction Cost [1767.15] |
| HAL-E-MS-EX-0080 | Gravel bedding | 2026-06-11 A → 2026-08-15 A (+65d) | 2026-06-11 A → 2026-08-15 A (+65d) |  |  | resources Purchaser [16 h]; Construction Cost → Purchaser [32 h]; Construction Cost [3862.65] |
| 5 | **ENVIRONMETAL** | 2026-02-08 → 2025-12-27 (-43d) | 2026-02-18 → 2026-01-24 (-25d) |  |  |  |
| HAL-E-MS-EN-0010 | HDPE pipes for fire system | 2026-02-08 A → 2025-12-30 A (-40d) | 2026-02-08 A → 2025-12-30 A (-40d) |  |  | resources Purchaser [32 h]; Construction Cost → Purchaser [32 h]; Construction Cost [7290.27] |
| HAL-E-MS-EN-0030 | HDPE pipes for water supply system | 2026-02-08 A → 2025-12-30 A (-40d) | 2026-02-08 A → 2025-12-30 A (-40d) |  |  | resources Purchaser [32 h]; Construction Cost → Purchaser [32 h]; Construction Cost [7093.2] |

| ID | Task | Start | Finish | Duration | Predecessors | Other |
| --- | --- | --- | --- | --- | --- | --- |
| HAL-E-MS-EN-0020 | Directly buried gate valve for fire system | 2026-02-16 A → 2026-01-24 A (-23d) | 2026-02-16 A → 2026-01-24 A (-23d) |  |  | resources Purchaser [32 h]; Construction Cost → Purchaser [32 h]; Construction Cost [1317.6] |
| HAL-E-MS-EN-0040 | Directly buried gate valve for water system | 2026-02-16 A → 2026-01-24 A (-23d) | 2026-02-16 A → 2026-01-24 A (-23d) |  |  | resources Purchaser [32 h]; Construction Cost → Purchaser [32 h]; Construction Cost [1328.4] |
| HAL-E-MS-EN-0050 | Air valve | 2026-02-18 A → 2026-01-24 A (-25d) | 2026-02-18 A → 2026-01-24 A (-25d) |  |  | resources Purchaser [32 h]; Construction Cost → Purchaser [32 h]; Construction Cost [648] |
| HAL-E-MS-EN-0060 | Washout valve | 2026-02-18 A → 2026-01-24 A (-25d) | 2026-02-18 A → 2026-01-24 A (-25d) |  |  | resources Purchaser [32 h]; Construction Cost → Purchaser [32 h]; Construction Cost [756] |
| HAL-E-MS-EN-0070 | Gate valve | 2026-02-18 A → 2026-01-24 A (-25d) | 2026-02-18 A → 2026-01-24 A (-25d) |  |  | resources Purchaser [32 h]; Construction Cost → Purchaser [32 h]; Construction Cost [270] |
| 2 | **REVIEW AND APPROVAL** | 2026-01-20 → 2025-12-18 (-33d) | 2026-06-14 → 2026-08-16 (+63d) |  |  |  |
| 6 | **STRUCTURAL** | 2026-01-20 → 2025-12-18 (-33d) | 2026-04-07 → 2026-01-05 (-92d) |  |  |  |
| HAL-E-MA-C-0020 | Concrete mix | 2026-01-20 A → 2025-12-18 A (-33d) | 2026-01-20 A → 2025-12-21 A (-30d) |  |  | resources Construction Cost [251752] → Construction Cost |
| HAL-E-MA-C-0030 | Polyethylene sheet | 2026-01-22 A → 2025-12-31 A (-22d) | 2026-01-29 A → 2025-12-31 A (-29d) |  |  | resources Construction Cost [13036] → Construction Cost |
| HAL-E-MA-C-0040 | Bitumen paint | 2026-01-22 A → 2025-12-31 A (-22d) | 2026-01-29 A → 2025-12-31 A (-29d) |  |  | resources Construction Cost [28944.1] → Construction Cost |
| HAL-E-MA-C-0050 | Rebar | 2026-01-22 A → 2025-12-31 A (-22d) | 2026-01-29 A → 2025-12-31 A (-29d) |  |  | resources Construction Cost [167834] → Construction Cost |
| HAL-E-MA-C-0010 | Anti termite | 2026-03-14 A → 2026-01-05 A (-68d) | 2026-04-07 A → 2026-01-05 A (-92d) |  |  | resources Construction Cost [19546.4] → Construction Cost |
| 1 | **ARCHITECTURAL** | 2026-02-07 → 2025-12-21 (-48d) | 2026-06-14 → 2026-03-29 (-77d) |  |  |  |
| HAL-E-MA-A-0030 | Steel ladder | 2026-02-07 A → 2025-12-21 A (-48d) | 2026-02-10 A → 2025-12-22 A (-50d) |  |  | resources Construction Cost [4846.16] → Construction Cost |
| HAL-E-MA-A-1700 | PES -Steel Structure | 2026-02-07 A → 2025-12-21 A (-48d) | 2026-03-17 A → 2025-12-22 A (-85d) |  | HAL-E-MS-A-1700, HAL-E-MS-A-0100 → HAL-E-MS-A-1700 | resources Purchaser [80 h]; Construction Cost [799835] → Purchaser; Construction Cost |
| HAL-E-MA-A-0100 | Doors | 2026-02-19 A → 2026-01-05 A (-45d) | 2026-02-25 A → 2026-01-05 A (-51d) |  |  | resources Construction Cost [75386.6] → Construction Cost |
| HAL-E-MA-A-0160 | Internl paint | 2026-03-29 A → 2026-01-11 A (-77d) | 2026-05-03 A → 2026-01-15 A (-108d) |  |  | resources Construction Cost [21754] → Construction Cost |
| HAL-E-MA-A-0170 | Gypsum board | 2026-04-19 A → 2026-02-08 A (-70d) | 2026-06-14 A → 2026-02-11 A (-123d) | 5d → 7d |  | resources Construction Cost [23047] → Construction Cost |
| HAL-E-MA-A-0120 | Ceramic tiles | 2026-03-30 A → 2026-03-05 A (-25d) | 2026-05-04 A → 2026-03-07 A (-58d) | 5d → 4.12d |  | resources Construction Cost [36151.3] → Construction Cost |
| HAL-E-MA-A-0130 | Granite strip | 2026-05-09 A → 2026-03-05 A (-65d) | 2026-05-17 A → 2026-03-07 A (-71d) | 5d → 4.12d |  | resources Construction Cost [330.55] → Construction Cost |
| HAL-E-MA-A-0020 | Concrete masonry unit (CMU) | 2026-04-26 A → 2026-03-10 A (-47d) | 2026-04-29 A → 2026-03-10 A (-50d) |  |  | resources Construction Cost [62820.4] → Construction Cost |
| HAL-E-MA-A-0110 | Windows | 2026-02-19 A → 2026-03-11 A (+20d) | 2026-02-25 A → 2026-03-25 A (+28d) | 5d → 4.62d |  | resources Construction Cost [52525.2] → Construction Cost |
| HAL-E-MA-A-1720 | Aluminum Composite Panel | 2026-04-21 A → 2026-03-11 A (-41d) | 2026-04-26 A → 2026-03-25 A (-32d) | 5d → 7d |  | resources Purchaser [16 h]; Construction Cost [86631.8] → Purchaser; Construction Cost |
| HAL-E-MA-A-0040 | Steel gratings | 2026-05-21 A → 2026-03-24 A (-58d) | 2026-05-24 A → 2026-03-29 A (-56d) |  |  | resources Construction Cost [3179.4] → Construction Cost |
| HAL-E-MA-A-0050 | Steel rails | 2026-06-13 A → 2026-03-24 A (-81d) | 2026-06-14 A → 2026-03-29 A (-77d) |  |  | resources Construction Cost [755.54] → Construction Cost |
| HAL-E-MA-A-0150 | Epoxy paint | 2026-04-21 A → 2026-03-24 A (-28d) | 2026-04-26 A → 2026-03-29 A (-28d) | 4.5d → 4.62d |  | resources Construction Cost [56848.5] → Construction Cost |
| HAL-E-MA-A-1750 | Steel fence and gates | 2026-05-23 A → 2026-03-24 A (-60d) | 2026-05-25 A → 2026-03-29 A (-57d) | 5d → 7d |  | resources Purchaser [16 h]; Construction Cost [3548.6] → Purchaser; Construction Cost |
| HAL-E-MA-A-1760 | Identification sign; ID01 & ID02 | 2026-06-08 A → 2026-03-24 A (-76d) | 2026-06-13 A → 2026-03-29 A (-76d) | 5d → 7d |  | resources Purchaser [16 h]; Construction Cost [4743.41] → Purchaser; Construction Cost |
| 2 | **MECHANICAL** | 2026-02-05 → 2025-12-27 (-40d) | 2026-06-14 → 2026-02-16 (-118d) |  |  |  |
| HAL-E-MA-M-0080 | PPR pipes | 2026-02-05 A → 2025-12-27 A (-40d) | 2026-05-11 A → 2025-12-29 A (-133d) |  |  | resources Construction Cost [11485.2] → Construction Cost |
| HAL-E-MA-M-0100 | Capped connection | 2026-06-13 A → 2025-12-27 A (-168d) | 2026-06-14 A → 2025-12-29 A (-167d) |  |  | resources Construction Cost [136.99] → Construction Cost |
| HAL-E-MA-M-0110 | UPVC pipes | 2026-02-03 A → 2025-12-27 A (-38d) | 2026-02-04 A → 2025-12-31 A (-35d) | 2d → 5d | HAL-E-PA-M-0160 → HAL-E-MS-M-0110 | resources none → Construction Cost |
| HAL-E-MA-M-0160 | Western water closet | 2026-02-08 A → 2025-12-27 A (-43d) | 2026-05-17 A → 2025-12-31 A (-137d) | 4.75d → 3.88d | HAL-E-MS-M-0160 → HAL-E-MS-M-0160, HAL-E-MA-M-0050, HAL-E-MA-M-0060 | resources Construction Cost [9812.19] → Construction Cost |
| HAL-E-MA-M-0190 | Lavatory / wash basin | 2026-02-08 A → 2025-12-27 A (-43d) | 2026-05-17 A → 2025-12-31 A (-137d) |  |  | resources Construction Cost [10548.5] → Construction Cost |
| HAL-E-MA-M-0250 | Fire pumps | 2026-02-05 A → 2025-12-29 A (-38d) | 2026-02-24 A → 2026-01-04 A (-51d) | 4.62d → 6.62d |  | resources Construction Cost [15505.3] → Construction Cost |
| HAL-E-MA-M-0310 | Booster pump | 2026-02-05 A → 2025-12-29 A (-38d) | 2026-02-11 A → 2026-01-04 A (-38d) |  |  | resources Construction Cost [1938.67] → Construction Cost |
| HAL-E-MA-M-0010 | U/G HDPE pipes | 2026-02-07 A → 2025-12-30 A (-39d) | 2026-03-08 A → 2026-01-04 A (-63d) |  |  | resources Construction Cost [7495.73] → Construction Cost |
| HAL-E-MA-M-0140 | Gully trap | 2026-02-09 A → 2026-01-01 A (-39d) | 2026-02-26 A → 2026-01-04 A (-53d) | 5d → 4.12d |  | resources Construction Cost [2397.38] → Construction Cost |
| HAL-E-MA-M-0150 | Electric water heater | 2026-02-08 A → 2026-01-05 A (-34d) | 2026-03-01 A → 2026-01-05 A (-55d) | 5d → 4.12d |  | resources Construction Cost [896.17] → Construction Cost |
| HAL-E-MA-M-0320 | GRP tank | 2026-03-02 A → 2026-01-05 A (-56d) | 2026-04-07 A → 2026-01-05 A (-92d) |  |  | resources Construction Cost [31478] → Construction Cost |
| HAL-E-MA-M-0340 | Warning tapes | 2026-02-16 A → 2026-01-06 A (-41d) | 2026-03-03 A → 2026-01-07 A (-55d) |  |  | resources Construction Cost [2111.55] → Construction Cost |
| HAL-E-MA-M-0090 | Ball valve | 2026-02-14 A → 2026-01-07 A (-38d) | 2026-04-16 A → 2026-01-08 A (-98d) |  |  | resources Construction Cost [2134.82] → Construction Cost |
| HAL-E-MA-M-0330 | Water supply valves | 2026-02-10 A → 2026-01-10 A (-31d) | 2026-03-26 A → 2026-01-17 A (-68d) | 4.62d → 6.62d | HAL-E-MS-M-0330 → HAL-E-MS-M-0330, HAL-E-MA-M-0200, HAL-E-MA-M-0270 | resources Construction Cost [467.18] → Construction Cost |
| HAL-E-MA-M-0020 | Seamless black steel or ERW pipes | 2026-02-10 A → 2026-01-11 A (-30d) | 2026-02-26 A → 2026-01-18 A (-39d) |  |  | resources Construction Cost [35657.1] → Construction Cost |
| HAL-E-MA-M-0180 | Toilet Fittings | 2026-02-09 A → 2026-01-11 A (-29d) | 2026-06-01 A → 2026-01-17 A (-135d) | 4.75d → 4.25d |  | resources Construction Cost [11319.1] → Construction Cost |
| HAL-E-MA-M-0170 | Bib tap | 2026-02-14 A → 2026-01-13 A (-32d) | 2026-04-16 A → 2026-01-18 A (-88d) |  |  | resources Construction Cost [936.14] → Construction Cost |
| HAL-E-MA-M-3410 | Water tap | 2026-02-14 A → 2026-01-13 A (-32d) | 2026-04-16 A → 2026-01-18 A (-88d) |  |  | resources Purchaser [16 h]; Construction Cost [1415.62] → Purchaser; Construction Cost |
| HAL-E-MA-M-0120 | Roof vent caps | 2026-02-16 A → 2026-01-14 A (-33d) | 2026-06-14 A → 2026-01-18 A (-147d) | 5d → 4.12d |  | resources Construction Cost [456.64] → Construction Cost |
| HAL-E-MA-M-0130 | Floor drain | 2026-02-16 A → 2026-01-14 A (-33d) | 2026-06-04 A → 2026-01-18 A (-137d) | 5d → 4.12d | HAL-E-MS-M-0130 → HAL-E-MS-M-0130, HAL-E-MA-M-0040 | resources Construction Cost [11114] → Construction Cost |
| HAL-E-MA-M-0030 | Fire hose cabinet | 2026-02-07 A → 2026-01-17 A (-21d) | 2026-03-01 A → 2026-01-19 A (-41d) |  |  | resources Construction Cost [7466.16] → Construction Cost |
| HAL-E-MA-M-0040 | Automatic air release valve | 2026-02-10 A → 2026-01-21 A (-20d) | 2026-02-26 A → 2026-01-29 A (-28d) |  |  | resources Construction Cost [265.43] → Construction Cost |
| HAL-E-MA-M-0050 | OS & Y gate valve | 2026-02-10 A → 2026-01-21 A (-20d) | 2026-02-26 A → 2026-01-29 A (-28d) | 4.5d → 5d |  | resources Construction Cost [1744.73] → Construction Cost |
| HAL-E-MA-M-0060 | Fire alarm check valve | 2026-02-10 A → 2026-01-21 A (-20d) | 2026-02-26 A → 2026-01-29 A (-28d) |  |  | resources Construction Cost [3998.51] → Construction Cost |
| HAL-E-MA-M-0270 | Fire fighting valves | 2026-02-10 A → 2026-01-21 A (-20d) | 2026-03-26 A → 2026-01-29 A (-56d) | 4.62d → 3.75d |  | resources Construction Cost [1332.84] → Construction Cost |
| HAL-E-MA-M-0240 | Exhaust diffuser | 2026-06-01 A → 2026-01-29 A (-123d) | 2026-06-04 A → 2026-02-16 A (-108d) |  |  | resources Construction Cost [1056] → Construction Cost |
| HAL-E-MA-M-0220 | HVAC duct | 2026-03-04 A → 2026-01-31 A (-32d) | 2026-05-12 A → 2026-02-03 A (-98d) |  |  | resources Construction Cost [73629.1] → Construction Cost |
| HAL-E-MA-M-0230 | Flexible duct | 2026-03-04 A → 2026-01-31 A (-32d) | 2026-05-12 A → 2026-02-03 A (-98d) |  |  | resources Construction Cost [10444.5] → Construction Cost |
| HAL-E-MA-M-0200 | Inline exhaust fans | 2026-03-18 A → 2026-02-01 A (-45d) | 2026-04-19 A → 2026-02-02 A (-76d) | 4.75d → 4.62d |  | resources Construction Cost [4121.24] → Construction Cost |
| HAL-E-MA-M-0210 | Wall propeller type exhaust fans | 2026-03-18 A → 2026-02-01 A (-45d) | 2026-04-19 A → 2026-02-02 A (-76d) | 4.75d → 3.88d | HAL-E-MS-M-0210, HAL-E-MA-M-0180 → HAL-E-MS-M-0210 | resources Construction Cost [23066.3] → Construction Cost |
| 3 | **ELECTRICAL** | 2026-02-09 → 2025-12-23 (-48d) | 2026-06-14 → 2026-03-29 (-77d) |  |  |  |
| HAL-E-MA-E-0040 | PVC conduits | 2026-02-09 A → 2025-12-23 A (-48d) | 2026-03-01 A → 2025-12-25 A (-66d) |  |  | resources Construction Cost [2360.8] → Construction Cost |
| HAL-E-MA-E-0010 | Low Voltage cables | 2026-03-16 A → 2025-12-27 A (-79d) | 2026-03-29 A → 2026-01-04 A (-84d) |  |  | resources Construction Cost [44855.2] → Construction Cost |
| HAL-E-MA-E-0050 | Wires | 2026-03-16 A → 2025-12-27 A (-79d) | 2026-03-29 A → 2026-01-04 A (-84d) |  |  | resources Construction Cost [1106.91] → Construction Cost |
| HAL-E-MA-E-0250 | Solar system | 2026-03-03 A → 2026-01-05 A (-57d) | 2026-04-25 A → 2026-01-29 A (-86d) | 4d → 2d |  | resources Construction Cost [124744] → none |
| HAL-E-MA-E-0140 | Wiring devices | 2026-03-07 A → 2026-01-06 A (-60d) | 2026-03-08 A → 2026-01-07 A (-60d) |  |  | resources Construction Cost [9962.15] → Construction Cost |
| HAL-E-MA-E-0160 | HDPE ducts | 2026-04-30 A → 2026-01-06 A (-114d) | 2026-05-03 A → 2026-01-07 A (-116d) |  |  | resources Construction Cost [26403] → Construction Cost |
| HAL-E-MA-E-210 | Cable Tray | 2026-03-07 A → 2026-01-06 A (-60d) | 2026-03-08 A → 2026-01-07 A (-60d) |  |  | resources Purchaser [80 h]; Construction Cost [159.57] → Purchaser; Construction Cost |
| HAL-E-MA-E-0060 | Suspended High Bay LED lights | 2026-03-03 A → 2026-01-13 A (-49d) | 2026-03-07 A → 2026-01-14 A (-52d) |  |  | resources Construction Cost [14938] → Construction Cost |
| HAL-E-MA-E-0070 | Flood lights | 2026-03-03 A → 2026-01-13 A (-49d) | 2026-03-07 A → 2026-01-14 A (-52d) |  |  | resources Construction Cost [2268.18] → Construction Cost |
| HAL-E-MA-E-0080 | Recessed mounted LED downlight | 2026-03-03 A → 2026-01-13 A (-49d) | 2026-03-07 A → 2026-01-14 A (-52d) | 5d → 4.12d |  | resources Construction Cost [20081.1] → Construction Cost |

| ID | Task | Start | Finish | Duration | Predecessors | Other |
| --- | --- | --- | --- | --- | --- | --- |
| HAL-E-MA-E-0090 | LED Emergency Lights wall mounted | 2026-03-03 A → 2026-01-13 A (-49d) | 2026-03-07 A → 2026-01-14 A (-52d) | 5d → 4.12d |  | resources Construction Cost [4144.06] → Construction Cost |
| HAL-E-MA-E-0100 | LED Emergency Exit Light | 2026-03-03 A → 2026-01-13 A (-49d) | 2026-03-07 A → 2026-01-14 A (-52d) | 5d → 7d |  | resources Construction Cost [1145.13] → Construction Cost |
| HAL-E-MA-E-0170 | Street Lighting poles | 2026-03-04 A → 2026-01-13 A (-50d) | 2026-05-20 A → 2026-01-14 A (-126d) |  |  | resources Construction Cost [10525.3] → Construction Cost |
| HAL-E-MA-E-0190 | Surface mounted lights | 2026-03-03 A → 2026-01-13 A (-49d) | 2026-03-07 A → 2026-01-14 A (-52d) | 5d → 4.12d |  | resources Construction Cost [11068.8] → Construction Cost |
| HAL-E-MA-E-0130 | Fire alarm system | 2026-02-11 A → 2026-01-21 A (-21d) | 2026-03-30 A → 2026-01-29 A (-60d) | 5d → 4.12d |  | resources Construction Cost [41920.1] → Construction Cost |
| HAL-E-MA-E-0120 | Grounding system | 2026-03-16 A → 2026-01-29 A (-46d) | 2026-03-29 A → 2026-01-31 A (-57d) |  |  | resources Construction Cost [9771.19] → Construction Cost |
| HAL-E-MA-E-0240 | Access control system | 2026-02-11 A → 2026-02-04 A (-7d) | 2026-03-07 A → 2026-02-04 A (-31d) | 5d → 2d | HAL-E-MS-E-0240 → HAL-E-MS-E-0240, HAL-E-SS-E-1040, HAL-E-SS-M-710 | resources Construction Cost [13602.3] → none |
| HAL-E-MA-E-0260 | Main program system & controller | 2026-04-30 A → 2026-02-10 A (-79d) | 2026-05-12 A → 2026-02-28 A (-73d) | 5d → 2d |  | resources Construction Cost [12578.1] → none |
| HAL-E-MA-E-0270 | PLC controller | 2026-04-30 A → 2026-02-10 A (-79d) | 2026-05-12 A → 2026-02-28 A (-73d) | 5d → 2d |  | resources Construction Cost [8486] → none |
| HAL-E-MA-E-0020 | Main distribution board (MDB) | 2026-04-26 A → 2026-02-15 A (-70d) | 2026-05-12 A → 2026-03-12 A (-61d) | 4.5d → 5d |  | resources Construction Cost [15994] → Construction Cost |
| HAL-E-MA-E-0180 | Distribution board for pump room | 2026-04-26 A → 2026-02-15 A (-70d) | 2026-05-12 A → 2026-03-12 A (-61d) | 4d → 5.5d |  | resources Construction Cost [11002.7] → Construction Cost |
| HAL-E-MA-E-190 | Lighting panel board | 2026-04-26 A → 2026-02-15 A (-70d) | 2026-05-12 A → 2026-03-12 A (-61d) |  |  | resources Purchaser [80 h]; Construction Cost [9064.43] → Purchaser; Construction Cost |
| HAL-E-MA-E-200 | PP-AC panel | 2026-04-26 A → 2026-02-15 A (-70d) | 2026-05-12 A → 2026-03-12 A (-61d) | 5d → 4.12d |  | resources Purchaser [16 h]; Construction Cost [10662.7] → Purchaser; Construction Cost |
| HAL-E-MA-E-0230 | CCTV System | 2026-03-28 A → 2026-02-16 A (-40d) | 2026-04-13 A → 2026-02-28 A (-44d) | 4d → 2d |  | resources Construction Cost [37604.8] → none |
| HAL-E-MA-E-0110 | Wall mounted, duplex, telephone and data outlet | 2026-03-29 A → 2026-03-12 A (-17d) | 2026-04-13 A → 2026-03-12 A (-32d) | 4d → 3.88d |  | resources Construction Cost [13294.1] → Construction Cost |
| HAL-E-MA-E-0030 | Disconnect switches | 2026-03-29 A → 2026-03-24 A (-5d) | 2026-06-14 A → 2026-03-29 A (-77d) | 5d → 3.62d |  | resources Construction Cost [15086.4] → Construction Cost |
| 4 | **EXTERNAL** | 2026-06-11 → 2026-03-24 (-79d) | 2026-06-13 → 2026-08-16 (+64d) |  |  |  |
| HAL-E-MA-EX-0010 | Asphalt works | 2026-06-11 A → 2026-03-24 A (-79d) | 2026-06-13 A → 2026-03-29 A (-76d) | 5d → 4.38d |  | resources Construction Cost [280348] → Construction Cost |
| HAL-E-MA-EX-0040 | Road signs | 2026-06-11 A → 2026-04-16 A (-56d) | 2026-06-13 A → 2026-06-29 A (+16d) | 4.62d → 6.62d |  | resources Construction Cost [4654.29] → Construction Cost |
| HAL-E-MA-EX-0020 | Concrete parking bumper | 2026-06-11 A → 2026-05-31 A (-11d) | 2026-06-13 A → 2026-06-06 A (-7d) |  |  | resources Construction Cost [1433.72] → Construction Cost |
| HAL-E-MA-EX-0060 | Interlock tiles | 2026-06-11 A → 2026-05-31 A (-11d) | 2026-06-13 A → 2026-06-06 A (-7d) | 4.62d → 6.62d |  | resources Construction Cost [21297] → Construction Cost |
| HAL-E-MA-EX-0070 | Curbstones | 2026-06-11 A → 2026-05-31 A (-11d) | 2026-06-13 A → 2026-06-06 A (-7d) | 4.62d → 6.62d |  | resources Construction Cost [13036.9] → Construction Cost |
| HAL-E-MA-EX-0030 | Road markings | 2026-06-11 A → 2026-08-15 A (+65d) | 2026-06-13 A → 2026-08-16 A (+64d) |  |  | resources Construction Cost [1696.34] → Construction Cost |
| HAL-E-MA-EX-0080 | Gravel bedding | 2026-06-11 A → 2026-08-15 A (+65d) | 2026-06-13 A → 2026-08-16 A (+64d) | 5d → 3.62d |  | resources Construction Cost [9917.68] → Construction Cost |
| 5 | **ENVIRONMETAL** | 2026-02-08 → 2025-12-29 (-41d) | 2026-06-14 → 2026-01-29 (-136d) |  |  |  |
| HAL-E-MA-EN-0010 | HDPE pipes for fire system | 2026-02-08 A → 2025-12-30 A (-40d) | 2026-02-26 A → 2026-01-04 A (-53d) |  |  | resources Construction Cost [21745.9] → Construction Cost |
| HAL-E-MA-EN-0030 | HDPE pipes for water supply system | 2026-02-08 A → 2025-12-30 A (-40d) | 2026-02-26 A → 2026-01-04 A (-53d) |  |  | resources Construction Cost [1598.26] → Construction Cost |
| HAL-E-MA-EN-0020 | Directly buried gate valve for fire system | 2026-02-16 A → 2026-01-24 A (-23d) | 2026-05-25 A → 2026-01-29 A (-116d) |  |  | resources Construction Cost [1090.5] → Construction Cost |
| HAL-E-MA-EN-0040 | Directly buried gate valve for water system | 2026-02-16 A → 2026-01-24 A (-23d) | 2026-05-25 A → 2026-01-29 A (-116d) |  |  | resources Construction Cost [2414.78] → Construction Cost |
| HAL-E-MA-EN-0050 | Air valve | 2026-02-18 A → 2026-01-24 A (-25d) | 2026-02-26 A → 2026-01-29 A (-28d) |  |  | resources Construction Cost [1963.06] → Construction Cost |
| HAL-E-MA-EN-0060 | Washout valve | 2026-02-18 A → 2026-01-24 A (-25d) | 2026-06-14 A → 2026-01-29 A (-136d) | 5d → 4.62d |  | resources Construction Cost [2302.04] → Construction Cost |
| HAL-E-MA-EN-0070 | Gate valve | 2026-02-18 A → 2026-01-24 A (-25d) | 2026-06-14 A → 2026-01-29 A (-136d) | 5d → 4.12d |  | resources Construction Cost [6398.75] → Construction Cost |
| 3 | **METHOD STATEMENTS** | 2026-02-07 → 2025-12-18 (-51d) | 2026-06-23 → 2026-08-09 (+47d) |  |  |  |
| 1 | **PREPARATION AND SUBMITTAL** | 2026-02-07 → 2025-12-18 (-51d) | 2026-06-22 → 2026-08-08 (+47d) |  |  |  |
| HAL-E-MT-C-0010 | Method Statement for Structural Works | 2026-02-07 A → 2025-12-18 A (-51d) | 2026-06-22 A → 2026-06-29 A (+7d) |  |  | resources Engineer [453 h] → Engineer [112 h] |
| HAL-E-MT-E-0040 | Method Statement for Electrical Works | 2026-05-10 A → 2026-01-14 A (-116d) | 2026-06-22 A → 2026-08-08 A (+47d) | 7d → 9d |  |  |
| HAL-E-MT-M-0030 | Method Statement for Mechanical Works | 2026-05-10 A → 2026-01-28 A (-102d) | 2026-06-22 A → 2026-08-08 A (+47d) | 7d → 6.12d |  |  |
| HAL-E-MT-A-0020 | Method Statement for Architectural Works | 2026-03-05 A → 2026-05-02 A (+58d) | 2026-06-22 A → 2026-08-08 A (+47d) |  |  |  |
| HAL-E-MT-ENV-0060 | Method Statement for Environmental Works | 2026-06-21 A → 2026-05-02 A (-50d) | 2026-06-22 A → 2026-06-29 A (+7d) | 8d → 7d |  | resources Engineer [128 h] → Engineer [112 h] |
| HAL-E-MT-EX-0050 | Method Statement for External Works | 2026-06-21 A → 2026-05-02 A (-50d) | 2026-06-22 A → 2026-08-08 A (+47d) |  |  |  |
| 2 | **REVIEW AND APPROVAL** | 2026-02-07 → 2025-12-18 (-51d) | 2026-06-23 → 2026-08-09 (+47d) |  |  |  |
| HAL-E-MT-C-1010 | Method Statement for Structural Works | 2026-02-07 A → 2025-12-18 A (-51d) | 2026-06-23 A → 2026-06-30 A (+7d) |  |  | resources Engineer [160 h] → Engineer |
| HAL-E-MT-E-1040 | Method Statement for Electrical Works | 2026-05-10 A → 2026-01-14 A (-116d) | 2026-06-23 A → 2026-08-09 A (+47d) |  |  | resources Engineer [160 h] → Engineer |
| HAL-E-MT-M-1030 | Method Statement for Mechanical Works | 2026-05-10 A → 2026-02-01 A (-98d) | 2026-06-23 A → 2026-08-09 A (+47d) |  |  | resources Engineer [160 h] → Engineer |
| HAL-E-MT-A-1020 | Method Statement for Architectural Works | 2026-03-05 A → 2026-05-02 A (+58d) | 2026-06-23 A → 2026-08-09 A (+47d) | 10d → 11.12d |  | resources Engineer [160 h] → Engineer |
| HAL-E-MT-ENV-1060 | Method Statement for Environmental Works | 2026-06-21 A → 2026-05-02 A (-50d) | 2026-06-23 A → 2026-06-30 A (+7d) |  |  | resources Engineer [16 h] → Engineer |
| HAL-E-MT-EX-1050 | Method Statement for External Works | 2026-06-21 A → 2026-05-02 A (-50d) | 2026-06-23 A → 2026-08-09 A (+47d) |  | HAL-E-MT-E-1040, HAL-E-MT-EX-0050 → HAL-E-MT-E-1040, HAL-E-MT-EX-0050, HAL-E-MT-ENV-0060 | resources Engineer [160 h] → Engineer |
| 3 | **STAGING** | 2026-02-09 → 2025-12-18 (-53d) | 2026-06-23 → 2026-08-09 (+47d) |  |  |  |
| HAL-E-MT-C-2010 | Method Statement for Structural Works | 2026-02-09 A → 2025-12-18 A (-53d) | 2026-06-23 A → 2026-07-15 A (+22d) |  |  | resources Engineer [16 h] → Engineer |
| HAL-E-MT-E-2040 | Method Statement for Electrical Works | 2026-05-10 A → 2026-01-14 A (-116d) | 2026-06-23 A → 2026-08-09 A (+47d) |  |  | resources Engineer [16 h] → Engineer |
| HAL-E-MT-M-2030 | Method Statement for Mechanical Works | 2026-05-10 A → 2026-02-01 A (-98d) | 2026-06-23 A → 2026-08-09 A (+47d) |  |  | resources Engineer [16 h] → Engineer |
| HAL-E-MT-A-2020 | Method Statement for Architectural Works | 2026-06-21 A → 2026-05-02 A (-50d) | 2026-06-23 A → 2026-08-09 A (+47d) | 4d → 1d |  | resources Engineer [64 h] → Engineer |
| HAL-E-MT-ENV-2060 | Method Statement for Environmental Works | 2026-06-21 A → 2026-05-02 A (-50d) | 2026-06-23 A → 2026-07-13 A (+20d) |  | HAL-E-MT-ENV-1060 → HAL-E-MT-ENV-1060, HAL-E-MT-EX-2050 | resources Engineer [16 h] → Engineer |
| HAL-E-MT-EX-2050 | Method Statement for External Works | 2026-06-21 A → 2026-05-02 A (-50d) | 2026-06-23 A → 2026-08-09 A (+47d) |  | HAL-E-MT-EX-1050, HAL-E-MT-E-2040 → HAL-E-MT-EX-1050 | resources Engineer [16 h] → Engineer |
| 2 | **LONG LEAD MATERIALS** | 2026-01-14 → 2025-12-15 (-30d) | 2026-09-27 → 2026-09-15 (-12d) |  |  |  |
| 1 | **ARCHITECTURAL** | 2026-01-14 → 2025-12-15 (-30d) | 2026-08-20 → 2026-07-11 (-40d) |  |  |  |
| 1 | **PO ISSUE** | 2026-01-14 → 2025-12-15 (-30d) | 2026-03-22 → 2026-02-24 (-26d) |  |  |  |
| HAL-E-PO-A-1700 | PES -Steel Structure | 2026-01-14 A → 2025-12-15 A (-30d) | 2026-01-14 A → 2025-12-15 A (-30d) |  |  | resources Purchaser [80 h] → Purchaser [40 h] |
| HAL-P-PO-A-190 | Windows | 2026-03-22 A → 2026-02-05 A (-45d) | 2026-03-22 A → 2026-02-05 A (-45d) | 5d → 4.5d |  | resources Purchaser [80 h] → Purchaser [40 h] |
| HAL-P-PO-A-180 | Doors | 2026-03-18 A → 2026-02-24 A (-22d) | 2026-03-18 A → 2026-02-24 A (-22d) |  |  | resources Purchaser [80 h] → Purchaser [40 h] |
| 2 | **MANUFACTURING** | 2026-01-14 → 2025-12-16 (-29d) | 2026-06-23 → 2026-07-11 (+18d) |  |  |  |
| HAL-E-MF-A-1700 | PES -Steel Structure | 2026-01-14 A → 2025-12-16 A (-29d) | 2026-05-25 A → 2026-05-20 A (-5d) |  |  | resources Purchaser [560 h] → Purchaser |
| HAL-P-MF-A-190 | Windows | 2026-03-25 A → 2026-02-05 A (-48d) | 2026-06-23 A → 2026-07-11 A (+18d) | 90d → 80d |  | resources Loading workers [60 h] → Loading workers |
| HAL-P-MF-A-180 | Doors | 2026-03-21 A → 2026-02-24 A (-25d) | 2026-06-23 A → 2026-07-11 A (+18d) | 90d → 91.12d |  | resources Loading workers [440 h] → Loading workers |
| 4 | **DELIVERY TO SITE** | 2026-05-31 → 2026-03-05 (-87d) | 2026-08-20 → 2026-07-11 (-40d) |  |  |  |
| HAL-E-DL-A-1700 | PES -Steel Structure | 2026-07-21 A → 2026-03-05 A (-138d) | 2026-07-22 A → 2026-05-21 A (-62d) | 2d → 7d | PES -Steel Structure -1 → HAL-E-MF-A-1700 | resources none → Purchaser [112 h]; Construction Cost [3424599] |
| HAL-P-DL-A-180 | Doors | 2026-08-18 A → 2026-05-13 A (-97d) | 2026-08-20 A → 2026-07-11 A (-40d) |  |  | resources Unloading workers [112 h]; Construction Cost [502577] → Unloading workers [112 h]; Construction Cost [313956] |
| HAL-P-DL-A-190 | Windows | 2026-08-19 A → 2026-07-05 A (-45d) | 2026-08-20 A → 2026-07-11 A (-40d) |  |  | resources Unloading workers [112 h]; Construction Cost [350168] → Unloading workers [112 h]; Construction Cost [199260] |
| 5 | **STAGING TIME** | 2026-07-21 → 2026-03-05 (-138d) | 2026-08-20 → 2026-07-11 (-40d) |  |  |  |
| HAL-P-ST-A-180 | Doors | 2026-08-18 A → 2026-05-13 A (-97d) | 2026-08-20 A → 2026-07-11 A (-40d) |  |  |  |

| ID | Task | Start | Finish | Duration | Predecessors | Other |
| --- | --- | --- | --- | --- | --- | --- |
| HAL-P-ST-A-190 | Windows | 2026-08-19 A → 2026-07-05 A (-45d) | 2026-08-20 A → 2026-07-11 A (-40d) |  |  |  |
| 3 | **ELECTRICAL** | 2026-03-24 → 2026-01-29 (-54d) | 2026-09-27 → 2026-09-15 (-12d) |  |  |  |
| 1 | **PO ISSUE** | 2026-03-24 → 2026-01-29 (-54d) | 2026-03-24 → 2026-03-16 (-8d) |  |  |  |
| HAL-P-PO-E-200 | Suspended High Bay LED lights | 2026-03-24 A → 2026-01-29 A (-54d) | 2026-03-24 A → 2026-01-29 A (-54d) |  | HAL-E-MA-E-0060, HAL-P-PO-E-2000, HAL-E-SS-C-890, HAL-E-SS-A-910, HAL-E-SS-M-660, HAL-E-SS-E-990, HAL-E-SS-EX-760, HAL-E-SA-C-880, HAL-E-SA-C-870, HAL-E-SA-C-870 FF → HAL-E-MA-E-0060, HAL-P-PO-E-2000 | resources Purchaser [16 h] → Purchaser [40 h] |
| HAL-P-PO-E-210 | Flood lights | 2026-03-24 A → 2026-01-29 A (-54d) | 2026-03-24 A → 2026-01-29 A (-54d) | 5d → 7d | HAL-E-MA-E-0070, HAL-P-PO-E-200, HAL-E-SS-R-960, HAL-E-SS-R-960 FF, Rebar for Footings → HAL-E-MA-E-0070, HAL-P-PO-E-200 | resources Purchaser [16 h] → Purchaser [40 h] |
| HAL-P-PO-E-220 | Recessed mounted LED downlight | 2026-03-24 A → 2026-01-29 A (-54d) | 2026-03-24 A → 2026-01-29 A (-54d) |  |  | resources Purchaser [16 h] → Purchaser [40 h] |
| HAL-P-PO-E-230 | LED Emergency Lights wall mounted | 2026-03-24 A → 2026-01-29 A (-54d) | 2026-03-24 A → 2026-01-29 A (-54d) |  |  | resources Purchaser [16 h] → Purchaser [160 h] |
| HAL-P-PO-E-240 | LED Emergency Exit Light | 2026-03-24 A → 2026-01-29 A (-54d) | 2026-03-24 A → 2026-01-29 A (-54d) |  |  | resources Purchaser [16 h] → Purchaser [160 h] |
| HAL-P-PO-E-280 | Surface mounted lights | 2026-03-24 A → 2026-01-29 A (-54d) | 2026-03-24 A → 2026-01-29 A (-54d) |  |  | resources Purchaser [80 h] → Purchaser [160 h] |
| HAL-P-PO-E-0260 | Main program system & controller | 2026-03-24 A → 2026-02-04 A (-48d) | 2026-03-24 A → 2026-02-04 A (-48d) |  |  | resources none → Purchaser [160 h] |
| HAL-P-PO-E-0270 | PLC controller | 2026-03-24 A → 2026-02-04 A (-48d) | 2026-03-24 A → 2026-02-04 A (-48d) |  |  | resources none → Purchaser [160 h] |
| HAL-P-PO-E-260 | Street Lighting poles | 2026-03-24 A → 2026-02-09 A (-43d) | 2026-03-24 A → 2026-02-09 A (-43d) |  |  | resources Purchaser [16 h] → Purchaser [160 h] |
| HAL-P-PO-E-250 | Fire alarm system | 2026-03-24 A → 2026-02-11 A (-41d) | 2026-03-24 A → 2026-02-11 A (-41d) |  |  | resources Purchaser [16 h] → Purchaser [160 h] |
| HAL-P-PO-E-0250 | Solar system | 2026-03-24 A → 2026-02-19 A (-33d) | 2026-03-24 A → 2026-02-19 A (-33d) |  |  | resources none → Purchaser [160 h] |
| HAL-P-PO-E-0230 | CCTV System | 2026-03-24 A → 2026-03-16 A (-8d) | 2026-03-24 A → 2026-03-16 A (-8d) |  |  | resources none → Purchaser [160 h] |
| HAL-P-PO-E-0240 | Access control system | 2026-03-24 A → 2026-03-16 A (-8d) | 2026-03-24 A → 2026-03-16 A (-8d) |  |  | resources none → Purchaser [160 h] |
| HAL-P-PO-E-190 | Main distribution board (MDB) | 2026-03-24 A → 2026-03-16 A (-8d) | 2026-03-24 A → 2026-03-16 A (-8d) | 5d → 4.12d |  | resources Purchaser [16 h] → Purchaser [40 h] |
| HAL-P-PO-E-1900 | Lighting panel board | 2026-03-24 A → 2026-03-16 A (-8d) | 2026-03-24 A → 2026-03-16 A (-8d) |  |  | resources Purchaser [16 h] → Purchaser [40 h] |
| HAL-P-PO-E-2000 | PP-AC panel | 2026-03-24 A → 2026-03-16 A (-8d) | 2026-03-24 A → 2026-03-16 A (-8d) |  |  | resources Purchaser [16 h] → Purchaser [40 h] |
| HAL-P-PO-E-270 | Distribution board for pump room | 2026-03-24 A → 2026-03-16 A (-8d) | 2026-03-24 A → 2026-03-16 A (-8d) |  |  | resources Purchaser [80 h] → Purchaser [160 h] |
| 2 | **MANUFACTURING** | 2026-04-01 → 2026-01-29 (-62d) | 2026-09-27 → 2026-09-15 (-12d) |  |  |  |
| HAL-P-MF-E-200 | Suspended High Bay LED lights | 2026-04-20 A → 2026-01-29 A (-81d) | 2026-08-27 A → 2026-05-18 A (-101d) | 90d → 92d |  | resources Loading workers [32 h] → Loading workers |
| HAL-P-MF-E-210 | Flood lights | 2026-04-28 A → 2026-01-29 A (-89d) | 2026-09-27 A → 2026-05-18 A (-132d) |  | HAL-P-PO-E-210, HAL-E-SS-A-960, HAL-E-SS-M-710, HAL-E-SS-E-1040, HAL-E-SS-EX-840, HAL-E-SA-A-950, HAL-E-SA-A-940, HAL-E-SA-M-700, HAL-E-SA-M-690, HAL-E-SA-M-670, HAL-E-SA-M-680, HAL-E-SA-E-1030, HAL-E-SA-E-1020, HAL-E-SA-E-1010, HAL-E-SA-E-1000, HAL-E-SA-E-990, HAL-E-SA-R-960 → HAL-P-PO-E-210 | resources Loading workers [80 h] → Loading workers |
| HAL-P-MF-E-220 | Recessed mounted LED downlight | 2026-05-04 A → 2026-01-29 A (-95d) | 2026-09-27 A → 2026-05-18 A (-132d) |  |  | resources Loading workers [80 h] → Loading workers |
| HAL-P-MF-E-230 | LED Emergency Lights wall mounted | 2026-05-10 A → 2026-01-29 A (-101d) | 2026-09-27 A → 2026-05-18 A (-132d) |  |  | resources Loading workers [80 h] → Loading workers |
| HAL-P-MF-E-240 | LED Emergency Exit Light | 2026-05-16 A → 2026-01-29 A (-107d) | 2026-09-27 A → 2026-05-18 A (-132d) |  |  | resources Loading workers [80 h] → Loading workers |
| HAL-P-MF-E-280 | Surface mounted lights | 2026-06-11 A → 2026-01-29 A (-133d) | 2026-06-21 A → 2026-05-18 A (-34d) |  |  | resources Loading workers [1440 h] → Loading workers |
| HAL-P-MF-E-0260 | Main program system & controller | 2026-04-29 A → 2026-02-04 A (-84d) | 2026-09-20 A → 2026-07-16 A (-66d) | 155d → 80d |  |  |
| HAL-P-MF-E-0270 | PLC controller | 2026-05-02 A → 2026-02-04 A (-87d) | 2026-09-20 A → 2026-07-12 A (-70d) | 160d → 80d |  |  |
| HAL-P-MF-E-260 | Street Lighting poles | 2026-05-31 A → 2026-02-09 A (-111d) | 2026-06-21 A → 2026-07-21 A (+30d) |  |  | resources Loading workers [1440 h] → Loading workers |
| HAL-P-MF-E-250 | Fire alarm system | 2026-05-21 A → 2026-02-11 A (-99d) | 2026-09-20 A → 2026-05-24 A (-119d) | 130d → 90d |  | resources Loading workers [80 h] → Loading workers |
| HAL-P-MF-E-0250 | Solar system | 2026-04-25 A → 2026-02-19 A (-65d) | 2026-09-20 A → 2026-07-04 A (-78d) | 150d → 100d |  |  |
| HAL-P-MF-E-0230 | CCTV System | 2026-04-25 A → 2026-03-16 A (-40d) | 2026-09-20 A → 2026-09-15 A (-5d) | 120d → 90d |  |  |
| HAL-P-MF-E-0240 | Access control system | 2026-04-16 A → 2026-03-16 A (-31d) | 2026-09-20 A → 2026-09-15 A (-5d) | 150d → 60d |  |  |
| HAL-P-MF-E-190 | Main distribution board (MDB) | 2026-04-01 A → 2026-03-16 A (-16d) | 2026-08-22 A → 2026-07-13 A (-40d) | 90d → 91.12d |  | resources Loading workers [32 h] → Loading workers |
| HAL-P-MF-E-1900 | Lighting panel board | 2026-04-07 A → 2026-03-16 A (-22d) | 2026-09-20 A → 2026-07-13 A (-69d) | 90d → 92d |  | resources Purchaser [32 h] → Purchaser |
| HAL-P-MF-E-2000 | PP-AC panel | 2026-04-13 A → 2026-03-16 A (-28d) | 2026-09-20 A → 2026-07-13 A (-69d) |  |  | resources Purchaser [32 h] → Purchaser |
| HAL-P-MF-E-270 | Distribution board for pump room | 2026-06-06 A → 2026-03-16 A (-82d) | 2026-06-21 A → 2026-07-13 A (+22d) |  |  | resources Loading workers [1440 h] → Loading workers |
| 4 | **DELIVERY TO SITE** | 2026-08-24 → 2026-05-18 (-98d) | 2026-09-21 → 2026-09-15 (-6d) |  |  |  |
| HAL-P-DL-E-200 | Suspended High Bay LED lights | 2026-08-29 A → 2026-05-18 A (-103d) | 2026-08-29 A → 2026-05-18 A (-103d) |  |  | resources Unloading workers [112 h]; Construction Cost [99586.8] → Unloading workers [112 h]; Construction Cost [50398.2] |
| HAL-P-DL-E-210 | Flood lights | 2026-08-29 A → 2026-05-18 A (-103d) | 2026-08-29 A → 2026-05-18 A (-103d) |  |  | resources Unloading workers [112 h]; Construction Cost [15121.2] → Unloading workers [112 h]; Construction Cost [9234] |
| HAL-P-DL-E-220 | Recessed mounted LED downlight | 2026-08-29 A → 2026-05-18 A (-103d) | 2026-08-29 A → 2026-05-18 A (-103d) |  |  | resources Unloading workers [112 h]; Construction Cost [133874] → Unloading workers [112 h]; Construction Cost [33048] |
| HAL-P-DL-E-230 | LED Emergency Lights wall mounted | 2026-08-29 A → 2026-05-18 A (-103d) | 2026-08-29 A → 2026-05-18 A (-103d) |  |  | resources Unloading workers [720 h]; Construction Cost [27627.1] → Unloading workers [224 h]; Construction Cost [13996.8] |
| HAL-P-DL-E-240 | LED Emergency Exit Light | 2026-08-29 A → 2026-05-18 A (-103d) | 2026-08-29 A → 2026-05-18 A (-103d) |  |  | resources Unloading workers [720 h]; Construction Cost [7634.17] → Unloading workers [224 h]; Construction Cost [4762.8] |
| HAL-P-DL-E-280 | Surface mounted lights | 2026-08-29 A → 2026-05-18 A (-103d) | 2026-08-29 A → 2026-05-18 A (-103d) |  |  | resources Unloading workers [720 h]; Construction Cost [73792.2] → Unloading workers [336 h]; Construction Cost [63617.4] |
| HAL-P-DL-E-250 | Fire alarm system | 2026-09-02 A → 2026-05-24 A (-101d) | 2026-09-21 A → 2026-05-24 A (-120d) |  |  | resources Unloading workers [1440 h]; Construction Cost [279467] → Unloading workers [336 h]; Construction Cost [68598.9] |
| HAL-P-DL-E-0250 | Solar system | 2026-09-09 A → 2026-07-05 A (-66d) | 2026-09-21 A → 2026-07-05 A (-78d) |  |  | resources Construction Cost [831629]; Unloading workers [112 h] → Construction Cost [534600]; Unloading workers [224 h] |
| HAL-P-DL-E-190 | Main distribution board (MDB) | 2026-08-24 A → 2026-07-14 A (-41d) | 2026-08-24 A → 2026-07-14 A (-41d) |  |  | resources Unloading workers [112 h]; Construction Cost [106627] → Unloading workers [112 h]; Construction Cost [62208] |
| HAL-P-DL-E-1900 | Lighting panel board | 2026-09-01 A → 2026-07-14 A (-49d) | 2026-09-21 A → 2026-07-14 A (-69d) |  |  | resources Purchaser [112 h]; Construction Cost [60429.5] → Purchaser [112 h]; Construction Cost [36936] |
| HAL-P-DL-E-2000 | PP-AC panel | 2026-09-01 A → 2026-07-14 A (-49d) | 2026-09-21 A → 2026-07-14 A (-69d) |  | HAL-P-MF-E-2000, HAL-C-A1-SS-1040 → HAL-P-MF-E-2000 | resources Purchaser [112 h]; Construction Cost [71084.6] → Purchaser [112 h]; Construction Cost [44469] |
| HAL-P-DL-E-270 | Distribution board for pump room | 2026-09-19 A → 2026-07-14 A (-67d) | 2026-09-20 A → 2026-07-14 A (-68d) |  |  | resources Unloading workers [720 h]; Construction Cost [73351.4] → Unloading workers [224 h]; Construction Cost [2527.2] |
| HAL-P-DL-E-0260 | Main program system & controller | 2026-09-06 A → 2026-07-16 A (-52d) | 2026-09-21 A → 2026-07-16 A (-67d) |  |  | resources Construction Cost [83856.8]; Unloading workers [112 h] → Construction Cost [38880]; Unloading workers [112 h] |
| HAL-P-DL-E-0270 | PLC controller | 2026-09-07 A → 2026-07-16 A (-53d) | 2026-09-21 A → 2026-07-16 A (-67d) |  |  | resources Construction Cost [56576.6]; Unloading workers [112 h] → Construction Cost [77760]; Unloading workers [112 h] |
| HAL-P-DL-E-260 | Street Lighting poles | 2026-09-19 A → 2026-07-21 A (-60d) | 2026-09-21 A → 2026-07-21 A (-62d) |  |  | resources Unloading workers [720 h]; Construction Cost [70168.8] → Unloading workers [224 h]; Construction Cost [57904.5] |
| HAL-P-DL-E-0230 | CCTV System | 2026-09-06 A → 2026-09-15 A (+9d) | 2026-09-21 A → 2026-09-15 A (-6d) |  |  | resources Construction Cost [250699]; Unloading workers [720 h] → Construction Cost [161571]; Unloading workers [224 h] |
| HAL-P-DL-E-0240 | Access control system | 2026-09-19 A → 2026-09-15 A (-4d) | 2026-09-21 A → 2026-09-15 A (-6d) |  |  | resources Construction Cost [90682.2]; Unloading workers [112 h] → Construction Cost [59364.9]; Unloading workers [112 h] |
| 5 | **STAGING TIME** | 2026-08-24 → 2026-05-18 (-98d) | 2026-09-21 → 2026-09-15 (-6d) |  |  |  |
| HAL-P-ST-E-200 | Suspended High Bay LED lights | 2026-08-29 A → 2026-05-18 A (-103d) | 2026-08-29 A → 2026-05-18 A (-103d) |  | HAL-P-DL-E-200, HAL-E-ST-E-190, HAL-P-ST-E-190 → HAL-P-DL-E-200, HAL-P-ST-E-190 |  |
| HAL-P-ST-E-210 | Flood lights | 2026-08-29 A → 2026-05-18 A (-103d) | 2026-08-29 A → 2026-05-18 A (-103d) |  | HAL-P-DL-E-210, HAL-E-ST-E-200 → HAL-P-DL-E-210 |  |
| HAL-P-ST-E-220 | Recessed mounted LED downlight | 2026-08-29 A → 2026-05-18 A (-103d) | 2026-08-29 A → 2026-05-18 A (-103d) |  | HAL-P-DL-E-220 → HAL-P-DL-E-220, HAL-P-ST-E-200, HAL-E-ST-E-200, HAL-E-ST-E-190, HAL-P-ST-E-190 |  |
| HAL-P-ST-E-230 | LED Emergency Lights wall mounted | 2026-08-29 A → 2026-05-18 A (-103d) | 2026-08-29 A → 2026-05-18 A (-103d) |  |  |  |
| HAL-P-ST-E-240 | LED Emergency Exit Light | 2026-08-29 A → 2026-05-18 A (-103d) | 2026-08-29 A → 2026-05-18 A (-103d) |  | HAL-P-DL-E-240, HAL-P-ST-E-220 → HAL-P-DL-E-240 |  |
| HAL-P-ST-E-280 | Surface mounted lights | 2026-08-29 A → 2026-05-18 A (-103d) | 2026-08-29 A → 2026-05-18 A (-103d) |  | HAL-P-DL-E-280, HAL-P-ST-E-260 → HAL-P-DL-E-280 |  |
| HAL-P-ST-E-250 | Fire alarm system | 2026-09-02 A → 2026-05-24 A (-101d) | 2026-09-21 A → 2026-05-24 A (-120d) |  |  |  |
| HAL-E-ST-E-0250 | Solar system | 2026-09-09 A → 2026-07-05 A (-66d) | 2026-09-21 A → 2026-07-05 A (-78d) |  |  |  |
| HAL-E-ST-E-190 | Lighting panel board | 2026-09-01 A → 2026-07-14 A (-49d) | 2026-09-21 A → 2026-07-14 A (-69d) |  |  |  |
| HAL-E-ST-E-200 | PP-AC panel | 2026-09-01 A → 2026-07-14 A (-49d) | 2026-09-21 A → 2026-07-14 A (-69d) |  |  |  |
| HAL-P-ST-E-190 | Main distribution board (MDB) | 2026-08-24 A → 2026-07-14 A (-41d) | 2026-08-24 A → 2026-07-14 A (-41d) |  |  |  |
| HAL-P-ST-E-270 | Distribution board for pump room | 2026-09-19 A → 2026-07-14 A (-67d) | 2026-09-21 A → 2026-07-14 A (-69d) |  | HAL-P-DL-E-270 → HAL-P-DL-E-270, HAL-E-ST-E-0230 |  |
| HAL-E-ST-E-0260 | Main program system & controller | 2026-09-06 A → 2026-07-16 A (-52d) | 2026-09-21 A → 2026-07-16 A (-67d) |  |  |  |

| ID | Task | Start | Finish | Duration | Predecessors | Other |
| --- | --- | --- | --- | --- | --- | --- |
| HAL-E-ST-E-0270 | PLC controller | 2026-09-07 A → 2026-07-16 A (-53d) | 2026-09-21 A → 2026-07-16 A (-67d) |  |  |  |
| HAL-P-ST-E-260 | Street Lighting poles | 2026-09-19 A → 2026-07-21 A (-60d) | 2026-09-21 A → 2026-07-21 A (-62d) |  | HAL-P-DL-E-260 → HAL-P-DL-E-260, HAL-P-ST-E-240, HAL-P-ST-E-230, HAL-P-ST-E-220, HAL-P-ST-E-210 |  |
| HAL-E-ST-E-0230 | CCTV System | 2026-09-06 A → 2026-09-15 A (+9d) | 2026-09-21 A → 2026-09-15 A (-6d) |  |  |  |
| HAL-E-ST-E-0240 | Access control system | 2026-09-19 A → 2026-09-15 A (-4d) | 2026-09-21 A → 2026-09-15 A (-6d) |  |  |  |
| 2 | **MECHANICAL** | 2026-03-01 → 2026-01-17 (-43d) | 2026-09-20 → 2026-08-09 (-42d) |  |  |  |
| 1 | **PO ISSUE** | 2026-03-01 → 2026-01-17 (-43d) | 2026-03-01 → 2026-06-28 (+119d) |  |  |  |
| HAL-P-PO-M-410 | GRP tank | 2026-03-01 A → 2026-01-17 A (-43d) | 2026-03-01 A → 2026-01-17 A (-43d) | 5d → 7d |  |  |
| HAL-P-PO-M-340 | Seamless black steel or ERW pipes | 2026-03-01 A → 2026-01-29 A (-31d) | 2026-03-01 A → 2026-01-29 A (-31d) |  |  | resources Purchaser [80 h] → Purchaser [40 h] |
| HAL-P-PO-M-350 | Fire hose cabinet | 2026-03-01 A → 2026-01-29 A (-31d) | 2026-03-01 A → 2026-01-29 A (-31d) |  |  | resources Purchaser [80 h] → Purchaser [40 h] |
| HAL-P-PO-M-380 | Fire pumps | 2026-03-01 A → 2026-01-29 A (-31d) | 2026-03-01 A → 2026-01-29 A (-31d) |  |  |  |
| HAL-P-PO-M-370 | Wall propeller type exhaust fans | 2026-03-01 A → 2026-02-11 A (-18d) | 2026-03-01 A → 2026-02-11 A (-18d) |  |  |  |
| HAL-P-PO-M-400 | Booster pump | 2026-03-01 A → 2026-02-12 A (-17d) | 2026-03-01 A → 2026-02-12 A (-17d) |  |  |  |
| HAL-P-PO-M-360 | Western water closet | 2026-03-01 A → 2026-06-28 A (+119d) | 2026-03-01 A → 2026-06-28 A (+119d) |  |  | resources Purchaser [16 h] → Purchaser [40 h] |
| 2 | **MANUFACTURING** | 2026-03-02 → 2026-01-17 (-44d) | 2026-09-19 → 2026-08-08 (-42d) |  |  |  |
| HAL-P-MF-M-410 | GRP tank | 2026-03-02 A → 2026-01-17 A (-44d) | 2026-08-25 A → 2026-04-19 A (-128d) | 100d → 102d |  | resources Loading workers [480 h] → Loading workers |
| HAL-P-MF-M-340 | Seamless black steel or ERW pipes | 2026-03-02 A → 2026-01-29 A (-32d) | 2026-06-29 A → 2026-05-13 A (-47d) | 120d → 141.12d |  | resources Loading workers [240 h] → Loading workers |
| HAL-P-MF-M-350 | Fire hose cabinet | 2026-03-02 A → 2026-01-29 A (-32d) | 2026-09-19 A → 2026-06-01 A (-110d) | 120d → 121.12d |  | resources Loading workers [32 h] → Loading workers |
| HAL-P-MF-M-380 | Fire pumps | 2026-03-02 A → 2026-01-29 A (-32d) | 2026-09-17 A → 2026-08-08 A (-40d) | 120d → 100d |  | resources Loading workers [480 h] → Loading workers |
| HAL-P-MF-M-370 | Wall propeller type exhaust fans | 2026-03-02 A → 2026-02-11 A (-19d) | 2026-08-09 A → 2026-06-27 A (-43d) | 100d → 80d |  | resources Loading workers [480 h] → Loading workers |
| HAL-P-MF-M-400 | Booster pump | 2026-03-02 A → 2026-02-12 A (-18d) | 2026-09-06 A → 2026-08-08 A (-29d) | 110d → 80d |  | resources Loading workers [480 h] → Loading workers |
| HAL-P-MF-M-360 | Western water closet | 2026-03-02 A → 2026-06-28 A (+118d) | 2026-09-19 A → 2026-07-25 A (-56d) | 150d → 30d |  | resources Loading workers [80 h] → Loading workers |
| 4 | **DELIVERY TO SITE** | 2026-07-01 → 2026-04-20 (-72d) | 2026-09-20 → 2026-08-09 (-42d) |  |  |  |
| HAL-P-DL-M-410 | GRP tank | 2026-08-29 A → 2026-04-20 A (-131d) | 2026-08-31 A → 2026-04-20 A (-133d) |  |  | resources Unloading workers [720 h]; Construction Cost [209853] → Unloading workers [224 h]; Construction Cost [165240] |
| HAL-P-DL-M-340 | Seamless black steel or ERW pipes | 2026-07-01 A → 2026-05-13 A (-49d) | 2026-08-11 A → 2026-05-13 A (-90d) |  |  | resources Unloading workers [112 h]; Construction Cost [237714] → Unloading workers [224 h]; Construction Cost [147528] |
| HAL-P-DL-M-350 | Fire hose cabinet | 2026-09-19 A → 2026-06-02 A (-109d) | 2026-09-20 A → 2026-06-02 A (-110d) |  |  | resources Unloading workers [112 h]; Construction Cost [49774.4] → Unloading workers [224 h]; Construction Cost [27216] |
| HAL-P-DL-M-370 | Wall propeller type exhaust fans | 2026-08-10 A → 2026-06-27 A (-44d) | 2026-09-20 A → 2026-06-27 A (-85d) |  |  | resources Unloading workers [720 h]; Construction Cost [153776] → Unloading workers [224 h]; Construction Cost [42525] |
| HAL-P-DL-M-360 | Western water closet | 2026-09-19 A → 2026-07-25 A (-56d) | 2026-09-20 A → 2026-07-25 A (-57d) |  | HAL-P-MF-M-360 → HAL-P-MF-M-360, HAL-P-ST-E-280, HAL-P-ST-E-270 | resources Unloading workers [1440 h]; Construction Cost [65414.6] → Unloading workers [336 h]; Construction Cost [39657.6] |
| HAL-P-DL-M-380 | Fire pumps | 2026-09-20 A → 2026-08-09 A (-42d) | 2026-09-20 A → 2026-08-09 A (-42d) |  |  | resources Unloading workers [1440 h]; Construction Cost [103369] → Unloading workers [336 h]; Construction Cost [145800] |
| HAL-P-DL-M-400 | Booster pump | 2026-09-07 A → 2026-08-09 A (-29d) | 2026-09-07 A → 2026-08-09 A (-29d) |  |  | resources Unloading workers [1440 h]; Construction Cost [12924.5] → Unloading workers [336 h]; Construction Cost [17010] |
| 5 | **STAGING TIME** | 2026-07-01 → 2026-04-20 (-72d) | 2026-09-20 → 2026-08-09 (-42d) |  |  |  |
| HAL-P-ST-M-410 | GRP tank | 2026-08-29 A → 2026-04-20 A (-131d) | 2026-08-31 A → 2026-04-20 A (-133d) |  |  |  |
| HAL-P-ST-M-340 | Seamless black steel or ERW pipes | 2026-07-01 A → 2026-05-13 A (-49d) | 2026-08-11 A → 2026-05-13 A (-90d) |  |  |  |
| HAL-P-ST-M-350 | Fire hose cabinet | 2026-09-19 A → 2026-06-02 A (-109d) | 2026-09-20 A → 2026-06-02 A (-110d) |  | HAL-P-DL-M-350, HAL-P-ST-M-340 → HAL-P-DL-M-350 |  |
| HAL-P-ST-M-370 | Wall propeller type exhaust fans | 2026-08-10 A → 2026-06-27 A (-44d) | 2026-09-20 A → 2026-06-27 A (-85d) |  | HAL-P-DL-M-370, HAL-P-ST-M-350 → HAL-P-DL-M-370 |  |
| HAL-P-ST-M-360 | Western water closet | 2026-09-19 A → 2026-07-25 A (-56d) | 2026-09-20 A → 2026-07-25 A (-57d) |  | HAL-P-DL-M-360 → HAL-P-DL-M-360, HAL-P-ST-M-380, HAL-P-ST-M-400 |  |
| HAL-P-ST-M-380 | Fire pumps | 2026-09-20 A → 2026-08-09 A (-42d) | 2026-09-20 A → 2026-08-09 A (-42d) |  | HAL-P-DL-M-380, HAL-P-ST-M-410 → HAL-P-DL-M-380 |  |
| HAL-P-ST-M-400 | Booster pump | 2026-09-07 A → 2026-08-09 A (-29d) | 2026-09-07 A → 2026-08-09 A (-29d) |  | HAL-P-DL-M-400 → HAL-P-DL-M-400, HAL-P-ST-M-370 |  |
| 1 | **SHORT LEAD MATERIALS** | 2026-01-14 → 2025-12-15 (-30d) | 2026-09-21 → 2026-10-15 (+24d) |  |  |  |
| 6 | **STRUCTURAL** | 2026-01-20 → 2025-12-24 (-27d) | 2026-04-29 → 2026-02-21 (-67d) |  |  |  |
| 1 | **PO ISSUE** | 2026-01-20 → 2025-12-24 (-27d) | 2026-03-25 → 2026-01-20 (-64d) |  |  |  |
| HAL-P-PO-C-60 | Concrete mix | 2026-01-20 A → 2025-12-24 A (-27d) | 2026-01-20 A → 2025-12-24 A (-27d) |  |  |  |
| HAL-P-PO-C-70 | Polyethylene sheet | 2026-03-01 A → 2026-01-03 A (-57d) | 2026-03-01 A → 2026-01-03 A (-57d) |  |  |  |
| HAL-P-PO-C-50 | Anti termite | 2026-03-25 A → 2026-01-06 A (-78d) | 2026-03-25 A → 2026-01-06 A (-78d) |  |  |  |
| HAL-P-PO-C-90 | Rebar | 2026-02-01 A → 2026-01-17 A (-15d) | 2026-02-01 A → 2026-01-17 A (-15d) |  |  |  |
| HAL-P-PO-C-80 | Bitumen paint | 2026-03-09 A → 2026-01-20 A (-48d) | 2026-03-09 A → 2026-01-20 A (-48d) |  |  |  |
| 4 | **MANUFACTURING** | 2026-01-21 → 2025-12-25 (-27d) | 2026-04-07 → 2026-02-18 (-48d) |  |  |  |
| HAL-P-MF-C-60 | Concrete mix | 2026-01-21 A → 2025-12-25 A (-27d) | 2026-02-01 A → 2026-02-18 A (+17d) | 17d → 2d |  | resources Loading workers [32 h] → Loading workers |
| HAL-P-MF-C-70 | Polyethylene sheet | 2026-03-02 A → 2026-01-04 A (-57d) | 2026-03-10 A → 2026-02-05 A (-33d) | 10d → 2d |  | resources Loading workers [32 h] → Loading workers |
| HAL-P-MF-C-50 | Anti termite | 2026-03-26 A → 2026-01-07 A (-78d) | 2026-04-07 A → 2026-02-18 A (-48d) | 12d → 2d |  | resources Loading workers [32 h] → Loading workers |
| HAL-P-MF-C-90 | Rebar | 2026-02-02 A → 2026-01-18 A (-15d) | 2026-02-15 A → 2026-02-18 A (+3d) | 7d → 2d |  | resources Loading workers [32 h] → Loading workers |
| HAL-P-MF-C-80 | Bitumen paint | 2026-03-10 A → 2026-01-21 A (-48d) | 2026-04-07 A → 2026-01-27 A (-70d) | 10d → 2d |  | resources Loading workers [32 h] → Loading workers |
| 2 | **DELIVERY** | 2026-03-12 → 2026-01-05 (-66d) | 2026-04-29 → 2026-02-21 (-67d) |  |  |  |
| HAL-P-DL-C-70 | Polyethylene sheet | 2026-03-12 A → 2026-01-05 A (-66d) | 2026-04-29 A → 2026-02-07 A (-81d) |  |  | resources Unloading workers [32 h]; Construction Cost [86906.6] → Unloading workers [32 h]; Construction Cost [44165.2] |
| HAL-P-DL-C-50 | Anti termite | 2026-03-12 A → 2026-01-11 A (-60d) | 2026-04-29 A → 2026-02-19 A (-69d) |  |  | resources Unloading workers [32 h]; Construction Cost [130310] → Unloading workers [32 h]; Construction Cost [61831.3] |
| HAL-P-DL-C-60 | Concrete mix -1 | 2026-03-12 A → 2026-01-11 A (-60d) | 2026-04-14 A → 2026-02-07 A (-66d) |  |  | resources Unloading workers [16 h]; Construction Cost [196863] → Unloading workers [32 h]; Construction Cost [198747] |
| HAL-P-DL-C-90 | Rebar-1 | 2026-03-31 A → 2026-01-18 A (-72d) | 2026-04-29 A → 2026-02-07 A (-81d) |  |  | resources Unloading workers [32 h]; Construction Cost [218896] → Unloading workers [32 h]; Construction Cost [248121] |
| HAL-P-DL-C-80 | Bitumen paint | 2026-03-31 A → 2026-01-28 A (-62d) | 2026-04-29 A → 2026-01-28 A (-91d) |  |  | resources Unloading workers [32 h]; Construction Cost [192961] → Unloading workers [32 h]; Construction Cost [40562.8] |
| HAL-P-DL-C-120 | Rebar-2 | 2026-04-16 A → 2026-02-07 A (-68d) | 2026-04-29 A → 2026-02-08 A (-80d) |  | HAL-P-DL-C-90, HAL-C-C-S-1257 → HAL-P-DL-C-90, HAL-P-DL-C-100 | resources Unloading workers [32 h]; Construction Cost [450000] → Unloading workers [32 h]; Construction Cost [400000] |
| HAL-P-DL-C-100 | Concrete mix -2 | 2026-04-16 A → 2026-02-10 A (-65d) | 2026-04-29 A → 2026-02-10 A (-78d) |  | HAL-P-DL-C-60 FS+14d, HAL-P-ST-C-90, HAL-C-C-S-1257 → HAL-P-DL-C-60, HAL-P-PO-E-190 | resources Unloading workers [32 h]; Construction Cost [740741] → Unloading workers [32 h]; Construction Cost [250000] |
| HAL-P-DL-C-130 | Rebar-3 | 2026-04-16 A → 2026-02-10 A (-65d) | 2026-04-29 A → 2026-02-21 A (-67d) |  |  | resources Unloading workers [32 h]; Construction Cost [450000] → Unloading workers [32 h]; Construction Cost [400000] |
| HAL-P-DL-C-110 | Concrete mix -3 | 2026-04-16 A → 2026-02-19 A (-56d) | 2026-04-29 A → 2026-02-21 A (-67d) |  | HAL-P-DL-C-100, HAL-P-PO-A-1760 → HAL-P-DL-C-100 | resources Unloading workers [32 h]; Construction Cost [740741] → Unloading workers [32 h]; Construction Cost [250000] |
| 3 | **STAGING TIME** | 2026-03-12 → 2026-01-05 (-66d) | 2026-04-29 → 2026-02-21 (-67d) |  |  |  |
| HAL-P-ST-C-70 | Polyethylene sheet | 2026-03-12 A → 2026-01-05 A (-66d) | 2026-04-29 A → 2026-02-07 A (-81d) |  |  |  |
| HAL-P-ST-C-50 | Anti termite | 2026-03-12 A → 2026-01-11 A (-60d) | 2026-04-29 A → 2026-02-19 A (-69d) |  |  |  |
| HAL-P-ST-C-60 | Concrete mix | 2026-03-12 A → 2026-01-11 A (-60d) | 2026-04-29 A → 2026-02-21 A (-67d) |  |  |  |
| HAL-P-ST-C-90 | Rebar | 2026-03-31 A → 2026-01-18 A (-72d) | 2026-04-29 A → 2026-02-21 A (-67d) |  |  |  |
| HAL-P-ST-C-80 | Bitumen paint | 2026-03-31 A → 2026-01-28 A (-62d) | 2026-04-29 A → 2026-01-28 A (-91d) |  |  |  |
| 1 | **ARCHITECTURAL** | 2026-01-14 → 2025-12-15 (-30d) | 2026-09-20 → 2026-10-01 (+11d) |  |  |  |
| 1 | **PO ISSUE** | 2026-01-14 → 2025-12-15 (-30d) | 2026-05-24 → 2026-09-22 (+121d) |  |  |  |
| HAL-P-PO-A-210 | Steel ladder | 2026-01-14 A → 2025-12-15 A (-30d) | 2026-01-18 A → 2025-12-15 A (-34d) |  |  | resources Purchaser [80 h] → Purchaser [40 h] |

| ID | Task | Start | Finish | Duration | Predecessors | Other |
| --- | --- | --- | --- | --- | --- | --- |
| HAL-P-PO-A-230 | Steel rails | 2026-05-24 A → 2025-12-15 A (-160d) | 2026-05-24 A → 2025-12-15 A (-160d) |  |  | resources Purchaser [16 h] → Purchaser [40 h] |
| HAL-P-PO-A-1720 | Aluminum Composite Panel | 2026-04-05 A → 2026-02-05 A (-59d) | 2026-04-05 A → 2026-02-05 A (-59d) |  |  | resources Purchaser [16 h] → Purchaser [40 h] |
| HAL-P-PO-A-200 | Concrete masonry unit (CMU) | 2026-04-05 A → 2026-05-18 A (+43d) | 2026-04-05 A → 2026-05-18 A (+43d) |  |  | resources Purchaser [80 h] → Purchaser [40 h] |
| HAL-P-PO-A-220 | Steel gratings | 2026-04-02 A → 2026-06-04 A (+63d) | 2026-04-02 A → 2026-06-04 A (+63d) | 5d → 4.12d |  | resources Purchaser [80 h] → Purchaser [40 h] |
| HAL-P-PO-A-280 | Ceramic tiles | 2026-04-07 A → 2026-06-22 A (+76d) | 2026-04-07 A → 2026-06-22 A (+76d) |  |  | resources Purchaser [80 h] → Purchaser [40 h] |
| HAL-P-PO-A-290 | Granite strip | 2026-05-12 A → 2026-06-22 A (+41d) | 2026-05-12 A → 2026-06-22 A (+41d) |  |  | resources Purchaser [16 h] → Purchaser [80 h] |
| HAL-P-PO-A-310 | Epoxy paint | 2026-05-24 A → 2026-06-22 A (+29d) | 2026-05-24 A → 2026-06-22 A (+29d) |  |  | resources Purchaser [16 h] → Purchaser [40 h] |
| HAL-P-PO-A-320 | Internl paint | 2026-04-05 A → 2026-06-22 A (+78d) | 2026-04-05 A → 2026-06-22 A (+78d) |  |  | resources Purchaser [16 h] → Purchaser [40 h] |
| HAL-P-PO-A-330 | Gypsum board | 2026-04-05 A → 2026-08-13 A (+130d) | 2026-04-05 A → 2026-08-13 A (+130d) |  |  | resources Purchaser [16 h] → Purchaser [40 h] |
| HAL-E-PO-A-1750 | Steel fence and gates | 2026-04-05 A → 2026-09-22 A (+170d) | 2026-04-05 A → 2026-09-22 A (+170d) |  |  | resources Purchaser [16 h] → Purchaser [40 h] |
| HAL-P-PO-A-1760 | Identification sign; ID01 & ID02 | 2026-04-05 A → 2026-09-22 A (+170d) | 2026-04-05 A → 2026-09-22 A (+170d) |  | HAL-E-MA-A-1760, HAL-E-MA-A-1760 FF, HAL-E-PO-A-1750 → HAL-E-MA-A-1760, HAL-E-MA-A-1760 FF, HAL-E-PO-A-1750, HAL-P-DL-C-130, HAL-P-DL-C-110 | resources Purchaser [16 h] → Purchaser [40 h] |
| 4 | **MANUFACTURING** | 2026-01-14 → 2025-12-15 (-30d) | 2026-09-19 → 2026-10-01 (+12d) |  |  |  |
| HAL-P-MF-A-210 | Steel ladder | 2026-01-14 A → 2025-12-15 A (-30d) | 2026-07-22 A → 2026-05-21 A (-62d) | 80d → 81.12d |  | resources Loading workers [240 h] → Loading workers |
| HAL-P-MF-A-230 | Steel rails | 2026-04-06 A → 2025-12-15 A (-112d) | 2026-07-02 A → 2026-05-21 A (-42d) |  |  | resources Loading workers [40 h] → Loading workers |
| HAL-P-MF-A-1720 | Aluminum Composite Panel | 2026-04-06 A → 2026-02-05 A (-60d) | 2026-09-19 A → 2026-07-11 A (-70d) | 80d → 20d |  | resources Purchaser [40 h] → Purchaser |
| HAL-P-MF-A-200 | Concrete masonry unit (CMU) | 2026-04-06 A → 2026-05-18 A (+42d) | 2026-06-08 A → 2026-05-20 A (-19d) | 50d → 71.12d |  | resources Loading workers [240 h] → Loading workers |
| HAL-P-MF-A-220 | Steel gratings | 2026-04-06 A → 2026-06-04 A (+59d) | 2026-07-02 A → 2026-09-14 A (+74d) | 80d → 20d |  | resources Loading workers [40 h] → Loading workers |
| HAL-P-MF-A-280 | Ceramic tiles | 2026-04-06 A → 2026-06-22 A (+77d) | 2026-06-09 A → 2026-06-24 A (+15d) | 80d → 20d |  | resources Loading workers [40 h] → Loading workers |
| HAL-P-MF-A-290 | Granite strip | 2026-04-06 A → 2026-06-22 A (+77d) | 2026-09-19 A → 2026-06-24 A (-87d) | 80d → 20d |  | resources Loading workers [40 h] → Loading workers |
| HAL-P-MF-A-310 | Epoxy paint | 2026-04-06 A → 2026-06-27 A (+82d) | 2026-07-20 A → 2026-07-18 A (-2d) | 80d → 20d |  | resources Loading workers [40 h] → Loading workers |
| HAL-P-MF-A-320 | Internl paint | 2026-04-06 A → 2026-06-27 A (+82d) | 2026-09-19 A → 2026-07-18 A (-63d) | 80d → 20d |  | resources Loading workers [40 h] → Loading workers |
| HAL-P-MF-A-330 | Gypsum board | 2026-04-06 A → 2026-08-13 A (+129d) | 2026-09-19 A → 2026-08-16 A (-34d) | 80d → 10d |  | resources Loading workers [40 h] → Loading workers |
| HAL-E-MF-A-1750 | Steel fence and gates | 2026-04-06 A → 2026-09-22 A (+169d) | 2026-09-19 A → 2026-10-01 A (+12d) | 80d → 5d |  | resources Purchaser [40 h] → Purchaser |
| HAL-P-MF-A-1760 | Identification sign; ID01 & ID02 | 2026-04-06 A → 2026-09-22 A (+169d) | 2026-09-19 A → 2026-10-01 A (+12d) | 80d → 5d |  | resources Purchaser [40 h] → Purchaser |
| 2 | **DELIVERY** | 2026-06-10 → 2026-05-21 (-20d) | 2026-09-20 → 2026-10-01 (+11d) |  |  |  |
| HAL-P-DL-A-200 | Concrete masonry unit (CMU) | 2026-06-10 A → 2026-05-21 A (-20d) | 2026-06-14 A → 2026-05-21 A (-24d) |  |  | resources Unloading workers [112 h]; Construction Cost [418802] → Unloading workers [896 h]; Construction Cost [141523] |
| HAL-P-DL-A-210 | Steel ladder | 2026-07-28 A → 2026-05-21 A (-68d) | 2026-07-28 A → 2026-05-21 A (-68d) |  |  | resources Unloading workers [112 h]; Construction Cost [32307.7] → Unloading workers [112 h]; Construction Cost [20898] |
| HAL-P-DL-A-230 | Steel rails | 2026-07-28 A → 2026-05-21 A (-68d) | 2026-07-28 A → 2026-05-21 A (-68d) |  |  | resources Unloading workers [112 h]; Construction Cost [5036.93] → Unloading workers [224 h]; Construction Cost [16475.4] |
| HAL-P-DL-A-280 | Ceramic tiles | 2026-06-11 A → 2026-06-24 A (+13d) | 2026-06-15 A → 2026-06-24 A (+9d) |  |  | resources Unloading workers [112 h]; Construction Cost [241008] → Unloading workers [224 h]; Construction Cost [161978] |
| HAL-P-DL-A-290 | Granite strip | 2026-09-20 A → 2026-06-24 A (-88d) | 2026-09-20 A → 2026-06-24 A (-88d) |  |  | resources Unloading workers [112 h]; Construction Cost [2203.66] → Unloading workers [224 h]; Construction Cost [3195.45] |
| HAL-P-DL-A-1720 | Aluminum Composite Panel | 2026-09-07 A → 2026-07-05 A (-64d) | 2026-09-20 A → 2026-07-11 A (-71d) |  |  | resources Purchaser [112 h]; Construction Cost [577545] → Purchaser [224 h]; Construction Cost [386006] |
| HAL-P-DL-A-310 | Epoxy paint | 2026-07-23 A → 2026-07-18 A (-5d) | 2026-07-25 A → 2026-07-18 A (-7d) |  |  | resources Unloading workers [112 h]; Construction Cost [378990] → Unloading workers [224 h]; Construction Cost [225261] |
| HAL-P-DL-A-320 | Internl paint | 2026-09-02 A → 2026-07-18 A (-46d) | 2026-09-20 A → 2026-07-18 A (-64d) |  |  | resources Unloading workers [112 h]; Construction Cost [145027] → Unloading workers [224 h]; Construction Cost [58556.9] |
| HAL-P-DL-A-330 | Gypsum board | 2026-09-14 A → 2026-08-16 A (-29d) | 2026-09-20 A → 2026-08-16 A (-35d) |  |  | resources Unloading workers [112 h]; Construction Cost [153646] → Unloading workers [224 h]; Construction Cost [98111.2] |
| HAL-P-DL-A-220 | Steel gratings | 2026-07-05 A → 2026-09-15 A (+72d) | 2026-07-05 A → 2026-09-15 A (+72d) |  |  | resources Unloading workers [112 h]; Construction Cost [21196] → Unloading workers [224 h]; Construction Cost [13705.2] |
| HAL-P-DL-A-1750 | Steel fence and gates | 2026-09-20 A → 2026-10-01 A (+11d) | 2026-09-20 A → 2026-10-01 A (+11d) |  |  | resources Purchaser [112 h]; Construction Cost [23657.4] → Purchaser [224 h]; Construction Cost [4945.05] |
| HAL-P-DL-A-1760 | Identification sign; ID01 & ID02 | 2026-09-20 A → 2026-10-01 A (+11d) | 2026-09-20 A → 2026-10-01 A (+11d) | 7d → 1d |  | resources Purchaser [112 h]; Construction Cost [31622.7] → Purchaser [224 h]; Construction Cost [20412] |
| 3 | **STAGING TIME** | 2026-06-15 → 2026-05-21 (-25d) | 2026-09-20 → 2026-10-01 (+11d) |  |  |  |
| HAL-P-ST-A-200 | Concrete masonry unit (CMU) | 2026-06-15 A → 2026-05-21 A (-25d) | 2026-06-15 A → 2026-05-21 A (-25d) |  |  |  |
| HAL-P-ST-A-210 | Steel ladder | 2026-07-28 A → 2026-05-21 A (-68d) | 2026-07-28 A → 2026-05-21 A (-68d) |  | HAL-P-DL-A-210, HAL-P-ST-A-200 → HAL-P-DL-A-210 |  |
| HAL-P-ST-A-230 | Steel rails | 2026-07-28 A → 2026-05-21 A (-68d) | 2026-07-28 A → 2026-05-21 A (-68d) |  |  |  |
| HAL-P-ST-A-280 | Ceramic tiles | 2026-06-15 A → 2026-06-24 A (+9d) | 2026-06-15 A → 2026-06-24 A (+9d) |  |  |  |
| HAL-P-ST-A-290 | Granite strip | 2026-09-20 A → 2026-06-24 A (-88d) | 2026-09-20 A → 2026-06-24 A (-88d) |  |  |  |
| HAL-P-ST-A-1720 | Aluminum Composite Panel | 2026-09-07 A → 2026-07-05 A (-64d) | 2026-09-20 A → 2026-07-11 A (-71d) |  |  |  |
| HAL-P-ST-A-310 | Epoxy paint | 2026-07-23 A → 2026-07-18 A (-5d) | 2026-07-25 A → 2026-07-18 A (-7d) |  | HAL-P-DL-A-310 → HAL-P-DL-A-310, HAL-P-ST-A-210 |  |
| HAL-P-ST-A-320 | Internl paint | 2026-09-02 A → 2026-07-18 A (-46d) | 2026-09-20 A → 2026-07-18 A (-64d) |  |  |  |
| HAL-P-ST-A-330 | Gypsum board | 2026-09-14 A → 2026-08-16 A (-29d) | 2026-09-20 A → 2026-08-16 A (-35d) |  | HAL-P-DL-A-330, HAL-P-ST-A-230 → HAL-P-DL-A-330, HAL-P-ST-A-290, HAL-P-ST-A-230, HAL-P-ST-A-220 |  |
| HAL-P-ST-A-220 | Steel gratings | 2026-07-05 A → 2026-09-15 A (+72d) | 2026-07-05 A → 2026-09-15 A (+72d) | 7d → 1d |  |  |
| HAL-E-ST-A-1750 | Steel fence and gates | 2026-09-20 A → 2026-10-01 A (+11d) | 2026-09-20 A → 2026-10-01 A (+11d) | 7d → 1d | HAL-P-DL-A-1750, HAL-P-ST-A-280 → HAL-P-DL-A-1750 |  |
| HAL-P-ST-A-1760 | Identification sign; ID01 & ID02 | 2026-09-20 A → 2026-10-01 A (+11d) | 2026-09-20 A → 2026-10-01 A (+11d) | 7d → 1d | HAL-P-DL-A-1760, HAL-P-ST-A-290, HAL-P-ST-A-310 → HAL-P-DL-A-1760, HAL-P-ST-A-320, HAL-P-ST-A-310, HAL-P-ST-A-280 |  |
| 2 | **MECHANICAL** | 2026-04-05 → 2026-01-29 (-66d) | 2026-09-20 → 2026-09-15 (-5d) |  |  |  |
| 1 | **PO ISSUE** | 2026-04-05 → 2026-01-29 (-66d) | 2026-04-26 → 2026-06-28 (+63d) |  |  |  |
| HAL-P-PO-M-390 | Fire fighting valves | 2026-04-26 A → 2026-01-29 A (-87d) | 2026-04-26 A → 2026-01-29 A (-87d) |  |  | resources Purchaser [80 h] → Purchaser [640 h] |
| HAL-P-PO-M-440 | Automatic air release valve | 2026-04-26 A → 2026-01-29 A (-87d) | 2026-04-26 A → 2026-01-29 A (-87d) |  |  | resources Purchaser [16 h] → Purchaser [40 h] |
| HAL-P-PO-M-450 | OS & Y gate valve | 2026-04-26 A → 2026-01-29 A (-87d) | 2026-04-26 A → 2026-01-29 A (-87d) |  |  | resources Purchaser [16 h] → Purchaser [4.44 h] |
| HAL-P-PO-M-460 | Fire alarm check valve | 2026-04-26 A → 2026-01-29 A (-87d) | 2026-04-26 A → 2026-01-29 A (-87d) |  |  |  |
| HAL-P-PO-M-590 | Inline exhaust fans | 2026-04-26 A → 2026-02-11 A (-74d) | 2026-04-26 A → 2026-02-11 A (-74d) |  |  | resources Purchaser [80 h] → Purchaser [640 h] |
| HAL-P-PO-M-430 | U/G HDPE pipes | 2026-04-26 A → 2026-02-24 A (-61d) | 2026-04-26 A → 2026-02-24 A (-61d) |  |  | resources Purchaser [16 h] → Purchaser [40 h] |
| HAL-P-PO-M-510 | UPVC pipes | 2026-02-07 A → 2026-02-24 A (+17d) | 2026-02-07 A → 2026-02-24 A (+17d) | 2d → 4.12d | HAL-E-MS-M-0110 → HAL-E-MA-M-0110, HAL-P-PO-M-500 | resources Purchaser [16 h]; Construction Cost → Purchaser [40 h] |
| HAL-P-PO-M-540 | Gully trap | 2026-04-26 A → 2026-02-24 A (-61d) | 2026-04-26 A → 2026-02-24 A (-61d) |  | HAL-E-MA-M-0140, HAL-P-PO-M-530, HAL-P-PO-M-570 → HAL-E-MA-M-0140, HAL-P-PO-M-530 |  |
| HAL-P-PO-M-660 | Warning tapes | 2026-04-26 A → 2026-03-29 A (-28d) | 2026-04-26 A → 2026-03-29 A (-28d) |  |  | resources Purchaser [16 h] → Purchaser [40 h] |
| HAL-P-PO-M-530 | Floor drain | 2026-04-26 A → 2026-04-06 A (-20d) | 2026-04-26 A → 2026-04-06 A (-20d) |  |  |  |
| HAL-P-PO-M-420 | Water supply valves | 2026-04-26 A → 2026-05-02 A (+6d) | 2026-04-26 A → 2026-05-02 A (+6d) | 5d → 4.25d |  |  |
| HAL-P-PO-M-480 | PPR pipes | 2026-04-26 A → 2026-05-02 A (+6d) | 2026-04-26 A → 2026-05-02 A (+6d) |  |  | resources Purchaser [80 h] → Purchaser [40 h] |
| HAL-P-PO-M-600 | HVAC duct | 2026-04-05 A → 2026-06-13 A (+69d) | 2026-04-05 A → 2026-06-13 A (+69d) |  |  | resources Purchaser [80 h] → Purchaser [40 h] |
| HAL-P-PO-M-610 | Flexible duct | 2026-04-26 A → 2026-06-13 A (+48d) | 2026-04-26 A → 2026-06-13 A (+48d) | 5d → 4.12d |  | resources Purchaser [80 h] → Purchaser [40 h] |
| HAL-P-PO-M-620 | Exhaust diffuser | 2026-04-26 A → 2026-06-13 A (+48d) | 2026-04-26 A → 2026-06-13 A (+48d) |  |  | resources Purchaser [16 h] → Purchaser [80 h] |
| HAL-P-PO-M-3410 | Water tap | 2026-04-26 A → 2026-06-28 A (+63d) | 2026-04-26 A → 2026-06-28 A (+63d) |  |  |  |
| HAL-P-PO-M-490 | Ball valve | 2026-04-26 A → 2026-06-28 A (+63d) | 2026-04-26 A → 2026-06-28 A (+63d) |  |  | resources Purchaser [16 h] → Purchaser [40 h] |
| HAL-P-PO-M-500 | Capped connection | 2026-04-26 A → 2026-06-28 A (+63d) | 2026-04-26 A → 2026-06-28 A (+63d) |  |  | resources Purchaser [16 h] → Purchaser [40 h] |

| ID | Task | Start | Finish | Duration | Predecessors | Other |
| --- | --- | --- | --- | --- | --- | --- |
| HAL-P-PO-M-520 | Roof vent caps | 2026-04-26 A → 2026-06-28 A (+63d) | 2026-04-26 A → 2026-06-28 A (+63d) |  | HAL-E-MA-M-0120, UPVC pipes → HAL-E-MA-M-0120, HAL-P-PO-M-510 | resources Purchaser [16 h] → Purchaser [40 h] |
| HAL-P-PO-M-550 | Electric water heater | 2026-04-26 A → 2026-06-28 A (+63d) | 2026-04-26 A → 2026-06-28 A (+63d) |  |  |  |
| HAL-P-PO-M-560 | Bib tap | 2026-04-26 A → 2026-06-28 A (+63d) | 2026-04-26 A → 2026-06-28 A (+63d) |  |  |  |
| HAL-P-PO-M-570 | Toilet Fittings | 2026-04-26 A → 2026-06-28 A (+63d) | 2026-04-26 A → 2026-06-28 A (+63d) |  |  | resources none → Purchaser [40 h] |
| HAL-P-PO-M-580 | Lavatory / wash basin | 2026-04-26 A → 2026-06-28 A (+63d) | 2026-04-26 A → 2026-06-28 A (+63d) |  |  |  |
| 4 | **MANUFACTURING** | 2026-04-06 → 2026-01-29 (-67d) | 2026-09-19 → 2026-09-14 (-5d) |  |  |  |
| HAL-P-MF-M-390 | Fire fighting valves | 2026-04-27 A → 2026-01-29 A (-88d) | 2026-08-09 A → 2026-06-13 A (-57d) |  |  | resources Loading workers [2880 h] → Loading workers |
| HAL-P-MF-M-440 | Automatic air release valve | 2026-04-27 A → 2026-01-29 A (-88d) | 2026-09-19 A → 2026-06-13 A (-98d) | 80d → 20d |  | resources Loading workers [40 h] → Loading workers |
| HAL-P-MF-M-450 | OS & Y gate valve | 2026-04-27 A → 2026-01-29 A (-88d) | 2026-09-19 A → 2026-06-13 A (-98d) | 80d → 20d |  | resources Loading workers [80 h] → Loading workers |
| HAL-P-MF-M-460 | Fire alarm check valve | 2026-04-27 A → 2026-01-29 A (-88d) | 2026-09-19 A → 2026-06-13 A (-98d) | 80d → 20d |  | resources Loading workers [80 h] → Loading workers |
| HAL-P-MF-M-590 | Inline exhaust fans | 2026-04-27 A → 2026-02-11 A (-75d) | 2026-09-19 A → 2026-06-27 A (-84d) | 120d → 20d |  | resources Loading workers [2880 h] → Loading workers |
| HAL-P-MF-M-430 | U/G HDPE pipes | 2026-04-27 A → 2026-02-24 A (-62d) | 2026-08-02 A → 2026-02-28 A (-155d) |  |  | resources Loading workers [40 h] → Loading workers |
| HAL-P-MF-M-510 | UPVC pipes | 2026-02-08 A → 2026-02-24 A (+16d) | 2026-02-08 A → 2026-02-28 A (+20d) | 2d → 81.12d | HAL-E-MA-M-0110 → HAL-P-PO-M-510 | resources Purchaser [32 h]; Construction Cost → Loading workers |
| HAL-P-MF-M-540 | Gully trap | 2026-04-27 A → 2026-02-24 A (-62d) | 2026-09-19 A → 2026-02-28 A (-203d) |  | HAL-P-PO-M-540, HAL-P-MF-M-570 → HAL-P-PO-M-540 | resources Loading workers [80 h] → Loading workers |
| HAL-P-MF-M-660 | Warning tapes | 2026-04-27 A → 2026-03-29 A (-29d) | 2026-09-19 A → 2026-07-23 A (-58d) | 80d → 20d |  | resources Loading workers [40 h] → Loading workers |
| HAL-P-MF-M-530 | Floor drain | 2026-04-27 A → 2026-04-06 A (-21d) | 2026-09-19 A → 2026-06-06 A (-105d) | 80d → 20d |  | resources Loading workers [80 h] → Loading workers |
| HAL-P-MF-M-420 | Water supply valves | 2026-04-27 A → 2026-05-02 A (+5d) | 2026-08-02 A → 2026-06-13 A (-50d) | 80d → 81.12d |  | resources Loading workers [80 h] → Loading workers |
| HAL-P-MF-M-480 | PPR pipes | 2026-04-27 A → 2026-05-02 A (+5d) | 2026-08-03 A → 2026-05-07 A (-88d) | 80d → 81.12d |  | resources Loading workers [240 h] → Loading workers |
| HAL-P-MF-M-600 | HVAC duct | 2026-04-06 A → 2026-06-13 A (+68d) | 2026-06-01 A → 2026-06-14 A (+13d) | 80d → 81.12d |  | resources Loading workers [240 h] → Loading workers |
| HAL-P-MF-M-610 | Flexible duct | 2026-04-27 A → 2026-06-13 A (+47d) | 2026-09-19 A → 2026-06-14 A (-97d) | 80d → 81.12d |  | resources Loading workers [40 h] → Loading workers |
| HAL-P-MF-M-620 | Exhaust diffuser | 2026-04-27 A → 2026-06-13 A (+47d) | 2026-09-19 A → 2026-06-14 A (-97d) | 80d → 20d |  | resources Loading workers [40 h] → Loading workers |
| HAL-P-MF-M-490 | Ball valve | 2026-04-27 A → 2026-06-28 A (+62d) | 2026-09-19 A → 2026-07-25 A (-56d) | 80d → 20d |  | resources Loading workers [40 h] → Loading workers |
| HAL-P-MF-M-520 | Roof vent caps | 2026-04-27 A → 2026-06-28 A (+62d) | 2026-09-19 A → 2026-07-25 A (-56d) | 80d → 20d |  | resources Loading workers [80 h] → Loading workers |
| HAL-P-MF-M-550 | Electric water heater | 2026-04-27 A → 2026-06-28 A (+62d) | 2026-09-13 A → 2026-07-25 A (-50d) | 120d → 20d |  | resources Loading workers [80 h] → Loading workers |
| HAL-P-MF-M-570 | Toilet Fittings | 2026-04-27 A → 2026-06-28 A (+62d) | 2026-09-19 A → 2026-07-25 A (-56d) | 5d → 20d |  |  |
| HAL-P-MF-M-580 | Lavatory / wash basin | 2026-04-27 A → 2026-06-28 A (+62d) | 2026-09-19 A → 2026-07-25 A (-56d) | 80d → 20d |  | resources Loading workers [240 h] → Loading workers |
| HAL-P-MF-M-3410 | Water tap | 2026-04-27 A → 2026-08-02 A (+97d) | 2026-09-19 A → 2026-09-01 A (-18d) | 80d → 10d |  | resources Purchaser [80 h] → Purchaser |
| HAL-P-MF-M-500 | Capped connection | 2026-04-27 A → 2026-08-08 A (+103d) | 2026-09-19 A → 2026-09-01 A (-18d) | 80d → 10d |  | resources Loading workers [40 h] → Loading workers |
| HAL-P-MF-M-560 | Bib tap | 2026-04-27 A → 2026-08-19 A (+114d) | 2026-09-19 A → 2026-09-14 A (-5d) | 80d → 10d |  | resources Loading workers [80 h] → Loading workers |
| 2 | **DELIVERY** | 2026-05-10 → 2026-03-01 (-70d) | 2026-09-20 → 2026-09-15 (-5d) |  |  |  |
| HAL-P-DL-M-430 | U/G HDPE pipes | 2026-08-01 A → 2026-03-01 A (-153d) | 2026-09-20 A → 2026-03-01 A (-203d) |  |  | resources Unloading workers [112 h]; Construction Cost [49971.5] → Unloading workers [224 h]; Construction Cost [67928.8] |
| HAL-P-DL-M-510 | UPVC pipes | 2026-02-07 A → 2026-03-01 A (+22d) | 2026-04-12 A → 2026-03-01 A (-42d) | 5d → 7d | HAL-P-PO-M-510 → HAL-P-MF-M-510 | resources Construction Cost [19004] → Unloading workers [224 h]; Construction Cost [62064.9] |
| HAL-P-DL-M-540 | Gully trap | 2026-09-06 A → 2026-03-01 A (-189d) | 2026-09-20 A → 2026-03-01 A (-203d) |  | HAL-P-MF-M-540 → HAL-P-MF-M-540, HAL-P-ST-A-1760, HAL-P-ST-A-330, HAL-E-ST-A-1750 | resources Unloading workers [112 h]; Construction Cost [15982.6] → Unloading workers [224 h]; Construction Cost [10206] |
| HAL-P-DL-M-480 | PPR pipes | 2026-07-05 A → 2026-05-09 A (-57d) | 2026-09-15 A → 2026-05-09 A (-129d) |  |  | resources Unloading workers [112 h]; Construction Cost [76567.9] → Unloading workers [896 h]; Construction Cost [47658.4] |
| HAL-P-DL-M-390 | Fire fighting valves | 2026-08-10 A → 2026-05-13 A (-89d) | 2026-08-10 A → 2026-06-13 A (-58d) |  | HAL-P-MF-M-390 → HAL-P-MF-M-390, HAL-P-ST-M-350 | resources Unloading workers [720 h]; Construction Cost [8885.58] → Unloading workers [224 h]; Construction Cost [27932.8] |
| HAL-P-DL-M-420 | Water supply valves | 2026-07-05 A → 2026-05-13 A (-53d) | 2026-09-15 A → 2026-06-13 A (-94d) |  | HAL-P-MF-M-420 → HAL-P-MF-M-420, HAL-P-ST-A-1720 | resources Unloading workers [112 h]; Construction Cost [3114.56] → Unloading workers [224 h]; Construction Cost [26730] |
| HAL-P-DL-M-440 | Automatic air release valve | 2026-09-20 A → 2026-05-13 A (-130d) | 2026-09-20 A → 2026-06-13 A (-99d) |  |  | resources Unloading workers [112 h]; Construction Cost [1769.5] → Unloading workers [224 h]; Construction Cost [1032.75] |
| HAL-P-DL-M-450 | OS & Y gate valve | 2026-07-15 A → 2026-05-13 A (-63d) | 2026-09-20 A → 2026-06-13 A (-99d) |  |  | resources Unloading workers [112 h]; Construction Cost [11631.5] → Unloading workers [224 h]; Construction Cost [11105.1] |
| HAL-P-DL-M-460 | Fire alarm check valve | 2026-09-20 A → 2026-05-13 A (-130d) | 2026-09-20 A → 2026-06-13 A (-99d) |  |  | resources Unloading workers [112 h]; Construction Cost [26656.7] → Unloading workers [224 h]; Construction Cost [15795] |
| HAL-P-DL-M-530 | Floor drain | 2026-09-16 A → 2026-06-06 A (-102d) | 2026-09-20 A → 2026-06-06 A (-106d) |  |  | resources Unloading workers [112 h]; Construction Cost [74093.3] → Unloading workers [224 h]; Construction Cost [23328] |
| HAL-P-DL-M-600 | HVAC duct | 2026-06-04 A → 2026-06-14 A (+10d) |  |  |  | resources Unloading workers [112 h]; Construction Cost [490860] → Unloading workers [224 h]; Construction Cost [345424] |
| HAL-P-DL-M-610 | Flexible duct | 2026-09-16 A → 2026-06-14 A (-94d) | 2026-09-20 A → 2026-06-14 A (-98d) |  |  | resources Unloading workers [112 h]; Construction Cost [69629.7] → Unloading workers [224 h]; Construction Cost [41193.4] |
| HAL-P-DL-M-620 | Exhaust diffuser | 2026-09-20 A → 2026-06-14 A (-98d) | 2026-09-20 A → 2026-06-14 A (-98d) |  |  | resources Unloading workers [112 h]; Construction Cost [7040] → Unloading workers [224 h]; Construction Cost [21870] |
| HAL-P-DL-M-590 | Inline exhaust fans | 2026-09-05 A → 2026-06-27 A (-70d) | 2026-09-20 A → 2026-06-27 A (-85d) |  |  | resources Unloading workers [1440 h]; Construction Cost [27474.9] → Unloading workers [336 h]; Construction Cost [22781.2] |
| HAL-P-DL-M-580 | Lavatory / wash basin | 2026-09-16 A → 2026-06-28 A (-80d) | 2026-09-20 A → 2026-07-25 A (-57d) | 7d → 1d |  | resources Unloading workers [720 h]; Construction Cost [70323.4] → Unloading workers [224 h]; Construction Cost [44712] |
| HAL-P-DL-M-490 | Ball valve | 2026-07-18 A → 2026-07-25 A (+7d) | 2026-07-18 A → 2026-07-25 A (+7d) |  |  | resources Unloading workers [112 h]; Construction Cost [14232.2] → Unloading workers [224 h]; Construction Cost [7848.9] |
| HAL-P-DL-M-520 | Roof vent caps | 2026-09-20 A → 2026-07-25 A (-57d) | 2026-09-20 A → 2026-07-25 A (-57d) |  |  | resources Unloading workers [112 h]; Construction Cost [3044.27] → Unloading workers [224 h]; Construction Cost [1822.5] |
| HAL-P-DL-M-550 | Electric water heater | 2026-09-16 A → 2026-07-25 A (-53d) | 2026-09-16 A → 2026-07-25 A (-53d) |  |  | resources Unloading workers [1440 h]; Construction Cost [5974.5] → Unloading workers [336 h]; Construction Cost [3888] |
| HAL-P-DL-M-570 | Toilet Fittings | 2026-09-15 A → 2026-07-25 A (-52d) | 2026-09-20 A → 2026-07-25 A (-57d) |  |  | resources Construction Cost [75460.9] → Construction Cost [47652.3]; Unloading workers [80 h] |
| HAL-P-DL-M-660 | Warning tapes | 2026-07-05 A → 2026-07-25 A (+20d) | 2026-07-05 A → 2026-07-25 A (+20d) |  |  | resources Unloading workers [112 h]; Construction Cost [14077] → Unloading workers [112 h]; Construction Cost [15006.6] |
| HAL-P-DL-M-3410 | Water tap | 2026-09-20 A → 2026-09-02 A (-18d) | 2026-09-20 A → 2026-09-02 A (-18d) |  |  | resources Purchaser [720 h]; Construction Cost [9437.47] → Purchaser [224 h]; Construction Cost [5832] |
| HAL-P-DL-M-500 | Capped connection | 2026-07-05 A → 2026-09-02 A (+59d) | 2026-09-14 A → 2026-09-02 A (-12d) |  |  | resources Unloading workers [112 h]; Construction Cost [913.27] → Unloading workers [224 h]; Construction Cost [631.8] |
| HAL-P-DL-M-560 | Bib tap | 2026-09-20 A → 2026-09-15 A (-5d) | 2026-09-20 A → 2026-09-15 A (-5d) |  |  | resources Unloading workers [112 h]; Construction Cost [6240.96] → Unloading workers [224 h]; Construction Cost [4860] |
| 3 | **STAGING TIME** | 2026-05-10 → 2026-03-01 (-70d) | 2026-09-20 → 2026-09-15 (-5d) |  |  |  |
| HAL-P-ST-M-430 | U/G HDPE pipes | 2026-08-01 A → 2026-03-01 A (-153d) | 2026-09-20 A → 2026-03-01 A (-203d) |  | HAL-P-DL-M-430, HAL-P-ST-M-610 → HAL-P-DL-M-430 |  |
| HAL-P-ST-M-510 | UPVC pipes | 2026-02-08 A → 2026-03-01 A (+21d) | 2026-02-26 A → 2026-03-01 A (+3d) | 4.5d → 7d | HAL-P-MF-M-510 → HAL-P-DL-M-510, HAL-P-ST-M-490, HAL-P-ST-M-620 | resources Construction Cost [20218.3] → none |
| HAL-P-ST-M-540 | Gully trap | 2026-09-06 A → 2026-03-01 A (-189d) | 2026-09-20 A → 2026-03-01 A (-203d) |  | HAL-P-DL-M-540 → HAL-P-DL-M-540, HAL-P-ST-M-520, HAL-P-ST-M-570 |  |
| HAL-P-ST-M-480 | PPR pipes | 2026-07-05 A → 2026-05-09 A (-57d) | 2026-09-15 A → 2026-05-09 A (-129d) |  |  |  |
| HAL-P-ST-M-390 | Fire fighting valves | 2026-08-10 A → 2026-05-13 A (-89d) | 2026-08-10 A → 2026-06-13 A (-58d) |  | HAL-P-DL-M-390, HAL-P-ST-M-580, HAL-P-ST-M-3410, HAL-P-ST-M-560, HAL-P-ST-M-420 → HAL-P-DL-M-390 |  |
| HAL-P-ST-M-420 | Water supply valves | 2026-07-05 A → 2026-05-13 A (-53d) | 2026-09-15 A → 2026-06-13 A (-94d) |  | HAL-P-DL-M-420, HAL-P-ST-M-460, HAL-P-ST-M-530, HAL-P-ST-M-450 → HAL-P-DL-M-420, HAL-P-ST-M-540, HAL-P-ST-M-460, HAL-P-ST-M-530, HAL-P-ST-M-450 |  |
| HAL-P-ST-M-530 | Floor drain | 2026-09-16 A → 2026-06-06 A (-102d) | 2026-09-20 A → 2026-06-06 A (-106d) |  |  |  |
| HAL-P-ST-M-440 | Automatic air release valve | 2026-09-20 A → 2026-06-13 A (-99d) | 2026-09-20 A → 2026-06-13 A (-99d) |  |  |  |
| HAL-P-ST-M-450 | OS & Y gate valve | 2026-07-15 A → 2026-06-13 A (-32d) | 2026-09-20 A → 2026-06-13 A (-99d) |  |  |  |
| HAL-P-ST-M-460 | Fire alarm check valve | 2026-09-20 A → 2026-06-13 A (-99d) | 2026-09-20 A → 2026-06-13 A (-99d) |  | HAL-P-DL-M-460 → HAL-P-DL-M-460, HAL-P-ST-M-440 |  |
| HAL-P-ST-M-600 | HVAC duct | 2026-06-04 A → 2026-06-14 A (+10d) |  |  |  |  |
| HAL-P-ST-M-610 | Flexible duct | 2026-09-16 A → 2026-06-14 A (-94d) | 2026-09-20 A → 2026-06-14 A (-98d) |  |  |  |
| HAL-P-ST-M-620 | Exhaust diffuser | 2026-09-20 A → 2026-06-14 A (-98d) | 2026-09-20 A → 2026-06-14 A (-98d) |  | HAL-P-DL-M-620, HAL-P-ST-M-480 → HAL-P-DL-M-620 |  |
| HAL-P-ST-M-590 | Inline exhaust fans | 2026-09-05 A → 2026-06-27 A (-70d) | 2026-09-20 A → 2026-06-27 A (-85d) |  |  |  |
| HAL-P-ST-M-490 | Ball valve | 2026-07-18 A → 2026-07-25 A (+7d) | 2026-07-18 A → 2026-07-25 A (+7d) |  | HAL-P-DL-M-490, HAL-P-ST-M-600 → HAL-P-DL-M-490, HAL-P-ST-M-610, HAL-P-ST-M-600, HAL-P-ST-M-480 |  |
| HAL-P-ST-M-520 | Roof vent caps | 2026-09-20 A → 2026-07-25 A (-57d) | 2026-09-20 A → 2026-07-25 A (-57d) |  | HAL-P-DL-M-520 → HAL-P-DL-M-520, HAL-P-ST-M-500 |  |

| ID | Task | Start | Finish | Duration | Predecessors | Other |
| --- | --- | --- | --- | --- | --- | --- |
| HAL-P-ST-M-550 | Electric water heater | 2026-09-16 A → 2026-07-25 A (-53d) | 2026-09-16 A → 2026-07-25 A (-53d) |  |  |  |
| HAL-P-ST-M-570 | Toilet Fittings | 2026-09-15 A → 2026-07-25 A (-52d) | 2026-09-20 A → 2026-07-25 A (-57d) |  |  |  |
| HAL-P-ST-M-580 | Lavatory / wash basin | 2026-09-16 A → 2026-07-25 A (-53d) | 2026-09-20 A → 2026-07-25 A (-57d) |  |  |  |
| HAL-P-ST-M-660 | Warning tapes | 2026-07-05 A → 2026-07-25 A (+20d) | 2026-07-05 A → 2026-07-25 A (+20d) |  |  |  |
| HAL-P-ST-M-3410 | Water tap | 2026-09-20 A → 2026-09-02 A (-18d) | 2026-09-20 A → 2026-09-02 A (-18d) |  |  |  |
| HAL-P-ST-M-500 | Capped connection | 2026-07-05 A → 2026-09-02 A (+59d) | 2026-09-14 A → 2026-09-02 A (-12d) |  |  |  |
| HAL-P-ST-M-560 | Bib tap | 2026-09-20 A → 2026-09-15 A (-5d) | 2026-09-20 A → 2026-09-15 A (-5d) |  | HAL-P-DL-M-560, HAL-P-ST-M-540 → HAL-P-DL-M-560 |  |
| 3 | **ELECTRICAL** | 2026-03-10 → 2026-01-29 (-40d) | 2026-09-20 → 2026-10-01 (+11d) |  |  |  |
| 1 | **PO ISSUE** | 2026-03-10 → 2026-01-29 (-40d) | 2026-06-21 → 2026-07-27 (+36d) |  |  |  |
| HAL-P-PO-E-350 | Wiring devices | 2026-06-21 A → 2026-01-29 A (-143d) | 2026-06-21 A → 2026-01-29 A (-143d) |  |  | resources Purchaser [16 h] → Purchaser [40 h] |
| HAL-P-PO-E-340 | Grounding system | 2026-04-26 A → 2026-03-04 A (-53d) | 2026-04-26 A → 2026-03-04 A (-53d) | 5d → 4.12d |  | resources Purchaser [16 h] → Purchaser [80 h] |
| HAL-P-PO-E-310 | PVC conduits | 2026-03-10 A → 2026-03-11 A (+1d) | 2026-03-10 A → 2026-03-11 A (+1d) |  |  | resources Purchaser [80 h] → Purchaser [40 h] |
| HAL-P-PO-E-320 | Wires | 2026-06-21 A → 2026-06-01 A (-20d) | 2026-06-21 A → 2026-06-01 A (-20d) |  |  | resources Purchaser [80 h] → Purchaser [40 h] |
| HAL-P-PO-E-330 | Wall mounted, duplex, telephone and data outlet | 2026-06-21 A → 2026-06-03 A (-18d) | 2026-06-21 A → 2026-06-03 A (-18d) |  |  |  |
| HAL-P-PO-E-370 | HDPE ducts | 2026-04-26 A → 2026-06-03 A (+38d) | 2026-04-26 A → 2026-06-03 A (+38d) |  |  | resources Purchaser [16 h] → Purchaser [40 h] |
| HAL-P-PO-E-290 | Low Voltage cables | 2026-06-21 A → 2026-06-16 A (-5d) | 2026-06-21 A → 2026-06-16 A (-5d) |  |  | resources Purchaser [16 h] → Purchaser [40 h] |
| HAL-P-PO-E-2100 | Cable Tray | 2026-06-21 A → 2026-07-27 A (+36d) | 2026-06-21 A → 2026-07-27 A (+36d) |  |  | resources Purchaser [80 h] → Purchaser [40 h] |
| HAL-P-PO-E-300 | Disconnect switches | 2026-06-21 A → 2026-07-27 A (+36d) | 2026-06-21 A → 2026-07-27 A (+36d) |  |  | resources Purchaser [16 h] → Purchaser [40 h] |
| 4 | **MANUFACTURING** | 2026-03-11 → 2026-01-29 (-41d) | 2026-09-16 → 2026-10-01 (+15d) |  |  |  |
| HAL-P-MF-E-350 | Wiring devices | 2026-07-09 A → 2026-01-29 A (-161d) | 2026-09-16 A → 2026-06-02 A (-106d) | 80d → 82d |  | resources Loading workers [40 h] → Loading workers |
| HAL-P-MF-E-340 | Grounding system | 2026-04-27 A → 2026-03-04 A (-54d) | 2026-05-03 A → 2026-05-02 A (-1d) |  |  | resources Loading workers [40 h] → Loading workers |
| HAL-P-MF-E-310 | PVC conduits |  | 2026-05-02 A → 2026-05-11 A (+9d) | 60d → 40d |  | resources Loading workers [240 h] → Loading workers |
| HAL-P-MF-E-320 | Wires | 2026-06-28 A → 2026-06-01 A (-27d) | 2026-09-16 A → 2026-06-03 A (-105d) | 80d → 81.12d |  | resources Loading workers [240 h] → Loading workers |
| HAL-P-MF-E-330 | Wall mounted, duplex, telephone and data outlet | 2026-07-27 A → 2026-06-03 A (-54d) | 2026-09-16 A → 2026-10-01 A (+15d) | 80d → 30d |  | resources Loading workers [480 h] → Loading workers |
| HAL-P-MF-E-370 | HDPE ducts | 2026-04-27 A → 2026-06-03 A (+37d) | 2026-05-03 A → 2026-06-04 A (+32d) |  |  | resources Loading workers [40 h] → Loading workers |
| HAL-P-MF-E-290 | Low Voltage cables | 2026-07-15 A → 2026-06-16 A (-29d) | 2026-07-22 A → 2026-07-16 A (-6d) | 80d → 20d |  | resources Loading workers [40 h] → Loading workers |
| HAL-P-MF-E-2100 | Cable Tray | 2026-07-04 A → 2026-07-27 A (+23d) | 2026-09-16 A → 2026-08-16 A (-31d) | 80d → 20d |  | resources Purchaser [40 h] → Purchaser |
| HAL-P-MF-E-300 | Disconnect switches | 2026-07-21 A → 2026-07-27 A (+6d) | 2026-07-22 A → 2026-08-16 A (+25d) | 80d → 20d |  | resources Loading workers [480 h] → Loading workers |
| 2 | **DELIVERY** | 2026-05-03 → 2026-03-12 (-52d) | 2026-09-20 → 2026-10-01 (+11d) |  |  |  |
| HAL-P-DL-E-310 | PVC conduits | 2026-05-03 A → 2026-03-12 A (-52d) | 2026-05-20 A → 2026-03-12 A (-69d) |  |  | resources Unloading workers [112 h]; Construction Cost [15738.7] → Unloading workers [896 h]; Construction Cost [3863.7] |
| HAL-P-DL-E-340 | Grounding system | 2026-05-10 A → 2026-04-04 A (-36d) | 2026-05-19 A → 2026-05-02 A (-17d) |  |  | resources Unloading workers [112 h]; Construction Cost [65141.3] → Unloading workers [224 h]; Construction Cost [95510.5] |
| HAL-P-DL-E-350 | Wiring devices | 2026-09-17 A → 2026-06-03 A (-106d) | 2026-09-20 A → 2026-06-03 A (-109d) |  |  | resources Unloading workers [112 h]; Construction Cost [66414.3] → Unloading workers [224 h]; Construction Cost [50641.2] |
| HAL-P-DL-E-320 | Wires | 2026-09-20 A → 2026-06-04 A (-108d) | 2026-09-20 A → 2026-06-04 A (-108d) |  |  | resources Unloading workers [112 h]; Construction Cost [7379.37] → Unloading workers [224 h]; Construction Cost [10935] |
| HAL-P-DL-E-370 | HDPE ducts | 2026-05-10 A → 2026-06-04 A (+25d) | 2026-05-19 A → 2026-06-04 A (+16d) |  |  | resources Unloading workers [112 h]; Construction Cost [176020] → Unloading workers [112 h]; Construction Cost [274495] |
| HAL-P-DL-E-290 | Low Voltage cables | 2026-07-23 A → 2026-07-16 A (-7d) | 2026-07-25 A → 2026-07-16 A (-9d) |  |  | resources Unloading workers [112 h]; Construction Cost [299034] → Unloading workers [224 h]; Construction Cost [104031] |
| HAL-P-DL-E-2100 | Cable Tray | 2026-09-20 A → 2026-08-16 A (-35d) | 2026-09-20 A → 2026-08-16 A (-35d) |  |  | resources Purchaser [112 h]; Construction Cost [1063.8] → Purchaser [224 h]; Construction Cost [704.7] |
| HAL-P-DL-E-300 | Disconnect switches | 2026-07-23 A → 2026-08-16 A (+24d) | 2026-07-25 A → 2026-08-16 A (+22d) |  |  | resources Unloading workers [112 h]; Construction Cost [100576] → Unloading workers [224 h]; Construction Cost [63009.9] |
| HAL-P-DL-E-330 | Wall mounted, duplex, telephone and data outlet | 2026-09-17 A → 2026-10-01 A (+14d) | 2026-09-20 A → 2026-10-01 A (+11d) |  |  | resources Unloading workers [112 h]; Construction Cost [88627.4] → Unloading workers [224 h]; Construction Cost [56886.3] |
| 3 | **STAGING TIME** | 2026-05-03 → 2026-03-12 (-52d) | 2026-09-20 → 2026-10-01 (+11d) |  |  |  |
| HAL-P-ST-E-310 | PVC conduits | 2026-05-03 A → 2026-03-12 A (-52d) | 2026-05-20 A → 2026-03-12 A (-69d) |  |  |  |
| HAL-P-ST-E-340 | Grounding system | 2026-05-10 A → 2026-04-04 A (-36d) | 2026-05-19 A → 2026-05-02 A (-17d) |  | HAL-P-DL-E-340, HAL-P-ST-E-320 → HAL-P-DL-E-340 |  |
| HAL-P-ST-E-350 | Wiring devices | 2026-09-17 A → 2026-06-03 A (-106d) | 2026-09-20 A → 2026-06-03 A (-109d) |  |  |  |
| HAL-P-ST-E-320 | Wires | 2026-09-20 A → 2026-06-04 A (-108d) | 2026-09-20 A → 2026-06-04 A (-108d) |  |  |  |
| HAL-P-ST-E-370 | HDPE ducts | 2026-05-10 A → 2026-06-04 A (+25d) | 2026-05-19 A → 2026-06-04 A (+16d) |  |  |  |
| HAL-P-ST-E-290 | Low Voltage cables | 2026-07-25 A → 2026-07-16 A (-9d) | 2026-07-25 A → 2026-07-16 A (-9d) |  | HAL-P-DL-E-290, HAL-P-ST-E-350 → HAL-P-DL-E-290 |  |
| HAL-P-ST-E-2100 | Cable Tray | 2026-09-20 A → 2026-08-16 A (-35d) | 2026-09-20 A → 2026-08-16 A (-35d) |  | HAL-P-DL-E-2100, HAL-P-ST-E-310 → HAL-P-DL-E-2100 |  |
| HAL-P-ST-E-300 | Disconnect switches | 2026-07-25 A → 2026-08-16 A (+22d) | 2026-07-25 A → 2026-08-16 A (+22d) |  | HAL-P-DL-E-300, HAL-P-ST-E-370 → HAL-P-DL-E-300 |  |
| HAL-P-ST-E-330 | Wall mounted, duplex, telephone and data outlet | 2026-09-17 A → 2026-10-01 A (+14d) | 2026-09-20 A → 2026-10-01 A (+11d) |  | HAL-P-DL-E-330, HAL-P-ST-E-290 → HAL-P-DL-E-330 |  |
| 4 | **EXTERNAL** | 2026-03-02 → 2026-06-17 (+107d) | 2026-09-21 → 2026-10-15 (+24d) |  |  |  |
| 1 | **PO ISSUE** | 2026-03-02 → 2026-06-17 (+107d) | 2026-06-21 → 2026-10-12 (+113d) |  |  |  |
| HAL-P-PO-EX-80 | Asphalt works | 2026-03-02 A → 2026-06-17 A (+107d) | 2026-03-02 A → 2026-06-17 A (+107d) |  |  |  |
| HAL-P-PO-EX-150 | Gravel bedding | 2026-06-21 A → 2026-06-23 A (+2d) | 2026-06-21 A → 2026-06-23 A (+2d) |  |  |  |
| HAL-P-PO-EX-130 | Interlock tiles | 2026-06-21 A → 2026-07-24 A (+33d) | 2026-06-21 A → 2026-07-24 A (+33d) |  | HAL-E-MA-EX-0060, HAL-P-ST-M-570 → HAL-E-MA-EX-0060 |  |
| HAL-P-PO-EX-140 | Curbstones | 2026-06-21 A → 2026-07-24 A (+33d) | 2026-06-21 A → 2026-07-24 A (+33d) |  |  |  |
| HAL-P-PO-EX-110 | Road signs | 2026-06-21 A → 2026-08-06 A (+46d) | 2026-06-21 A → 2026-08-06 A (+46d) |  | HAL-E-MA-EX-0040 → HAL-E-MA-EX-0040 SS |  |
| HAL-P-PO-EX-90 | Concrete parking bumper | 2026-06-21 A → 2026-08-16 A (+56d) | 2026-06-21 A → 2026-08-16 A (+56d) |  |  |  |
| HAL-P-PO-EX-100 | Road markings | 2026-06-21 A → 2026-10-12 A (+113d) | 2026-06-21 A → 2026-10-12 A (+113d) |  | HAL-E-MA-EX-0030 → HAL-E-MA-EX-0030 SS |  |
| 4 | **MANUFACTURING** | 2026-03-03 → 2026-06-17 (+106d) | 2026-09-20 → 2026-10-14 (+24d) |  |  |  |
| HAL-P-MF-EX-80 | Asphalt works | 2026-03-03 A → 2026-06-17 A (+106d) | 2026-06-07 A → 2026-06-20 A (+13d) | 100d → 80d |  | resources Loading workers [480 h] → Loading workers |
| HAL-P-MF-EX-150 | Gravel bedding | 2026-06-28 A → 2026-06-25 A (-3d) | 2026-09-20 A → 2026-06-27 A (-85d) | 90d → 30d |  | resources Loading workers [480 h] → Loading workers |
| HAL-P-MF-EX-130 | Interlock tiles | 2026-07-21 A → 2026-07-24 A (+3d) | 2026-09-20 A → 2026-07-25 A (-57d) | 90d → 25d |  | resources Loading workers [480 h] → Loading workers |
| HAL-P-MF-EX-140 | Curbstones | 2026-06-28 A → 2026-07-24 A (+26d) | 2026-09-20 A → 2026-07-25 A (-57d) | 90d → 25d |  | resources Loading workers [480 h] → Loading workers |
| HAL-P-MF-EX-110 | Road signs | 2026-06-28 A → 2026-08-06 A (+39d) | 2026-09-17 A → 2026-08-08 A (-40d) | 90d → 25d |  | resources Loading workers [480 h] → Loading workers |
| HAL-P-MF-EX-90 | Concrete parking bumper | 2026-06-28 A → 2026-08-16 A (+49d) | 2026-09-19 A → 2026-09-17 A (-2d) | 90d → 25d |  | resources Loading workers [480 h] → Loading workers |
| HAL-P-MF-EX-100 | Road markings | 2026-06-28 A → 2026-10-12 A (+106d) | 2026-09-19 A → 2026-10-14 A (+25d) | 90d → 10d |  | resources Loading workers [480 h] → Loading workers |
| 2 | **DELIVERY** | 2026-06-08 → 2026-06-20 (+12d) | 2026-09-21 → 2026-10-15 (+24d) |  |  |  |
| HAL-P-DL-EX-80 | Asphalt works | 2026-06-08 A → 2026-06-20 A (+12d) | 2026-06-17 A → 2026-06-20 A (+3d) |  |  | resources Unloading workers [112 h]; Construction Cost [1868985] → Unloading workers [224 h]; Construction Cost [1151009] |
| HAL-P-DL-EX-150 | Gravel bedding | 2026-09-17 A → 2026-06-27 A (-82d) | 2026-09-21 A → 2026-06-27 A (-86d) | 7d → 2d |  | resources Unloading workers [720 h]; Construction Cost [66111.9] → Unloading workers [224 h]; Construction Cost [34763.8] |
| HAL-P-DL-EX-130 | Interlock tiles | 2026-09-17 A → 2026-07-25 A (-54d) | 2026-09-20 A → 2026-07-25 A (-57d) | 7d → 2d |  | resources Unloading workers [720 h]; Construction Cost [141980] → Unloading workers [224 h]; Construction Cost [85760.8] |
| HAL-P-DL-EX-140 | Curbstones | 2026-09-17 A → 2026-07-25 A (-54d) | 2026-09-20 A → 2026-07-25 A (-57d) | 7d → 2d |  | resources Unloading workers [720 h]; Construction Cost [86912.4] → Unloading workers [224 h]; Construction Cost [57773.2] |

| ID | Task | Start | Finish | Duration | Predecessors | Other |
| --- | --- | --- | --- | --- | --- | --- |
| HAL-P-DL-EX-110 | Road signs | 2026-09-20 A → 2026-08-08 A (-43d) | 2026-09-20 A → 2026-08-08 A (-43d) | 7d → 2d |  | resources Unloading workers [720 h]; Construction Cost [31028.6] → Unloading workers [224 h]; Construction Cost [21993.9] |
| HAL-P-DL-EX-90 | Concrete parking bumper | 2026-09-21 A → 2026-09-19 A (-2d) | 2026-09-21 A → 2026-09-19 A (-2d) | 7d → 2d |  | resources Unloading workers [112 h]; Construction Cost [9558.14] → Unloading workers [224 h]; Construction Cost [6386.04] |
| HAL-P-DL-EX-100 | Road markings | 2026-09-21 A → 2026-10-15 A (+24d) | 2026-09-21 A → 2026-10-15 A (+24d) | 7d → 2d |  | resources Unloading workers [720 h]; Construction Cost [11308.9] → Unloading workers [224 h]; Construction Cost [15904.4] |
| 3 | **STAGING TIME** | 2026-06-08 → 2026-06-27 (+19d) | 2026-09-21 → 2026-10-15 (+24d) |  |  |  |
| HAL-P-ST-EX-150 | Gravel bedding | 2026-09-17 A → 2026-06-27 A (-82d) | 2026-09-21 A → 2026-06-27 A (-86d) |  | HAL-P-DL-EX-150 → HAL-P-DL-EX-150, HAL-P-ST-EX-90 |  |
| HAL-P-ST-EX-130 | Interlock tiles | 2026-09-17 A → 2026-07-25 A (-54d) | 2026-09-20 A → 2026-07-25 A (-57d) |  |  |  |
| HAL-P-ST-EX-140 | Curbstones | 2026-09-17 A → 2026-07-25 A (-54d) | 2026-09-20 A → 2026-07-25 A (-57d) |  | HAL-P-DL-EX-140, HAL-P-ST-EX-80 → HAL-P-DL-EX-140 |  |
| HAL-P-ST-EX-110 | Road signs | 2026-09-20 A → 2026-08-08 A (-43d) | 2026-09-20 A → 2026-08-08 A (-43d) |  |  |  |
| HAL-P-ST-EX-90 | Concrete parking bumper | 2026-09-21 A → 2026-09-19 A (-2d) | 2026-09-21 A → 2026-09-19 A (-2d) |  |  |  |
| HAL-P-ST-EX-80 | Asphalt works | 2026-06-08 A → 2026-10-10 A (+124d) | 2026-06-08 A → 2026-10-10 A (+124d) | 7d → 1d |  |  |
| HAL-P-ST-EX-100 | Road markings | 2026-09-21 A → 2026-10-15 A (+24d) | 2026-09-21 A → 2026-10-15 A (+24d) | 7d → 1d |  |  |
| 5 | **ENVIRONMENTAL** | 2026-06-21 → 2026-02-24 (-117d) | 2026-09-20 → 2026-08-02 (-49d) |  |  |  |
| 1 | **PO ISSUE** | 2026-06-21 → 2026-02-24 (-117d) | 2026-06-21 → 2026-02-24 (-117d) |  |  |  |
| HAL-P-PO-EN-100 | HDPE pipes for fire system | 2026-06-21 A → 2026-02-24 A (-117d) | 2026-06-21 A → 2026-02-24 A (-117d) |  |  | resources Purchaser [80 h] → Purchaser [40 h] |
| HAL-P-PO-EN-110 | Directly buried gate valve for fire system | 2026-06-21 A → 2026-02-24 A (-117d) | 2026-06-21 A → 2026-02-24 A (-117d) |  |  | resources Purchaser [80 h] → Purchaser [40 h] |
| HAL-P-PO-EN-120 | HDPE pipes for water supply system | 2026-06-21 A → 2026-02-24 A (-117d) | 2026-06-21 A → 2026-02-24 A (-117d) |  |  | resources Purchaser [80 h] → Purchaser [40 h] |
| HAL-P-PO-EN-140 | Air valve | 2026-06-21 A → 2026-02-24 A (-117d) | 2026-06-21 A → 2026-02-24 A (-117d) |  |  | resources Purchaser [16 h] → Purchaser [40 h] |
| HAL-P-PO-EN-150 | Washout valve | 2026-06-21 A → 2026-02-24 A (-117d) | 2026-06-21 A → 2026-02-24 A (-117d) |  |  | resources Purchaser [16 h] → Purchaser [40 h] |
| HAL-P-PO-EN-160 | Gate valve | 2026-06-21 A → 2026-02-24 A (-117d) | 2026-06-21 A → 2026-02-24 A (-117d) |  |  | resources Purchaser [16 h] → Purchaser [40 h] |
| HAL-P-PO-EN-130 | Directly buried gate valve for water system | 2026-06-21 A → 2026-02-24 A (-117d) | 2026-06-21 A → 2026-02-24 A (-117d) | 5d → 0.88d |  | resources Purchaser [16 h] → Purchaser [80 h] |
| 4 | **MANUFACTURING** | 2026-06-22 → 2026-02-24 (-118d) | 2026-09-19 → 2026-08-01 (-49d) |  |  |  |
| HAL-P-MF-EN-100 | HDPE pipes for fire system | 2026-06-28 A → 2026-02-24 A (-124d) | 2026-07-23 A → 2026-02-28 A (-145d) | 90d → 80d |  | resources Loading workers [1440 h] → Loading workers |
| HAL-P-MF-EN-110 | Directly buried gate valve for fire system | 2026-07-04 A → 2026-02-24 A (-130d) | 2026-09-19 A → 2026-08-01 A (-49d) | 90d → 30d |  | resources Loading workers [1440 h] → Loading workers |
| HAL-P-MF-EN-120 | HDPE pipes for water supply system | 2026-06-22 A → 2026-02-24 A (-118d) | 2026-08-15 A → 2026-02-28 A (-168d) | 90d → 80d |  | resources Loading workers [40 h] → Loading workers |
| HAL-P-MF-EN-130 | Directly buried gate valve for water system | 2026-06-22 A → 2026-02-24 A (-118d) | 2026-09-19 A → 2026-08-01 A (-49d) | 90d → 30d |  | resources Loading workers [40 h] → Loading workers |
| HAL-P-MF-EN-140 | Air valve | 2026-06-22 A → 2026-02-24 A (-118d) | 2026-09-19 A → 2026-05-13 A (-129d) | 90d → 80d |  | resources Loading workers [40 h] → Loading workers |
| HAL-P-MF-EN-160 | Gate valve | 2026-06-22 A → 2026-02-24 A (-118d) | 2026-09-19 A → 2026-08-01 A (-49d) | 90d → 30d |  | resources Loading workers [40 h] → Loading workers |
| HAL-P-MF-EN-150 | Washout valve | 2026-06-22 A → 2026-02-24 A (-118d) | 2026-09-19 A → 2026-08-01 A (-49d) | 90d → 30d |  | resources Loading workers [40 h] → Loading workers |
| 2 | **DELIVERY** | 2026-07-25 → 2026-03-01 (-146d) | 2026-09-20 → 2026-08-02 (-49d) |  |  |  |
| HAL-P-DL-EN-100 | HDPE pipes for fire system | 2026-07-25 A → 2026-03-01 A (-146d) | 2026-07-26 A → 2026-03-01 A (-147d) |  |  | resources Unloading workers [112 h]; Construction Cost [144973] → Unloading workers [224 h]; Construction Cost [65612.4] |
| HAL-P-DL-EN-120 | HDPE pipes for water supply system | 2026-08-17 A → 2026-03-01 A (-169d) | 2026-08-17 A → 2026-03-01 A (-169d) |  |  | resources Unloading workers [112 h]; Construction Cost [10655] → Unloading workers [224 h]; Construction Cost [63838.8] |
| HAL-P-DL-EN-140 | Air valve | 2026-09-20 A → 2026-05-13 A (-130d) | 2026-09-20 A → 2026-05-13 A (-130d) |  |  | resources Unloading workers [112 h]; Construction Cost [13087.1] → Unloading workers [224 h]; Construction Cost [5832] |
| HAL-P-DL-EN-110 | Directly buried gate valve for fire system | 2026-09-20 A → 2026-08-02 A (-49d) | 2026-09-20 A → 2026-08-02 A (-49d) |  |  | resources Unloading workers [112 h]; Construction Cost [7270.01] → Unloading workers [224 h]; Construction Cost [11858.4] |
| HAL-P-DL-EN-130 | Directly buried gate valve for water system | 2026-09-20 A → 2026-08-02 A (-49d) | 2026-09-20 A → 2026-08-02 A (-49d) |  |  | resources Unloading workers [112 h]; Construction Cost [16098.5] → Unloading workers [112 h]; Construction Cost [11955.6] |
| HAL-P-DL-EN-150 | Washout valve | 2026-09-20 A → 2026-08-02 A (-49d) | 2026-09-20 A → 2026-08-02 A (-49d) |  |  | resources Unloading workers [112 h]; Construction Cost [15346.9] → Unloading workers [224 h]; Construction Cost [6804] |
| HAL-P-DL-EN-160 | Gate valve | 2026-09-05 A → 2026-08-02 A (-34d) | 2026-09-20 A → 2026-08-02 A (-49d) |  |  | resources Unloading workers [112 h]; Construction Cost [42658.4] → Unloading workers [224 h]; Construction Cost [2430] |
| 3 | **STAGING TIME** | 2026-07-25 → 2026-03-01 (-146d) | 2026-09-20 → 2026-08-02 (-49d) |  |  |  |
| HAL-P-ST-EN-100 | HDPE pipes for fire system | 2026-07-25 A → 2026-03-01 A (-146d) | 2026-07-26 A → 2026-03-01 A (-147d) |  |  |  |
| HAL-P-ST-EN-120 | HDPE pipes for water supply system | 2026-08-17 A → 2026-03-01 A (-169d) | 2026-08-17 A → 2026-03-01 A (-169d) |  | HAL-P-DL-EN-120, HAL-P-ST-EN-100 → HAL-P-DL-EN-120 |  |
| HAL-P-ST-EN-140 | Air valve | 2026-09-20 A → 2026-05-13 A (-130d) | 2026-09-20 A → 2026-05-13 A (-130d) |  |  |  |
| HAL-P-ST-EN-110 | Directly buried gate valve for fire system | 2026-09-20 A → 2026-08-02 A (-49d) | 2026-09-20 A → 2026-08-02 A (-49d) |  |  |  |
| HAL-P-ST-EN-130 | Directly buried gate valve for water system | 2026-09-20 A → 2026-08-02 A (-49d) | 2026-09-20 A → 2026-08-02 A (-49d) |  |  |  |
| HAL-P-ST-EN-150 | Washout valve | 2026-09-20 A → 2026-08-02 A (-49d) | 2026-09-20 A → 2026-08-02 A (-49d) |  |  |  |
| HAL-P-ST-EN-160 | Gate valve | 2026-09-05 A → 2026-08-02 A (-34d) | 2026-09-20 A → 2026-08-02 A (-49d) |  |  |  |
| 1 | **RBF 900 SQM FACTORIES** | 2026-01-14 → 2025-12-22 (-23d) | 2027-02-23 → 2026-10-28 (-118d) |  |  |  |
| 2 | **SITE WORKS** | 2026-01-14 → 2025-12-22 (-23d) | 2026-01-31 → 2026-09-24 (+236d) |  |  |  |
| HAL-C-GEN-10 | Initial Site Survey and Setting out | 2026-01-19 A → 2025-12-22 A (-28d) | 2026-01-24 A → 2025-12-25 A (-30d) | 12d → 10d |  |  |
| HAL-C-GEN-77 | Excavation to the target grading level | 2026-02-10 A → 2025-12-27 A (-45d) | 2026-02-28 A → 2026-01-31 A (-28d) | 20d → 7d | HAL-C-GEN-180 → HAL-C-GEN-10, HAL-PMS-DMS-2360 | resources General Labour [320 h]; Equipment Operator [320 h]; Truck [40 h]; Excavator [40 h]; Mini Roller Compactor [40 h]; Construction Cost [197691] → General Labour [112 h]; Equipment Operator [112 h]; Truck [56 h]; Excavator [56 h]; Mini Roller Compactor [56 h]; Construction Cost [99312.5] |
| 1 | **STRUCTURAL** | 2026-02-15 → 2025-12-28 (-49d) | 2026-11-04 → 2026-07-16 (-111d) |  |  |  |
| 1 | **FOOTING** | 2026-02-15 → 2025-12-28 (-49d) | 2026-05-10 → 2026-01-28 (-102d) |  |  |  |
| HAL-C-B-S-160 | Excavation for footings | 2026-02-15 A → 2025-12-28 A (-49d) | 2026-03-24 A → 2026-01-07 A (-76d) | 8d → 7d | HAL-MOB-SO.0016, HAL-MOB-SO.0020, HAL-E-SA-R-730, HAL-E-SA-R-740, HAL-E-SA-R-750, HAL-C-GEN-10 → HAL-C-GEN-78, HAL-C-GEN-88, HAL-E-SA-C-750, HAL-E-SA-R-730, HAL-E-SA-R-740, HAL-E-SA-R-750, HAL-E-SA-R-760, HAL-E-SA-R-770, HAL-E-SA-R-780, HAL-PRE-SUB-1015, HAL-PRE-SUB-1014, HAL-PRE-SUB-1013 | resources General Labour [112 h]; Equipment Operator [112 h]; Truck [32 h]; Excavator [32 h]; Mini Roller Compactor [32 h]; Construction Cost [89859.6] → General Labour [112 h]; Equipment Operator [112 h]; Truck [56 h]; Excavator [56 h]; Mini Roller Compactor [56 h]; Construction Cost [66496.4] |
| HAL-C-B-S-777 | Anti Termite Below Footings | 2026-04-22 A → 2026-01-10 A (-102d) | 2026-04-22 A → 2026-01-10 A (-102d) |  | HAL-P-ST-C-50, Engineering fill, HAL-PRE-SUB-1013, HAL-PRE-SUB-1014, HAL-PRE-SUB-1015, HAL-E-SA-R-760, HAL-E-SA-R-770, HAL-E-SA-R-780 → HAL-C-B-S-160, HAL-P-ST-C-50 | resources Mason [16 h]; Construction Cost [11905.5] → Mason [16 h]; Construction Cost [8441.61] |
| HAL-C-B-S-537 | Lean Concrete Below Footings | 2026-04-22 A → 2026-01-11 A (-101d) | 2026-04-22 A → 2026-01-11 A (-101d) |  | HAL-C-B-S-687 → HAL-C-B-S-687, HAL-P-ST-C-60, HAL-E-SA-R-790, HAL-E-SA-R-800, HAL-E-SA-R-810, HAL-E-SA-R-820 | resources Mason [32 h]; Construction Cost [8229.34] → Mason [32 h]; Construction Cost [8238.87] |
| HAL-C-B-S-687 | Vapour Barrier for Footings | 2026-04-22 A → 2026-01-11 A (-101d) | 2026-04-22 A → 2026-01-11 A (-101d) |  |  | resources General Labour [16 h]; Construction Cost [7940.1] → General Labour [16 h]; Construction Cost [6030.16] |
| HAL-C-B-S-597 | Formwork for Footings | 2026-05-04 A → 2026-01-13 A (-111d) | 2026-05-09 A → 2026-01-21 A (-108d) | 4d → 3.5d |  | resources Carperter [64 h]; Construction Cost [25461.2] → Carperter [64 h]; Construction Cost [23267.9] |
| HAL-C-B-S-587 | Rebar for Footings | 2026-05-02 A → 2026-01-20 A (-102d) | 2026-05-05 A → 2026-01-27 A (-98d) |  | HAL-C-B-S-537, HAL-E-MT-C-2010, HAL-P-ST-C-90, Demolition of the existing pavement, HAL-E-SA-C-750 → HAL-C-B-S-537, HAL-E-MT-C-2010, HAL-P-ST-C-90 | resources Steel Fixer [64 h]; Construction Cost [101845] → Steel Fixer [64 h]; Construction Cost [93071.6] |
| HAL-C-B-S-547 | Pouring Concrete for Footings | 2026-05-10 A → 2026-01-28 A (-102d) | 2026-05-10 A → 2026-01-28 A (-102d) |  | HAL-C-B-S-597, HAL-P-ST-C-60 → HAL-C-B-S-597 | resources Carperter [16 h]; Mason [16 h]; Steel Fixer [16 h]; Concrete Mixer [8 h]; Equipment Operator [16 h]; Construction Cost [127306] → Carperter [16 h]; Mason [16 h]; Steel Fixer [16 h]; Concrete Mixer [8 h]; Equipment Operator [16 h]; Construction Cost [116339] |
| 2 | **COLUMN NECK** | 2026-05-05 → 2026-01-29 (-96d) | 2026-06-01 → 2026-04-06 (-56d) |  |  |  |
| HAL-C-B-S-637 | Rebar for column neck | 2026-05-05 A → 2026-01-29 A (-96d) | 2026-05-09 A → 2026-02-03 A (-95d) |  | HAL-C-B-S-547 → HAL-C-B-S-547, HAL-E-SA-R-830, HAL-E-SA-R-840, HAL-E-SA-R-850, HAL-E-SA-R-860, HAL-E-SA-R-870, HAL-E-SA-R-880, HAL-E-SA-R-890, HAL-E-SA-R-900 | resources Steel Fixer [32 h]; Construction Cost [14919.2] → Steel Fixer [32 h]; Construction Cost [21993.7] |
| HAL-C-B-S-647 | Formwork for column neck | 2026-05-12 A → 2026-02-03 A (-98d) | 2026-05-16 A → 2026-02-05 A (-100d) |  | HAL-C-B-S-637, HAL-E-MT-C-2010 → HAL-C-B-S-637, HAL-E-MT-C-2010, HAL-E-SA-M-600, HAL-E-SA-M-610, HAL-E-SA-M-620, HAL-E-SA-M-630, HAL-E-SA-M-640, HAL-E-SA-A-830, HAL-E-SA-A-840, HAL-E-SA-A-850, HAL-E-SA-A-860, HAL-E-SA-A-1170, HAL-E-SA-A-870, HAL-E-SA-A-880, HAL-E-SA-A-890, HAL-E-SA-C-840, HAL-E-SA-C-850, HAL-E-SA-C-860, HAL-E-SA-C-870, HAL-E-SA-C-880, HAL-E-SA-C-890, HAL-E-SA-C-750, HAL-E-SA-C-760, HAL-E-SA-C-770, HAL-E-SA-C-780, HAL-E-SA-C-790, HAL-E-SA-C-800, HAL-E-SA-C-810, HAL-E-SA-C-820, HAL-E-SA-C-830 | resources Carperter [32 h]; Construction Cost [9946.13] → Carperter [32 h]; Construction Cost [5498.72] |
| HAL-C-B-S-677 | Damp proof /Bitumin paint on Footings & column neck | 2026-05-18 A → 2026-02-07 A (-100d) | 2026-05-19 A → 2026-03-03 A (-77d) |  |  | resources Painter [32 h]; Construction Cost [24777.7] → Painter [32 h]; Construction Cost [6903.81] |
| HAL-C-B-S-627 | Pouring Concrete for column neck | 2026-05-17 A → 2026-02-10 A (-96d) | 2026-05-17 A → 2026-03-02 A (-76d) |  |  | resources Mason [16 h]; Carperter [16 h]; Concrete Mixer [8 h]; Steel Fixer [16 h]; Equipment Operator [16 h]; Construction Cost [24865.3] → Mason [16 h]; Carperter [16 h]; Concrete Mixer [8 h]; Steel Fixer [16 h]; Equipment Operator [16 h]; Construction Cost [27492.4] |
| HAL-C-B-S-737 | Backfilling / Compaction up to Bottom of Grade Beams | 2026-05-24 A → 2026-02-14 A (-99d) | 2026-06-01 A → 2026-04-06 A (-56d) | 7d → 14d | HAL-C-B-S-677 → HAL-C-B-S-677, HAL-E-SA-EX-690, HAL-E-SA-EX-700, HAL-E-SA-EX-710, HAL-E-SA-EX-720, HAL-E-SA-EX-730, HAL-E-SA-EX-740, HAL-E-SA-EX-750, HAL-E-SA-EX-760, HAL-E-SA-EX-770, HAL-E-SA-EX-780 | resources General Labour [256 h]; Truck [128 h]; Mini Roller Compactor [128 h]; Equipment Operator [256 h]; Wheel Loader [128 h]; Construction Cost [46046.2] → General Labour [256 h]; Truck [128 h]; Mini Roller Compactor [128 h]; Equipment Operator [256 h]; Wheel Loader [128 h]; Construction Cost [32707.9] |
| 3 | **GRADE BEAM** | 2026-06-04 → 2026-04-14 (-51d) | 2026-06-22 → 2026-05-07 (-46d) |  |  |  |
| HAL-C-B-S-557 | Lean Concrete Below Grade Beams | 2026-06-04 A → 2026-04-14 A (-51d) | 2026-06-04 A → 2026-04-14 A (-51d) |  | HAL-C-B-S-707 → HAL-C-B-S-707, HAL-E-MT-E-2040, HAL-E-SA-R-910, HAL-E-SA-R-920, HAL-E-SA-R-930, HAL-E-SA-R-940, HAL-E-SA-R-950, HAL-E-SA-R-960 | resources Mason [32 h]; Construction Cost [4431.19] → Mason [32 h]; Construction Cost [8238.87] |
| HAL-C-B-S-707 | Vapour barrier for Grade Beams | 2026-06-04 A → 2026-04-14 A (-51d) | 2026-06-04 A → 2026-04-14 A (-51d) |  |  | resources General Labour [32 h]; Construction Cost [5293.4] → General Labour [32 h]; Construction Cost [4019.9] |
| HAL-C-B-S-787 | Anti Termite Below Grade Beams | 2026-06-04 A → 2026-04-14 A (-51d) | 2026-06-04 A → 2026-04-14 A (-51d) |  | HAL-C-B-S-737, HAL-E-SA-C-760 → HAL-C-B-S-737, HAL-E-SA-C-760, HAL-E-SA-E-940, HAL-E-SA-E-950, HAL-E-SA-E-960, HAL-E-SA-E-970, HAL-E-SA-E-980, HAL-E-SA-E-990, HAL-E-SA-E-1000, HAL-E-SA-E-1010, HAL-E-SA-E-1020, HAL-E-SA-E-1030, HAL-E-SA-E-1040, HAL-E-SA-M-650, HAL-E-SA-M-660, HAL-E-SA-M-670, HAL-E-SA-M-680, HAL-E-SA-M-690, HAL-E-SA-M-700, HAL-E-SA-M-710, HAL-E-SA-A-900, HAL-E-SA-A-910, HAL-E-SA-A-920, HAL-E-SA-A-930, HAL-E-SA-A-940, HAL-E-SA-A-950, HAL-E-SA-A-960 | resources Mason [16 h]; Construction Cost [11905.5] → Mason [16 h]; Construction Cost [8441.61] |
| HAL-C-B-S-607 | Rebar for Grade Beams | 2026-06-08 A → 2026-04-15 A (-54d) | 2026-06-09 A → 2026-04-29 A (-41d) |  | HAL-C-B-S-557, HAL-E-SA-C-860, HAL-E-SA-C-870, HAL-P-DL-C-130 → HAL-C-B-S-557, HAL-E-SA-C-860, HAL-E-SA-C-870 | resources Steel Fixer [80 h]; Construction Cost [27194.5] → Steel Fixer [80 h]; Construction Cost [24993.1] |
| HAL-C-B-S-617 | Formwork for Grade Beams | 2026-06-10 A → 2026-04-15 A (-56d) | 2026-06-14 A → 2026-04-29 A (-46d) |  | HAL-C-B-S-607 → HAL-C-B-S-607, HAL-E-SA-EX-790, HAL-E-SA-EX-800, HAL-E-SA-EX-830, HAL-E-SA-EX-840, HAL-E-SA-EX-810, HAL-E-SA-EX-850, HAL-E-SA-EX-820, HAL-E-SA-EX-860, HAL-E-SA-EX-870, HAL-E-SA-EX-880, HAL-E-SA-EX-890 | resources Carperter [32 h]; Construction Cost [6798.61] → Carperter [32 h]; Construction Cost [6248.27] |
| HAL-C-B-S-767 | Anchor bolts installation | 2026-06-11 A → 2026-04-25 A (-47d) | 2026-06-13 A → 2026-04-29 A (-45d) |  |  | resources Carperter [32 h]; Construction Cost [57238.8] → Carperter [32 h]; Construction Cost [5667.68] |

| ID | Task | Start | Finish | Duration | Complete | Total float | Predecessors | Other |
| --- | --- | --- | --- | --- | --- | --- | --- | --- |
| HAL-C-B-S-567 | Pouring Concrete for Grade Beams | 2026-06-15 A → 2026-04-29 A (-47d) | 2026-06-15 A → 2026-04-29 A (-47d) |  |  |  | HAL-C-B-S-617, HAL-C-B-S-767, HAL-P-DL-C-110 → HAL-C-B-S-617, HAL-C-B-S-767 | resources Mason [16 h]; Carperter [16 h]; Concrete Mixer [8 h]; Steel Fixer [16 h]; Equipment Operator [16 h]; Construction Cost [33993.1] → Mason [16 h]; Carperter [16 h]; Concrete Mixer [8 h]; Steel Fixer [16 h]; Equipment Operator [16 h]; Construction Cost [31241.3] |
| HAL-C-B-S-717 | Damp proof /Bitumin paint on Grade Beams | 2026-06-20 A → 2026-05-06 A (-45d) | 2026-06-22 A → 2026-05-07 A (-46d) |  |  |  |  | resources Painter [32 h]; Construction Cost [24777.7] → Painter [32 h]; Construction Cost [6903.81] |
| 5 | **SLAB ON GRADE** | 2026-06-28 → 2026-05-09 (-50d) | 2026-11-04 → 2026-06-20 (-137d) |  |  |  |  |  |
| HAL-C-B-S-747 | Backfilling / Compaction for Slab on Grade | 2026-06-28 A → 2026-05-09 A (-50d) | 2026-07-06 A → 2026-05-20 A (-47d) | 7d → 12d |  |  | HAL-C-B-S-717 → HAL-C-B-S-717, HAL-E-SA-E-1050, HAL-E-SA-E-1060, HAL-E-SA-E-1070, HAL-E-SA-E-1080, HAL-E-SA-E-1090, HAL-E-SA-E-1100, HAL-E-SA-E-1110, HAL-E-SA-M-720, HAL-E-SA-M-730, HAL-E-SA-M-740, HAL-E-SA-M-750, HAL-E-SA-M-760, HAL-E-SA-M-770, HAL-E-SA-M-780, HAL-E-SA-M-790, HAL-E-SA-M-800 | resources Mini Roller Compactor [128 h]; General Labour [256 h]; Equipment Operator [256 h]; Wheel Loader [128 h]; Truck [128 h]; Construction Cost [23023.1] → Mini Roller Compactor [128 h]; General Labour [256 h]; Equipment Operator [256 h]; Wheel Loader [128 h]; Truck [128 h]; Construction Cost [32707.9] |
| HAL-C-B-S-577 | Pouring Concrete for Ground Slab | 2026-08-18 A → 2026-06-01 A (-78d) | 2026-08-23 A → 2026-06-04 A (-80d) |  |  |  |  | resources Mason [64 h]; Carperter [64 h]; Steel Fixer [64 h]; Concrete Mixer [32 h]; Equipment Operator [64 h]; Construction Cost [344195] → Mason [64 h]; Carperter [64 h]; Steel Fixer [64 h]; Concrete Mixer [32 h]; Equipment Operator [64 h]; Construction Cost [304092] |
| HAL-C-B-S-697 | Anti Termite Treatment below Ground Slab | 2026-08-18 A → 2026-06-01 A (-78d) | 2026-08-23 A → 2026-06-04 A (-80d) |  |  |  | HAL-C-B-S-747, HAL-C-B-S-747 FF → HAL-C-B-S-747, HAL-C-B-S-747 FF, HAL-E-MT-ENV-2060, HAL-E-SA-E-1120, HAL-E-SA-E-1130, HAL-E-SA-E-1140, HAL-E-SA-E-1150, HAL-E-SA-E-1160, HAL-E-SA-E-1170, HAL-E-SA-E-1180 | resources General Labour [16 h]; Construction Cost [15874.1] → General Labour [16 h]; Construction Cost [11255.5] |
| HAL-C-B-S-727 | Vapour barrier for below Ground Slab | 2026-08-18 A → 2026-06-01 A (-78d) | 2026-08-23 A → 2026-06-04 A (-80d) |  |  |  |  | resources General Labour [32 h]; Construction Cost [13233.5] → General Labour [32 h]; Construction Cost [10050.1] |
| HAL-C-B-S-757 | Concrete pad | 2026-10-28 → 2026-06-17 A (-133d) | 2026-11-04 → 2026-06-20 A (-137d) |  | 0% → 100% | 9d → none |  | resources Mason [112 h]; Construction Cost [907.11] → Mason [224 h]; Construction Cost [1803.82] |
| 4 | **COLUMNS & BEAMS** | 2026-06-08 → 2026-02-28 (-100d) | 2026-10-06 → 2026-07-16 (-82d) |  |  |  |  |  |
| HAL-C-B-S-6101 | Rebar for Tie Beams | 2026-06-08 A → 2026-02-28 A (-100d) | 2026-06-13 A → 2026-03-02 A (-103d) |  |  |  |  | resources Steel Fixer [64 h]; Construction Cost [7263.64] → Steel Fixer [64 h]; Construction Cost [7796.52] |
| HAL-C-B-S-6102 | Formwork for Tie Beams | 2026-06-11 A → 2026-03-02 A (-101d) | 2026-06-14 A → 2026-03-04 A (-102d) |  |  |  |  | resources Carperter [32 h]; Construction Cost [1815.91] → Carperter [32 h]; Construction Cost [1949.44] |
| HAL-C-B-S-6103 | Pouring Concrete for Tie Beams | 2026-06-15 A → 2026-03-05 A (-102d) | 2026-06-15 A → 2026-03-05 A (-102d) |  |  |  |  | resources Mason [16 h]; Carperter [16 h]; Concrete Mixer [32 h]; Steel Fixer [16 h]; Equipment Operator [16 h]; Construction Cost [9079.54] → Mason [16 h]; Carperter [16 h]; Concrete Mixer [8 h]; Steel Fixer [16 h]; Equipment Operator [16 h]; Construction Cost [9745.95] |
| HAL-C-B-S-5101 | Rebar for column | 2026-07-18 A → 2026-06-01 A (-47d) | 2026-07-20 A → 2026-06-04 A (-46d) | 5d → 7d |  |  | HAL-C-B-S-747, HAL-E-SA-C-820 → HAL-C-B-S-747, HAL-E-SA-C-820, HAL-C-B-M-510 | resources Steel Fixer [112 h]; Construction Cost [20144] → Steel Fixer [112 h]; Construction Cost [18494.8] |
| HAL-C-B-S-5102 | Formwork for column | 2026-07-23 A → 2026-06-09 A (-44d) | 2026-08-11 A → 2026-06-11 A (-61d) |  |  |  | HAL-C-B-S-5101 → HAL-C-B-S-5101, HAL-E-SA-EX-1050 | resources Carperter [64 h]; Construction Cost [5036.01] → Carperter [64 h]; Construction Cost [4623.84] |
| HAL-C-B-S-5103 | Pouring Concrete for column | 2026-07-26 A → 2026-06-13 A (-43d) | 2026-08-13 A → 2026-06-13 A (-61d) |  |  |  |  | resources Mason [16 h]; Carperter [16 h]; Concrete Mixer [32 h]; Steel Fixer [16 h]; Equipment Operator [16 h]; Construction Cost [25180.1] → Mason [16 h]; Carperter [16 h]; Concrete Mixer [8 h]; Steel Fixer [16 h]; Equipment Operator [16 h]; Construction Cost [23118.6] |
| HAL-C-B-S-6113 | Rebar for Beams | 2026-09-21 A → 2026-07-08 A (-75d) | 2026-09-22 A → 2026-07-16 A (-68d) |  |  |  |  | resources Steel Fixer [64 h]; Construction Cost [13379.1] → Steel Fixer [64 h]; Construction Cost [11954.6] |
| HAL-C-B-S-6123 | Formwork for Beams | 2026-09-28 A → 2026-07-08 A (-82d) | 2026-10-04 A → 2026-07-16 A (-80d) |  |  |  |  | resources Carperter [32 h]; Construction Cost [3344.77] → Carperter [32 h]; Construction Cost [2988.97] |
| HAL-C-B-S-6133 | Pouring Concrete for Beams | 2026-10-01 A → 2026-07-11 A (-82d) | 2026-10-06 A → 2026-07-16 A (-82d) |  |  |  |  | resources Mason [16 h]; Carperter [16 h]; Concrete Mixer [32 h]; Steel Fixer [16 h]; Equipment Operator [16 h]; Construction Cost [16723.9] → Mason [16 h]; Carperter [16 h]; Concrete Mixer [8 h]; Steel Fixer [16 h]; Equipment Operator [16 h]; Construction Cost [14943.6] |
| 5 | **STRUCTURAL STEEL** | 2026-07-06 → 2026-05-16 (-51d) | 2026-10-27 → 2026-08-15 (-73d) |  |  |  |  |  |
| HAL-C-B-SS-150 | Installation of columns | 2026-07-06 A → 2026-05-16 A (-51d) | 2026-07-06 A → 2026-05-20 A (-47d) |  |  |  | HAL-C-B-S-577, HAL-E-SA-C-790, HAL-E-DL-A-1700 → HAL-E-SA-C-790, HAL-E-ST-A-1700, HAL-C-B-S-717 | resources Structural Steel Fixer [80 h]; General Labour [80 h]; Equipment Operator [80 h]; Mobile Crane [24 h]; Construction Cost [217508] → Structural Steel Fixer [80 h]; General Labour [80 h]; Equipment Operator [80 h]; Mobile Crane [40 h]; Construction Cost [164363] |
| HAL-C-B-SS-160 | Installation of raft and purlins | 2026-07-06 A → 2026-05-16 A (-51d) | 2026-07-07 A → 2026-05-20 A (-48d) |  |  |  |  | resources Structural Steel Fixer [160 h]; General Labour [160 h]; Mobile Crane [56 h]; Equipment Operator [160 h]; Construction Cost [326261] → Structural Steel Fixer [160 h]; General Labour [160 h]; Mobile Crane [80 h]; Equipment Operator [160 h]; Construction Cost [340061] |
| HAL-C-A1-SS-1030 | Steel members for external platform | 2026-08-30 A → 2026-05-25 A (-97d) | 2026-08-31 A → 2026-05-31 A (-92d) | 7d → 5d |  |  | HAL-C-B-SS-1030, HAL-C-B-S-6133 → HAL-C-B-SS-1030 | resources Construction Cost [18670.8]; General Labour [112 h]; Mobile Crane [56 h]; Structural Steel Fixer [112 h]; Equipment Operator [112 h] → Construction Cost [27249.1]; General Labour [112 h]; Mobile Crane [56 h]; Structural Steel Fixer [112 h]; Equipment Operator [112 h] |
| HAL-C-B-SS-1030 | Steel members for office area | 2026-10-11 A → 2026-05-25 A (-139d) | 2026-10-12 A → 2026-05-31 A (-134d) | 7d → 5d |  |  |  | resources Construction Cost [115805]; Equipment Operator [112 h]; General Labour [112 h]; Mobile Crane [40 h]; Structural Steel Fixer [112 h] → Construction Cost [97318.2]; Equipment Operator [112 h]; General Labour [112 h]; Mobile Crane [56 h]; Structural Steel Fixer [112 h] |
| HAL-C-B-SS-1020 | Intumescent paint to steel works | 2026-07-25 A → 2026-06-13 A (-42d) | 2026-08-17 A → 2026-06-22 A (-56d) | 7d → 5d |  |  | HAL-C-B-S-747, HAL-E-DL-A-1700, HAL-C-B-SS-160 → HAL-C-B-S-747, HAL-E-ST-A-1700, HAL-C-B-SS-160 | resources Painter [112 h]; Construction Cost [317760] → Painter [112 h]; Construction Cost [269284] |
| HAL-C-B-SS-190 | Installation of roof sheet | 2026-08-24 A → 2026-06-22 A (-63d) | 2026-08-30 A → 2026-06-30 A (-61d) | 5d → 7d |  |  | HAL-C-B-A-170, HAL-C-B-SS-1020, HAL-C-B-S-6133, HAL-E-SA-C-810, HAL-C-A1-SS-1020, HAL-P-ST-A-190, HAL-P-ST-A-180 → HAL-C-B-A-170, HAL-C-B-SS-1020, HAL-C-B-S-6133, HAL-E-SA-C-810 | resources Roof sheet worker [160 h]; General Labour [160 h]; Mobile Crane [40 h]; Equipment Operator [160 h]; Construction Cost [217508] → Roof sheet worker [160 h]; General Labour [160 h]; Mobile Crane [80 h]; Equipment Operator [160 h]; Construction Cost [453414] |
| HAL-C-A1-SS-1040 | Epoxy paint for external platform | 2026-10-20 → 2026-07-28 A (-84d) | 2026-10-25 → 2026-07-30 A (-87d) |  | 0% → 100% | 2d → none |  | resources Painter [80 h]; Construction Cost [3734.16] → Painter [80 h]; Construction Cost [6812.27] |
| HAL-C-B-SS-180 | Installation of wall sandwich panel | 2026-10-11 A → 2026-08-01 A (-71d) | 2026-10-13 A → 2026-08-13 A (-61d) |  |  |  |  | resources Sandwich panel worker [112 h]; General Labour [112 h]; Mobile Crane [40 h]; Equipment Operator [112 h]; Construction Cost [326261] → Sandwich panel worker [112 h]; General Labour [112 h]; Mobile Crane [56 h]; Equipment Operator [112 h]; Construction Cost [170030] |
| HAL-C-A1-SS-1020 | Epoxy paint to steel members at office area | 2026-10-20 → 2026-08-13 A (-68d) | 2026-10-27 → 2026-08-15 A (-73d) | 7d → 5d | 0% → 100% | 0d → none |  | resources Painter [112 h]; Construction Cost [23161] → Painter [112 h]; Construction Cost [24329.5] |
| 2 | **ARCHITECTURAL** | 2026-08-15 → 2026-06-17 (-59d) | 2027-01-06 → 2026-10-28 (-70d) |  |  |  |  |  |
| 1 | **MASONARY WORKS** | 2026-08-29 → 2026-06-17 (-73d) | 2026-09-15 → 2026-07-05 (-72d) |  |  |  |  |  |
| HAL-C-B-A-170 | Block work at factory area | 2026-08-29 A → 2026-06-17 A (-73d) | 2026-09-07 A → 2026-07-05 A (-64d) |  |  |  | HAL-C-B-S-577, HAL-C-B-SS-160, HAL-E-SA-A-830, HAL-E-SA-A-840, HAL-E-SA-A-860, HAL-E-SA-A-870, HAL-E-MT-A-2020, HAL-P-ST-A-200 → HAL-C-B-S-577, HAL-C-B-SS-160, HAL-E-SA-A-830, HAL-E-SA-A-840, HAL-E-SA-A-860, HAL-E-SA-A-870, HAL-E-MT-A-2020, HAL-P-ST-A-200, HAL-C-A1-SS-1040, HAL-C-A1-SS-1020, HAL-P-ST-E-370 | resources AAC panel erector [240 h]; General Labour [240 h]; Equipment Operator [240 h]; Mobile Crane [120 h]; Construction Cost [58338.7] → AAC panel erector [240 h]; General Labour [240 h]; Equipment Operator [240 h]; Mobile Crane [120 h]; Construction Cost [38856.6] |
| HAL-C-B-A-200 | Block work at office area | 2026-08-30 A → 2026-06-17 A (-74d) | 2026-09-09 A → 2026-07-05 A (-66d) |  |  |  | HAL-C-B-A-170, HAL-C-B-SS-1030, HAL-C-A1-SS-1040, HAL-C-A1-SS-1020, HAL-C-B-SS-1020 → HAL-C-B-A-170, HAL-C-B-SS-190, HAL-C-B-SS-1030 | resources AAC panel erector [160 h]; General Labour [160 h]; Mobile Crane [56 h]; Equipment Operator [160 h]; Construction Cost [6179.18] → AAC panel erector [160 h]; General Labour [160 h]; Mobile Crane [80 h]; Equipment Operator [160 h]; Construction Cost [9714] |
| HAL-C-B-A-620 | Block work at toilet area | 2026-08-31 A → 2026-06-17 A (-75d) | 2026-09-15 A → 2026-07-05 A (-72d) |  |  |  | HAL-C-B-A-200 → HAL-C-B-A-200, HAL-P-ST-E-320 | resources Mason [112 h]; Construction Cost [14436.3] → Mason [112 h]; Construction Cost [15836.3] |
| 5 | **WALL FINISHES** | 2026-10-15 → 2026-08-02 (-74d) | 2026-12-14 → 2026-10-25 (-50d) |  |  |  |  |  |
| HAL-C-B-A-630 | Internal Wall Plaster | 2026-10-15 A → 2026-08-02 A (-74d) | 2026-10-19 A → 2026-08-13 A (-67d) |  |  |  | HAL-C-B-A-620, HAL-C-B-E-413, HAL-E-SA-A-1170, HAL-E-SA-A-880, HAL-C-B-S-757 → HAL-C-B-A-620, HAL-C-B-E-413, HAL-E-SA-A-1170, HAL-E-SA-A-880, HAL-C-B-S-757, HAL-P-ST-E-350, HAL-P-ST-E-340 | resources Mason [240 h]; Construction Cost [48590.2] → Mason [240 h]; Construction Cost [29610.2] |
| HAL-C-B-A-680 | Paint to Plaster (Primer, Putty & First Coat) | 2026-12-07 → 2026-08-25 A (-104d) | 2026-12-14 → 2026-10-25 A (-50d) |  | 0% → 100% | 3.6d → none |  | resources Painter [112 h]; Construction Cost [44167.3] → Painter [112 h]; Construction Cost [26649.5] |
| 2 | **CIELING FINISHES** | 2026-11-29 → 2026-09-19 (-71d) | 2026-12-03 → 2026-09-24 (-70d) |  |  |  |  |  |
| HAL-C-B-A-690 | Installation of Ceiling Gypsum Board | 2026-11-29 → 2026-09-19 A (-71d) | 2026-12-03 → 2026-09-24 A (-70d) |  | 0% → 100% | 0d → none | HAL-C-B-A-670, HAL-C-B-S-757, HAL-E-SA-A-890, HAL-P-ST-A-330, HAL-E-ST-E-0230, HAL-P-ST-E-280, HAL-P-ST-E-270 → HAL-C-B-A-670, HAL-C-B-S-757, HAL-E-SA-A-890, HAL-P-ST-A-330 | resources Carperter [80 h]; Construction Cost [46792.3] → Carperter [80 h]; Construction Cost [44650.2] |
| 6 | **FLOOR FINISHES** | 2026-11-21 → 2026-09-08 (-74d) | 2027-01-06 → 2026-10-15 (-83d) |  |  |  |  |  |
| HAL-C-B-A-700 | Tiles for Office Area | 2026-12-05 → 2026-09-08 A (-88d) | 2026-12-06 → 2026-09-10 A (-87d) |  | 0% → 100% | 0d → none | HAL-C-B-A-690 → HAL-C-B-A-690, HAL-P-ST-M-3410, HAL-P-ST-M-560, HAL-P-ST-M-420 | resources Tile Fixer [32 h]; Construction Cost [26867.3] → Tile Fixer [32 h]; Construction Cost [25626.5] |
| HAL-C-B-A-670 | Tiles for Toilet | 2026-11-21 → 2026-09-22 A (-60d) | 2026-11-28 → 2026-09-24 A (-65d) |  | 0% → 100% | 0d → none | HAL-C-B-A-810, HAL-E-SA-A-900, HAL-E-SA-A-910, HAL-P-ST-A-280, HAL-C-B-SS-190 → HAL-C-B-A-810, HAL-E-SA-A-900, HAL-E-SA-A-910, HAL-P-ST-A-280, HAL-P-ST-E-330, HAL-P-ST-E-300, HAL-P-ST-E-290 | resources Tile Fixer [112 h]; Construction Cost [46530.7] → Tile Fixer [112 h]; Construction Cost [48089.6] |
| HAL-C-B-A-830 | Granite strip | 2026-12-07 → 2026-09-22 A (-76d) | 2026-12-08 → 2026-09-24 A (-75d) |  | 0% → 100% | 0d → none | HAL-C-B-A-700, HAL-P-ST-A-290 → HAL-C-B-A-700, HAL-P-ST-A-290, HAL-P-ST-M-580 | resources Tile Fixer [32 h]; Construction Cost [671.12] → Tile Fixer [32 h]; Construction Cost [1454.24] |
| HAL-C-B-A-850 | Epoxy paint | 2027-01-02 → 2026-09-24 A (-100d) | 2027-01-06 → 2026-10-15 A (-83d) | 5d → 7d | 0% → 100% | 0d → none | HAL-C-B-A-790, HAL-C-B-A-960, HAL-P-ST-A-310 → HAL-C-B-A-960, HAL-P-ST-A-310 | resources Painter [112 h]; Construction Cost [115420] → Painter [112 h]; Construction Cost [102516] |
| 3 | **DOORS & WINDOWS** | 2026-10-28 → 2026-07-29 (-91d) | 2026-11-15 → 2026-09-26 (-50d) |  |  |  |  |  |
| HAL-C-B-A-1010 | Window (CW1) | 2026-10-28 → 2026-07-29 A (-91d) | 2026-11-04 → 2026-09-24 A (-41d) |  | 0% → 100% | 0d → none |  | resources Carperter [112 h]; Construction Cost [94173.2] → Carperter [112 h]; Construction Cost [90682.8] |
| HAL-C-B-A-960 | Skylight fixtures installation | 2026-11-12 → 2026-08-08 A (-96d) | 2026-11-15 → 2026-08-15 A (-92d) | 3d → 7d | 0% → 100% | 0d → none |  | resources Carperter [112 h]; Construction Cost [6489.89] → Carperter [112 h]; Construction Cost [61929.7] |
| HAL-C-B-A-640 | Roll up Shutter Door | 2026-11-05 → 2026-08-13 A (-84d) | 2026-11-05 → 2026-08-15 A (-82d) |  | 0% → 100% | 0d → none |  | resources Carperter [16 h]; Construction Cost [68619.2] → Carperter [16 h]; Construction Cost [66353.3] |
| HAL-C-B-A-650 | Supply and install (D5) 1000*2200mm single leaf steel door with door | 2026-11-07 → 2026-08-26 A (-73d) | 2026-11-07 → 2026-09-10 A (-58d) |  | 0% → 100% | 0d → none |  | resources Carperter [16 h]; Construction Cost [16016.2] → Carperter [16 h]; Construction Cost [15482.4] |
| HAL-C-B-A-950 | Supply and install fire rated 45 min (D2) 1200*2200 mm single leaf steel door | 2026-11-11 → 2026-08-26 A (-77d) | 2026-11-11 → 2026-09-10 A (-62d) |  | 0% → 100% | 0d → none | HAL-C-B-A-940, HAL-P-DL-E-210 → HAL-C-B-A-940 | resources Carperter [16 h]; Construction Cost [16711.5] → Carperter [16 h]; Construction Cost [16146] |
| HAL-C-B-A-710 | Supply and install (D4) 800*2200 mm single leaf aluminum door with door | 2026-11-08 → 2026-09-14 A (-55d) | 2026-11-08 → 2026-09-26 A (-43d) |  | 0% → 100% | 0d → none |  | resources Carperter [16 h]; Construction Cost [22737.8] → Carperter [16 h]; Construction Cost [21896.6] |
| HAL-C-B-A-720 | Supply and install (D7) 1000*2200 mm single leaf aluminum door with door | 2026-11-09 → 2026-09-14 A (-56d) | 2026-11-09 → 2026-09-26 A (-44d) |  | 0% → 100% | 0d → none |  | resources Carperter [16 h]; Construction Cost [7811.07] → Carperter [16 h]; Construction Cost [7520.04] |
| HAL-C-B-A-940 | Supply and install (D3) 1000*2200 mm single leaf aluminum door with door | 2026-11-10 → 2026-09-14 A (-57d) | 2026-11-10 → 2026-09-26 A (-45d) |  | 0% → 100% | 0d → none | HAL-C-B-A-720 → HAL-C-B-A-720, HAL-P-ST-EN-130 | resources Carperter [16 h]; Construction Cost [16016.2] → Carperter [16 h]; Construction Cost [15482.4] |
| 4 | **WATER PROOFING WORKS** | 2026-11-16 → 2026-08-11 (-97d) | 2026-11-19 → 2026-08-13 (-98d) |  |  |  |  |  |
| HAL-C-B-A-810 | Waterproofing membrane for toilets | 2026-11-16 → 2026-08-11 A (-97d) | 2026-11-19 → 2026-08-13 A (-98d) |  | 0% → 100% | 0d → none |  | resources General Labour [64 h]; Construction Cost [4879.02] → General Labour [64 h]; Construction Cost [4653.33] |
| 7 | **METAL WORKS** | 2026-08-15 → 2026-08-17 (+2d) | 2026-12-21 → 2026-10-25 (-57d) |  |  |  |  |  |
| HAL-C-B-A-740 | Steel Ladder | 2026-12-09 → 2026-08-17 A (-114d) | 2026-12-10 → 2026-08-29 A (-103d) |  | 0% → 100% | 0d → none |  | resources Steel Fixer [32 h]; General Labour [32 h]; Construction Cost [9839.16] → Steel Fixer [32 h]; General Labour [32 h]; Construction Cost [9510.64] |
| HAL-C-B-A-760 | Aluminium composite panel | 2026-12-16 → 2026-09-05 A (-102d) | 2026-12-21 → 2026-10-03 A (-79d) |  | 0% → 100% | 0d → none | HAL-C-B-A-840, HAL-P-ST-A-1720 → HAL-C-B-A-840 SS, HAL-P-ST-A-1720 | resources Steel Fixer [80 h]; General Labour [80 h]; Construction Cost [175889] → Steel Fixer [80 h]; General Labour [80 h]; Construction Cost [175670] |
| HAL-C-B-A-750 | Galvanised Steel Gratings | 2026-08-15 A → 2026-10-06 A (+52d) | 2026-08-15 A → 2026-10-07 A (+53d) |  |  |  |  | resources Steel Fixer [32 h]; General Labour [32 h]; Construction Cost [6455.16] → Steel Fixer [32 h]; General Labour [32 h]; Construction Cost [6237.21] |
| HAL-C-B-A-840 | Steel railing works | 2026-12-12 → 2026-10-24 A (-49d) | 2026-12-15 → 2026-10-25 A (-51d) |  | 0% → 100% | 0d → none | HAL-C-B-A-740, HAL-P-ST-A-230 → HAL-C-B-A-740, HAL-P-ST-A-230, HAL-P-ST-EX-150, HAL-P-DL-EX-140, HAL-P-ST-EX-140, HAL-P-ST-EX-130, HAL-P-DL-EX-110, HAL-P-DL-EX-100, HAL-P-DL-EX-90 | resources Steel Fixer [64 h]; General Labour [64 h]; Construction Cost [1533.98] → Steel Fixer [64 h]; General Labour [64 h]; Construction Cost [7497.92] |
| 8 | **SPECIALTIES** | 2026-12-22 → 2026-09-22 (-91d) | 2026-12-31 → 2026-10-28 (-64d) |  |  |  |  |  |
| HAL-C-B-A-770 | Installation of fittings | 2026-12-22 → 2026-09-22 A (-91d) | 2026-12-27 → 2026-09-24 A (-94d) |  | 0% → 100% | 0d → none | HAL-C-B-A-750, HAL-P-ST-M-570 → HAL-C-B-A-750 SS, HAL-P-ST-M-570 | resources Plumber [80 h]; Construction Cost [22981.3] → Plumber [80 h]; Construction Cost [21686.5] |
| HAL-C-B-A-790 | Furniture Installation | 2026-12-31 → 2026-10-21 A (-71d) | 2026-12-31 → 2026-10-21 A (-71d) |  | 0% → 100% | 0d → none | HAL-C-B-A-1000 → HAL-C-B-A-1000 SS | resources General Labour [16 h]; Mason [16 h]; Construction Cost [12468.8] → General Labour [16 h]; Mason [16 h]; Construction Cost [10561.2] |
| HAL-C-B-A-1000 | Identification sign; ID01 & ID02 | 2026-12-28 → 2026-10-26 (-63d) | 2026-12-30 → 2026-10-28 (-63d) |  |  | 0d → 6d |  | resources Mason [48 h]; Construction Cost [9630.56] → Mason [48 h]; Construction Cost [9289.46] |
| 3 | **MECHANICAL** | 2026-07-14 → 2026-04-25 (-80d) | 2027-01-06 → 2026-09-24 (-104d) |  |  |  |  |  |
| 1 | **HVAC** | 2026-12-15 → 2026-07-11 (-157d) | 2027-01-03 → 2026-09-24 (-101d) |  |  |  |  |  |
| 1 | **FIRST STAGE** | 2026-12-22 → 2026-07-11 (-164d) | 2026-12-26 → 2026-08-02 (-146d) |  |  |  |  |  |
| HAL-C-B-M-450 | Installation of HVAC Ducts | 2026-12-22 → 2026-07-11 A (-164d) | 2026-12-23 → 2026-08-02 A (-143d) |  | 0% → 100% | 14.7d → none |  | resources Ductman [32 h]; Construction Cost [149489] → Ductman [32 h]; Construction Cost [141482] |
| HAL-C-B-M-480 | Installation of Duct insulation | 2026-12-24 → 2026-07-11 A (-166d) | 2026-12-26 → 2026-08-02 A (-146d) |  | 0% → 100% | 14.7d → none |  | resources Ductman [32 h]; Construction Cost [21205.4] → Ductman [32 h]; Construction Cost [18747.3] |
| 2 | **SECOND STAGE** | 2026-12-15 → 2026-08-02 (-135d) | 2027-01-03 → 2026-09-24 (-101d) |  |  |  |  |  |
| HAL-C-B-M-440 | Installation of Exhaust Fans | 2026-12-15 → 2026-08-02 A (-135d) | 2026-12-16 → 2026-08-02 A (-136d) |  | 0% → 100% | 14.7d → none |  | resources AC Technician [32 h]; Construction Cost [7938.56] → AC Technician [32 h]; Construction Cost [9331.24] |

| ID | Task | Start | Finish | Duration | Complete | Total float | Predecessors | Other |
| --- | --- | --- | --- | --- | --- | --- | --- | --- |
| HAL-C-B-M-470 | Installation of Wall Propeller Type Exhaust Fan | 2026-12-17 → 2026-09-02 A (-106d) | 2026-12-21 → 2026-09-12 A (-100d) |  | 0% → 100% | 14.7d → none |  | resources AC Technician [64 h]; Construction Cost [46831.6] → AC Technician [64 h]; Construction Cost [17417.7] |
| HAL-C-B-M-650 | Supply, install, test and commission door grilles & exhaust louvers | 2027-01-02 → 2026-09-02 A (-122d) | 2027-01-03 → 2026-09-12 A (-113d) |  | 0% → 100% | 11.7d → none | HAL-C-B-M-460, HAL-C-B-A-790 → HAL-C-B-M-460 | resources Ductman [32 h]; Construction Cost [5574.4] → Ductman [32 h]; Construction Cost [7188.28] |
| HAL-C-B-M-460 | Installation of Diffuser | 2026-12-27 → 2026-09-16 A (-102d) | 2026-12-28 → 2026-09-24 A (-95d) |  | 0% → 100% | 14.7d → none |  | resources Ductman [32 h]; Construction Cost [2144] → Ductman [32 h]; Construction Cost [2764.72] |
| 2 | **FIRE FIGHTING SYSTEM** | 2026-10-11 → 2026-06-24 (-109d) | 2027-01-06 → 2026-09-12 (-116d) |  |  |  |  |  |
| 1 | **FIRST STAGE** | 2026-10-11 → 2026-06-24 (-109d) | 2026-10-15 → 2026-08-08 (-68d) |  |  |  |  |  |
| HAL-C-B-M-610 | Installation of Fire Fighting Pipes (Seamless Black Steel) | 2026-10-11 A → 2026-06-24 A (-109d) | 2026-10-15 A → 2026-08-08 A (-68d) |  |  |  |  | resources Pipe Fitter [112 h]; Construction Cost [72394.8] → Pipe Fitter [112 h]; Construction Cost [60425.7] |
| HAL-C-B-M-620 | Installation of Fire Fighting Valve | 2026-10-11 A → 2026-06-24 A (-109d) | 2026-10-15 A → 2026-08-08 A (-68d) |  |  |  |  | resources Pipe Fitter [80 h]; Construction Cost [12199.4] → Pipe Fitter [80 h]; Construction Cost [12712.2] |
| 2 | **SECOND STAGE** | 2026-12-15 → 2026-07-11 (-157d) | 2027-01-06 → 2026-09-12 (-116d) |  |  |  |  |  |
| HAL-C-B-M-630 | Installation of Fire Hose Cabinet | 2026-12-15 → 2026-07-11 A (-157d) | 2026-12-17 → 2026-09-12 A (-96d) |  | 0% → 100% | 17d → none |  | resources Pipe Fitter [48 h]; Construction Cost [15158.6] → Pipe Fitter [48 h]; Construction Cost [11147.4] |
| HAL-C-B-M-680 | Supply, install, test and commission Fire Department Connection(FDC) | 2027-01-04 → 2026-07-11 A (-177d) | 2027-01-06 → 2026-08-08 A (-151d) |  | 0% → 100% | 11.7d → none |  | resources Pipe Fitter [48 h]; Construction Cost [2706.06] → Pipe Fitter [48 h]; Construction Cost [2598.84] |
| 3 | **SEWER AND DRAINAGE SYSTEM** | 2026-07-14 → 2026-04-25 (-80d) | 2026-12-16 → 2026-09-22 (-85d) |  |  |  |  |  |
| 1 | **FIRST STAGE** | 2026-07-14 → 2026-04-25 (-80d) | 2026-11-30 → 2026-08-08 (-114d) |  |  |  |  |  |
| HAL-C-B-M-510 | Installation of Sanitary Waste / Drainage Pipes | 2026-07-14 A → 2026-04-25 A (-80d) | 2026-07-18 A → 2026-05-16 A (-63d) |  |  |  |  | resources Plumber [64 h]; Construction Cost [18585.1] → Plumber [64 h]; Construction Cost [14362.4] |
| HAL-C-B-M-530 | Installation of Floor Drain | 2026-11-29 → 2026-06-17 A (-165d) | 2026-11-30 → 2026-08-08 A (-114d) |  | 0% → 100% | 14.6d → none |  | resources Plumber [32 h]; Construction Cost [11056] → Plumber [32 h]; Construction Cost [10616.5] |
| HAL-C-B-M-690 | Installation of Trench drain | 2026-07-15 A → 2026-06-17 A (-28d) | 2026-07-18 A → 2026-08-08 A (+21d) |  |  |  |  | resources Plumber [80 h]; Construction Cost [11508.8] → Plumber [80 h]; Construction Cost [11379.6] |
| 2 | **SECOND STAGE** | 2026-12-01 → 2026-08-05 (-118d) | 2026-12-16 → 2026-09-22 (-85d) |  |  |  |  |  |
| HAL-C-B-M-550 | Installation of Roof Vent Cap | 2026-12-15 → 2026-08-05 A (-132d) | 2026-12-16 → 2026-09-05 A (-102d) |  | 0% → 100% | 14.6d → none |  | resources Pipe Fitter [32 h]; Construction Cost [927.12] → Pipe Fitter [32 h]; Construction Cost [829.41] |
| HAL-C-B-M-490 | Installation of Electric Water Heater | 2026-12-01 → 2026-08-06 A (-117d) | 2026-12-02 → 2026-08-06 A (-118d) |  | 0% → 100% | 14.6d → none |  | resources Plumber [32 h]; Construction Cost [1819.51] → Plumber [32 h]; Construction Cost [1592.48] |
| HAL-C-B-M-540 | Installation of Water Tap | 2026-12-13 → 2026-08-25 A (-110d) | 2026-12-14 → 2026-09-16 A (-89d) |  | 0% → 100% | 14.6d → none |  | resources Plumber [32 h]; Construction Cost [2874.14] → Plumber [32 h]; Construction Cost [2654.13] |
| HAL-C-B-M-500 | Installation of Sanitary Fixture and Accessories | 2026-12-03 → 2026-09-16 A (-78d) | 2026-12-07 → 2026-09-22 A (-76d) |  | 0% → 100% | 14.6d → none | HAL-C-B-M-490, HAL-P-ST-M-360 → HAL-C-B-M-490, HAL-P-ST-M-360, HAL-C-B-A-850 | resources Plumber [64 h]; Construction Cost [19921.7] → Plumber [64 h]; Construction Cost [16243] |
| HAL-C-B-M-520 | Installation of Lavotary /Wash Basin | 2026-12-08 → 2026-09-16 A (-83d) | 2026-12-09 → 2026-09-22 A (-78d) |  | 0% → 100% | 14.6d → none |  | resources Plumber [32 h]; Construction Cost [21416.7] → Plumber [32 h]; Construction Cost [20348.3] |
| HAL-C-B-M-580 | Installation of Bib Tap | 2026-12-10 → 2026-09-16 A (-85d) | 2026-12-12 → 2026-09-22 A (-81d) |  | 0% → 100% | 14.6d → none |  | resources Plumber [32 h]; Construction Cost [1900.66] → Plumber [32 h]; Construction Cost [2211.78] |
| 4 | **WATER SUPPLY SYSTEM** | 2026-10-03 → 2026-07-14 (-81d) | 2026-12-17 → 2026-08-06 (-133d) |  |  |  |  |  |
| 1 | **FIRST STAGE** | 2026-10-03 → 2026-07-14 (-81d) | 2026-10-07 → 2026-08-06 (-62d) |  |  |  |  |  |
| HAL-C-B-M-600 | Installation of Water Supply Pipes | 2026-10-03 A → 2026-07-14 A (-81d) | 2026-10-07 A → 2026-08-06 A (-62d) |  |  |  |  | resources Plumber [64 h]; Construction Cost [23318.4] → Plumber [64 h]; Construction Cost [19520.2] |
| HAL-C-B-M-590 | Installation of Water Supply Valve | 2026-10-03 A → 2026-08-01 A (-63d) | 2026-10-07 A → 2026-08-06 A (-62d) |  |  |  |  | resources Plumber [32 h]; Construction Cost [18274.3] → Plumber [32 h]; Construction Cost [15736.8] |
| 2 | **SECOND STAGE** | 2026-12-15 → 2026-08-01 (-136d) | 2026-12-17 → 2026-08-06 (-133d) |  |  |  |  |  |
| HAL-C-B-M-640 | Capped connection | 2026-12-15 → 2026-08-01 A (-136d) | 2026-12-17 → 2026-08-06 A (-133d) | 3d → 5d | 0% → 100% | 11.6d → none |  | resources Plumber [80 h]; Construction Cost [278.13] → Plumber [80 h]; Construction Cost [287.53] |
| 4 | **ELECTRICAL** | 2026-06-08 → 2026-04-25 (-44d) | 2027-01-17 → 2026-10-27 (-82d) |  |  |  |  |  |
| 1 | **FIRST STAGE** | 2026-06-08 → 2026-04-25 (-44d) | 2027-01-06 → 2026-10-25 (-73d) |  |  |  |  |  |
| HAL-C-B-E-343 | Installation of Earthing and Grounding | 2026-06-08 A → 2026-04-25 A (-44d) | 2026-10-20 → 2026-10-25 A (+5d) |  | 90% → 100% | 40.7d → none | HAL-E-SA-E-1050, HAL-E-SA-E-1060, HAL-E-SA-E-1070, HAL-P-ST-E-340 → HAL-C-B-E-453 SS, HAL-E-SA-E-1050, HAL-E-SA-E-1060, HAL-E-SA-E-1070, HAL-P-ST-E-340 | resources Electrician [64 h]; Construction Cost [19646.5] → Electrician [64 h]; Construction Cost [17002.4] |
| HAL-C-B-E-413 | Installation of Sleeves & Power outlet | 2026-06-08 A → 2026-04-25 A (-44d) | 2026-10-24 → 2026-09-10 A (-44d) |  | 50% → 100% | 19d → none | HAL-E-SA-E-1130, HAL-E-SA-E-950, HAL-E-SA-E-960, HAL-E-SA-E-970, HAL-E-MT-E-2040, HAL-P-ST-E-310 → HAL-C-B-A-620, HAL-E-SA-E-940, HAL-E-SA-E-950, HAL-E-SA-E-960, HAL-E-SA-E-970, HAL-E-MT-E-2040, HAL-P-ST-E-310 | resources Electrician [128 h]; Construction Cost [2920.45] → Electrician [128 h]; Construction Cost [2853.19] |
| HAL-C-B-E-373 | Installation of Conduits and wiring outlets - Fire Alarm System | 2026-06-09 A → 2026-06-13 A (+4d) | 2026-12-23 → 2026-06-20 A (-186d) |  | 50% → 100% | 3.6d → none |  | resources Electrician [64 h]; Construction Cost [1768.31] → Electrician [64 h]; Construction Cost [2026.84] |
| HAL-C-B-E-393 | Installation of Conduites for Lighting Fixture | 2026-10-01 A → 2026-06-13 A (-110d) | 2027-01-02 → 2026-06-20 A (-196d) |  | 90% → 100% | 3.6d → none |  | resources Electrician [64 h]; Construction Cost [8462.97] → Electrician [64 h]; Construction Cost [3983.66] |
| HAL-C-B-E-463 | Installation of Wires | 2027-01-02 → 2026-06-24 A (-192d) | 2027-01-06 → 2026-09-22 A (-106d) |  | 0% → 100% | 3.6d → none |  | resources Electrician [64 h]; Construction Cost [16925.9] → Electrician [64 h]; Construction Cost [7966.69] |
| HAL-C-B-E-453 | Installation of LV Cables | 2026-10-20 → 2026-09-05 A (-45d) | 2026-10-24 → 2026-10-15 A (-9d) |  | 0% → 100% | 52.55d → none | HAL-P-ST-E-290 → HAL-C-B-E-443, HAL-P-ST-E-290, HAL-C-B-M-680 | resources Electrician [64 h]; Construction Cost [36390] → Electrician [64 h]; Construction Cost [31551] |
| 2 | **SECOND STAGE** | 2026-10-10 → 2026-06-17 (-115d) | 2027-01-17 → 2026-10-27 (-82d) |  |  |  |  |  |
| HAL-C-B-E-503 | Installation of Access Control System | 2026-10-20 → 2026-06-17 A (-125d) | 2026-10-24 → 2026-10-26 (+2d) |  | 0% → 80% | 61d → 5.6d |  | resources Electrician [64 h]; Construction Cost [27616.9] → Electrician [64 h]; Construction Cost [24315.4] |
| HAL-C-B-E-720 | Installation of CCTV System | 2027-01-13 → 2026-06-17 A (-210d) | 2027-01-17 → 2026-10-12 A (-97d) | 3d → 7d | 0% → 100% | 3.6d → none | HAL-C-B-E-483, HAL-E-SA-E-1030, HAL-E-ST-E-0230 → HAL-C-B-E-483 SS, HAL-E-SA-E-1030, HAL-E-ST-E-0230 | resources Plumber [112 h]; Construction Cost [76349.2] → Plumber [112 h]; Construction Cost [66177.6] |
| HAL-C-B-E-473 | Installation of LP-1 Panel | 2026-10-10 A → 2026-08-04 A (-67d) | 2026-10-14 A → 2026-09-10 A (-34d) |  |  |  |  | resources Electrician [32 h]; Construction Cost [18403.5] → Electrician [32 h]; Construction Cost [15128.5] |
| HAL-C-B-E-443 | Installation of Telephone Cabinet | 2027-01-13 → 2026-08-13 A (-153d) | 2027-01-16 → 2026-10-01 A (-107d) |  | 0% → 100% | 31.3d → none |  | resources Electrician [32 h]; Construction Cost [26991.1] → Electrician [32 h]; Construction Cost [23299.8] |
| HAL-C-B-E-730 | Installation of Solar power plant | 2026-10-12 A → 2026-08-22 A (-51d) | 2026-10-27 → 2026-10-01 A (-26d) |  | 10% → 100% | 38.6d → none |  | resources Plumber [112 h]; Construction Cost [253269] → Plumber [112 h]; Construction Cost [218966] |
| HAL-C-B-E-403 | Installation of Wiring Devices | 2026-12-15 → 2026-09-05 A (-101d) | 2026-12-19 → 2026-10-15 A (-65d) |  | 0% → 100% | 3.6d → none | HAL-C-B-E-413, HAL-C-B-A-680, HAL-P-ST-E-350 → HAL-C-B-E-413, HAL-P-ST-E-350 | resources Electrician [64 h]; Construction Cost [19435.1] → Electrician [64 h]; Construction Cost [20742.2] |
| HAL-C-B-E-433 | Installation of Disconnect Switches | 2026-12-20 → 2026-09-05 A (-106d) | 2026-12-21 → 2026-10-15 A (-67d) |  | 0% → 100% | 3.6d → none |  | resources Electrician [32 h]; Construction Cost [30236] → Electrician [32 h]; Construction Cost [25808.4] |
| HAL-C-B-E-483 | Installation of PP-AC panel | 2027-01-11 → 2026-09-05 A (-128d) | 2027-01-13 → 2026-10-15 A (-90d) |  | 0% → 100% | 3.6d → none |  | resources Electrician [32 h]; Construction Cost [21648.5] → Electrician [32 h]; Construction Cost [18214] |
| HAL-C-B-E-423 | Installation of Main Distribution Board | 2027-01-09 → 2026-09-16 A (-115d) | 2027-01-11 → 2026-10-15 A (-88d) |  | 0% → 100% | 3.6d → none |  | resources Electrician [32 h]; Construction Cost [32472.7] → Electrician [32 h]; Construction Cost [25479.7] |
| HAL-C-B-E-353 | Installation of Fire Alarm Control Panel | 2026-12-24 → 2026-09-24 A (-91d) | 2026-12-27 → 2026-10-15 A (-73d) | 3d → 4d | 0% → 100% | 3.6d → none | HAL-C-B-E-373, HAL-E-SA-E-1020, HAL-P-ST-E-250 → HAL-C-B-E-373, HAL-E-SA-E-1020, HAL-P-ST-E-250, HAL-C-B-E-730 | resources Electrician [64 h]; Construction Cost [19451.4] → Electrician [64 h]; Construction Cost [16216.6] |
| HAL-C-B-E-363 | Installation of Fire Detectors & Accessories | 2026-12-28 → 2026-09-24 A (-95d) | 2026-12-31 → 2026-10-12 A (-80d) |  | 0% → 100% | 3.6d → none | HAL-C-B-E-353, HAL-E-SA-E-1080, HAL-C-B-M-640 → HAL-C-B-E-353, HAL-E-SA-E-1080 | resources Electrician [64 h]; Construction Cost [56740.4] → Electrician [64 h]; Construction Cost [31219.2] |
| HAL-C-B-E-383 | Installation of Lighting fixtures | 2027-01-06 → 2026-09-24 A (-104d) | 2027-01-09 → 2026-10-15 A (-86d) | 2d → 4d | 0% → 100% | 3.6d → none |  | resources Electrician [64 h]; Construction Cost [76166.7] → Electrician [64 h]; Construction Cost [59751.1] |
| HAL-C-B-E-513 | Monitor Modules for Fire Alarm | 2026-10-25 → 2026-09-24 A (-31d) | 2026-10-26 → 2026-10-27 (+1d) |  | 0% → 70% | 61d → 5.6d |  | resources Electrician [32 h]; Construction Cost [3882.38] → Electrician [32 h]; Construction Cost [3760.02] |
| HAL-C-B-E-523 | Line Isolator Modules for Fire Alarm | 2026-10-27 → 2026-09-24 A (-33d) | 2026-10-28 → 2026-10-15 A (-13d) |  | 0% → 100% | 61d → none |  | resources Electrician [32 h]; Construction Cost [185.4] → Electrician [32 h]; Construction Cost [163.42] |
| HAL-C-B-E-533 | Firewarning flash light with sounder; wall mounted, Weather proof | 2026-10-27 → 2026-09-24 A (-33d) | 2026-10-28 → 2026-10-01 A (-27d) |  | 0% → 100% | 61d → none | HAL-C-B-E-523 SS → HAL-C-B-E-523 | resources Electrician [32 h]; Construction Cost [3082.69] → Electrician [32 h]; Construction Cost [2963.79] |
| 1 | **STRUCTURAL** | 2026-02-16 → 2026-01-04 (-43d) | 2026-10-27 → 2026-06-20 (-129d) |  |  |  |  |  |
| 1 | **FOOTING** | 2026-02-16 → 2026-01-04 (-43d) | 2026-05-05 → 2026-02-03 (-91d) |  |  |  |  |  |
| HAL-C-C-S-250 | Excavation for footings | 2026-02-16 A → 2026-01-04 A (-43d) | 2026-03-18 A → 2026-01-12 A (-65d) | 4d → 7d |  |  | HAL-C-B-S-160 → HAL-C-B-S-160, HAL-PMS-MMS-0030, HAL-PMS-MMS-0020, HAL-PMS-MMS-0050, HAL-PMS-MMS-0040 | resources General Labour [112 h]; Equipment Operator [112 h]; Truck [32 h]; Excavator [32 h]; Mini Roller Compactor [32 h]; Construction Cost [89859.6] → General Labour [112 h]; Equipment Operator [112 h]; Truck [56 h]; Excavator [56 h]; Mini Roller Compactor [56 h]; Construction Cost [66496.4] |
| HAL-C-C-S-1057 | Lean Concrete Below Footings | 2026-04-21 A → 2026-01-18 A (-93d) | 2026-04-21 A → 2026-01-18 A (-93d) |  |  |  |  | resources Mason [32 h]; Construction Cost [8229.34] → Mason [32 h]; Construction Cost [8238.87] |
| HAL-C-C-S-1207 | Vapour Barrier for Footings | 2026-04-21 A → 2026-01-18 A (-93d) | 2026-04-21 A → 2026-01-18 A (-93d) |  |  |  |  | resources General Labour [16 h]; Construction Cost [7940.1] → General Labour [16 h]; Construction Cost [6030.16] |
| HAL-C-C-S-1297 | Anti Termite Below Footings | 2026-04-21 A → 2026-01-18 A (-93d) | 2026-04-21 A → 2026-01-18 A (-93d) |  |  |  | Engineering fill → HAL-C-C-S-250 | resources Mason [16 h]; Construction Cost [11905.5] → Mason [16 h]; Construction Cost [8441.61] |
| HAL-C-C-S-1117 | Formwork for Footings | 2026-05-02 A → 2026-01-21 A (-101d) | 2026-05-03 A → 2026-01-27 A (-96d) | 4d → 3.12d |  |  |  | resources Carperter [64 h]; Construction Cost [25461.2] → Carperter [64 h]; Construction Cost [23267.9] |
| HAL-C-C-S-1107 | Rebar for Footings | 2026-04-28 A → 2026-01-25 A (-93d) | 2026-04-29 A → 2026-02-02 A (-86d) |  |  |  |  | resources Steel Fixer [64 h]; Construction Cost [101845] → Steel Fixer [64 h]; Construction Cost [93071.6] |
| HAL-C-C-S-1067 | Pouring Concrete for Footings | 2026-05-05 A → 2026-02-03 A (-91d) | 2026-05-05 A → 2026-02-03 A (-91d) |  |  |  |  | resources Carperter [16 h]; Mason [16 h]; Steel Fixer [16 h]; Concrete Mixer [8 h]; Equipment Operator [16 h]; Construction Cost [127306] → Carperter [16 h]; Mason [16 h]; Steel Fixer [16 h]; Concrete Mixer [8 h]; Equipment Operator [16 h]; Construction Cost [116339] |
| 2 | **COLUMN NECK** | 2026-05-03 → 2026-01-29 (-94d) | 2026-05-24 → 2026-03-18 (-67d) |  |  |  |  |  |
| HAL-C-C-S-1157 | Rebar for column neck | 2026-05-03 A → 2026-01-29 A (-94d) | 2026-05-05 A → 2026-02-07 A (-87d) |  |  |  |  | resources Steel Fixer [32 h]; Construction Cost [14919.2] → Steel Fixer [32 h]; Construction Cost [21993.7] |
| HAL-C-C-S-1167 | Formwork for column neck | 2026-05-06 A → 2026-02-10 A (-85d) | 2026-05-09 A → 2026-02-11 A (-87d) |  |  |  |  | resources Carperter [32 h]; Construction Cost [9946.13] → Carperter [32 h]; Construction Cost [5498.72] |
| HAL-C-C-S-1147 | Pouring Concrete for column neck | 2026-05-10 A → 2026-02-12 A (-87d) | 2026-05-10 A → 2026-03-02 A (-69d) | 1d → 0.82d |  |  |  | resources Mason [16 h]; Carperter [16 h]; Concrete Mixer [8 h]; Steel Fixer [16 h]; Equipment Operator [16 h]; Construction Cost [24865.3] → Mason [16 h]; Carperter [16 h]; Concrete Mixer [8 h]; Steel Fixer [16 h]; Equipment Operator [16 h]; Construction Cost [27492.4] |
| HAL-C-C-S-1197 | Damp proof /Bitumin paint on Footings & column neck | 2026-05-11 A → 2026-02-15 A (-85d) | 2026-05-12 A → 2026-03-03 A (-70d) | 2d → 1.3d |  |  |  | resources Painter [32 h]; Construction Cost [24777.7] → Painter [32 h]; Construction Cost [6903.81] |
| HAL-C-C-S-1257 | Backfilling / Compaction up to Bottom of Grade Beams | 2026-05-20 A → 2026-02-17 A (-92d) | 2026-05-24 A → 2026-03-18 A (-67d) | 7d → 12d |  |  |  | resources General Labour [256 h]; Truck [128 h]; Mini Roller Compactor [128 h]; Equipment Operator [256 h]; Wheel Loader [128 h]; Construction Cost [46046.2] → General Labour [256 h]; Truck [128 h]; Mini Roller Compactor [128 h]; Equipment Operator [256 h]; Wheel Loader [128 h]; Construction Cost [32707.9] |
| 3 | **GRADE BEAM** | 2026-06-01 → 2026-03-07 (-86d) | 2026-06-18 → 2026-04-04 (-75d) |  |  |  |  |  |
| HAL-C-C-S-1077 | Lean Concrete Below Grade Beams | 2026-06-01 A → 2026-03-07 A (-86d) | 2026-06-01 A → 2026-03-24 A (-69d) |  |  |  |  | resources Mason [32 h]; Construction Cost [4431.19] → Mason [32 h]; Construction Cost [8238.87] |
| HAL-C-C-S-1227 | Vapour barrier for Grade Beams | 2026-06-01 A → 2026-03-07 A (-86d) | 2026-06-01 A → 2026-03-24 A (-69d) |  |  |  |  | resources General Labour [32 h]; Construction Cost [5293.4] → General Labour [32 h]; Construction Cost [4019.9] |

| ID | Task | Start | Finish | Duration | Complete | Total float | Predecessors | Other |
| --- | --- | --- | --- | --- | --- | --- | --- | --- |
| HAL-C-C-S-1307 | Anti Termite Below Grade Beams | 2026-06-01 A → 2026-03-07 A (-86d) | 2026-06-01 A → 2026-03-24 A (-69d) |  |  |  |  | resources Mason [16 h]; Construction Cost [11905.5] → Mason [16 h]; Construction Cost [8441.61] |
| HAL-C-C-S-1127 | Rebar for Grade Beams | 2026-06-03 A → 2026-03-16 A (-79d) | 2026-06-04 A → 2026-03-28 A (-68d) |  |  |  |  | resources Steel Fixer [80 h]; Construction Cost [27194.5] → Steel Fixer [80 h]; Construction Cost [24993.1] |
| HAL-C-C-S-1137 | Formwork for Grade Beams | 2026-06-03 A → 2026-03-26 A (-69d) | 2026-06-07 A → 2026-03-29 A (-70d) |  |  |  |  | resources Carperter [32 h]; Construction Cost [6798.61] → Carperter [32 h]; Construction Cost [6248.27] |
| HAL-C-C-S-1287 | Anchor bolts installation | 2026-06-02 A → 2026-03-28 A (-66d) | 2026-06-04 A → 2026-03-29 A (-67d) |  |  |  |  | resources Carperter [32 h]; Construction Cost [57238.8] → Carperter [32 h]; Construction Cost [5667.68] |
| HAL-C-C-S-1087 | Pouring Concrete for Grade Beams | 2026-06-11 A → 2026-03-29 A (-74d) | 2026-06-11 A → 2026-03-29 A (-74d) |  |  |  |  | resources Mason [16 h]; Carperter [16 h]; Concrete Mixer [8 h]; Steel Fixer [16 h]; Equipment Operator [16 h]; Construction Cost [33993.1] → Mason [16 h]; Carperter [16 h]; Concrete Mixer [8 h]; Steel Fixer [16 h]; Equipment Operator [16 h]; Construction Cost [31241.3] |
| HAL-C-C-S-1237 | Damp proof /Bitumin paint on Grade Beams | 2026-06-14 A → 2026-04-04 A (-71d) | 2026-06-18 A → 2026-04-04 A (-75d) |  |  |  |  | resources Painter [32 h]; Construction Cost [24777.7] → Painter [32 h]; Construction Cost [6903.81] |
| 5 | **SLAB ON GRADE** | 2026-06-21 → 2026-04-13 (-69d) | 2026-10-27 → 2026-06-20 (-129d) |  |  |  |  |  |
| HAL-C-C-S-1267 | Backfilling / Compaction for Slab on Grade | 2026-06-21 A → 2026-04-13 A (-69d) | 2026-06-24 A → 2026-04-19 A (-66d) | 7d → 12d |  |  |  | resources Mini Roller Compactor [128 h]; General Labour [256 h]; Equipment Operator [256 h]; Wheel Loader [128 h]; Truck [128 h]; Construction Cost [23023.1] → Mini Roller Compactor [128 h]; General Labour [256 h]; Equipment Operator [256 h]; Wheel Loader [128 h]; Truck [128 h]; Construction Cost [32707.9] |
| HAL-C-C-S-1217 | Anti Termite Treatment below Ground Slab | 2026-08-01 A → 2026-05-09 A (-84d) | 2026-08-04 A → 2026-05-12 A (-84d) |  |  |  |  | resources General Labour [16 h]; Construction Cost [15874.1] → General Labour [16 h]; Construction Cost [11255.5] |
| HAL-C-C-S-1247 | Vapour barrier for below Ground Slab | 2026-08-01 A → 2026-05-09 A (-84d) | 2026-08-04 A → 2026-05-12 A (-84d) |  |  |  |  | resources General Labour [32 h]; Construction Cost [13233.5] → General Labour [32 h]; Construction Cost [10050.1] |
| HAL-C-C-S-1097 | Pouring Concrete for Ground Slab | 2026-08-01 A → 2026-05-10 A (-83d) | 2026-08-04 A → 2026-05-13 A (-83d) |  |  |  |  | resources Mason [64 h]; Carperter [64 h]; Steel Fixer [64 h]; Concrete Mixer [32 h]; Equipment Operator [64 h]; Construction Cost [344195] → Mason [64 h]; Carperter [64 h]; Steel Fixer [64 h]; Concrete Mixer [32 h]; Equipment Operator [64 h]; Construction Cost [304092] |
| HAL-C-C-S-1277 | Concrete pad | 2026-10-20 → 2026-06-17 A (-125d) | 2026-10-27 → 2026-06-20 A (-129d) |  | 0% → 100% | 18.6d → none |  | resources Mason [112 h]; Construction Cost [907.11] → Mason [112 h]; Construction Cost [1803.82] |
| 4 | **COLUMNS & BEAMS** | 2026-06-03 → 2026-02-28 (-95d) | 2026-09-22 → 2026-06-20 (-94d) |  |  |  |  |  |
| HAL-C-C-S-6101 | Rebar for Tie Beams | 2026-06-03 A → 2026-02-28 A (-95d) | 2026-06-09 A → 2026-03-02 A (-99d) |  |  |  |  | resources Steel Fixer [64 h]; Construction Cost [7263.64] → Steel Fixer [64 h]; Construction Cost [7796.52] |
| HAL-C-C-S-6102 | Formwork for Tie Beams | 2026-06-04 A → 2026-03-02 A (-94d) | 2026-06-10 A → 2026-03-04 A (-98d) |  |  |  |  | resources Carperter [32 h]; Construction Cost [1815.91] → Carperter [32 h]; Construction Cost [1949.44] |
| HAL-C-C-S-6103 | Pouring Concrete for Tie Beams | 2026-06-11 A → 2026-03-05 A (-98d) | 2026-06-11 A → 2026-03-05 A (-98d) |  |  |  |  | resources Mason [16 h]; Carperter [16 h]; Concrete Mixer [32 h]; Steel Fixer [16 h]; Equipment Operator [16 h]; Construction Cost [9079.54] → Mason [16 h]; Carperter [16 h]; Concrete Mixer [8 h]; Steel Fixer [16 h]; Equipment Operator [16 h]; Construction Cost [9745.95] |
| HAL-C-C-S-5101 | Rebar for column | 2026-07-14 A → 2026-04-27 A (-78d) | 2026-07-16 A → 2026-05-24 A (-53d) | 5d → 7d |  |  | HAL-C-C-S-1267 → HAL-C-C-S-1267, HAL-C-C-M-1130 | resources Steel Fixer [112 h]; Construction Cost [20144] → Steel Fixer [112 h]; Construction Cost [18494.8] |
| HAL-C-C-S-6113 | Rebar for Beams | 2026-09-07 A → 2026-04-30 A (-130d) | 2026-09-15 A → 2026-06-17 A (-90d) |  |  |  | HAL-C-C-S-6103, Civil & Architectural Snagg works-2 → HAL-C-C-S-6103 | resources Steel Fixer [64 h]; Construction Cost [13379.1] → Steel Fixer [64 h]; Construction Cost [11954.6] |
| HAL-C-C-S-5102 | Formwork for column | 2026-07-16 A → 2026-05-17 A (-60d) | 2026-07-20 A → 2026-05-24 A (-57d) |  |  |  |  | resources Carperter [64 h]; Construction Cost [5036.01] → Carperter [64 h]; Construction Cost [4623.84] |
| HAL-C-C-S-5103 | Pouring Concrete for column | 2026-07-18 A → 2026-05-23 A (-56d) | 2026-07-21 A → 2026-05-31 A (-51d) |  |  |  |  | resources Mason [16 h]; Carperter [16 h]; Concrete Mixer [32 h]; Steel Fixer [16 h]; Equipment Operator [16 h]; Construction Cost [25180.1] → Mason [16 h]; Carperter [16 h]; Concrete Mixer [8 h]; Steel Fixer [16 h]; Equipment Operator [16 h]; Construction Cost [23118.6] |
| HAL-C-C-S-6123 | Formwork for Beams | 2026-09-15 A → 2026-06-17 A (-90d) | 2026-09-20 A → 2026-06-18 A (-94d) |  |  |  |  | resources Carperter [32 h]; Construction Cost [3344.77] → Carperter [32 h]; Construction Cost [2988.97] |
| HAL-C-C-S-6133 | Pouring Concrete for Beams | 2026-09-17 A → 2026-06-20 A (-89d) | 2026-09-22 A → 2026-06-20 A (-94d) |  |  |  |  | resources Mason [16 h]; Carperter [16 h]; Concrete Mixer [32 h]; Steel Fixer [16 h]; Equipment Operator [16 h]; Construction Cost [16723.9] → Mason [16 h]; Carperter [16 h]; Concrete Mixer [8 h]; Steel Fixer [16 h]; Equipment Operator [16 h]; Construction Cost [14943.6] |
| 5 | **STRUCTURAL STEEL** | 2026-07-02 → 2026-04-25 (-68d) | 2026-10-27 → 2026-08-06 (-82d) |  |  |  |  |  |
| HAL-C-C-SS-270 | Installation of columns | 2026-07-02 A → 2026-04-25 A (-68d) | 2026-07-05 A → 2026-04-26 A (-70d) |  |  |  | HAL-C-C-S-1097 → HAL-C-B-SS-150 | resources Structural Steel Fixer [80 h]; General Labour [80 h]; Equipment Operator [80 h]; Mobile Crane [24 h]; Construction Cost [217508] → Structural Steel Fixer [80 h]; General Labour [80 h]; Equipment Operator [80 h]; Mobile Crane [40 h]; Construction Cost [164363] |
| HAL-C-C-SS-280 | Installation of raft and purlins | 2026-07-02 A → 2026-04-26 A (-67d) | 2026-07-06 A → 2026-04-30 A (-67d) |  |  |  |  | resources Structural Steel Fixer [160 h]; General Labour [160 h]; Mobile Crane [56 h]; Equipment Operator [160 h]; Construction Cost [326261] → Structural Steel Fixer [160 h]; General Labour [160 h]; Mobile Crane [80 h]; Equipment Operator [160 h]; Construction Cost [340061] |
| HAL-C-C-SS-1030 | Steel members for external platform | 2026-08-31 A → 2026-05-02 A (-121d) | 2026-09-01 A → 2026-05-25 A (-99d) | 7d → 5d |  |  |  | resources Construction Cost [18670.8]; General Labour [112 h]; Mobile Crane [56 h]; Structural Steel Fixer [112 h]; Equipment Operator [112 h] → Construction Cost [27249.1]; General Labour [112 h]; Mobile Crane [56 h]; Structural Steel Fixer [112 h]; Equipment Operator [112 h] |
| HAL-C-C-SS-1850 | Steel members for office area | 2026-10-05 A → 2026-05-02 A (-156d) | 2026-10-06 A → 2026-05-25 A (-134d) | 7d → 5d |  |  |  | resources Construction Cost [115805]; Equipment Operator [112 h]; General Labour [112 h]; Mobile Crane [56 h]; Structural Steel Fixer [112 h] → Construction Cost [97318.2]; Equipment Operator [112 h]; General Labour [112 h]; Mobile Crane [56 h]; Structural Steel Fixer [112 h] |
| HAL-C-C-SS-1840 | Intumescent paint to steel works | 2026-07-12 A → 2026-05-09 A (-64d) | 2026-07-20 A → 2026-05-31 A (-50d) | 7d → 5d |  |  |  | resources Painter [112 h]; Construction Cost [317760] → Painter [112 h]; Construction Cost [269284] |
| HAL-C-C-SS-310 | Installation of roof sheet | 2026-07-29 A → 2026-06-03 A (-56d) | 2026-08-08 A → 2026-06-04 A (-65d) | 5d → 7d |  |  |  | resources Roof sheet worker [160 h]; General Labour [160 h]; Mobile Crane [40 h]; Equipment Operator [160 h]; Construction Cost [217508] → Roof sheet worker [160 h]; General Labour [160 h]; Mobile Crane [80 h]; Equipment Operator [160 h]; Construction Cost [453414] |
| HAL-C-C-SS-300 | Installation of wall sandwich panel | 2026-10-04 A → 2026-06-27 A (-99d) | 2026-10-08 A → 2026-07-30 A (-70d) |  |  |  |  | resources Sandwich panel worker [112 h]; General Labour [112 h]; Mobile Crane [40 h]; Equipment Operator [112 h]; Construction Cost [326261] → Sandwich panel worker [112 h]; General Labour [112 h]; Mobile Crane [56 h]; Equipment Operator [112 h]; Construction Cost [170030] |
| HAL-C-C-SS-1040 | Epoxy paint for external platform | 2026-10-20 → 2026-07-18 A (-94d) | 2026-10-25 → 2026-07-19 A (-98d) |  | 0% → 100% | 7d → none |  | resources Painter [80 h]; Construction Cost [3734.16] → Painter [80 h]; Construction Cost [6812.27] |
| HAL-C-C-SS-1020 | Epoxy paint to steel members at office area | 2026-10-20 → 2026-08-01 A (-80d) | 2026-10-27 → 2026-08-06 A (-82d) | 7d → 5d | 0% → 100% | 5d → none |  | resources Painter [112 h]; Construction Cost [23161] → Painter [112 h]; Construction Cost [24329.5] |
| 2 | **ARCHITECTURAL** | 2026-08-08 → 2026-05-31 (-69d) | 2026-12-08 → 2026-10-28 (-41d) |  |  |  |  |  |
| 1 | **MASONARY WORKS** | 2026-08-09 → 2026-05-31 (-70d) | 2026-09-09 → 2026-06-24 (-77d) |  |  |  |  |  |
| HAL-C-C-A-1440 | Block work at toilet area | 2026-08-15 A → 2026-05-31 A (-76d) | 2026-09-09 A → 2026-06-24 A (-77d) |  |  |  |  | resources Mason [112 h]; Construction Cost [14436.3] → Mason [112 h]; Construction Cost [15836.3] |
| HAL-C-C-A-290 | Block work at factory area | 2026-08-09 A → 2026-05-31 A (-70d) | 2026-08-12 A → 2026-06-24 A (-49d) |  |  |  | HAL-C-C-SS-280, HAL-C-C-S-1097 → HAL-C-C-SS-280, HAL-C-C-S-1097, HAL-C-B-A-170, HAL-C-C-SS-1040, HAL-C-C-SS-1020 | resources AAC panel erector [240 h]; General Labour [240 h]; Equipment Operator [240 h]; Mobile Crane [120 h]; Construction Cost [58338.7] → AAC panel erector [240 h]; General Labour [240 h]; Equipment Operator [240 h]; Mobile Crane [120 h]; Construction Cost [38856.6] |
| HAL-C-C-A-320 | Block work at office area | 2026-08-13 A → 2026-05-31 A (-74d) | 2026-09-09 A → 2026-06-24 A (-77d) |  |  |  | HAL-C-C-SS-1850 → HAL-C-C-SS-310, HAL-C-C-SS-1850 | resources AAC panel erector [160 h]; General Labour [160 h]; Mobile Crane [56 h]; Equipment Operator [160 h]; Construction Cost [6179.18] → AAC panel erector [160 h]; General Labour [160 h]; Mobile Crane [80 h]; Equipment Operator [160 h]; Construction Cost [9714] |
| 5 | **WALL FINISHES** | 2026-09-26 → 2026-07-05 (-83d) | 2026-11-07 → 2026-10-19 (-19d) |  |  |  |  |  |
| HAL-C-C-A-1450 | Internal Wall Plaster | 2026-09-26 A → 2026-07-05 A (-83d) | 2026-10-11 A → 2026-07-16 A (-87d) |  |  |  | HAL-C-C-A-1440, HAL-C-C-E-873 → HAL-C-C-A-1440, HAL-C-C-E-873, HAL-C-C-S-1277 | resources Mason [240 h]; Construction Cost [48590.2] → Mason [240 h]; Construction Cost [29610.2] |
| HAL-C-C-A-1500 | Paint to Plaster (Primer, Putty & First Coat) | 2026-10-11 A → 2026-07-22 A (-81d) | 2026-11-07 → 2026-10-19 A (-19d) |  | 85% → 100% | 42.55d → none | HAL-C-C-A-1520, HAL-C-C-SS-310, HAL-C-B-E-453 → HAL-C-C-A-1520 | resources Painter [112 h]; Construction Cost [44167.3] → Painter [112 h]; Construction Cost [26649.5] |
| 2 | **CIELING FINISHES** | 2026-10-28 → 2026-08-31 (-58d) | 2026-11-02 → 2026-10-15 (-18d) |  |  |  |  |  |
| HAL-C-C-A-1510 | Installation of Ceiling Gypsum Board | 2026-10-28 → 2026-08-31 A (-58d) | 2026-11-02 → 2026-10-15 A (-18d) |  | 0% → 100% | 36d → none |  | resources Carperter [80 h]; Construction Cost [46792.3] → Carperter [80 h]; Construction Cost [44650.2] |
| 6 | **FLOOR FINISHES** | 2026-10-11 → 2026-07-21 (-82d) | 2026-12-08 → 2026-10-15 (-54d) |  |  |  |  |  |
| HAL-C-C-A-1490 | Tiles for Toilet | 2026-10-11 A → 2026-07-21 A (-82d) | 2026-10-13 A → 2026-08-02 A (-72d) |  |  |  |  | resources Tile Fixer [112 h]; Construction Cost [46530.7] → Tile Fixer [112 h]; Construction Cost [48089.6] |
| HAL-C-C-A-1520 | Tiles for Office Area | 2026-11-03 → 2026-08-09 A (-86d) | 2026-11-04 → 2026-08-13 A (-83d) |  | 0% → 100% | 36d → none |  | resources Tile Fixer [32 h]; Construction Cost [26867.3] → Tile Fixer [32 h]; Construction Cost [25626.5] |
| HAL-C-C-A-1650 | Granite strip | 2026-11-05 → 2026-08-29 A (-68d) | 2026-11-07 → 2026-08-31 A (-68d) |  | 0% → 100% | 36d → none |  | resources Tile Fixer [32 h]; Construction Cost [671.12] → Tile Fixer [32 h]; Construction Cost [1454.24] |
| HAL-C-C-A-1670 | Epoxy paint | 2026-12-01 → 2026-09-03 A (-89d) | 2026-12-08 → 2026-10-15 A (-54d) |  | 0% → 100% | 36d → none |  | resources Painter [112 h]; Construction Cost [115420] → Painter [112 h]; Construction Cost [102516] |
| 3 | **DOORS & WINDOWS** | 2026-10-20 → 2026-07-11 (-101d) | 2026-11-04 → 2026-09-10 (-55d) |  |  |  |  |  |
| HAL-C-C-A-1830 | Window (CW1) | 2026-10-20 → 2026-07-11 A (-101d) | 2026-10-27 → 2026-09-10 A (-47d) |  | 0% → 100% | 12d → none |  | resources Carperter [112 h]; Construction Cost [94173.2] → Carperter [112 h]; Construction Cost [90682.8] |
| HAL-C-C-A-1780 | Skylight fixtures installation | 2026-11-04 → 2026-07-27 A (-100d) | 2026-11-04 → 2026-08-05 A (-91d) |  | 0% → 100% | 12d → none |  | resources Carperter [16 h]; Construction Cost [6489.89] → Carperter [16 h]; Construction Cost [61929.7] |
| HAL-C-C-A-1460 | Roll up Shutter Door | 2026-10-28 → 2026-07-29 A (-91d) | 2026-10-28 → 2026-08-06 A (-83d) |  | 0% → 100% | 12d → none |  | resources Carperter [16 h]; Construction Cost [68619.2] → Carperter [16 h]; Construction Cost [66353.3] |
| HAL-C-C-A-1470 | Supply and install (D5) 1000*2200mm single leaf steel door with door | 2026-10-29 → 2026-08-09 A (-81d) | 2026-10-29 → 2026-09-10 A (-49d) |  | 0% → 100% | 12d → none |  | resources Carperter [16 h]; Construction Cost [16016.2] → Carperter [16 h]; Construction Cost [15482.4] |
| HAL-C-C-A-1770 | Supply and install fire rated 45 min (D2) 1200*2200 mm single leaf steel door | 2026-11-03 → 2026-08-09 A (-86d) | 2026-11-03 → 2026-09-10 A (-54d) |  | 0% → 100% | 12d → none |  | resources Carperter [16 h]; Construction Cost [16711.5] → Carperter [16 h]; Construction Cost [16146] |
| HAL-C-C-A-1530 | Supply and install (D4) 800*2200 mm single leaf aluminum door with door | 2026-10-31 → 2026-08-23 A (-69d) | 2026-10-31 → 2026-09-06 A (-55d) |  | 0% → 100% | 12d → none |  | resources Carperter [16 h]; Construction Cost [22737.8] → Carperter [16 h]; Construction Cost [21896.6] |
| HAL-C-C-A-1540 | Supply and install (D7) 1000*2200 mm single leaf aluminum door with door | 2026-11-01 → 2026-08-23 A (-70d) | 2026-11-01 → 2026-09-06 A (-56d) |  | 0% → 100% | 12d → none |  | resources Carperter [16 h]; Construction Cost [7811.07] → Carperter [16 h]; Construction Cost [7520.04] |
| HAL-C-C-A-1760 | Supply and install (D3) 1000*2200 mm single leaf aluminum door with door | 2026-11-02 → 2026-08-23 A (-71d) | 2026-11-02 → 2026-09-06 A (-57d) |  | 0% → 100% | 12d → none |  | resources Carperter [16 h]; Construction Cost [16016.2] → Carperter [16 h]; Construction Cost [15482.4] |
| 4 | **WATER PROOFING WORKS** | 2026-10-14 → 2026-07-18 (-88d) | 2026-10-17 → 2026-07-18 (-91d) |  |  |  |  |  |
| HAL-C-C-A-1630 | Waterproofing membrane for toilets | 2026-10-14 A → 2026-07-18 A (-88d) | 2026-10-17 A → 2026-07-18 A (-91d) |  |  |  | HAL-C-C-M-1130, HAL-C-C-A-1450 → HAL-C-C-M-1130, HAL-C-C-A-1450, HAL-C-C-A-1780 | resources General Labour [64 h]; Construction Cost [4879.02] → General Labour [64 h]; Construction Cost [4653.33] |
| 7 | **METAL WORKS** | 2026-08-08 → 2026-07-29 (-10d) | 2026-11-19 → 2026-10-21 (-29d) |  |  |  |  |  |
| HAL-C-C-A-1580 | Aluminium composite panel | 2026-11-15 → 2026-07-29 A (-109d) | 2026-11-19 → 2026-10-03 A (-47d) |  | 0% → 100% | 36d → none |  | resources Steel Fixer [80 h]; General Labour [80 h]; Construction Cost [175889] → Steel Fixer [80 h]; General Labour [80 h]; Construction Cost [175670] |
| HAL-C-C-A-1560 | Steel Ladder | 2026-11-08 → 2026-08-17 A (-83d) | 2026-11-09 → 2026-08-29 A (-72d) |  | 0% → 100% | 36d → none |  | resources Steel Fixer [32 h]; General Labour [32 h]; Construction Cost [9839.16] → Steel Fixer [32 h]; General Labour [32 h]; Construction Cost [9510.64] |
| HAL-C-C-A-1570 | Galvanised Steel Gratings | 2026-08-08 A → 2026-10-06 A (+59d) | 2026-08-08 A → 2026-10-07 A (+60d) |  |  |  |  | resources Steel Fixer [32 h]; General Labour [32 h]; Construction Cost [6455.16] → Steel Fixer [32 h]; General Labour [32 h]; Construction Cost [6237.21] |
| HAL-C-C-A-1660 | Steel railing works | 2026-11-10 → 2026-10-20 A (-21d) | 2026-11-14 → 2026-10-21 A (-24d) |  | 0% → 100% | 36d → none |  | resources Steel Fixer [64 h]; General Labour [64 h]; Construction Cost [1533.98] → Steel Fixer [64 h]; General Labour [64 h]; Construction Cost [7497.92] |
| 8 | **SPECIALTIES** | 2026-11-21 → 2026-09-22 (-60d) | 2026-11-30 → 2026-10-28 (-33d) |  |  |  |  |  |
| HAL-C-C-A-1590 | Installation of fittings | 2026-11-21 → 2026-09-22 A (-60d) | 2026-11-25 → 2026-09-24 A (-62d) |  | 0% → 100% | 36d → none |  | resources Plumber [80 h]; Construction Cost [22981.3] → Plumber [80 h]; Construction Cost [21686.5] |
| HAL-C-C-A-1610 | Furniture Installation | 2026-11-30 → 2026-10-19 A (-42d) | 2026-11-30 → 2026-10-19 A (-42d) |  | 0% → 100% | 36d → none |  | resources General Labour [16 h]; Mason [16 h]; Construction Cost [12468.8] → General Labour [16 h]; Mason [16 h]; Construction Cost [10561.2] |
| HAL-C-C-A-1820 | Identification sign; ID01 & ID02 | 2026-11-26 → 2026-10-26 (-31d) | 2026-11-29 → 2026-10-28 (-32d) |  |  | 36d → 4d |  | resources Mason [48 h]; Construction Cost [9630.56] → Mason [48 h]; Construction Cost [9289.46] |
| 3 | **MECHANICAL** | 2026-07-08 → 2026-04-01 (-98d) | 2026-11-26 → 2026-09-24 (-63d) |  |  |  |  |  |
| 1 | **HVAC** | 2026-11-07 → 2026-06-23 (-137d) | 2026-11-23 → 2026-09-22 (-62d) |  |  |  |  |  |
| 1 | **FIRST STAGE** | 2026-11-14 → 2026-06-23 (-144d) | 2026-11-18 → 2026-08-01 (-109d) |  |  |  |  |  |

| ID | Task | Start | Finish | Duration | Complete | Total float | Predecessors | Other |
| --- | --- | --- | --- | --- | --- | --- | --- | --- |
| HAL-C-C-M-1070 | Installation of HVAC Ducts | 2026-11-14 → 2026-06-23 A (-144d) | 2026-11-16 → 2026-08-01 A (-107d) |  | 0% → 100% | 42.55d → none |  | resources Ductman [32 h]; Construction Cost [149489] → Ductman [32 h]; Construction Cost [141482] |
| HAL-C-C-M-1100 | Installation of Duct insulation | 2026-11-16 → 2026-06-23 A (-146d) | 2026-11-18 → 2026-08-01 A (-109d) |  | 0% → 100% | 42.55d → none |  | resources Ductman [32 h]; Construction Cost [21205.4] → Ductman [32 h]; Construction Cost [18747.3] |
| 2 | **SECOND STAGE** | 2026-11-07 → 2026-07-27 (-103d) | 2026-11-23 → 2026-09-22 (-62d) |  |  |  |  |  |
| HAL-C-C-M-1060 | Installation of Exhaust Fans | 2026-11-07 → 2026-07-27 A (-103d) | 2026-11-09 → 2026-07-27 A (-105d) |  | 0% → 100% | 42.55d → none |  | resources AC Technician [32 h]; Construction Cost [7938.56] → AC Technician [32 h]; Construction Cost [9331.24] |
| HAL-C-C-M-1270 | Supply, install, test and commission door grilles & exhaust louvers | 2026-11-21 → 2026-09-02 A (-80d) | 2026-11-23 → 2026-09-10 A (-74d) |  | 0% → 100% | 42.55d → none |  | resources Ductman [32 h]; Construction Cost [5574.4] → Ductman [32 h]; Construction Cost [7188.28] |
| HAL-C-C-M-1090 | Installation of Wall Propeller Type Exhaust Fan | 2026-11-09 → 2026-09-15 A (-55d) | 2026-11-14 → 2026-09-20 A (-55d) |  | 0% → 100% | 42.55d → none |  | resources AC Technician [64 h]; Construction Cost [46831.6] → AC Technician [64 h]; Construction Cost [17417.7] |
| HAL-C-C-M-1080 | Installation of Diffuser | 2026-11-18 → 2026-09-16 A (-63d) | 2026-11-21 → 2026-09-22 A (-60d) |  | 0% → 100% | 42.55d → none |  | resources Ductman [32 h]; Construction Cost [2144] → Ductman [32 h]; Construction Cost [2764.72] |
| 2 | **FIRE FIGHTING SYSTEM** | 2026-10-11 → 2026-05-23 (-141d) | 2026-11-26 → 2026-08-22 (-96d) |  |  |  |  |  |
| 1 | **FIRST STAGE** | 2026-10-11 → 2026-05-23 (-141d) | 2026-10-13 → 2026-08-06 (-68d) |  |  |  |  |  |
| HAL-C-C-M-1230 | Installation of Fire Fighting Pipes (Seamless Black Steel) | 2026-10-11 A → 2026-05-23 A (-141d) | 2026-10-13 A → 2026-08-06 A (-68d) |  |  |  |  | resources Pipe Fitter [112 h]; Construction Cost [72394.8] → Pipe Fitter [112 h]; Construction Cost [60425.7] |
| HAL-C-C-M-1240 | Installation of Fire Fighting Valve | 2026-10-11 A → 2026-06-11 A (-122d) | 2026-10-13 A → 2026-08-06 A (-68d) |  |  |  |  | resources Pipe Fitter [80 h]; Construction Cost [12199.4] → Pipe Fitter [80 h]; Construction Cost [12712.2] |
| 2 | **SECOND STAGE** | 2026-11-07 → 2026-06-11 (-149d) | 2026-11-26 → 2026-08-22 (-96d) |  |  |  |  |  |
| HAL-C-C-M-1250 | Installation of Fire Hose Cabinet | 2026-11-07 → 2026-06-11 A (-149d) | 2026-11-10 → 2026-08-22 A (-80d) |  | 0% → 100% | 56.55d → none |  | resources Pipe Fitter [48 h]; Construction Cost [15158.6] → Pipe Fitter [48 h]; Construction Cost [11147.4] |
| HAL-C-C-M-1300 | Supply, install, test and commission Fire Department Connection(FDC) | 2026-11-23 → 2026-06-11 A (-165d) | 2026-11-26 → 2026-08-04 A (-114d) |  | 0% → 100% | 42.55d → none |  | resources Pipe Fitter [48 h]; Construction Cost [2706.06] → Pipe Fitter [48 h]; Construction Cost [2598.84] |
| 3 | **SEWER AND DRAINAGE SYSTEM** | 2026-07-08 → 2026-04-01 (-98d) | 2026-11-11 → 2026-09-24 (-48d) |  |  |  |  |  |
| 1 | **FIRST STAGE** | 2026-07-08 → 2026-04-01 (-98d) | 2026-10-26 → 2026-08-04 (-83d) |  |  |  |  |  |
| HAL-C-C-M-1130 | Installation of Sanitary Waste / Drainage Pipes | 2026-07-08 A → 2026-04-01 A (-98d) | 2026-07-12 A → 2026-04-19 A (-84d) |  |  |  |  | resources Plumber [64 h]; Construction Cost [18585.1] → Plumber [64 h]; Construction Cost [14362.4] |
| HAL-C-C-M-1150 | Installation of Floor Drain | 2026-10-25 → 2026-06-11 A (-136d) | 2026-10-26 → 2026-08-04 A (-83d) |  | 0% → 100% | 48.6d → none |  | resources Plumber [32 h]; Construction Cost [11056] → Plumber [32 h]; Construction Cost [10616.5] |
| HAL-C-C-M-1310 | Installation of Trench drain | 2026-07-11 A → 2026-06-11 A (-30d) | 2026-07-14 A → 2026-08-04 A (+21d) |  |  |  |  | resources Plumber [80 h]; Construction Cost [11508.8] → Plumber [80 h]; Construction Cost [11379.6] |
| 2 | **SECOND STAGE** | 2026-10-27 → 2026-07-11 (-108d) | 2026-11-11 → 2026-09-24 (-48d) |  |  |  |  |  |
| HAL-C-C-M-1170 | Installation of Roof Vent Cap | 2026-11-10 → 2026-07-11 A (-122d) | 2026-11-11 → 2026-08-22 A (-81d) |  | 0% → 100% | 48.6d → none |  | resources Pipe Fitter [32 h]; Construction Cost [927.12] → Pipe Fitter [32 h]; Construction Cost [829.41] |
| HAL-C-C-M-1110 | Installation of Electric Water Heater | 2026-10-27 → 2026-08-04 A (-84d) | 2026-10-28 → 2026-08-04 A (-85d) |  | 0% → 100% | 48.6d → none |  | resources Plumber [32 h]; Construction Cost [1819.51] → Plumber [32 h]; Construction Cost [1592.48] |
| HAL-C-C-M-1160 | Installation of Water Tap | 2026-11-08 → 2026-08-24 A (-76d) | 2026-11-09 → 2026-09-16 A (-54d) |  | 0% → 100% | 48.6d → none |  | resources Plumber [32 h]; Construction Cost [2874.14] → Plumber [32 h]; Construction Cost [2654.13] |
| HAL-C-C-M-1120 | Installation of Sanitary Fixture and Accessories | 2026-10-29 → 2026-09-17 A (-42d) | 2026-11-02 → 2026-09-24 A (-39d) |  | 0% → 100% | 48.6d → none |  | resources Plumber [64 h]; Construction Cost [19921.7] → Plumber [64 h]; Construction Cost [16243] |
| HAL-C-C-M-1140 | Installation of Lavotary /Wash Basin | 2026-11-03 → 2026-09-17 A (-47d) | 2026-11-04 → 2026-09-24 A (-41d) |  | 0% → 100% | 48.6d → none |  | resources Plumber [32 h]; Construction Cost [21416.7] → Plumber [32 h]; Construction Cost [20348.3] |
| HAL-C-C-M-1200 | Installation of Bib Tap | 2026-11-05 → 2026-09-17 A (-49d) | 2026-11-07 → 2026-09-24 A (-44d) |  | 0% → 100% | 48.6d → none |  | resources Plumber [32 h]; Construction Cost [1900.66] → Plumber [32 h]; Construction Cost [2211.78] |
| 4 | **WATER SUPPLY SYSTEM** | 2026-09-29 → 2026-06-24 (-97d) | 2026-11-12 → 2026-08-04 (-100d) |  |  |  |  |  |
| 1 | **FIRST STAGE** | 2026-09-29 → 2026-06-24 (-97d) | 2026-10-03 → 2026-08-04 (-60d) |  |  |  |  |  |
| HAL-C-C-M-1220 | Installation of Water Supply Pipes | 2026-09-29 A → 2026-06-24 A (-97d) | 2026-10-03 A → 2026-08-04 A (-60d) |  |  |  |  | resources Plumber [64 h]; Construction Cost [23318.4] → Plumber [64 h]; Construction Cost [19520.2] |
| HAL-C-C-M-1210 | Installation of Water Supply Valve | 2026-09-29 A → 2026-08-01 A (-59d) | 2026-10-03 A → 2026-08-04 A (-60d) |  |  |  |  | resources Plumber [32 h]; Construction Cost [18274.3] → Plumber [32 h]; Construction Cost [15736.8] |
| 2 | **SECOND STAGE** | 2026-11-07 → 2026-07-04 (-126d) | 2026-11-12 → 2026-08-04 (-100d) |  |  |  |  |  |
| HAL-C-C-M-1260 | Capped connection | 2026-11-07 → 2026-07-04 A (-126d) | 2026-11-12 → 2026-08-04 A (-100d) |  | 0% → 100% | 53.65d → none |  | resources Plumber [80 h]; Construction Cost [278.13] → Plumber [80 h]; Construction Cost [287.53] |
| 4 | **ELECTRICAL** | 2026-06-04 → 2026-04-01 (-64d) | 2026-12-23 → 2026-10-26 (-58d) |  |  |  |  |  |
| 1 | **FIRST STAGE** | 2026-06-04 → 2026-04-01 (-64d) | 2026-12-16 → 2026-10-12 (-65d) |  |  |  |  |  |
| HAL-C-C-E-803 | Installation of Earthing and Grounding | 2026-06-04 A → 2026-04-01 A (-64d) | 2026-12-12 → 2026-10-12 A (-61d) |  | 90% → 100% | 57.85d → none |  | resources Electrician [64 h]; Construction Cost [19646.5] → Electrician [64 h]; Construction Cost [17002.4] |
| HAL-C-C-E-873 | Installation of Sleeves & Power outlet | 2026-06-04 A → 2026-04-01 A (-64d) | 2026-10-24 → 2026-07-11 A (-105d) |  | 50% → 100% | 39d → none |  | resources Electrician [128 h]; Construction Cost [2920.45] → Electrician [128 h]; Construction Cost [2853.19] |
| HAL-C-C-E-853 | Installation of Conduites for Lighting Fixture | 2026-09-20 A → 2026-05-19 A (-124d) | 2026-11-25 → 2026-06-02 A (-176d) |  | 90% → 100% | 48.25d → none |  | resources Electrician [64 h]; Construction Cost [8462.97] → Electrician [64 h]; Construction Cost [3983.66] |
| HAL-C-C-E-833 | Installation of Conduits and wiring outlets - Fire Alarm System | 2026-06-04 A → 2026-05-20 A (-15d) | 2026-11-16 → 2026-06-02 A (-167d) |  | 50% → 100% | 48.25d → none |  | resources Electrician [64 h]; Construction Cost [1768.31] → Electrician [64 h]; Construction Cost [2026.84] |
| HAL-C-C-E-923 | Installation of Wires | 2026-11-25 → 2026-06-25 A (-153d) | 2026-11-30 → 2026-08-29 A (-93d) |  | 0% → 100% | 48.25d → none |  | resources Electrician [64 h]; Construction Cost [16925.9] → Electrician [64 h]; Construction Cost [7966.69] |
| HAL-C-C-E-913 | Installation of LV Cables | 2026-12-12 → 2026-09-05 A (-98d) | 2026-12-16 → 2026-10-12 A (-65d) | 4d → 2d | 0% → 100% | 54.25d → none | HAL-C-C-E-903 → HAL-C-C-E-903 SS | resources Electrician [64 h]; Construction Cost [36390] → Electrician [64 h]; Construction Cost [31551] |
| 2 | **SECOND STAGE** | 2026-10-10 → 2026-06-17 (-115d) | 2026-12-23 → 2026-10-26 (-58d) |  |  |  |  |  |
| HAL-C-C-E-1340 | Installation of CCTV System | 2026-12-09 → 2026-06-17 A (-175d) | 2026-12-17 → 2026-10-12 A (-66d) | 7d → 2d | 0% → 100% | 53.25d → none |  | resources Plumber [112 h]; Construction Cost [76349.2] → Plumber [112 h]; Construction Cost [66177.6] |
| HAL-C-C-E-963 | Installation of Access Control System | 2026-12-12 → 2026-06-17 A (-178d) | 2026-12-16 → 2026-10-26 (-51d) | 4d → 2d | 0% → 80% | 48.25d → 6.8d |  | resources Electrician [64 h]; Construction Cost [27616.9] → Electrician [64 h]; Construction Cost [24315.4] |
| HAL-C-C-E-933 | Installation of LP-1 Panel | 2026-10-10 A → 2026-07-25 A (-77d) | 2026-10-14 A → 2026-09-10 A (-34d) |  |  |  |  | resources Electrician [32 h]; Construction Cost [18403.5] → Electrician [32 h]; Construction Cost [15128.5] |
| HAL-C-C-E-903 | Installation of Telephone Cabinet | 2026-12-09 → 2026-07-29 A (-133d) | 2026-12-12 → 2026-10-01 A (-72d) |  | 0% → 100% | 48.25d → none |  | resources Electrician [32 h]; Construction Cost [26991.1] → Electrician [32 h]; Construction Cost [23299.8] |
| HAL-C-C-E-1350 | Installation of Solar power plant | 2026-10-11 A → 2026-08-12 A (-60d) | 2026-11-10 → 2026-10-01 A (-40d) | 14d → 7d | 10% → 100% | 38.6d → none |  | resources Plumber [112 h]; Construction Cost [253269] → Plumber [112 h]; Construction Cost [218966] |
| HAL-C-C-E-863 | Installation of Wiring Devices | 2026-11-07 → 2026-08-29 A (-70d) | 2026-11-11 → 2026-09-24 A (-48d) |  | 0% → 100% | 48.25d → none | HAL-C-C-E-873, HAL-C-C-A-1500 → HAL-C-C-E-873 | resources Electrician [64 h]; Construction Cost [19435.1] → Electrician [64 h]; Construction Cost [20742.2] |
| HAL-C-C-E-893 | Installation of Disconnect Switches | 2026-11-11 → 2026-08-29 A (-74d) | 2026-11-14 → 2026-09-24 A (-51d) |  | 0% → 100% | 48.25d → none |  | resources Electrician [32 h]; Construction Cost [30236] → Electrician [32 h]; Construction Cost [25808.4] |
| HAL-C-C-E-943 | Installation of PP-AC panel | 2026-12-07 → 2026-09-01 A (-97d) | 2026-12-09 → 2026-10-12 A (-58d) |  | 0% → 100% | 48.25d → none |  | resources Electrician [32 h]; Construction Cost [21648.5] → Electrician [32 h]; Construction Cost [18214] |
| HAL-C-C-E-883 | Installation of Main Distribution Board | 2026-12-05 → 2026-09-03 A (-93d) | 2026-12-07 → 2026-10-12 A (-56d) |  | 0% → 100% | 48.25d → none |  | resources Electrician [32 h]; Construction Cost [32472.7] → Electrician [32 h]; Construction Cost [25479.7] |
| HAL-C-C-E-843 | Installation of Lighting fixtures | 2026-11-30 → 2026-09-10 A (-81d) | 2026-12-05 → 2026-10-12 A (-54d) |  | 0% → 100% | 48.25d → none |  | resources Electrician [64 h]; Construction Cost [76166.7] → Electrician [64 h]; Construction Cost [59751.1] |
| HAL-C-C-E-823 | Installation of Fire Detectors & Accessories | 2026-11-21 → 2026-09-16 A (-66d) | 2026-11-25 → 2026-10-12 A (-44d) |  | 0% → 100% | 48.25d → none | HAL-C-C-E-813 → HAL-C-C-E-813 SS | resources Electrician [64 h]; Construction Cost [56740.4] → Electrician [64 h]; Construction Cost [31219.2] |
| HAL-C-C-E-973 | Monitor Modules for Fire Alarm | 2026-12-16 → 2026-09-22 A (-85d) | 2026-12-19 → 2026-10-26 (-54d) |  | 0% → 70% | 48.25d → 7d | HAL-C-C-E-963 → HAL-C-C-E-963 SS | resources Electrician [32 h]; Construction Cost [3882.38] → Electrician [32 h]; Construction Cost [3760.02] |
| HAL-C-C-E-993 | Firewarning flash light with sounder; wall mounted, Weather proof | 2026-12-21 → 2026-09-22 A (-90d) | 2026-12-23 → 2026-09-24 A (-90d) |  | 0% → 100% | 48.25d → none | HAL-C-C-E-983 → HAL-C-C-E-983 SS | resources Electrician [32 h]; Construction Cost [3082.69] → Electrician [32 h]; Construction Cost [2963.79] |
| HAL-C-C-E-813 | Installation of Fire Alarm Control Panel | 2026-11-16 → 2026-09-24 A (-53d) | 2026-11-21 → 2026-10-12 A (-40d) |  | 0% → 100% | 48.25d → none | HAL-C-C-E-833 → HAL-C-C-E-833, HAL-C-B-E-353 | resources Electrician [64 h]; Construction Cost [19451.4] → Electrician [64 h]; Construction Cost [16216.6] |
| HAL-C-C-E-983 | Line Isolator Modules for Fire Alarm | 2026-12-19 → 2026-09-24 A (-86d) | 2026-12-21 → 2026-10-12 A (-70d) |  | 0% → 100% | 48.25d → none | HAL-C-C-E-973 → HAL-C-C-E-973 SS | resources Electrician [32 h]; Construction Cost [185.4] → Electrician [32 h]; Construction Cost [163.42] |
| 1 | **STRUCTURAL** | 2026-02-17 → 2026-02-03 (-14d) | 2026-11-12 → 2026-08-26 (-78d) |  |  |  |  |  |
| 1 | **FOOTING** | 2026-02-17 → 2026-02-03 (-14d) | 2026-04-30 → 2026-05-25 (+25d) |  |  |  |  |  |
| HAL-C-A-S-210 | Excavation for footings | 2026-02-17 A → 2026-02-03 A (-14d) | 2026-03-24 A → 2026-05-16 A (+53d) | 4d → 6.12d |  |  |  | resources General Labour [112 h]; Equipment Operator [112 h]; Truck [32 h]; Excavator [32 h]; Mini Roller Compactor [32 h]; Construction Cost [89859.6] → General Labour [112 h]; Equipment Operator [112 h]; Truck [56 h]; Excavator [56 h]; Mini Roller Compactor [56 h]; Construction Cost [132992] |
| HAL-C-A-S-1037 | Anti Termite Below Footings | 2026-04-15 A → 2026-02-10 A (-64d) | 2026-04-15 A → 2026-05-20 A (+35d) |  |  |  | Engineering fill → HAL-C-A-S-210 | resources Mason [16 h]; Construction Cost [11905.5] → Mason [16 h]; Construction Cost [8441.61] |
| HAL-C-A-S-797 | Lean Concrete Below Footings | 2026-04-15 A → 2026-02-10 A (-64d) | 2026-04-15 A → 2026-05-20 A (+35d) |  |  |  |  | resources Mason [32 h]; Construction Cost [8229.34] → Mason [32 h]; Construction Cost [8238.87] |
| HAL-C-A-S-947 | Vapour Barrier for Footings | 2026-04-15 A → 2026-02-10 A (-64d) | 2026-04-15 A → 2026-05-20 A (+35d) |  |  |  |  | resources General Labour [16 h]; Construction Cost [7940.1] → General Labour [16 h]; Construction Cost [6030.16] |
| HAL-C-A-S-857 | Formwork for Footings | 2026-04-20 A → 2026-02-17 A (-62d) | 2026-04-22 A → 2026-05-24 A (+32d) |  |  |  |  | resources Carperter [64 h]; Construction Cost [25461.2] → Carperter [64 h]; Construction Cost [23267.9] |
| HAL-C-A-S-847 | Rebar for Footings | 2026-04-23 A → 2026-02-18 A (-64d) | 2026-04-28 A → 2026-05-24 A (+26d) | 4d → 6d |  |  |  | resources Steel Fixer [64 h]; Construction Cost [101845] → Steel Fixer [64 h]; Construction Cost [93071.6] |
| HAL-C-A-S-807 | Pouring Concrete for Footings | 2026-04-30 A → 2026-02-25 A (-64d) | 2026-04-30 A → 2026-05-25 A (+25d) |  |  |  |  | resources Carperter [16 h]; Mason [16 h]; Steel Fixer [16 h]; Concrete Mixer [8 h]; Equipment Operator [16 h]; Construction Cost [127306] → Carperter [16 h]; Mason [16 h]; Steel Fixer [16 h]; Concrete Mixer [8 h]; Equipment Operator [16 h]; Construction Cost [116339] |
| 2 | **COLUMN NECK** | 2026-04-23 → 2026-02-24 (-58d) | 2026-05-19 → 2026-06-22 (+34d) |  |  |  |  |  |
| HAL-C-A-S-897 | Rebar for column neck | 2026-04-23 A → 2026-02-24 A (-58d) | 2026-04-28 A → 2026-05-24 A (+26d) |  |  |  |  | resources Steel Fixer [32 h]; Construction Cost [14919.2] → Steel Fixer [32 h]; Construction Cost [21993.7] |
| HAL-C-A-S-907 | Formwork for column neck | 2026-05-03 A → 2026-02-28 A (-64d) | 2026-05-05 A → 2026-06-02 A (+28d) |  |  |  |  | resources Carperter [32 h]; Construction Cost [9946.13] → Carperter [32 h]; Construction Cost [5498.72] |
| HAL-C-A-S-887 | Pouring Concrete for column neck | 2026-05-05 A → 2026-03-02 A (-64d) | 2026-05-05 A → 2026-06-02 A (+28d) |  |  |  |  | resources Mason [16 h]; Carperter [16 h]; Concrete Mixer [8 h]; Steel Fixer [16 h]; Equipment Operator [16 h]; Construction Cost [24865.3] → Mason [16 h]; Carperter [16 h]; Concrete Mixer [8 h]; Steel Fixer [16 h]; Equipment Operator [16 h]; Construction Cost [27492.4] |
| HAL-C-A-S-937 | Damp proof /Bitumin paint on Footings & column neck | 2026-05-07 A → 2026-03-28 A (-40d) | 2026-05-10 A → 2026-06-04 A (+25d) |  |  |  |  | resources Painter [32 h]; Construction Cost [24777.7] → Painter [32 h]; Construction Cost [6903.81] |

| ID | Task | Start | Finish | Duration | Complete | Total float | Predecessors | Other |
| --- | --- | --- | --- | --- | --- | --- | --- | --- |
| HAL-C-A-S-997 | Backfilling / Compaction up to Bottom of Grade Beams | 2026-05-13 A → 2026-03-29 A (-45d) | 2026-05-19 A → 2026-06-22 A (+34d) | 7d → 12d |  |  |  | resources General Labour [256 h]; Truck [128 h]; Mini Roller Compactor [128 h]; Equipment Operator [256 h]; Wheel Loader [128 h]; Construction Cost [46046.2] → General Labour [256 h]; Truck [128 h]; Mini Roller Compactor [128 h]; Equipment Operator [256 h]; Wheel Loader [128 h]; Construction Cost [32707.9] |
| 3 | **GRADE BEAM** | 2026-05-20 → 2026-06-13 (+24d) | 2026-06-09 → 2026-06-30 (+21d) |  |  |  |  |  |
| HAL-C-A-S-1047 | Anti Termite Below Grade Beams | 2026-05-20 A → 2026-06-13 A (+24d) | 2026-05-20 A → 2026-06-14 A (+25d) |  |  |  |  | resources Mason [16 h]; Construction Cost [11905.5] → Mason [16 h]; Construction Cost [8441.61] |
| HAL-C-A-S-817 | Lean Concrete Below Grade Beams | 2026-05-20 A → 2026-06-13 A (+24d) | 2026-05-20 A → 2026-06-14 A (+25d) |  |  |  |  | resources Mason [32 h]; Construction Cost [4431.19] → Mason [32 h]; Construction Cost [8238.87] |
| HAL-C-A-S-967 | Vapour barrier for Grade Beams | 2026-05-20 A → 2026-06-13 A (+24d) | 2026-05-20 A → 2026-06-14 A (+25d) |  |  |  |  | resources General Labour [32 h]; Construction Cost [5293.4] → General Labour [32 h]; Construction Cost [4019.9] |
| HAL-C-A-S-1027 | Anchor bolts installation | 2026-05-31 A → 2026-06-17 A (+17d) | 2026-06-01 A → 2026-06-23 A (+22d) |  |  |  |  | resources Carperter [32 h]; Construction Cost [57238.8] → Carperter [32 h]; Construction Cost [5667.68] |
| HAL-C-A-S-867 | Rebar for Grade Beams | 2026-05-21 A → 2026-06-17 A (+27d) | 2026-05-24 A → 2026-06-23 A (+30d) |  |  |  |  | resources Steel Fixer [80 h]; Construction Cost [27194.5] → Steel Fixer [80 h]; Construction Cost [24993.1] |
| HAL-C-A-S-877 | Formwork for Grade Beams | 2026-05-24 A → 2026-06-17 A (+24d) | 2026-06-02 A → 2026-06-23 A (+21d) |  |  |  |  | resources Carperter [32 h]; Construction Cost [6798.61] → Carperter [32 h]; Construction Cost [6248.27] |
| HAL-C-A-S-827 | Pouring Concrete for Grade Beams | 2026-06-03 A → 2026-06-24 A (+21d) | 2026-06-03 A → 2026-06-24 A (+21d) |  |  |  |  | resources Mason [16 h]; Carperter [16 h]; Concrete Mixer [8 h]; Steel Fixer [16 h]; Equipment Operator [16 h]; Construction Cost [33993.1] → Mason [16 h]; Carperter [16 h]; Concrete Mixer [8 h]; Steel Fixer [16 h]; Equipment Operator [16 h]; Construction Cost [31241.3] |
| HAL-C-A-S-977 | Damp proof /Bitumin paint on Grade Beams | 2026-06-07 A → 2026-06-25 A (+18d) | 2026-06-09 A → 2026-06-30 A (+21d) |  |  |  |  | resources Painter [80 h]; Construction Cost [24777.7] → Painter [80 h]; Construction Cost [6903.81] |
| 5 | **SLAB ON GRADE** | 2026-06-14 → 2026-06-17 (+3d) | 2026-11-12 → 2026-08-26 (-78d) |  |  |  |  |  |
| HAL-C-A-S-1017 | Concrete pad | 2026-11-05 → 2026-06-17 A (-141d) | 2026-11-12 → 2026-06-20 A (-145d) |  | 0% → 100% | 5d → none |  | resources Mason [112 h]; Construction Cost [907.11] → Mason [112 h]; Construction Cost [1803.82] |
| HAL-C-A-S-1007 | Backfilling / Compaction for Slab on Grade | 2026-06-14 A → 2026-07-01 A (+17d) | 2026-06-22 A → 2026-07-16 A (+24d) | 7d → 12d |  |  |  | resources Mini Roller Compactor [128 h]; General Labour [256 h]; Equipment Operator [256 h]; Wheel Loader [128 h]; Truck [128 h]; Construction Cost [23023.1] → Mini Roller Compactor [128 h]; General Labour [256 h]; Equipment Operator [256 h]; Wheel Loader [128 h]; Truck [128 h]; Construction Cost [32707.9] |
| HAL-C-A-S-837 | Pouring Concrete for Ground Slab | 2026-07-29 A → 2026-08-23 A (+25d) | 2026-08-01 A → 2026-08-26 A (+25d) |  |  |  |  | resources Mason [64 h]; Carperter [64 h]; Steel Fixer [64 h]; Concrete Mixer [32 h]; Equipment Operator [64 h]; Construction Cost [344195] → Mason [64 h]; Carperter [64 h]; Steel Fixer [64 h]; Concrete Mixer [32 h]; Equipment Operator [64 h]; Construction Cost [304092] |
| HAL-C-A-S-957 | Anti Termite Treatment below Ground Slab | 2026-07-29 A → 2026-08-23 A (+25d) | 2026-08-01 A → 2026-08-26 A (+25d) |  |  |  |  | resources General Labour [16 h]; Construction Cost [15874.1] → General Labour [16 h]; Construction Cost [11255.5] |
| HAL-C-A-S-987 | Vapour barrier for below Ground Slab | 2026-07-29 A → 2026-08-23 A (+25d) | 2026-08-01 A → 2026-08-26 A (+25d) |  |  |  |  | resources General Labour [32 h]; Construction Cost [13233.5] → General Labour [32 h]; Construction Cost [10050.1] |
| 4 | **COLUMNS & BEAMS** | 2026-05-21 → 2026-03-28 (-54d) | 2026-09-14 → 2026-08-15 (-30d) |  |  |  |  |  |
| HAL-C-A-S-6101 | Rebar for Tie Beams | 2026-05-21 A → 2026-03-28 A (-54d) | 2026-05-24 A → 2026-03-31 A (-54d) |  |  |  |  | resources Steel Fixer [64 h]; Construction Cost [7263.64] → Steel Fixer [64 h]; Construction Cost [7796.52] |
| HAL-C-A-S-6102 | Formwork for Tie Beams | 2026-05-24 A → 2026-03-29 A (-56d) | 2026-06-02 A → 2026-04-01 A (-62d) |  |  |  |  | resources Carperter [32 h]; Construction Cost [1815.91] → Carperter [32 h]; Construction Cost [1949.44] |
| HAL-C-A-S-6103 | Pouring Concrete for Tie Beams | 2026-06-03 A → 2026-04-02 A (-62d) | 2026-06-03 A → 2026-04-02 A (-62d) |  |  |  |  | resources Mason [16 h]; Carperter [16 h]; Concrete Mixer [32 h]; Steel Fixer [16 h]; Equipment Operator [16 h]; Construction Cost [9079.54] → Mason [16 h]; Carperter [16 h]; Concrete Mixer [8 h]; Steel Fixer [16 h]; Equipment Operator [16 h]; Construction Cost [9745.95] |
| HAL-C-A-S-5101 | Rebar for column | 2026-06-22 A → 2026-07-20 A (+28d) | 2026-07-02 A → 2026-07-23 A (+21d) | 5d → 7d |  |  |  | resources Steel Fixer [112 h]; Construction Cost [20144] → Steel Fixer [112 h]; Construction Cost [18494.8] |
| HAL-C-A-S-5102 | Formwork for column | 2026-06-29 A → 2026-07-27 A (+28d) | 2026-07-05 A → 2026-08-01 A (+27d) |  |  |  |  | resources Carperter [64 h]; Construction Cost [5036.01] → Carperter [64 h]; Construction Cost [4623.84] |
| HAL-C-A-S-5103 | Pouring Concrete for column | 2026-07-09 A → 2026-07-28 A (+19d) | 2026-07-12 A → 2026-08-01 A (+20d) |  |  |  |  | resources Mason [16 h]; Carperter [16 h]; Concrete Mixer [32 h]; Steel Fixer [16 h]; Equipment Operator [16 h]; Construction Cost [25180.1] → Mason [16 h]; Carperter [16 h]; Concrete Mixer [8 h]; Steel Fixer [16 h]; Equipment Operator [16 h]; Construction Cost [23118.6] |
| HAL-C-A-S-6113 | Rebar for Beams | 2026-08-30 A → 2026-08-01 A (-29d) | 2026-09-01 A → 2026-08-13 A (-19d) |  |  |  |  | resources Steel Fixer [64 h]; Construction Cost [13379.1] → Steel Fixer [64 h]; Construction Cost [11954.6] |
| HAL-C-A-S-6123 | Formwork for Beams | 2026-09-02 A → 2026-08-11 A (-22d) | 2026-09-08 A → 2026-08-15 A (-24d) |  |  |  |  | resources Carperter [32 h]; Construction Cost [3344.77] → Carperter [32 h]; Construction Cost [2988.97] |
| HAL-C-A-S-6133 | Pouring Concrete for Beams | 2026-09-08 A → 2026-08-15 A (-24d) | 2026-09-14 A → 2026-08-15 A (-30d) |  |  |  |  | resources Mason [16 h]; Carperter [16 h]; Concrete Mixer [32 h]; Steel Fixer [16 h]; Equipment Operator [16 h]; Construction Cost [16723.9] → Mason [16 h]; Carperter [16 h]; Concrete Mixer [8 h]; Steel Fixer [16 h]; Equipment Operator [16 h]; Construction Cost [14943.6] |
| 5 | **STRUCTURAL STEEL** | 2026-06-24 → 2026-06-13 (-11d) | 2026-11-04 → 2026-09-14 (-51d) |  |  |  |  |  |
| HAL-C-A-SS-1030 | Steel members for external platform | 2026-09-01 A → 2026-06-13 A (-80d) | 2026-09-02 A → 2026-07-23 A (-41d) | 7d → 5d |  |  |  | resources Construction Cost [18670.8]; General Labour [112 h]; Mobile Crane [56 h]; Structural Steel Fixer [112 h]; Equipment Operator [112 h] → Construction Cost [27249.1]; General Labour [112 h]; Mobile Crane [56 h]; Structural Steel Fixer [112 h]; Equipment Operator [112 h] |
| HAL-C-A-A-210 | Installation of columns | 2026-06-24 A → 2026-07-02 A (+8d) | 2026-06-24 A → 2026-07-08 A (+14d) |  |  |  | HAL-C-A-S-837, HAL-C-C-SS-280 → HAL-C-A-S-837 | resources Structural Steel Fixer [80 h]; General Labour [80 h]; Equipment Operator [80 h]; Mobile Crane [24 h]; Construction Cost [217508] → Structural Steel Fixer [80 h]; General Labour [80 h]; Equipment Operator [80 h]; Mobile Crane [40 h]; Construction Cost [164363] |
| HAL-C-A-A-220 | Installation of raft and purlins | 2026-06-25 A → 2026-07-02 A (+7d) | 2026-06-25 A → 2026-07-09 A (+14d) |  |  |  |  | resources Structural Steel Fixer [160 h]; General Labour [160 h]; Mobile Crane [56 h]; Equipment Operator [160 h]; Construction Cost [326261] → Structural Steel Fixer [160 h]; General Labour [160 h]; Mobile Crane [80 h]; Equipment Operator [160 h]; Construction Cost [340061] |
| HAL-C-A-A-1440 | Steel members for office area | 2026-10-01 A → 2026-07-20 A (-73d) | 2026-10-04 A → 2026-07-23 A (-73d) | 7d → 5d |  |  |  | resources Construction Cost [115805]; Structural Steel Fixer [112 h]; Mobile Crane [56 h]; General Labour [112 h]; Equipment Operator [112 h] → Construction Cost [97318.2]; Structural Steel Fixer [112 h]; Mobile Crane [56 h]; General Labour [112 h]; Equipment Operator [112 h] |
| HAL-C-A-A-1430 | Intumescent paint to steel works | 2026-07-08 A → 2026-07-25 A (+17d) | 2026-07-14 A → 2026-08-02 A (+19d) | 7d → 5d |  |  | HAL-E-DL-A-1700, HAL-C-A-A-220 → HAL-E-ST-A-1700, HAL-C-A-A-220 | resources Painter [112 h]; Construction Cost [317760] → Painter [112 h]; Construction Cost [269284] |
| HAL-C-A-A-250 | Installation of roof sheet | 2026-07-26 A → 2026-08-01 A (+6d) | 2026-07-30 A → 2026-08-09 A (+10d) |  |  |  | HAL-C-A-A-230, HAL-C-A-A-1430, HAL-C-A-S-6133 → HAL-C-A-A-230, HAL-C-A-A-1430, HAL-C-A-S-6133, HAL-C-A-SS-1020 | resources Roof sheet worker [160 h]; General Labour [160 h]; Mobile Crane [40 h]; Equipment Operator [160 h]; Construction Cost [217508] → Roof sheet worker [160 h]; General Labour [160 h]; Mobile Crane [80 h]; Equipment Operator [160 h]; Construction Cost [453414] |
| HAL-C-A-SS-1040 | Epoxy paint for external platform | 2026-10-20 → 2026-08-03 A (-78d) | 2026-10-25 → 2026-08-06 A (-80d) |  | 0% → 100% | 17d → none |  | resources Painter [80 h]; Construction Cost [3734.16] → Painter [80 h]; Construction Cost [6812.27] |
| HAL-C-A-A-240 | Installation of wall sandwich panel | 2026-10-03 A → 2026-08-19 A (-45d) | 2026-10-20 A → 2026-08-29 A (-52d) |  |  |  |  | resources Sandwich panel worker [112 h]; General Labour [112 h]; Mobile Crane [40 h]; Equipment Operator [112 h]; Construction Cost [326261] → Sandwich panel worker [112 h]; General Labour [112 h]; Mobile Crane [56 h]; Equipment Operator [112 h]; Construction Cost [170030] |
| HAL-C-A-SS-1020 | Epoxy paint to steel members at office area | 2026-10-28 → 2026-09-13 A (-45d) | 2026-11-04 → 2026-09-14 A (-51d) | 7d → 5d | 0% → 100% | 5d → none | HAL-C-A-A-1440, HAL-C-C-SS-1040, HAL-C-C-SS-1020 → HAL-C-A-A-1440 | resources Painter [112 h]; Construction Cost [23161] → Painter [112 h]; Construction Cost [24329.5] |
| 2 | **ARCHITECTURAL** | 2026-08-03 → 2026-08-01 (-2d) | 2026-12-27 → 2026-10-28 (-60d) |  |  |  |  |  |
| 1 | **MASONARY WORKS** | 2026-08-05 → 2026-08-01 (-4d) | 2026-09-01 → 2026-08-15 (-17d) |  |  |  |  |  |
| HAL-C-A-A-1030 | Block work at toilet area | 2026-08-05 A → 2026-08-01 A (-4d) | 2026-08-24 A → 2026-08-15 A (-9d) |  |  |  | HAL-C-A-A-260, HAL-C-A-SS-1040 → HAL-C-A-A-260 | resources Mason [112 h]; Construction Cost [14436.3] → Mason [112 h]; Construction Cost [15836.3] |
| HAL-C-A-A-230 | Block work at factory area | 2026-08-05 A → 2026-08-01 A (-4d) | 2026-08-10 A → 2026-08-15 A (+5d) | 10d → 12d |  |  | HAL-C-A-S-837, HAL-C-A-A-220, HAL-C-C-A-290 → HAL-C-A-S-837 | resources AAC panel erector [240 h]; General Labour [240 h]; Equipment Operator [240 h]; Mobile Crane [120 h]; Construction Cost [58338.7] → AAC panel erector [240 h]; General Labour [240 h]; Equipment Operator [240 h]; Mobile Crane [120 h]; Construction Cost [38856.6] |
| HAL-C-A-A-260 | Block work at office area | 2026-08-05 A → 2026-08-01 A (-4d) | 2026-09-01 A → 2026-08-15 A (-17d) | 7d → 8d |  |  | HAL-C-A-A-250, HAL-C-A-A-1440, HAL-C-A-SS-1020 → HAL-C-A-A-230 SS+3d | resources AAC panel erector [160 h]; General Labour [160 h]; Mobile Crane [56 h]; Equipment Operator [160 h]; Construction Cost [6179.18] → AAC panel erector [160 h]; General Labour [160 h]; Mobile Crane [80 h]; Equipment Operator [160 h]; Construction Cost [9714] |
| 5 | **WALL FINISHES** | 2026-09-24 → 2026-09-08 (-16d) | 2026-11-23 → 2026-10-24 (-30d) |  |  |  |  |  |
| HAL-C-A-A-1040 | Internal Wall Plaster | 2026-09-24 A → 2026-09-08 A (-16d) | 2026-10-06 A → 2026-09-12 A (-24d) | 10d → 15d |  |  | HAL-C-A-A-1030, HAL-C-A-E-643, HAL-C-A-S-1017, HAL-C-C-A-1780 → HAL-C-A-A-1030, HAL-C-A-E-643 SS, HAL-C-A-S-1017 | resources Mason [240 h]; Construction Cost [48590.2] → Mason [240 h]; Construction Cost [29610.2] |
| HAL-C-A-A-1090 | Paint to Plaster (Primer, Putty & First Coat) | 2026-10-07 A → 2026-09-15 A (-22d) | 2026-11-23 → 2026-10-24 A (-30d) |  | 85% → 100% | 44.65d → none |  | resources Painter [112 h]; Construction Cost [44167.3] → Painter [112 h]; Construction Cost [26649.5] |
| 2 | **CIELING FINISHES** | 2026-11-14 → 2026-09-17 (-58d) | 2026-11-18 → 2026-10-15 (-34d) |  |  |  |  |  |
| HAL-C-A-A-1100 | Installation of Ceiling Gypsum Board | 2026-11-14 → 2026-09-17 A (-58d) | 2026-11-18 → 2026-10-15 A (-34d) |  | 0% → 100% | 27d → none |  | resources Carperter [80 h]; Construction Cost [46792.3] → Carperter [80 h]; Construction Cost [44650.2] |
| 6 | **FLOOR FINISHES** | 2026-10-05 → 2026-09-16 (-19d) | 2026-12-27 → 2026-10-15 (-73d) |  |  |  |  |  |
| HAL-C-A-A-1080 | Tiles for Toilet | 2026-10-05 A → 2026-09-16 A (-19d) | 2026-10-10 A → 2026-09-19 A (-21d) |  |  |  | HAL-C-A-A-1220 → HAL-C-A-A-1220, HAL-P-ST-EX-110 | resources Tile Fixer [112 h]; Construction Cost [46530.7] → Tile Fixer [112 h]; Construction Cost [48089.6] |
| HAL-C-A-A-1110 | Tiles for Office Area | 2026-11-19 → 2026-09-24 A (-56d) | 2026-11-21 → 2026-09-26 A (-56d) |  | 0% → 100% | 27d → none |  | resources Tile Fixer [32 h]; Construction Cost [26867.3] → Tile Fixer [32 h]; Construction Cost [25626.5] |
| HAL-C-A-A-1240 | Granite strip | 2026-11-22 → 2026-09-24 A (-59d) | 2026-11-23 → 2026-10-03 A (-51d) |  | 0% → 100% | 27d → none |  | resources Tile Fixer [32 h]; Construction Cost [671.12] → Tile Fixer [32 h]; Construction Cost [1454.24] |
| HAL-C-A-A-1260 | Epoxy paint | 2026-12-20 → 2026-09-24 A (-87d) | 2026-12-27 → 2026-10-15 A (-73d) |  | 0% → 100% | 27d → none | HAL-C-A-A-1200, HAL-C-C-A-1670 → HAL-C-A-A-1240 | resources Painter [112 h]; Construction Cost [115420] → Painter [112 h]; Construction Cost [102516] |
| 3 | **DOORS & WINDOWS** | 2026-11-05 → 2026-08-13 (-84d) | 2026-11-21 → 2026-10-15 (-37d) |  |  |  |  |  |
| HAL-C-A-A-1370 | Skylight fixtures installation | 2026-11-21 → 2026-08-13 A (-100d) | 2026-11-21 → 2026-08-22 A (-91d) |  | 0% → 100% | 26.2d → none |  | resources Carperter [16 h]; Construction Cost [6489.89] → Carperter [16 h]; Construction Cost [61929.7] |
| HAL-C-A-A-1050 | Roll up Shutter Door | 2026-11-14 → 2026-08-17 A (-89d) | 2026-11-14 → 2026-09-20 A (-55d) |  | 0% → 100% | 26.2d → none |  | resources Carperter [16 h]; Construction Cost [68619.2] → Carperter [16 h]; Construction Cost [66353.3] |
| HAL-C-A-A-1420 | Window (CW1) | 2026-11-05 → 2026-09-08 A (-58d) | 2026-11-12 → 2026-09-24 A (-49d) |  | 0% → 100% | 26.2d → none |  | resources Carperter [112 h]; Construction Cost [94173.2] → Carperter [112 h]; Construction Cost [90682.8] |
| HAL-C-A-A-1060 | Supply and install (D5) 1000*2200mm single leaf steel door with door | 2026-11-15 → 2026-09-17 A (-59d) | 2026-11-15 → 2026-09-19 A (-57d) |  | 0% → 100% | 26.2d → none |  | resources Carperter [16 h]; Construction Cost [16016.2] → Carperter [16 h]; Construction Cost [15482.4] |
| HAL-C-A-A-1360 | Supply and install fire rated 45 min (D2) 1200*2200 mm single leaf steel door | 2026-11-19 → 2026-09-17 A (-63d) | 2026-11-19 → 2026-09-19 A (-61d) |  | 0% → 100% | 26.2d → none |  | resources Carperter [16 h]; Construction Cost [16711.5] → Carperter [16 h]; Construction Cost [16146] |
| HAL-C-A-A-1120 | Supply and install (D4) 800*2200 mm single leaf aluminum door with door | 2026-11-16 → 2026-09-24 A (-53d) | 2026-11-16 → 2026-10-15 A (-32d) |  | 0% → 100% | 26.2d → none |  | resources Carperter [16 h]; Construction Cost [22737.8] → Carperter [16 h]; Construction Cost [21896.6] |
| HAL-C-A-A-1130 | Supply and install (D7) 1000*2200 mm single leaf aluminum door with door | 2026-11-17 → 2026-09-24 A (-54d) | 2026-11-17 → 2026-10-15 A (-33d) |  | 0% → 100% | 26.2d → none |  | resources Carperter [16 h]; Construction Cost [7811.07] → Carperter [16 h]; Construction Cost [7520.04] |
| HAL-C-A-A-1350 | Supply and install (D3) 1000*2200 mm single leaf aluminum door with door | 2026-11-18 → 2026-09-24 A (-55d) | 2026-11-18 → 2026-10-15 A (-34d) |  | 0% → 100% | 26.2d → none |  | resources Carperter [16 h]; Construction Cost [16016.2] → Carperter [16 h]; Construction Cost [15482.4] |
| 4 | **WATER PROOFING WORKS** | 2026-10-18 → 2026-09-14 (-34d) | 2026-10-20 → 2026-09-15 (-35d) |  |  |  |  |  |
| HAL-C-A-A-1220 | Waterproofing membrane for toilets | 2026-10-18 A → 2026-09-14 A (-34d) | 2026-10-20 A → 2026-09-15 A (-35d) |  |  |  | HAL-C-A-M-820, HAL-C-A-A-1040 → HAL-C-A-M-820, HAL-C-A-A-1040, HAL-C-A-A-1370 | resources General Labour [64 h]; Construction Cost [4879.02] → General Labour [64 h]; Construction Cost [4653.33] |
| 7 | **METAL WORKS** | 2026-08-03 → 2026-08-18 (+15d) | 2026-12-06 → 2026-10-25 (-42d) |  |  |  |  |  |
| HAL-C-A-A-1150 | Steel Ladder | 2026-11-24 → 2026-08-18 A (-98d) | 2026-11-25 → 2026-08-29 A (-88d) |  | 0% → 100% | 27d → none |  | resources Steel Fixer [32 h]; General Labour [32 h]; Construction Cost [9839.16] → Steel Fixer [32 h]; General Labour [32 h]; Construction Cost [9510.64] |
| HAL-C-A-A-1170 | Aluminium composite panel | 2026-12-01 → 2026-09-14 A (-78d) | 2026-12-06 → 2026-10-03 A (-64d) |  | 0% → 100% | 27d → none |  | resources Steel Fixer [80 h]; General Labour [80 h]; Construction Cost [175889] → Steel Fixer [80 h]; General Labour [80 h]; Construction Cost [175670] |
| HAL-C-A-A-1160 | Galvanised Steel Gratings | 2026-08-03 A → 2026-10-10 A (+68d) | 2026-08-03 A → 2026-10-11 A (+69d) |  |  |  | HAL-C-A-A-1170 → HAL-C-A-A-1170 SS | resources Steel Fixer [32 h]; General Labour [32 h]; Construction Cost [6455.16] → Steel Fixer [32 h]; General Labour [32 h]; Construction Cost [6237.21] |
| HAL-C-A-A-1250 | Steel railing works | 2026-11-26 → 2026-10-24 A (-33d) | 2026-11-30 → 2026-10-25 A (-36d) |  | 0% → 100% | 27d → none | HAL-C-A-A-1150 → HAL-C-A-A-1150 SS | resources Steel Fixer [64 h]; General Labour [64 h]; Construction Cost [1533.98] → Steel Fixer [64 h]; General Labour [64 h]; Construction Cost [7497.92] |
| 8 | **SPECIALTIES** | 2026-12-07 → 2026-09-22 (-76d) | 2026-12-19 → 2026-10-28 (-52d) |  |  |  |  |  |
| HAL-C-A-A-1180 | Installation of fittings | 2026-12-07 → 2026-09-22 A (-76d) | 2026-12-14 → 2026-09-24 A (-81d) | 7d → 4d | 0% → 100% | 27d → none | HAL-C-A-A-1160 → HAL-C-A-A-1160 SS | resources Plumber [112 h]; Construction Cost [22981.3] → Plumber [112 h]; Construction Cost [21686.5] |
| HAL-C-A-A-1200 | Furniture Installation | 2026-12-19 → 2026-10-20 A (-60d) | 2026-12-19 → 2026-10-20 A (-60d) |  | 0% → 100% | 27d → none | HAL-C-A-A-1410 → HAL-C-A-A-1410 SS | resources General Labour [16 h]; Mason [16 h]; Construction Cost [12468.8] → General Labour [16 h]; Mason [16 h]; Construction Cost [10561.2] |

| ID | Task | Start | Finish | Duration | Complete | Total float | Predecessors | Other |
| --- | --- | --- | --- | --- | --- | --- | --- | --- |
| HAL-C-A-A-1410 | Identification sign; ID01 & ID02 | 2026-12-15 → 2026-10-26 (-50d) | 2026-12-17 → 2026-10-28 (-50d) |  |  | 27d → 6d | HAL-C-A-A-1180 → HAL-C-A-A-1180 SS | resources Mason [48 h]; Construction Cost [9630.56] → Mason [48 h]; Construction Cost [9289.46] |
| 3 | **MECHANICAL** | 2026-06-25 → 2026-07-11 (+16d) | 2026-12-13 → 2026-10-08 (-66d) |  |  |  |  |  |
| 1 | **HVAC** | 2026-11-23 → 2026-08-06 (-109d) | 2026-12-09 → 2026-10-04 (-66d) |  |  |  |  |  |
| 1 | **FIRST STAGE** | 2026-11-30 → 2026-08-06 (-116d) | 2026-12-05 → 2026-09-16 (-80d) |  |  |  |  |  |
| HAL-C-A-M-760 | Installation of HVAC Ducts | 2026-11-30 → 2026-08-06 A (-116d) | 2026-12-02 → 2026-09-16 A (-77d) |  | 0% → 100% | 46.65d → none |  | resources Ductman [32 h]; Construction Cost [149489] → Ductman [32 h]; Construction Cost [141482] |
| HAL-C-A-M-790 | Installation of Duct insulation | 2026-12-02 → 2026-08-06 A (-118d) | 2026-12-05 → 2026-09-16 A (-80d) |  | 0% → 100% | 46.65d → none |  | resources Ductman [32 h]; Construction Cost [21205.4] → Ductman [32 h]; Construction Cost [18747.3] |
| 2 | **SECOND STAGE** | 2026-11-23 → 2026-09-10 (-74d) | 2026-12-09 → 2026-10-04 (-66d) |  |  |  |  |  |
| HAL-C-A-M-780 | Installation of Wall Propeller Type Exhaust Fan | 2026-11-25 → 2026-09-10 A (-76d) | 2026-11-30 → 2026-09-12 A (-79d) |  | 0% → 100% | 46.65d → none |  | resources AC Technician [64 h]; Construction Cost [46831.6] → AC Technician [64 h]; Construction Cost [17417.7] |
| HAL-C-A-M-750 | Installation of Exhaust Fans | 2026-11-23 → 2026-09-16 A (-68d) | 2026-11-25 → 2026-09-17 A (-69d) |  | 0% → 100% | 46.65d → none |  | resources AC Technician [32 h]; Construction Cost [7938.56] → AC Technician [32 h]; Construction Cost [9331.24] |
| HAL-C-A-M-770 | Installation of Diffuser | 2026-12-05 → 2026-09-16 A (-80d) | 2026-12-07 → 2026-10-04 A (-64d) |  | 0% → 100% | 46.65d → none |  | resources Ductman [32 h]; Construction Cost [2144] → Ductman [32 h]; Construction Cost [2764.72] |
| HAL-C-A-M-960 | Supply, install, test and commission door grilles & exhaust louvers | 2026-12-07 → 2026-09-16 A (-82d) | 2026-12-09 → 2026-10-04 A (-66d) |  | 0% → 100% | 46.65d → none |  | resources Ductman [32 h]; Construction Cost [5574.4] → Ductman [32 h]; Construction Cost [7188.28] |
| 2 | **FIRE FIGHTING SYSTEM** | 2026-09-30 → 2026-08-06 (-55d) | 2026-12-13 → 2026-09-24 (-80d) |  |  |  |  |  |
| 1 | **FIRST STAGE** | 2026-09-30 → 2026-08-06 (-55d) | 2026-10-04 → 2026-09-17 (-17d) |  |  |  |  |  |
| HAL-C-A-M-920 | Installation of Fire Fighting Pipes (Seamless Black Steel) | 2026-09-30 A → 2026-08-06 A (-55d) | 2026-10-04 A → 2026-09-17 A (-17d) |  |  |  |  | resources Pipe Fitter [112 h]; Construction Cost [72394.8] → Pipe Fitter [112 h]; Construction Cost [60425.7] |
| HAL-C-A-M-930 | Installation of Fire Fighting Valve | 2026-09-30 A → 2026-08-06 A (-55d) | 2026-10-04 A → 2026-09-05 A (-29d) |  |  |  |  | resources Pipe Fitter [80 h]; Construction Cost [12199.4] → Pipe Fitter [80 h]; Construction Cost [12712.2] |
| 2 | **SECOND STAGE** | 2026-11-23 → 2026-09-17 (-67d) | 2026-12-13 → 2026-09-24 (-80d) |  |  |  |  |  |
| HAL-C-A-M-990 | Supply, install, test and commission Fire Department Connection(FDC) | 2026-12-09 → 2026-09-17 A (-83d) | 2026-12-13 → 2026-09-19 A (-85d) |  | 0% → 100% | 46.65d → none | HAL-C-A-M-960 → HAL-C-A-M-960 SS | resources Pipe Fitter [48 h]; Construction Cost [2706.06] → Pipe Fitter [48 h]; Construction Cost [2598.84] |
| HAL-C-A-M-940 | Installation of Fire Hose Cabinet | 2026-11-23 → 2026-09-22 A (-62d) | 2026-11-26 → 2026-09-24 A (-63d) |  | 0% → 100% | 60.25d → none |  | resources Pipe Fitter [48 h]; Construction Cost [15158.6] → Pipe Fitter [48 h]; Construction Cost [11147.4] |
| 3 | **SEWER AND DRAINAGE SYSTEM** | 2026-06-25 → 2026-07-11 (+16d) | 2026-12-01 → 2026-10-08 (-54d) |  |  |  |  |  |
| 1 | **FIRST STAGE** | 2026-06-25 → 2026-07-11 (+16d) | 2026-11-15 → 2026-08-06 (-101d) |  |  |  |  |  |
| HAL-C-A-M-1000 | Installation of Trench drain | 2026-06-25 A → 2026-07-11 A (+16d) | 2026-06-28 A → 2026-08-06 A (+39d) |  |  |  |  | resources Plumber [80 h]; Construction Cost [11508.8] → Plumber [80 h]; Construction Cost [11379.6] |
| HAL-C-A-M-820 | Installation of Sanitary Waste / Drainage Pipes | 2026-06-27 A → 2026-07-11 A (+14d) | 2026-06-29 A → 2026-08-06 A (+38d) |  |  |  |  | resources Plumber [64 h]; Construction Cost [18585.1] → Plumber [64 h]; Construction Cost [14362.4] |
| HAL-C-A-M-840 | Installation of Floor Drain | 2026-11-14 → 2026-07-11 A (-126d) | 2026-11-15 → 2026-08-06 A (-101d) |  | 0% → 100% | 5d → none |  | resources Plumber [32 h]; Construction Cost [11056] → Plumber [32 h]; Construction Cost [10616.5] |
| 2 | **SECOND STAGE** | 2026-11-16 → 2026-07-11 (-128d) | 2026-12-01 → 2026-10-08 (-54d) |  |  |  |  |  |
| HAL-C-A-M-860 | Installation of Roof Vent Cap | 2026-11-30 → 2026-07-11 A (-142d) | 2026-12-01 → 2026-09-10 A (-82d) |  | 0% → 100% | 44.7d → none |  | resources Pipe Fitter [32 h]; Construction Cost [927.12] → Pipe Fitter [32 h]; Construction Cost [829.41] |
| HAL-C-A-M-800 | Installation of Electric Water Heater | 2026-11-16 → 2026-09-05 A (-72d) | 2026-11-17 → 2026-09-10 A (-68d) |  | 0% → 100% | 5d → none |  | resources Plumber [32 h]; Construction Cost [1819.51] → Plumber [32 h]; Construction Cost [1592.48] |
| HAL-C-A-M-810 | Installation of Sanitary Fixture and Accessories | 2026-11-18 → 2026-10-04 A (-45d) | 2026-11-22 → 2026-10-08 A (-45d) |  | 0% → 100% | 5d → none |  | resources Plumber [64 h]; Construction Cost [19921.7] → Plumber [64 h]; Construction Cost [16243] |
| HAL-C-A-M-830 | Installation of Lavotary /Wash Basin | 2026-11-23 → 2026-10-04 A (-50d) | 2026-11-24 → 2026-10-08 A (-47d) |  | 0% → 100% | 44.7d → none |  | resources Plumber [32 h]; Construction Cost [21416.7] → Plumber [32 h]; Construction Cost [20348.3] |
| HAL-C-A-M-850 | Installation of Water Tap | 2026-11-28 → 2026-10-04 A (-55d) | 2026-11-29 → 2026-10-08 A (-52d) |  | 0% → 100% | 44.7d → none |  | resources Plumber [32 h]; Construction Cost [2874.14] → Plumber [32 h]; Construction Cost [2654.13] |
| HAL-C-A-M-890 | Installation of Bib Tap | 2026-11-25 → 2026-10-04 A (-52d) | 2026-11-26 → 2026-10-08 A (-49d) |  | 0% → 100% | 44.7d → none |  | resources Plumber [32 h]; Construction Cost [1900.66] → Plumber [32 h]; Construction Cost [2211.78] |
| 4 | **WATER SUPPLY SYSTEM** | 2026-09-22 → 2026-09-03 (-19d) | 2026-11-29 → 2026-09-12 (-78d) |  |  |  |  |  |
| 1 | **FIRST STAGE** | 2026-09-22 → 2026-09-03 (-19d) | 2026-09-29 → 2026-09-12 (-17d) |  |  |  |  |  |
| HAL-C-A-M-910 | Installation of Water Supply Pipes | 2026-09-22 A → 2026-09-03 A (-19d) | 2026-09-29 A → 2026-09-10 A (-19d) |  |  |  |  | resources Plumber [64 h]; Construction Cost [23318.4] → Plumber [64 h]; Construction Cost [19520.2] |
| HAL-C-A-M-900 | Installation of Water Supply Valve | 2026-09-24 A → 2026-09-10 A (-14d) | 2026-09-29 A → 2026-09-12 A (-17d) |  |  |  |  | resources Plumber [32 h]; Construction Cost [18274.3] → Plumber [32 h]; Construction Cost [15736.8] |
| 2 | **SECOND STAGE** | 2026-11-23 → 2026-09-12 (-72d) | 2026-11-29 → 2026-09-12 (-78d) |  |  |  |  |  |
| HAL-C-A-M-950 | Capped connection | 2026-11-23 → 2026-09-12 A (-72d) | 2026-11-29 → 2026-09-12 A (-78d) |  | 0% → 100% | 51.65d → none |  | resources Plumber [80 h]; Construction Cost [278.13] → Plumber [80 h]; Construction Cost [287.53] |
| 4 | **ELECTRICAL** | 2026-05-24 → 2026-06-17 (+24d) | 2027-01-03 → 2026-10-26 (-69d) |  |  |  |  |  |
| 1 | **FIRST STAGE** | 2026-05-24 → 2026-06-17 (+24d) | 2027-01-02 → 2026-10-25 (-69d) |  |  |  |  |  |
| HAL-C-A-E-573 | Installation of Earthing and Grounding | 2026-05-24 A → 2026-06-17 A (+24d) | 2026-12-29 → 2026-10-25 A (-65d) |  | 90% → 100% | 46.3d → none |  | resources Electrician [64 h]; Construction Cost [19646.5] → Electrician [64 h]; Construction Cost [17002.4] |
| HAL-C-A-E-643 | Installation of Sleeves & Power outlet | 2026-05-24 A → 2026-06-17 A (+24d) | 2026-11-09 → 2026-09-15 A (-55d) |  | 50% → 100% | 8d → none |  | resources Electrician [128 h]; Construction Cost [2920.45] → Electrician [128 h]; Construction Cost [2853.19] |
| HAL-C-A-E-603 | Installation of Conduits and wiring outlets - Fire Alarm System | 2026-05-24 A → 2026-08-11 A (+79d) | 2026-12-02 → 2026-09-24 A (-69d) |  | 50% → 100% | 44.65d → none | HAL-C-A-E-663 → HAL-C-A-E-663 SS | resources Electrician [64 h]; Construction Cost [1768.31] → Electrician [64 h]; Construction Cost [2026.84] |
| HAL-C-A-E-623 | Installation of Conduites for Lighting Fixture | 2026-09-12 A → 2026-08-11 A (-32d) | 2026-12-12 → 2026-09-24 A (-79d) |  | 90% → 100% | 47.25d → none | HAL-C-A-E-593, HAL-C-A-M-940 → HAL-C-A-E-603 | resources Electrician [64 h]; Construction Cost [8462.97] → Electrician [64 h]; Construction Cost [3983.66] |
| HAL-C-A-E-693 | Installation of Wires | 2026-12-20 → 2026-08-22 A (-120d) | 2026-12-23 → 2026-09-24 A (-90d) |  | 0% → 100% | 40.7d → none | HAL-C-A-E-623, HAL-C-A-M-990, HAL-C-A-A-1200 → HAL-C-A-E-623 | resources Electrician [64 h]; Construction Cost [16925.9] → Electrician [64 h]; Construction Cost [7966.69] |
| HAL-C-A-E-683 | Installation of LV Cables | 2026-12-29 → 2026-09-22 A (-98d) | 2027-01-02 → 2026-10-17 A (-77d) | 4d → 2d | 0% → 100% | 42.7d → none |  | resources Electrician [64 h]; Construction Cost [36390] → Electrician [64 h]; Construction Cost [31551] |
| 2 | **SECOND STAGE** | 2026-10-10 → 2026-08-22 (-49d) | 2027-01-03 → 2026-10-26 (-69d) |  |  |  |  |  |
| HAL-C-A-E-1030 | Installation of CCTV System | 2026-12-27 → 2026-08-22 A (-127d) | 2027-01-03 → 2026-10-17 A (-78d) | 7d → 2d | 0% → 100% | 41.7d → none |  | resources Plumber [112 h]; Construction Cost [76349.2] → Plumber [112 h]; Construction Cost [66177.6] |
| HAL-C-A-E-1040 | Installation of Solar power plant | 2026-10-10 A → 2026-08-22 A (-49d) | 2026-11-18 → 2026-10-12 A (-37d) | 7d → 2d | 10% → 100% | 38.6d → none |  | resources Plumber [112 h]; Construction Cost [253269] → Plumber [112 h]; Construction Cost [218966] |
| HAL-C-A-E-733 | Installation of Access Control System | 2026-12-12 → 2026-08-22 A (-112d) | 2026-12-17 → 2026-10-26 (-52d) | 5d → 2d | 0% → 80% | 44.65d → 6.8d | HAL-C-A-E-593 → HAL-C-A-E-593 SS, HAL-C-A-M-990 SS | resources Electrician [80 h]; Construction Cost [27616.9] → Electrician [80 h]; Construction Cost [24315.4] |
| HAL-C-A-E-703 | Installation of LP-1 Panel | 2026-10-10 A → 2026-09-10 A (-30d) | 2026-10-14 A → 2026-10-01 A (-13d) |  |  |  | HAL-C-A-E-653 → HAL-C-A-E-653 SS | resources Electrician [32 h]; Construction Cost [18403.5] → Electrician [32 h]; Construction Cost [15128.5] |
| HAL-C-A-E-613 | Installation of Lighting fixtures | 2026-12-24 → 2026-09-22 A (-93d) | 2026-12-28 → 2026-10-25 A (-64d) | 4d → 2d | 0% → 100% | 40.7d → none | HAL-C-A-E-693 → HAL-C-A-E-693 SS | resources Electrician [64 h]; Construction Cost [76166.7] → Electrician [64 h]; Construction Cost [59751.1] |
| HAL-C-A-E-763 | Firewarning flash light with sounder; wall mounted, Weather proof | 2026-12-22 → 2026-09-22 A (-91d) | 2026-12-24 → 2026-09-24 A (-91d) |  | 0% → 100% | 44.65d → none | HAL-C-A-E-753 → HAL-C-A-E-753 SS | resources Electrician [32 h]; Construction Cost [3082.69] → Electrician [32 h]; Construction Cost [2963.79] |
| HAL-C-A-E-583 | Installation of Fire Alarm Control Panel | 2026-12-02 → 2026-09-24 A (-69d) | 2026-12-07 → 2026-10-17 A (-51d) |  | 0% → 100% | 44.65d → none | HAL-C-A-E-603, HAL-C-A-M-860 → HAL-C-A-E-603 SS | resources Electrician [64 h]; Construction Cost [19451.4] → Electrician [64 h]; Construction Cost [16216.6] |
| HAL-C-A-E-633 | Installation of Wiring Devices | 2026-11-23 → 2026-09-24 A (-60d) | 2026-11-28 → 2026-10-17 A (-42d) |  | 0% → 100% | 44.65d → none | HAL-C-A-E-643, HAL-C-A-A-1090, HAL-C-C-M-1260 → HAL-C-A-E-643, HAL-C-A-A-1090 | resources Electrician [64 h]; Construction Cost [19435.1] → Electrician [64 h]; Construction Cost [20742.2] |
| HAL-C-A-E-663 | Installation of Disconnect Switches | 2026-11-28 → 2026-09-24 A (-65d) | 2026-11-30 → 2026-10-17 A (-44d) |  | 0% → 100% | 44.65d → none |  | resources Electrician [32 h]; Construction Cost [30236] → Electrician [32 h]; Construction Cost [25808.4] |
| HAL-C-A-E-743 | Monitor Modules for Fire Alarm | 2026-12-17 → 2026-09-24 A (-84d) | 2026-12-20 → 2026-10-26 (-55d) |  | 0% → 70% | 44.65d → 7d | HAL-C-A-E-733 → HAL-C-A-E-733 SS | resources Electrician [32 h]; Construction Cost [3882.38] → Electrician [32 h]; Construction Cost [3760.02] |
| HAL-C-A-E-753 | Line Isolator Modules for Fire Alarm | 2026-12-20 → 2026-09-24 A (-87d) | 2026-12-22 → 2026-10-17 A (-66d) |  | 0% → 100% | 44.65d → none | HAL-C-A-E-743 → HAL-C-A-E-743 SS | resources Electrician [32 h]; Construction Cost [185.4] → Electrician [32 h]; Construction Cost [163.42] |
| HAL-C-A-E-593 | Installation of Fire Detectors & Accessories | 2026-12-07 → 2026-10-01 A (-67d) | 2026-12-12 → 2026-10-17 A (-56d) |  | 0% → 100% | 44.65d → none | HAL-C-A-E-583, HAL-C-A-M-950 → HAL-C-A-E-583 SS, HAL-C-A-M-950 SS | resources Electrician [64 h]; Construction Cost [56740.4] → Electrician [64 h]; Construction Cost [31219.2] |
| HAL-C-A-E-673 | Installation of Telephone Cabinet | 2026-12-29 → 2026-10-01 A (-89d) | 2026-12-30 → 2026-10-12 A (-79d) |  | 0% → 100% | 42.7d → none | HAL-C-A-E-713 → HAL-C-A-E-713 SS | resources Electrician [32 h]; Construction Cost [26991.1] → Electrician [32 h]; Construction Cost [23299.8] |
| HAL-C-A-E-653 | Installation of Main Distribution Board | 2026-12-24 → 2026-10-07 A (-78d) | 2026-12-26 → 2026-10-17 A (-70d) |  | 0% → 100% | 41.7d → none | HAL-C-A-E-693 → HAL-C-A-E-693 SS | resources Electrician [32 h]; Construction Cost [32472.7] → Electrician [32 h]; Construction Cost [25479.7] |
| HAL-C-A-E-713 | Installation of PP-AC panel | 2026-12-27 → 2026-10-07 A (-81d) | 2026-12-28 → 2026-10-17 A (-72d) |  | 0% → 100% | 41.7d → none | HAL-C-A-E-703 → HAL-C-A-E-703 SS | resources Electrician [32 h]; Construction Cost [21648.5] → Electrician [32 h]; Construction Cost [18214] |
| 1 | **STRUCTURAL** | 2026-02-17 → 2026-01-17 (-31d) | 2026-10-27 → 2026-07-08 (-111d) |  |  |  |  |  |
| 1 | **FOOTING** | 2026-02-17 → 2026-01-17 (-31d) | 2026-05-17 → 2026-02-19 (-87d) |  |  |  |  |  |
| HAL-C-D-S-210 | Excavation for footings | 2026-02-17 A → 2026-01-17 A (-31d) | 2026-03-12 A → 2026-02-04 A (-36d) | 4d → 7d |  |  | HAL-C-A-S-210 → HAL-C-A-S-210, HAL-PMS-MMS-0070 | resources General Labour [112 h]; Equipment Operator [112 h]; Truck [32 h]; Excavator [32 h]; Mini Roller Compactor [32 h]; Construction Cost [89859.6] → General Labour [112 h]; Equipment Operator [112 h]; Truck [56 h]; Excavator [56 h]; Mini Roller Compactor [56 h]; Construction Cost [166241] |
| HAL-C-D-S-1037 | Anti Termite Below Footings | 2026-04-11 A → 2026-02-10 A (-60d) | 2026-04-11 A → 2026-02-10 A (-60d) |  |  |  | Engineering fill → HAL-C-D-S-210 | resources Mason [16 h]; Construction Cost [11905.5] → Mason [16 h]; Construction Cost [8441.61] |
| HAL-C-D-S-797 | Lean Concrete Below Footings | 2026-04-11 A → 2026-02-10 A (-60d) | 2026-04-11 A → 2026-02-10 A (-60d) |  |  |  | HAL-C-D-S-947, Lean Concrete Below Footings → HAL-C-D-S-947 | resources Mason [32 h]; Construction Cost [8229.34] → Mason [32 h]; Construction Cost [8238.87] |
| HAL-C-D-S-947 | Vapour Barrier for Footings | 2026-04-11 A → 2026-02-10 A (-60d) | 2026-04-11 A → 2026-02-10 A (-60d) |  |  |  |  | resources General Labour [16 h]; Construction Cost [7940.1] → General Labour [16 h]; Construction Cost [6030.16] |
| HAL-C-D-S-857 | Formwork for Footings | 2026-05-11 A → 2026-02-11 A (-89d) | 2026-05-13 A → 2026-02-14 A (-88d) | 4d → 6d |  |  |  | resources Carperter [64 h]; Construction Cost [25461.2] → Carperter [64 h]; Construction Cost [23267.9] |
| HAL-C-D-S-847 | Rebar for Footings | 2026-05-06 A → 2026-02-12 A (-83d) | 2026-05-11 A → 2026-02-18 A (-82d) |  |  |  |  | resources Steel Fixer [64 h]; Construction Cost [101845] → Steel Fixer [64 h]; Construction Cost [93071.6] |
| HAL-C-D-S-807 | Pouring Concrete for Footings | 2026-05-17 A → 2026-02-19 A (-87d) | 2026-05-17 A → 2026-02-19 A (-87d) |  |  |  |  | resources Carperter [16 h]; Mason [16 h]; Steel Fixer [16 h]; Concrete Mixer [8 h]; Equipment Operator [16 h]; Construction Cost [127306] → Carperter [16 h]; Mason [16 h]; Steel Fixer [16 h]; Concrete Mixer [8 h]; Equipment Operator [16 h]; Construction Cost [116339] |
| 2 | **COLUMN NECK** | 2026-05-11 → 2026-02-12 (-88d) | 2026-06-09 → 2026-03-25 (-76d) |  |  |  |  |  |

| ID | Task | Start | Finish | Duration | Complete | Total float | Predecessors | Other |
| --- | --- | --- | --- | --- | --- | --- | --- | --- |
| HAL-C-D-S-897 | Rebar for column neck | 2026-05-11 A → 2026-02-12 A (-88d) | 2026-05-14 A → 2026-02-18 A (-85d) |  |  |  |  | resources Steel Fixer [32 h]; Construction Cost [14919.2] → Steel Fixer [32 h]; Construction Cost [21993.7] |
| HAL-C-D-S-907 | Formwork for column neck | 2026-05-21 A → 2026-02-21 A (-89d) | 2026-05-23 A → 2026-03-02 A (-82d) |  |  |  |  | resources Carperter [32 h]; Construction Cost [9946.13] → Carperter [32 h]; Construction Cost [5498.72] |
| HAL-C-D-S-887 | Pouring Concrete for column neck | 2026-05-20 A → 2026-02-25 A (-84d) | 2026-05-20 A → 2026-03-02 A (-79d) |  |  |  |  | resources Mason [16 h]; Carperter [16 h]; Concrete Mixer [8 h]; Steel Fixer [16 h]; Equipment Operator [16 h]; Construction Cost [24865.3] → Mason [16 h]; Carperter [16 h]; Concrete Mixer [8 h]; Steel Fixer [16 h]; Equipment Operator [16 h]; Construction Cost [27492.4] |
| HAL-C-D-S-937 | Damp proof /Bitumin paint on Footings & column neck | 2026-05-20 A → 2026-02-28 A (-81d) | 2026-05-23 A → 2026-03-03 A (-81d) |  |  |  |  | resources Painter [32 h]; Construction Cost [24777.7] → Painter [32 h]; Construction Cost [6903.81] |
| HAL-C-D-S-997 | Backfilling / Compaction up to Bottom of Grade Beams | 2026-05-24 A → 2026-03-04 A (-81d) | 2026-06-09 A → 2026-03-25 A (-76d) | 7d → 12d |  |  |  | resources General Labour [256 h]; Truck [128 h]; Mini Roller Compactor [128 h]; Equipment Operator [256 h]; Wheel Loader [128 h]; Construction Cost [46046.2] → General Labour [256 h]; Truck [128 h]; Mini Roller Compactor [128 h]; Equipment Operator [256 h]; Wheel Loader [128 h]; Construction Cost [32707.9] |
| 3 | **GRADE BEAM** | 2026-06-14 → 2026-03-28 (-78d) | 2026-06-30 → 2026-04-22 (-69d) |  |  |  |  |  |
| HAL-C-D-S-1047 | Anti Termite Below Grade Beams | 2026-06-14 A → 2026-03-28 A (-78d) | 2026-06-14 A → 2026-03-28 A (-78d) |  |  |  |  | resources Mason [16 h]; Construction Cost [11905.5] → Mason [16 h]; Construction Cost [8441.61] |
| HAL-C-D-S-817 | Lean Concrete Below Grade Beams | 2026-06-14 A → 2026-03-28 A (-78d) | 2026-06-14 A → 2026-03-28 A (-78d) |  |  |  |  | resources Mason [32 h]; Construction Cost [4431.19] → Mason [32 h]; Construction Cost [8238.87] |
| HAL-C-D-S-967 | Vapour barrier for Grade Beams | 2026-06-14 A → 2026-03-28 A (-78d) | 2026-06-14 A → 2026-03-28 A (-78d) |  |  |  |  | resources General Labour [32 h]; Construction Cost [5293.4] → General Labour [32 h]; Construction Cost [4019.9] |
| HAL-C-D-S-867 | Rebar for Grade Beams | 2026-06-16 A → 2026-04-02 A (-75d) | 2026-06-20 A → 2026-04-16 A (-65d) |  |  |  | HAL-C-D-S-817 → HAL-C-D-S-817, HAL-PMS-MMS-0060 | resources Steel Fixer [80 h]; Construction Cost [27194.5] → Steel Fixer [80 h]; Construction Cost [24993.1] |
| HAL-C-D-S-877 | Formwork for Grade Beams | 2026-06-18 A → 2026-04-02 A (-77d) | 2026-06-22 A → 2026-04-16 A (-67d) |  |  |  |  | resources Carperter [32 h]; Construction Cost [6798.61] → Carperter [32 h]; Construction Cost [6248.27] |
| HAL-C-D-S-1027 | Anchor bolts installation | 2026-06-18 A → 2026-04-12 A (-67d) | 2026-06-20 A → 2026-04-16 A (-65d) |  |  |  |  | resources Carperter [32 h]; Construction Cost [57238.8] → Carperter [32 h]; Construction Cost [5667.68] |
| HAL-C-D-S-827 | Pouring Concrete for Grade Beams | 2026-06-24 A → 2026-04-18 A (-67d) | 2026-06-24 A → 2026-04-18 A (-67d) |  |  |  |  | resources Mason [16 h]; Carperter [16 h]; Concrete Mixer [8 h]; Steel Fixer [16 h]; Equipment Operator [16 h]; Construction Cost [33993.1] → Mason [16 h]; Carperter [16 h]; Concrete Mixer [8 h]; Steel Fixer [16 h]; Equipment Operator [16 h]; Construction Cost [31241.3] |
| HAL-C-D-S-977 | Damp proof /Bitumin paint on Grade Beams | 2026-06-27 A → 2026-04-20 A (-68d) | 2026-06-30 A → 2026-04-22 A (-69d) |  |  |  |  | resources Painter [80 h]; Construction Cost [24777.7] → Painter [80 h]; Construction Cost [6903.81] |
| 5 | **SLAB ON GRADE** | 2026-07-06 → 2026-04-27 (-70d) | 2026-10-27 → 2026-06-20 (-129d) |  |  |  |  |  |
| HAL-C-D-S-1007 | Backfilling / Compaction for Slab on Grade | 2026-07-06 A → 2026-04-27 A (-70d) | 2026-07-09 A → 2026-04-30 A (-70d) | 7d → 12d |  |  |  | resources Mini Roller Compactor [128 h]; General Labour [256 h]; Equipment Operator [256 h]; Wheel Loader [128 h]; Truck [128 h]; Construction Cost [23023.1] → Mini Roller Compactor [128 h]; General Labour [256 h]; Equipment Operator [256 h]; Wheel Loader [128 h]; Truck [128 h]; Construction Cost [32707.9] |
| HAL-C-D-S-957 | Anti Termite Treatment below Ground Slab | 2026-08-11 A → 2026-05-18 A (-85d) | 2026-08-15 A → 2026-05-25 A (-82d) |  |  |  |  | resources General Labour [16 h]; Construction Cost [15874.1] → General Labour [16 h]; Construction Cost [11255.5] |
| HAL-C-D-S-987 | Vapour barrier for below Ground Slab | 2026-08-11 A → 2026-05-18 A (-85d) | 2026-08-15 A → 2026-05-25 A (-82d) |  |  |  |  | resources General Labour [32 h]; Construction Cost [13233.5] → General Labour [32 h]; Construction Cost [10050.1] |
| HAL-C-D-S-837 | Pouring Concrete for Ground Slab | 2026-08-11 A → 2026-05-19 A (-84d) | 2026-08-15 A → 2026-05-25 A (-82d) |  |  |  |  | resources Mason [64 h]; Carperter [64 h]; Steel Fixer [64 h]; Concrete Mixer [32 h]; Equipment Operator [64 h]; Construction Cost [344195] → Mason [64 h]; Carperter [64 h]; Steel Fixer [64 h]; Concrete Mixer [32 h]; Equipment Operator [64 h]; Construction Cost [304092] |
| HAL-C-D-S-1017 | Concrete pad | 2026-10-20 → 2026-06-17 A (-125d) | 2026-10-27 → 2026-06-20 A (-129d) |  | 0% → 100% | 38.2d → none |  | resources Mason [112 h]; Construction Cost [907.11] → Mason [112 h]; Construction Cost [1803.82] |
| 4 | **COLUMNS & BEAMS** | 2026-06-16 → 2026-03-02 (-106d) | 2026-10-05 → 2026-07-08 (-89d) |  |  |  |  |  |
| HAL-C-D-S-6101 | Rebar for Tie Beams | 2026-06-16 A → 2026-03-02 A (-106d) | 2026-06-20 A → 2026-03-04 A (-108d) |  |  |  |  | resources Steel Fixer [64 h]; Construction Cost [7263.64] → Steel Fixer [64 h]; Construction Cost [7796.52] |
| HAL-C-D-S-6102 | Formwork for Tie Beams | 2026-06-18 A → 2026-03-02 A (-108d) | 2026-06-22 A → 2026-03-04 A (-110d) |  |  |  |  | resources Carperter [32 h]; Construction Cost [1815.91] → Carperter [32 h]; Construction Cost [1949.44] |
| HAL-C-D-S-6103 | Pouring Concrete for Tie Beams | 2026-06-24 A → 2026-03-07 A (-109d) | 2026-06-24 A → 2026-03-07 A (-109d) |  |  |  |  | resources Mason [16 h]; Carperter [16 h]; Concrete Mixer [32 h]; Steel Fixer [16 h]; Equipment Operator [16 h]; Construction Cost [9079.54] → Mason [16 h]; Carperter [16 h]; Concrete Mixer [8 h]; Steel Fixer [16 h]; Equipment Operator [16 h]; Construction Cost [9745.95] |
| HAL-C-D-S-5101 | Rebar for column | 2026-07-22 A → 2026-05-02 A (-81d) | 2026-07-25 A → 2026-05-16 A (-70d) | 5d → 7d |  |  |  | resources Steel Fixer [112 h]; Construction Cost [20144] → Steel Fixer [112 h]; Construction Cost [18494.8] |
| HAL-C-D-S-6113 | Rebar for Beams | 2026-09-08 A → 2026-05-07 A (-124d) | 2026-09-15 A → 2026-07-06 A (-71d) |  |  |  |  | resources Steel Fixer [64 h]; Construction Cost [13379.1] → Steel Fixer [64 h]; Construction Cost [11954.6] |
| HAL-C-D-S-5102 | Formwork for column | 2026-07-27 A → 2026-05-09 A (-79d) | 2026-08-02 A → 2026-05-17 A (-77d) |  |  |  |  | resources Carperter [64 h]; Construction Cost [5036.01] → Carperter [64 h]; Construction Cost [4623.84] |
| HAL-C-D-S-5103 | Pouring Concrete for column | 2026-07-29 A → 2026-05-16 A (-74d) | 2026-08-03 A → 2026-05-20 A (-75d) |  |  |  |  | resources Mason [16 h]; Carperter [16 h]; Concrete Mixer [32 h]; Steel Fixer [16 h]; Equipment Operator [16 h]; Construction Cost [25180.1] → Mason [16 h]; Carperter [16 h]; Concrete Mixer [8 h]; Steel Fixer [16 h]; Equipment Operator [16 h]; Construction Cost [23118.6] |
| HAL-C-D-S-6123 | Formwork for Beams | 2026-09-23 A → 2026-06-20 A (-95d) | 2026-09-29 A → 2026-07-07 A (-84d) |  |  |  | HAL-C-D-S-6113, HAL-C-D-S-6113 FF, HAL-C-A-S-6133 → HAL-C-D-S-6113, HAL-C-D-S-6113 FF | resources Carperter [32 h]; Construction Cost [3344.77] → Carperter [32 h]; Construction Cost [2988.97] |
| HAL-C-D-S-6133 | Pouring Concrete for Beams | 2026-09-26 A → 2026-07-08 A (-80d) | 2026-10-05 A → 2026-07-08 A (-89d) |  |  |  |  | resources Mason [16 h]; Carperter [16 h]; Concrete Mixer [32 h]; Steel Fixer [16 h]; Equipment Operator [16 h]; Construction Cost [16723.9] → Mason [16 h]; Carperter [16 h]; Concrete Mixer [8 h]; Steel Fixer [16 h]; Equipment Operator [16 h]; Construction Cost [14943.6] |
| 5 | **STRUCTURAL STEEL** | 2026-07-15 → 2026-05-04 (-72d) | 2026-11-02 → 2026-08-12 (-82d) |  |  |  |  |  |
| HAL-C-D-A-1440 | Steel members for office area | 2026-10-07 A → 2026-05-04 A (-156d) | 2026-10-20 A → 2026-05-25 A (-148d) | 7d → 5d |  |  |  | resources Construction Cost [115805]; Equipment Operator [112 h]; General Labour [112 h]; Mobile Crane [56 h]; Structural Steel Fixer [112 h] → Construction Cost [97318.2]; Equipment Operator [112 h]; General Labour [112 h]; Mobile Crane [56 h]; Structural Steel Fixer [112 h] |
| HAL-C-D-SS-1030 | Steel members for external platform | 2026-10-20 → 2026-05-04 A (-169d) | 2026-10-27 → 2026-05-25 A (-155d) | 7d → 5d | 0% → 100% | 29.1d → none |  | resources Construction Cost [18670.8]; General Labour [112 h]; Mobile Crane [56 h]; Structural Steel Fixer [112 h]; Equipment Operator [112 h] → Construction Cost [27249.1]; General Labour [112 h]; Mobile Crane [56 h]; Structural Steel Fixer [112 h]; Equipment Operator [112 h] |
| HAL-C-D-A-210 | Installation of columns | 2026-07-15 A → 2026-05-06 A (-70d) | 2026-07-15 A → 2026-05-13 A (-63d) |  |  |  | HAL-C-D-S-837, HAL-C-A-A-220, PES -Steel Structure -2 → HAL-C-D-S-837, HAL-C-A-A-220 | resources Structural Steel Fixer [80 h]; General Labour [80 h]; Equipment Operator [80 h]; Mobile Crane [24 h]; Construction Cost [217508] → Structural Steel Fixer [80 h]; General Labour [80 h]; Equipment Operator [80 h]; Mobile Crane [40 h]; Construction Cost [164363] |
| HAL-C-D-A-220 | Installation of raft and purlins | 2026-07-15 A → 2026-05-06 A (-70d) | 2026-07-16 A → 2026-05-13 A (-64d) |  |  |  |  | resources Structural Steel Fixer [160 h]; General Labour [160 h]; Mobile Crane [56 h]; Equipment Operator [160 h]; Construction Cost [326261] → Structural Steel Fixer [160 h]; General Labour [160 h]; Mobile Crane [80 h]; Equipment Operator [160 h]; Construction Cost [340061] |
| HAL-C-D-A-1430 | Intumescent paint to steel works | 2026-07-25 A → 2026-06-02 A (-53d) | 2026-07-29 A → 2026-06-22 A (-37d) | 7d → 5d |  |  |  | resources Painter [112 h]; Construction Cost [317760] → Painter [112 h]; Construction Cost [269284] |
| HAL-C-D-A-250 | Installation of roof sheet | 2026-08-16 A → 2026-06-14 A (-63d) | 2026-08-23 A → 2026-06-18 A (-66d) |  |  |  | HAL-C-D-A-230, HAL-C-D-A-1430, HAL-C-D-S-6133 → HAL-C-D-A-230, HAL-C-D-A-1430, HAL-C-D-S-6133, HAL-C-D-SS-1040, HAL-C-D-SS-1020 | resources Roof sheet worker [160 h]; General Labour [160 h]; Mobile Crane [40 h]; Equipment Operator [160 h]; Construction Cost [217508] → Roof sheet worker [160 h]; General Labour [160 h]; Mobile Crane [80 h]; Equipment Operator [160 h]; Construction Cost [453414] |
| HAL-C-D-A-240 | Installation of wall sandwich panel | 2026-10-12 A → 2026-07-08 A (-96d) | 2026-10-20 A → 2026-07-30 A (-82d) |  |  |  |  | resources Sandwich panel worker [112 h]; General Labour [112 h]; Mobile Crane [40 h]; Equipment Operator [112 h]; Construction Cost [326261] → Sandwich panel worker [112 h]; General Labour [112 h]; Mobile Crane [56 h]; Equipment Operator [112 h]; Construction Cost [170030] |
| HAL-C-D-SS-1040 | Epoxy paint for external platform | 2026-10-28 → 2026-07-19 A (-101d) | 2026-11-02 → 2026-07-20 A (-105d) |  | 0% → 100% | 29.1d → none |  | resources Painter [80 h]; Construction Cost [3734.16] → Painter [80 h]; Construction Cost [6812.27] |
| HAL-C-D-SS-1020 | Epoxy paint to steel members at office area | 2026-10-20 → 2026-08-11 A (-70d) | 2026-10-27 → 2026-08-12 A (-76d) | 7d → 5d | 0% → 100% | 7.75d → none |  | resources Painter [112 h]; Construction Cost [23161] → Painter [112 h]; Construction Cost [24329.5] |
| 2 | **ARCHITECTURAL** | 2026-08-18 → 2026-06-06 (-73d) | 2027-02-10 → 2026-10-28 (-105d) |  |  |  |  |  |
| 1 | **MASONARY WORKS** | 2026-08-24 → 2026-06-06 (-79d) | 2026-09-09 → 2026-06-24 (-77d) |  |  |  |  |  |
| HAL-C-D-A-1030 | Block work at toilet area | 2026-08-25 A → 2026-06-06 A (-80d) | 2026-09-03 A → 2026-06-24 A (-71d) |  |  |  | HAL-C-D-A-260, HAL-C-D-SS-1020 → HAL-C-D-A-260 | resources Mason [112 h]; Construction Cost [14436.3] → Mason [112 h]; Construction Cost [15836.3] |
| HAL-C-D-A-230 | Block work at factory area | 2026-08-24 A → 2026-06-06 A (-79d) | 2026-09-01 A → 2026-06-24 A (-69d) | 10d → 15d |  |  |  | resources AAC panel erector [240 h]; General Labour [240 h]; Equipment Operator [240 h]; Mobile Crane [120 h]; Construction Cost [58338.7] → AAC panel erector [240 h]; General Labour [240 h]; Equipment Operator [240 h]; Mobile Crane [120 h]; Construction Cost [38856.6] |
| HAL-C-D-A-260 | Block work at office area | 2026-08-25 A → 2026-06-06 A (-80d) | 2026-09-09 A → 2026-06-24 A (-77d) | 7d → 10d |  |  |  | resources AAC panel erector [160 h]; General Labour [160 h]; Mobile Crane [56 h]; Equipment Operator [160 h]; Construction Cost [6179.18] → AAC panel erector [160 h]; General Labour [160 h]; Mobile Crane [80 h]; Equipment Operator [160 h]; Construction Cost [9714] |
| 5 | **WALL FINISHES** | 2026-10-12 → 2026-07-14 (-90d) | 2027-01-17 → 2026-10-21 (-88d) |  |  |  |  |  |
| HAL-C-D-A-1040 | Internal Wall Plaster | 2026-10-12 A → 2026-07-14 A (-90d) | 2026-10-20 A → 2026-07-23 A (-89d) | 10d → 15d |  |  | HAL-C-D-A-1030, HAL-C-D-E-643 → HAL-C-D-A-1030, HAL-C-D-E-643, HAL-C-D-S-1017, HAL-PMS-DMS-2310 | resources Mason [240 h]; Construction Cost [48590.2] → Mason [240 h]; Construction Cost [29610.2] |
| HAL-C-D-A-1090 | Paint to Plaster (Primer, Putty & First Coat) | 2027-01-16 → 2026-07-27 A (-173d) | 2027-01-17 → 2026-10-21 A (-88d) | 2d → 7d | 0% → 100% | 4.7d → none | HAL-C-D-A-1110, HAL-C-B-M-680 → HAL-C-D-A-1110 | resources Painter [112 h]; Construction Cost [44167.3] → Painter [112 h]; Construction Cost [26649.5] |
| 2 | **CIELING FINISHES** | 2027-01-07 → 2026-09-05 (-124d) | 2027-01-12 → 2026-09-24 (-110d) |  |  |  |  |  |
| HAL-C-D-A-1100 | Installation of Ceiling Gypsum Board | 2027-01-07 → 2026-09-05 A (-124d) | 2027-01-12 → 2026-09-24 A (-110d) |  | 0% → 100% | 0d → none | HAL-C-D-A-1080, HAL-C-D-S-1017, HAL-C-B-M-630, HAL-C-B-A-850 → HAL-C-D-A-1080, HAL-C-D-S-1017 | resources Carperter [80 h]; Construction Cost [46792.3] → Carperter [80 h]; Construction Cost [44650.2] |
| 6 | **FLOOR FINISHES** | 2026-10-18 → 2026-07-29 (-81d) | 2027-02-10 → 2026-10-15 (-118d) |  |  |  |  |  |
| HAL-C-D-A-1080 | Tiles for Toilet | 2026-10-18 A → 2026-07-29 A (-81d) | 2026-11-07 → 2026-08-02 A (-97d) |  | 75% → 100% | 7.75d → none |  | resources Tile Fixer [112 h]; Construction Cost [46530.7] → Tile Fixer [112 h]; Construction Cost [48089.6] |
| HAL-C-D-A-1110 | Tiles for Office Area | 2027-01-13 → 2026-08-19 A (-147d) | 2027-01-14 → 2026-08-29 A (-138d) |  | 0% → 100% | 0d → none |  | resources Tile Fixer [32 h]; Construction Cost [26867.3] → Tile Fixer [32 h]; Construction Cost [25626.5] |
| HAL-C-D-A-1240 | Granite strip | 2027-01-16 → 2026-08-30 A (-139d) | 2027-01-17 → 2026-08-31 A (-139d) |  | 0% → 100% | 0d → none |  | resources Tile Fixer [32 h]; Construction Cost [671.12] → Tile Fixer [32 h]; Construction Cost [1454.24] |
| HAL-C-D-A-1260 | Epoxy paint | 2027-02-08 → 2026-09-03 A (-158d) | 2027-02-10 → 2026-10-15 A (-118d) | 3d → 2d | 0% → 100% | 0d → none | HAL-C-D-A-1200 → HAL-C-D-A-1200 SS | resources Painter [112 h]; Construction Cost [115420] → Painter [112 h]; Construction Cost [102516] |
| 3 | **DOORS & WINDOWS** | 2026-10-18 → 2026-07-12 (-98d) | 2026-11-03 → 2026-09-12 (-52d) |  |  |  |  |  |
| HAL-C-D-A-1420 | Window (CW1) | 2026-10-20 → 2026-07-12 A (-100d) | 2026-10-27 → 2026-09-12 A (-45d) |  | 0% → 100% | 36.6d → none |  | resources Carperter [112 h]; Construction Cost [94173.2] → Carperter [112 h]; Construction Cost [90682.8] |
| HAL-C-D-A-1370 | Skylight fixtures installation | 2026-10-18 A → 2026-07-25 A (-85d) | 2026-10-20 A → 2026-07-27 A (-85d) |  |  |  |  | resources Carperter [16 h]; Construction Cost [6489.89] → Carperter [16 h]; Construction Cost [61929.7] |
| HAL-C-D-A-1050 | Roll up Shutter Door | 2026-10-28 → 2026-08-02 A (-87d) | 2026-10-28 → 2026-08-06 A (-83d) |  | 0% → 100% | 36.6d → none |  | resources Carperter [16 h]; Construction Cost [68619.2] → Carperter [16 h]; Construction Cost [66353.3] |
| HAL-C-D-A-1060 | Supply and install (D5) 1000*2200mm single leaf steel door with door | 2026-10-29 → 2026-08-11 A (-79d) | 2026-10-29 → 2026-09-10 A (-49d) |  | 0% → 100% | 36.6d → none |  | resources Carperter [16 h]; Construction Cost [16016.2] → Carperter [16 h]; Construction Cost [15482.4] |
| HAL-C-D-A-1360 | Supply and install fire rated 45 min (D2) 1200*2200 mm single leaf steel door | 2026-11-03 → 2026-08-11 A (-84d) | 2026-11-03 → 2026-09-10 A (-54d) |  | 0% → 100% | 36.6d → none |  | resources Carperter [16 h]; Construction Cost [16711.5] → Carperter [16 h]; Construction Cost [16146] |
| HAL-C-D-A-1120 | Supply and install (D4) 800*2200 mm single leaf aluminum door with door | 2026-10-31 → 2026-09-03 A (-58d) | 2026-10-31 → 2026-09-06 A (-55d) |  | 0% → 100% | 36.6d → none |  | resources Carperter [16 h]; Construction Cost [22737.8] → Carperter [16 h]; Construction Cost [21896.6] |
| HAL-C-D-A-1130 | Supply and install (D7) 1000*2200 mm single leaf aluminum door with door | 2026-11-01 → 2026-09-03 A (-59d) | 2026-11-01 → 2026-09-06 A (-56d) |  | 0% → 100% | 36.6d → none |  | resources Carperter [16 h]; Construction Cost [7811.07] → Carperter [16 h]; Construction Cost [7520.04] |
| HAL-C-D-A-1350 | Supply and install (D3) 1000*2200 mm single leaf aluminum door with door | 2026-11-02 → 2026-09-03 A (-60d) | 2026-11-02 → 2026-09-06 A (-57d) |  | 0% → 100% | 36.6d → none |  | resources Carperter [16 h]; Construction Cost [16016.2] → Carperter [16 h]; Construction Cost [15482.4] |
| 4 | **WATER PROOFING WORKS** | 2026-10-31 → 2026-07-25 (-98d) | 2026-11-04 → 2026-07-25 (-102d) |  |  |  |  |  |
| HAL-C-D-A-1220 | Waterproofing membrane for toilets | 2026-10-31 → 2026-07-25 A (-98d) | 2026-11-04 → 2026-07-25 A (-102d) |  | 0% → 100% | 7.75d → none | HAL-C-D-M-820, HAL-C-D-A-1040 → HAL-C-D-M-820, HAL-C-D-A-1040, HAL-C-D-A-1370 | resources General Labour [64 h]; Construction Cost [4879.02] → General Labour [64 h]; Construction Cost [4653.33] |
| 7 | **METAL WORKS** | 2026-08-18 → 2026-08-02 (-16d) | 2027-01-30 → 2026-10-23 (-99d) |  |  |  |  |  |
| HAL-C-D-A-1170 | Aluminium composite panel | 2027-01-25 → 2026-08-02 A (-176d) | 2027-01-30 → 2026-10-03 A (-119d) |  | 0% → 100% | 0d → none |  | resources Steel Fixer [80 h]; General Labour [80 h]; Construction Cost [175889] → Steel Fixer [80 h]; General Labour [80 h]; Construction Cost [175670] |
| HAL-C-D-A-1150 | Steel Ladder | 2027-01-18 → 2026-08-18 A (-153d) | 2027-01-19 → 2026-08-29 A (-143d) |  | 0% → 100% | 0d → none |  | resources Steel Fixer [32 h]; General Labour [32 h]; Construction Cost [9839.16] → Steel Fixer [32 h]; General Labour [32 h]; Construction Cost [9510.64] |
| HAL-C-D-A-1160 | Galvanised Steel Gratings | 2026-08-18 A → 2026-10-07 A (+50d) | 2026-08-18 A → 2026-10-08 A (+51d) |  |  |  |  | resources Steel Fixer [32 h]; General Labour [32 h]; Construction Cost [6455.16] → Steel Fixer [32 h]; General Labour [32 h]; Construction Cost [6237.21] |

| ID | Task | Start | Finish | Duration | Complete | Total float | Predecessors | Other |
| --- | --- | --- | --- | --- | --- | --- | --- | --- |
| HAL-C-D-A-1250 | Steel railing works | 2027-01-20 → 2026-10-22 A (-90d) | 2027-01-24 → 2026-10-23 A (-93d) |  | 0% → 100% | 0d → none |  | resources Steel Fixer [64 h]; General Labour [64 h]; Construction Cost [1533.98] → Steel Fixer [64 h]; General Labour [64 h]; Construction Cost [7497.92] |
| 8 | **SPECIALTIES** | 2027-01-31 → 2026-09-22 (-131d) | 2027-02-07 → 2026-10-28 (-102d) |  |  |  |  |  |
| HAL-C-D-A-1180 | Installation of fittings | 2027-01-31 → 2026-09-22 A (-131d) | 2027-02-02 → 2026-09-24 A (-131d) | 3d → 4d | 0% → 100% | 0d → none |  | resources Plumber [112 h]; Construction Cost [22981.3] → Plumber [112 h]; Construction Cost [21686.5] |
| HAL-C-D-A-1200 | Furniture Installation | 2027-02-07 → 2026-10-24 A (-106d) | 2027-02-07 → 2026-10-24 A (-106d) |  | 0% → 100% | 0d → none | HAL-C-D-A-1410 → HAL-C-D-A-1410 SS | resources General Labour [16 h]; Mason [16 h]; Construction Cost [12468.8] → General Labour [16 h]; Mason [16 h]; Construction Cost [10561.2] |
| HAL-C-D-A-1410 | Identification sign; ID01 & ID02 | 2027-02-03 → 2026-10-26 (-100d) | 2027-02-06 → 2026-10-28 (-101d) |  |  | 0d → 6d | HAL-C-D-A-1180 → HAL-C-D-A-1180 SS | resources Mason [48 h]; Construction Cost [9630.56] → Mason [48 h]; Construction Cost [9289.46] |
| 3 | **MECHANICAL** | 2026-07-30 → 2026-04-16 (-105d) | 2027-02-06 → 2026-09-24 (-135d) |  |  |  |  |  |
| 1 | **HVAC** | 2027-01-18 → 2026-06-24 (-208d) | 2027-02-02 → 2026-09-22 (-133d) |  |  |  |  |  |
| 1 | **FIRST STAGE** | 2027-01-25 → 2026-06-24 (-215d) | 2027-01-28 → 2026-07-30 (-182d) |  |  |  |  |  |
| HAL-C-D-M-760 | Installation of HVAC Ducts | 2027-01-25 → 2026-06-24 A (-215d) | 2027-01-26 → 2026-07-30 A (-180d) |  | 0% → 100% | 4.7d → none |  | resources Ductman [32 h]; Construction Cost [149489] → Ductman [32 h]; Construction Cost [141482] |
| HAL-C-D-M-790 | Installation of Duct insulation | 2027-01-27 → 2026-06-24 A (-217d) | 2027-01-28 → 2026-07-30 A (-182d) |  | 0% → 100% | 4.7d → none |  | resources Ductman [32 h]; Construction Cost [21205.4] → Ductman [32 h]; Construction Cost [18747.3] |
| 2 | **SECOND STAGE** | 2027-01-18 → 2026-07-28 (-174d) | 2027-02-02 → 2026-09-22 (-133d) |  |  |  |  |  |
| HAL-C-D-M-750 | Installation of Exhaust Fans | 2027-01-18 → 2026-07-28 A (-174d) | 2027-01-19 → 2026-07-28 A (-175d) |  | 0% → 100% | 4.7d → none |  | resources AC Technician [32 h]; Construction Cost [7938.56] → AC Technician [32 h]; Construction Cost [9331.24] |
| HAL-C-D-M-780 | Installation of Wall Propeller Type Exhaust Fan | 2027-01-20 → 2026-09-02 A (-140d) | 2027-01-24 → 2026-09-05 A (-141d) |  | 0% → 100% | 4.7d → none |  | resources AC Technician [64 h]; Construction Cost [46831.6] → AC Technician [64 h]; Construction Cost [17417.7] |
| HAL-C-D-M-960 | Supply, install, test and commission door grilles & exhaust louvers | 2027-02-01 → 2026-09-05 A (-149d) | 2027-02-02 → 2026-09-10 A (-145d) |  | 0% → 100% | 4.7d → none |  | resources Ductman [32 h]; Construction Cost [5574.4] → Ductman [32 h]; Construction Cost [7188.28] |
| HAL-C-D-M-770 | Installation of Diffuser | 2027-01-30 → 2026-09-19 A (-133d) | 2027-01-31 → 2026-09-22 A (-131d) |  | 0% → 100% | 4.7d → none |  | resources Ductman [32 h]; Construction Cost [2144] → Ductman [32 h]; Construction Cost [2764.72] |
| 2 | **FIRE FIGHTING SYSTEM** | 2026-09-21 → 2026-06-17 (-96d) | 2027-02-06 → 2026-08-22 (-168d) |  |  |  |  |  |
| 1 | **FIRST STAGE** | 2026-09-21 → 2026-06-17 (-96d) | 2026-09-28 → 2026-08-05 (-54d) |  |  |  |  |  |
| HAL-C-D-M-920 | Installation of Fire Fighting Pipes (Seamless Black Steel) | 2026-09-21 A → 2026-06-17 A (-96d) | 2026-09-28 A → 2026-08-05 A (-54d) |  |  |  |  | resources Pipe Fitter [112 h]; Construction Cost [72394.8] → Pipe Fitter [112 h]; Construction Cost [60425.7] |
| HAL-C-D-M-930 | Installation of Fire Fighting Valve | 2026-09-22 A → 2026-06-17 A (-97d) | 2026-09-28 A → 2026-08-05 A (-54d) |  |  |  |  | resources Pipe Fitter [80 h]; Construction Cost [12199.4] → Pipe Fitter [80 h]; Construction Cost [12712.2] |
| 2 | **SECOND STAGE** | 2027-01-18 → 2026-06-17 (-215d) | 2027-02-06 → 2026-08-22 (-168d) |  |  |  |  |  |
| HAL-C-D-M-940 | Installation of Fire Hose Cabinet | 2027-01-18 → 2026-06-17 A (-215d) | 2027-01-20 → 2026-08-22 A (-151d) |  | 0% → 100% | 18.3d → none |  | resources Pipe Fitter [48 h]; Construction Cost [15158.6] → Pipe Fitter [48 h]; Construction Cost [11147.4] |
| HAL-C-D-M-990 | Supply, install, test and commission Fire Department Connection(FDC) | 2027-02-03 → 2026-07-25 A (-193d) | 2027-02-06 → 2026-08-05 A (-185d) |  | 0% → 100% | 4.7d → none | HAL-C-D-M-960 → HAL-C-D-M-960 SS | resources Pipe Fitter [48 h]; Construction Cost [2706.06] → Pipe Fitter [48 h]; Construction Cost [2598.84] |
| 3 | **SEWER AND DRAINAGE SYSTEM** | 2026-07-30 → 2026-04-16 (-105d) | 2026-11-25 → 2026-09-24 (-62d) |  |  |  |  |  |
| 1 | **FIRST STAGE** | 2026-07-30 → 2026-04-16 (-105d) | 2026-11-09 → 2026-08-05 (-96d) |  |  |  |  |  |
| HAL-C-D-M-820 | Installation of Sanitary Waste / Drainage Pipes | 2026-07-30 A → 2026-04-16 A (-105d) | 2026-08-03 A → 2026-04-30 A (-95d) |  |  |  |  | resources Plumber [64 h]; Construction Cost [18585.1] → Plumber [64 h]; Construction Cost [14362.4] |
| HAL-C-D-M-1000 | Installation of Trench drain | 2026-08-08 A → 2026-06-17 A (-52d) | 2026-08-09 A → 2026-08-05 A (-4d) |  |  |  |  | resources Plumber [80 h]; Construction Cost [11508.8] → Plumber [80 h]; Construction Cost [11379.6] |
| HAL-C-D-M-840 | Installation of Floor Drain | 2026-11-07 → 2026-06-17 A (-143d) | 2026-11-09 → 2026-08-05 A (-96d) |  | 0% → 100% | 7.75d → none |  | resources Plumber [32 h]; Construction Cost [11056] → Plumber [32 h]; Construction Cost [10616.5] |
| 2 | **SECOND STAGE** | 2026-11-09 → 2026-07-11 (-121d) | 2026-11-25 → 2026-09-24 (-62d) |  |  |  |  |  |
| HAL-C-D-M-860 | Installation of Roof Vent Cap | 2026-11-23 → 2026-07-11 A (-135d) | 2026-11-25 → 2026-08-25 A (-92d) |  | 0% → 100% | 7.75d → none |  | resources Pipe Fitter [32 h]; Construction Cost [927.12] → Pipe Fitter [32 h]; Construction Cost [829.41] |
| HAL-C-D-M-800 | Installation of Electric Water Heater | 2026-11-09 → 2026-08-05 A (-96d) | 2026-11-11 → 2026-08-05 A (-98d) |  | 0% → 100% | 7.75d → none |  | resources Plumber [32 h]; Construction Cost [1819.51] → Plumber [32 h]; Construction Cost [1592.48] |
| HAL-C-D-M-850 | Installation of Water Tap | 2026-11-21 → 2026-09-17 A (-65d) | 2026-11-23 → 2026-09-19 A (-65d) |  | 0% → 100% | 7.75d → none |  | resources Plumber [32 h]; Construction Cost [2874.14] → Plumber [32 h]; Construction Cost [2654.13] |
| HAL-C-D-M-810 | Installation of Sanitary Fixture and Accessories | 2026-11-11 → 2026-09-19 A (-53d) | 2026-11-16 → 2026-09-24 A (-53d) |  | 0% → 100% | 7.75d → none |  | resources Plumber [64 h]; Construction Cost [19921.7] → Plumber [64 h]; Construction Cost [16243] |
| HAL-C-D-M-830 | Installation of Lavotary /Wash Basin | 2026-11-16 → 2026-09-19 A (-58d) | 2026-11-18 → 2026-09-24 A (-55d) |  | 0% → 100% | 7.75d → none |  | resources Plumber [32 h]; Construction Cost [21416.7] → Plumber [32 h]; Construction Cost [20348.3] |
| HAL-C-D-M-890 | Installation of Bib Tap | 2026-11-18 → 2026-09-19 A (-60d) | 2026-11-21 → 2026-09-24 A (-58d) |  | 0% → 100% | 7.75d → none |  | resources Plumber [32 h]; Construction Cost [1900.66] → Plumber [32 h]; Construction Cost [2211.78] |
| 4 | **WATER SUPPLY SYSTEM** | 2026-10-01 → 2026-07-01 (-92d) | 2027-01-23 → 2026-08-05 (-171d) |  |  |  |  |  |
| 1 | **FIRST STAGE** | 2026-10-01 → 2026-07-01 (-92d) | 2026-10-04 → 2026-08-05 (-60d) |  |  |  |  |  |
| HAL-C-D-M-910 | Installation of Water Supply Pipes | 2026-10-01 A → 2026-07-01 A (-92d) | 2026-10-04 A → 2026-08-05 A (-60d) |  |  |  |  | resources Plumber [64 h]; Construction Cost [23318.4] → Plumber [64 h]; Construction Cost [19520.2] |
| HAL-C-D-M-900 | Installation of Water Supply Valve | 2026-10-01 A → 2026-08-02 A (-60d) | 2026-10-04 A → 2026-08-05 A (-60d) |  |  |  |  | resources Plumber [32 h]; Construction Cost [18274.3] → Plumber [32 h]; Construction Cost [15736.8] |
| 2 | **SECOND STAGE** | 2027-01-18 → 2026-07-04 (-198d) | 2027-01-23 → 2026-08-05 (-171d) |  |  |  |  |  |
| HAL-C-D-M-950 | Capped connection | 2027-01-18 → 2026-07-04 A (-198d) | 2027-01-23 → 2026-08-05 A (-171d) |  | 0% → 100% | 16.3d → none |  | resources Plumber [80 h]; Construction Cost [278.13] → Plumber [80 h]; Construction Cost [287.53] |
| 4 | **ELECTRICAL** | 2026-06-17 → 2026-04-16 (-62d) | 2027-02-15 → 2026-10-26 (-112d) |  |  |  |  |  |
| 1 | **FIRST STAGE** | 2026-06-17 → 2026-04-16 (-62d) | 2027-02-13 → 2026-10-25 (-111d) |  |  |  |  |  |
| HAL-C-D-E-573 | Installation of Earthing and Grounding | 2026-06-17 A → 2026-04-16 A (-62d) | 2027-02-09 → 2026-10-25 A (-107d) |  | 90% → 100% | 10.3d → none |  | resources Electrician [64 h]; Construction Cost [19646.5] → Electrician [64 h]; Construction Cost [17002.4] |
| HAL-C-D-E-643 | Installation of Sleeves & Power outlet | 2026-06-17 A → 2026-04-16 A (-62d) | 2026-10-31 → 2026-08-01 A (-91d) | 5d → 8d | 50% → 100% | 7.75d → none |  | resources Electrician [128 h]; Construction Cost [2920.45] → Electrician [128 h]; Construction Cost [2853.19] |
| HAL-C-D-E-603 | Installation of Conduits and wiring outlets - Fire Alarm System | 2026-07-21 A → 2026-06-08 A (-43d) | 2027-01-26 → 2026-06-13 A (-227d) |  | 50% → 100% | 4.7d → none | HAL-C-D-E-663 → HAL-C-D-E-663 SS | resources Electrician [64 h]; Construction Cost [1768.31] → Electrician [64 h]; Construction Cost [2026.84] |
| HAL-C-D-E-623 | Installation of Conduites for Lighting Fixture | 2026-09-23 A → 2026-06-08 A (-107d) | 2027-02-06 → 2026-06-13 A (-238d) |  | 90% → 100% | 5.3d → none | HAL-C-D-E-593, HAL-C-D-M-950, HAL-C-D-M-940 → HAL-C-D-E-603 SS | resources Electrician [64 h]; Construction Cost [8462.97] → Electrician [64 h]; Construction Cost [3983.66] |
| HAL-C-D-E-693 | Installation of Wires | 2027-02-07 → 2026-06-25 A (-227d) | 2027-02-08 → 2026-09-12 A (-149d) |  | 0% → 100% | 4.7d → none | HAL-C-D-E-623, HAL-C-D-M-990 → HAL-C-D-E-623 SS | resources Electrician [64 h]; Construction Cost [16925.9] → Electrician [64 h]; Construction Cost [7966.69] |
| HAL-C-D-E-683 | Installation of LV Cables | 2027-02-09 → 2026-09-05 A (-157d) | 2027-02-13 → 2026-10-13 A (-123d) |  | 0% → 100% | 6.7d → none |  | resources Electrician [64 h]; Construction Cost [36390] → Electrician [64 h]; Construction Cost [31551] |
| 2 | **SECOND STAGE** | 2026-10-10 → 2026-06-17 (-115d) | 2027-02-15 → 2026-10-26 (-112d) |  |  |  |  |  |
| HAL-C-D-E-1030 | Installation of CCTV System | 2027-02-11 → 2026-06-17 A (-239d) | 2027-02-14 → 2026-10-12 A (-125d) | 3d → 2d | 0% → 100% | 5.7d → none |  | resources Plumber [112 h]; Construction Cost [76349.2] → Plumber [112 h]; Construction Cost [66177.6] |
| HAL-C-D-E-733 | Installation of Access Control System | 2027-02-06 → 2026-06-17 A (-234d) | 2027-02-08 → 2026-10-26 (-105d) | 3d → 2d | 0% → 80% | 4.7d → 6.8d |  | resources Electrician [80 h]; Construction Cost [27616.9] → Electrician [80 h]; Construction Cost [24315.4] |
| HAL-C-D-E-703 | Installation of LP-1 Panel | 2026-10-10 A → 2026-07-23 A (-79d) | 2026-10-14 A → 2026-09-24 A (-20d) |  |  |  |  | resources Electrician [32 h]; Construction Cost [18403.5] → Electrician [32 h]; Construction Cost [15128.5] |
| HAL-C-D-E-673 | Installation of Telephone Cabinet | 2027-02-14 → 2026-07-29 A (-200d) | 2027-02-15 → 2026-10-01 A (-137d) |  | 0% → 100% | 4.7d → none | HAL-C-D-E-713 → HAL-C-D-E-713 SS | resources Electrician [32 h]; Construction Cost [26991.1] → Electrician [32 h]; Construction Cost [23299.8] |
| HAL-C-D-E-1040 | Installation of Solar power plant | 2026-10-12 A → 2026-08-15 A (-58d) | 2026-11-25 → 2026-10-12 A (-44d) | 7d → 2d | 10% → 100% | 38.6d → none | HAL-C-A-E-1040 → HAL-C-D-E-733 SS | resources Plumber [112 h]; Construction Cost [253269] → Plumber [112 h]; Construction Cost [218966] |
| HAL-C-D-E-633 | Installation of Wiring Devices | 2027-01-18 → 2026-08-29 A (-142d) | 2027-01-21 → 2026-10-01 A (-112d) |  | 0% → 100% | 4.7d → none |  | resources Electrician [64 h]; Construction Cost [19435.1] → Electrician [64 h]; Construction Cost [20742.2] |
| HAL-C-D-E-663 | Installation of Disconnect Switches | 2027-01-23 → 2026-08-29 A (-147d) | 2027-01-24 → 2026-10-12 A (-104d) |  | 0% → 100% | 4.7d → none |  | resources Electrician [32 h]; Construction Cost [30236] → Electrician [32 h]; Construction Cost [25808.4] |
| HAL-C-D-E-713 | Installation of PP-AC panel | 2027-02-11 → 2026-09-02 A (-162d) | 2027-02-13 → 2026-10-12 A (-124d) |  | 0% → 100% | 4.7d → none |  | resources Electrician [32 h]; Construction Cost [21648.5] → Electrician [32 h]; Construction Cost [18214] |
| HAL-C-D-E-653 | Installation of Main Distribution Board | 2027-02-09 → 2026-09-03 A (-159d) | 2027-02-10 → 2026-10-12 A (-121d) |  | 0% → 100% | 4.7d → none | HAL-C-D-E-693, HAL-C-A-E-763, HAL-C-A-E-613 → HAL-C-D-E-693 SS | resources Electrician [32 h]; Construction Cost [32472.7] → Electrician [32 h]; Construction Cost [25479.7] |
| HAL-C-D-E-613 | Installation of Lighting fixtures | 2027-02-09 → 2026-09-08 A (-154d) | 2027-02-13 → 2026-10-12 A (-124d) |  | 0% → 100% | 6.7d → none | HAL-C-D-E-693 → HAL-C-D-E-693 SS | resources Electrician [64 h]; Construction Cost [76166.7] → Electrician [64 h]; Construction Cost [59751.1] |
| HAL-C-D-E-583 | Installation of Fire Alarm Control Panel | 2027-01-27 → 2026-09-22 A (-127d) | 2027-01-31 → 2026-09-24 A (-129d) |  | 0% → 100% | 4.7d → none | HAL-C-D-E-603, HAL-C-D-M-860 → HAL-C-D-E-603 | resources Electrician [64 h]; Construction Cost [19451.4] → Electrician [64 h]; Construction Cost [16216.6] |
| HAL-C-D-E-593 | Installation of Fire Detectors & Accessories | 2027-02-01 → 2026-09-22 A (-132d) | 2027-02-04 → 2026-10-12 A (-115d) |  | 0% → 100% | 4.7d → none | HAL-C-D-E-583 → HAL-C-D-E-583 SS | resources Electrician [64 h]; Construction Cost [56740.4] → Electrician [64 h]; Construction Cost [31219.2] |
| HAL-C-D-E-763 | Firewarning flash light with sounder; wall mounted, Weather proof | 2027-02-14 → 2026-09-22 A (-145d) | 2027-02-15 → 2026-09-24 A (-144d) |  | 0% → 100% | 4.7d → none | HAL-C-D-E-753 → HAL-C-D-E-753 SS | resources Electrician [32 h]; Construction Cost [3082.69] → Electrician [32 h]; Construction Cost [2963.79] |
| HAL-C-D-E-743 | Monitor Modules for Fire Alarm | 2027-02-09 → 2026-09-24 A (-138d) | 2027-02-10 → 2026-10-26 (-107d) |  | 0% → 70% | 4.7d → 7d | HAL-C-D-E-733 → HAL-C-D-E-733 SS | resources Electrician [32 h]; Construction Cost [3882.38] → Electrician [32 h]; Construction Cost [3760.02] |
| HAL-C-D-E-753 | Line Isolator Modules for Fire Alarm | 2027-02-11 → 2026-09-24 A (-140d) | 2027-02-13 → 2026-10-13 A (-123d) |  | 0% → 100% | 4.7d → none | HAL-C-D-E-743 → HAL-C-D-E-743 SS | resources Electrician [32 h]; Construction Cost [185.4] → Electrician [32 h]; Construction Cost [163.42] |
| 1 | **STRUCTURAL** | 2026-02-17 → 2026-01-13 (-35d) | 2026-11-28 → 2026-07-09 (-142d) |  |  |  |  |  |
| 1 | **FOOTING** | 2026-02-17 → 2026-01-13 (-35d) | 2026-05-13 → 2026-02-11 (-91d) |  |  |  |  |  |
| HAL-C-E-S-150 | Excavation for footings | 2026-02-17 A → 2026-01-13 A (-35d) | 2026-03-24 A → 2026-01-24 A (-59d) | 4d → 6.12d |  |  |  | resources General Labour [112 h]; Equipment Operator [112 h]; Truck [64 h]; Excavator [64 h]; Mini Roller Compactor [64 h]; Construction Cost [89859.6] → General Labour [112 h]; Equipment Operator [112 h]; Truck [56 h]; Excavator [56 h]; Mini Roller Compactor [56 h]; Construction Cost [232737] |
| HAL-C-E-S-101 | Anti Termite Below Footings | 2026-04-13 A → 2026-02-03 A (-69d) | 2026-04-13 A → 2026-02-03 A (-69d) |  |  |  | Engineering fill → HAL-C-E-S-150 | resources Mason [16 h]; Construction Cost [11905.5] → Mason [16 h]; Construction Cost [8441.61] |
| HAL-C-E-S-102 | Vapour Barrier for Footings | 2026-04-13 A → 2026-02-03 A (-69d) | 2026-04-13 A → 2026-02-03 A (-69d) |  |  |  |  | resources General Labour [16 h]; Construction Cost [7940.1] → General Labour [16 h]; Construction Cost [6030.16] |
| HAL-C-E-S-103 | Lean Concrete Below Footings | 2026-04-13 A → 2026-02-03 A (-69d) | 2026-04-13 A → 2026-02-03 A (-69d) |  |  |  |  | resources Mason [32 h]; Construction Cost [8229.34] → Mason [32 h]; Construction Cost [8238.87] |

| ID | Task | Start | Finish | Duration | Complete | Total float | Predecessors | Other |
| --- | --- | --- | --- | --- | --- | --- | --- | --- |
| HAL-C-E-S-105 | Formwork for Footings | 2026-05-10 A → 2026-02-04 A (-95d) | 2026-05-12 A → 2026-02-04 A (-97d) | 4d → 6d |  |  |  | resources Carperter [64 h]; Construction Cost [25461.2] → Carperter [64 h]; Construction Cost [23267.9] |
| HAL-C-E-S-104 | Rebar for Footings | 2026-05-06 A → 2026-02-05 A (-90d) | 2026-05-11 A → 2026-02-10 A (-90d) |  |  |  |  | resources Steel Fixer [64 h]; Construction Cost [101845] → Steel Fixer [64 h]; Construction Cost [93071.6] |
| HAL-C-E-S-106 | Pouring Concrete for Footings | 2026-05-13 A → 2026-02-11 A (-91d) | 2026-05-13 A → 2026-02-11 A (-91d) |  |  |  |  | resources Carperter [16 h]; Mason [16 h]; Steel Fixer [16 h]; Concrete Mixer [8 h]; Equipment Operator [16 h]; Construction Cost [127306] → Carperter [16 h]; Mason [16 h]; Steel Fixer [16 h]; Concrete Mixer [8 h]; Equipment Operator [16 h]; Construction Cost [116339] |
| 2 | **COLUMN NECK** | 2026-05-10 → 2026-02-07 (-92d) | 2026-06-09 → 2026-03-18 (-83d) |  |  |  |  |  |
| HAL-C-E-S-257 | Rebar for column neck | 2026-05-10 A → 2026-02-07 A (-92d) | 2026-05-12 A → 2026-02-10 A (-91d) |  |  |  |  | resources Steel Fixer [64 h]; Construction Cost [14919.2] → Steel Fixer [64 h]; Construction Cost [21993.7] |
| HAL-C-E-S-267 | Formwork for column neck | 2026-05-14 A → 2026-02-14 A (-89d) | 2026-05-16 A → 2026-03-02 A (-75d) |  |  |  |  | resources Carperter [32 h]; Construction Cost [9946.13] → Carperter [32 h]; Construction Cost [5498.72] |
| HAL-C-E-S-297 | Pouring Concrete for column neck | 2026-05-17 A → 2026-02-19 A (-87d) | 2026-05-18 A → 2026-03-02 A (-77d) |  |  |  |  | resources Mason [16 h]; Carperter [16 h]; Concrete Mixer [8 h]; Steel Fixer [16 h]; Equipment Operator [16 h]; Construction Cost [24865.3] → Mason [16 h]; Carperter [16 h]; Concrete Mixer [8 h]; Steel Fixer [16 h]; Equipment Operator [16 h]; Construction Cost [27492.4] |
| HAL-C-E-S-307 | Damp proof /Bitumin paint on Footings & column neck | 2026-05-19 A → 2026-02-25 A (-83d) | 2026-05-20 A → 2026-03-03 A (-78d) |  |  |  |  | resources Painter [32 h]; Construction Cost [24777.7] → Painter [32 h]; Construction Cost [6903.81] |
| HAL-C-E-S-367 | Backfilling / Compaction up to Bottom of Grade Beams | 2026-05-24 A → 2026-03-02 A (-83d) | 2026-06-09 A → 2026-03-18 A (-83d) | 7d → 12d |  |  |  | resources General Labour [256 h]; Truck [128 h]; Mini Roller Compactor [128 h]; Equipment Operator [256 h]; Wheel Loader [128 h]; Construction Cost [46046.2] → General Labour [256 h]; Truck [128 h]; Mini Roller Compactor [128 h]; Equipment Operator [256 h]; Wheel Loader [128 h]; Construction Cost [32707.9] |
| 3 | **GRADE BEAM** | 2026-06-13 → 2026-03-10 (-95d) | 2026-06-25 → 2026-04-12 (-74d) |  |  |  |  |  |
| HAL-C-E-S-337 | Vapour barrier for Grade Beams | 2026-06-13 A → 2026-03-10 A (-95d) | 2026-06-13 A → 2026-03-24 A (-81d) |  |  |  |  | resources General Labour [32 h]; Construction Cost [5293.4] → General Labour [32 h]; Construction Cost [4019.9] |
| HAL-C-E-S-338 | Lean Concrete Below Grade Beams | 2026-06-13 A → 2026-03-10 A (-95d) | 2026-06-13 A → 2026-03-24 A (-81d) |  |  |  |  | resources Mason [32 h]; Construction Cost [4431.19] → Mason [32 h]; Construction Cost [8238.87] |
| HAL-C-E-S-527 | Anti Termite Below Grade Beams | 2026-06-13 A → 2026-03-10 A (-95d) | 2026-06-13 A → 2026-03-24 A (-81d) |  |  |  |  | resources Mason [16 h]; Construction Cost [11905.5] → Mason [16 h]; Construction Cost [8441.61] |
| HAL-C-E-S-339 | Rebar for Grade Beams | 2026-06-15 A → 2026-03-24 A (-83d) | 2026-06-18 A → 2026-04-04 A (-75d) |  |  |  | HAL-C-E-S-338 → HAL-C-E-S-338, HAL-C-GEN-200 | resources Steel Fixer [80 h]; Construction Cost [27194.5] → Steel Fixer [80 h]; Construction Cost [24993.1] |
| HAL-C-E-S-340 | Formwork for Grade Beams | 2026-06-17 A → 2026-03-24 A (-85d) | 2026-06-21 A → 2026-04-04 A (-78d) |  |  |  |  | resources Carperter [32 h]; Construction Cost [6798.61] → Carperter [32 h]; Construction Cost [6248.27] |
| HAL-C-E-S-341 | Anchor bolts installation | 2026-06-18 A → 2026-04-02 A (-77d) | 2026-06-20 A → 2026-04-04 A (-77d) |  |  |  |  | resources Carperter [32 h]; Construction Cost [57238.8] → Carperter [32 h]; Construction Cost [5667.68] |
| HAL-C-E-S-342 | Pouring Concrete for Grade Beams | 2026-06-22 A → 2026-04-05 A (-78d) | 2026-06-22 A → 2026-04-05 A (-78d) |  |  |  |  | resources Mason [16 h]; Carperter [16 h]; Concrete Mixer [8 h]; Steel Fixer [16 h]; Equipment Operator [16 h]; Construction Cost [33993.1] → Mason [16 h]; Carperter [16 h]; Concrete Mixer [8 h]; Steel Fixer [16 h]; Equipment Operator [16 h]; Construction Cost [31241.3] |
| HAL-C-E-S-347 | Damp proof /Bitumin paint on Grade Beams | 2026-06-24 A → 2026-04-11 A (-74d) | 2026-06-25 A → 2026-04-12 A (-74d) |  |  |  |  | resources Painter [80 h]; Construction Cost [24777.7] → Painter [80 h]; Construction Cost [6903.81] |
| 5 | **SLAB ON GRADE** | 2026-07-02 → 2026-04-14 (-79d) | 2026-11-28 → 2026-06-20 (-161d) |  |  |  |  |  |
| HAL-C-E-S-377 | Backfilling / Compaction for Slab on Grade | 2026-07-02 A → 2026-04-14 A (-79d) | 2026-07-06 A → 2026-04-25 A (-72d) | 7d → 12d |  |  | HAL-C-E-S-347 → HAL-C-E-S-347, HAL-C-TC-S-9100 | resources Mini Roller Compactor [128 h]; General Labour [256 h]; Equipment Operator [256 h]; Wheel Loader [128 h]; Truck [128 h]; Construction Cost [23023.1] → Mini Roller Compactor [128 h]; General Labour [256 h]; Equipment Operator [256 h]; Wheel Loader [128 h]; Truck [128 h]; Construction Cost [32707.9] |
| HAL-C-E-S-378 | Anti Termite Treatment below Ground Slab | 2026-08-09 A → 2026-05-14 A (-87d) | 2026-08-10 A → 2026-05-19 A (-83d) |  |  |  | HAL-C-E-S-377, HAL-C-TC-M-3406 → HAL-C-E-S-377 | resources General Labour [16 h]; Construction Cost [15874.1] → General Labour [16 h]; Construction Cost [11255.5] |
| HAL-C-E-S-379 | Vapour barrier for below Ground Slab | 2026-08-09 A → 2026-05-14 A (-87d) | 2026-08-10 A → 2026-05-19 A (-83d) |  |  |  |  | resources General Labour [32 h]; Construction Cost [13233.5] → General Labour [32 h]; Construction Cost [10050.1] |
| HAL-C-E-S-382 | Pouring Concrete for Ground Slab | 2026-08-09 A → 2026-05-16 A (-85d) | 2026-08-10 A → 2026-05-20 A (-82d) |  |  |  | HAL-C-E-S-379, HAL-C-C-S-6133, Pouring Concrete for Beams → HAL-C-E-S-379 | resources Mason [64 h]; Carperter [64 h]; Steel Fixer [64 h]; Concrete Mixer [32 h]; Equipment Operator [64 h]; Construction Cost [344195] → Mason [64 h]; Carperter [64 h]; Steel Fixer [64 h]; Concrete Mixer [32 h]; Equipment Operator [64 h]; Construction Cost [304092] |
| HAL-C-E-S-517 | Concrete pad | 2026-11-21 → 2026-06-17 A (-157d) | 2026-11-28 → 2026-06-20 A (-161d) |  | 0% → 100% | 15.6d → none |  | resources Mason [112 h]; Construction Cost [907.11] → Mason [112 h]; Construction Cost [1803.82] |
| 4 | **COLUMNS & BEAMS** | 2026-06-15 → 2026-03-07 (-100d) | 2026-10-04 → 2026-07-09 (-87d) |  |  |  |  |  |
| HAL-C-E-S-6101 | Rebar for Tie Beams | 2026-06-15 A → 2026-03-07 A (-100d) | 2026-06-18 A → 2026-03-09 A (-101d) |  |  |  |  | resources Steel Fixer [64 h]; Construction Cost [7263.64] → Steel Fixer [64 h]; Construction Cost [7796.52] |
| HAL-C-E-S-6102 | Formwork for Tie Beams | 2026-06-17 A → 2026-03-07 A (-102d) | 2026-06-21 A → 2026-03-09 A (-104d) |  |  |  |  | resources Carperter [32 h]; Construction Cost [1815.91] → Carperter [32 h]; Construction Cost [1949.44] |
| HAL-C-E-S-6103 | Pouring Concrete for Tie Beams | 2026-06-22 A → 2026-03-10 A (-104d) | 2026-06-22 A → 2026-03-10 A (-104d) |  |  |  | HAL-C-E-S-6102, HAL-C-D-S-6133 → HAL-C-E-S-6102 | resources Mason [16 h]; Carperter [16 h]; Concrete Mixer [32 h]; Steel Fixer [16 h]; Equipment Operator [16 h]; Construction Cost [9079.54] → Mason [16 h]; Carperter [16 h]; Concrete Mixer [8 h]; Steel Fixer [16 h]; Equipment Operator [16 h]; Construction Cost [9745.95] |
| HAL-C-E-S-5101 | Rebar for column | 2026-07-22 A → 2026-05-16 A (-67d) | 2026-07-30 A → 2026-05-24 A (-67d) | 5d → 7d |  |  |  | resources Steel Fixer [112 h]; Construction Cost [20144] → Steel Fixer [112 h]; Construction Cost [18494.8] |
| HAL-C-E-S-5102 | Formwork for column | 2026-08-11 A → 2026-06-01 A (-71d) | 2026-08-18 A → 2026-06-02 A (-77d) |  |  |  | HAL-C-E-S-5101 → HAL-C-E-S-5101, HAL-C-TC-M-3406 | resources Carperter [64 h]; Construction Cost [5036.01] → Carperter [64 h]; Construction Cost [4623.84] |
| HAL-C-E-S-5103 | Pouring Concrete for column | 2026-08-13 A → 2026-06-04 A (-70d) | 2026-08-22 A → 2026-06-04 A (-79d) |  |  |  |  | resources Mason [16 h]; Carperter [16 h]; Concrete Mixer [32 h]; Steel Fixer [16 h]; Equipment Operator [16 h]; Construction Cost [25180.1] → Mason [16 h]; Carperter [16 h]; Concrete Mixer [8 h]; Steel Fixer [16 h]; Equipment Operator [16 h]; Construction Cost [23118.6] |
| HAL-C-E-S-6113 | Rebar for Beams | 2026-09-17 A → 2026-06-04 A (-105d) | 2026-09-20 A → 2026-07-08 A (-74d) |  |  |  |  | resources Steel Fixer [64 h]; Construction Cost [13379.1] → Steel Fixer [64 h]; Construction Cost [11954.6] |
| HAL-C-E-S-6123 | Formwork for Beams | 2026-09-28 A → 2026-07-08 A (-82d) | 2026-10-01 A → 2026-07-08 A (-85d) |  |  |  |  | resources Carperter [32 h]; Construction Cost [3344.77] → Carperter [32 h]; Construction Cost [2988.97] |
| HAL-C-E-S-6133 | Pouring Concrete for Beams | 2026-10-03 A → 2026-07-09 A (-86d) | 2026-10-04 A → 2026-07-09 A (-87d) |  |  |  |  | resources Mason [16 h]; Carperter [16 h]; Concrete Mixer [32 h]; Steel Fixer [16 h]; Equipment Operator [16 h]; Construction Cost [16723.9] → Mason [16 h]; Carperter [16 h]; Concrete Mixer [8 h]; Steel Fixer [16 h]; Equipment Operator [16 h]; Construction Cost [14943.6] |
| 5 | **STRUCTURAL STEEL** | 2026-07-12 → 2026-04-30 (-73d) | 2026-12-03 → 2026-08-13 (-112d) |  |  |  |  |  |
| HAL-C-E-SS-0100 | Installation of columns | 2026-07-12 A → 2026-04-30 A (-73d) | 2026-07-13 A → 2026-05-06 A (-68d) |  |  |  | HAL-C-E-S-382, HAL-C-D-A-220, HAL-P-ST-E-210, HAL-P-ST-E-200 → HAL-C-E-S-382, HAL-C-D-A-220 | resources Structural Steel Fixer [80 h]; General Labour [80 h]; Equipment Operator [80 h]; Mobile Crane [24 h]; Construction Cost [217508] → Structural Steel Fixer [80 h]; General Labour [80 h]; Equipment Operator [80 h]; Mobile Crane [40 h]; Construction Cost [164363] |
| HAL-C-E-SS-0110 | Installation of raft and purlins | 2026-07-12 A → 2026-04-30 A (-73d) | 2026-07-14 A → 2026-05-09 A (-66d) |  |  |  | HAL-C-E-SS-0100, HAL-C-B-A-950 → HAL-C-E-SS-0100 | resources Structural Steel Fixer [160 h]; General Labour [160 h]; Mobile Crane [56 h]; Equipment Operator [160 h]; Construction Cost [326261] → Structural Steel Fixer [160 h]; General Labour [160 h]; Mobile Crane [80 h]; Equipment Operator [160 h]; Construction Cost [340061] |
| HAL-C-E-SS-1030 | Steel members for external platform | 2026-11-21 → 2026-05-03 A (-202d) | 2026-11-28 → 2026-05-25 A (-187d) | 7d → 5d | 0% → 100% | 5.6d → none |  | resources Construction Cost [18670.8]; General Labour [112 h]; Mobile Crane [56 h]; Structural Steel Fixer [112 h]; Equipment Operator [112 h] → Construction Cost [27249.1]; General Labour [112 h]; Mobile Crane [56 h]; Structural Steel Fixer [112 h]; Equipment Operator [112 h] |
| HAL-C-E-SS-620 | Steel members for office area | 2026-11-12 → 2026-05-03 A (-193d) | 2026-11-19 → 2026-05-25 A (-178d) | 7d → 5d | 0% → 100% | 5.6d → none |  | resources Construction Cost [115805]; Structural Steel Fixer [112 h]; Mobile Crane [56 h]; General Labour [112 h]; Equipment Operator [112 h] → Construction Cost [97318.2]; Structural Steel Fixer [112 h]; Mobile Crane [56 h]; General Labour [112 h]; Equipment Operator [112 h] |
| HAL-C-E-SS-610 | Intumescent paint to steel works | 2026-07-30 A → 2026-05-16 A (-75d) | 2026-08-01 A → 2026-06-02 A (-60d) | 7d → 5d |  |  | HAL-C-E-SS-0110, HAL-C-C-S-1277, HAL-P-ST-E-240, HAL-P-ST-E-230, HAL-P-ST-M-370 → HAL-C-E-SS-0110 | resources Painter [112 h]; Construction Cost [317760] → Painter [112 h]; Construction Cost [269284] |
| HAL-C-E-SS-0140 | Installation of roof sheet | 2026-08-06 A → 2026-06-07 A (-60d) | 2026-08-13 A → 2026-06-10 A (-64d) |  |  |  | HAL-C-E-A-0120, HAL-C-E-SS-610, HAL-C-E-S-6133, HAL-C-D-SS-1040 → HAL-C-E-A-0120, HAL-C-E-SS-610, HAL-C-E-S-6133 | resources Roof sheet worker [160 h]; General Labour [160 h]; Mobile Crane [40 h]; Equipment Operator [160 h]; Construction Cost [217508] → Roof sheet worker [160 h]; General Labour [160 h]; Mobile Crane [80 h]; Equipment Operator [160 h]; Construction Cost [453414] |
| HAL-C-E-SS-0130 | Installation of wall sandwich panel | 2026-10-18 A → 2026-07-16 A (-94d) | 2026-12-02 → 2026-07-30 A (-125d) |  | 30% → 100% | 7.1d → none | HAL-C-E-A-0150, HAL-C-E-SS-1020, HAL-P-ST-M-380 → HAL-C-E-A-0150 | resources Sandwich panel worker [112 h]; General Labour [112 h]; Mobile Crane [40 h]; Equipment Operator [112 h]; Construction Cost [326261] → Sandwich panel worker [112 h]; General Labour [112 h]; Mobile Crane [56 h]; Equipment Operator [112 h]; Construction Cost [170030] |
| HAL-C-E-SS-1040 | Epoxy paint for external platform | 2026-11-29 → 2026-07-20 A (-132d) | 2026-12-03 → 2026-07-21 A (-135d) |  | 0% → 100% | 5.6d → none |  | resources Painter [80 h]; Construction Cost [3734.16] → Painter [80 h]; Construction Cost [6812.27] |
| HAL-C-E-SS-1020 | Epoxy paint to steel members at office area | 2026-11-21 → 2026-08-12 A (-101d) | 2026-11-28 → 2026-08-13 A (-107d) | 7d → 5d | 0% → 100% | 7.1d → none |  | resources Painter [112 h]; Construction Cost [23161] → Painter [112 h]; Construction Cost [24329.5] |
| 2 | **ARCHITECTURAL** | 2026-08-12 → 2026-06-10 (-63d) | 2027-02-15 → 2026-10-28 (-110d) |  |  |  |  |  |
| 1 | **MASONARY WORKS** | 2026-08-22 → 2026-06-10 (-73d) | 2026-09-27 → 2026-07-02 (-87d) |  |  |  |  |  |
| HAL-C-E-A-0120 | Block work at factory area | 2026-08-22 A → 2026-06-10 A (-73d) | 2026-08-25 A → 2026-07-02 A (-54d) | 8d → 15d |  |  | HAL-C-E-S-382, HAL-C-E-SS-0110, HAL-C-B-E-343 → HAL-C-E-S-382, HAL-C-E-SS-0110 | resources AAC panel erector [240 h]; General Labour [240 h]; Equipment Operator [240 h]; Mobile Crane [120 h]; Construction Cost [58338.7] → AAC panel erector [240 h]; General Labour [240 h]; Equipment Operator [240 h]; Mobile Crane [120 h]; Construction Cost [38856.6] |
| HAL-C-E-A-0150 | Block work at office area | 2026-08-22 A → 2026-06-10 A (-73d) | 2026-09-08 A → 2026-07-02 A (-68d) | 7d → 10d |  |  | HAL-C-E-SS-0140 SS, HAL-C-E-SS-620 → HAL-C-E-SS-0140 SS, HAL-C-E-SS-620, HAL-C-TC-S-9090 | resources AAC panel erector [160 h]; General Labour [160 h]; Mobile Crane [56 h]; Equipment Operator [160 h]; Construction Cost [6179.18] → AAC panel erector [160 h]; General Labour [160 h]; Mobile Crane [80 h]; Equipment Operator [160 h]; Construction Cost [9714] |
| HAL-C-E-A-170 | Block work at toilet area | 2026-08-22 A → 2026-06-10 A (-73d) | 2026-09-27 A → 2026-07-02 A (-87d) |  |  |  | HAL-C-E-A-0150, HAL-C-D-S-1017, HAL-P-ST-M-400 → HAL-C-E-A-0150, HAL-C-E-SS-1040, HAL-C-E-SS-1020, HAL-C-TC-A-9100 | resources Mason [112 h]; Construction Cost [14436.3] → Mason [112 h]; Construction Cost [15836.3] |
| 5 | **WALL FINISHES** | 2026-10-04 → 2026-07-26 (-70d) | 2026-12-23 → 2026-10-22 (-62d) |  |  |  |  |  |
| HAL-C-E-A-180 | Internal Wall Plaster | 2026-10-04 A → 2026-07-26 A (-70d) | 2026-10-15 A → 2026-08-05 A (-71d) |  |  |  | HAL-C-E-A-170, HAL-C-E-E-183 → HAL-C-E-A-170, HAL-C-E-E-183, HAL-C-E-S-517 | resources Mason [240 h]; Construction Cost [48590.2] → Mason [240 h]; Construction Cost [29610.2] |
| HAL-C-E-A-230 | Paint to Plaster (Primer, Putty & First Coat) | 2026-12-16 → 2026-08-12 A (-126d) | 2026-12-23 → 2026-10-22 A (-62d) |  | 0% → 100% | 27d → none |  | resources Painter [112 h]; Construction Cost [44167.3] → Painter [112 h]; Construction Cost [26649.5] |
| 2 | **CIELING FINISHES** | 2026-12-08 → 2026-09-08 (-91d) | 2026-12-13 → 2026-09-24 (-80d) |  |  |  |  |  |
| HAL-C-E-A-240 | Installation of Ceiling Gypsum Board | 2026-12-08 → 2026-09-08 A (-91d) | 2026-12-13 → 2026-09-24 A (-80d) |  | 0% → 100% | 27d → none |  | resources Carperter [80 h]; Construction Cost [46792.3] → Carperter [80 h]; Construction Cost [44650.2] |
| 6 | **FLOOR FINISHES** | 2026-11-30 → 2026-08-02 (-120d) | 2027-02-15 → 2026-10-15 (-123d) |  |  |  |  |  |
| HAL-C-E-A-220 | Tiles for Toilet | 2026-11-30 → 2026-08-02 A (-120d) | 2026-12-07 → 2026-08-13 A (-116d) |  | 0% → 100% | 27d → none |  | resources Tile Fixer [112 h]; Construction Cost [46530.7] → Tile Fixer [112 h]; Construction Cost [48089.6] |
| HAL-C-E-A-250 | Tiles for Office Area | 2026-12-14 → 2026-08-27 A (-109d) | 2026-12-15 → 2026-08-30 A (-107d) |  | 0% → 100% | 27d → none | HAL-C-E-A-240 → HAL-C-E-A-240, HAL-C-E-E-303 | resources Tile Fixer [32 h]; Construction Cost [26867.3] → Tile Fixer [32 h]; Construction Cost [25626.5] |
| HAL-C-E-A-420 | Epoxy paint | 2027-02-13 → 2026-09-05 A (-161d) | 2027-02-15 → 2026-10-15 A (-123d) | 3d → 5d | 0% → 100% | 0d → none | HAL-C-E-A-340 → HAL-C-E-A-340 SS | resources Painter [112 h]; Construction Cost [115420] → Painter [112 h]; Construction Cost [102516] |
| HAL-C-E-A-390 | Granite strip | 2026-12-17 → 2026-09-22 A (-86d) | 2026-12-19 → 2026-09-24 A (-86d) |  | 0% → 100% | 27d → none | HAL-C-E-A-558, HAL-C-E-A-250 → HAL-C-E-A-558 | resources Tile Fixer [32 h]; Construction Cost [671.12] → Tile Fixer [32 h]; Construction Cost [1454.24] |
| 3 | **DOORS & WINDOWS** | 2026-10-11 → 2026-07-14 (-89d) | 2026-12-16 → 2026-09-13 (-94d) |  |  |  |  |  |
| HAL-C-E-A-552 | Window (CW1) | 2026-12-05 → 2026-07-14 A (-144d) | 2026-12-09 → 2026-09-13 A (-87d) | 5d → 7d | 0% → 100% | 5.6d → none | HAL-C-E-SS-0130, HAL-C-E-SS-1040 → HAL-C-E-SS-0130 | resources Carperter [112 h]; Construction Cost [94173.2] → Carperter [112 h]; Construction Cost [90682.8] |
| HAL-C-E-A-558 | Skylight fixtures installation | 2026-10-11 A → 2026-08-03 A (-69d) | 2026-10-14 A → 2026-08-06 A (-69d) |  |  |  | HAL-C-E-A-557 → HAL-C-E-A-557, HAL-C-TC-E-9120 | resources Carperter [16 h]; Construction Cost [6489.89] → Carperter [16 h]; Construction Cost [61929.7] |
| HAL-C-E-A-553 | Roll up Shutter Door | 2026-12-10 → 2026-08-11 A (-121d) | 2026-12-10 → 2026-08-12 A (-120d) |  | 0% → 100% | 5.6d → none | HAL-C-E-A-552, HAL-C-E-S-517, HAL-C-D-A-1370 → HAL-C-E-A-552 | resources Carperter [16 h]; Construction Cost [68619.2] → Carperter [16 h]; Construction Cost [66353.3] |
| HAL-C-E-A-200 | Supply and install (D5) 1000*2200mm single leaf steel door with door | 2026-12-12 → 2026-08-13 A (-121d) | 2026-12-12 → 2026-09-10 A (-93d) |  | 0% → 100% | 5.6d → none |  | resources Carperter [16 h]; Construction Cost [16016.2] → Carperter [16 h]; Construction Cost [15482.4] |
| HAL-C-E-A-557 | Supply and install fire rated 45 min (D2) 1200*2200 mm single leaf steel door | 2026-12-16 → 2026-08-13 A (-125d) | 2026-12-16 → 2026-09-10 A (-97d) |  | 0% → 100% | 5.6d → none |  | resources Carperter [16 h]; Construction Cost [16711.5] → Carperter [16 h]; Construction Cost [16146] |
| HAL-C-E-A-554 | Supply and install (D4) 800*2200 mm single leaf aluminum door with door | 2026-12-13 → 2026-09-08 A (-96d) | 2026-12-13 → 2026-09-10 A (-94d) |  | 0% → 100% | 5.6d → none |  | resources Carperter [16 h]; Construction Cost [22737.8] → Carperter [16 h]; Construction Cost [21896.6] |
| HAL-C-E-A-555 | Supply and install (D7) 1000*2200 mm single leaf aluminum door with door | 2026-12-14 → 2026-09-08 A (-97d) | 2026-12-14 → 2026-09-10 A (-95d) |  | 0% → 100% | 5.6d → none |  | resources Carperter [16 h]; Construction Cost [7811.07] → Carperter [16 h]; Construction Cost [7520.04] |
| HAL-C-E-A-556 | Supply and install (D3) 1000*2200 mm single leaf aluminum door with door | 2026-12-15 → 2026-09-08 A (-98d) | 2026-12-15 → 2026-09-10 A (-96d) |  | 0% → 100% | 5.6d → none |  | resources Carperter [16 h]; Construction Cost [16016.2] → Carperter [16 h]; Construction Cost [15482.4] |
| 4 | **WATER PROOFING WORKS** | 2026-11-25 → 2026-08-05 (-112d) | 2026-11-29 → 2026-08-06 (-115d) |  |  |  |  |  |
| HAL-C-E-A-370 | Waterproofing membrane for toilets | 2026-11-25 → 2026-08-05 A (-112d) | 2026-11-29 → 2026-08-06 A (-115d) |  | 0% → 100% | 27d → none | HAL-C-E-M-200, HAL-C-E-A-180 → HAL-C-E-M-200, HAL-C-E-A-180, HAL-C-TC-S-9110 | resources General Labour [64 h]; Construction Cost [4879.02] → General Labour [64 h]; Construction Cost [4653.33] |

| ID | Task | Start | Finish | Duration | Complete | Total float | Predecessors | Other |
| --- | --- | --- | --- | --- | --- | --- | --- | --- |
| 7 | **METAL WORKS** | 2026-08-12 → 2026-08-13 (+1d) | 2026-12-31 → 2026-10-24 (-68d) |  |  |  |  |  |
| HAL-C-E-A-292 | Aluminium composite panel | 2026-12-27 → 2026-08-13 A (-136d) | 2026-12-31 → 2026-10-03 A (-89d) |  | 0% → 100% | 27d → none |  | resources Steel Fixer [80 h]; General Labour [80 h]; Construction Cost [175889] → Steel Fixer [80 h]; General Labour [80 h]; Construction Cost [175670] |
| HAL-C-E-A-290 | Steel Ladder | 2026-12-20 → 2026-08-20 A (-122d) | 2026-12-21 → 2026-08-29 A (-114d) |  | 0% → 100% | 27d → none |  | resources Steel Fixer [32 h]; General Labour [32 h]; Construction Cost [9839.16] → Steel Fixer [32 h]; General Labour [32 h]; Construction Cost [9510.64] |
| HAL-C-E-A-300 | Galvanised Steel Gratings | 2026-08-12 A → 2026-10-08 A (+57d) | 2026-08-12 A → 2026-10-10 A (+59d) |  |  |  |  | resources Steel Fixer [32 h]; General Labour [32 h]; Construction Cost [6455.16] → Steel Fixer [32 h]; General Labour [32 h]; Construction Cost [6237.21] |
| HAL-C-E-A-291 | Steel railing works | 2026-12-22 → 2026-10-22 A (-61d) | 2026-12-26 → 2026-10-24 A (-63d) |  | 0% → 100% | 27d → none |  | resources Steel Fixer [64 h]; General Labour [64 h]; Construction Cost [1533.98] → Steel Fixer [64 h]; General Labour [64 h]; Construction Cost [7497.92] |
| 8 | **SPECIALTIES** | 2027-01-02 → 2026-09-22 (-102d) | 2027-02-11 → 2026-10-28 (-106d) |  |  |  |  |  |
| HAL-C-E-A-320 | Installation of fittings | 2027-01-02 → 2026-09-22 A (-102d) | 2027-01-06 → 2026-09-24 A (-104d) |  | 0% → 100% | 27d → none | HAL-C-E-A-300 → HAL-C-E-A-300 SS | resources Plumber [80 h]; Construction Cost [22981.3] → Plumber [80 h]; Construction Cost [21686.5] |
| HAL-C-E-A-340 | Furniture Installation | 2027-02-11 → 2026-10-25 A (-109d) | 2027-02-11 → 2026-10-25 A (-109d) |  | 0% → 100% | 0d → none | HAL-C-E-A-570, HAL-C-D-A-1260 → HAL-C-E-A-570 | resources General Labour [16 h]; Mason [16 h]; Construction Cost [12468.8] → General Labour [16 h]; Mason [16 h]; Construction Cost [10561.2] |
| HAL-C-E-A-570 | Identification sign; ID01 & ID02 | 2027-01-07 → 2026-10-26 (-73d) | 2027-01-10 → 2026-10-28 (-74d) |  |  | 27d → 4d | HAL-C-E-A-320 → HAL-C-E-A-320 SS | resources Mason [48 h]; Construction Cost [9630.56] → Mason [48 h]; Construction Cost [9289.46] |
| 3 | **MECHANICAL** | 2026-07-23 → 2026-04-05 (-109d) | 2027-01-12 → 2026-09-26 (-108d) |  |  |  |  |  |
| 1 | **HVAC** | 2026-12-24 → 2026-06-17 (-190d) | 2027-01-09 → 2026-09-24 (-107d) |  |  |  |  |  |
| 1 | **FIRST STAGE** | 2026-12-31 → 2026-06-17 (-197d) | 2027-01-04 → 2026-07-30 (-158d) |  |  |  |  |  |
| HAL-C-E-M-140 | Installation of HVAC Ducts | 2026-12-31 → 2026-06-17 A (-197d) | 2027-01-02 → 2026-07-30 A (-156d) |  | 0% → 100% | 27d → none |  | resources Ductman [32 h]; Construction Cost [149489] → Ductman [32 h]; Construction Cost [141482] |
| HAL-C-E-M-170 | Installation of Duct insulation | 2027-01-03 → 2026-06-17 A (-200d) | 2027-01-04 → 2026-07-30 A (-158d) |  | 0% → 100% | 27d → none |  | resources Ductman [32 h]; Construction Cost [21205.4] → Ductman [32 h]; Construction Cost [18747.3] |
| 2 | **SECOND STAGE** | 2026-12-24 → 2026-07-30 (-147d) | 2027-01-09 → 2026-09-24 (-107d) |  |  |  |  |  |
| HAL-C-E-M-130 | Installation of Exhaust Fans | 2026-12-24 → 2026-07-30 A (-147d) | 2026-12-26 → 2026-07-30 A (-149d) |  | 0% → 100% | 27d → none |  | resources AC Technician [32 h]; Construction Cost [7938.56] → AC Technician [32 h]; Construction Cost [9331.24] |
| HAL-C-E-M-160 | Installation of Wall Propeller Type Exhaust Fan | 2026-12-27 → 2026-09-03 A (-115d) | 2026-12-30 → 2026-09-05 A (-116d) |  | 0% → 100% | 27d → none |  | resources AC Technician [64 h]; Construction Cost [46831.6] → AC Technician [64 h]; Construction Cost [17417.7] |
| HAL-C-E-M-340 | Supply, install, test and commission door grilles & exhaust louvers | 2027-01-07 → 2026-09-05 A (-124d) | 2027-01-09 → 2026-09-10 A (-121d) |  | 0% → 100% | 27d → none |  | resources Ductman [32 h]; Construction Cost [5574.4] → Ductman [32 h]; Construction Cost [7188.28] |
| HAL-C-E-M-339 | Installation of Diffuser | 2027-01-05 → 2026-09-19 A (-108d) | 2027-01-06 → 2026-09-24 A (-104d) |  | 0% → 100% | 27d → none |  | resources Ductman [32 h]; Construction Cost [2144] → Ductman [32 h]; Construction Cost [2764.72] |
| 2 | **FIRE FIGHTING SYSTEM** | 2026-09-10 → 2026-06-11 (-91d) | 2027-01-12 → 2026-08-25 (-140d) |  |  |  |  |  |
| 1 | **FIRST STAGE** | 2026-09-10 → 2026-06-11 (-91d) | 2026-09-21 → 2026-08-06 (-46d) |  |  |  |  |  |
| HAL-C-E-M-300 | Installation of Fire Fighting Pipes (Seamless Black Steel) | 2026-09-10 A → 2026-06-11 A (-91d) | 2026-09-21 A → 2026-08-06 A (-46d) |  |  |  |  | resources Pipe Fitter [112 h]; Construction Cost [72394.8] → Pipe Fitter [112 h]; Construction Cost [60425.7] |
| HAL-C-E-M-310 | Installation of Fire Fighting Valve | 2026-09-10 A → 2026-06-13 A (-89d) | 2026-09-21 A → 2026-08-06 A (-46d) |  |  |  |  | resources Pipe Fitter [80 h]; Construction Cost [12199.4] → Pipe Fitter [80 h]; Construction Cost [12712.2] |
| 2 | **SECOND STAGE** | 2026-12-24 → 2026-06-17 (-190d) | 2027-01-12 → 2026-08-25 (-140d) |  |  |  |  |  |
| HAL-C-E-M-320 | Installation of Fire Hose Cabinet | 2026-12-24 → 2026-06-17 A (-190d) | 2026-12-27 → 2026-08-25 A (-124d) |  | 0% → 100% | 41d → none |  | resources Pipe Fitter [48 h]; Construction Cost [15158.6] → Pipe Fitter [48 h]; Construction Cost [11147.4] |
| HAL-C-E-M-370 | Supply, install, test and commission Fire Department Connection(FDC) | 2027-01-10 → 2026-06-17 A (-207d) | 2027-01-12 → 2026-08-06 A (-159d) |  | 0% → 100% | 27d → none |  | resources Pipe Fitter [48 h]; Construction Cost [2706.06] → Pipe Fitter [48 h]; Construction Cost [2598.84] |
| 3 | **SEWER AND DRAINAGE SYSTEM** | 2026-07-23 → 2026-04-05 (-109d) | 2026-12-26 → 2026-09-26 (-91d) |  |  |  |  |  |
| 1 | **FIRST STAGE** | 2026-07-23 → 2026-04-05 (-109d) | 2026-12-09 → 2026-08-06 (-125d) |  |  |  |  |  |
| HAL-C-E-M-200 | Installation of Sanitary Waste / Drainage Pipes | 2026-07-23 A → 2026-04-05 A (-109d) | 2026-07-27 A → 2026-05-02 A (-86d) |  |  |  |  | resources Plumber [64 h]; Construction Cost [18585.1] → Plumber [64 h]; Construction Cost [14362.4] |
| HAL-C-E-M-220 | Installation of Floor Drain | 2026-12-08 → 2026-06-17 A (-174d) | 2026-12-09 → 2026-08-06 A (-125d) |  | 0% → 100% | 35.25d → none |  | resources Plumber [32 h]; Construction Cost [11056] → Plumber [32 h]; Construction Cost [10616.5] |
| HAL-C-E-M-380 | Installation of Trench drain | 2026-08-03 A → 2026-06-17 A (-47d) | 2026-08-04 A → 2026-08-06 A (+2d) |  |  |  |  | resources Plumber [80 h]; Construction Cost [11508.8] → Plumber [80 h]; Construction Cost [11379.6] |
| 2 | **SECOND STAGE** | 2026-12-10 → 2026-08-15 (-117d) | 2026-12-26 → 2026-09-26 (-91d) |  |  |  |  |  |
| HAL-C-E-M-180 | Installation of Electric Water Heater | 2026-12-10 → 2026-08-15 A (-117d) | 2026-12-12 → 2026-08-15 A (-119d) |  | 0% → 100% | 35.25d → none |  | resources Plumber [32 h]; Construction Cost [1819.51] → Plumber [32 h]; Construction Cost [1592.48] |
| HAL-C-E-M-429 | Installation of Roof Vent Cap | 2026-12-24 → 2026-08-19 A (-127d) | 2026-12-26 → 2026-08-22 A (-126d) |  | 0% → 100% | 35.25d → none |  | resources Pipe Fitter [32 h]; Construction Cost [927.12] → Pipe Fitter [32 h]; Construction Cost [829.41] |
| HAL-C-E-M-428 | Installation of Water Tap | 2026-12-22 → 2026-08-27 A (-117d) | 2026-12-23 → 2026-09-19 A (-95d) |  | 0% → 100% | 35.25d → none |  | resources Plumber [32 h]; Construction Cost [2874.14] → Plumber [32 h]; Construction Cost [2654.13] |
| HAL-C-E-M-190 | Installation of Sanitary Fixture and Accessories | 2026-12-13 → 2026-09-20 A (-84d) | 2026-12-16 → 2026-09-26 A (-81d) |  | 0% → 100% | 35.25d → none |  | resources Plumber [64 h]; Construction Cost [19921.7] → Plumber [64 h]; Construction Cost [16243] |
| HAL-C-E-M-210 | Installation of Lavotary /Wash Basin | 2026-12-17 → 2026-09-20 A (-88d) | 2026-12-19 → 2026-09-26 A (-84d) |  | 0% → 100% | 35.25d → none |  | resources Plumber [32 h]; Construction Cost [21416.7] → Plumber [32 h]; Construction Cost [20348.3] |
| HAL-C-E-M-270 | Installation of Bib Tap | 2026-12-20 → 2026-09-20 A (-91d) | 2026-12-21 → 2026-09-26 A (-86d) |  | 0% → 100% | 35.25d → none |  | resources Plumber [32 h]; Construction Cost [1900.66] → Plumber [32 h]; Construction Cost [2211.78] |
| 4 | **WATER SUPPLY SYSTEM** | 2026-10-01 → 2026-07-02 (-91d) | 2026-12-29 → 2026-08-15 (-136d) |  |  |  |  |  |
| 1 | **FIRST STAGE** | 2026-10-01 → 2026-07-02 (-91d) | 2026-10-04 → 2026-08-15 (-50d) |  |  |  |  |  |
| HAL-C-E-M-290 | Installation of Water Supply Pipes | 2026-10-01 A → 2026-07-02 A (-91d) | 2026-10-04 A → 2026-08-15 A (-50d) |  |  |  |  | resources Plumber [64 h]; Construction Cost [23318.4] → Plumber [64 h]; Construction Cost [19520.2] |
| HAL-C-E-M-280 | Installation of Water Supply Valve | 2026-10-01 A → 2026-08-06 A (-56d) | 2026-10-04 A → 2026-08-15 A (-50d) |  |  |  |  | resources Plumber [32 h]; Construction Cost [18274.3] → Plumber [32 h]; Construction Cost [15736.8] |
| 2 | **SECOND STAGE** | 2026-12-24 → 2026-07-04 (-173d) | 2026-12-29 → 2026-08-08 (-143d) |  |  |  |  |  |
| HAL-C-E-M-330 | Capped connection | 2026-12-24 → 2026-07-04 A (-173d) | 2026-12-29 → 2026-08-08 A (-143d) |  | 0% → 100% | 38.25d → none |  | resources Plumber [80 h]; Construction Cost [278.13] → Plumber [80 h]; Construction Cost [287.53] |
| 4 | **ELECTRICAL** | 2026-06-17 → 2026-04-05 (-73d) | 2027-01-13 → 2026-10-27 (-78d) |  |  |  |  |  |
| 1 | **FIRST STAGE** | 2026-06-17 → 2026-04-05 (-73d) | 2027-01-03 → 2026-10-25 (-70d) |  |  |  |  |  |
| HAL-C-E-E-113 | Installation of Earthing and Grounding | 2026-06-18 A → 2026-04-05 A (-74d) | 2027-01-03 → 2026-10-25 A (-70d) |  | 90% → 100% | 5.6d → none |  | resources Electrician [80 h]; Construction Cost [19646.5] → Electrician [80 h]; Construction Cost [17002.4] |
| HAL-C-E-E-183 | Installation of Sleeves & Power outlet | 2026-06-18 A → 2026-04-05 A (-74d) | 2026-11-24 → 2026-09-22 A (-63d) |  | 50% → 100% | 27d → none |  | resources Electrician [128 h]; Construction Cost [2920.45] → Electrician [128 h]; Construction Cost [2853.19] |
| HAL-C-E-E-143 | Installation of Conduits and wiring outlets - Fire Alarm System | 2026-06-17 A → 2026-05-25 A (-23d) | 2026-11-22 → 2026-06-11 A (-164d) |  | 50% → 100% | 18.2d → none |  | resources Electrician [64 h]; Construction Cost [1768.31] → Electrician [64 h]; Construction Cost [2026.84] |
| HAL-C-E-E-163 | Installation of Conduites for Lighting Fixture | 2026-09-29 A → 2026-05-25 A (-127d) | 2026-12-02 → 2026-06-11 A (-174d) |  | 90% → 100% | 18.2d → none |  | resources Electrician [64 h]; Construction Cost [8462.97] → Electrician [64 h]; Construction Cost [3983.66] |
| HAL-C-E-E-233 | Installation of Wires | 2026-12-17 → 2026-06-09 A (-191d) | 2026-12-21 → 2026-09-09 A (-103d) |  | 0% → 100% | 5.6d → none | HAL-C-E-E-163, HAL-C-E-A-558 → HAL-C-E-E-163 | resources Electrician [64 h]; Construction Cost [16925.9] → Electrician [64 h]; Construction Cost [7966.69] |
| HAL-C-E-E-223 | Installation of LV Cables | 2026-12-29 → 2026-09-05 A (-115d) | 2027-01-02 → 2026-10-14 A (-80d) |  | 0% → 100% | 5.6d → none |  | resources Electrician [64 h]; Construction Cost [36390] → Electrician [64 h]; Construction Cost [31551] |
| 2 | **SECOND STAGE** | 2026-10-10 → 2026-06-17 (-115d) | 2027-01-13 → 2026-10-27 (-78d) |  |  |  |  |  |
| HAL-C-E-E-273 | Installation of Access Control System | 2026-12-29 → 2026-06-17 A (-195d) | 2027-01-03 → 2026-10-26 (-69d) |  | 0% → 80% | 18.25d → 5.4d |  | resources Electrician [80 h]; Construction Cost [27616.9] → Electrician [80 h]; Construction Cost [24315.4] |
| HAL-C-E-E-410 | Installation of CCTV System | 2026-12-22 → 2026-06-17 A (-188d) | 2026-12-28 → 2026-10-14 A (-75d) | 6d → 7d | 0% → 100% | 18.25d → none |  | resources Plumber [112 h]; Construction Cost [76349.2] → Plumber [112 h]; Construction Cost [66177.6] |
| HAL-C-E-E-243 | Installation of LP-1 Panel | 2026-10-10 A → 2026-07-26 A (-76d) | 2026-10-14 A → 2026-10-01 A (-13d) |  |  |  |  | resources Electrician [32 h]; Construction Cost [18403.5] → Electrician [32 h]; Construction Cost [15128.5] |
| HAL-C-E-E-213 | Installation of Telephone Cabinet | 2026-12-27 → 2026-07-30 A (-150d) | 2026-12-28 → 2026-10-01 A (-88d) |  | 0% → 100% | 5.6d → none |  | resources Electrician [32 h]; Construction Cost [26991.1] → Electrician [32 h]; Construction Cost [23299.8] |
| HAL-C-E-E-420 | Installation of Solar power plant | 2026-10-13 A → 2026-08-17 A (-57d) | 2027-01-13 → 2026-10-12 A (-93d) | 10d → 2d | 10% → 100% | 5.6d → none | HAL-C-D-E-1040, HAL-C-E-E-113 → HAL-C-D-E-1040 SS | resources Plumber [112 h]; Construction Cost [253269] → Plumber [112 h]; Construction Cost [218966] |
| HAL-C-E-E-173 | Installation of Wiring Devices | 2026-12-24 → 2026-08-29 A (-117d) | 2026-12-28 → 2026-10-01 A (-88d) |  | 0% → 100% | 29.25d → none | HAL-C-E-E-183, HAL-C-E-A-230 → HAL-C-E-E-183, HAL-C-E-A-230, HAL-C-E-E-113 | resources Electrician [64 h]; Construction Cost [19435.1] → Electrician [64 h]; Construction Cost [20742.2] |
| HAL-C-E-E-203 | Installation of Disconnect Switches | 2026-12-29 → 2026-08-29 A (-122d) | 2026-12-30 → 2026-10-12 A (-79d) |  | 0% → 100% | 29.25d → none |  | resources Electrician [32 h]; Construction Cost [30236] → Electrician [32 h]; Construction Cost [25808.4] |
| HAL-C-E-E-193 | Installation of Main Distribution Board | 2026-12-22 → 2026-09-08 A (-105d) | 2026-12-23 → 2026-10-14 A (-70d) |  | 0% → 100% | 5.6d → none |  | resources Electrician [32 h]; Construction Cost [32472.7] → Electrician [32 h]; Construction Cost [25479.7] |
| HAL-C-E-E-153 | Installation of Lighting fixtures | 2026-12-22 → 2026-09-15 A (-98d) | 2026-12-26 → 2026-10-12 A (-75d) |  | 0% → 100% | 20.25d → none |  | resources Electrician [64 h]; Construction Cost [76166.7] → Electrician [64 h]; Construction Cost [59751.1] |
| HAL-C-E-E-253 | Installation of PP-AC panel | 2026-12-24 → 2026-09-17 A (-98d) | 2026-12-26 → 2026-10-14 A (-73d) |  | 0% → 100% | 5.6d → none |  | resources Electrician [32 h]; Construction Cost [21648.5] → Electrician [32 h]; Construction Cost [18214] |
| HAL-C-E-E-123 | Installation of Fire Alarm Control Panel | 2026-11-23 → 2026-09-22 A (-62d) | 2026-11-26 → 2026-09-24 A (-63d) |  | 0% → 100% | 18.2d → none |  | resources Electrician [64 h]; Construction Cost [19451.4] → Electrician [64 h]; Construction Cost [16216.6] |
| HAL-C-E-E-133 | Installation of Fire Detectors & Accessories | 2026-11-28 → 2026-09-22 A (-67d) | 2026-12-01 → 2026-10-12 A (-50d) |  | 0% → 100% | 18.2d → none |  | resources Electrician [64 h]; Construction Cost [56740.4] → Electrician [64 h]; Construction Cost [31219.2] |
| HAL-C-E-E-303 | Firewarning flash light with sounder; wall mounted, Weather proof | 2027-01-09 → 2026-09-22 A (-109d) | 2027-01-10 → 2026-09-24 A (-108d) |  | 0% → 100% | 18.25d → none |  | resources Electrician [32 h]; Construction Cost [3082.69] → Electrician [32 h]; Construction Cost [2963.79] |
| HAL-C-E-E-283 | Monitor Modules for Fire Alarm | 2027-01-04 → 2026-09-24 A (-102d) | 2027-01-05 → 2026-10-27 (-70d) |  | 0% → 70% | 18.25d → 5.4d | HAL-C-E-E-273, HAL-C-E-E-213 → HAL-C-E-E-273, HAL-C-E-E-253, HAL-C-E-E-213 | resources Electrician [32 h]; Construction Cost [3882.38] → Electrician [32 h]; Construction Cost [3760.02] |
| HAL-C-E-E-293 | Line Isolator Modules for Fire Alarm | 2027-01-06 → 2026-09-24 A (-104d) | 2027-01-07 → 2026-10-14 A (-85d) |  | 0% → 100% | 18.25d → none |  | resources Electrician [32 h]; Construction Cost [185.4] → Electrician [32 h]; Construction Cost [163.42] |
| 2 | **SITE INFRASTRUCTURE** | 2026-01-19 → 2026-01-20 (+1d) | 2027-02-16 → 2026-11-02 (-106d) |  |  |  |  |  |
| 1 | **SITE WORKS** | 2026-01-19 → 2026-01-20 (+1d) | 2026-02-28 → 2026-08-29 (+182d) |  |  |  |  |  |

| ID | Task | Start | Finish | Duration | Complete | Total float | Predecessors | Other |
| --- | --- | --- | --- | --- | --- | --- | --- | --- |
| HAL-C-GEN-180 | Initial Site Survey and Setting out | 2026-01-19 A → 2026-01-20 A (+1d) | 2026-01-24 A → 2026-01-21 A (-3d) |  |  |  |  |  |
| 4 | **NETWORKS** | 2026-08-01 → 2026-05-05 (-88d) | 2027-01-25 → 2026-09-19 (-128d) |  |  |  |  |  |
| 6 | **INTERNAL FIRE FIGHTING WATER SUPPLY SYSTEM (OUTSIDE BUILDING UNITS)** | 2026-08-01 → 2026-05-05 (-88d) | 2026-11-25 → 2026-08-04 (-113d) |  |  |  |  |  |
| HAL-C-ENV-F-212 | Excavation for External Fire Fighting Works | 2026-08-01 A → 2026-05-05 A (-88d) | 2026-11-12 → 2026-08-03 A (-101d) |  | 90% → 100% | 13.3d → none | HAL-E-SA-EX-700, HAL-E-SA-EX-720, HAL-E-MT-ENV-2060, Installation of roof sheet, HAL-C-GEN-77 → HAL-C-C-SS-310, HAL-C-GEN-200, HAL-E-SA-EX-700, HAL-E-SA-EX-720, HAL-E-MT-ENV-2060 | resources General Labour [112 h]; Equipment Operator [112 h]; Excavator [56 h]; Construction Cost [40471.6] → General Labour [112 h]; Equipment Operator [112 h]; Excavator [56 h]; Construction Cost [7464.74] |
| HAL-C-ENV-F-172 | Installation of HDPE PN16 Pipes (200 Dia) | 2026-08-02 A → 2026-05-16 A (-78d) | 2026-11-14 → 2026-08-03 A (-103d) |  | 90% → 100% | 48.4d → none |  | resources Pipe Fitter [160 h]; Construction Cost [364244] → Pipe Fitter [160 h]; Construction Cost [111975] |
| HAL-C-ENV-F-202 | Warning Tapes | 2026-08-03 A → 2026-05-16 A (-79d) | 2026-11-21 → 2026-08-03 A (-110d) |  | 80% → 100% | 43.1d → none | HAL-C-ENV-F-172, HAL-P-ST-M-660, Concrete pad → HAL-C-ENV-F-172, HAL-P-ST-M-660 | resources Plumber [32 h]; Construction Cost [40471.6] → Plumber [32 h]; Construction Cost [7464.74] |
| HAL-C-ENV-F-222 | Backfilling for External Fire Fighting Works | 2026-08-05 A → 2026-06-17 A (-49d) | 2026-11-25 → 2026-08-04 A (-113d) |  | 80% → 100% | 54.5d → none |  | resources General Labour [224 h]; Equipment Operator [224 h]; Mini Roller Compactor [112 h]; Construction Cost [40471.6] → General Labour [224 h]; Equipment Operator [224 h]; Mini Roller Compactor [112 h]; Construction Cost [7464.74] |
| HAL-C-ENV-F-192 | Installation of Valves | 2026-08-02 A → 2026-07-14 A (-19d) | 2026-11-22 → 2026-07-25 A (-120d) |  | 80% → 100% | 43.1d → none |  | resources Plumber [80 h]; Construction Cost [86057.9] → Plumber [80 h]; Construction Cost [26983.7] |
| 1 | **WATER SUPPLY SYSTEM** | 2026-10-13 → 2026-05-05 (-161d) | 2027-01-28 → 2026-09-10 (-140d) |  |  |  |  |  |
| HAL-C-ENV-WS-786 | Excavation for Water Suppy Works | 2026-10-12 A → 2026-05-05 A (-160d) | 2026-11-26 → 2026-08-03 A (-115d) |  | 50% → 100% | 5d → none | HAL-C-ENV-F-212, HAL-E-SA-EX-690, HAL-E-SA-EX-710, HAL-C-A-M-810 → HAL-C-ENV-F-212, HAL-E-SA-EX-690, HAL-E-SA-EX-710 | resources General Labour [112 h]; Equipment Operator [112 h]; Excavator [56 h]; Construction Cost [13950.4] → General Labour [112 h]; Equipment Operator [112 h]; Excavator [56 h]; Construction Cost [4191.31] |
| HAL-C-ENV-WS-746 | Installation of HDPE PN16 Pipes for Cold Water Supply | 2026-10-17 A → 2026-05-16 A (-154d) | 2026-11-30 → 2026-08-03 A (-119d) | 7d → 10d | 50% → 100% | 15d → none |  | resources Pipe Fitter [160 h]; Construction Cost [125553] → Pipe Fitter [160 h]; Construction Cost [62869.8] |
| HAL-C-ENV-WS-776 | Warning Tape | 2026-10-18 A → 2026-05-16 A (-155d) | 2026-12-03 → 2026-08-15 A (-110d) |  | 50% → 100% | 44.6d → none |  | resources Plumber [32 h]; Construction Cost [13950.4] → Plumber [32 h]; Construction Cost [4191.31] |
| HAL-C-ENV-WS-766 | Installation of Valves | 2026-10-17 A → 2026-06-17 A (-122d) | 2026-12-06 → 2026-08-15 A (-113d) |  | 50% → 100% | 44.6d → none | HAL-C-ENV-WS-776, HAL-E-SA-EX-970, HAL-E-SA-EX-790, HAL-P-ST-EN-130, HAL-P-ST-EN-160, HAL-E-ST-E-0270 → HAL-C-ENV-WS-776, HAL-E-SA-EX-740, HAL-E-SA-EX-790, HAL-P-ST-EN-130, HAL-P-ST-EN-160 | resources Plumber [80 h]; Construction Cost [53930.1] → Plumber [80 h]; Construction Cost [27204.8] |
| HAL-C-ENV-WS-796 | Backfilling for Water Supply | 2026-10-18 A → 2026-06-17 A (-123d) | 2026-12-14 → 2026-08-15 A (-121d) |  | 50% → 100% | 44.8d → none |  | resources General Labour [224 h]; Equipment Operator [224 h]; Mini Roller Compactor [112 h]; Construction Cost [13950.4] → General Labour [224 h]; Equipment Operator [224 h]; Mini Roller Compactor [112 h]; Construction Cost [4191.31] |
| HAL-C-ENV-WS-846 | Construction of Air Valve Chamber | 2026-10-04 A → 2026-06-17 A (-109d) | 2026-12-03 → 2026-08-15 A (-110d) |  | 80% → 100% | 44.6d → none |  | resources Mason [112 h]; Construction Cost [16236.4] → Mason [112 h]; Construction Cost [13270.7] |
| HAL-C-ENV-WS-826 | Supply and install Service connection -HDPE | 2026-12-14 → 2026-08-03 A (-133d) | 2026-12-30 → 2026-09-10 A (-111d) |  | 0% → 100% | 44.8d → none |  | resources Plumber [224 h]; Construction Cost [35694.4] → Plumber [224 h]; Construction Cost [8294.16] |
| HAL-C-ENV-WS-806 | Construction of Washout Chamber | 2026-10-04 A → 2026-08-04 A (-61d) | 2026-12-02 → 2026-09-05 A (-88d) |  | 80% → 100% | 44.6d → none |  | resources Mason [112 h]; Construction Cost [17314.2] → Mason [112 h]; Construction Cost [15482.4] |
| 9 | **SEWER & DRAINAGE SYSTEM** | 2026-08-22 → 2026-05-16 (-98d) | 2026-12-20 → 2026-09-10 (-101d) |  |  |  |  |  |
| HAL-C-ENV-SW-536 | Construction of Manhole | 2026-08-22 A → 2026-05-16 A (-98d) | 2026-09-10 A → 2026-07-23 A (-49d) |  |  |  | Installation of UPVC Pipes for Sewer, HAL-E-SA-EX-960, HAL-E-SA-EX-900, HAL-E-SA-EX-910, HAL-E-SA-EX-920, HAL-E-SA-EX-930, HAL-E-SA-EX-940 → HAL-C-ENV-SW-486, HAL-E-SA-EX-730, HAL-E-SA-EX-900, HAL-E-SA-EX-910, HAL-E-SA-EX-920, HAL-E-SA-EX-930, HAL-E-SA-EX-940 | resources Mason [112 h]; Construction Cost [166049] → Mason [112 h]; Construction Cost [85153.4] |
| HAL-C-ENV-SW-516 | Excavation for Sewer Works | 2026-08-22 A → 2026-05-23 A (-91d) | 2026-10-04 A → 2026-08-04 A (-61d) |  |  |  |  | resources General Labour [112 h]; Equipment Operator [112 h]; Excavator [56 h]; Construction Cost [22261.9] → General Labour [112 h]; Equipment Operator [112 h]; Excavator [56 h]; Construction Cost [6012.35] |
| HAL-C-ENV-SW-526 | Backfilling for Sewer Drainage | 2026-09-17 A → 2026-06-17 A (-92d) | 2026-10-06 A → 2026-08-04 A (-63d) |  |  |  |  | resources General Labour [224 h]; Equipment Operator [224 h]; Mini Roller Compactor [112 h]; Construction Cost [22261.9] → General Labour [224 h]; Equipment Operator [224 h]; Mini Roller Compactor [112 h]; Construction Cost [6012.35] |
| HAL-C-ENV-SW-496 | Construction of inspection chambers | 2026-08-22 A → 2026-07-04 A (-49d) | 2026-10-03 A → 2026-07-23 A (-72d) |  |  |  |  | resources Mason [112 h]; Construction Cost [249925] → Mason [112 h]; Construction Cost [107824] |
| HAL-C-ENV-SW-506 | Gully trap | 2026-12-01 → 2026-08-15 A (-108d) | 2026-12-12 → 2026-09-10 A (-93d) |  | 0% → 100% | 55.7d → none |  | resources Plumber [160 h]; Construction Cost [53541.6] → Plumber [160 h]; Construction Cost [23223.7] |
| 2 | **IRRIGATION SYSTEM** | 2026-12-01 → 2026-06-17 (-167d) | 2027-01-25 → 2026-09-19 (-128d) |  |  |  |  |  |
| HAL-C-ENV-SW-576 | Construction of Air valve chamber | 2026-12-21 → 2026-06-17 A (-187d) | 2026-12-26 → 2026-08-05 A (-143d) |  | 0% → 100% | 15d → none |  | resources Mason [80 h]; Construction Cost [3786.75] → Mason [80 h]; Construction Cost [3096.48] |
| HAL-C-ENV-SW-556 | Excavation for HDPE pipes | 2026-12-01 → 2026-09-15 A (-77d) | 2026-12-08 → 2026-09-16 A (-83d) | 7d → 3d | 0% → 100% | 15d → none | HAL-C-ENV-SW-516 SS, HAL-E-SA-EX-950, HAL-E-SA-EX-730 → HAL-C-ENV-SW-516 SS, HAL-E-SA-EX-950, HAL-E-SA-EX-960 | resources General Labour [112 h]; Equipment Operator [112 h]; Excavator [56 h]; Construction Cost [6309.39] → General Labour [112 h]; Equipment Operator [112 h]; Excavator [56 h]; Construction Cost [171.41] |
| HAL-C-ENV-SW-566 | Installation of HDPE Pipes | 2026-12-09 → 2026-09-15 A (-85d) | 2026-12-20 → 2026-09-16 A (-95d) | 10d → 5d | 0% → 100% | 15d → none |  | resources Pipe Fitter [160 h]; Construction Cost [63093.9] → Pipe Fitter [160 h]; Construction Cost [2742.6] |
| HAL-C-ENV-SW-586 | Construction of Washout valve chamber | 2026-12-21 → 2026-09-15 A (-97d) | 2026-12-26 → 2026-09-19 A (-98d) |  | 0% → 100% | 15d → none |  | resources Mason [80 h]; Construction Cost [3247.85] → Mason [80 h]; Construction Cost [3594.13] |
| HAL-C-ENV-SW-596 | Backfilling for HDPE pipes | 2026-12-27 → 2026-09-17 A (-101d) | 2027-01-11 → 2026-09-19 A (-114d) | 14d → 7d | 0% → 100% | 15d → none | HAL-C-ENV-SW-586, HAL-C-TC-ENV-F-1051 → HAL-C-ENV-SW-586 | resources General Labour [224 h]; Equipment Operator [224 h]; Mini Roller Compactor [112 h]; Construction Cost [6309.39] → General Labour [224 h]; Equipment Operator [224 h]; Mini Roller Compactor [112 h]; Construction Cost [171.41] |
| HAL-C-ENV-SW-606 | Installation of valves | 2027-01-12 → 2026-09-17 A (-117d) | 2027-01-17 → 2026-09-17 A (-122d) |  | 0% → 100% | 15d → none | HAL-C-ENV-SW-596, HAL-E-SA-EX-740, HAL-C-TC-ENV-WS-11 → HAL-C-ENV-SW-596, HAL-E-SA-EX-970 | resources Plumber [80 h]; Construction Cost [84556] → Plumber [80 h]; Construction Cost [31694.8] |
| HAL-C-ENV-SW-616 | Main program system and controller for irrigation system | 2027-01-18 → 2026-09-17 A (-123d) | 2027-01-25 → 2026-09-19 A (-128d) |  | 0% → 100% | 15d → none |  | resources Plumber [112 h]; Construction Cost [100118]; Electrician [112 h] → Plumber [112 h]; Construction Cost [79624]; Electrician [112 h] |
| 3 | **EXTERNAL WORKS** | 2026-07-01 → 2026-04-09 (-83d) | 2027-02-16 → 2026-11-02 (-106d) |  |  |  |  |  |
| 1 | **MECHANICAL** | 2026-07-18 → 2026-04-09 (-100d) | 2027-02-09 → 2026-10-08 (-124d) |  |  |  |  |  |
| HAL-C-EX-M-1371 | Installation of GRP Tanks | 2026-08-08 A → 2026-05-13 A (-87d) | 2026-10-08 A → 2026-06-06 A (-124d) |  |  |  |  | resources Pipe Fitter [160 h]; Plumber [160 h]; Construction Cost [585840] → Pipe Fitter [160 h]; Plumber [160 h]; Construction Cost [282002] |
| HAL-C-EX-M-1381 | Valves for GRP Tank | 2026-12-06 → 2026-06-08 A (-181d) | 2026-12-09 → 2026-06-13 A (-179d) |  | 0% → 100% | 63.9d → none | HAL-C-EX-M-1371, Supply, install, test and commission Fire Department Connection(FDC) → HAL-C-EX-M-1371 | resources Plumber [48 h]; Construction Cost [58584] → Plumber [48 h]; Construction Cost [37600.2] |
| HAL-C-EX-M-1391 | Access Ladder for GRP Tank | 2026-12-09 → 2026-06-08 A (-184d) | 2026-12-12 → 2026-06-13 A (-182d) |  | 0% → 100% | 63.9d → none |  | resources Plumber [32 h]; Construction Cost [58584] → Plumber [32 h]; Construction Cost [18800.1] |
| HAL-C-EX-M-1341 | Installation of Booster Pump | 2026-10-07 A → 2026-08-15 A (-53d) | 2026-10-07 A → 2026-08-29 A (-39d) |  |  |  | HAL-P-ST-M-400, Pouring Concrete for Ground Slab → HAL-P-ST-M-400, HAL-C-PR-S-178 SS | resources Plumber [80 h]; Mobile Crane [40 h]; Equipment Operator [80 h]; Construction Cost [38967.3] → Plumber [80 h]; Mobile Crane [40 h]; Equipment Operator [80 h]; Construction Cost [29029.6] |
| HAL-C-EX-M-1301 | Installation of Fire Fighting Pump | 2026-09-22 A → 2026-08-29 A (-24d) | 2026-09-22 A → 2026-08-29 A (-24d) |  |  |  | HAL-P-ST-M-380, HAL-C-EX-M-1341, HAL-P-ST-M-380 FF → HAL-P-ST-M-380, HAL-C-EX-M-1341 | resources Pipe Fitter [64 h]; Equipment Operator [64 h]; Mobile Crane [32 h]; Construction Cost [345880] → Pipe Fitter [64 h]; Equipment Operator [64 h]; Mobile Crane [32 h]; Construction Cost [298590] |
| HAL-C-EX-M-1351 | Valves for Water Supply Pump | 2026-12-03 → 2026-08-29 A (-96d) | 2026-12-05 → 2026-08-30 A (-97d) |  | 0% → 100% | 61d → none |  | resources Plumber [32 h]; Construction Cost [4329.7] → Plumber [32 h]; Construction Cost [5805.91] |
| HAL-C-EX-M-1311 | CO2 fire extinguisher | 2026-12-01 → 2026-10-07 A (-55d) | 2026-12-01 → 2026-10-08 A (-54d) |  | 0% → 100% | 64d → none |  | resources Plumber [16 h]; Construction Cost [217.29] → Plumber [16 h]; Construction Cost [193.53] |
| HAL-C-EX-M-1361 | Powder fire extinguisher | 2026-12-02 → 2026-10-07 A (-56d) | 2026-12-02 → 2026-10-08 A (-55d) |  | 0% → 100% | 64d → none |  | resources Pipe Fitter [16 h]; Construction Cost [188.33] → Pipe Fitter [16 h]; Construction Cost [165.89] |
| 1 | **GRP Tank Foundation** | 2026-07-27 → 2026-04-09 (-109d) | 2026-08-27 → 2026-05-24 (-95d) |  |  |  |  |  |
| HAL-C-GRP-S-0101 | Excavation for Foundation | 2026-07-27 A → 2026-04-09 A (-109d) | 2026-07-27 A → 2026-04-16 A (-102d) |  |  |  |  | resources General Labour [64 h]; Truck [32 h]; Excavator [32 h]; Mini Roller Compactor [32 h]; Construction Cost [9001.87] → General Labour [64 h]; Truck [32 h]; Excavator [32 h]; Mini Roller Compactor [32 h]; Construction Cost [4998.62] |
| HAL-C-GRP-S-0102 | Vapour Barrier for Foundation | 2026-08-06 A → 2026-04-20 A (-108d) | 2026-08-06 A → 2026-04-20 A (-108d) |  |  |  |  | resources General Labour [32 h]; Construction Cost [9001.87] → General Labour [32 h]; Construction Cost [4998.62] |
| HAL-C-GRP-S-0103 | Lean Concrete Below Foundation | 2026-08-06 A → 2026-04-20 A (-108d) | 2026-08-06 A → 2026-04-20 A (-108d) |  |  |  |  | resources Mason [32 h]; Construction Cost [18003.8] → Mason [32 h]; Construction Cost [9997.23] |
| HAL-C-GRP-S-0104 | Rebar for Foundation | 2026-08-11 A → 2026-04-22 A (-111d) | 2026-08-16 A → 2026-04-27 A (-111d) |  |  |  |  | resources Steel Fixer [64 h]; Construction Cost [36007.5] → Steel Fixer [64 h]; Construction Cost [19994.5] |
| HAL-C-GRP-S-0105 | Formwork for Foundation | 2026-08-12 A → 2026-04-22 A (-112d) | 2026-08-23 A → 2026-04-30 A (-115d) |  |  |  |  | resources Carperter [64 h]; Construction Cost [18003.8] → Carperter [64 h]; Construction Cost [9997.23] |
| HAL-C-GRP-S-0106 | Pouring Concrete for Foundation | 2026-08-18 A → 2026-05-02 A (-108d) | 2026-08-23 A → 2026-05-02 A (-113d) |  |  |  |  | resources Carperter [16 h]; Mason [16 h]; Steel Fixer [16 h]; Concrete Mixer [8 h]; Construction Cost [63013.1] → Carperter [16 h]; Mason [16 h]; Steel Fixer [16 h]; Concrete Mixer [8 h]; Construction Cost [34990.3] |
| HAL-C-GRP-S-0107 | Damp proof /Bitumin paint on Foundation | 2026-08-24 A → 2026-05-18 A (-98d) | 2026-08-25 A → 2026-05-20 A (-97d) |  |  |  |  | resources Painter [32 h]; Construction Cost [9001.87] → Painter [32 h]; Construction Cost [4998.62] |
| HAL-C-GRP-S-0108 | Backfilling / Compaction Around Foundation | 2026-08-26 A → 2026-05-21 A (-97d) | 2026-08-27 A → 2026-05-24 A (-95d) |  |  |  |  | resources General Labour [112 h]; Truck [56 h]; Mini Roller Compactor [56 h]; Wheel Loader [56 h]; Construction Cost [18003.8] → General Labour [112 h]; Truck [56 h]; Mini Roller Compactor [56 h]; Wheel Loader [56 h]; Construction Cost [9997.23] |
| 2 | **Pump Shed** | 2026-07-01 → 2026-05-02 (-60d) | 2026-12-06 → 2026-07-30 (-129d) |  |  |  |  |  |
| HAL-C-PR-S-108 | Excavation for Footings | 2026-07-01 A → 2026-05-02 A (-60d) | 2026-07-02 A → 2026-05-05 A (-58d) |  |  |  | Installation of UPVC Pipes for Sewer, HAL-E-SA-C-890 → HAL-C-ENV-SW-486 SS, HAL-E-SA-C-890 | resources General Labour [64 h]; Truck [32 h]; Excavator [32 h]; Mini Roller Compactor [32 h]; Construction Cost [649.57] → General Labour [64 h]; Truck [32 h]; Excavator [32 h]; Mini Roller Compactor [32 h]; Construction Cost [691.18] |
| HAL-C-PR-S-138 | Lean Concrete Below Footings | 2026-04-25 A → 2026-05-07 A (+12d) | 2026-04-25 A → 2026-05-07 A (+12d) |  |  |  | HAL-C-PR-S-308, HAL-E-MT-EX-2050 → HAL-C-PR-S-308 | resources Mason [32 h]; Construction Cost [8229.34] → Mason [32 h]; Construction Cost [691.18] |
| HAL-C-PR-S-198 | Rebar for Footings | 2026-05-02 A → 2026-05-07 A (+5d) | 2026-05-05 A → 2026-05-11 A (+6d) |  |  |  | HAL-C-PR-S-138, HAL-E-SA-EX-860, HAL-E-SA-EX-870, HAL-E-SA-EX-880, HAL-E-SA-EX-890, HAL-E-SA-EX-900, HAL-E-SA-EX-910, HAL-E-SA-EX-920, HAL-E-SA-E-990, HAL-E-SA-E-1000, HAL-E-SA-E-1010, HAL-E-SA-E-1020, HAL-E-SA-E-1030, HAL-E-SA-E-1040, HAL-E-SA-E-1050, HAL-E-SA-E-1060, HAL-E-SA-E-1070, HAL-E-SA-E-1080, HAL-E-SA-E-1090, HAL-E-SA-E-1100, HAL-E-SA-M-660, HAL-E-SA-M-680, HAL-E-SA-M-670, HAL-E-SA-M-690, HAL-E-SA-M-700, HAL-E-SA-M-710, HAL-E-SA-M-720, HAL-E-SA-M-730, HAL-E-SA-M-740, HAL-E-SA-M-750, HAL-E-SA-M-760, HAL-E-SA-M-770 → HAL-C-PR-S-138 | resources Steel Fixer [64 h]; Construction Cost [101845] → Steel Fixer [64 h]; Construction Cost [1382.36] |
| HAL-C-PR-S-208 | Formwork for Footings | 2026-05-05 A → 2026-05-07 A (+2d) | 2026-05-06 A → 2026-05-12 A (+6d) |  |  |  |  | resources Carperter [64 h]; Construction Cost [25461.2] → Carperter [64 h]; Construction Cost [691.18] |
| HAL-C-PR-S-308 | Vapour Barrier for Footings | 2026-04-25 A → 2026-05-07 A (+12d) | 2026-04-25 A → 2026-05-07 A (+12d) | 1d → 2d |  |  | Anti Termite Below Footings → HAL-C-PR-S-108 | resources General Labour [16 h]; Construction Cost [7940.1] → General Labour [32 h]; Construction Cost [691.18] |
| HAL-C-PR-S-148 | Pouring Concrete for Footings | 2026-05-07 A → 2026-05-16 A (+9d) | 2026-05-07 A → 2026-05-16 A (+9d) |  |  |  | HAL-C-PR-S-208, HAL-E-SA-M-780, HAL-E-SA-M-790, HAL-E-SA-M-800, HAL-E-MT-ENV-2060 → HAL-C-PR-S-208 | resources Carperter [16 h]; Mason [16 h]; Steel Fixer [16 h]; Concrete Mixer [8 h]; Equipment Operator [16 h]; Construction Cost [127306] → Carperter [16 h]; Mason [16 h]; Steel Fixer [16 h]; Concrete Mixer [8 h]; Construction Cost [6911.8] |
| HAL-C-PR-S-298 | Damp proof /Bitumin paint on Footing Sides | 2026-07-28 A → 2026-05-18 A (-71d) | 2026-07-28 A → 2026-05-20 A (-69d) |  |  |  | Pouring Concrete for Footings → HAL-C-PR-S-148 | resources Painter [32 h]; Construction Cost [649.57] → Painter [32 h]; Construction Cost [691.18] |
| HAL-C-PR-S-378 | Backfilling / Compaction Around Footings to Bottom of Grade Beams | 2026-07-29 A → 2026-05-21 A (-69d) | 2026-08-03 A → 2026-05-31 A (-64d) |  |  |  |  | resources General Labour [80 h]; Truck [40 h]; Mini Roller Compactor [40 h]; Wheel Loader [40 h]; Construction Cost [1299.14] → General Labour [80 h]; Truck [40 h]; Mini Roller Compactor [40 h]; Wheel Loader [40 h]; Construction Cost [1382.36] |
| HAL-C-PR-S-158 | Lean Concrete Below Grade Beams | 2026-06-06 A → 2026-06-01 A (-5d) | 2026-06-06 A → 2026-06-01 A (-5d) |  |  |  |  | resources Mason [32 h]; Construction Cost [4431.19] → Mason [32 h]; Construction Cost [691.18] |
| HAL-C-PR-S-328 | Vapour barrier for Grade Beams | 2026-06-06 A → 2026-06-01 A (-5d) | 2026-06-06 A → 2026-06-01 A (-5d) |  |  |  | Anti Termite Below Grade Beams → HAL-C-PR-S-378 | resources General Labour [32 h]; Construction Cost [5293.4] → General Labour [32 h]; Construction Cost [691.18] |
| HAL-C-PR-S-218 | Rebar for Grade Beams | 2026-06-08 A → 2026-06-02 A (-6d) | 2026-06-09 A → 2026-06-04 A (-5d) | 5d → 2d |  |  |  | resources Steel Fixer [80 h]; Construction Cost [27194.5] → Steel Fixer [32 h]; Construction Cost [1382.36] |
| HAL-C-PR-S-188 | Pedestal including anchor bolts | 2026-08-17 A → 2026-06-04 A (-74d) | 2026-08-17 A → 2026-06-06 A (-72d) |  |  |  | Formwork for Grade Beams SS → HAL-C-PR-S-228 SS | resources Mason [16 h]; Structural Steel Fixer [16 h]; Construction Cost [1299.14] → Mason [16 h]; Structural Steel Fixer [16 h]; Construction Cost [691.18] |
| HAL-C-PR-S-228 | Formwork for Grade Beams | 2026-06-11 A → 2026-06-04 A (-7d) | 2026-06-15 A → 2026-06-06 A (-9d) |  |  |  |  | resources Carperter [32 h]; Construction Cost [6798.61] → Carperter [32 h]; Construction Cost [691.18] |
| HAL-C-PR-S-168 | Pouring Concrete for Grade Beams | 2026-06-17 A → 2026-06-06 A (-11d) | 2026-06-17 A → 2026-06-06 A (-11d) |  |  |  | HAL-C-PR-S-228, Anchor bolts installation → HAL-C-PR-S-228 | resources Mason [16 h]; Carperter [16 h]; Concrete Mixer [8 h]; Steel Fixer [16 h]; Equipment Operator [16 h]; Construction Cost [33993.1] → Mason [16 h]; Carperter [16 h]; Concrete Mixer [8 h]; Steel Fixer [16 h]; Construction Cost [3455.9] |
| HAL-C-PR-S-338 | Damp proof /Bitumin paint on Grade Beams | 2026-06-23 A → 2026-06-13 A (-10d) | 2026-06-25 A → 2026-06-14 A (-11d) | 5d → 2d |  |  | HAL-C-PR-S-168 → HAL-C-PR-S-168, HAL-C-PR-S-188 | resources Painter [80 h]; Construction Cost [24777.7] → Painter [32 h]; Construction Cost [691.18] |
| HAL-C-PR-S-288 | Concrete Pad | 2026-12-01 → 2026-06-17 A (-167d) | 2026-12-06 → 2026-06-20 A (-169d) |  | 0% → 100% | 68d → none | Pouring Concrete for Ground Slab → HAL-C-PR-S-178 | resources Mason [80 h]; Construction Cost [1299.14] → Mason [80 h]; Construction Cost [1382.36] |
| HAL-C-PR-S-388 | Backfilling / Compaction for Slab on Grade | 2026-06-27 A → 2026-06-29 A (+2d) | 2026-07-05 A → 2026-07-02 A (-3d) | 7d → 5d |  |  |  | resources Mini Roller Compactor [128 h]; General Labour [256 h]; Equipment Operator [256 h]; Wheel Loader [128 h]; Truck [128 h]; Construction Cost [23023.1] → Mini Roller Compactor [40 h]; General Labour [80 h]; Wheel Loader [40 h]; Construction Cost [1382.36] |
| HAL-C-PR-S-128 | Installation of Columns | 2026-08-30 A → 2026-07-07 A (-54d) | 2026-08-30 A → 2026-07-07 A (-54d) |  |  |  |  | resources Structural Steel Fixer [48 h]; Mobile Crane [24 h]; Construction Cost [7794.85] → Structural Steel Fixer [48 h]; Mobile Crane [24 h]; Construction Cost [8985.34] |
| HAL-C-PR-S-358 | Installation of Raft & Purlins | 2026-08-30 A → 2026-07-08 A (-53d) | 2026-08-30 A → 2026-07-08 A (-53d) |  |  |  |  | resources Structural Steel Fixer [64 h]; Mobile Crane [32 h]; Construction Cost [11042.7] → Structural Steel Fixer [64 h]; Mobile Crane [32 h]; Construction Cost [13823.6] |

| ID | Task | Start | Finish | Duration | Complete | Total float | Predecessors | Other |
| --- | --- | --- | --- | --- | --- | --- | --- | --- |
| HAL-C-PR-S-368 | Installation of Roof Sheet | 2026-08-31 A → 2026-07-11 A (-51d) | 2026-08-31 A → 2026-07-30 A (-32d) |  |  |  | HAL-C-PR-S-358 → HAL-C-PR-S-358 SS | resources Structural Steel Fixer [32 h]; Mobile Crane [16 h]; Construction Cost [19487.1] → Structural Steel Fixer [32 h]; Mobile Crane [16 h]; Construction Cost [20735.4] |
| HAL-C-PR-S-268 | Rebar for Ground Slab | 2026-08-25 A → 2026-07-15 A (-41d) | 2026-08-26 A → 2026-07-16 A (-41d) |  |  |  | Vapour barrier for below Ground Slab → HAL-C-PR-S-348 | resources Steel Fixer [64 h]; Construction Cost [12070.6] → Steel Fixer [64 h]; Construction Cost [13735.1] |
| HAL-C-PR-S-318 | Anti Termite Treatment below Ground Slab | 2026-08-06 A → 2026-07-15 A (-22d) | 2026-08-08 A → 2026-07-15 A (-24d) |  |  |  |  | resources General Labour [16 h]; Construction Cost [15874.1] → General Labour [16 h]; Construction Cost [691.18] |
| HAL-C-PR-S-348 | Vapour barrier for below Ground Slab | 2026-08-06 A → 2026-07-15 A (-22d) | 2026-08-08 A → 2026-07-15 A (-24d) |  |  |  |  | resources General Labour [32 h]; Construction Cost [13233.5] → General Labour [32 h]; Construction Cost [691.18] |
| HAL-C-PR-S-278 | Formwork for Ground Slab | 2026-08-26 A → 2026-07-16 A (-41d) | 2026-08-26 A → 2026-07-16 A (-41d) |  |  |  | HAL-C-PR-S-268 → HAL-C-PR-S-268, HAL-C-PR-S-268 FF, HAL-C-EX-M-1391 | resources Carperter [64 h]; Construction Cost [8263.6] → Carperter [64 h]; Construction Cost [3433.78] |
| HAL-C-PR-S-178 | Pouring Concrete for Ground Slab | 2026-08-06 A → 2026-07-18 A (-19d) | 2026-08-08 A → 2026-07-18 A (-21d) | 4d → 1d |  |  | HAL-C-PR-S-348 → HAL-C-PR-S-278 | resources Mason [64 h]; Carperter [64 h]; Steel Fixer [64 h]; Concrete Mixer [32 h]; Equipment Operator [64 h]; Construction Cost [344195] → Mason [16 h]; Carperter [16 h]; Steel Fixer [16 h]; Concrete Mixer [8 h]; Construction Cost [17168.9] |
| 6 | **ELECTRICAL** | 2026-06-08 → 2026-07-25 (+47d) | 2027-01-30 → 2026-10-27 (-95d) |  |  |  |  |  |
| HAL-C-EX-E-186 | Installation of Earthing and Grounding | 2026-06-08 A → 2026-07-25 A (+47d) | 2027-01-03 → 2026-10-27 (-68d) |  | 90% → 70% | 14.6d → 5.5d | HAL-C-EX-E-216 → HAL-C-EX-E-176, HAL-E-SA-E-1160 | resources Electrician [80 h]; Construction Cost [19646.5] → Electrician [80 h]; Construction Cost [1219.55] |
| HAL-C-EX-E-206 | Installation of Conduites for Lighting Fixture | 2026-10-01 A → 2026-08-19 A (-43d) | 2026-12-15 → 2026-10-01 A (-75d) |  | 90% → 100% | 16.2d → none | Installation of Fire Detectors & Accessories → HAL-C-EX-E-186, HAL-E-SA-E-1130, HAL-E-SA-E-1140, HAL-E-SA-E-1170 | resources Electrician [64 h]; Construction Cost [8462.97] → Electrician [64 h]; Construction Cost [353.88] |
| HAL-C-EX-E-1341 | Installation of Cable tray | 2026-12-03 → 2026-09-05 A (-89d) | 2026-12-08 → 2026-10-01 A (-68d) | 5d → 2d | 0% → 100% | 58d → none | HAL-C-EX-E-236, HAL-P-ST-E-2100 → HAL-C-EX-E-236 SS, HAL-P-ST-E-2100 | resources Electrician [80 h]; Construction Cost [3563.73] → Electrician [80 h]; Construction Cost [1603.54] |
| HAL-C-EX-E-1331 | Installation of Programmable Logis Controller | 2026-12-16 → 2026-09-15 A (-92d) | 2026-12-20 → 2026-09-19 A (-92d) | 4d → 1d | 0% → 100% | 54d → none | Installation of Lighting fixtures, HAL-E-SA-E-1180, HAL-E-ST-E-0270 → HAL-C-EX-E-196 SS, HAL-E-SA-E-1180, HAL-E-ST-E-0270 | resources Electrician [112 h]; Construction Cost [189531] → Electrician [112 h]; Construction Cost [159248] |
| HAL-C-EX-E-1321 | Installation of wiring devices | 2026-12-03 → 2026-09-24 A (-70d) | 2026-12-08 → 2026-10-12 A (-57d) | 5d → 2d | 0% → 100% | 64d → none | HAL-C-EX-M-1301, HAL-C-EX-M-1361 → HAL-C-EX-M-1301 SS, HAL-C-EX-M-1361 SS | resources Electrician [80 h]; Construction Cost [5632.31] → Electrician [80 h]; Construction Cost [3826.99] |
| HAL-C-EX-E-176 | Installation of Main MCC | 2026-12-01 → 2026-09-24 A (-68d) | 2026-12-02 → 2026-10-12 A (-51d) |  | 0% → 100% | 54d → none | HAL-C-EX-M-1341 → HAL-C-EX-M-1341 SS | resources Electrician [32 h]; Construction Cost [13498.4] → Electrician [32 h]; Construction Cost [12828.3] |
| HAL-C-EX-E-196 | Installation of Lighting fixtures | 2026-12-22 → 2026-09-24 A (-89d) | 2026-12-26 → 2026-10-12 A (-75d) | 4d → 2d | 0% → 100% | 38d → none | HAL-C-EX-E-226 → HAL-C-EX-E-226, HAL-C-EX-M-1351, HAL-E-SA-E-1150, HAL-P-ST-E-280 | resources Electrician [64 h]; Construction Cost [76166.7] → Electrician [32 h]; Construction Cost [5310.11] |
| HAL-C-EX-E-216 | Installation of LV Cables | 2026-12-29 → 2026-09-24 A (-96d) | 2027-01-02 → 2026-10-12 A (-82d) | 4d → 2d | 0% → 100% | 14.6d → none | Installation of Telephone Cabinet, HAL-C-C-M-1300, HAL-C-C-M-1250, HAL-C-C-A-1610 → HAL-C-EX-E-176 SS, HAL-C-EX-E-1341 SS | resources Electrician [64 h]; Construction Cost [36390] → Electrician [80 h]; Construction Cost [2281.82] |
| HAL-C-EX-E-236 | Installation of panel boards | 2026-12-01 → 2026-09-24 A (-68d) | 2026-12-02 → 2026-10-12 A (-51d) |  | 0% → 100% | 58d → none |  | resources Electrician [32 h]; Construction Cost [5953.91] → Electrician [32 h]; Construction Cost [5175.56] |
| HAL-C-EX-E-226 | Installation of Wires | 2026-12-17 → 2026-10-10 A (-68d) | 2026-12-21 → 2026-10-12 A (-70d) | 4d → 2d | 0% → 100% | 14.6d → none | HAL-C-EX-E-206, Skylight fixtures installation → HAL-C-EX-E-206 SS | resources Electrician [64 h]; Construction Cost [16925.9] → Electrician [32 h]; Construction Cost [707.77] |
| 4 | **EXTERNAL ELECTRICAL WORKS** | 2026-11-23 → 2026-08-01 (-114d) | 2027-01-26 → 2026-11-02 (-85d) |  |  |  |  |  |
| HAL-C-EX-E-450 | Foundation for Lighting poles | 2026-12-19 → 2026-08-01 A (-140d) | 2026-12-23 → 2026-09-09 A (-105d) |  | 0% → 100% | 5d → none |  | resources Excavator [40 h]; Electrician [80 h]; Construction Cost [19588.8] → Excavator [40 h]; Electrician [80 h]; Construction Cost [13176] |
| HAL-C-EX-E-460 | Electrical Manhole | 2027-01-13 → 2026-08-01 A (-165d) | 2027-01-20 → 2026-09-05 A (-137d) |  | 0% → 100% | 17d → none | Installation of LV Cables → HAL-C-EX-E-380 | resources Electrician [112 h]; Construction Cost [253329] → Electrician [112 h]; Construction Cost [111551] |
| HAL-C-EX-E-410 | Construction of Concrete encased duct bank | 2026-11-29 → 2026-08-25 A (-96d) | 2026-12-07 → 2026-09-24 A (-74d) | 8d → 10d | 0% → 100% | 5d → none | HAL-C-EX-E-400, UPVC pipes, HAL-P-ST-E-370, HAL-C-D-M-860 → HAL-C-EX-E-400, HAL-C-EX-E-400 FF | resources Electrician [160 h]; Construction Cost [687206] → Electrician [160 h]; Construction Cost [269888] |
| HAL-C-EX-E-390 | Installation of Telecom manhole | 2026-12-14 → 2026-09-02 A (-103d) | 2026-12-17 → 2026-09-09 A (-99d) | 4d → 10d | 0% → 100% | 5d → none |  | resources Electrician [160 h]; Construction Cost [120350] → Electrician [160 h]; Construction Cost [54888.3] |
| HAL-C-EX-E-400 | Installation of UPVC Pipe | 2026-11-23 → 2026-09-02 A (-82d) | 2026-11-28 → 2026-09-24 A (-65d) |  | 0% → 100% | 5d → none | HAL-C-ENV-WS-786 SS → HAL-C-B-A-620 | resources Electrician [80 h]; Construction Cost [76356.2] → Electrician [80 h]; Construction Cost [67472.1] |
| HAL-C-EX-E-420 | Installation of Sleeves for lighting poles | 2026-12-08 → 2026-09-05 A (-94d) | 2026-12-13 → 2026-09-08 A (-96d) |  | 0% → 100% | 5d → none |  | resources Electrician [80 h]; Construction Cost [19588.8] → Electrician [80 h]; Construction Cost [6588.03] |
| HAL-C-EX-E-470 | Installation of Earthing and Grounding | 2026-05-16 A → 2026-09-10 A (+117d) | 2026-12-14 → 2026-10-28 (-47d) |  | 90% → 50% | 38.2d → 0.5d | HAL-C-EX-E-380 → HAL-C-EX-E-460 | resources Electrician [80 h]; Construction Cost [19646.5] → Electrician [80 h]; Construction Cost [9726.29] |
| HAL-C-EX-E-480 | Installation of Street Lighting Feeder pillars & KWH meter | 2027-01-21 → 2026-09-10 A (-133d) | 2027-01-26 → 2026-11-02 (-85d) |  | 0% → 20% | 23.7d → 0.5d | Installation of Earthing and Grounding SS → HAL-C-EX-E-470 | resources Electrician [80 h]; Construction Cost [220842] → Electrician [80 h]; Construction Cost [105502] |
| HAL-C-EX-E-440 | Installation of Lighting poles | 2026-12-24 → 2026-09-24 A (-91d) | 2026-12-29 → 2026-10-12 A (-78d) | 5d → 7d | 0% → 100% | 5d → none | HAL-C-EX-E-450, HAL-P-ST-E-260 → HAL-C-EX-E-450, HAL-P-ST-E-260, HAL-C-TC-ENV-F-1051 | resources Mobile Crane [56 h]; Excavator [56 h]; Electrician [112 h]; Construction Cost [156710] → Mobile Crane [56 h]; Excavator [56 h]; Electrician [112 h]; Construction Cost [72468.9] |
| HAL-C-EX-E-380 | Installation of LV Cables | 2026-12-08 → 2026-10-01 A (-68d) | 2026-12-13 → 2026-10-12 A (-62d) | 4d → 7d | 0% → 100% | 38.2d → none | Installation of Telephone Cabinet → HAL-C-EX-E-430 | resources Electrician [64 h]; Construction Cost [36390] → Electrician [112 h]; Construction Cost [49118] |
| HAL-C-EX-E-430 | Installation of Lighting Fixture | 2026-12-30 → 2026-10-01 A (-90d) | 2027-01-04 → 2026-10-03 A (-93d) |  | 0% → 100% | 5d → none |  | resources Mobile Crane [40 h]; Electrician [80 h]; Construction Cost [39177.6] → Mobile Crane [40 h]; Electrician [80 h]; Construction Cost [26352.1] |
| 3 | **FENCES AND GATES** | 2027-01-05 → 2026-08-22 (-136d) | 2027-02-16 → 2026-11-02 (-106d) |  |  |  |  |  |
| HAL-C-EX-S-1374 | Excavation for Fence | 2027-01-05 → 2026-08-22 A (-136d) | 2027-01-06 → 2026-08-24 A (-135d) | 2d → 7d | 0% → 100% | 5d → none | HAL-C-EX-E-430 → HAL-C-EX-E-400 | resources General Labour [112 h]; Equipment Operator [112 h]; Truck [56 h]; Excavator [56 h]; Mini Roller Compactor [56 h]; Construction Cost [597.56] → General Labour [112 h]; Equipment Operator [112 h]; Truck [56 h]; Excavator [56 h]; Mini Roller Compactor [56 h]; Construction Cost [460.17] |
| HAL-C-EX-S-1274 | Lean Concrete Below Fence | 2027-01-12 → 2026-08-24 A (-141d) | 2027-01-16 → 2026-08-25 A (-144d) |  | 0% → 100% | 6d → none |  | resources Mason [64 h]; Construction Cost [597.56] → Mason [64 h]; Construction Cost [460.17] |
| HAL-C-EX-S-1354 | Vapour Barrier for Fence | 2027-01-07 → 2026-08-24 A (-136d) | 2027-01-11 → 2026-08-25 A (-139d) |  | 0% → 100% | 6d → none |  | resources General Labour [64 h]; Construction Cost [298.78] → General Labour [64 h]; Construction Cost [230.39] |
| HAL-C-EX-S-1314 | Formwork for Footings | 2026-04-06 A → 2026-08-25 A (+141d) | 2026-04-09 A → 2026-08-25 A (+138d) |  |  |  | HAL-C-EX-S-1304, Rebar for Footings → HAL-C-EX-S-1304 | resources Carperter [64 h]; Construction Cost [25461.2] → Carperter [64 h]; Construction Cost [460.17] |
| HAL-C-EX-S-1304 | Rebar for Footings | 2026-04-05 A → 2026-08-26 A (+143d) | 2026-04-09 A → 2026-08-26 A (+139d) | 4d → 7d |  |  | Lean Concrete Below Footings → HAL-C-EX-S-1274 | resources Steel Fixer [64 h]; Construction Cost [101845] → Steel Fixer [112 h]; Construction Cost [920.96] |
| HAL-C-EX-S-1284 | Pouring Concrete for Footings | 2026-04-11 A → 2026-08-27 A (+138d) | 2026-04-11 A → 2026-08-27 A (+138d) | 1d → 2d |  |  |  | resources Carperter [16 h]; Mason [16 h]; Steel Fixer [16 h]; Concrete Mixer [8 h]; Equipment Operator [16 h]; Construction Cost [127306] → Carperter [32 h]; Mason [32 h]; Steel Fixer [32 h]; Concrete Mixer [16 h]; Equipment Operator [32 h]; Construction Cost [1381.13] |
| HAL-C-EX-S-1344 | Damp proof /Bitumin paint on Footing Sides | 2027-02-01 → 2026-08-29 A (-156d) | 2027-02-02 → 2026-08-29 A (-157d) |  | 0% → 100% | 6d → none | Pouring Concrete for Footings → HAL-C-EX-S-1284 | resources Painter [32 h]; Construction Cost [298.78] → Painter [32 h]; Construction Cost [230.39] |
| HAL-C-EX-S-1364 | Backfilling / Compaction Around Footings | 2027-02-03 → 2026-08-30 A (-157d) | 2027-02-07 → 2026-08-31 A (-160d) | 4d → 7d | 0% → 100% | 6d → none |  | resources General Labour [112 h]; Truck [56 h]; Mini Roller Compactor [56 h]; Equipment Operator [112 h]; Wheel Loader [56 h]; Construction Cost [597.56] → General Labour [112 h]; Truck [56 h]; Mini Roller Compactor [56 h]; Equipment Operator [112 h]; Wheel Loader [56 h]; Construction Cost [460.17] |
| HAL-C-EX-S-1334 | Installation of base plate | 2027-02-08 → 2026-10-26 (-105d) | 2027-02-09 → 2026-10-27 (-105d) |  |  | 6d → 1d |  | resources Carperter [80 h]; Construction Cost [1195.12] → Carperter [80 h]; Construction Cost [920.96] |
| HAL-C-EX-S-1294 | Installation of steel fence | 2027-02-13 → 2026-10-28 (-108d) | 2027-02-14 → 2026-10-29 (-108d) |  |  | 6d → 1d | HAL-C-EX-S-1324 → HAL-C-EX-S-1324 SS | resources Mason [32 h]; Carperter [32 h]; Concrete Mixer [16 h]; Steel Fixer [32 h]; Equipment Operator [32 h]; Construction Cost [2390.24] → Mason [32 h]; Carperter [32 h]; Concrete Mixer [16 h]; Steel Fixer [32 h]; Equipment Operator [32 h]; Construction Cost [1841.3] |
| HAL-C-EX-S-1324 | Installation of steel members | 2027-02-10 → 2026-10-28 (-105d) | 2027-02-11 → 2026-11-02 (-101d) | 2d → 5d |  | 6d → 1d |  | resources Steel Fixer [112 h]; Construction Cost [2390.24] → Steel Fixer [112 h]; Construction Cost [1841.3] |
| HAL-C-EX-S-1384 | Installation of steel gates | 2027-02-15 → 2026-10-31 (-107d) | 2027-02-16 → 2026-11-01 (-107d) |  |  | 6d → 1d |  | resources Mason [32 h]; Carperter [32 h]; Concrete Mixer [16 h]; Steel Fixer [32 h]; Equipment Operator [32 h]; Construction Cost [2343.91] → Mason [32 h]; Carperter [32 h]; Concrete Mixer [16 h]; Steel Fixer [32 h]; Equipment Operator [32 h]; Construction Cost [2045.89] |
| 2 | **ROAD WORKS** | 2027-01-07 → 2026-07-25 (-166d) | 2027-02-15 → 2026-10-31 (-107d) |  |  |  |  |  |
| HAL-C-EX-R-1390 | SubGrade Preparation & Compaction | 2027-01-07 → 2026-07-25 A (-166d) | 2027-01-12 → 2026-09-09 A (-125d) | 5d → 7d | 0% → 100% | 5d → none | HAL-E-MT-EX-2050, HAL-C-EX-S-1374 → HAL-E-MT-EX-2050, HAL-C-EX-E-410 | resources General Labour [112 h]; Equipment Operator [112 h]; Motor Grader [56 h]; Roller Compactor [56 h]; Construction Cost [319796] → General Labour [112 h]; Equipment Operator [112 h]; Motor Grader [56 h]; Roller Compactor [56 h]; Construction Cost [156634] |
| HAL-C-EX-R-1400 | Aggregate Base Course Layer | 2027-01-13 → 2026-09-09 A (-126d) | 2027-01-18 → 2026-09-24 A (-116d) | 5d → 2d | 0% → 100% | 5d → none |  | resources General Labour [32 h]; Mini Roller Compactor [16 h]; Equipment Operator [32 h]; Construction Cost [262382] → General Labour [32 h]; Mini Roller Compactor [16 h]; Equipment Operator [32 h]; Construction Cost [134468] |
| HAL-C-EX-R-1460 | Curb Stones | 2027-01-19 → 2026-09-19 A (-122d) | 2027-01-23 → 2026-10-22 A (-93d) | 4d → 7d | 0% → 100% | 5d → none | HAL-E-SA-R-790, HAL-E-SA-R-800, HAL-E-SA-R-810, HAL-E-SA-R-820, HAL-E-SA-R-850, HAL-P-ST-EX-140, HAL-C-EX-R-1400 → HAL-E-SA-R-790, HAL-E-SA-R-800, HAL-E-SA-R-810, HAL-E-SA-R-820, HAL-E-SA-R-850, HAL-P-ST-EX-140, HAL-C-EX-R-1400 SS | resources Mason [224 h]; Construction Cost [291157] → Mason [224 h]; Construction Cost [131462] |
| HAL-C-EX-R-1480 | Interlock Tiles | 2027-01-24 → 2026-09-24 A (-122d) | 2027-01-26 → 2026-10-25 A (-93d) | 3d → 7d | 0% → 100% | 5d → none | HAL-C-EX-R-1460, HAL-P-ST-EX-130 → HAL-C-EX-R-1460 SS, HAL-P-ST-EX-130 | resources Mason [224 h]; Construction Cost [475634] → Mason [224 h]; Construction Cost [195148] |
| HAL-C-EX-R-1500 | Road Signs | 2027-02-01 → 2026-09-24 A (-130d) | 2027-02-03 → 2026-10-25 A (-101d) | 3d → 5d | 0% → 100% | 5d → none |  | resources Mason [80 h]; Construction Cost [103946] → Mason [80 h]; Construction Cost [50047] |
| HAL-C-EX-R-1410 | Asphalt Concrete Base Course Layer | 2027-02-06 → 2026-10-11 A (-118d) | 2027-02-07 → 2026-10-31 A (-99d) |  | 0% → 100% | 7d → none |  | resources General Labour [32 h]; Paver [16 h]; Equipment Operator [32 h]; Construction Cost [645372] → General Labour [32 h]; Paver [16 h]; Equipment Operator [32 h]; Construction Cost [313833] |
| HAL-C-EX-R-1450 | Prime Coat | 2027-02-04 → 2026-10-11 A (-116d) | 2027-02-04 → 2026-10-12 A (-115d) |  | 0% → 100% | 7d → none |  | resources General Labour [16 h]; Construction Cost [71708] → General Labour [16 h]; Construction Cost [34870.5] |
| HAL-C-EX-R-1470 | Tack Coat | 2027-02-08 → 2026-10-17 A (-114d) | 2027-02-08 → 2026-10-26 (-105d) |  | 0% → 90% | 7d → 4.7d |  | resources General Labour [16 h]; Construction Cost [52885.1] → General Labour [16 h]; Construction Cost [25698.4] |
| HAL-C-EX-R-1420 | Asphalt Concrete Wearing Course Layer | 2027-02-09 → 2026-10-18 A (-114d) | 2027-02-10 → 2026-10-26 (-107d) |  | 0% → 90% | 7d → 4.7d |  | resources General Labour [32 h]; Paver [16 h]; Equipment Operator [32 h]; Construction Cost [475966] → General Labour [32 h]; Paver [16 h]; Equipment Operator [32 h]; Construction Cost [231283] |
| HAL-C-EX-R-890 | Supply and install geotextile sheet | 2027-01-27 → 2026-10-22 A (-97d) | 2027-01-28 → 2026-10-22 A (-98d) |  | 0% → 100% | 5d → none | HAL-C-EX-R-1480 → HAL-C-EX-R-1480 SS | resources General Labour [32 h]; Construction Cost [47639] → General Labour [32 h]; Construction Cost [12773] |
| HAL-C-EX-R-1490 | Gravel Bedding | 2027-01-30 → 2026-10-24 A (-98d) | 2027-01-31 → 2026-10-25 A (-98d) |  | 0% → 100% | 5d → none | HAL-E-SA-R-880, HAL-E-SA-R-890, HAL-E-SA-R-910, HAL-P-ST-EX-150, HAL-C-EX-R-890 → HAL-E-SA-R-880, HAL-E-SA-R-890, HAL-E-SA-R-910, HAL-C-EX-R-890 | resources General Labour [32 h]; Mini Roller Compactor [24 h]; Truck [24 h]; Construction Cost [57375.4] → General Labour [32 h]; Mini Roller Compactor [16 h]; Truck [16 h]; Construction Cost [17666.6] |
| HAL-C-EX-R-1430 | Retroreflective Thermoplastic White Traffic lines | 2027-02-11 → 2026-10-26 (-108d) | 2027-02-13 → 2026-10-28 (-108d) |  |  | 7d → 4.7d |  | resources General Labour [32 h]; Construction Cost [37884.8] → General Labour [32 h]; Construction Cost [36190.2] |
| HAL-C-EX-R-1440 | Installation of Concrete wheel bumper | 2027-02-14 → 2026-10-26 (-111d) | 2027-02-15 → 2026-10-28 (-110d) |  |  | 7d → 4.7d | HAL-C-EX-R-1430, HAL-P-ST-EX-90 → HAL-C-EX-R-1430 SS, HAL-P-ST-EX-90 | resources Mason [64 h]; Construction Cost [32019.8] → Mason [64 h]; Construction Cost [14531.4] |
| 5 | **LANDSCAPING** | 2027-02-01 → 2026-10-26 (-98d) | 2027-02-14 → 2026-11-01 (-105d) |  |  |  |  |  |
| HAL-C-EX-R-1510 | Planting of trees | 2027-02-01 → 2026-10-26 (-98d) | 2027-02-06 → 2026-10-28 (-101d) | 5d → 3d |  | 8d → 1d | HAL-C-EX-R-1490, HAL-E-SA-R-900, HAL-E-SA-R-920, HAL-E-SA-R-950, HAL-E-SA-R-960 → HAL-C-EX-R-1490 SS, HAL-E-SA-R-900, HAL-E-SA-R-920, HAL-E-SA-R-950, HAL-E-SA-R-960 | resources General Labour [80 h]; Mini Roller Compactor [40 h]; Truck [40 h]; Construction Cost [110132] → General Labour [80 h]; Mini Roller Compactor [40 h]; Truck [40 h]; Construction Cost [22117.8] |
| HAL-C-EX-R-1520 | Planting of shrubs | 2027-02-07 → 2026-10-29 (-101d) | 2027-02-14 → 2026-11-01 (-105d) | 7d → 3d |  | 8d → 1d |  | resources General Labour [112 h]; Mini Roller Compactor [56 h]; Truck [56 h]; Construction Cost [53968] → General Labour [112 h]; Mini Roller Compactor [56 h]; Truck [56 h]; Construction Cost [25399.9] |
| 6 | **TESTING AND COMMISSIONING (10%)** | 2026-06-17 → 2026-04-25 (-53d) | 2027-02-24 → 2026-10-26 (-121d) |  |  |  |  |  |
| 3 | **TESTING AND COMMISSIONING 900 Sq.m-2** | 2026-06-28 → 2026-04-25 (-64d) | 2027-02-24 → 2026-10-26 (-121d) |  |  |  |  |  |
| 1 | **MECHANICAL** | 2026-06-10 → 2026-04-25 (-46d) | 2026-12-06 → 2026-10-25 (-42d) |  |  |  |  |  |
| HAL-C-TC-M-3406 | Testing & Commissioning of Sewer & Drainage Pipes | 2026-06-28 A → 2026-04-25 A (-64d) | 2026-10-08 A → 2026-09-24 A (-14d) |  |  |  | HAL-C-B-M-510, HAL-C-C-M-1130, HAL-C-A-M-820, HAL-C-D-M-820, HAL-C-E-M-200, Installation of Sanitary Waste / Drainage Pipes → HAL-C-B-M-510, HAL-C-C-M-1130, HAL-C-A-M-820, HAL-C-D-M-820, HAL-C-E-M-200 | resources Plumber [112 h]; Construction Cost [63346.6] → Plumber [112 h]; Construction Cost [12987] |
| HAL-C-TC-M-3436 | Testing and Commissioning of HVAC Duct | 2027-01-27 → 2026-07-21 A (-190d) | 2027-02-03 → 2026-09-24 A (-132d) | 7d → 2d | 0% → 100% | 9d → none | HAL-C-B-M-450, HAL-C-C-M-1070, HAL-C-A-M-760, HAL-C-D-M-760, HAL-C-E-M-140 → HAL-C-B-M-450, HAL-C-C-M-1070, HAL-C-A-M-760, HAL-C-D-M-760, HAL-C-E-M-140, HAL-C-TC-M-3416 | resources AC Technician [112 h]; Construction Cost [245430] → AC Technician [112 h]; Construction Cost [127935] |
| HAL-C-TC-M-3376 | Testing and Commissioning of Fire Fighting Pipes | 2027-01-18 → 2026-09-08 A (-132d) | 2027-01-25 → 2026-10-25 A (-92d) |  | 0% → 100% | 22.7d → none |  | resources Pipe Fitter [112 h]; Construction Cost [118857] → Pipe Fitter [112 h]; Construction Cost [54639.9] |
| HAL-C-TC-M-3396 | Testing & Commissioning of Water Supply Pipes | 2027-01-18 → 2026-09-08 A (-132d) | 2027-01-25 → 2026-09-24 A (-123d) |  | 0% → 100% | 19.7d → none |  | resources Plumber [112 h]; Construction Cost [38284] → Plumber [112 h]; Construction Cost [17651.2] |
| HAL-C-TC-M-3416 | Testing and Commissioning of Electric Water Heater | 2026-10-19 A → 2026-09-15 A (-34d) | 2026-12-13 → 2026-10-25 A (-49d) |  | 90% → 100% | 50d → none |  | resources Plumber [1440 h]; Construction Cost [2987.25] → Plumber [112 h]; Construction Cost [1440] |
| HAL-C-TC-M-3456 | Testing and Commissioning of Wall propeller type exhaust fans | 2027-01-25 → 2026-09-15 A (-132d) | 2027-02-01 → 2026-10-25 A (-99d) |  | 0% → 100% | 11d → none |  | resources AC Technician [112 h]; Construction Cost [76887.8] → AC Technician [112 h]; Construction Cost [15750] |
| HAL-C-TC-M3446 | Testing and Commissioning of Exhaust Fan | 2027-01-20 → 2026-09-15 A (-127d) | 2027-01-27 → 2026-10-25 A (-94d) |  | 0% → 100% | 15d → none |  | resources AC Technician [112 h]; Construction Cost [13737.5] → AC Technician [112 h]; Construction Cost [8437.5] |
| HAL-C-TC-M-3386 | Testing and Commissioning of Fire Hose Cabinet | 2027-02-20 → 2026-09-24 A (-149d) | 2027-02-23 → 2026-10-25 A (-121d) |  | 0% → 100% | 0d → none | HAL-C-B-M-630, HAL-C-C-M-1250, HAL-C-A-M-940, HAL-C-D-M-940, HAL-C-E-M-320, Installation of Fire Hose Cabinet, Installation of Fire Hose Cabinet, Installation of Fire Hose Cabinet, Installation of Fire Hose Cabinet, Installation of Fire Hose Cabinet, Installation of Fire Hose Cabinet → HAL-C-B-M-630, HAL-C-C-M-1250, HAL-C-A-M-940, HAL-C-D-M-940, HAL-C-E-M-320 | resources Pipe Fitter [720 h]; Construction Cost [24887.2] → Pipe Fitter [112 h]; Construction Cost [10080] |

| ID | Task | Start | Finish | Duration | Complete | Total float | Predecessors | Other |
| --- | --- | --- | --- | --- | --- | --- | --- | --- |
| HAL-C-TC-M-3426 | Testing and Commissioning of Sanitary Fixtures | 2026-12-17 → 2026-09-24 A (-84d) | 2026-12-24 → 2026-10-25 A (-60d) |  | 0% → 100% | 44.7d → none | HAL-C-B-M-500, HAL-C-C-M-1120, HAL-C-A-M-810, HAL-C-D-M-810, HAL-C-E-M-190 → HAL-C-B-M-500, HAL-C-C-M-1120, HAL-C-A-M-810, HAL-C-D-M-810, HAL-C-E-M-190, HAL-C-TC-M-3416 SS | resources Plumber [112 h]; Construction Cost [32707.3] → Plumber [112 h]; Construction Cost [14688] |
| 2 | **ELECTRICAL** | 2026-05-16 → 2026-09-15 (+122d) | 2026-12-22 → 2026-10-26 (-57d) |  |  |  |  |  |
| HAL-C-TC-E-3556 | Testing and Commissioning of Solar power plant | 2027-02-15 → 2026-09-15 A (-153d) | 2027-02-17 → 2026-10-25 A (-115d) | 2d → 1d | 0% → 100% | 5.6d → none | HAL-C-B-E-730, HAL-C-C-E-1350, HAL-C-A-E-1040, HAL-C-D-E-1040, HAL-C-E-E-420, Installation of Solar power plant → HAL-C-B-E-730, HAL-C-C-E-1350, HAL-C-A-E-1040 SS, HAL-C-D-E-1040 SS, HAL-C-E-E-420 SS | resources Electrician [720 h]; Construction Cost [415814] → Electrician [32 h]; Construction Cost [198000] |
| HAL-C-TC-E-3476 | Testing and Commissioning of Lighting Fixtures | 2027-02-24 → 2026-10-01 A (-146d) | 2027-02-24 → 2026-10-25 A (-122d) |  | 0% → 100% | 0d → none | HAL-C-TC-E-3496, HAL-C-TC-E-3466, HAL-C-TC-E-3506, HAL-C-TC-M-3396, HAL-C-TC-M-3386, HAL-C-B-E-383, HAL-C-C-E-843, HAL-C-A-E-613, HAL-C-D-E-613, HAL-C-E-E-153, HAL-C-EX-E-196, Installation of Lighting fixtures, Installation of Lighting fixtures, Installation of Lighting fixtures, Installation of Lighting fixtures, Installation of Lighting fixtures → HAL-C-B-E-383, HAL-C-C-E-843, HAL-C-A-E-613 SS, HAL-C-D-E-613 SS, HAL-C-E-E-153 | resources Electrician [16 h]; Construction Cost [171257] → Electrician [16 h]; Construction Cost [64836] |
| HAL-C-TC-E-3446 | Testing and Commissioning of LV cables | 2027-02-14 → 2026-10-08 A (-129d) | 2027-02-15 → 2026-10-25 A (-113d) | 2d → 1d | 0% → 100% | 6.7d → none | HAL-C-B-E-453, HAL-C-C-E-913, HAL-C-A-E-683, HAL-C-D-E-683, HAL-C-E-E-223, HAL-C-TC-M-3436 → HAL-C-B-E-453, HAL-C-C-E-913, HAL-C-A-E-683 SS, HAL-C-D-E-683 SS, HAL-C-E-E-223 | resources Electrician [32 h]; Construction Cost [149517] → Electrician [32 h]; Construction Cost [28530] |
| HAL-C-TC-E-3456 | Testing and Commissioning of Main Distribution Board | 2027-02-11 → 2026-10-08 A (-126d) | 2027-02-14 → 2026-10-25 A (-112d) | 3d → 2d | 0% → 100% | 5.7d → none | HAL-C-B-E-423, HAL-C-C-E-883, HAL-C-A-E-653, HAL-C-D-E-653, HAL-C-E-E-193, HAL-C-TC-E-3496, HAL-C-TC-E-3506, HAL-C-TC-M-3396, HAL-C-TC-M3446, Installation of Lighting fixtures, Installation of Lighting fixtures, HAL-C-C-E-993, HAL-C-C-E-1340, HAL-C-C-E-913, HAL-C-C-E-803 → HAL-C-B-E-423, HAL-C-C-E-883, HAL-C-A-E-653 SS, HAL-C-D-E-653, HAL-C-E-E-193, HAL-C-TC-M-3376, HAL-C-TC-M-3396, HAL-C-TC-M3446 SS | resources Electrician [112 h]; Construction Cost [53313.4] → Electrician [112 h]; Construction Cost [23040] |
| HAL-C-TC-E-3466 | Testing and Commissioning of Disconnect Switches | 2027-02-04 → 2026-10-08 A (-119d) | 2027-02-11 → 2026-10-25 A (-109d) | 7d → 1d | 0% → 100% | 9d → none | HAL-C-TC-M-3436, HAL-C-TC-M-3456, HAL-C-TC-M3446, HAL-C-B-E-433, HAL-C-C-E-893, HAL-C-A-E-663, HAL-C-D-E-663, HAL-C-E-E-203, Installation of Disconnect Switches, Installation of Disconnect Switches, Installation of Disconnect Switches, Installation of Disconnect Switches, Installation of Disconnect Switches, Installation of Disconnect Switches → HAL-C-TC-M-3436, HAL-C-TC-M-3456 SS, HAL-C-B-E-433, HAL-C-C-E-893, HAL-C-A-E-663, HAL-C-D-E-663, HAL-C-E-E-203 | resources Electrician [720 h]; Construction Cost [50288] → Electrician [112 h]; Construction Cost [23337] |
| HAL-C-TC-E-3486 | Testing and Commissioning of Grounding | 2027-02-09 → 2026-10-08 A (-124d) | 2027-02-11 → 2026-10-25 A (-109d) | 2d → 1d | 0% → 100% | 10.3d → none | HAL-C-B-E-343, HAL-C-C-E-803, HAL-C-A-E-573, HAL-C-D-E-573, HAL-C-E-E-113, HAL-C-EX-E-186, HAL-C-EX-E-470, Installation of Earthing and Grounding, Installation of Earthing and Grounding, Installation of Earthing and Grounding, Installation of Earthing and Grounding → HAL-C-B-E-343 SS, HAL-C-C-E-803 SS, HAL-C-A-E-573 SS, HAL-C-D-E-573 SS, HAL-C-E-E-113 SS | resources Electrician [32 h]; Construction Cost [32570.6] → Electrician [32 h]; Construction Cost [15374.2] |
| HAL-C-TC-E-3496 | Testing and Commissioning of Fire Alarm System | 2027-02-01 → 2026-10-08 A (-116d) | 2027-02-02 → 2026-10-25 A (-100d) |  | 0% → 100% | 12.7d → none | HAL-C-TC-M-3426, HAL-C-TC-M-3416, HAL-C-B-E-353, HAL-C-C-E-813, HAL-C-A-E-583, HAL-C-D-E-583, HAL-C-E-E-123 → HAL-C-TC-M-3426, HAL-C-TC-M-3416, HAL-C-B-E-353, HAL-C-C-E-813, HAL-C-A-E-583 SS, HAL-C-D-E-583, HAL-C-E-E-123 | resources Electrician [32 h]; Construction Cost [139734] → Electrician [32 h]; Construction Cost [16497] |
| HAL-C-TC-E-3506 | Testing and Commissioning of Wiring Devices | 2027-01-23 → 2026-10-08 A (-107d) | 2027-01-30 → 2026-10-25 A (-97d) | 7d → 4d | 0% → 100% | 15.7d → none | HAL-C-B-E-403, HAL-C-C-E-863, HAL-C-A-E-633, HAL-C-D-E-633, HAL-C-E-E-173, HAL-C-TC-M-3416, Installation of Telephone Cabinet → HAL-C-B-E-403, HAL-C-C-E-863, HAL-C-A-E-633, HAL-C-D-E-633, HAL-C-E-E-173, HAL-C-E-E-203 | resources Electrician [112 h]; Construction Cost [33207.2] → Electrician [112 h]; Construction Cost [18756] |
| HAL-C-TC-E-3516 | Testing and Commissioning of LP panel board | 2027-02-15 → 2026-10-08 A (-130d) | 2027-02-16 → 2026-10-25 A (-114d) | 2d → 1d | 0% → 100% | 5.7d → none | HAL-C-TC-E-3456, HAL-C-B-E-473, HAL-C-C-E-933, HAL-C-A-E-703, HAL-C-D-E-703, HAL-C-E-E-243 → HAL-C-TC-E-3456 SS, HAL-C-B-E-473, HAL-C-C-E-933, HAL-C-A-E-703, HAL-C-D-E-703 SS, HAL-C-E-E-243 | resources Electrician [32 h]; Construction Cost [30214.8] → Electrician [32 h]; Construction Cost [13680] |
| HAL-C-TC-E-3526 | Testing and Commissioning of PP-AC panel | 2027-02-14 → 2026-10-08 A (-129d) | 2027-02-15 → 2026-10-25 A (-113d) | 2d → 1d | 0% → 100% | 6.7d → none | HAL-C-B-E-483, HAL-C-C-E-943, HAL-C-A-E-713, HAL-C-D-E-713, HAL-C-E-E-253, HAL-C-TC-M-3376, HAL-C-TC-M-3456 → HAL-C-B-E-483, HAL-C-C-E-943, HAL-C-A-E-713, HAL-C-D-E-713 SS, HAL-C-E-E-253 | resources Electrician [80 h]; Construction Cost [35542.3] → Electrician [80 h]; Construction Cost [16470] |
| HAL-C-TC-E-3536 | Testing and Commissioning of Telephone and data system | 2027-02-16 → 2026-10-08 A (-131d) | 2027-02-17 → 2026-10-25 A (-115d) | 2d → 1d | 0% → 100% | 4.7d → none | HAL-C-B-E-443, HAL-C-C-E-903, HAL-C-A-E-673, HAL-C-D-E-673, HAL-C-E-E-213, HAL-C-TC-E-3546, HAL-C-ENV-WS-826, Firewarning flash light with sounder; wall mounted, Weather proof, HAL-C-D-E-763, HAL-C-D-E-613 → HAL-C-B-E-443, HAL-C-C-E-903, HAL-C-A-E-673, HAL-C-D-E-673 SS, HAL-C-E-E-213 | resources Electrician [80 h]; Construction Cost [44313.7] → Electrician [80 h]; Construction Cost [21069] |
| HAL-C-TC-E-3546 | Testing and Commissioning of Access Control System | 2027-02-09 → 2026-10-08 A (-124d) | 2027-02-10 → 2026-10-26 (-107d) |  | 0% → 90% | 8.7d → 6.8d | HAL-C-B-E-503, HAL-C-C-E-963, HAL-C-A-E-733, HAL-C-D-E-733, HAL-C-E-E-273 → HAL-C-B-E-503 SS, HAL-C-C-E-963 SS, HAL-C-A-E-733 SS, HAL-C-D-E-733 SS, HAL-C-E-E-273 SS | resources Electrician [32 h]; Construction Cost [45341.1] → Electrician [32 h]; Construction Cost [21987] |
| HAL-C-TC-E-3566 | Testing and Commissioning of CCTV System | 2027-02-15 → 2026-10-08 A (-130d) | 2027-02-16 → 2026-10-25 A (-114d) | 2d → 1d | 0% → 100% | 5.7d → none | HAL-C-B-E-720, HAL-C-C-E-1340, HAL-C-A-E-1030, HAL-C-D-E-1030, HAL-C-E-E-410 → HAL-C-B-E-720, HAL-C-C-E-1340, HAL-C-A-E-1030 SS, HAL-C-D-E-1030 SS, HAL-C-E-E-410 | resources Electrician [32 h]; Construction Cost [125349] → Electrician [32 h]; Construction Cost [59841] |
| 4 | **TESTING AND COMMISSIONING SITE INFRASTRUCTURE** | 2026-10-13 → 2026-06-22 (-113d) | 2027-02-18 → 2026-10-26 (-115d) |  |  |  |  |  |
| 6 | **PUMP ROOM SHED** | 2026-12-01 → 2026-07-22 (-132d) | 2026-12-22 → 2026-10-26 (-57d) |  |  |  |  |  |
| HAL-C-TC-M-3596 | Testing & Commissioning of GRP tank | 2026-12-01 → 2026-07-22 A (-132d) | 2026-12-03 → 2026-07-23 A (-133d) |  | 0% → 100% | 70d → none |  | resources Plumber [360 h]; General Labour [360 h]; Construction Cost [104927] → Plumber [48 h]; General Labour [48 h]; Construction Cost [61200] |
| HAL-C-TC-M-3576 | Testing & Commissioning of Fire Fighting pump | 2026-12-01 → 2026-09-15 A (-77d) | 2026-12-06 → 2026-10-26 (-41d) | 5d → 2d | 0% → 90% | 68d → 6.8d | HAL-C-EX-M-1301 → HAL-C-EX-M-1301, HAL-C-TC-E-3496 SS | resources Pipe Fitter [80 h]; General Labour [80 h]; Construction Cost [51684.5] → Pipe Fitter [80 h]; General Labour [80 h]; Construction Cost [54000] |
| HAL-C-TC-M-3586 | Testing & Commissioning of Booster pump | 2026-12-01 → 2026-09-15 A (-77d) | 2026-12-08 → 2026-10-26 (-43d) | 7d → 2d | 0% → 90% | 66d → 6.8d | HAL-C-EX-M-1341 → HAL-C-EX-M-1341, HAL-C-TC-M-3426 | resources Pipe Fitter [360 h]; General Labour [360 h]; Construction Cost [6462.23] → Pipe Fitter [112 h]; General Labour [112 h]; Construction Cost [6300] |
| HAL-C-TC-E-3616 | Testing and Commissioning of Panel Board | 2026-12-03 → 2026-10-12 A (-52d) | 2026-12-05 → 2026-10-25 A (-41d) | 2d → 1d | 0% → 100% | 69d → none |  | resources Electrician [32 h]; Construction Cost [36675.7] → Electrician [32 h]; Construction Cost [936] |
| HAL-C-TC-E-3621 | Testing and Commissioning of LV cables | 2026-12-15 → 2026-10-12 A (-64d) | 2026-12-17 → 2026-10-25 A (-53d) | 3d → 2d | 0% → 100% | 58d → none | Installation of LV Cables → HAL-C-EX-E-216 SS | resources Electrician [80 h]; Construction Cost [76378.1] → Electrician [80 h]; Construction Cost [412.65] |
| HAL-C-TC-E-3626 | Testing and Commissioning of Lighting Fixtures | 2026-12-16 → 2026-10-12 A (-65d) | 2026-12-17 → 2026-10-25 A (-53d) |  | 0% → 100% | 58d → none | Installation of Lighting fixtures → HAL-C-EX-E-196 SS | resources Electrician [32 h]; Construction Cost [1429.61] → Electrician [32 h]; Construction Cost [1152.45] |
| HAL-C-TC-E-3636 | Testing and Commissioning of Grounding | 2026-12-07 → 2026-10-12 A (-56d) | 2026-12-12 → 2026-10-25 A (-48d) |  | 0% → 100% | 63d → none | Installation of Earthing and Grounding → HAL-C-EX-E-186 | resources Electrician [80 h]; Construction Cost [208.86] → Electrician [80 h]; Construction Cost [220.5] |
| HAL-C-TC-E-3646 | Testing and Commissioning of Wiring devices | 2026-12-09 → 2026-10-12 A (-58d) | 2026-12-10 → 2026-10-25 A (-46d) |  | 0% → 100% | 64d → none | HAL-C-EX-E-1321 → HAL-C-EX-E-1321 SS | resources Electrician [32 h]; Construction Cost [193.73] → Electrician [32 h]; Construction Cost [692.1] |
| HAL-C-TC-E-3656 | Testing and Commissioning of Programmable Logic Controller | 2026-12-21 → 2026-10-12 A (-70d) | 2026-12-22 → 2026-10-25 A (-58d) |  | 0% → 100% | 54d → none | HAL-C-EX-E-1331 → HAL-C-EX-E-1331 SS | resources Electrician [64 h]; Construction Cost [28288.3] → Electrician [32 h]; Construction Cost [28800] |
| 7 | **EXTERNAL** | 2027-01-05 → 2026-10-15 (-82d) | 2027-02-03 → 2026-10-25 (-101d) |  |  |  |  |  |
| HAL-C-TC-EX-E-3626 | Testing and Commissioning of LV cables | 2027-01-13 → 2026-10-15 A (-90d) | 2027-01-20 → 2026-10-25 A (-87d) |  | 0% → 100% | 19d → none | Installation of LV Cables → HAL-C-EX-E-380 | resources Electrician [112 h]; Construction Cost [14763.4] → Electrician [112 h]; Construction Cost [8883] |
| HAL-C-TC-EX-E-3646 | Testing and Commissioning of Street Lighting pole | 2027-01-05 → 2026-10-15 A (-82d) | 2027-01-21 → 2026-10-25 A (-88d) | 15d → 7d | 0% → 100% | 18d → none | HAL-C-EX-E-430, Installation of Lighting fixtures → HAL-C-EX-E-430 | resources Electrician [240 h]; Construction Cost [35084.4] → Electrician [240 h]; Construction Cost [21446.1] |
| HAL-C-TC-EX-E-3656 | Testing and Commissioning of Grounding | 2027-01-27 → 2026-10-20 A (-99d) | 2027-02-03 → 2026-10-25 A (-101d) |  | 0% → 100% | 17d → none | Installation of Earthing and Grounding → HAL-C-EX-E-470 | resources Electrician [112 h]; Construction Cost [2931.87] → Electrician [112 h]; Construction Cost [1759.05] |
| 5 | **ENVIRONMENTAL** | 2026-10-13 → 2026-06-22 (-113d) | 2027-02-18 → 2026-10-25 (-116d) |  |  |  |  |  |
| HAL-C-TC-ENV-F-1051 | Testing & Commissioning of External Fire Fighting System 200 Dia | 2026-10-13 A → 2026-06-22 A (-113d) | 2026-11-23 → 2026-09-24 A (-60d) |  | 90% → 100% | 43.1d → none |  | resources Pipe Fitter [1440 h]; Construction Cost [72486.4] → Pipe Fitter [240 h]; Construction Cost [24300.9] |
| HAL-C-TC-ENV-SW-60 | Testing & Commissioning of Sewer & Drainage System | 2026-10-13 A → 2026-06-22 A (-113d) | 2027-02-18 → 2026-09-24 A (-147d) | 3d → 15d | 90% → 100% | 4.7d → none | UPVC pipe service connection, HAL-C-TC-E-3566, HAL-C-TC-E-3516, HAL-C-TC-E-3486, HAL-C-TC-E-3536, HAL-C-TC-E-3446, HAL-C-TC-E-3526, HAL-C-EX-E-480, Firewarning flash light with sounder; wall mounted, Weather proof, Firewarning flash light with sounder; wall mounted, Weather proof → HAL-C-ENV-SW-546 | resources Plumber [720 h]; Construction Cost [67394.2] → Plumber [240 h]; Construction Cost [19571.4] |
| HAL-C-TC-ENV-WS-11 | Testing & Commissioning of Water Supply System | 2026-10-19 A → 2026-06-22 A (-119d) | 2026-12-08 → 2026-09-24 A (-75d) |  | 90% → 100% | 44.6d → none |  | resources Plumber [1440 h]; Construction Cost [5327.52] → Plumber [240 h]; Construction Cost [13644] |
| HAL-C-TC-E-3666 | Testing and Commissioning of Main program system & controller | 2027-01-26 → 2026-09-15 A (-133d) | 2027-02-06 → 2026-10-25 A (-104d) | 10d → 5d | 0% → 100% | 15d → none | HAL-C-ENV-SW-616, HAL-C-TC-EX-E-3626, HAL-C-TC-EX-E-3646 → HAL-C-ENV-SW-616 SS | resources Electrician [240 h]; Construction Cost [14943] → Electrician [240 h]; Construction Cost [14400] |
| HAL-C-TC-ENV-SW-70 | Testing & Commissioning of Irrigaiton System | 2027-01-18 → 2026-09-15 A (-125d) | 2027-02-03 → 2026-10-25 A (-101d) | 15d → 5d | 0% → 100% | 17d → none |  | resources Plumber [240 h]; Construction Cost [11300.4] → Plumber [80 h]; Construction Cost [558] |
| 1 | **SNAGG WORKS** | 2026-06-17 → 2026-04-25 (-53d) | 2026-10-21 → 2026-06-20 (-123d) |  |  |  |  |  |
| HAL-C-TC-A-9100 | Mechanical Snagg works | 2026-07-05 A → 2026-06-01 A (-34d) | 2026-07-06 A → 2026-06-04 A (-32d) | 5d → 10d |  |  | HAL-C-D-A-210 → HAL-C-EX-E-400 | resources Construction Cost [1206604] → Construction Cost [340975] |
| HAL-C-TC-M-9110 | Electrical Snagg works | 2026-07-05 A → 2026-06-13 A (-22d) | 2026-10-21 → 2026-06-20 A (-123d) |  | 75% → 100% | 68.05d → none | HAL-C-TC-E-9120 → HAL-C-EX-E-400 | resources Construction Cost [167105] → Construction Cost [199158] |
| HAL-C-TC-E-9120 | External Snagg works | 2026-06-22 A → 2026-06-17 A (-5d) | 2026-07-05 A → 2026-06-20 A (-15d) |  |  |  | HAL-C-D-A-1440 → HAL-C-EX-E-390 | resources Construction Cost [3231301] → Construction Cost [173196] |
| 7 | **PREOJECT CLOSEOUT** | 2027-02-01 → 2026-10-26 (-98d) | 2027-03-02 → 2026-11-04 (-118d) |  |  |  |  |  |
| 1 | **ENGINEERING** | 2027-02-01 → 2026-10-26 (-98d) | 2027-02-09 → 2026-10-28 (-104d) |  |  |  |  |  |
| 1 | **AS BUILT DRAWINGS** | 2027-02-01 → 2026-10-26 (-98d) | 2027-02-07 → 2026-10-27 (-103d) |  |  |  |  |  |
| 4 | **CIVIL DRAWINGS** | 2027-02-01 → 2026-10-26 (-98d) | 2027-02-02 → 2026-10-26 (-99d) |  |  |  |  |  |
| 1 | **PREPARATION AND SUBMITTALS** | 2027-02-01 → 2026-10-26 (-98d) | 2027-02-02 → 2026-10-26 (-99d) |  |  |  |  |  |
| HAL-AB-1010 | Civil drawings | 2027-02-01 → 2026-10-26 (-98d) | 2027-02-02 → 2026-10-26 (-99d) | 2d → 1d |  | 5d → 0d | HAL-C-EX-R-1500 SS → HAL-C-EX-R-1480 SS |  |
| 2 | **REVIEW AND APPROVALS** | 2027-02-01 → 2026-10-26 (-98d) | 2027-02-02 → 2026-10-26 (-99d) |  |  |  |  |  |
| HAL-AB-1053 | Civil drawings | 2027-02-01 → 2026-10-26 (-98d) | 2027-02-02 → 2026-10-26 (-99d) | 2d → 1d |  | 14d → 2d |  |  |
| 1 | **ARCHITECTURAL DRAWINGS** | 2027-02-03 → 2026-10-26 (-100d) | 2027-02-07 → 2026-10-26 (-104d) |  |  |  |  |  |
| 1 | **PREPARATION AND SUBMITTALS** | 2027-02-03 → 2026-10-26 (-100d) | 2027-02-04 → 2026-10-26 (-101d) |  |  |  |  |  |
| HAL-AB-1011 | Architectural drawings | 2027-02-03 → 2026-10-26 (-100d) | 2027-02-04 → 2026-10-26 (-101d) | 2d → 1d |  | 5d → 0d | HAL-AB-1010 → HAL-AB-1010 SS |  |
| 2 | **REVIEW AND APPROVALS** | 2027-02-06 → 2026-10-26 (-103d) | 2027-02-07 → 2026-10-26 (-104d) |  |  |  |  |  |
| HAL-AB-1023 | Architectural drawings | 2027-02-06 → 2026-10-26 (-103d) | 2027-02-07 → 2026-10-26 (-104d) | 2d → 1d |  | 10d → 2d | HAL-AB-1011 → HAL-AB-1011 SS |  |
| 2 | **MECHANICAL DRAWINGS** | 2027-02-03 → 2026-10-26 (-100d) | 2027-02-07 → 2026-10-26 (-104d) |  |  |  |  |  |
| 1 | **PREPARATION AND SUBMITTALS** | 2027-02-03 → 2026-10-26 (-100d) | 2027-02-04 → 2026-10-26 (-101d) |  |  |  |  |  |
| HAL-AB-1013 | Mechanical drawings | 2027-02-03 → 2026-10-26 (-100d) | 2027-02-04 → 2026-10-26 (-101d) | 2d → 1d |  | 5d → 0d |  |  |
| 2 | **REVIEW AND APPROVALS** | 2027-02-06 → 2026-10-26 (-103d) | 2027-02-07 → 2026-10-26 (-104d) |  |  |  |  |  |
| HAL-AB-1033 | Mechanical drawings | 2027-02-06 → 2026-10-26 (-103d) | 2027-02-07 → 2026-10-26 (-104d) | 2d → 1d |  | 10d → 2d | HAL-AB-1013 → HAL-AB-1013 SS |  |
| 3 | **ELECTRICAL DRAWINGS** | 2027-02-03 → 2026-10-26 (-100d) | 2027-02-07 → 2026-10-26 (-104d) |  |  |  |  |  |
| 1 | **PREPARATION AND SUBMITTALS** | 2027-02-03 → 2026-10-26 (-100d) | 2027-02-04 → 2026-10-26 (-101d) |  |  |  |  |  |
| HAL-AB-1012 | Electrical drawings | 2027-02-03 → 2026-10-26 (-100d) | 2027-02-04 → 2026-10-26 (-101d) | 2d → 1d |  | 5d → 0d |  |  |
| 2 | **REVIEW AND APPROVALS** | 2027-02-06 → 2026-10-26 (-103d) | 2027-02-07 → 2026-10-26 (-104d) |  |  |  |  |  |
| HAL-AB-1043 | Electrical drawings | 2027-02-06 → 2026-10-26 (-103d) | 2027-02-07 → 2026-10-26 (-104d) | 2d → 1d |  | 10d → 2d | HAL-AB-1012 → HAL-AB-1012 SS |  |
| 5 | **EXTERNAL WORKS DRAWINGS** | 2027-02-03 → 2026-10-26 (-100d) | 2027-02-07 → 2026-10-27 (-103d) |  |  |  |  |  |
| 1 | **PREPARATION AND SUBMITTALS** | 2027-02-03 → 2026-10-26 (-100d) | 2027-02-04 → 2026-10-26 (-101d) |  |  |  |  |  |
| HAL-AB-1054 | External works drawings | 2027-02-03 → 2026-10-26 (-100d) | 2027-02-04 → 2026-10-26 (-101d) | 2d → 1d |  | 5d → 0d |  |  |
| 2 | **REVIEW AND APPROVALS** | 2027-02-06 → 2026-10-27 (-102d) | 2027-02-07 → 2026-10-27 (-103d) |  |  |  |  |  |
| HAL-AB-1055 | External works drawings | 2027-02-06 → 2026-10-27 (-102d) | 2027-02-07 → 2026-10-27 (-103d) | 2d → 1d |  | 5d → 0d |  |  |
| 2 | **WARRANTIES AND GUARANTEES** | 2027-02-06 → 2026-10-27 (-102d) | 2027-02-09 → 2026-10-28 (-104d) |  |  |  |  |  |
| 1 | **SYSTEM** | 2027-02-06 → 2026-10-27 (-102d) | 2027-02-09 → 2026-10-28 (-104d) |  |  |  |  |  |

| ID | Task | Start | Finish | Duration | Total float | Predecessors |
| --- | --- | --- | --- | --- | --- | --- |
| 1 | **PREPARATION AND SUBMITTALS** | 2027-02-06 → 2026-10-27 (-102d) | 2027-02-07 → 2026-10-27 (-103d) |  |  |  |
| HAL-WG-1010 | Warraties and Guarantees For Mechanical Equipments | 2027-02-06 → 2026-10-27 (-102d) | 2027-02-07 → 2026-10-27 (-103d) | 2d → 1d | 5d → 0d |  |
| HAL-WG-1011 | Warraties and Guarantees For Electrical Systems | 2027-02-06 → 2026-10-27 (-102d) | 2027-02-07 → 2026-10-27 (-103d) | 2d → 1d | 5d → 0d |  |
| 2 | **REVIEW AND APPROVAL** | 2027-02-08 → 2026-10-28 (-103d) | 2027-02-09 → 2026-10-28 (-104d) |  |  |  |
| HAL-WG-1012 | Warraties and Guarantees For Mechanical Equipments | 2027-02-08 → 2026-10-28 (-103d) | 2027-02-09 → 2026-10-28 (-104d) | 2d → 1d | 5d → 0d |  |
| HAL-WG-1013 | Warraties and Guarantees For Electrical Systems | 2027-02-08 → 2026-10-28 (-103d) | 2027-02-09 → 2026-10-28 (-104d) | 2d → 1d | 5d → 0d |  |
| 2 | **TRAINING AND MANUALS** | 2027-02-10 → 2026-10-29 (-104d) | 2027-02-21 → 2026-11-03 (-110d) |  |  |  |
| 1 | **TRAINING** | 2027-02-10 → 2026-10-29 (-104d) | 2027-02-16 → 2026-11-01 (-107d) |  |  |  |
| 1 | **SYSTEM** | 2027-02-10 → 2026-10-29 (-104d) | 2027-02-16 → 2026-11-01 (-107d) |  |  |  |
| 1 | **PREPARATION AND SUBMITTALS** | 2027-02-10 → 2026-10-29 (-104d) | 2027-02-11 → 2026-10-29 (-105d) |  |  |  |
| HAL-WG-1014 | The Proposed Coursework For Mechanical Equipment | 2027-02-10 → 2026-10-29 (-104d) | 2027-02-11 → 2026-10-29 (-105d) | 2d → 1d | 5d → 0d |  |
| HAL-WG-1015 | The Proposed Coursework For Electircal systems | 2027-02-10 → 2026-10-29 (-104d) | 2027-02-11 → 2026-10-29 (-105d) | 2d → 1d | 5d → 0d |  |
| 2 | **REVIEW AND APPROVAL** | 2027-02-13 → 2026-10-31 (-105d) | 2027-02-14 → 2026-10-31 (-106d) |  |  |  |
| HAL-WG-1016 | The Proposed Coursework For Mechanical Equipment | 2027-02-13 → 2026-10-31 (-105d) | 2027-02-14 → 2026-10-31 (-106d) | 2d → 1d | 5d → 0d |  |
| HAL-WG-1017 | The Proposed Coursework For Electircal systems | 2027-02-13 → 2026-10-31 (-105d) | 2027-02-14 → 2026-10-31 (-106d) | 2d → 1d | 5d → 0d |  |
| 3 | **DELIVERY** | 2027-02-15 → 2026-11-01 (-106d) | 2027-02-16 → 2026-11-01 (-107d) |  |  |  |
| HAL-WG-1018 | The Proposed Coursework For Mechanical Equipment | 2027-02-15 → 2026-11-01 (-106d) | 2027-02-16 → 2026-11-01 (-107d) | 2d → 1d | 5d → 0d |  |
| HAL-WG-1019 | The Proposed Coursework For Electircal systems | 2027-02-15 → 2026-11-01 (-106d) | 2027-02-16 → 2026-11-01 (-107d) | 2d → 1d | 5d → 0d | HAL-WG-1018 SS, HAL-WG-1017 → HAL-WG-1018 SS, HAL-WG-1017, HAL-WG-1017 FF |
| 2 | **MANUALS** | 2027-02-17 → 2026-11-02 (-107d) | 2027-02-21 → 2026-11-03 (-110d) |  |  |  |
| 1 | **SYSTEM** | 2027-02-17 → 2026-11-02 (-107d) | 2027-02-21 → 2026-11-03 (-110d) |  |  |  |
| 1 | **PREPARATION AND SUBMITTALS** | 2027-02-17 → 2026-11-02 (-107d) | 2027-02-18 → 2026-11-02 (-108d) |  |  |  |
| HAL-WG-1020 | Manual and Catalogue For Mechanical Equipment | 2027-02-17 → 2026-11-02 (-107d) | 2027-02-18 → 2026-11-02 (-108d) | 2d → 1d | 6d → 0d |  |
| HAL-WG-1021 | Manual and Catalogue For For Electircal systems | 2027-02-17 → 2026-11-02 (-107d) | 2027-02-18 → 2026-11-02 (-108d) | 2d → 1d | 5d → 0d |  |
| 2 | **REVIEW AND APPROVAL** | 2027-02-20 → 2026-11-03 (-109d) | 2027-02-21 → 2026-11-03 (-110d) |  |  |  |
| HAL-WG-1022 | Manual and Catalogue For Mechanical Equipment | 2027-02-20 → 2026-11-03 (-109d) | 2027-02-21 → 2026-11-03 (-110d) | 2d → 1d | 6d → 0d |  |
| HAL-WG-1023 | Manual and Catalogue For For Electircal systems | 2027-02-20 → 2026-11-03 (-109d) | 2027-02-21 → 2026-11-03 (-110d) | 2d → 1d | 5d → 0d |  |
| 4 | **DEMOBILIZATION** | 2027-02-08 → 2026-10-28 (-103d) | 2027-02-23 → 2026-11-03 (-112d) |  |  |  |
| HAL-D.MOB-1013 | Demobilization of manpower | 2027-02-08 → 2026-10-28 (-103d) | 2027-02-09 → 2026-10-29 (-103d) |  | 10d → 1d |  |
| HAL-D.MOB-1020 | Demobilization of equipment | 2027-02-10 → 2026-10-31 (-102d) | 2027-02-11 → 2026-11-01 (-102d) |  | 10d → 1d |  |
| HAL-D.MOB-1010 | Dismantling and removal offices | 2027-02-23 → 2026-11-03 (-112d) | 2027-02-23 → 2026-11-03 (-112d) |  | 5d → 0d | HAL-WG-1023 → HAL-WG-1023 SS |
| 5 | **FINAL HANDOVER** | 2027-02-25 → 2026-11-02 (-115d) | 2027-03-02 → 2026-11-04 (-118d) |  |  |  |
| HAL-FH-1000 | Snag List Rectification | 2027-02-25 → 2026-11-02 (-115d) | 2027-02-28 → 2026-11-03 (-117d) | 3d → 1d | 0d → 0.5d | HAL-D.MOB-1013 SS, HAL-D.MOB-1020, HAL-C-TC-M-3586, HAL-C-TC-M-3576, HAL-C-TC-M-3596, HAL-C-TC-E-3636, HAL-C-TC-E-3626, HAL-C-TC-E-3621, HAL-C-TC-E-3616, HAL-C-TC-E-3646, HAL-C-TC-EX-E-3656, HAL-C-TC-EX-E-3626, HAL-C-TC-EX-E-3646, HAL-C-TC-ENV-F-1051, HAL-C-TC-ENV-SW-60, HAL-C-TC-ENV-WS-11, HAL-C-TC-M-3406, HAL-C-TC-E-3546, HAL-C-EX-M-1391, HAL-C-EX-E-480, HAL-C-EX-S-1384, HAL-C-EX-R-1440, HAL-C-TC-E-3446, HAL-C-TC-E-3486, HAL-C-TC-E-3536, HAL-C-TC-E-3526, HAL-C-TC-E-3516, HAL-PMS-MMS-0030, HAL-PMS-MMS-0020, HAL-PMS-MMS-0070, HAL-PMS-MMS-0040, HAL-PMS-MMS-0060, HAL-PMS-MMS-0050, HAL-PMS-MMS-0080, HAL-PMS-DMS-2320, HAL-PMS-DMS-2370, HAL-PMS-DMS-2460, HAL-PMS-DMS-2450, UPVC pipe service connection, HAL-C-A-E-763, HAL-C-TC-M-3376, HAL-C-A1-SS-1020, HAL-C-A1-SS-1040, HAL-C-B-M-680, HAL-C-B-M-550, HAL-C-B-M-640, HAL-C-B-E-533, HAL-C-C-SS-1020, HAL-C-C-SS-1040, HAL-C-C-A-1780, HAL-C-C-M-1300, HAL-C-C-M-1170, HAL-C-C-M-1260, HAL-C-C-E-993, HAL-C-A-SS-1020, HAL-C-A-SS-1040, HAL-C-A-A-1370, HAL-C-A-M-990, HAL-C-A-M-860, HAL-C-A-M-950, HAL-C-D-SS-1020, HAL-C-D-SS-1040, HAL-C-D-A-1260, HAL-C-D-A-1370, HAL-C-D-M-990, HAL-C-D-M-860, HAL-C-D-M-950, HAL-C-D-E-763, HAL-C-E-SS-1020, HAL-C-E-SS-1040, HAL-C-E-A-420, HAL-C-E-M-370, HAL-C-E-M-429, HAL-C-E-M-330, HAL-C-E-E-303, HAL-C-ENV-WS-826, HAL-C-PR-S-368, HAL-C-EX-R-1520, HAL-C-TC-E-3566, HAL-C-TC-E-3556, HAL-C-TC-E-3656, HAL-C-TC-ENV-SW-70, HAL-C-TC-E-3666, HAL-C-TC-E-3476, Epoxy paint to steel members at office area, Epoxy paint for external platform, Epoxy paint, Supply, install, test and commission Fire Department Connection(FDC), Installation of Roof Vent Cap, Capped connection, Firewarning flash light with sounder; wall mounted, Weather proof, Epoxy paint to steel members at office area, Epoxy paint for external platform, Epoxy paint, Supply, install, test and commission Fire Department Connection(FDC), Installation of Roof Vent Cap, Capped connection, Firewarning flash light with sounder; wall mounted, Weather proof, Epoxy paint to steel members at office area, Epoxy paint for external platform, Epoxy paint, Supply, install, test and commission Fire Department Connection(FDC), Installation of Roof Vent Cap, Capped connection, Firewarning flash light with sounder; wall mounted, Weather proof, Epoxy paint to steel members at office area, Epoxy paint for external platform, Epoxy paint, Supply, install, test and commission Fire Department Connection(FDC), Installation of Roof Vent Cap, Capped connection, Firewarning flash light with sounder; wall mounted, Weather proof, Epoxy paint to steel members at office area, Epoxy paint for external platform, Epoxy paint, Supply, install, test and commission Fire Department Connection(FDC), Installation of Roof Vent Cap, Capped connection, Firewarning flash light with sounder; wall mounted, Weather proof, Epoxy paint to steel members at office area, Epoxy paint for external platform, Epoxy paint, Supply, install, test and commission Fire Department Connection(FDC), Installation of Roof Vent Cap, Capped connection, Firewarning flash light with sounder; wall mounted, Weather proof, Civil & Architectural Snagg works-2, HAL-C-TC-M-9110, HAL-C-TC-A-9100, Furniture Installation → HAL-D.MOB-1013 SS, HAL-D.MOB-1020, HAL-C-TC-M-3586, HAL-C-TC-M-3576, HAL-C-TC-M-3596, HAL-C-TC-E-3636, HAL-C-TC-E-3626, HAL-C-TC-E-3621, HAL-C-TC-E-3616, HAL-C-TC-E-3646, HAL-C-TC-EX-E-3656, HAL-C-TC-EX-E-3626, HAL-C-TC-EX-E-3646, HAL-C-TC-ENV-F-1051, HAL-C-TC-ENV-SW-60, HAL-C-TC-ENV-WS-11, HAL-C-TC-M-3406, HAL-C-TC-E-3546, HAL-C-EX-M-1391, HAL-C-EX-E-480, HAL-C-EX-S-1384, HAL-C-EX-R-1440 SS, HAL-C-TC-E-3446, HAL-C-TC-E-3486, HAL-C-TC-E-3536 SS, HAL-C-TC-E-3526 SS, HAL-C-TC-E-3516 SS, HAL-PMS-MMS-0030, HAL-PMS-MMS-0020, HAL-PMS-MMS-0070, HAL-PMS-MMS-0040, HAL-PMS-MMS-0060, HAL-PMS-MMS-0050, HAL-PMS-MMS-0080, HAL-PMS-DMS-2320, HAL-PMS-DMS-2370, HAL-PMS-DMS-2460, HAL-PMS-DMS-2450, HAL-C-ENV-SW-546, HAL-C-A-E-763, HAL-C-TC-M-3376, HAL-C-GEN-620, HAL-C-A1-SS-1020, HAL-C-A1-SS-1040, HAL-C-B-M-680, HAL-C-B-M-550, HAL-C-B-M-640, HAL-C-B-E-533, HAL-C-C-SS-1020, HAL-C-C-SS-1040, HAL-C-C-A-1780, HAL-C-C-M-1300, HAL-C-C-M-1170, HAL-C-C-M-1260, HAL-C-C-E-993, HAL-C-A-SS-1020, HAL-C-A-SS-1040, HAL-C-A-A-1370, HAL-C-A-M-990, HAL-C-A-M-860, HAL-C-A-M-950, HAL-C-D-SS-1020, HAL-C-D-SS-1040, HAL-C-D-A-1260, HAL-C-D-A-1370, HAL-C-D-M-990, HAL-C-D-M-860, HAL-C-D-M-950, HAL-C-D-E-763, HAL-C-E-SS-1020, HAL-C-E-SS-1040, HAL-C-E-A-420, HAL-C-E-M-370, HAL-C-E-M-429, HAL-C-E-M-330, HAL-C-E-E-303, HAL-C-ENV-WS-826, HAL-C-PR-S-368, HAL-C-EX-R-1520, HAL-C-TC-E-3566 SS, HAL-C-TC-E-3556, HAL-C-TC-E-3656, HAL-C-TC-ENV-SW-70, HAL-C-TC-E-3666, HAL-C-TC-E-3476, HAL-C-TC-A-9100, HAL-C-TC-S-9100, HAL-C-TC-S-9090, HAL-C-TC-M-9110, HAL-C-TC-S-9110, HAL-C-TC-E-3466, HAL-C-TC-E-3506 SS, HAL-C-TC-E-3496, HAL-C-TC-M-3386, HAL-C-TC-M-3396, HAL-C-A-A-250, HAL-C-B-A-790, HAL-P-ST-M-510, HAL-C-A-A-1200 SS |
| HAL-FH-1010 | Handover Letter | 2027-03-01 → 2026-11-03 (-118d) | 2027-03-01 → 2026-11-04 (-117d) |  | 0d → 0.5d |  |
| HAL-FH-1020 | Intial Handingover | 2027-03-02 → 2026-11-04 (-118d) | 2027-03-02 → 2026-11-04 (-118d) |  |  | HAL-FH-1010, HAL-WG-1022, HAL-D.MOB-1010 → HAL-FH-1010 SS, HAL-WG-1022, HAL-D.MOB-1010, HAL-C-TC-E-9120 |
