# MKH2-02-003 - Completion of Infrastructure Works at the Second Industrial City in Makkah

How a schedule from Primavera P6 changed from version to version. A marks actual dates.

## Version 1 (data date 2026-02-15, saved 2026-02-26, file 1. MKH2-02-003 - Baseline Programme.xer)

Note of the change: Renumber project folders 01–23 in order (after removing projects 12 and 25)

| ID | WBS | Task | Duration | Start | Finish | Predecessors | Total float |
| --- | --- | --- | --- | --- | --- | --- | --- |
|  | KEY | **KEY MILESTONES** |  | 2026-02-15 | 2027-08-14 |  |  |
|  | GEN | **GENERAL MILESTONES** |  | 2026-02-15 | 2027-08-14 |  |  |
| MKH2-02-003-MS-1080 |  | Project Commencement Date | 0d | 2026-02-15 | 2026-02-15 |  | 0d |
| MKH2-02-003-MS-1090 |  | Project Kick Off Meeting/NTP | 0d | 2026-02-15 | 2026-02-15 | MKH2-02-003-MS-1080 SS | 14d |
| MKH2-02-003-MS-1100 |  | Project Completion | 0d | 2027-08-14 | 2027-08-14 | MKH2-02-003-CO-1030 FF, MKH2-02-003-MS-1060 FF, MKH2-02-003-MS-1070 FF, MKH2-02-003-MS-1050 FF | 0d |
|  | OVER ALL | **CONTRACTUAL MILESTONE** |  | 2026-03-14 | 2027-08-14 |  |  |
| MKH2-02-003-MS-1000 |  | Completion of Mobilization | 0d | 2026-03-14 | 2026-03-14 | MKH2-02-003-MB-1100 FF, MKH2-02-003-MB-1090 FF, MKH2-02-003-MB-1070 FF, MKH2-02-003-MB-1080 FF, MKH2-02-003-MB-1250 FF, MKH2-02-003-MB-1260 FF, MKH2-02-003-MB-1270 FF, MKH2-02-003-MB-1280 FF, MKH2-02-003-MB-1290 FF, MKH2-02-003-MB-1300 FF, MKH2-02-003-MB-1310 FF, MKH2-02-003-MB-1330 FF, MKH2-02-003-MB-1340 FF, MKH2-02-003-MB-1350 FF, MKH2-02-003-MB-1360 FF, MKH2-02-003-MB-1370 FF | 17d |
| MKH2-02-003-MS-1010 |  | Baseline Programme Approval | 0d | 2026-03-14 | 2026-03-14 | MKH2-02-003-MB-1190 FF, MKH2-02-003-MB-1320 FF | 17d |
| MKH2-02-003-MS-1020 |  | Prequalification & Material Approval | 0d | 2026-04-14 | 2026-04-14 | MKH2-02-003-EN-2220 FF | 11d |
| MKH2-02-003-MS-1030 |  | Completion of Long lead Materials Delivery | 0d | 2026-08-16 | 2026-08-16 | MKH2-02-003-PR-1670 FF, MKH2-02-003-PR-1600 FF | 15d |
| MKH2-02-003-MS-1040 |  | Completion of Road Works | 0d | 2026-12-14 | 2026-12-14 | MKH2-02-003-CN-1350 FF, MKH2-02-003-CN-1360 FF, MKH2-02-003-CN-1390 FF, MKH2-02-003-CN-1370 FF, MKH2-02-003-CN-1380 FF | 13d |
| MKH2-02-003-MS-1050 |  | Completion of Open Drain Channel | 0d | 2027-06-14 | 2027-06-14 | MKH2-02-003-CN-2310 FF | 16d |
| MKH2-02-003-MS-1060 |  | Completion of All Works | 0d | 2027-08-14 | 2027-08-14 | MKH2-02-003-CO-1030 FF | 0d |
| MKH2-02-003-MS-1070 |  | Final Handover | 0d | 2027-08-14 | 2027-08-14 | MKH2-02-003-CO-1030 FF | 0d |
|  | MOB | **MOBILIZATION** |  | 2026-02-15 | 2026-03-14 |  |  |
|  | SURV | **TOPOGRAPHIC SURVEY** |  | 2026-02-15 | 2026-02-23 |  |  |
| MKH2-02-003-MB-1380 |  | Site Survey Works | 7d | 2026-02-15 | 2026-02-23 | MKH2-02-003-MS-1080 SS | 0d |
|  | OFFICE | **SITE FACILITIES & OFFICES** |  | 2026-02-15 | 2026-03-14 |  |  |
| MKH2-02-003-MB-1000 |  | Site Layout Plan | 4d | 2026-02-15 | 2026-02-18 | MKH2-02-003-MS-1080 SS | 0d |
| MKH2-02-003-MB-1010 |  | Clear & Grub for Offices & Access Road | 3d | 2026-02-19 | 2026-02-23 | MKH2-02-003-MB-1000, MKH2-02-003-MS-1090 SS | 10d |
| MKH2-02-003-MB-1020 |  | Construct Site Access Roads | 4d | 2026-02-19 | 2026-02-24 | MKH2-02-003-MB-1000 | 8d |
| MKH2-02-003-MB-1030 |  | Construct Temporary Fence | 7d | 2026-02-24 | 2026-03-03 | MKH2-02-003-MB-1010 | 10d |
| MKH2-02-003-MB-1040 |  | Construct Site Offices & Storage | 14d | 2026-02-25 | 2026-03-12 | MKH2-02-003-MB-1020 | 8d |
| MKH2-02-003-MB-1050 |  | Install Project Signs | 8d | 2026-02-25 | 2026-03-05 | MKH2-02-003-MB-1020 | 17d |
| MKH2-02-003-MB-1060 |  | Install Site Facilities | 4d | 2026-03-04 | 2026-03-08 | MKH2-02-003-MB-1030 | 17d |
| MKH2-02-003-MB-1070 |  | Electrical Works & Connections | 6d | 2026-03-04 | 2026-03-10 | MKH2-02-003-MB-1030 | 10d |
| MKH2-02-003-MB-1080 |  | Construct Parking Sheds | 6d | 2026-03-04 | 2026-03-10 | MKH2-02-003-MB-1030 | 10d |
| MKH2-02-003-MB-1100 |  | Equipment Mobalization | 7d | 2026-03-07 | 2026-03-14 | MKH2-02-003-MB-1050 | 17d |
| MKH2-02-003-MB-1090 |  | Manpower Mobalization | 5d | 2026-03-09 | 2026-03-14 | MKH2-02-003-MB-1060 | 17d |
|  | PRELI | **PRELIMINARY SUBMITTALS** |  | 2026-02-19 | 2026-03-14 |  |  |
|  | P&S | **PREPARATIONS & SUBMITTAL BY CONTRACTORS** |  | 2026-02-19 | 2026-03-01 |  |  |
| MKH2-02-003-MB-1120 |  | Advance Payemnt Application | 8d | 2026-02-19 | 2026-03-01 | MKH2-02-003-MB-1000 | 17d |
| MKH2-02-003-MB-1130 |  | Performance bond as per the Conditions of Contract. | 8d | 2026-02-19 | 2026-03-01 | MKH2-02-003-MB-1000 | 17d |
| MKH2-02-003-MB-1140 |  | Insurances as per the Conditions of Contract. | 8d | 2026-02-19 | 2026-03-01 | MKH2-02-003-MB-1000 | 17d |
| MKH2-02-003-MB-1150 |  | Contractor's Plant and Equipment Insurance. | 8d | 2026-02-19 | 2026-03-01 | MKH2-02-003-MB-1000 | 17d |
| MKH2-02-003-MB-1160 |  | Third Party liability Insurance including Insurance for Employer's Property other than Workmen's Compensation | 8d | 2026-02-19 | 2026-03-01 | MKH2-02-003-MB-1000 | 17d |
| MKH2-02-003-MB-1170 |  | Workmen's Compensation Employer's Liability Insurance. | 8d | 2026-02-19 | 2026-03-01 | MKH2-02-003-MB-1000 | 17d |
| MKH2-02-003-MB-1180 |  | Advance Payment Bond as per the Conditions of Contract. | 8d | 2026-02-19 | 2026-03-01 | MKH2-02-003-MB-1000 | 17d |
| MKH2-02-003-MB-1190 |  | Preparation and Submittal of Detailed Work Order Programme (Base line) | 8d | 2026-02-19 | 2026-03-01 | MKH2-02-003-MB-1000 | 7d |
| MKH2-02-003-MB-1200 |  | Preparation and Submittal of Project Execution Plan | 8d | 2026-02-19 | 2026-03-01 | MKH2-02-003-MB-1000 | 17d |
| MKH2-02-003-MB-1210 |  | Submission of Contractor Project Quality Plan | 8d | 2026-02-19 | 2026-03-01 | MKH2-02-003-MB-1000 | 9d |
| MKH2-02-003-MB-1220 |  | Submission of Construction Safety & Environmental Management Plan | 8d | 2026-02-19 | 2026-03-01 | MKH2-02-003-MB-1000 | 17d |
| MKH2-02-003-MB-1230 |  | Preparation and Submittal of Organization Chart | 8d | 2026-02-19 | 2026-03-01 | MKH2-02-003-MB-1000 | 17d |
| MKH2-02-003-MB-1240 |  | Preparation and Submittal of Communication Plan | 8d | 2026-02-19 | 2026-03-01 | MKH2-02-003-MB-1000 | 17d |
|  | APP | **APPROVALS BY EMPLOYERS** |  | 2026-03-02 | 2026-03-14 |  |  |
| MKH2-02-003-MB-1250 |  | Approval of Payemnt Application | 11d | 2026-03-02 | 2026-03-14 | MKH2-02-003-MB-1120 | 17d |
| MKH2-02-003-MB-1260 |  | Approval of Performance bond as per the Conditions of Contract. | 11d | 2026-03-02 | 2026-03-14 | MKH2-02-003-MB-1130 | 17d |
| MKH2-02-003-MB-1270 |  | Approval of Insurances as per the Conditions of Contract. | 11d | 2026-03-02 | 2026-03-14 | MKH2-02-003-MB-1140 | 17d |
| MKH2-02-003-MB-1280 |  | Approval of Contractor's Plant and Equipment Insurance. | 11d | 2026-03-02 | 2026-03-14 | MKH2-02-003-MB-1150 | 17d |
| MKH2-02-003-MB-1290 |  | Approval of Third Party liability Insurance including Insurance for Employer's Property other than Workmen's Compensan | 11d | 2026-03-02 | 2026-03-14 | MKH2-02-003-MB-1160 | 17d |
| MKH2-02-003-MB-1300 |  | Approval of Workmen's Compensation Employer's Liability Insurance. | 11d | 2026-03-02 | 2026-03-14 | MKH2-02-003-MB-1170 | 17d |
| MKH2-02-003-MB-1310 |  | Approval of Advance Payment Bond as per the Conditions of Contract. | 11d | 2026-03-02 | 2026-03-14 | MKH2-02-003-MB-1180 | 17d |
| MKH2-02-003-MB-1320 |  | Approval of Detailed Work Order Programme (Baseline) | 11d | 2026-03-02 | 2026-03-14 | MKH2-02-003-MB-1190 | 7d |
| MKH2-02-003-MB-1330 |  | Approval of Project Execution Plan | 11d | 2026-03-02 | 2026-03-14 | MKH2-02-003-MB-1200 | 17d |
| MKH2-02-003-MB-1340 |  | Approval of Contractor Project Quality Plan | 11d | 2026-03-02 | 2026-03-14 | MKH2-02-003-MB-1210 | 9d |
| MKH2-02-003-MB-1350 |  | Approval of Construction Safety & Environmental Management Plan | 11d | 2026-03-02 | 2026-03-14 | MKH2-02-003-MB-1220 | 17d |
| MKH2-02-003-MB-1360 |  | Approval of Organization Chart | 11d | 2026-03-02 | 2026-03-14 | MKH2-02-003-MB-1230 | 17d |
| MKH2-02-003-MB-1370 |  | Approval of Communication Plan | 11d | 2026-03-02 | 2026-03-14 | MKH2-02-003-MB-1240 | 17d |
|  | ENGG | **ENGINEERING** |  | 2026-02-19 | 2026-04-14 |  |  |
|  | 1 | **SHOP DRAWINGS** |  | 2026-02-24 | 2026-04-14 |  |  |
|  | SUB | **SHOP DRAWINGS SUBMISSION** |  | 2026-02-24 | 2026-04-05 |  |  |
|  | ROAD | **SHOP DRAWING SUBMITTALS FOR ROAD WORKS** |  | 2026-02-24 | 2026-03-14 |  |  |
| MKH2-02-003-EN-1090 |  | Shop DWG Submittal for Topographic Survey | 8d | 2026-02-24 | 2026-03-04 | MKH2-02-003-MB-1380 | 0d |
| MKH2-02-003-EN-1100 |  | Shop DWG Submittal for Road Layout Plan | 8d | 2026-03-05 | 2026-03-14 | MKH2-02-003-EN-1090 | 0d |
| MKH2-02-003-EN-1110 |  | Shop DWG Submittal for Typical Cross Section | 8d | 2026-03-05 | 2026-03-14 | MKH2-02-003-EN-1090 | 0d |
| MKH2-02-003-EN-1120 |  | Shop DWG Submittal for Road Setting Out | 8d | 2026-03-05 | 2026-03-14 | MKH2-02-003-EN-1090 | 0d |
| MKH2-02-003-EN-1130 |  | Shop DWG Submittal for Road Profiles | 8d | 2026-03-05 | 2026-03-14 | MKH2-02-003-EN-1090 | 0d |
| MKH2-02-003-EN-1140 |  | Shop DWG Submittal for Grading Layout Plan | 8d | 2026-03-05 | 2026-03-14 | MKH2-02-003-EN-1090 | 21d |
| MKH2-02-003-EN-1150 |  | Shop DWG Submittal for Curb Setting Out Points | 8d | 2026-03-05 | 2026-03-14 | MKH2-02-003-EN-1090 | 21d |
| MKH2-02-003-EN-1160 |  | Shop DWG Submittal for Signing & Marking Layout Plan | 8d | 2026-03-05 | 2026-03-14 | MKH2-02-003-EN-1090 | 21d |

| ID | WBS | Task | Duration | Start | Finish | Predecessors | Total float |
| --- | --- | --- | --- | --- | --- | --- | --- |
| MKH2-02-003-EN-1170 |  | Shop DWG Submittal for Standards Details | 8d | 2026-03-05 | 2026-03-14 | MKH2-02-003-EN-1090 | 11d |
|  | ELE | **SHOP DRAWINGS SUBMITTALS FOR ELECTRICAL NETWORK** |  | 2026-03-15 | 2026-03-26 |  |  |
| MKH2-02-003-EN-1180 |  | Shop DWG Submittal for Low Voltage Network | 8d | 2026-03-15 | 2026-03-26 | MKH2-02-003-EN-1170 | 11d |
| MKH2-02-003-EN-1190 |  | Shop DWG Submittal for Street Lighting | 8d | 2026-03-15 | 2026-03-26 | MKH2-02-003-EN-1170 | 11d |
|  | EAR | **SHOP DRAWINGS SUBMITTALS FOR EARTHING SYSTEM** |  | 2026-03-28 | 2026-04-05 |  |  |
| MKH2-02-003-EN-1200 |  | Shop DWG Submittal for Earthing System | 8d | 2026-03-28 | 2026-04-05 | MKH2-02-003-EN-1190 | 12d |
|  | 1 | **SHOP DRAWINGS SUBMITTALS FOR ROAD LIGHTING SYSTEM** |  | 2026-03-28 | 2026-04-05 |  |  |
| MKH2-02-003-EN-1210 |  | Shop DWG Submittal for Street Lighting General Arrangement | 8d | 2026-03-28 | 2026-04-05 | MKH2-02-003-EN-1180 | 11d |
| MKH2-02-003-EN-1220 |  | Shop DWG Submittal for Street Lighting Network Layout | 8d | 2026-03-28 | 2026-04-05 | MKH2-02-003-EN-1180 | 11d |
| MKH2-02-003-EN-1230 |  | Shop DWG Submittal for Street Lighting Details | 8d | 2026-03-28 | 2026-04-05 | MKH2-02-003-EN-1190 | 11d |
| MKH2-02-003-EN-1240 |  | Shop DWG Submittal for Street Lighting Single Line Diagram | 8d | 2026-03-28 | 2026-04-05 | MKH2-02-003-EN-1190 | 11d |
|  | DYK & OPNC | **SHOP DRAWINGS SUBMITTALS FOR OPENCHANNEL** |  | 2026-03-15 | 2026-03-26 |  |  |
| MKH2-02-003-EN-1250 |  | Shop DWG Submittal for Open Channel Layout Plan | 8d | 2026-03-15 | 2026-03-26 | MKH2-02-003-EN-1170, MKH2-02-003-MB-1080, MKH2-02-003-MB-1070 | 18d |
| MKH2-02-003-EN-1260 |  | Shop DWG Submittal for Typical Cross Section | 8d | 2026-03-15 | 2026-03-26 | MKH2-02-003-EN-1170 | 18d |
| MKH2-02-003-EN-1270 |  | Shop DWG Submittal for Open Channel Profiles | 8d | 2026-03-15 | 2026-03-26 | MKH2-02-003-EN-1170 | 18d |
| MKH2-02-003-EN-1280 |  | Shop DWG Submittal for Grading Layout Plan | 8d | 2026-03-15 | 2026-03-26 | MKH2-02-003-EN-1170 | 18d |
| MKH2-02-003-EN-1290 |  | Shop DWG Submittal for Standards Details | 8d | 2026-03-15 | 2026-03-26 | MKH2-02-003-EN-1170 | 18d |
|  | APP | **SHOP DRAWINGS APPROVALS** |  | 2026-03-05 | 2026-04-14 |  |  |
|  | ROAD | **SHOP DRAWING APPROVALS FOR ROAD WORKS** |  | 2026-03-05 | 2026-03-25 |  |  |
| MKH2-02-003-EN-1300 |  | Shop DWG Approval for Topographic Survey | 7d | 2026-03-05 | 2026-03-12 | MKH2-02-003-EN-1090 | 29d |
| MKH2-02-003-EN-1310 |  | Shop DWG Approval for Road Layout Plan | 7d | 2026-03-15 | 2026-03-25 | MKH2-02-003-EN-1100 | 0d |
| MKH2-02-003-EN-1320 |  | Shop DWG Approval for Typical Cross Section | 7d | 2026-03-15 | 2026-03-25 | MKH2-02-003-EN-1110 | 0d |
| MKH2-02-003-EN-1330 |  | Shop DWG Approval for Road Setting Out | 7d | 2026-03-15 | 2026-03-25 | MKH2-02-003-EN-1120 | 0d |
| MKH2-02-003-EN-1340 |  | Shop DWG Approval for Road Profiles | 7d | 2026-03-15 | 2026-03-25 | MKH2-02-003-EN-1130 | 0d |
| MKH2-02-003-EN-1350 |  | Shop DWG Approval for Grading Layout Plan | 7d | 2026-03-15 | 2026-03-25 | MKH2-02-003-EN-1140 | 21d |
| MKH2-02-003-EN-1360 |  | Shop DWG Approval for Curb Setting Out Points | 7d | 2026-03-15 | 2026-03-25 | MKH2-02-003-EN-1150 | 21d |
| MKH2-02-003-EN-1370 |  | Shop DWG Approval for Signing & Marking Layout Plan | 7d | 2026-03-15 | 2026-03-25 | MKH2-02-003-EN-1160 | 21d |
| MKH2-02-003-EN-1380 |  | Shop DWG Approval for Standards Details | 7d | 2026-03-15 | 2026-03-25 | MKH2-02-003-EN-1170 | 21d |
|  | ELE | **SHOP DRAWINGS APPROVALS FOR ELECTRICAL NETWORK** |  | 2026-03-28 | 2026-04-04 |  |  |
| MKH2-02-003-EN-1390 |  | Shop DWG Approval for Low Voltage Network | 7d | 2026-03-28 | 2026-04-04 | MKH2-02-003-EN-1180 | 19d |
| MKH2-02-003-EN-1400 |  | Shop DWG Approval for Street Lighting | 7d | 2026-03-28 | 2026-04-04 | MKH2-02-003-EN-1190 | 19d |
|  | EAR | **SHOP DRAWINGS APPROVALS FOR EARTHING SYSTEM** |  | 2026-04-06 | 2026-04-13 |  |  |
| MKH2-02-003-EN-1410 |  | Shop DWG Approval for Earthing System | 7d | 2026-04-06 | 2026-04-13 | MKH2-02-003-EN-1200 | 12d |
|  | 1 | **SHOP DRAWINGS APPROVALS FOR ROAD LIGHTING SYSTEM** |  | 2026-04-06 | 2026-04-14 |  |  |
| MKH2-02-003-EN-1420 |  | Shop DWG Approval for Street Lighting General Arrangement | 8d | 2026-04-06 | 2026-04-14 | MKH2-02-003-EN-1210 | 11d |
| MKH2-02-003-EN-1430 |  | Shop DWG Approval for Street Lighting Network Layout | 8d | 2026-04-06 | 2026-04-14 | MKH2-02-003-EN-1220 | 11d |
| MKH2-02-003-EN-1440 |  | Shop DWG Approval for Street Lighting Details | 8d | 2026-04-06 | 2026-04-14 | MKH2-02-003-EN-1230 | 11d |
| MKH2-02-003-EN-1450 |  | Shop DWG Approval for Street Lighting Single Line Diagram | 8d | 2026-04-06 | 2026-04-14 | MKH2-02-003-EN-1240 | 11d |
|  | DYK & OPNC | **SHOP DRAWINGS APPROVALS FOR OPENCHANNEL** |  | 2026-03-28 | 2026-04-05 |  |  |
| MKH2-02-003-EN-1460 |  | Shop DWG Approval for Open Channel Layout Plan | 8d | 2026-03-28 | 2026-04-05 | MKH2-02-003-EN-1250 | 18d |
| MKH2-02-003-EN-1470 |  | Shop DWG Approval for Typical Cross Section | 8d | 2026-03-28 | 2026-04-05 | MKH2-02-003-EN-1260 | 18d |
| MKH2-02-003-EN-1480 |  | Shop DWG Approval for Open Channel Profiles | 8d | 2026-03-28 | 2026-04-05 | MKH2-02-003-EN-1270 | 18d |
| MKH2-02-003-EN-1490 |  | Shop DWG Approval for Grading Layout Plan | 8d | 2026-03-28 | 2026-04-05 | MKH2-02-003-EN-1280 | 18d |
| MKH2-02-003-EN-1500 |  | Shop DWG Approval for Standards Details | 8d | 2026-03-28 | 2026-04-05 | MKH2-02-003-EN-1290 | 18d |
|  | 2 | **METHOD STATEMENTS** |  | 2026-02-19 | 2026-04-13 |  |  |
|  | 1 | **METHOD STATEMENT SUBMITTAL** |  | 2026-02-19 | 2026-03-28 |  |  |
|  | 4 | **Civil Works** |  | 2026-02-19 | 2026-03-08 |  |  |
|  | 1 | **Road Works** |  | 2026-02-19 | 2026-03-08 |  |  |
| MKH2-02-003-EN-1000 |  | Preparation & Submission of Method Statement for Demolition Works | 14d | 2026-02-19 | 2026-03-08 | MKH2-02-003-MB-1000 | 31d |
| MKH2-02-003-EN-1010 |  | Preparation & Submission of Method Statement for Earthwork | 14d | 2026-02-19 | 2026-03-08 | MKH2-02-003-MB-1000 | 0d |
| MKH2-02-003-EN-1020 |  | Preparation & Submission of Method Statement for Road Paving (Soil & Asphalt) | 14d | 2026-02-19 | 2026-03-08 | MKH2-02-003-MB-1000 | 31d |
| MKH2-02-003-EN-1060 |  | Preparation & Submission of Method Statement for Traffic Signal & Saher Camera | 14d | 2026-02-19 | 2026-03-08 | MKH2-02-003-MB-1000 | 31d |
| MKH2-02-003-EN-1070 |  | Preparation & Submission of Method Statement for Road Finishing | 14d | 2026-02-19 | 2026-03-08 | MKH2-02-003-MB-1000 | 31d |
|  | 2 | **Open Drain Channel** |  | 2026-02-19 | 2026-03-08 |  |  |
| MKH2-02-003-EN-2230 |  | Preparation & Submission of Method Statement for Riprap Construction | 14d | 2026-02-19 | 2026-03-08 | MKH2-02-003-MB-1000 | 31d |
|  | 3 | **Box Culvert** |  | 2026-02-19 | 2026-03-08 |  |  |
| MKH2-02-003-EN-2330 |  | Preparation & Submission of Method Statement for Box Culvert | 14d | 2026-02-19 | 2026-03-08 | MKH2-02-003-MB-1000 | 24d |
|  | 5 | **Electrical Works** |  | 2026-03-09 | 2026-03-28 |  |  |
|  | 1 | **Street Lighting Works** |  | 2026-03-09 | 2026-03-28 |  |  |
| MKH2-02-003-EN-5000 |  | Preparation & Submission of Method Statement for LV Duct Bank | 14d | 2026-03-09 | 2026-03-28 | MKH2-02-003-MB-1000, MKH2-02-003-EN-2330 | 24d |
| MKH2-02-003-EN-5010 |  | Preparation & Submission of Method Statement for LV Network | 14d | 2026-03-09 | 2026-03-28 | MKH2-02-003-MB-1000, MKH2-02-003-EN-2330 | 24d |
| MKH2-02-003-EN-5020 |  | Preparation & Submission of Method Statement for Lighting Poles Installation | 14d | 2026-03-09 | 2026-03-28 | MKH2-02-003-MB-1000, MKH2-02-003-EN-2330 | 24d |
|  | 2 | **METHOD STATEMENT APPROVAL** |  | 2026-03-09 | 2026-04-13 |  |  |
|  | 4 | **Civil Works** |  | 2026-03-09 | 2026-03-28 |  |  |
|  | 1 | **Road Works** |  | 2026-03-09 | 2026-03-28 |  |  |
| MKH2-02-003-EN-5030 |  | Approval of Method Statement for Demolition Works | 14d | 2026-03-09 | 2026-03-28 | MKH2-02-003-EN-1000 | 31d |
| MKH2-02-003-EN-5040 |  | Approval of Method Statement for Earthwork | 12d | 2026-03-09 | 2026-03-25 | MKH2-02-003-EN-1010 | 0d |
| MKH2-02-003-EN-5050 |  | Approval of Method Statement for Road Paving (Soil & Asphalt) | 14d | 2026-03-09 | 2026-03-28 | MKH2-02-003-EN-1020 | 31d |
| MKH2-02-003-EN-5060 |  | Approval of Method Statement for Traffic Signal & Saher Camera | 14d | 2026-03-09 | 2026-03-28 | MKH2-02-003-EN-1060 | 31d |
| MKH2-02-003-EN-5070 |  | Approval of Method Statement for Road Finishing | 14d | 2026-03-09 | 2026-03-28 | MKH2-02-003-EN-1070 | 31d |

| ID | WBS | Task | Duration | Start | Finish | Predecessors | Total float |
| --- | --- | --- | --- | --- | --- | --- | --- |
|  | 2 | **Open Drain Channel** |  | 2026-03-09 | 2026-03-28 |  |  |
| MKH2-02-003-EN-5080 |  | Approval of Method Statement for Riprap Construction | 14d | 2026-03-09 | 2026-03-28 | MKH2-02-003-EN-2230 | 31d |
|  | 3 | **Box Culvert** |  | 2026-03-09 | 2026-03-28 |  |  |
| MKH2-02-003-EN-5090 |  | Approval of Method Statement for Box Culvert | 14d | 2026-03-09 | 2026-03-28 | MKH2-02-003-EN-2330 | 31d |
|  | 5 | **Electrical Works** |  | 2026-03-29 | 2026-04-13 |  |  |
|  | 1 | **Street Lighting Works** |  | 2026-03-29 | 2026-04-13 |  |  |
| MKH2-02-003-EN-5100 |  | Approval of Method Statement for LV Duct Bank | 14d | 2026-03-29 | 2026-04-13 | MKH2-02-003-EN-5000 | 24d |
| MKH2-02-003-EN-5110 |  | Approval of Method Statement for LV Network | 14d | 2026-03-29 | 2026-04-13 | MKH2-02-003-EN-5010 | 24d |
| MKH2-02-003-EN-5120 |  | Approval of Method Statement for Lighting Poles Installation | 14d | 2026-03-29 | 2026-04-13 | MKH2-02-003-EN-5020 | 24d |
|  | PREQ | **PRE-QUALIFICATION & MATERIAL** |  | 2026-03-15 | 2026-04-14 |  |  |
|  | PRE | **PRE-QUALIFICATION** |  | 2026-03-15 | 2026-03-30 |  |  |
|  | ROAD | **ROAD WORKS-CIVIL** |  | 2026-03-15 | 2026-03-30 |  |  |
|  | STEEL | **STEEL REINFORCEMENT** |  | 2026-03-15 | 2026-03-30 |  |  |
| MKH2-02-003-EN-1510 |  | Pre-Qualification Submittal for Steel Reinforcement | 5d | 2026-03-15 | 2026-03-19 | MKH2-02-003-MB-1340, MKH2-02-003-MS-1000, MKH2-02-003-MS-1010 | 17d |
| MKH2-02-003-EN-1520 |  | Pre-Qualification Approval for Steel Reinforcement | 6d | 2026-03-24 | 2026-03-30 | MKH2-02-003-EN-1510 | 17d |
|  | RMC | **READY MIX CONCRETE** |  | 2026-03-15 | 2026-03-30 |  |  |
| MKH2-02-003-EN-1530 |  | Pre-Qualification Submittal for Ready Mixed Concrete | 5d | 2026-03-15 | 2026-03-19 | MKH2-02-003-MB-1340 | 17d |
| MKH2-02-003-EN-1540 |  | Pre-Qualification Approval for Ready Mixed Concrete | 6d | 2026-03-24 | 2026-03-30 | MKH2-02-003-EN-1530 | 17d |
|  | WP | **WATER PROOFING** |  | 2026-03-15 | 2026-03-30 |  |  |
| MKH2-02-003-EN-1550 |  | Pre-Qualification Submittal for Water Proof ing | 5d | 2026-03-15 | 2026-03-19 | MKH2-02-003-MB-1340 | 19d |
| MKH2-02-003-EN-1560 |  | Pre-Qualification Approval for Water Proofing | 6d | 2026-03-24 | 2026-03-30 | MKH2-02-003-EN-1550 | 19d |
|  | ABC | **AGGREGATE BASE COURSE** |  | 2026-03-15 | 2026-03-30 |  |  |
| MKH2-02-003-EN-1570 |  | Pre-Qualification Submittal for Aggregate Base Cource | 5d | 2026-03-15 | 2026-03-19 | MKH2-02-003-MB-1340 | 17d |
| MKH2-02-003-EN-1580 |  | Pre-Qualification Approval for Aggregate Base Cource | 6d | 2026-03-24 | 2026-03-30 | MKH2-02-003-EN-1570 | 17d |
|  | BBC& BWC | **BITU,INOUS BASE & WEARING COURSE** |  | 2026-03-15 | 2026-03-30 |  |  |
| MKH2-02-003-EN-1590 |  | Pre-Qualification Submittal for Bituminous Base & Wearing Cource | 5d | 2026-03-15 | 2026-03-19 | MKH2-02-003-MB-1340 | 11d |
| MKH2-02-003-EN-1600 |  | Pre-Qualification Approval for Bituminous Base & Wearing Cource | 6d | 2026-03-24 | 2026-03-30 | MKH2-02-003-EN-1590 | 11d |
|  | CURB | **PRE-CAST CONCRETE CURBS** |  | 2026-03-15 | 2026-03-30 |  |  |
| MKH2-02-003-EN-1610 |  | Pre-Qualification Submittal for Precast Concrete Curb | 5d | 2026-03-15 | 2026-03-19 | MKH2-02-003-MB-1340 | 9d |
| MKH2-02-003-EN-1620 |  | Pre-Qualification Approval for Precast Concrete Curb | 6d | 2026-03-24 | 2026-03-30 | MKH2-02-003-EN-1610 | 9d |
|  | INTR | **INTERLOCKING PAVING BLOCKS** |  | 2026-03-15 | 2026-03-30 |  |  |
| MKH2-02-003-EN-1630 |  | Pre-Qualification Submittal for Interlocking Block Pavers | 5d | 2026-03-15 | 2026-03-19 | MKH2-02-003-MB-1340 | 11d |
| MKH2-02-003-EN-1640 |  | Pre-Qualification Approval for Interlocking Block Pavers | 6d | 2026-03-24 | 2026-03-30 | MKH2-02-003-EN-1630 | 11d |
|  | MARK | **PAVEMENT MARKING** |  | 2026-03-15 | 2026-03-30 |  |  |
| MKH2-02-003-EN-1650 |  | Pre-Qualification Submittal for Pavement Markings | 5d | 2026-03-15 | 2026-03-19 | MKH2-02-003-MB-1340 | 11d |
| MKH2-02-003-EN-1660 |  | Pre-Qualification Approval for Pavement Markings | 6d | 2026-03-24 | 2026-03-30 | MKH2-02-003-EN-1650 | 11d |
|  | SIGN | **TRAFFIC SIGNS** |  | 2026-03-15 | 2026-03-30 |  |  |
| MKH2-02-003-EN-1670 |  | Pre-Qualification Submittal for Traffic Signs | 5d | 2026-03-15 | 2026-03-19 | MKH2-02-003-MB-1340 | 17d |
| MKH2-02-003-EN-1680 |  | Pre-Qualification Approval for Traffic Signs | 6d | 2026-03-24 | 2026-03-30 | MKH2-02-003-EN-1670 | 17d |
|  | ELE | **ELECTRICAL NETWORK** |  | 2026-03-15 | 2026-03-30 |  |  |
|  | PIPE | **PIPE FOR DUCT** |  | 2026-03-15 | 2026-03-30 |  |  |
| MKH2-02-003-EN-1690 |  | Pre-Qualification Submittal for Pipe for the Duct | 5d | 2026-03-15 | 2026-03-19 | MKH2-02-003-MB-1340 | 17d |
| MKH2-02-003-EN-1700 |  | Pre-Qualification Approval for Pipe for the Duct | 6d | 2026-03-24 | 2026-03-30 | MKH2-02-003-EN-1690 | 17d |
|  | LV-CAB | **LOW VOLTAGE CABLES** |  | 2026-03-15 | 2026-03-30 |  |  |
| MKH2-02-003-EN-1710 |  | Pre-Qualification Submittal for Low Voltage Cables | 5d | 2026-03-15 | 2026-03-19 | MKH2-02-003-MB-1340 | 17d |
| MKH2-02-003-EN-1720 |  | Pre-Qualification Approval for Low Voltage Cables | 6d | 2026-03-24 | 2026-03-30 | MKH2-02-003-EN-1710 | 17d |
|  | EARTH | **EARTHING SYSTEM** |  | 2026-03-15 | 2026-03-30 |  |  |
| MKH2-02-003-EN-1730 |  | Pre-Qualification Submittal for Earthing System | 5d | 2026-03-15 | 2026-03-19 | MKH2-02-003-MB-1340 | 17d |
| MKH2-02-003-EN-1740 |  | Pre-Qualification Approval for Earthing System | 6d | 2026-03-24 | 2026-03-30 | MKH2-02-003-EN-1730 | 17d |
|  | LV-DP | **LOW VOLTAGE DISTRIBUTION PANNEL** |  | 2026-03-15 | 2026-03-30 |  |  |
| MKH2-02-003-EN-1750 |  | Pre-Qualification Submittal for Distribution Panel | 5d | 2026-03-15 | 2026-03-19 | MKH2-02-003-MB-1340 | 18d |
| MKH2-02-003-EN-1760 |  | Pre-Qualification Approval for Distribution Panel | 6d | 2026-03-24 | 2026-03-30 | MKH2-02-003-EN-1750 | 18d |
|  | LIGH | **LIGHTING POLES** |  | 2026-03-15 | 2026-03-30 |  |  |
| MKH2-02-003-EN-1770 |  | Pre-Qualification Submittal for Lighting poles | 5d | 2026-03-15 | 2026-03-19 | MKH2-02-003-MB-1330 | 18d |
| MKH2-02-003-EN-1780 |  | Pre-Qualification Approval for Lighting poles | 6d | 2026-03-24 | 2026-03-30 | MKH2-02-003-EN-1770 | 18d |
|  | FID & PAN | **LIGHTINH PANNELS/FEEDER PILLERS** |  | 2026-03-15 | 2026-03-30 |  |  |
| MKH2-02-003-EN-1790 |  | Pre-Qualification Submittal for Lighting panels/Feeder Pillers | 5d | 2026-03-15 | 2026-03-19 | MKH2-02-003-MB-1340 | 18d |
| MKH2-02-003-EN-1800 |  | Pre-Qualification Approval for Lighting panels/Feeder Pillers | 6d | 2026-03-24 | 2026-03-30 | MKH2-02-003-EN-1790 | 18d |
|  | LUM | **STREET LIGHTING LUMINAIRE** |  | 2026-03-15 | 2026-03-30 |  |  |
| MKH2-02-003-EN-1810 |  | Pre-Qualification Submittal for Lighting Luminaire | 5d | 2026-03-15 | 2026-03-19 | MKH2-02-003-MB-1340 | 15d |
| MKH2-02-003-EN-1820 |  | Pre-Qualification Approval for Lighting Luminaire | 6d | 2026-03-24 | 2026-03-30 | MKH2-02-003-EN-1810 | 15d |
|  | STROM | **OPPEN CHANNEL** |  | 2026-03-15 | 2026-03-30 |  |  |
|  | RIPRAP | **RIPRAP MATERIAL** |  | 2026-03-15 | 2026-03-30 |  |  |
| MKH2-02-003-EN-1830 |  | Pre-Qualification Submittal for RIP-RAP Material | 5d | 2026-03-15 | 2026-03-19 | MKH2-02-003-MB-1340 | 18d |
| MKH2-02-003-EN-1840 |  | Pre-Qualification Approval for RIP-RAP Material | 6d | 2026-03-24 | 2026-03-30 | MKH2-02-003-EN-1830 | 18d |
|  | ACESSO | **ACCESSORIES FOR RIPRAP** |  | 2026-03-15 | 2026-03-30 |  |  |
| MKH2-02-003-EN-1850 |  | Pre-Qualification Submittal for Accessories for RIP-RAP | 5d | 2026-03-15 | 2026-03-19 | MKH2-02-003-MB-1340 | 11d |
| MKH2-02-003-EN-1860 |  | Pre-Qualification Approval for Accessories for RIP-RAP | 6d | 2026-03-24 | 2026-03-30 | MKH2-02-003-EN-1850 | 11d |
|  | MAT | **MATERIAL SUBMITTAL** |  | 2026-03-31 | 2026-04-14 |  |  |
|  | ROAD | **ROAD WORKS-CIVIL** |  | 2026-03-31 | 2026-04-12 |  |  |

| ID | WBS | Task | Duration | Start | Finish | Predecessors | Total float |
| --- | --- | --- | --- | --- | --- | --- | --- |
|  | STEEL | **STEEL REINFORCEMENT** |  | 2026-03-31 | 2026-04-12 |  |  |
| MKH2-02-003-EN-1870 |  | Material Submittal for Steel Reinforcement | 5d | 2026-03-31 | 2026-04-05 | MKH2-02-003-EN-1520 | 17d |
| MKH2-02-003-EN-1880 |  | Material Approval for Steel Reinforcement | 6d | 2026-04-06 | 2026-04-12 | MKH2-02-003-EN-1870 | 17d |
|  | RMC | **READY MIX CONCRETE** |  | 2026-03-31 | 2026-04-12 |  |  |
| MKH2-02-003-EN-1890 |  | Material Submittal Submittal for Ready Mixed Concrete | 5d | 2026-03-31 | 2026-04-05 | MKH2-02-003-EN-1540 | 17d |
| MKH2-02-003-EN-1900 |  | Material Approval for Ready Mixed Concrete | 6d | 2026-04-06 | 2026-04-12 | MKH2-02-003-EN-1890 | 17d |
|  | WP | **WATER PROOFING** |  | 2026-03-31 | 2026-04-12 |  |  |
| MKH2-02-003-EN-1910 |  | Material Submittal for Water Proof ing | 5d | 2026-03-31 | 2026-04-05 | MKH2-02-003-EN-1560 | 19d |
| MKH2-02-003-EN-1920 |  | Material Approval for Water Proofing | 6d | 2026-04-06 | 2026-04-12 | MKH2-02-003-EN-1910 | 19d |
|  | ABC | **AGGREGATE BASE COURSE** |  | 2026-03-31 | 2026-04-12 |  |  |
| MKH2-02-003-EN-1930 |  | Material Submittal for Aggregate Base Cource | 5d | 2026-03-31 | 2026-04-05 | MKH2-02-003-EN-1580 | 17d |
| MKH2-02-003-EN-1940 |  | Material Approval for Aggregate Base Cource | 6d | 2026-04-06 | 2026-04-12 | MKH2-02-003-EN-1930 | 17d |
|  | BBC& BWC | **BITU,INOUS BASE & WEARING COURSE** |  | 2026-03-31 | 2026-04-12 |  |  |
| MKH2-02-003-EN-1950 |  | Material Submittal for Bituminous Base & Wearing Cource | 5d | 2026-03-31 | 2026-04-05 | MKH2-02-003-EN-1600 | 11d |
| MKH2-02-003-EN-1960 |  | Material Approval for Bituminous Base & Wearing Cource | 6d | 2026-04-06 | 2026-04-12 | MKH2-02-003-EN-1950 | 11d |
|  | CURB | **PRE-CAST CONCRETE CURBS** |  | 2026-03-31 | 2026-04-12 |  |  |
| MKH2-02-003-EN-1970 |  | Material Submittal for Precast Concrete Curb | 5d | 2026-03-31 | 2026-04-05 | MKH2-02-003-EN-1620 | 9d |
| MKH2-02-003-EN-1980 |  | Material Approval for Precast Concrete Curb | 6d | 2026-04-06 | 2026-04-12 | MKH2-02-003-EN-1970 | 9d |
|  | INTR | **INTERLOCKING PAVING BLOCKS** |  | 2026-03-31 | 2026-04-12 |  |  |
| MKH2-02-003-EN-1990 |  | Material Submittal for Interlocking Block Pavers | 5d | 2026-03-31 | 2026-04-05 | MKH2-02-003-EN-1640 | 11d |
| MKH2-02-003-EN-2000 |  | Material Approval for Interlocking Block Pavers | 6d | 2026-04-06 | 2026-04-12 | MKH2-02-003-EN-1990 | 11d |
|  | MARK | **PAVEMENT MARKING** |  | 2026-03-31 | 2026-04-12 |  |  |
| MKH2-02-003-EN-2010 |  | Material Submittal for Pavement Markings | 5d | 2026-03-31 | 2026-04-05 | MKH2-02-003-EN-1660 | 11d |
| MKH2-02-003-EN-2020 |  | Material Approval for Pavement Markings | 6d | 2026-04-06 | 2026-04-12 | MKH2-02-003-EN-2010 | 11d |
|  | SIGN | **TRAFFIC SIGNS** |  | 2026-03-31 | 2026-04-12 |  |  |
| MKH2-02-003-EN-2030 |  | Material Submittal for Traffic Signs | 5d | 2026-03-31 | 2026-04-05 | MKH2-02-003-EN-1680 | 17d |
| MKH2-02-003-EN-2040 |  | Material Approval for Traffic Signs | 6d | 2026-04-06 | 2026-04-12 | MKH2-02-003-EN-2030 | 17d |
|  | ELE | **ELECTRICAL NETWORK** |  | 2026-03-31 | 2026-04-12 |  |  |
|  | PIPE | **PIPE FOR DUCT** |  | 2026-03-31 | 2026-04-12 |  |  |
| MKH2-02-003-EN-2050 |  | Material Submittal for Pipe for the Duct | 5d | 2026-03-31 | 2026-04-05 | MKH2-02-003-EN-1700 | 17d |
| MKH2-02-003-EN-2060 |  | Material Approval for Pipe for the Duct | 6d | 2026-04-06 | 2026-04-12 | MKH2-02-003-EN-2050 | 17d |
|  | LV-CAB | **LOW VOLTAGE CABLES** |  | 2026-03-31 | 2026-04-12 |  |  |
| MKH2-02-003-EN-2070 |  | Material Submittal for Low Voltage Cables | 5d | 2026-03-31 | 2026-04-05 | MKH2-02-003-EN-1720 | 17d |
| MKH2-02-003-EN-2080 |  | Material Approval for Low Voltage Cables | 6d | 2026-04-06 | 2026-04-12 | MKH2-02-003-EN-2070 | 17d |
|  | EARTH | **EARTHING SYSTEM** |  | 2026-03-31 | 2026-04-12 |  |  |
| MKH2-02-003-EN-2090 |  | Material Submittal for Earthing System | 5d | 2026-03-31 | 2026-04-05 | MKH2-02-003-EN-1740 | 17d |
| MKH2-02-003-EN-2100 |  | Material Approval for Earthing System | 6d | 2026-04-06 | 2026-04-12 | MKH2-02-003-EN-2090 | 17d |
|  | LV-DP | **LOW VOLTAGE DISTRIBUTION PANNEL** |  | 2026-03-31 | 2026-04-12 |  |  |
| MKH2-02-003-EN-2110 |  | Material Submittal for Distribution Panel | 5d | 2026-03-31 | 2026-04-05 | MKH2-02-003-EN-1760 | 18d |
| MKH2-02-003-EN-2120 |  | Material Approval for Distribution Panel | 6d | 2026-04-06 | 2026-04-12 | MKH2-02-003-EN-2110 | 18d |
|  | LIGH | **LIGHTING POLES** |  | 2026-03-31 | 2026-04-12 |  |  |
| MKH2-02-003-EN-2130 |  | Material Submittal for Lighting poles | 5d | 2026-03-31 | 2026-04-05 | MKH2-02-003-EN-1780 | 18d |
| MKH2-02-003-EN-2140 |  | Material Approval for Lighting poles | 6d | 2026-04-06 | 2026-04-12 | MKH2-02-003-EN-2130 | 18d |
|  | FID & PAN | **LIGHTINH PANNELS/FEEDER PILLERS** |  | 2026-03-31 | 2026-04-12 |  |  |
| MKH2-02-003-EN-2150 |  | Material Submittal for Lighting panels/Feeder Pillers | 5d | 2026-03-31 | 2026-04-05 | MKH2-02-003-EN-1800 | 18d |
| MKH2-02-003-EN-2160 |  | Material Approval for Lighting panels/Feeder Pillers | 6d | 2026-04-06 | 2026-04-12 | MKH2-02-003-EN-2150 | 18d |
|  | LUM | **STREET LIGHTING LUMINAIRE** |  | 2026-03-31 | 2026-04-12 |  |  |
| MKH2-02-003-EN-2170 |  | Material Submittal for Lighting Luminaire | 5d | 2026-03-31 | 2026-04-05 | MKH2-02-003-EN-1820 | 15d |
| MKH2-02-003-EN-2180 |  | Material Approval for Lighting Luminaire | 6d | 2026-04-06 | 2026-04-12 | MKH2-02-003-EN-2170 | 15d |
|  | STROM | **OPPEN CHANNEL** |  | 2026-03-31 | 2026-04-14 |  |  |
|  | RIPRAP | **RIPRAP MATERIAL** |  | 2026-03-31 | 2026-04-12 |  |  |
| MKH2-02-003-EN-2190 |  | Material Submittal for RIP-RAP Material | 5d | 2026-03-31 | 2026-04-05 | MKH2-02-003-EN-1840 | 18d |
| MKH2-02-003-EN-2200 |  | Material Approval for RIP-RAP Material | 6d | 2026-04-06 | 2026-04-12 | MKH2-02-003-EN-2190, MKH2-02-003-EN-1500, MKH2-02-003-EN-1490, MKH2-02-003-EN-1480, MKH2-02-003-EN-1470, MKH2-02-003-EN-1460, MKH2-02-003-EN-1400, MKH2-02-003-EN-1390 | 18d |
|  | ACESSO | **ACCESSORIES FOR RIPRAP** |  | 2026-03-31 | 2026-04-14 |  |  |
| MKH2-02-003-EN-2210 |  | Material Submittal for Accessories for RIP-RAP | 5d | 2026-03-31 | 2026-04-05 | MKH2-02-003-EN-1860 | 11d |
| MKH2-02-003-EN-2220 |  | Material Approval for Accessories for RIP-RAP | 8d | 2026-04-06 | 2026-04-14 | MKH2-02-003-EN-2210 | 11d |
|  | PRO | **PROCUREMENT** |  | 2026-04-13 | 2026-08-16 |  |  |
|  | SLI | **SHORT LEAD ITEM** |  | 2026-04-13 | 2026-06-18 |  |  |
|  | ROAD | **ROAD WORKS-CIVIL** |  | 2026-04-13 | 2026-06-18 |  |  |
|  | STEEL | **STEEL REINFORCEMENT** |  | 2026-04-13 | 2026-06-18 |  |  |
| MKH2-02-003-PR-1000 |  | PO for Steel Reinforcement | 9d | 2026-04-13 | 2026-04-22 | MKH2-02-003-EN-1880, MKH2-02-003-EN-1500, MKH2-02-003-EN-1490, MKH2-02-003-EN-1480, MKH2-02-003-EN-1470, MKH2-02-003-EN-1460, MKH2-02-003-EN-1400, MKH2-02-003-EN-1390 | 17d |
| MKH2-02-003-PR-1010 |  | Material Fabrication for Steel Reinforcement | 16d | 2026-04-23 | 2026-05-11 | MKH2-02-003-PR-1000, MKH2-02-003-EN-1940, MKH2-02-003-EN-1500, MKH2-02-003-EN-1450, MKH2-02-003-EN-1440, MKH2-02-003-EN-1430, MKH2-02-003-EN-1420, MKH2-02-003-EN-1410, MKH2-02-003-EN-1400 | 17d |
| MKH2-02-003-PR-1020 |  | Material Delivery for 1st lot of Steel Reinforcement | 15d | 2026-05-12 | 2026-06-01 | MKH2-02-003-PR-1010 | 17d |
| MKH2-02-003-PR-1030 |  | Material Delivery for 2nd lot of Steel Reinforcement | 15d | 2026-06-02 | 2026-06-18 | MKH2-02-003-PR-1020 | 17d |
|  | RMC | **READY MIX CONCRETE** |  | 2026-04-13 | 2026-05-23 |  |  |
| MKH2-02-003-PR-1040 |  | PO for Ready Mixed Concrete | 9d | 2026-04-13 | 2026-04-22 | MKH2-02-003-EN-1900 | 17d |
| MKH2-02-003-PR-1050 |  | Material Delivery for 1st lot of Ready Mixed Concrete | 26d | 2026-04-23 | 2026-05-23 | MKH2-02-003-PR-1040 | 17d |
|  | WP | **WATER PROOFING** |  | 2026-04-13 | 2026-06-10 |  |  |
| MKH2-02-003-PR-1060 |  | PO for Water Proofing | 6d | 2026-04-13 | 2026-04-19 | MKH2-02-003-EN-1920 | 19d |
| MKH2-02-003-PR-1070 |  | Material Fabrication for Water Proofing | 20d | 2026-04-20 | 2026-05-12 | MKH2-02-003-PR-1060 | 19d |

| ID | WBS | Task | Duration | Start | Finish | Predecessors | Total float |
| --- | --- | --- | --- | --- | --- | --- | --- |
| MKH2-02-003-PR-1080 |  | Material Delivery for 1st lot of Water Proofing | 22d | 2026-05-13 | 2026-06-10 | MKH2-02-003-PR-1070 | 19d |
|  | ABC | **AGGREGATE BASE COURSE** |  | 2026-04-13 | 2026-06-06 |  |  |
| MKH2-02-003-PR-1090 |  | PO for Aggregate Base Course | 4d | 2026-04-13 | 2026-04-16 | MKH2-02-003-EN-1940 | 17d |
| MKH2-02-003-PR-1100 |  | Material Delivery for 1st lot of Aggregate Base Course - Stage 1 | 20d | 2026-04-18 | 2026-05-10 | MKH2-02-003-PR-1090, MKH2-02-003-EN-1450, MKH2-02-003-EN-1410, MKH2-02-003-EN-1420, MKH2-02-003-EN-1430, MKH2-02-003-EN-1440 | 17d |
| MKH2-02-003-PR-1110 |  | Material Delivery for 2nd lot of Aggregate Base Course - Stage 2 | 20d | 2026-05-11 | 2026-06-06 | MKH2-02-003-PR-1100 | 17d |
|  | BBC& BWC | **BITUMINOUS BASE & WEARING COURSE** |  | 2026-04-13 | 2026-05-16 |  |  |
| MKH2-02-003-PR-1120 |  | PO for Bituminous Base & Wearing Cource | 4d | 2026-04-13 | 2026-04-16 | MKH2-02-003-EN-1960 | 11d |
| MKH2-02-003-PR-1130 |  | Material Delivery for 1st lot to the Site | 25d | 2026-04-18 | 2026-05-16 | MKH2-02-003-PR-1120 | 11d |
|  | CURB | **PRE-CAST CONCRETE CURBS** |  | 2026-04-13 | 2026-06-16 |  |  |
| MKH2-02-003-PR-1140 |  | PO for Precast Concrete curb | 4d | 2026-04-13 | 2026-04-16 | MKH2-02-003-EN-1980 | 9d |
| MKH2-02-003-PR-1150 |  | Material Fabrication for Precast Concrete curb | 24d | 2026-04-18 | 2026-05-14 | MKH2-02-003-PR-1140, MKH2-02-003-MS-1020, MKH2-02-003-EN-1450, MKH2-02-003-EN-1440, MKH2-02-003-EN-1430, MKH2-02-003-EN-1420, MKH2-02-003-EN-1410, MKH2-02-003-EN-1400, MKH2-02-003-EN-1390 | 9d |
| MKH2-02-003-PR-1160 |  | Material Delivery for 1st lot of Precast Concrete Kerb | 25d | 2026-05-16 | 2026-06-16 | MKH2-02-003-PR-1150 | 9d |
|  | INTR | **INTERLOCKING PAVING BLOCKS** |  | 2026-04-13 | 2026-06-14 |  |  |
| MKH2-02-003-PR-1170 |  | PO for Interlocking Block Pavers | 5d | 2026-04-13 | 2026-04-18 | MKH2-02-003-EN-2000 | 11d |
| MKH2-02-003-PR-1180 |  | Material Fabrication for Interlocking Block Pavers | 24d | 2026-04-19 | 2026-05-16 | MKH2-02-003-PR-1170 | 11d |
| MKH2-02-003-PR-1190 |  | Material Delivery for 1st lot of Interlocking Block Pavers | 22d | 2026-05-17 | 2026-06-14 | MKH2-02-003-PR-1180, MKH2-02-003-PR-1130 | 11d |
|  | MARK | **PAVEMENT MARKING** |  | 2026-04-13 | 2026-06-14 |  |  |
| MKH2-02-003-PR-1200 |  | PO for Pavement Markings | 5d | 2026-04-13 | 2026-04-18 | MKH2-02-003-EN-2020 | 11d |
| MKH2-02-003-PR-1210 |  | Material Fabrication for Pavement Markings | 24d | 2026-04-19 | 2026-05-16 | MKH2-02-003-PR-1200 | 11d |
| MKH2-02-003-PR-1220 |  | Material Delivery for 1st lot of Pavement Markings | 22d | 2026-05-17 | 2026-06-14 | MKH2-02-003-PR-1210 | 11d |
|  | SIGN | **TRAFFIC SIGNS** |  | 2026-04-13 | 2026-06-06 |  |  |
| MKH2-02-003-PR-1230 |  | PO for Traffic Signs | 6d | 2026-04-13 | 2026-04-19 | MKH2-02-003-EN-2040 | 17d |
| MKH2-02-003-PR-1240 |  | Material Fabrication for Traffic Signs | 24d | 2026-04-20 | 2026-05-17 | MKH2-02-003-PR-1230 | 17d |
| MKH2-02-003-PR-1250 |  | Material Delivery for 1st lot of Traffic Signs | 14d | 2026-05-18 | 2026-06-06 | MKH2-02-003-PR-1240 | 17d |
|  | ELE | **ELECTRICAL NETWORK** |  | 2026-04-13 | 2026-06-18 |  |  |
|  | PIPE | **PIPE FOR THE DUCTS** |  | 2026-04-13 | 2026-06-18 |  |  |
| MKH2-02-003-PR-1260 |  | PO for Pipe for Duct | 11d | 2026-04-13 | 2026-04-25 | MKH2-02-003-EN-2060, MKH2-02-003-EN-1500 | 17d |
| MKH2-02-003-PR-1270 |  | Material Fabrication for Pipe for Duct | 24d | 2026-04-26 | 2026-05-23 | MKH2-02-003-PR-1260 | 17d |
| MKH2-02-003-PR-1280 |  | Material Delivery for 1st lot of Pipe for Duct | 20d | 2026-05-24 | 2026-06-18 | MKH2-02-003-PR-1270 | 17d |
|  | EART | **EARTHING SYSTEM** |  | 2026-04-13 | 2026-06-18 |  |  |
| MKH2-02-003-PR-1290 |  | PO for Earthing System | 9d | 2026-04-13 | 2026-04-22 | MKH2-02-003-EN-2100 | 17d |
| MKH2-02-003-PR-1300 |  | Material Fabrication for Earthing System | 24d | 2026-04-23 | 2026-05-20 | MKH2-02-003-PR-1290 | 17d |
| MKH2-02-003-PR-1310 |  | Material Delivery for 1st lot of Earthing System | 22d | 2026-05-21 | 2026-06-18 | MKH2-02-003-PR-1300, MKH2-02-003-PR-1130 | 17d |
|  | CHAN | **OPEN CHANNEL** |  | 2026-04-15 | 2026-05-10 |  |  |
| MKH2-02-003-PR-1320 |  | PO for RIP-RAP Material & Its Acessories | 4d | 2026-04-15 | 2026-04-19 | MKH2-02-003-EN-2220, MKH2-02-003-EN-2200 | 23d |
| MKH2-02-003-PR-1330 |  | Material Delivery for RIP-RAP Material & Its Acessories | 18d | 2026-04-20 | 2026-05-10 | MKH2-02-003-PR-1320 | 23d |
|  | LLI | **LONG LEAD ITEM** |  | 2026-04-13 | 2026-08-16 |  |  |
|  | POW | **ELECTRICAL POWER** |  | 2026-04-13 | 2026-08-02 |  |  |
|  | 1 | **LV-CABLES** |  | 2026-04-13 | 2026-07-25 |  |  |
| MKH2-02-003-PR-1340 |  | PO for Low Voltage Cables | 6d | 2026-04-13 | 2026-04-19 | MKH2-02-003-EN-2080, MKH2-02-003-EN-1500 | 17d |
| MKH2-02-003-PR-1350 |  | Material Fabrication for Low Voltage Cables - Stage 1 | 9d | 2026-04-20 | 2026-04-29 | MKH2-02-003-PR-1340, MKH2-02-003-EN-1450 | 17d |
| MKH2-02-003-PR-1360 |  | Material Fabrication for Low Voltage Cables - Stage 2 | 20d | 2026-04-30 | 2026-05-23 | MKH2-02-003-PR-1350 | 17d |
| MKH2-02-003-PR-1370 |  | Material Fabrication for Low Voltage Cables - Stage 3 | 20d | 2026-05-24 | 2026-06-18 | MKH2-02-003-PR-1360, MKH2-02-003-PR-1330, MKH2-02-003-PR-1050 | 17d |
| MKH2-02-003-PR-1380 |  | Material Delivery for Low Voltage Cables 1st Lot | 22d | 2026-06-20 | 2026-07-14 | MKH2-02-003-PR-1370, MKH2-02-003-PR-1310, MKH2-02-003-PR-1280, MKH2-02-003-PR-1250, MKH2-02-003-PR-1220, MKH2-02-003-PR-1190, MKH2-02-003-PR-1160, MKH2-02-003-PR-1050, MKH2-02-003-PR-1030 | 17d |
| MKH2-02-003-PR-1390 |  | Staging Time for Low Voltage Cables | 9d | 2026-07-15 | 2026-07-25 | MKH2-02-003-PR-1380, MKH2-02-003-PR-1310 | 17d |
|  | 2 | **LV-DISTRIBUTION PANNELS** |  | 2026-04-13 | 2026-08-02 |  |  |
| MKH2-02-003-PR-1400 |  | PO for Low Voltage Distribution Panels | 5d | 2026-04-13 | 2026-04-18 | MKH2-02-003-EN-2120, MKH2-02-003-EN-5030, MKH2-02-003-EN-5050, MKH2-02-003-EN-5060, MKH2-02-003-EN-5070, MKH2-02-003-EN-5080, MKH2-02-003-EN-5090 | 18d |
| MKH2-02-003-PR-1410 |  | Material Fabrication for Low Voltage Distribution Panels - Stage 1 | 17d | 2026-04-19 | 2026-05-07 | MKH2-02-003-PR-1400 | 18d |
| MKH2-02-003-PR-1420 |  | Material Fabrication for Low Voltage Distribution Panels - Stage 2 | 16d | 2026-05-09 | 2026-05-30 | MKH2-02-003-PR-1410 | 18d |
| MKH2-02-003-PR-1430 |  | Material Fabrication for Low Voltage Distribution Panels - Stage 3 | 16d | 2026-05-31 | 2026-06-17 | MKH2-02-003-PR-1420 | 18d |
| MKH2-02-003-PR-1440 |  | Material Delivery for Low Voltage Distribution Panels 1st Lot | 22d | 2026-06-18 | 2026-07-13 | MKH2-02-003-PR-1430, MKH2-02-003-PR-1220 | 18d |
| MKH2-02-003-PR-1450 |  | Material Delivery for Low Voltage Distribution Panels 2nd Lot | 8d | 2026-07-14 | 2026-07-22 | MKH2-02-003-PR-1440 | 18d |
| MKH2-02-003-PR-1460 |  | Staging Time for LV Distribution pannel | 9d | 2026-07-23 | 2026-08-02 | MKH2-02-003-PR-1450, MKH2-02-003-PR-1440 | 18d |
|  | LIGH1 | **STREET LIGHTING** |  | 2026-04-13 | 2026-08-16 |  |  |
|  | POL | **POLES** |  | 2026-04-13 | 2026-08-02 |  |  |
| MKH2-02-003-PR-1470 |  | PO for Lighting poles single arm & double arm | 4d | 2026-04-13 | 2026-04-16 | MKH2-02-003-EN-2140 | 18d |
| MKH2-02-003-PR-1480 |  | Material Fabrication for Lighting poles - Stage 1 | 9d | 2026-04-18 | 2026-04-27 | MKH2-02-003-PR-1470 | 18d |
| MKH2-02-003-PR-1490 |  | Material Fabrication for Lighting poles - Stage 2 | 20d | 2026-04-28 | 2026-05-20 | MKH2-02-003-PR-1480 | 18d |
| MKH2-02-003-PR-1500 |  | Material Fabrication for Lighting poles - Stage 3 | 20d | 2026-05-21 | 2026-06-16 | MKH2-02-003-PR-1490 | 18d |
| MKH2-02-003-PR-1510 |  | Material Delivery for Lighting poles 1st lot | 22d | 2026-06-17 | 2026-07-12 | MKH2-02-003-PR-1500 | 18d |
| MKH2-02-003-PR-1520 |  | Material Delivery for Lighting poles 2nd lot | 9d | 2026-07-13 | 2026-07-22 | MKH2-02-003-PR-1510 | 18d |
| MKH2-02-003-PR-1530 |  | Staging Time for Street Light poles | 9d | 2026-07-23 | 2026-08-02 | MKH2-02-003-PR-1510, MKH2-02-003-PR-1520 | 18d |
|  | PANN | **PANNELS & FEEDER PILLERS** |  | 2026-04-13 | 2026-08-12 |  |  |
| MKH2-02-003-PR-1540 |  | PO for Lighting Panels/Feeder Pillers | 3d | 2026-04-13 | 2026-04-15 | MKH2-02-003-EN-2160, MKH2-02-003-EN-2200 | 18d |
| MKH2-02-003-PR-1550 |  | Material Fabrication for Lighting Panels/Feeder Pillers - Stage 1 | 20d | 2026-04-16 | 2026-05-09 | MKH2-02-003-PR-1540 | 18d |
| MKH2-02-003-PR-1560 |  | Material Fabrication for Lighting Panels/Feeder Pillers - Stage 2 | 20d | 2026-05-10 | 2026-06-04 | MKH2-02-003-PR-1550 | 18d |
| MKH2-02-003-PR-1570 |  | Material Fabrication for Lighting Panels/Feeder Pillers - Stage 3 | 20d | 2026-06-06 | 2026-06-28 | MKH2-02-003-PR-1560 | 18d |
| MKH2-02-003-PR-1580 |  | Material Delivery for Lighting Panels/Feeder Pillers 1st lot | 22d | 2026-06-29 | 2026-07-23 | MKH2-02-003-PR-1570 | 18d |
| MKH2-02-003-PR-1590 |  | Material Delivery for Lighting Panels/Feeder Pillers 2nd lot | 8d | 2026-07-25 | 2026-08-02 | MKH2-02-003-PR-1580 | 18d |
| MKH2-02-003-PR-1600 |  | Staging Time for Lighting Panels/Feeder Pillers | 9d | 2026-08-03 | 2026-08-12 | MKH2-02-003-PR-1590, MKH2-02-003-PR-1530, MKH2-02-003-PR-1460 | 18d |

| ID | WBS | Task | Duration | Start | Finish | Predecessors | Total float |
| --- | --- | --- | --- | --- | --- | --- | --- |
|  | LUM | **LUMINAIRE** |  | 2026-04-13 | 2026-08-16 |  |  |
| MKH2-02-003-PR-1610 |  | PO for Street Lighting Luminaire | 6d | 2026-04-13 | 2026-04-19 | MKH2-02-003-EN-2180 | 15d |
| MKH2-02-003-PR-1620 |  | Material Fabrication for Street Lighting Luminaire - Stage 1 | 20d | 2026-04-20 | 2026-05-12 | MKH2-02-003-PR-1610 | 15d |
| MKH2-02-003-PR-1630 |  | Material Fabrication for Street Lighting Luminaire - Stage 2 | 20d | 2026-05-13 | 2026-06-08 | MKH2-02-003-PR-1620 | 15d |
| MKH2-02-003-PR-1640 |  | Material Fabrication for Street Lighting Luminaire - Stage 3 | 20d | 2026-06-09 | 2026-07-01 | MKH2-02-003-PR-1630, MKH2-02-003-PR-1250, MKH2-02-003-PR-1110 | 15d |
| MKH2-02-003-PR-1650 |  | Material Delivery for Street Lighting Luminaire 1st lot | 22d | 2026-07-02 | 2026-07-27 | MKH2-02-003-PR-1640 | 15d |
| MKH2-02-003-PR-1660 |  | Material Delivery for Street Lighting Luminaire 2nd lot | 8d | 2026-07-28 | 2026-08-05 | MKH2-02-003-PR-1650, MKH2-02-003-PR-1390 | 15d |
| MKH2-02-003-PR-1670 |  | Staging Time for Street Lighting Luminaire | 9d | 2026-08-06 | 2026-08-16 | MKH2-02-003-PR-1660 | 15d |
|  | CONST | **CONSTRUCTION PHASE** |  | 2026-03-26 | 2027-06-14 |  |  |
|  | ROD | **ROADS** |  | 2026-03-26 | 2027-06-07 |  |  |
|  | ART-03 | **ARTERIAL-03 (2+510 to 4+267.54)** |  | 2026-03-26 | 2027-03-15 |  |  |
|  | BOX-1 | **Box Culvert - 1** |  | 2026-03-26 | 2026-07-05 |  |  |
| MKH2-02-003-CN-2030 |  | Excavation in (all types of soil) including all the required backfilling [Road-1 -ARTERIAL-03 (2+510 to 4+267.54) ] | 21d | 2026-03-26 | 2026-04-19 | MKH2-02-003-MB-1320, MKH2-02-003-MB-1080, MKH2-02-003-MB-1070, MKH2-02-003-EN-1310, MKH2-02-003-EN-1320, MKH2-02-003-EN-1330, MKH2-02-003-EN-1340, MKH2-02-003-EN-5040, MKH2-02-003-MB-1040 | 0d |
| MKH2-02-003-CN-2050 |  | Plain Concrete for box culvert [Road-1 -ARTERIAL-03 (2+510 to 4+267.54) ] | 21d | 2026-04-20 | 2026-05-13 | MKH2-02-003-CN-2030, MKH2-02-003-EN-5120, MKH2-02-003-EN-5110, MKH2-02-003-EN-5100 | 19d |
| MKH2-02-003-CN-2070 |  | Steel Reinforcement for box culverts as per drawings and the Engineer's instructions [Road-1 -ARTERIAL-03 (2+510 to 4+26 | 21d | 2026-05-14 | 2026-06-10 | MKH2-02-003-CN-2050, MKH2-02-003-PR-1020 SS | 19d |
| MKH2-02-003-CN-2080 |  | Concrete for box culvert including bitumenous coating (Steel Reinforcement is measured separately) [Road-1 -ARTERIAL-03 | 21d | 2026-06-11 | 2026-07-05 | MKH2-02-003-CN-2070, MKH2-02-003-PR-1050, MKH2-02-003-PR-1080, MKH2-02-003-PR-1110, MKH2-02-003-EN-5090 | 19d |
|  | ART03 RD | **ARTERIAL-03-ROAD** |  | 2026-04-20 | 2027-03-15 |  |  |
|  | 2 | **ROADS & ROUNDABOUT** |  | 2026-04-20 | 2027-03-15 |  |  |
|  | 2 | **EARTHWORKS & SITE GRADING** |  | 2026-04-20 | 2026-08-08 |  |  |
| MKH2-02-003-CN-1050 |  | Roadway Excavation for cuttings ARTERIAL-03 Stage-1 | 15d | 2026-04-20 | 2026-05-06 | MKH2-02-003-CN-2030, MKH2-02-003-EN-1300, MKH2-02-003-EN-1310, MKH2-02-003-EN-1320, MKH2-02-003-EN-1330, MKH2-02-003-EN-1340, MKH2-02-003-EN-1350, MKH2-02-003-EN-1360, MKH2-02-003-EN-1370, MKH2-02-003-EN-1380 | 0d |
| MKH2-02-003-CN-1060 |  | Roadway Excavation for cuttings ARTERIAL-03 Stage-2 | 15d | 2026-05-07 | 2026-05-24 | MKH2-02-003-CN-1050 | 0d |
| MKH2-02-003-CN-1070 |  | Roadway Excavation for cuttings ARTERIAL-03 Stage-3 | 15d | 2026-05-25 | 2026-06-14 | MKH2-02-003-CN-1060, MKH2-02-003-PR-1330 | 11d |
| MKH2-02-003-CN-1080 |  | Roadway Excavation for cuttings ARTERIAL-03 Stage-4 | 15d | 2026-06-17 | 2026-07-04 | MKH2-02-003-CN-1070, MKH2-02-003-PR-1220, MKH2-02-003-PR-1190, MKH2-02-003-PR-1160 | 9d |
| MKH2-02-003-CN-1150 |  | Embankments -ARTERIAL-03 | 15d | 2026-07-05 | 2026-07-21 | MKH2-02-003-CN-1080 | 9d |
| MKH2-02-003-CN-1200 |  | Subgrade for ARTERIAL-03 | 15d | 2026-07-22 | 2026-08-08 | MKH2-02-003-CN-1150, MKH2-02-003-CN-2080 | 9d |
|  | 1 | **ASPHALT WORKS** |  | 2026-08-09 | 2027-01-07 |  |  |
| MKH2-02-003-CN-1250 |  | Aggregate base course at ARTERIAL-03 | 20d | 2026-08-09 | 2026-08-31 | MKH2-02-003-CN-1200, MKH2-02-003-PR-1110 | 21d |
| MKH2-02-003-CN-1300 |  | Prime Coat (MC1) ARTERIAL-03 | 14d | 2026-09-01 | 2026-09-16 | MKH2-02-003-CN-1250, MKH2-02-003-PR-1670, MKH2-02-003-PR-1600, MKH2-02-003-MS-1030 | 21d |
| MKH2-02-003-CN-1350 |  | Bituminous base course for ARTERIAL-03 | 21d | 2026-09-17 | 2026-10-12 | MKH2-02-003-CN-1300, MKH2-02-003-EN-5050 | 21d |
| MKH2-02-003-CN-1400 |  | Tack coat at ARTERIAL-03 | 21d | 2026-11-21 | 2026-12-14 | MKH2-02-003-CN-1350, MKH2-02-003-CN-1690, MKH2-02-003-CN-1720 | 16d |
| MKH2-02-003-CN-1450 |  | Bituminous concrete wearing course, ARTERIAL-03 | 21d | 2026-12-15 | 2027-01-07 | MKH2-02-003-CN-1400, MKH2-02-003-PR-1130 | 17d |
|  | FINIS | **FINISHING WORKS** |  | 2027-01-09 | 2027-03-15 |  |  |
| MKH2-02-003-CN-1500 |  | Installation of Precast Concrete curb at ARTERIAL-03 | 16d | 2027-01-09 | 2027-01-26 | MKH2-02-003-PR-1160, MKH2-02-003-CN-1450 | 17d |
| MKH2-02-003-CN-1540 |  | 60mm thick - Interlocking block pavers for sidewalk/footpath ARTERIAL-03 | 17d | 2027-01-27 | 2027-02-15 | MKH2-02-003-CN-1500, MKH2-02-003-PR-1190 | 17d |
| MKH2-02-003-CN-1580 |  | Pavement markings [Road-1 -ARTERIAL-03 (2+510 to 4+267.54) ] | 10d | 2027-02-16 | 2027-02-28 | MKH2-02-003-CN-1540, MKH2-02-003-PR-1220, MKH2-02-003-EN-5070 | 17d |
| MKH2-02-003-CN-1630 |  | Installation of Traffic Signs [Road-1 -ARTERIAL-03 (2+510 to 4+267.54) ] | 10d | 2027-03-01 | 2027-03-15 | MKH2-02-003-CN-1580, MKH2-02-003-PR-1250, MKH2-02-003-EN-5060 | 17d |
|  | 1 | **ELECTRICAL** |  | 2026-08-09 | 2027-01-14 |  |  |
|  | 2 | **LV NETWORKS** |  | 2026-08-09 | 2026-11-26 |  |  |
| MKH2-02-003-CN-1890 |  | Installation of Road Crossing Ducts 2 ways at ARTERIAL-03 | 14d | 2026-08-09 | 2026-08-24 | MKH2-02-003-CN-1200, MKH2-02-003-EN-5100 | 9d |
| MKH2-02-003-CN-1920 |  | Installation of Road Crossing Ducts 4 ways at ARTERIAL-03 | 15d | 2026-08-25 | 2026-09-10 | MKH2-02-003-CN-1890, MKH2-02-003-PR-1670, MKH2-02-003-PR-1600, MKH2-02-003-MS-1030, MKH2-02-003-MS-1030 FF, MKH2-02-003-PR-1600 FF | 17d |
| MKH2-02-003-CN-1940 |  | Installation of Road Crossing Ducts 6 ways at ARTERIAL-03 | 14d | 2026-09-12 | 2026-09-28 | MKH2-02-003-CN-1920, MKH2-02-003-PR-1280 SS | 17d |
| MKH2-02-003-CN-1950 |  | Drawpit with medium duty steel cover for ARTERIAL-3 Road size600x600x1000mm | 16d | 2026-09-29 | 2026-10-17 | MKH2-02-003-CN-1940 | 17d |
| MKH2-02-003-CN-1970 |  | Drawpit with medium duty steel cover, for ARTERIAL-3 Road size 900x900x1200mm | 15d | 2026-10-18 | 2026-11-03 | MKH2-02-003-CN-1920, MKH2-02-003-CN-1940, MKH2-02-003-CN-1950, MKH2-02-003-CN-1350 | 17d |
| MKH2-02-003-CN-2000 |  | Feeder pillars [Road-1 -ARTERIAL-03 (2+510 to 4+267.54) ] | 12d | 2026-11-04 | 2026-11-17 | MKH2-02-003-CN-1970 | 17d |
| MKH2-02-003-CN-2010 |  | Street Lighting panels [Road-1 -ARTERIAL-03 (2+510 to 4+267.54) ] | 8d | 2026-11-18 | 2026-11-26 | MKH2-02-003-CN-2000 | 17d |
|  | 1 | **LV CABLES** |  | 2026-08-25 | 2026-11-19 |  |  |
| MKH2-02-003-CN-1690 |  | Installation of Low Voltage Cables -ARTERIAL-03 Stage-1 | 21d | 2026-08-25 | 2026-09-17 | MKH2-02-003-PR-1390, MKH2-02-003-EN-1390, MKH2-02-003-CN-1890, MKH2-02-003-EN-5110 | 9d |
| MKH2-02-003-CN-1700 |  | Installation of Low Voltage Cables -ARTERIAL-03 Stage-2 | 21d | 2026-09-19 | 2026-10-13 | MKH2-02-003-CN-1690, MKH2-02-003-PR-1600 | 9d |
| MKH2-02-003-CN-1710 |  | Installation of Low Voltage Cables -ARTERIAL-03 Stage-3 | 16d | 2026-10-14 | 2026-11-01 | MKH2-02-003-CN-1700, MKH2-02-003-PR-1460 | 9d |
| MKH2-02-003-CN-1720 |  | Installation of Low Voltage Cables -ARTERIAL-03 Stage-4 | 16d | 2026-11-02 | 2026-11-19 | MKH2-02-003-CN-1710 | 9d |
|  | 3 | **STREET LIGHTING NETWORK INCLUDING ALL** |  | 2026-11-21 | 2026-12-31 |  |  |
| MKH2-02-003-CN-1770 |  | Installation of Lighting Poles 2-Arms ARTERIAL-03 | 18d | 2026-11-21 | 2026-12-10 | MKH2-02-003-CN-1720, MKH2-02-003-PR-1530, MKH2-02-003-EN-1400, MKH2-02-003-EN-1420, MKH2-02-003-EN-1430, MKH2-02-003-EN-1440, MKH2-02-003-EN-1450, MKH2-02-003-EN-5120 | 9d |
| MKH2-02-003-CN-1810 |  | Installation of Lighting Luminaires for 2-Arms ARTERIAL-03 | 18d | 2026-12-12 | 2026-12-31 | MKH2-02-003-CN-1770, MKH2-02-003-PR-1670 | 9d |
|  | 4 | **EARTHING** |  | 2027-01-02 | 2027-01-14 |  |  |
| MKH2-02-003-CN-1850 |  | Installation of Earthing System for ARTERIAL-03 | 12d | 2027-01-02 | 2027-01-14 | MKH2-02-003-CN-1810, MKH2-02-003-PR-1310, MKH2-02-003-EN-1410 | 12d |
|  | ART-04 | **ARTERIAL-04 (0+000 to 1+0.83)** |  | 2026-05-25 | 2027-05-06 |  |  |
|  | BOX-2 | **Box Culvert - 2** |  | 2026-05-25 | 2026-08-31 |  |  |
| MKH2-02-003-CN-2040 |  | Excavation in (all types of soil) including all the required backfilling [Road-2 -ARTERIAL-04 (0+000 to 1+083) ] | 21d | 2026-05-25 | 2026-06-21 | MKH2-02-003-CN-1060 | 0d |
| MKH2-02-003-CN-2060 |  | Plain Concrete for box culvert [Road-2 -ARTERIAL-04 (0+000 to 1+083) ] | 20d | 2026-06-22 | 2026-07-14 | MKH2-02-003-CN-2040 | 11d |
| MKH2-02-003-CN-2090 |  | Steel Reinforcement for box culverts as per drawings and the Engineer's instructions [Road-1 -ARTERIAL-03 (2+510 to 4+26 | 21d | 2026-07-15 | 2026-08-08 | MKH2-02-003-CN-2060, MKH2-02-003-CN-2080 | 11d |
| MKH2-02-003-CN-2120 |  | Concrete for box culvert including bitumenous coating (Steel Reinforcement is measured separately) [Road-2 -ARTERIAL-04 | 20d | 2026-08-09 | 2026-08-31 | MKH2-02-003-CN-2090 | 11d |
|  | ART04 RD | **ARTERIAL-04-ROAD** |  | 2026-06-22 | 2027-05-06 |  |  |
|  | 3 | **ROADS** |  | 2026-06-22 | 2027-03-14 |  |  |
|  | 3 | **EARTHWORKS & SITE GRADING** |  | 2026-06-22 | 2026-09-20 |  |  |
| MKH2-02-003-CN-1090 |  | Roadway Excavation for cuttings ARTERIAL-04 Stage-1 | 20d | 2026-06-22 | 2026-07-14 | MKH2-02-003-CN-2040 | 9d |
| MKH2-02-003-CN-1100 |  | Roadway Excavation for cuttings ARTERIAL-04 Stage-2 | 20d | 2026-07-15 | 2026-08-06 | MKH2-02-003-CN-1090 | 11d |
| MKH2-02-003-CN-1160 |  | Embankments -ARTERIAL-04 | 18d | 2026-08-08 | 2026-08-27 | MKH2-02-003-CN-1100 | 11d |
| MKH2-02-003-CN-1210 |  | Subgrade for ARTERIAL-04 | 20d | 2026-08-29 | 2026-09-20 | MKH2-02-003-CN-1160 | 11d |
|  | 2 | **ASPHALT WORKS** |  | 2026-09-21 | 2027-01-23 |  |  |
| MKH2-02-003-CN-1260 |  | Aggregate base course at ARTERIAL-04 | 16d | 2026-09-21 | 2026-10-10 | MKH2-02-003-CN-1210 | 23d |

| ID | WBS | Task | Duration | Start | Finish | Predecessors | Total float |
| --- | --- | --- | --- | --- | --- | --- | --- |
| MKH2-02-003-CN-1310 |  | Prime Coat (MC1) ARTERIAL-04 | 15d | 2026-10-11 | 2026-10-27 | MKH2-02-003-CN-1260 | 23d |
| MKH2-02-003-CN-1360 |  | Bituminous base course for ARTERIAL-04 | 20d | 2026-10-28 | 2026-11-19 | MKH2-02-003-CN-1310 | 23d |
| MKH2-02-003-CN-1410 |  | Tack coat at ARTERIAL-04 | 14d | 2026-12-15 | 2026-12-30 | MKH2-02-003-CN-1360, MKH2-02-003-CN-1400 | 16d |
| MKH2-02-003-CN-1460 |  | Bituminous concrete wearing course, ARTERIAL-04 | 20d | 2026-12-31 | 2027-01-23 | MKH2-02-003-CN-1410 | 16d |
|  | 1 | **FINISHING WORKS** |  | 2027-01-24 | 2027-03-14 |  |  |
| MKH2-02-003-CN-1510 |  | Installation of Precast Concrete curb at ARTERIAL-04 | 8d | 2027-01-24 | 2027-02-01 | MKH2-02-003-CN-1400, MKH2-02-003-CN-1460 | 16d |
| MKH2-02-003-CN-1550 |  | 60mm thick - Interlocking block pavers for sidewalk/footpath ARTERIAL-04 | 12d | 2027-02-02 | 2027-02-15 | MKH2-02-003-CN-1510 | 16d |
| MKH2-02-003-CN-1590 |  | Pavement markings [Road-2 -ARTERIAL-04 (0+000 to 1+083) ] | 9d | 2027-02-16 | 2027-02-27 | MKH2-02-003-CN-1550 | 23d |
| MKH2-02-003-CN-1640 |  | Installation of Traffic Signs [Road-2 -ARTERIAL-04 (0+000 to 1+083) ] | 10d | 2027-02-28 | 2027-03-14 | MKH2-02-003-CN-1590 | 23d |
|  | 6 | **ELECTRICAL WORKS (MKH2-01-007-DAR-TS8-0-SL-DWG-1010-00)** |  | 2026-09-21 | 2027-05-06 |  |  |
|  | 2 | **LV NETWORKS** |  | 2026-09-21 | 2027-02-07 |  |  |
| MKH2-02-003-CN-1900 |  | Installation of Road Crossing Ducts 2 ways at ARTERIAL-04 Stage-1 | 21d | 2026-09-21 | 2026-10-15 | MKH2-02-003-CN-1210, MKH2-02-003-CN-2120 | 11d |
| MKH2-02-003-CN-1910 |  | Installation of Road Crossing Ducts 2 ways at ARTERIAL-04 Stage-2 | 21d | 2026-10-17 | 2026-11-09 | MKH2-02-003-CN-1900 | 11d |
| MKH2-02-003-CN-1930 |  | Installation of Road Crossing Ducts 4 ways at ARTERIAL-04 | 21d | 2026-11-10 | 2026-12-03 | MKH2-02-003-CN-1910 | 11d |
| MKH2-02-003-CN-1960 |  | Drawpit with medium duty steel cover for ARTERIAL-4 Road size600x600x1000mm | 11d | 2026-12-05 | 2026-12-16 | MKH2-02-003-CN-1930, MKH2-02-003-CN-2010, MKH2-02-003-CN-1360 | 11d |
| MKH2-02-003-CN-1980 |  | Drawpit with medium duty steel cover, for ARTERIAL-4 Road size 900x900x1200mm | 11d | 2026-12-17 | 2026-12-29 | MKH2-02-003-CN-1930, MKH2-02-003-CN-1960, MKH2-02-003-MS-1040 | 11d |
| MKH2-02-003-CN-1990 |  | Street Lighting panels [Road-2 -ARTERIAL-04 (0+000 to 1+083) ] | 18d | 2027-01-02 | 2027-01-21 | MKH2-02-003-CN-1980, MKH2-02-003-CN-1810 | 9d |
| MKH2-02-003-CN-2020 |  | Supply and installation of KWH meter mounting frame including concrete block for installation of KWH meter according to | 14d | 2027-01-23 | 2027-02-07 | MKH2-02-003-CN-1990 | 9d |
|  | 1 | **LV CABLES** |  | 2027-02-08 | 2027-03-09 |  |  |
| MKH2-02-003-CN-1730 |  | Installation of Low Voltage Cables -ARTERIAL-04 Stage-1 | 12d | 2027-02-08 | 2027-02-21 | MKH2-02-003-CN-2020 | 9d |
| MKH2-02-003-CN-1740 |  | Installation of Low Voltage Cables -ARTERIAL-04 Stage-2 | 13d | 2027-02-23 | 2027-03-09 | MKH2-02-003-CN-1730 | 9d |
|  | 3 | **STREET LIGHTING NETWORK INCLUDING ALL** |  | 2027-03-14 | 2027-04-13 |  |  |
| MKH2-02-003-CN-1780 |  | Installation of Lighting Poles 2-Arms ARTERIAL-04 | 15d | 2027-03-14 | 2027-03-30 | MKH2-02-003-CN-1740 | 9d |
| MKH2-02-003-CN-1820 |  | Installation of Lighting Luminaires for 2-Arms ARTERIAL-04 | 12d | 2027-03-31 | 2027-04-13 | MKH2-02-003-CN-1780, MKH2-02-003-CN-1640 | 9d |
|  | 4 | **EARTHING** |  | 2027-04-14 | 2027-05-06 |  |  |
| MKH2-02-003-CN-1860 |  | Installation of Earthing System for ARTERIAL-04 | 20d | 2027-04-14 | 2027-05-06 | MKH2-02-003-CN-1820 | 9d |
|  | 5 | **CONNECTION TO 5th RING ROAD (IF-0+000 to 1+258)** |  | 2026-07-15 | 2027-06-07 |  |  |
|  | RING | **EARTHWORKS & SITE GRADING** |  | 2026-07-15 | 2026-10-21 |  |  |
| MKH2-02-003-CN-1130 |  | Roadway Excavation for cuttings Connecting to 5th Ring road stage-1 | 21d | 2026-07-15 | 2026-08-08 | MKH2-02-003-CN-1090 | 9d |
| MKH2-02-003-CN-1140 |  | Roadway Excavation for cuttings Connecting to 5th Ring road stage-2 | 21d | 2026-08-09 | 2026-09-01 | MKH2-02-003-CN-1130 | 10d |
| MKH2-02-003-CN-1190 |  | Embankments -to Road connecting roat to 5th Ring road | 21d | 2026-09-02 | 2026-09-27 | MKH2-02-003-CN-1140, MKH2-02-003-CN-2120 | 10d |
| MKH2-02-003-CN-1240 |  | Subgrade for Connecting Road to RING ROAD-5 | 21d | 2026-09-28 | 2026-10-21 | MKH2-02-003-CN-1190 | 10d |
|  | ROAD | **ASPHALT WORKS** |  | 2026-10-22 | 2027-04-10 |  |  |
| MKH2-02-003-CN-1290 |  | Aggregate base course at to Road connecting roat to 5th Ring road | 18d | 2026-10-22 | 2026-11-11 | MKH2-02-003-CN-1240 | 10d |
| MKH2-02-003-CN-1340 |  | Prime Coat (MC1) to Road connecting roat to 5th Ring road | 12d | 2026-11-12 | 2026-11-25 | MKH2-02-003-CN-1290 | 10d |
| MKH2-02-003-CN-1390 |  | Bituminous base course to Road connecting roat to 5th Ring road | 16d | 2026-11-26 | 2026-12-14 | MKH2-02-003-CN-1340 | 10d |
| MKH2-02-003-CN-1440 |  | Tack coat at to Road connecting roat to 5th Ring road | 21d | 2027-02-16 | 2027-03-16 | MKH2-02-003-CN-1390, MKH2-02-003-CN-1410, MKH2-02-003-CN-1460, MKH2-02-003-CN-1550 | 16d |
| MKH2-02-003-CN-1490 |  | Bituminous concrete wearing course, to Road connecting roat to 5th Ring road | 21d | 2027-03-17 | 2027-04-10 | MKH2-02-003-CN-1440, MKH2-02-003-CN-1460, MKH2-02-003-CN-1630 | 16d |
|  | 5 FIN | **FINISHING WORKS** |  | 2027-04-11 | 2027-06-07 |  |  |
| MKH2-02-003-CN-1620 |  | Pavement markings [Road-5 -CONNECTION TO 5th RING ROAD (IF-0+000 to 1+258) ] | 16d | 2027-04-11 | 2027-04-28 | MKH2-02-003-CN-1490 | 16d |
| MKH2-02-003-CN-1670 |  | Installation of Traffic Signs [Road-5 -CONNECTION TO 5th RING ROAD (IF-0+000 to 1+258) ] | 16d | 2027-04-29 | 2027-05-20 | MKH2-02-003-CN-1620 | 16d |
| MKH2-02-003-CN-1680 |  | Installation of Traffic Signs [Road-5 -CONNECTION TO 5th RING ROAD (IF-0+000 to 1+258) ] | 15d | 2027-05-22 | 2027-06-07 | MKH2-02-003-CN-1620, MKH2-02-003-CN-1670 | 16d |
|  | 3 | **RAMP-2-IN (0+000 to 0+400)** |  | 2026-08-09 | 2027-05-04 |  |  |
|  | 3 | **ROADS** |  | 2026-08-09 | 2027-02-14 |  |  |
|  | 1 | **EARTHWORKS & SITE GRADING** |  | 2026-08-09 | 2026-10-13 |  |  |
| MKH2-02-003-CN-1110 |  | Roadway Excavation for cuttings RAMP-2-IN | 21d | 2026-08-09 | 2026-09-01 | MKH2-02-003-CN-1130 | 9d |
| MKH2-02-003-CN-1170 |  | Embankments -RAMP-02-IN | 14d | 2026-09-02 | 2026-09-17 | MKH2-02-003-CN-1110 | 9d |
| MKH2-02-003-CN-1220 |  | Subgrade for RAMP-2 IN | 21d | 2026-09-19 | 2026-10-13 | MKH2-02-003-CN-1170 | 9d |
|  | 2 | **ASPHALT WORKS** |  | 2026-10-14 | 2027-01-23 |  |  |
| MKH2-02-003-CN-1270 |  | Aggregate base course at RAMP-IN | 20d | 2026-10-14 | 2026-11-05 | MKH2-02-003-CN-1220 | 9d |
| MKH2-02-003-CN-1320 |  | Prime Coat (MC1) RAMP-02- IN | 14d | 2026-11-07 | 2026-11-22 | MKH2-02-003-CN-1270 | 9d |
| MKH2-02-003-CN-1370 |  | Bituminous base course for RAMP-02 IN | 15d | 2026-11-23 | 2026-12-09 | MKH2-02-003-CN-1320 | 9d |
| MKH2-02-003-CN-1420 |  | Tack coat at RAMP-2-IN | 14d | 2026-12-15 | 2026-12-30 | MKH2-02-003-CN-1370, MKH2-02-003-CN-1390 | 10d |
| MKH2-02-003-CN-1470 |  | Bituminous concrete wearing course, RAMP-2-IN | 20d | 2026-12-31 | 2027-01-23 | MKH2-02-003-CN-1420 | 11d |
|  | FIN | **FINISHING WORKS** |  | 2026-12-10 | 2027-02-14 |  |  |
| MKH2-02-003-CN-1520 |  | Installation of Precast Concrete curb at RAMP-2-IN | 14d | 2026-12-10 | 2026-12-26 | MKH2-02-003-CN-1370 | 9d |
| MKH2-02-003-CN-1560 |  | 60mm thick - Interlocking block pavers for sidewalk/footpath RAMP-2-IN | 14d | 2026-12-27 | 2027-01-11 | MKH2-02-003-CN-1520 | 9d |
| MKH2-02-003-CN-1600 |  | Pavement markings [Road-3 -RAMP-2-IN (0+000 to 0+400) ] | 14d | 2027-01-12 | 2027-01-27 | MKH2-02-003-CN-1560 | 9d |
| MKH2-02-003-CN-1650 |  | Installation of Traffic Signs [Road-3 -RAMP-2-IN (0+000 to 0+400) ] | 15d | 2027-01-28 | 2027-02-14 | MKH2-02-003-CN-1600 | 9d |
|  | 4 | **ELECTRICAL WORKS (MKH2-01-007-DAR-TS8-0-SL-DWG-1010-00)** |  | 2027-01-24 | 2027-05-04 |  |  |
|  | 1 | **LV CABLES** |  | 2027-01-24 | 2027-02-16 |  |  |
| MKH2-02-003-CN-1750 |  | Installation of Low Voltage Cables -RAMP-2 in | 21d | 2027-01-24 | 2027-02-16 | MKH2-02-003-CN-1220, MKH2-02-003-CN-1370, MKH2-02-003-CN-1470 | 11d |
|  | 3 | **STREET LIGHTING NETWORK INCLUDING ALL** |  | 2027-02-17 | 2027-04-10 |  |  |
| MKH2-02-003-CN-1790 |  | Installation of Lighting Poles 1-Arms In RAMP-2 IN | 21d | 2027-02-17 | 2027-03-17 | MKH2-02-003-CN-1750 | 11d |
| MKH2-02-003-CN-1830 |  | Installation of Lighting Luminaires for 1-Arms RAMP-02 IN | 20d | 2027-03-18 | 2027-04-10 | MKH2-02-003-CN-1790 | 11d |
|  | 4 | **EARTHING** |  | 2027-04-11 | 2027-05-04 |  |  |
| MKH2-02-003-CN-1870 |  | Installation of Earthing System for RAMP-02 IN | 21d | 2027-04-11 | 2027-05-04 | MKH2-02-003-CN-1830, MKH2-02-003-CN-1630 | 11d |
|  | 4 | **RAMP-2-OUT (0+398 to 0+000)** |  | 2026-09-02 | 2027-03-18 |  |  |
|  | 3 | **ROADS** |  | 2026-09-02 | 2027-03-18 |  |  |
|  | 1 | **EARTHWORKS & SITE GRADING** |  | 2026-09-02 | 2026-10-22 |  |  |

| ID | WBS | Task | Duration | Start | Finish | Predecessors | Total float |
| --- | --- | --- | --- | --- | --- | --- | --- |
| MKH2-02-003-CN-1120 |  | Roadway Excavation for cuttings RAMP-2-out | 14d | 2026-09-02 | 2026-09-17 | MKH2-02-003-CN-1110 | 13d |
| MKH2-02-003-CN-1180 |  | Embankments -RAMP-02-out | 14d | 2026-09-19 | 2026-10-05 | MKH2-02-003-CN-1120 | 13d |
| MKH2-02-003-CN-1230 |  | Subgrade for RAMP-2 OUT | 15d | 2026-10-06 | 2026-10-22 | MKH2-02-003-CN-1180 | 13d |
|  | 2 | **ASPHALT WORKS** |  | 2026-10-24 | 2027-02-08 |  |  |
| MKH2-02-003-CN-1280 |  | Aggregate base course at RAMP-OUT | 16d | 2026-10-24 | 2026-11-10 | MKH2-02-003-CN-1230 | 13d |
| MKH2-02-003-CN-1330 |  | Prime Coat (MC1) RAMP-02- OUT | 14d | 2026-11-11 | 2026-11-26 | MKH2-02-003-CN-1280 | 13d |
| MKH2-02-003-CN-1380 |  | Bituminous base course for RAMP-02 OUT | 15d | 2026-11-28 | 2026-12-14 | MKH2-02-003-CN-1330 | 13d |
| MKH2-02-003-CN-1430 |  | Tack coat at RAMP-2-OUT | 14d | 2026-12-31 | 2027-01-16 | MKH2-02-003-CN-1380, MKH2-02-003-CN-1420 | 10d |
| MKH2-02-003-CN-1480 |  | Bituminous concrete wearing course, RAMP-2-OUT | 20d | 2027-01-17 | 2027-02-08 | MKH2-02-003-CN-1430 | 16d |
|  | FIN | **FINISHING WORKS** |  | 2027-01-17 | 2027-03-18 |  |  |
| MKH2-02-003-CN-1530 |  | Installation of Precast Concrete curb at RAMP-2-OUT | 12d | 2027-01-17 | 2027-01-30 | MKH2-02-003-CN-1380, MKH2-02-003-CN-1430 | 10d |
| MKH2-02-003-CN-1570 |  | 60mm thick - Interlocking block pavers for sidewalk/footpath RAMP-2-OUT | 14d | 2027-01-31 | 2027-02-15 | MKH2-02-003-CN-1530 | 10d |
| MKH2-02-003-CN-1610 |  | Pavement markings [Road-4 -RAMP-2-OUT (0+398 to 0+000) ] | 11d | 2027-02-16 | 2027-03-01 | MKH2-02-003-CN-1570, MKH2-02-003-CN-1480 | 10d |
| MKH2-02-003-CN-1660 |  | Installation of Traffic Signs [Road-4 -RAMP-2-OUT (0+398 to 0+000) ] | 12d | 2027-03-02 | 2027-03-18 | MKH2-02-003-CN-1610 | 10d |
|  | 4 | **ELECTRICAL WORKS (MKH2-01-007-DAR-TS8-0-SL-DWG-1010-00)** |  | 2026-12-15 | 2027-03-18 |  |  |
|  | 1 | **LV CABLES** |  | 2026-12-15 | 2027-01-07 |  |  |
| MKH2-02-003-CN-1760 |  | Installation of Low Voltage Cables -RAMP-2 out | 21d | 2026-12-15 | 2027-01-07 | MKH2-02-003-CN-1230, MKH2-02-003-CN-1380 | 22d |
|  | 3 | **STREET LIGHTING NETWORK INCLUDING ALL** |  | 2027-01-09 | 2027-03-01 |  |  |
| MKH2-02-003-CN-1800 |  | Installation of Lighting Poles 1-Arms In RAMP-2 OUT | 19d | 2027-01-09 | 2027-01-30 | MKH2-02-003-CN-1760 | 22d |
| MKH2-02-003-CN-1840 |  | Installation of Lighting Luminaires for 1-Arms RAMP-02 OUT | 12d | 2027-02-15 | 2027-03-01 | MKH2-02-003-CN-1800, MKH2-02-003-CN-1650 | 9d |
|  | 4 | **EARTHING** |  | 2027-03-02 | 2027-03-18 |  |  |
| MKH2-02-003-CN-1880 |  | Installation of Earthing System for RAMP-02 OUT | 12d | 2027-03-02 | 2027-03-18 | MKH2-02-003-CN-1760, MKH2-02-003-CN-1840 | 9d |
|  | DEM | **DEMOLISHING WORKS** |  | 2026-06-15 | 2026-08-10 |  |  |
|  | DEMO | **DEMOLISHING Works** |  | 2026-06-15 | 2026-08-10 |  |  |
| MKH2-02-003-CN-1000 |  | Removal of existing curbstone | 7d | 2026-06-15 | 2026-06-22 | MKH2-02-003-MB-1100, MKH2-02-003-MB-1090, MKH2-02-003-MB-1040, MKH2-02-003-CN-1070, MKH2-02-003-EN-5030 | 20d |
| MKH2-02-003-CN-1010 |  | Milling of the existing asphalt layer | 14d | 2026-06-23 | 2026-07-08 | MKH2-02-003-CN-1000 | 20d |
| MKH2-02-003-CN-1020 |  | Removal of the existing asphalt layers (up to base course layer) | 8d | 2026-07-09 | 2026-07-18 | MKH2-02-003-CN-1010, MKH2-02-003-EN-1500 | 20d |
| MKH2-02-003-CN-1030 |  | Removal of the existing signages | 8d | 2026-07-19 | 2026-07-27 | MKH2-02-003-CN-1020 | 20d |
| MKH2-02-003-CN-1040 |  | Removal of the existing Street Lighting Poles | 12d | 2026-07-28 | 2026-08-10 | MKH2-02-003-CN-1030 | 20d |
|  | OPEN | **Open Drain Channels** |  | 2026-06-22 | 2027-06-14 |  |  |
|  | Section 1 | **Near RAMP-Out Location, from Ch1+640 to Ch 1+899** |  | 2026-06-22 | 2026-09-02 |  |  |
| MKH2-02-003-CN-2100 |  | Excavation for Channel | 21d | 2026-06-22 | 2026-07-15 | MKH2-02-003-CN-2040, MKH2-02-003-EN-1460, MKH2-02-003-EN-1470, MKH2-02-003-EN-1480, MKH2-02-003-EN-1490, MKH2-02-003-EN-1500 | 0d |
| MKH2-02-003-CN-2180 |  | Embankment for Channel Berms | 21d | 2026-07-16 | 2026-08-09 | MKH2-02-003-CN-2100, MKH2-02-003-PR-1030 | 0d |
| MKH2-02-003-CN-2250 |  | Riprap Grouting | 21d | 2026-08-10 | 2026-09-02 | MKH2-02-003-CN-2180, MKH2-02-003-PR-1330, MKH2-02-003-EN-5080 | 0d |
|  | Section 2 | **Near Ramp- In location from Ch 1+270 to Ch 1+530** |  | 2026-08-10 | 2026-12-14 |  |  |
| MKH2-02-003-CN-2110 |  | Excavation for Channel | 21d | 2026-08-10 | 2026-09-02 | MKH2-02-003-CN-2180 | 0d |
| MKH2-02-003-CN-2190 |  | Embankment for Channel Berms | 21d | 2026-09-03 | 2026-09-28 | MKH2-02-003-CN-2110, MKH2-02-003-CN-2250, MKH2-02-003-MS-1030, MKH2-02-003-CN-1040 | 0d |
| MKH2-02-003-CN-2260 |  | Riprap Grouting | 21d | 2026-11-21 | 2026-12-14 | MKH2-02-003-CN-2190 FS+45d, MKH2-02-003-CN-2250 | 18d |
|  | Section 3 | **Near Ramp- In location from Ch 1+010 to Ch 1+270** |  | 2026-09-29 | 2026-12-10 |  |  |
| MKH2-02-003-CN-2130 |  | Excavation for Channel | 21d | 2026-09-29 | 2026-10-22 | MKH2-02-003-CN-2110, MKH2-02-003-CN-2190, MKH2-02-003-CN-2190 FF | 0d |
| MKH2-02-003-CN-2200 |  | Embankment for Channel Berms | 21d | 2026-10-24 | 2026-11-16 | MKH2-02-003-CN-2130 | 0d |
| MKH2-02-003-CN-2270 |  | Riprap Grouting | 21d | 2026-11-17 | 2026-12-10 | MKH2-02-003-CN-2200 | 0d |
|  | Section 4 | **Near Ramp- In location from Ch 0+750 to Ch 1+010** |  | 2026-11-17 | 2027-01-28 |  |  |
| MKH2-02-003-CN-2140 |  | Excavation for Channel | 21d | 2026-11-17 | 2026-12-10 | MKH2-02-003-CN-2130, MKH2-02-003-CN-2200 | 0d |
| MKH2-02-003-CN-2210 |  | Embankment for Channel Berms | 21d | 2026-12-12 | 2027-01-04 | MKH2-02-003-CN-2140, MKH2-02-003-CN-2270 | 0d |
| MKH2-02-003-CN-2280 |  | Riprap Grouting | 21d | 2027-01-05 | 2027-01-28 | MKH2-02-003-CN-2210, MKH2-02-003-CN-2270 | 0d |
|  | Section 5 | **Near Ramp- In location from Ch 0+490 to Ch 0+750** |  | 2027-01-05 | 2027-03-23 |  |  |
| MKH2-02-003-CN-2150 |  | Excavation for Channel | 21d | 2027-01-05 | 2027-01-28 | MKH2-02-003-CN-2140, MKH2-02-003-CN-2210, MKH2-02-003-CN-2260 | 0d |
| MKH2-02-003-CN-2220 |  | Embankment for Channel Berms | 21d | 2027-01-30 | 2027-02-23 | MKH2-02-003-CN-2150, MKH2-02-003-CN-2280, MKH2-02-003-CN-1850 | 0d |
| MKH2-02-003-CN-2290 |  | Riprap Grouting | 21d | 2027-02-24 | 2027-03-23 | MKH2-02-003-CN-2220, MKH2-02-003-CN-2280 | 5d |
|  | Section 6 | **Near Ramp- In location from Ch 0+230 to Ch 0+490** |  | 2027-02-24 | 2027-05-11 |  |  |
| MKH2-02-003-CN-2160 |  | Excavation for Channel | 21d | 2027-02-24 | 2027-03-23 | MKH2-02-003-CN-2150, MKH2-02-003-CN-2220 | 0d |
| MKH2-02-003-CN-2230 |  | Embankment for Channel Berms | 21d | 2027-03-24 | 2027-04-17 | MKH2-02-003-CN-2160, MKH2-02-003-CN-2290, MKH2-02-003-CN-1880 | 5d |
| MKH2-02-003-CN-2300 |  | Riprap Grouting | 21d | 2027-04-18 | 2027-05-11 | MKH2-02-003-CN-2230, MKH2-02-003-CN-2290, MKH2-02-003-CO-1090 | 5d |
|  | Section 7 | **Near Ramp- In location from Ch 0+000 to Ch 0+230** |  | 2027-03-30 | 2027-06-14 |  |  |
| MKH2-02-003-CN-2170 |  | Excavation for Channel | 21d | 2027-03-30 | 2027-04-22 | MKH2-02-003-CN-2160 FS+5d | 0d |
| MKH2-02-003-CN-2240 |  | Embankment for Channel Berms | 21d | 2027-04-24 | 2027-05-20 | MKH2-02-003-CN-2170 | 0d |
| MKH2-02-003-CN-2310 |  | Riprap Grouting | 21d | 2027-05-22 | 2027-06-14 | MKH2-02-003-CN-2240, MKH2-02-003-CN-2300, MKH2-02-003-CN-1870, MKH2-02-003-CN-1860 | 0d |
|  | T & C | **TESTING & COMMISSIONING** |  | 2027-03-20 | 2027-06-26 |  |  |
| MKH2-02-003-TC-1010 |  | Test for Box Culvert | 6d | 2027-03-20 | 2027-03-25 | MKH2-02-003-CN-2080, MKH2-02-003-CN-2120, MKH2-02-003-CN-1660 | 10d |
| MKH2-02-003-TC-1000 |  | Test for Electrical Networks | 6d | 2027-05-08 | 2027-05-13 | MKH2-02-003-CN-1880, MKH2-02-003-CN-1870, MKH2-02-003-CN-1860, MKH2-02-003-CN-1850, MKH2-02-003-CN-1660, MKH2-02-003-CN-1850 FF | 31d |
| MKH2-02-003-TC-1030 |  | Test for Roads | 6d | 2027-06-08 | 2027-06-14 | MKH2-02-003-CN-1660, MKH2-02-003-CN-1650, MKH2-02-003-CN-1680, MKH2-02-003-CN-1640, MKH2-02-003-CN-1630, MKH2-02-003-CN-1480, MKH2-02-003-CN-1470 | 16d |
| MKH2-02-003-TC-1020 |  | Test for Open Drain channel | 10d | 2027-06-15 | 2027-06-26 | MKH2-02-003-CN-2310, MKH2-02-003-CN-2300, MKH2-02-003-CN-2290, MKH2-02-003-CN-2280, MKH2-02-003-CN-2270, MKH2-02-003-CN-2260, MKH2-02-003-CN-2250, MKH2-02-003-CN-1660 | 0d |
|  | PRO C & DEM | **PROJECT CLOSEOUT & DEMOBILIZATION** |  | 2027-03-27 | 2027-08-14 |  |  |
|  | 1 | **As-Built DWGs** |  | 2027-03-27 | 2027-07-19 |  |  |
|  | 1 | **As-Built DWGs Submittals** |  | 2027-03-27 | 2027-07-07 |  |  |
| MKH2-02-003-CO-1050 |  | As-Built DWGs Submittal for Box Culvert | 7d | 2027-03-27 | 2027-04-03 | MKH2-02-003-TC-1010 | 10d |
| MKH2-02-003-CO-1040 |  | As-Built DWGs Submittal for Electrical Networks | 7d | 2027-05-18 | 2027-05-25 | MKH2-02-003-TC-1000 | 31d |
| MKH2-02-003-CO-1070 |  | As-Built DWGs Submittal for Roads | 7d | 2027-06-15 | 2027-06-22 | MKH2-02-003-TC-1030, MKH2-02-003-MS-1050 | 16d |
| MKH2-02-003-CO-1060 |  | As-Built DWGs Submittal for Open Drain channel | 10d | 2027-06-27 | 2027-07-07 | MKH2-02-003-TC-1020 | 0d |

| ID | WBS | Task | Duration | Start | Finish | Predecessors | Total float |
| --- | --- | --- | --- | --- | --- | --- | --- |
|  | 2 | **As-Built DWGs Approvals** |  | 2027-04-04 | 2027-07-19 |  |  |
| MKH2-02-003-CO-1090 |  | As-Built DWGs Approval for Box Culvert | 7d | 2027-04-04 | 2027-04-11 | MKH2-02-003-CO-1050 | 10d |
| MKH2-02-003-CO-1080 |  | As-Built DWGs Approval for Electrical Networks | 9d | 2027-05-26 | 2027-06-05 | MKH2-02-003-CO-1040 | 31d |
| MKH2-02-003-CO-1110 |  | As-Built DWGs Approval for Roads | 7d | 2027-06-23 | 2027-06-30 | MKH2-02-003-CO-1070, MKH2-02-003-CO-1080 | 16d |
| MKH2-02-003-CO-1100 |  | As-Built DWGs Approval for Open Drain channel | 10d | 2027-07-08 | 2027-07-19 | MKH2-02-003-CO-1060 | 0d |
|  | 2 | **Demobilization** |  | 2027-07-20 | 2027-08-14 |  |  |
| MKH2-02-003-CO-1000 |  | Demobilization of Manpower | 5d | 2027-07-20 | 2027-07-25 | MKH2-02-003-CO-1080, MKH2-02-003-CO-1090, MKH2-02-003-CO-1100, MKH2-02-003-CO-1110 | 0d |
| MKH2-02-003-CO-1010 |  | Removal of Equipment from Site | 5d | 2027-07-26 | 2027-07-31 | MKH2-02-003-CO-1000 | 0d |
| MKH2-02-003-CO-1020 |  | Site Clean Up | 5d | 2027-08-01 | 2027-08-05 | MKH2-02-003-CO-1010 | 0d |
| MKH2-02-003-CO-1030 |  | Restoration of Ground Surfaces | 7d | 2027-08-07 | 2027-08-14 | MKH2-02-003-CO-1020 | 0d |

## Version 2 (data date 2026-10-06, saved 2026-10-04, file 2. MKH2-02-003-ENJ-WPR-034-06-10-2026 UP 31.xer)

Note of the change: Weekly folders named by the Thursday the week ends on: a report dated after one Thursday up to the next goes in the next Thursday's folder (26-Oct → W05 - 29-Oct-2026); all weeks moved accordingly, W00 removed

Last finish 2027-08-14 → 2027-09-26 (+43d). Complete tasks 0 → 307.

Changed:

| ID | Task | Start | Finish | Complete | Total float |
| --- | --- | --- | --- | --- | --- |
| KEY | **KEY MILESTONES** |  | 2027-08-14 → 2027-09-26 (+43d) |  |  |
| GEN | **GENERAL MILESTONES** |  | 2027-08-14 → 2027-09-26 (+43d) |  |  |
| MKH2-02-003-MS-1080 | Project Commencement Date | 2026-02-15 A | 2026-02-15 A | 0% → 100% | 0d → none |
| MKH2-02-003-MS-1090 | Project Kick Off Meeting/NTP | 2026-02-15 A | 2026-02-15 A | 0% → 100% | 14d → none |
| MKH2-02-003-MS-1100 | Project Completion | 2027-08-14 → 2027-09-26 (+43d) | 2027-08-14 → 2027-09-26 (+43d) |  | 0d → -36d |
| OVER ALL | **CONTRACTUAL MILESTONE** | 2026-03-14 → 2026-03-01 (-13d) | 2027-08-14 → 2027-09-26 (+43d) |  |  |
| MKH2-02-003-MS-1010 | Baseline Programme Approval | 2026-03-14 → 2026-03-01 A (-13d) | 2026-03-14 → 2026-03-01 A (-13d) | 0% → 100% | 17d → none |
| MKH2-02-003-MS-1000 | Completion of Mobilization | 2026-03-14 → 2026-06-06 A (+84d) | 2026-03-14 → 2026-06-06 A (+84d) | 0% → 100% | 17d → none |
| MKH2-02-003-MS-1020 | Prequalification & Material Approval | 2026-04-14 → 2026-06-06 A (+53d) | 2026-04-14 → 2026-06-06 A (+53d) | 0% → 100% | 11d → none |
| MKH2-02-003-MS-1030 | Completion of Long lead Materials Delivery | 2026-08-16 → 2026-08-29 A (+13d) | 2026-08-16 → 2026-08-29 A (+13d) | 0% → 100% | 15d → none |
| MKH2-02-003-MS-1040 | Completion of Road Works | 2026-12-14 → 2027-02-07 (+55d) | 2026-12-14 → 2027-02-07 (+55d) |  | 13d → 7d |
| MKH2-02-003-MS-1050 | Completion of Open Drain Channel | 2027-06-14 → 2027-07-26 (+42d) | 2027-06-14 → 2027-07-26 (+42d) |  | 16d → -20d |
| MKH2-02-003-MS-1060 | Completion of All Works | 2027-08-14 → 2027-09-26 (+43d) | 2027-08-14 → 2027-09-26 (+43d) |  | 0d → -36d |
| MKH2-02-003-MS-1070 | Final Handover | 2027-08-14 → 2027-09-26 (+43d) | 2027-08-14 → 2027-09-26 (+43d) |  | 0d → -36d |
| MOB | **MOBILIZATION** |  | 2026-03-14 → 2026-06-06 (+84d) |  |  |
| MKH2-02-003-MB-1380 | Site Survey Works | 2026-02-15 A | 2026-02-23 A | 0% → 100% | 0d → none |
| OFFICE | **SITE FACILITIES & OFFICES** |  | 2026-03-14 → 2026-02-28 (-14d) |  |  |
| MKH2-02-003-MB-1000 | Site Layout Plan | 2026-02-15 A | 2026-02-18 A | 0% → 100% | 0d → none |
| MKH2-02-003-MB-1010 | Clear & Grub for Offices & Access Road | 2026-02-19 → 2026-02-15 A (-4d) | 2026-02-23 → 2026-02-19 A (-4d) | 0% → 100% | 10d → none |
| MKH2-02-003-MB-1030 | Construct Temporary Fence | 2026-02-24 → 2026-02-15 A (-9d) | 2026-03-03 → 2026-02-19 A (-12d) | 0% → 100% | 10d → none |
| MKH2-02-003-MB-1040 | Construct Site Offices & Storage | 2026-02-25 → 2026-02-15 A (-10d) | 2026-03-12 → 2026-02-22 A (-18d) | 0% → 100% | 8d → none |
| MKH2-02-003-MB-1060 | Install Site Facilities | 2026-03-04 → 2026-02-15 A (-17d) | 2026-03-08 → 2026-02-19 A (-17d) | 0% → 100% | 17d → none |
| MKH2-02-003-MB-1070 | Electrical Works & Connections | 2026-03-04 → 2026-02-15 A (-17d) | 2026-03-10 → 2026-02-19 A (-19d) | 0% → 100% | 10d → none |
| MKH2-02-003-MB-1080 | Construct Parking Sheds | 2026-03-04 → 2026-02-15 A (-17d) | 2026-03-10 → 2026-02-21 A (-17d) | 0% → 100% | 10d → none |
| MKH2-02-003-MB-1090 | Manpower Mobalization | 2026-03-09 → 2026-02-15 A (-22d) | 2026-03-14 → 2026-02-21 A (-21d) | 0% → 100% | 17d → none |
| MKH2-02-003-MB-1100 | Equipment Mobalization | 2026-03-07 → 2026-02-15 A (-20d) | 2026-03-14 → 2026-02-22 A (-20d) | 0% → 100% | 17d → none |
| MKH2-02-003-MB-1020 | Construct Site Access Roads | 2026-02-19 A | 2026-02-24 A | 0% → 100% | 8d → none |
| MKH2-02-003-MB-1050 | Install Project Signs | 2026-02-25 A | 2026-03-05 → 2026-02-28 A (-5d) | 0% → 100% | 17d → none |
| PRELI | **PRELIMINARY SUBMITTALS** | 2026-02-19 → 2026-02-15 (-4d) | 2026-03-14 → 2026-06-06 (+84d) |  |  |
| P&S | **PREPARATIONS & SUBMITTAL BY CONTRACTORS** | 2026-02-19 → 2026-02-15 (-4d) | 2026-03-01 → 2026-06-04 (+95d) |  |  |
| MKH2-02-003-MB-1120 | Advance Payemnt Application | 2026-02-19 → 2026-02-15 A (-4d) | 2026-03-01 → 2026-02-16 A (-13d) | 0% → 100% | 17d → none |
| MKH2-02-003-MB-1130 | Performance bond as per the Conditions of Contract. | 2026-02-19 → 2026-02-15 A (-4d) | 2026-03-01 → 2026-02-19 A (-10d) | 0% → 100% | 17d → none |
| MKH2-02-003-MB-1190 | Preparation and Submittal of Detailed Work Order Programme (Base line) | 2026-02-19 → 2026-02-17 A (-2d) | 2026-03-01 → 2026-02-28 A (-1d) | 0% → 100% | 7d → none |
| MKH2-02-003-MB-1200 | Preparation and Submittal of Project Execution Plan | 2026-02-19 → 2026-02-17 A (-2d) | 2026-03-01 → 2026-02-18 A (-11d) | 0% → 100% | 17d → none |
| MKH2-02-003-MB-1140 | Insurances as per the Conditions of Contract. | 2026-02-19 → 2026-02-18 A (-1d) | 2026-03-01 → 2026-02-21 A (-8d) | 0% → 100% | 17d → none |
| MKH2-02-003-MB-1150 | Contractor's Plant and Equipment Insurance. | 2026-02-19 → 2026-02-18 A (-1d) | 2026-03-01 → 2026-02-21 A (-8d) | 0% → 100% | 17d → none |
| MKH2-02-003-MB-1160 | Third Party liability Insurance including Insurance for Employer's Property other than Workmen's Compensation | 2026-02-19 → 2026-02-18 A (-1d) | 2026-03-01 → 2026-02-21 A (-8d) | 0% → 100% | 17d → none |
| MKH2-02-003-MB-1170 | Workmen's Compensation Employer's Liability Insurance. | 2026-02-19 → 2026-02-18 A (-1d) | 2026-03-01 → 2026-02-21 A (-8d) | 0% → 100% | 17d → none |
| MKH2-02-003-MB-1180 | Advance Payment Bond as per the Conditions of Contract. | 2026-02-19 → 2026-02-18 A (-1d) | 2026-03-01 → 2026-02-21 A (-8d) | 0% → 100% | 17d → none |
| MKH2-02-003-MB-1220 | Submission of Construction Safety & Environmental Management Plan | 2026-02-19 A | 2026-03-01 → 2026-02-23 A (-6d) | 0% → 100% | 17d → none |
| MKH2-02-003-MB-1210 | Submission of Contractor Project Quality Plan | 2026-02-19 → 2026-02-23 A (+4d) | 2026-03-01 → 2026-02-25 A (-4d) | 0% → 100% | 9d → none |
| MKH2-02-003-MB-1230 | Preparation and Submittal of Organization Chart | 2026-02-19 → 2026-03-05 A (+14d) | 2026-03-01 → 2026-03-05 A (+4d) | 0% → 100% | 17d → none |
| MKH2-02-003-MB-1240 | Preparation and Submittal of Communication Plan | 2026-02-19 → 2026-06-03 A (+104d) | 2026-03-01 → 2026-06-04 A (+95d) | 0% → 100% | 17d → none |
| APP | **APPROVALS BY EMPLOYERS** | 2026-03-02 → 2026-02-17 (-13d) | 2026-03-14 → 2026-06-06 (+84d) |  |  |
| MKH2-02-003-MB-1250 | Approval of Payemnt Application | 2026-03-02 → 2026-02-17 A (-13d) | 2026-03-14 → 2026-02-18 A (-24d) | 0% → 100% | 17d → none |
| MKH2-02-003-MB-1290 | Approval of Third Party liability Insurance including Insurance for Employer's Property other than Workmen's Compensan | 2026-03-02 → 2026-02-18 A (-12d) | 2026-03-14 → 2026-02-26 A (-16d) | 0% → 100% | 17d → none |
| MKH2-02-003-MB-1330 | Approval of Project Execution Plan | 2026-03-02 → 2026-02-18 A (-12d) | 2026-03-14 → 2026-02-19 A (-23d) | 0% → 100% | 17d → none |
| MKH2-02-003-MB-1260 | Approval of Performance bond as per the Conditions of Contract. | 2026-03-02 → 2026-02-19 A (-11d) | 2026-03-14 → 2026-02-21 A (-21d) | 0% → 100% | 17d → none |
| MKH2-02-003-MB-1270 | Approval of Insurances as per the Conditions of Contract. | 2026-03-02 → 2026-02-22 A (-8d) | 2026-03-14 → 2026-02-26 A (-16d) | 0% → 100% | 17d → none |
| MKH2-02-003-MB-1280 | Approval of Contractor's Plant and Equipment Insurance. | 2026-03-02 → 2026-02-22 A (-8d) | 2026-03-14 → 2026-02-26 A (-16d) | 0% → 100% | 17d → none |
| MKH2-02-003-MB-1300 | Approval of Workmen's Compensation Employer's Liability Insurance. | 2026-03-02 → 2026-02-22 A (-8d) | 2026-03-14 → 2026-02-26 A (-16d) | 0% → 100% | 17d → none |
| MKH2-02-003-MB-1310 | Approval of Advance Payment Bond as per the Conditions of Contract. | 2026-03-02 → 2026-02-22 A (-8d) | 2026-03-14 → 2026-02-26 A (-16d) | 0% → 100% | 17d → none |
| MKH2-02-003-MB-1350 | Approval of Construction Safety & Environmental Management Plan | 2026-03-02 → 2026-02-24 A (-6d) | 2026-03-14 → 2026-03-09 A (-5d) | 0% → 100% | 17d → none |
| MKH2-02-003-MB-1320 | Approval of Detailed Work Order Programme (Baseline) | 2026-03-02 → 2026-02-28 A (-2d) | 2026-03-14 → 2026-03-01 A (-13d) | 0% → 100% | 7d → none |
| MKH2-02-003-MB-1360 | Approval of Organization Chart | 2026-03-02 → 2026-03-05 A (+3d) | 2026-03-14 → 2026-03-05 A (-9d) | 0% → 100% | 17d → none |
| MKH2-02-003-MB-1340 | Approval of Contractor Project Quality Plan | 2026-03-02 → 2026-03-16 A (+14d) | 2026-03-14 → 2026-03-29 A (+15d) | 0% → 100% | 9d → none |
| MKH2-02-003-MB-1370 | Approval of Communication Plan | 2026-03-02 → 2026-06-04 A (+94d) | 2026-03-14 → 2026-06-06 A (+84d) | 0% → 100% | 17d → none |
| ENGG | **ENGINEERING** | 2026-02-19 → 2026-02-17 (-2d) | 2026-04-14 → 2026-07-22 (+99d) |  |  |
| 1 | **SHOP DRAWINGS** | 2026-02-24 → 2026-02-18 (-6d) | 2026-04-14 → 2026-06-07 (+54d) |  |  |
| SUB | **SHOP DRAWINGS SUBMISSION** | 2026-02-24 → 2026-02-18 (-6d) | 2026-04-05 → 2026-06-04 (+60d) |  |  |
| ROAD | **SHOP DRAWING SUBMITTALS FOR ROAD WORKS** | 2026-02-24 → 2026-02-18 (-6d) | 2026-03-14 → 2026-06-04 (+82d) |  |  |
| MKH2-02-003-EN-1160 | Shop DWG Submittal for Signing & Marking Layout Plan | 2026-03-05 → 2026-02-18 A (-15d) | 2026-03-14 → 2026-02-19 A (-23d) | 0% → 100% | 21d → none |
| MKH2-02-003-EN-1170 | Shop DWG Submittal for Standards Details | 2026-03-05 → 2026-02-18 A (-15d) | 2026-03-14 → 2026-02-19 A (-23d) | 0% → 100% | 11d → none |
| MKH2-02-003-EN-1090 | Shop DWG Submittal for Topographic Survey | 2026-02-24 A | 2026-03-04 → 2026-02-28 A (-4d) | 0% → 100% | 0d → none |
| MKH2-02-003-EN-1100 | Shop DWG Submittal for Road Layout Plan | 2026-03-05 → 2026-02-25 A (-8d) | 2026-03-14 → 2026-02-28 A (-14d) | 0% → 100% | 0d → none |
| MKH2-02-003-EN-1120 | Shop DWG Submittal for Road Setting Out | 2026-03-05 → 2026-02-25 A (-8d) | 2026-03-14 → 2026-02-28 A (-14d) | 0% → 100% | 0d → none |
| MKH2-02-003-EN-1130 | Shop DWG Submittal for Road Profiles | 2026-03-05 → 2026-02-25 A (-8d) | 2026-03-14 → 2026-02-28 A (-14d) | 0% → 100% | 0d → none |
| MKH2-02-003-EN-1110 | Shop DWG Submittal for Typical Cross Section | 2026-03-05 → 2026-02-26 A (-7d) | 2026-03-14 → 2026-02-28 A (-14d) | 0% → 100% | 0d → none |
| MKH2-02-003-EN-1140 | Shop DWG Submittal for Grading Layout Plan | 2026-03-05 → 2026-02-26 A (-7d) | 2026-03-14 → 2026-02-28 A (-14d) | 0% → 100% | 21d → none |
| MKH2-02-003-EN-1150 | Shop DWG Submittal for Curb Setting Out Points | 2026-03-05 → 2026-06-03 A (+90d) | 2026-03-14 → 2026-06-04 A (+82d) | 0% → 100% | 21d → none |

| ID | Task | Start | Finish | Complete | Total float |
| --- | --- | --- | --- | --- | --- |
| ELE | **SHOP DRAWINGS SUBMITTALS FOR ELECTRICAL NETWORK** | 2026-03-15 → 2026-06-03 (+80d) | 2026-03-26 → 2026-06-04 (+70d) |  |  |
| MKH2-02-003-EN-1180 | Shop DWG Submittal for Low Voltage Network | 2026-03-15 → 2026-06-03 A (+80d) | 2026-03-26 → 2026-06-04 A (+70d) | 0% → 100% | 11d → none |
| MKH2-02-003-EN-1190 | Shop DWG Submittal for Street Lighting | 2026-03-15 → 2026-06-03 A (+80d) | 2026-03-26 → 2026-06-04 A (+70d) | 0% → 100% | 11d → none |
| EAR | **SHOP DRAWINGS SUBMITTALS FOR EARTHING SYSTEM** | 2026-03-28 → 2026-06-03 (+67d) | 2026-04-05 → 2026-06-04 (+60d) |  |  |
| MKH2-02-003-EN-1200 | Shop DWG Submittal for Earthing System | 2026-03-28 → 2026-06-03 A (+67d) | 2026-04-05 → 2026-06-04 A (+60d) | 0% → 100% | 12d → none |
| 1 | **SHOP DRAWINGS SUBMITTALS FOR ROAD LIGHTING SYSTEM** | 2026-03-28 → 2026-03-16 (-12d) | 2026-04-05 → 2026-03-18 (-18d) |  |  |
| MKH2-02-003-EN-1210 | Shop DWG Submittal for Street Lighting General Arrangement | 2026-03-28 → 2026-03-16 A (-12d) | 2026-04-05 → 2026-03-18 A (-18d) | 0% → 100% | 11d → none |
| MKH2-02-003-EN-1220 | Shop DWG Submittal for Street Lighting Network Layout | 2026-03-28 → 2026-03-16 A (-12d) | 2026-04-05 → 2026-03-18 A (-18d) | 0% → 100% | 11d → none |
| MKH2-02-003-EN-1230 | Shop DWG Submittal for Street Lighting Details | 2026-03-28 → 2026-03-16 A (-12d) | 2026-04-05 → 2026-03-18 A (-18d) | 0% → 100% | 11d → none |
| MKH2-02-003-EN-1240 | Shop DWG Submittal for Street Lighting Single Line Diagram | 2026-03-28 → 2026-03-16 A (-12d) | 2026-04-05 → 2026-03-18 A (-18d) | 0% → 100% | 11d → none |
| DYK & OPNC | **SHOP DRAWINGS SUBMITTALS FOR OPENCHANNEL** | 2026-03-15 → 2026-02-28 (-15d) | 2026-03-26 → 2026-06-04 (+70d) |  |  |
| MKH2-02-003-EN-1250 | Shop DWG Submittal for Open Channel Layout Plan | 2026-03-15 → 2026-02-28 A (-15d) | 2026-03-26 → 2026-03-02 A (-24d) | 0% → 100% | 18d → none |
| MKH2-02-003-EN-1260 | Shop DWG Submittal for Typical Cross Section | 2026-03-15 → 2026-02-28 A (-15d) | 2026-03-26 → 2026-03-02 A (-24d) | 0% → 100% | 18d → none |
| MKH2-02-003-EN-1270 | Shop DWG Submittal for Open Channel Profiles | 2026-03-15 → 2026-02-28 A (-15d) | 2026-03-26 → 2026-03-02 A (-24d) | 0% → 100% | 18d → none |
| MKH2-02-003-EN-1280 | Shop DWG Submittal for Grading Layout Plan | 2026-03-15 → 2026-06-03 A (+80d) | 2026-03-26 → 2026-06-04 A (+70d) | 0% → 100% | 18d → none |
| MKH2-02-003-EN-1290 | Shop DWG Submittal for Standards Details | 2026-03-15 → 2026-06-03 A (+80d) | 2026-03-26 → 2026-06-04 A (+70d) | 0% → 100% | 18d → none |
| APP | **SHOP DRAWINGS APPROVALS** | 2026-03-05 → 2026-02-18 (-15d) | 2026-04-14 → 2026-06-07 (+54d) |  |  |
| ROAD | **SHOP DRAWING APPROVALS FOR ROAD WORKS** | 2026-03-05 → 2026-02-18 (-15d) | 2026-03-25 → 2026-06-07 (+74d) |  |  |
| MKH2-02-003-EN-1370 | Shop DWG Approval for Signing & Marking Layout Plan | 2026-03-15 → 2026-02-18 A (-25d) | 2026-03-25 → 2026-02-19 A (-34d) | 0% → 100% | 21d → none |
| MKH2-02-003-EN-1380 | Shop DWG Approval for Standards Details | 2026-03-15 → 2026-02-19 A (-24d) | 2026-03-25 → 2026-02-19 A (-34d) | 0% → 100% | 21d → none |
| MKH2-02-003-EN-1310 | Shop DWG Approval for Road Layout Plan | 2026-03-15 → 2026-03-01 A (-14d) | 2026-03-25 → 2026-03-08 A (-17d) | 0% → 100% | 0d → none |
| MKH2-02-003-EN-1340 | Shop DWG Approval for Road Profiles | 2026-03-15 → 2026-03-01 A (-14d) | 2026-03-25 → 2026-03-08 A (-17d) | 0% → 100% | 0d → none |
| MKH2-02-003-EN-1300 | Shop DWG Approval for Topographic Survey | 2026-03-05 → 2026-04-22 A (+48d) | 2026-03-12 → 2026-04-23 A (+42d) | 0% → 100% | 29d → none |
| MKH2-02-003-EN-1320 | Shop DWG Approval for Typical Cross Section | 2026-03-15 → 2026-06-06 A (+83d) | 2026-03-25 → 2026-06-07 A (+74d) | 0% → 100% | 0d → none |
| MKH2-02-003-EN-1330 | Shop DWG Approval for Road Setting Out | 2026-03-15 → 2026-06-06 A (+83d) | 2026-03-25 → 2026-06-07 A (+74d) | 0% → 100% | 0d → none |
| MKH2-02-003-EN-1350 | Shop DWG Approval for Grading Layout Plan | 2026-03-15 → 2026-06-06 A (+83d) | 2026-03-25 → 2026-06-07 A (+74d) | 0% → 100% | 21d → none |
| MKH2-02-003-EN-1360 | Shop DWG Approval for Curb Setting Out Points | 2026-03-15 → 2026-06-06 A (+83d) | 2026-03-25 → 2026-06-07 A (+74d) | 0% → 100% | 21d → none |
| ELE | **SHOP DRAWINGS APPROVALS FOR ELECTRICAL NETWORK** | 2026-03-28 → 2026-06-04 (+68d) | 2026-04-04 → 2026-06-06 (+63d) |  |  |
| MKH2-02-003-EN-1390 | Shop DWG Approval for Low Voltage Network | 2026-03-28 → 2026-06-04 A (+68d) | 2026-04-04 → 2026-06-06 A (+63d) | 0% → 100% | 19d → none |
| MKH2-02-003-EN-1400 | Shop DWG Approval for Street Lighting | 2026-03-28 → 2026-06-04 A (+68d) | 2026-04-04 → 2026-06-06 A (+63d) | 0% → 100% | 19d → none |
| EAR | **SHOP DRAWINGS APPROVALS FOR EARTHING SYSTEM** | 2026-04-06 → 2026-06-04 (+59d) | 2026-04-13 → 2026-06-06 (+54d) |  |  |
| MKH2-02-003-EN-1410 | Shop DWG Approval for Earthing System | 2026-04-06 → 2026-06-04 A (+59d) | 2026-04-13 → 2026-06-06 A (+54d) | 0% → 100% | 12d → none |
| 1 | **SHOP DRAWINGS APPROVALS FOR ROAD LIGHTING SYSTEM** | 2026-04-06 → 2026-03-18 (-19d) | 2026-04-14 → 2026-04-09 (-5d) |  |  |
| MKH2-02-003-EN-1420 | Shop DWG Approval for Street Lighting General Arrangement | 2026-04-06 → 2026-03-18 A (-19d) | 2026-04-14 → 2026-03-30 A (-15d) | 0% → 100% | 11d → none |
| MKH2-02-003-EN-1440 | Shop DWG Approval for Street Lighting Details | 2026-04-06 → 2026-03-18 A (-19d) | 2026-04-14 → 2026-03-30 A (-15d) | 0% → 100% | 11d → none |
| MKH2-02-003-EN-1450 | Shop DWG Approval for Street Lighting Single Line Diagram | 2026-04-06 → 2026-03-18 A (-19d) | 2026-04-14 → 2026-03-30 A (-15d) | 0% → 100% | 11d → none |
| MKH2-02-003-EN-1430 | Shop DWG Approval for Street Lighting Network Layout | 2026-04-06 → 2026-04-08 A (+2d) | 2026-04-14 → 2026-04-09 A (-5d) | 0% → 100% | 11d → none |
| DYK & OPNC | **SHOP DRAWINGS APPROVALS FOR OPENCHANNEL** | 2026-03-28 → 2026-03-02 (-26d) | 2026-04-05 → 2026-06-07 (+63d) |  |  |
| MKH2-02-003-EN-1460 | Shop DWG Approval for Open Channel Layout Plan | 2026-03-28 → 2026-03-02 A (-26d) | 2026-04-05 → 2026-03-03 A (-33d) | 0% → 100% | 18d → none |
| MKH2-02-003-EN-1470 | Shop DWG Approval for Typical Cross Section | 2026-03-28 → 2026-03-02 A (-26d) | 2026-04-05 → 2026-03-02 A (-34d) | 0% → 100% | 18d → none |
| MKH2-02-003-EN-1480 | Shop DWG Approval for Open Channel Profiles | 2026-03-28 → 2026-03-02 A (-26d) | 2026-04-05 → 2026-03-09 A (-27d) | 0% → 100% | 18d → none |
| MKH2-02-003-EN-1490 | Shop DWG Approval for Grading Layout Plan | 2026-03-28 → 2026-06-06 A (+70d) | 2026-04-05 → 2026-06-07 A (+63d) | 0% → 100% | 18d → none |
| MKH2-02-003-EN-1500 | Shop DWG Approval for Standards Details | 2026-03-28 → 2026-06-06 A (+70d) | 2026-04-05 → 2026-06-07 A (+63d) | 0% → 100% | 18d → none |
| 2 | **METHOD STATEMENTS** | 2026-02-19 → 2026-02-17 (-2d) | 2026-04-13 → 2026-07-22 (+100d) |  |  |
| 1 | **METHOD STATEMENT SUBMITTAL** | 2026-02-19 → 2026-02-17 (-2d) | 2026-03-28 → 2026-07-21 (+115d) |  |  |
| 4 | **Civil Works** | 2026-02-19 → 2026-02-17 (-2d) | 2026-03-08 → 2026-07-21 (+135d) |  |  |
| 1 | **Road Works** | 2026-02-19 → 2026-02-17 (-2d) | 2026-03-08 → 2026-07-21 (+135d) |  |  |
| MKH2-02-003-EN-1010 | Preparation & Submission of Method Statement for Earthwork | 2026-02-19 → 2026-02-17 A (-2d) | 2026-03-08 → 2026-02-18 A (-18d) | 0% → 100% | 0d → none |
| MKH2-02-003-EN-1020 | Preparation & Submission of Method Statement for Road Paving (Soil & Asphalt) | 2026-02-19 → 2026-02-23 A (+4d) | 2026-03-08 → 2026-02-25 A (-11d) | 0% → 100% | 31d → none |
| MKH2-02-003-EN-1000 | Preparation & Submission of Method Statement for Demolition Works | 2026-02-19 → 2026-03-01 A (+10d) | 2026-03-08 A | 0% → 100% | 31d → none |
| MKH2-02-003-EN-1070 | Preparation & Submission of Method Statement for Road Finishing | 2026-02-19 → 2026-03-23 A (+32d) | 2026-03-08 → 2026-03-26 A (+18d) | 0% → 100% | 31d → none |
| MKH2-02-003-EN-1060 | Preparation & Submission of Method Statement for Traffic Signal & Saher Camera | 2026-02-19 → 2026-05-14 A (+84d) | 2026-03-08 → 2026-07-21 A (+135d) | 0% → 100% | 31d → none |
| 2 | **Open Drain Channel** | 2026-02-19 → 2026-04-20 (+60d) | 2026-03-08 → 2026-04-21 (+44d) |  |  |
| MKH2-02-003-EN-2230 | Preparation & Submission of Method Statement for Riprap Construction | 2026-02-19 → 2026-04-20 A (+60d) | 2026-03-08 → 2026-04-21 A (+44d) | 0% → 100% | 31d → none |
| 3 | **Box Culvert** | 2026-02-19 → 2026-03-01 (+10d) |  |  |  |
| MKH2-02-003-EN-2330 | Preparation & Submission of Method Statement for Box Culvert | 2026-02-19 → 2026-03-01 A (+10d) | 2026-03-08 A | 0% → 100% | 24d → none |
| 5 | **Electrical Works** | 2026-03-09 → 2026-02-25 (-12d) | 2026-03-28 → 2026-06-04 (+68d) |  |  |
| 1 | **Street Lighting Works** | 2026-03-09 → 2026-02-25 (-12d) | 2026-03-28 → 2026-06-04 (+68d) |  |  |
| MKH2-02-003-EN-5000 | Preparation & Submission of Method Statement for LV Duct Bank | 2026-03-09 → 2026-02-25 A (-12d) | 2026-03-28 → 2026-03-09 A (-19d) | 0% → 100% | 24d → none |
| MKH2-02-003-EN-5010 | Preparation & Submission of Method Statement for LV Network | 2026-03-09 → 2026-04-06 A (+28d) | 2026-03-28 → 2026-04-13 A (+16d) | 0% → 100% | 24d → none |
| MKH2-02-003-EN-5020 | Preparation & Submission of Method Statement for Lighting Poles Installation | 2026-03-09 → 2026-06-03 A (+86d) | 2026-03-28 → 2026-06-04 A (+68d) | 0% → 100% | 24d → none |
| 2 | **METHOD STATEMENT APPROVAL** | 2026-03-09 → 2026-02-19 (-18d) | 2026-04-13 → 2026-07-22 (+100d) |  |  |
| 4 | **Civil Works** | 2026-03-09 → 2026-02-19 (-18d) | 2026-03-28 → 2026-07-22 (+116d) |  |  |
| 1 | **Road Works** | 2026-03-09 → 2026-02-19 (-18d) | 2026-03-28 → 2026-07-22 (+116d) |  |  |
| MKH2-02-003-EN-5040 | Approval of Method Statement for Earthwork | 2026-03-09 → 2026-02-19 A (-18d) | 2026-03-25 → 2026-02-23 A (-30d) | 0% → 100% | 0d → none |
| MKH2-02-003-EN-5030 | Approval of Method Statement for Demolition Works | 2026-03-09 → 2026-03-25 A (+16d) | 2026-03-28 A | 0% → 100% | 31d → none |
| MKH2-02-003-EN-5050 | Approval of Method Statement for Road Paving (Soil & Asphalt) | 2026-03-09 → 2026-03-25 A (+16d) | 2026-03-28 A | 0% → 100% | 31d → none |
| MKH2-02-003-EN-5070 | Approval of Method Statement for Road Finishing | 2026-03-09 → 2026-06-16 A (+99d) | 2026-03-28 → 2026-06-16 A (+80d) | 0% → 100% | 31d → none |
| MKH2-02-003-EN-5060 | Approval of Method Statement for Traffic Signal & Saher Camera | 2026-03-09 → 2026-07-21 A (+134d) | 2026-03-28 → 2026-07-22 A (+116d) | 0% → 100% | 31d → none |
| 2 | **Open Drain Channel** | 2026-03-09 → 2026-06-15 (+98d) | 2026-03-28 → 2026-06-15 (+79d) |  |  |

| ID | Task | Start | Finish | Complete | Total float |
| --- | --- | --- | --- | --- | --- |
| MKH2-02-003-EN-5080 | Approval of Method Statement for Riprap Construction | 2026-03-09 → 2026-06-15 A (+98d) | 2026-03-28 → 2026-06-15 A (+79d) | 0% → 100% | 31d → none |
| 3 | **Box Culvert** | 2026-03-09 → 2026-03-11 (+2d) | 2026-03-28 → 2026-03-29 (+1d) |  |  |
| MKH2-02-003-EN-5090 | Approval of Method Statement for Box Culvert | 2026-03-09 → 2026-03-11 A (+2d) | 2026-03-28 → 2026-03-29 A (+1d) | 0% → 100% | 31d → none |
| 5 | **Electrical Works** | 2026-03-29 → 2026-03-25 (-4d) | 2026-04-13 → 2026-06-15 (+63d) |  |  |
| 1 | **Street Lighting Works** | 2026-03-29 → 2026-03-25 (-4d) | 2026-04-13 → 2026-06-15 (+63d) |  |  |
| MKH2-02-003-EN-5100 | Approval of Method Statement for LV Duct Bank | 2026-03-29 → 2026-03-25 A (-4d) | 2026-04-13 → 2026-03-28 A (-16d) | 0% → 100% | 24d → none |
| MKH2-02-003-EN-5110 | Approval of Method Statement for LV Network | 2026-03-29 → 2026-05-19 A (+51d) | 2026-04-13 → 2026-06-15 A (+63d) | 0% → 100% | 24d → none |
| MKH2-02-003-EN-5120 | Approval of Method Statement for Lighting Poles Installation | 2026-03-29 → 2026-06-04 A (+67d) | 2026-04-13 → 2026-06-06 A (+54d) | 0% → 100% | 24d → none |
| PREQ | **PRE-QUALIFICATION & MATERIAL** | 2026-03-15 → 2026-03-02 (-13d) | 2026-04-14 → 2026-06-06 (+53d) |  |  |
| PRE | **PRE-QUALIFICATION** | 2026-03-15 → 2026-03-02 (-13d) | 2026-03-30 → 2026-03-29 (-1d) |  |  |
| ROAD | **ROAD WORKS-CIVIL** | 2026-03-15 → 2026-03-03 (-12d) | 2026-03-30 → 2026-03-29 (-1d) |  |  |
| STEEL | **STEEL REINFORCEMENT** | 2026-03-15 → 2026-03-03 (-12d) | 2026-03-30 → 2026-03-04 (-26d) |  |  |
| MKH2-02-003-EN-1510 | Pre-Qualification Submittal for Steel Reinforcement | 2026-03-15 → 2026-03-03 A (-12d) | 2026-03-19 → 2026-03-04 A (-15d) | 0% → 100% | 17d → none |
| MKH2-02-003-EN-1520 | Pre-Qualification Approval for Steel Reinforcement | 2026-03-24 → 2026-03-03 A (-21d) | 2026-03-30 → 2026-03-04 A (-26d) | 0% → 100% | 17d → none |
| RMC | **READY MIX CONCRETE** | 2026-03-15 → 2026-03-29 (+14d) | 2026-03-30 → 2026-03-29 (-1d) |  |  |
| MKH2-02-003-EN-1530 | Pre-Qualification Submittal for Ready Mixed Concrete | 2026-03-15 → 2026-03-29 A (+14d) | 2026-03-19 → 2026-03-29 A (+10d) | 0% → 100% | 17d → none |
| MKH2-02-003-EN-1540 | Pre-Qualification Approval for Ready Mixed Concrete | 2026-03-24 → 2026-03-29 A (+5d) | 2026-03-30 → 2026-03-29 A (-1d) | 0% → 100% | 17d → none |
| WP | **WATER PROOFING** | 2026-03-15 → 2026-03-10 (-5d) | 2026-03-30 → 2026-03-11 (-19d) |  |  |
| MKH2-02-003-EN-1550 | Pre-Qualification Submittal for Water Proof ing | 2026-03-15 → 2026-03-10 A (-5d) | 2026-03-19 → 2026-03-11 A (-8d) | 0% → 100% | 19d → none |
| MKH2-02-003-EN-1560 | Pre-Qualification Approval for Water Proofing | 2026-03-24 → 2026-03-11 A (-13d) | 2026-03-30 → 2026-03-11 A (-19d) | 0% → 100% | 19d → none |
| ABC | **AGGREGATE BASE COURSE** | 2026-03-15 → 2026-03-17 (+2d) | 2026-03-30 → 2026-03-18 (-12d) |  |  |
| MKH2-02-003-EN-1570 | Pre-Qualification Submittal for Aggregate Base Cource | 2026-03-15 → 2026-03-17 A (+2d) | 2026-03-19 → 2026-03-18 A (-1d) | 0% → 100% | 17d → none |
| MKH2-02-003-EN-1580 | Pre-Qualification Approval for Aggregate Base Cource | 2026-03-24 → 2026-03-18 A (-6d) | 2026-03-30 → 2026-03-18 A (-12d) | 0% → 100% | 17d → none |
| BBC& BWC | **BITU,INOUS BASE & WEARING COURSE** | 2026-03-15 → 2026-03-08 (-7d) | 2026-03-30 → 2026-03-24 (-6d) |  |  |
| MKH2-02-003-EN-1590 | Pre-Qualification Submittal for Bituminous Base & Wearing Cource | 2026-03-15 → 2026-03-08 A (-7d) | 2026-03-19 → 2026-03-09 A (-10d) | 0% → 100% | 11d → none |
| MKH2-02-003-EN-1600 | Pre-Qualification Approval for Bituminous Base & Wearing Cource | 2026-03-24 → 2026-03-10 A (-14d) | 2026-03-30 → 2026-03-24 A (-6d) | 0% → 100% | 11d → none |
| CURB | **PRE-CAST CONCRETE CURBS** | 2026-03-15 → 2026-03-10 (-5d) | 2026-03-30 → 2026-03-10 (-20d) |  |  |
| MKH2-02-003-EN-1610 | Pre-Qualification Submittal for Precast Concrete Curb | 2026-03-15 → 2026-03-10 A (-5d) | 2026-03-19 → 2026-03-10 A (-9d) | 0% → 100% | 9d → none |
| MKH2-02-003-EN-1620 | Pre-Qualification Approval for Precast Concrete Curb | 2026-03-24 → 2026-03-10 A (-14d) | 2026-03-30 → 2026-03-10 A (-20d) | 0% → 100% | 9d → none |
| INTR | **INTERLOCKING PAVING BLOCKS** | 2026-03-15 → 2026-03-10 (-5d) | 2026-03-30 → 2026-03-10 (-20d) |  |  |
| MKH2-02-003-EN-1630 | Pre-Qualification Submittal for Interlocking Block Pavers | 2026-03-15 → 2026-03-10 A (-5d) | 2026-03-19 → 2026-03-10 A (-9d) | 0% → 100% | 11d → none |
| MKH2-02-003-EN-1640 | Pre-Qualification Approval for Interlocking Block Pavers | 2026-03-24 → 2026-03-10 A (-14d) | 2026-03-30 → 2026-03-10 A (-20d) | 0% → 100% | 11d → none |
| MARK | **PAVEMENT MARKING** | 2026-03-15 → 2026-03-10 (-5d) | 2026-03-30 → 2026-03-12 (-18d) |  |  |
| MKH2-02-003-EN-1650 | Pre-Qualification Submittal for Pavement Markings | 2026-03-15 → 2026-03-10 A (-5d) | 2026-03-19 → 2026-03-11 A (-8d) | 0% → 100% | 11d → none |
| MKH2-02-003-EN-1660 | Pre-Qualification Approval for Pavement Markings | 2026-03-24 → 2026-03-11 A (-13d) | 2026-03-30 → 2026-03-12 A (-18d) | 0% → 100% | 11d → none |
| SIGN | **TRAFFIC SIGNS** | 2026-03-15 → 2026-03-11 (-4d) | 2026-03-30 → 2026-03-14 (-16d) |  |  |
| MKH2-02-003-EN-1670 | Pre-Qualification Submittal for Traffic Signs | 2026-03-15 → 2026-03-11 A (-4d) | 2026-03-19 → 2026-03-14 A (-5d) | 0% → 100% | 17d → none |
| MKH2-02-003-EN-1680 | Pre-Qualification Approval for Traffic Signs | 2026-03-24 → 2026-03-11 A (-13d) | 2026-03-30 → 2026-03-14 A (-16d) | 0% → 100% | 17d → none |
| ELE | **ELECTRICAL NETWORK** | 2026-03-15 → 2026-03-02 (-13d) | 2026-03-30 → 2026-03-15 (-15d) |  |  |
| PIPE | **PIPE FOR DUCT** | 2026-03-15 → 2026-03-14 (-1d) | 2026-03-30 → 2026-03-15 (-15d) |  |  |
| MKH2-02-003-EN-1690 | Pre-Qualification Submittal for Pipe for the Duct | 2026-03-15 → 2026-03-14 A (-1d) | 2026-03-19 → 2026-03-15 A (-4d) | 0% → 100% | 17d → none |
| MKH2-02-003-EN-1700 | Pre-Qualification Approval for Pipe for the Duct | 2026-03-24 → 2026-03-15 A (-9d) | 2026-03-30 → 2026-03-15 A (-15d) | 0% → 100% | 17d → none |
| LV-CAB | **LOW VOLTAGE CABLES** | 2026-03-15 → 2026-03-02 (-13d) | 2026-03-30 → 2026-03-07 (-23d) |  |  |
| MKH2-02-003-EN-1710 | Pre-Qualification Submittal for Low Voltage Cables | 2026-03-15 → 2026-03-02 A (-13d) | 2026-03-19 → 2026-03-05 A (-14d) | 0% → 100% | 17d → none |
| MKH2-02-003-EN-1720 | Pre-Qualification Approval for Low Voltage Cables | 2026-03-24 → 2026-03-05 A (-19d) | 2026-03-30 → 2026-03-07 A (-23d) | 0% → 100% | 17d → none |
| EARTH | **EARTHING SYSTEM** | 2026-03-15 → 2026-03-12 (-3d) | 2026-03-30 → 2026-03-15 (-15d) |  |  |
| MKH2-02-003-EN-1730 | Pre-Qualification Submittal for Earthing System | 2026-03-15 → 2026-03-12 A (-3d) | 2026-03-19 → 2026-03-14 A (-5d) | 0% → 100% | 17d → none |
| MKH2-02-003-EN-1740 | Pre-Qualification Approval for Earthing System | 2026-03-24 → 2026-03-14 A (-10d) | 2026-03-30 → 2026-03-15 A (-15d) | 0% → 100% | 17d → none |
| LV-DP | **LOW VOLTAGE DISTRIBUTION PANNEL** | 2026-03-15 → 2026-03-09 (-6d) | 2026-03-30 → 2026-03-11 (-19d) |  |  |
| MKH2-02-003-EN-1750 | Pre-Qualification Submittal for Distribution Panel | 2026-03-15 → 2026-03-09 A (-6d) | 2026-03-19 → 2026-03-09 A (-10d) | 0% → 100% | 18d → none |
| MKH2-02-003-EN-1760 | Pre-Qualification Approval for Distribution Panel | 2026-03-24 → 2026-03-09 A (-15d) | 2026-03-30 → 2026-03-11 A (-19d) | 0% → 100% | 18d → none |
| LIGH | **LIGHTING POLES** | 2026-03-15 → 2026-03-02 (-13d) | 2026-03-30 → 2026-03-08 (-22d) |  |  |
| MKH2-02-003-EN-1770 | Pre-Qualification Submittal for Lighting poles | 2026-03-15 → 2026-03-02 A (-13d) | 2026-03-19 → 2026-03-05 A (-14d) | 0% → 100% | 18d → none |
| MKH2-02-003-EN-1780 | Pre-Qualification Approval for Lighting poles | 2026-03-24 → 2026-03-05 A (-19d) | 2026-03-30 → 2026-03-08 A (-22d) | 0% → 100% | 18d → none |
| FID & PAN | **LIGHTINH PANNELS/FEEDER PILLERS** | 2026-03-15 → 2026-03-09 (-6d) | 2026-03-30 → 2026-03-11 (-19d) |  |  |
| MKH2-02-003-EN-1790 | Pre-Qualification Submittal for Lighting panels/Feeder Pillers | 2026-03-15 → 2026-03-09 A (-6d) | 2026-03-19 → 2026-03-09 A (-10d) | 0% → 100% | 18d → none |
| MKH2-02-003-EN-1800 | Pre-Qualification Approval for Lighting panels/Feeder Pillers | 2026-03-24 → 2026-03-09 A (-15d) | 2026-03-30 → 2026-03-11 A (-19d) | 0% → 100% | 18d → none |
| LUM | **STREET LIGHTING LUMINAIRE** | 2026-03-15 → 2026-03-02 (-13d) | 2026-03-30 → 2026-03-08 (-22d) |  |  |
| MKH2-02-003-EN-1810 | Pre-Qualification Submittal for Lighting Luminaire | 2026-03-15 → 2026-03-02 A (-13d) | 2026-03-19 → 2026-03-05 A (-14d) | 0% → 100% | 15d → none |
| MKH2-02-003-EN-1820 | Pre-Qualification Approval for Lighting Luminaire | 2026-03-24 → 2026-03-05 A (-19d) | 2026-03-30 → 2026-03-08 A (-22d) | 0% → 100% | 15d → none |
| STROM | **OPPEN CHANNEL** | 2026-03-15 → 2026-03-08 (-7d) | 2026-03-30 → 2026-03-11 (-19d) |  |  |
| RIPRAP | **RIPRAP MATERIAL** | 2026-03-15 → 2026-03-08 (-7d) | 2026-03-30 → 2026-03-11 (-19d) |  |  |
| MKH2-02-003-EN-1830 | Pre-Qualification Submittal for RIP-RAP Material | 2026-03-15 → 2026-03-08 A (-7d) | 2026-03-19 → 2026-03-09 A (-10d) | 0% → 100% | 18d → none |
| MKH2-02-003-EN-1840 | Pre-Qualification Approval for RIP-RAP Material | 2026-03-24 → 2026-03-09 A (-15d) | 2026-03-30 → 2026-03-11 A (-19d) | 0% → 100% | 18d → none |
| ACESSO | **ACCESSORIES FOR RIPRAP** | 2026-03-15 → 2026-03-08 (-7d) | 2026-03-30 → 2026-03-11 (-19d) |  |  |
| MKH2-02-003-EN-1850 | Pre-Qualification Submittal for Accessories for RIP-RAP | 2026-03-15 → 2026-03-08 A (-7d) | 2026-03-19 → 2026-03-09 A (-10d) | 0% → 100% | 11d → none |
| MKH2-02-003-EN-1860 | Pre-Qualification Approval for Accessories for RIP-RAP | 2026-03-24 → 2026-03-09 A (-15d) | 2026-03-30 → 2026-03-11 A (-19d) | 0% → 100% | 11d → none |
| MAT | **MATERIAL SUBMITTAL** | 2026-03-31 → 2026-03-08 (-23d) | 2026-04-14 → 2026-06-06 (+53d) |  |  |
| ROAD | **ROAD WORKS-CIVIL** | 2026-03-31 → 2026-03-08 (-23d) | 2026-04-12 → 2026-05-16 (+34d) |  |  |
| STEEL | **STEEL REINFORCEMENT** | 2026-03-31 → 2026-03-09 (-22d) | 2026-04-12 → 2026-03-09 (-34d) |  |  |

| ID | Task | Start | Finish | Complete | Total float | Other |
| --- | --- | --- | --- | --- | --- | --- |
| MKH2-02-003-EN-1870 | Material Submittal for Steel Reinforcement | 2026-03-31 → 2026-03-09 A (-22d) | 2026-04-05 → 2026-03-09 A (-27d) | 0% → 100% | 17d → none |  |
| MKH2-02-003-EN-1880 | Material Approval for Steel Reinforcement | 2026-04-06 → 2026-03-09 A (-28d) | 2026-04-12 → 2026-03-09 A (-34d) | 0% → 100% | 17d → none |  |
| RMC | **READY MIX CONCRETE** | 2026-03-31 → 2026-03-29 (-2d) | 2026-04-12 → 2026-03-29 (-14d) |  |  |  |
| MKH2-02-003-EN-1890 | Material Submittal Submittal for Ready Mixed Concrete | 2026-03-31 → 2026-03-29 A (-2d) | 2026-04-05 → 2026-03-29 A (-7d) | 0% → 100% | 17d → none |  |
| MKH2-02-003-EN-1900 | Material Approval for Ready Mixed Concrete | 2026-04-06 → 2026-03-29 A (-8d) | 2026-04-12 → 2026-03-29 A (-14d) | 0% → 100% | 17d → none | resources Cost for Engg [1]; Consultant Staff [150 h] → Consultant Staff [150 h]; Cost for Engg [1] |
| WP | **WATER PROOFING** | 2026-03-31 → 2026-03-28 (-3d) | 2026-04-12 → 2026-03-28 (-15d) |  |  |  |
| MKH2-02-003-EN-1910 | Material Submittal for Water Proof ing | 2026-03-31 → 2026-03-28 A (-3d) | 2026-04-05 → 2026-03-28 A (-8d) | 0% → 100% | 19d → none |  |
| MKH2-02-003-EN-1920 | Material Approval for Water Proofing | 2026-04-06 → 2026-03-28 A (-9d) | 2026-04-12 → 2026-03-28 A (-15d) | 0% → 100% | 19d → none | resources Cost for Engg [1]; Consultant Staff [150 h] → Consultant Staff [150 h]; Cost for Engg [1] |
| ABC | **AGGREGATE BASE COURSE** | 2026-03-31 → 2026-03-17 (-14d) | 2026-04-12 → 2026-03-24 (-19d) |  |  |  |
| MKH2-02-003-EN-1930 | Material Submittal for Aggregate Base Cource | 2026-03-31 → 2026-03-17 A (-14d) | 2026-04-05 → 2026-03-18 A (-18d) | 0% → 100% | 17d → none |  |
| MKH2-02-003-EN-1940 | Material Approval for Aggregate Base Cource | 2026-04-06 → 2026-03-18 A (-19d) | 2026-04-12 → 2026-03-24 A (-19d) | 0% → 100% | 17d → none | resources Cost for Engg [1]; Consultant Staff [150 h] → Consultant Staff [150 h]; Cost for Engg [1] |
| BBC& BWC | **BITU,INOUS BASE & WEARING COURSE** | 2026-03-31 → 2026-03-08 (-23d) | 2026-04-12 → 2026-03-09 (-34d) |  |  |  |
| MKH2-02-003-EN-1950 | Material Submittal for Bituminous Base & Wearing Cource | 2026-03-31 → 2026-03-08 A (-23d) | 2026-04-05 → 2026-03-09 A (-27d) | 0% → 100% | 11d → none |  |
| MKH2-02-003-EN-1960 | Material Approval for Bituminous Base & Wearing Cource | 2026-04-06 → 2026-03-08 A (-29d) | 2026-04-12 → 2026-03-09 A (-34d) | 0% → 100% | 11d → none | resources Cost for Engg [1]; Consultant Staff [150 h] → Consultant Staff [150 h]; Cost for Engg [1] |
| CURB | **PRE-CAST CONCRETE CURBS** | 2026-03-31 → 2026-03-29 (-2d) | 2026-04-12 → 2026-03-29 (-14d) |  |  |  |
| MKH2-02-003-EN-1970 | Material Submittal for Precast Concrete Curb | 2026-03-31 → 2026-03-29 A (-2d) | 2026-04-05 → 2026-03-29 A (-7d) | 0% → 100% | 9d → none |  |
| MKH2-02-003-EN-1980 | Material Approval for Precast Concrete Curb | 2026-04-06 → 2026-03-29 A (-8d) | 2026-04-12 → 2026-03-29 A (-14d) | 0% → 100% | 9d → none | resources Cost for Engg [1]; Consultant Staff [150 h] → Consultant Staff [150 h]; Cost for Engg [1] |
| INTR | **INTERLOCKING PAVING BLOCKS** | 2026-03-31 → 2026-03-29 (-2d) | 2026-04-12 → 2026-03-29 (-14d) |  |  |  |
| MKH2-02-003-EN-1990 | Material Submittal for Interlocking Block Pavers | 2026-03-31 → 2026-03-29 A (-2d) | 2026-04-05 → 2026-03-29 A (-7d) | 0% → 100% | 11d → none |  |
| MKH2-02-003-EN-2000 | Material Approval for Interlocking Block Pavers | 2026-04-06 → 2026-03-29 A (-8d) | 2026-04-12 → 2026-03-29 A (-14d) | 0% → 100% | 11d → none | resources Cost for Engg [1]; Consultant Staff [150 h] → Consultant Staff [150 h]; Cost for Engg [1] |
| MARK | **PAVEMENT MARKING** | 2026-03-31 → 2026-05-12 (+42d) | 2026-04-12 → 2026-05-16 (+34d) |  |  |  |
| MKH2-02-003-EN-2010 | Material Submittal for Pavement Markings | 2026-03-31 → 2026-05-12 A (+42d) | 2026-04-05 → 2026-05-16 A (+41d) | 0% → 100% | 11d → none |  |
| MKH2-02-003-EN-2020 | Material Approval for Pavement Markings | 2026-04-06 → 2026-05-12 A (+36d) | 2026-04-12 → 2026-05-16 A (+34d) | 0% → 100% | 11d → none | resources Cost for Engg [1]; Consultant Staff [150 h] → Consultant Staff [150 h]; Cost for Engg [1] |
| SIGN | **TRAFFIC SIGNS** | 2026-03-31 → 2026-04-22 (+22d) | 2026-04-12 → 2026-04-28 (+16d) |  |  |  |
| MKH2-02-003-EN-2030 | Material Submittal for Traffic Signs | 2026-03-31 → 2026-04-22 A (+22d) | 2026-04-05 → 2026-04-23 A (+18d) | 0% → 100% | 17d → none |  |
| MKH2-02-003-EN-2040 | Material Approval for Traffic Signs | 2026-04-06 → 2026-04-25 A (+19d) | 2026-04-12 → 2026-04-28 A (+16d) | 0% → 100% | 17d → none | resources Cost for Engg [1]; Consultant Staff [150 h] → Consultant Staff [150 h]; Cost for Engg [1] |
| ELE | **ELECTRICAL NETWORK** | 2026-03-31 → 2026-03-28 (-3d) | 2026-04-12 → 2026-04-29 (+17d) |  |  |  |
| PIPE | **PIPE FOR DUCT** | 2026-03-31 → 2026-03-28 (-3d) | 2026-04-12 → 2026-03-30 (-13d) |  |  |  |
| MKH2-02-003-EN-2050 | Material Submittal for Pipe for the Duct | 2026-03-31 → 2026-03-28 A (-3d) | 2026-04-05 → 2026-03-30 A (-6d) | 0% → 100% | 17d → none |  |
| MKH2-02-003-EN-2060 | Material Approval for Pipe for the Duct | 2026-04-06 → 2026-03-28 A (-9d) | 2026-04-12 → 2026-03-30 A (-13d) | 0% → 100% | 17d → none | resources Cost for Engg [1]; Consultant Staff [250 h] → Consultant Staff [250 h]; Cost for Engg [1] |
| LV-CAB | **LOW VOLTAGE CABLES** | 2026-03-31 → 2026-03-28 (-3d) | 2026-04-12 → 2026-03-30 (-13d) |  |  |  |
| MKH2-02-003-EN-2070 | Material Submittal for Low Voltage Cables | 2026-03-31 → 2026-03-28 A (-3d) | 2026-04-05 → 2026-03-28 A (-8d) | 0% → 100% | 17d → none |  |
| MKH2-02-003-EN-2080 | Material Approval for Low Voltage Cables | 2026-04-06 → 2026-03-28 A (-9d) | 2026-04-12 → 2026-03-30 A (-13d) | 0% → 100% | 17d → none | resources Cost for Engg [1]; Consultant Staff [250 h] → Consultant Staff [250 h]; Cost for Engg [1] |
| EARTH | **EARTHING SYSTEM** | 2026-03-31 → 2026-04-22 (+22d) | 2026-04-12 → 2026-04-29 (+17d) |  |  |  |
| MKH2-02-003-EN-2090 | Material Submittal for Earthing System | 2026-03-31 → 2026-04-22 A (+22d) | 2026-04-05 → 2026-04-23 A (+18d) | 0% → 100% | 17d → none |  |
| MKH2-02-003-EN-2100 | Material Approval for Earthing System | 2026-04-06 → 2026-04-25 A (+19d) | 2026-04-12 → 2026-04-29 A (+17d) | 0% → 100% | 17d → none | resources Cost for Engg [1]; Consultant Staff [250 h] → Consultant Staff [250 h]; Cost for Engg [1] |
| LV-DP | **LOW VOLTAGE DISTRIBUTION PANNEL** | 2026-03-31 → 2026-04-18 (+18d) | 2026-04-12 → 2026-04-21 (+9d) |  |  |  |
| MKH2-02-003-EN-2110 | Material Submittal for Distribution Panel | 2026-03-31 → 2026-04-18 A (+18d) | 2026-04-05 → 2026-04-19 A (+14d) | 0% → 100% | 18d → none |  |
| MKH2-02-003-EN-2120 | Material Approval for Distribution Panel | 2026-04-06 → 2026-04-21 A (+15d) | 2026-04-12 → 2026-04-21 A (+9d) | 0% → 100% | 18d → none | resources Cost for Engg [1]; Consultant Staff [250 h] → Consultant Staff [250 h]; Cost for Engg [1] |
| LIGH | **LIGHTING POLES** | 2026-03-31 → 2026-04-04 (+4d) | 2026-04-12 → 2026-04-09 (-3d) |  |  |  |
| MKH2-02-003-EN-2130 | Material Submittal for Lighting poles | 2026-03-31 → 2026-04-04 A (+4d) | 2026-04-05 A | 0% → 100% | 18d → none |  |
| MKH2-02-003-EN-2140 | Material Approval for Lighting poles | 2026-04-06 → 2026-04-05 A (-1d) | 2026-04-12 → 2026-04-09 A (-3d) | 0% → 100% | 18d → none | resources Cost for Engg [1]; Consultant Staff [250 h] → Consultant Staff [250 h]; Cost for Engg [1] |
| FID & PAN | **LIGHTINH PANNELS/FEEDER PILLERS** | 2026-03-31 → 2026-04-19 (+19d) | 2026-04-12 → 2026-04-21 (+9d) |  |  |  |
| MKH2-02-003-EN-2150 | Material Submittal for Lighting panels/Feeder Pillers | 2026-03-31 → 2026-04-19 A (+19d) | 2026-04-05 → 2026-04-20 A (+15d) | 0% → 100% | 18d → none |  |
| MKH2-02-003-EN-2160 | Material Approval for Lighting panels/Feeder Pillers | 2026-04-06 → 2026-04-21 A (+15d) | 2026-04-12 → 2026-04-21 A (+9d) | 0% → 100% | 18d → none | resources Cost for Engg [1]; Consultant Staff [250 h] → Consultant Staff [250 h]; Cost for Engg [1] |
| LUM | **STREET LIGHTING LUMINAIRE** | 2026-03-31 → 2026-04-04 (+4d) | 2026-04-12 → 2026-04-09 (-3d) |  |  |  |
| MKH2-02-003-EN-2170 | Material Submittal for Lighting Luminaire | 2026-03-31 → 2026-04-04 A (+4d) | 2026-04-05 A | 0% → 100% | 15d → none |  |
| MKH2-02-003-EN-2180 | Material Approval for Lighting Luminaire | 2026-04-06 → 2026-04-05 A (-1d) | 2026-04-12 → 2026-04-09 A (-3d) | 0% → 100% | 15d → none | resources Cost for Engg [48]; Consultant Staff [250 h] → Consultant Staff [250 h]; Cost for Engg [48] |
| STROM | **OPPEN CHANNEL** | 2026-03-31 → 2026-06-03 (+64d) | 2026-04-14 → 2026-06-06 (+53d) |  |  |  |
| RIPRAP | **RIPRAP MATERIAL** | 2026-03-31 → 2026-06-03 (+64d) | 2026-04-12 → 2026-06-06 (+55d) |  |  |  |
| MKH2-02-003-EN-2190 | Material Submittal for RIP-RAP Material | 2026-03-31 → 2026-06-03 A (+64d) | 2026-04-05 → 2026-06-04 A (+60d) | 0% → 100% | 18d → none |  |
| MKH2-02-003-EN-2200 | Material Approval for RIP-RAP Material | 2026-04-06 → 2026-06-04 A (+59d) | 2026-04-12 → 2026-06-06 A (+55d) | 0% → 100% | 18d → none | resources Cost for Engg [1]; Consultant Staff [250 h] → Consultant Staff [250 h]; Cost for Engg [1] |
| ACESSO | **ACCESSORIES FOR RIPRAP** | 2026-03-31 → 2026-06-03 (+64d) | 2026-04-14 → 2026-06-06 (+53d) |  |  |  |
| MKH2-02-003-EN-2210 | Material Submittal for Accessories for RIP-RAP | 2026-03-31 → 2026-06-03 A (+64d) | 2026-04-05 → 2026-06-04 A (+60d) | 0% → 100% | 11d → none |  |
| MKH2-02-003-EN-2220 | Material Approval for Accessories for RIP-RAP | 2026-04-06 → 2026-06-04 A (+59d) | 2026-04-14 → 2026-06-06 A (+53d) | 0% → 100% | 11d → none | resources Cost for Engg [1]; Consultant Staff [250 h] → Consultant Staff [250 h]; Cost for Engg [1] |
| PRO | **PROCUREMENT** | 2026-04-13 → 2026-03-10 (-34d) | 2026-08-16 → 2026-12-20 (+126d) |  |  |  |
| SLI | **SHORT LEAD ITEM** | 2026-04-13 → 2026-03-10 (-34d) | 2026-06-18 → 2026-11-29 (+164d) |  |  |  |
| ROAD | **ROAD WORKS-CIVIL** | 2026-04-13 → 2026-03-10 (-34d) | 2026-06-18 → 2026-11-29 (+164d) |  |  |  |
| STEEL | **STEEL REINFORCEMENT** | 2026-04-13 → 2026-03-10 (-34d) | 2026-06-18 → 2026-06-25 (+7d) |  |  |  |
| MKH2-02-003-PR-1000 | PO for Steel Reinforcement | 2026-04-13 → 2026-03-10 A (-34d) | 2026-04-22 → 2026-03-11 A (-42d) | 0% → 100% | 17d → none |  |
| MKH2-02-003-PR-1010 | Material Fabrication for Steel Reinforcement | 2026-04-23 → 2026-03-12 A (-42d) | 2026-05-11 → 2026-03-15 A (-57d) | 0% → 100% | 17d → none |  |
| MKH2-02-003-PR-1020 | Material Delivery for 1st lot of Steel Reinforcement | 2026-05-12 → 2026-03-18 A (-55d) | 2026-06-01 → 2026-03-25 A (-68d) | 0% → 100% | 17d → none | resources Cost for Proc [1]; Purchaser [1250 h] → Purchaser [1250 h]; Cost for Proc [1] |
| MKH2-02-003-PR-1030 | Material Delivery for 2nd lot of Steel Reinforcement | 2026-06-02 → 2026-05-16 A (-17d) | 2026-06-18 → 2026-06-25 A (+7d) | 0% → 100% | 17d → none | resources Cost for Proc [1]; Purchaser [1250 h] → Purchaser [1250 h]; Cost for Proc [1] |
| RMC | **READY MIX CONCRETE** | 2026-04-13 → 2026-04-07 (-6d) | 2026-05-23 → 2026-08-22 (+91d) |  |  |  |
| MKH2-02-003-PR-1040 | PO for Ready Mixed Concrete | 2026-04-13 → 2026-04-07 A (-6d) | 2026-04-22 → 2026-04-07 A (-15d) | 0% → 100% | 17d → none |  |
| MKH2-02-003-PR-1050 | Material Delivery for 1st lot of Ready Mixed Concrete | 2026-04-23 → 2026-04-07 A (-16d) | 2026-05-23 → 2026-08-22 A (+91d) | 0% → 100% | 17d → none | resources Cost for Proc [1]; Purchaser [650 h] → Purchaser [650 h]; Cost for Proc [1] |
| WP | **WATER PROOFING** | 2026-04-13 → 2026-04-08 (-5d) | 2026-06-10 → 2026-06-11 (+1d) |  |  |  |
| MKH2-02-003-PR-1060 | PO for Water Proofing | 2026-04-13 → 2026-04-08 A (-5d) | 2026-04-19 → 2026-04-08 A (-11d) | 0% → 100% | 19d → none |  |
| MKH2-02-003-PR-1070 | Material Fabrication for Water Proofing | 2026-04-20 → 2026-04-09 A (-11d) | 2026-05-12 → 2026-06-10 A (+29d) | 0% → 100% | 19d → none |  |
| MKH2-02-003-PR-1080 | Material Delivery for 1st lot of Water Proofing | 2026-05-13 → 2026-04-11 A (-32d) | 2026-06-10 → 2026-06-11 A (+1d) | 0% → 100% | 19d → none | resources Cost for Proc [1]; Purchaser [1510 h] → Purchaser [1510 h]; Cost for Proc [1] |

| ID | Task | Start | Finish | Complete | Total float | Other |
| --- | --- | --- | --- | --- | --- | --- |
| ABC | **AGGREGATE BASE COURSE** | 2026-04-13 → 2026-03-11 (-33d) | 2026-06-06 → 2026-08-19 (+74d) |  |  |  |
| MKH2-02-003-PR-1090 | PO for Aggregate Base Course | 2026-04-13 → 2026-03-11 A (-33d) | 2026-04-16 → 2026-03-12 A (-35d) | 0% → 100% | 17d → none |  |
| MKH2-02-003-PR-1100 | Material Delivery for 1st lot of Aggregate Base Course - Stage 1 | 2026-04-18 → 2026-03-14 A (-35d) | 2026-05-10 → 2026-06-10 A (+31d) | 0% → 100% | 17d → none | resources Cost for Proc [1]; Purchaser [650 h] → Purchaser [650 h]; Cost for Proc [1] |
| MKH2-02-003-PR-1110 | Material Delivery for 2nd lot of Aggregate Base Course - Stage 2 | 2026-05-11 → 2026-06-11 A (+31d) | 2026-06-06 → 2026-08-19 A (+74d) | 0% → 100% | 17d → none | resources Cost for Proc [1]; Purchaser [1510 h] → Purchaser [1510 h]; Cost for Proc [1] |
| BBC& BWC | **BITUMINOUS BASE & WEARING COURSE** | 2026-04-13 → 2026-04-08 (-5d) | 2026-05-16 → 2026-11-01 (+169d) |  |  |  |
| MKH2-02-003-PR-1120 | PO for Bituminous Base & Wearing Cource | 2026-04-13 → 2026-04-08 A (-5d) | 2026-04-16 → 2026-04-08 A (-8d) | 0% → 100% | 11d → none |  |
| MKH2-02-003-PR-1130 | Material Delivery for 1st lot to the Site | 2026-04-18 → 2026-04-08 A (-10d) | 2026-05-16 → 2026-11-01 (+169d) | 0% → 75% | 11d → -6d | resources Cost for Proc [1]; Purchaser [1510 h] → Purchaser [1510 h]; Cost for Proc [1] |
| CURB | **PRE-CAST CONCRETE CURBS** | 2026-04-13 → 2026-04-20 (+7d) | 2026-06-16 → 2026-08-08 (+53d) |  |  |  |
| MKH2-02-003-PR-1140 | PO for Precast Concrete curb | 2026-04-13 → 2026-04-20 A (+7d) | 2026-04-16 → 2026-04-21 A (+5d) | 0% → 100% | 9d → none |  |
| MKH2-02-003-PR-1150 | Material Fabrication for Precast Concrete curb | 2026-04-18 → 2026-04-22 A (+4d) | 2026-05-14 → 2026-04-23 A (-21d) | 0% → 100% | 9d → none |  |
| MKH2-02-003-PR-1160 | Material Delivery for 1st lot of Precast Concrete Kerb | 2026-05-16 → 2026-04-25 A (-21d) | 2026-06-16 → 2026-08-08 A (+53d) | 0% → 100% | 9d → none | resources Cost for Proc [1]; Purchaser [1510 h] → Purchaser [1510 h]; Cost for Proc [1] |
| INTR | **INTERLOCKING PAVING BLOCKS** | 2026-04-13 → 2026-05-16 (+33d) | 2026-06-14 → 2026-11-26 (+165d) |  |  |  |
| MKH2-02-003-PR-1170 | PO for Interlocking Block Pavers | 2026-04-13 → 2026-05-16 A (+33d) | 2026-04-18 → 2026-05-17 A (+29d) | 0% → 100% | 11d → none |  |
| MKH2-02-003-PR-1180 | Material Fabrication for Interlocking Block Pavers | 2026-04-19 → 2026-05-17 A (+28d) | 2026-05-16 → 2026-05-18 A (+2d) | 0% → 100% | 11d → none |  |
| MKH2-02-003-PR-1190 | Material Delivery for 1st lot of Interlocking Block Pavers | 2026-05-17 → 2026-07-15 A (+59d) | 2026-06-14 → 2026-11-26 (+165d) | 0% → 80% | 11d → -6d | resources Cost for Proc [1]; Purchaser [1520 h] → Purchaser [1520 h]; Cost for Proc [1] |
| MARK | **PAVEMENT MARKING** | 2026-04-13 → 2026-09-16 (+156d) | 2026-06-14 → 2026-11-29 (+168d) |  |  |  |
| MKH2-02-003-PR-1200 | PO for Pavement Markings | 2026-04-13 → 2026-09-16 A (+156d) | 2026-04-18 → 2026-09-19 A (+154d) | 0% → 100% | 11d → none |  |
| MKH2-02-003-PR-1210 | Material Fabrication for Pavement Markings | 2026-04-19 → 2026-10-07 (+171d) | 2026-05-16 → 2026-11-03 (+171d) |  | 11d → -10d |  |
| MKH2-02-003-PR-1220 | Material Delivery for 1st lot of Pavement Markings | 2026-05-17 → 2026-11-04 (+171d) | 2026-06-14 → 2026-11-29 (+168d) |  | 11d → -10d | resources Cost for Proc [1]; Purchaser [1520 h] → Purchaser [1520 h]; Cost for Proc [1] |
| SIGN | **TRAFFIC SIGNS** | 2026-04-13 → 2026-04-29 (+16d) | 2026-06-06 → 2026-07-01 (+25d) |  |  |  |
| MKH2-02-003-PR-1230 | PO for Traffic Signs | 2026-04-13 → 2026-04-29 A (+16d) | 2026-04-19 → 2026-04-30 A (+11d) | 0% → 100% | 17d → none |  |
| MKH2-02-003-PR-1240 | Material Fabrication for Traffic Signs | 2026-04-20 → 2026-05-02 A (+12d) | 2026-05-17 → 2026-06-10 A (+24d) | 0% → 100% | 17d → none |  |
| MKH2-02-003-PR-1250 | Material Delivery for 1st lot of Traffic Signs | 2026-05-18 → 2026-06-10 A (+23d) | 2026-06-06 → 2026-07-01 A (+25d) | 0% → 100% | 17d → none | resources Cost for Proc [1]; Purchaser [1520 h] → Purchaser [1520 h]; Cost for Proc [1] |
| ELE | **ELECTRICAL NETWORK** | 2026-04-13 → 2026-04-01 (-12d) | 2026-06-18 → 2026-07-01 (+13d) |  |  |  |
| PIPE | **PIPE FOR THE DUCTS** | 2026-04-13 → 2026-04-01 (-12d) |  |  |  |  |
| MKH2-02-003-PR-1260 | PO for Pipe for Duct | 2026-04-13 → 2026-04-01 A (-12d) | 2026-04-25 → 2026-04-01 A (-24d) | 0% → 100% | 17d → none |  |
| MKH2-02-003-PR-1270 | Material Fabrication for Pipe for Duct | 2026-04-26 → 2026-04-01 A (-25d) | 2026-05-23 → 2026-06-08 A (+16d) | 0% → 100% | 17d → none |  |
| MKH2-02-003-PR-1280 | Material Delivery for 1st lot of Pipe for Duct | 2026-05-24 → 2026-06-08 A (+15d) | 2026-06-18 A | 0% → 100% | 17d → none | resources Cost for Proc [1]; Purchaser [650 h] → Purchaser [650 h]; Cost for Proc [1] |
| EART | **EARTHING SYSTEM** | 2026-04-13 → 2026-04-29 (+16d) | 2026-06-18 → 2026-07-01 (+13d) |  |  |  |
| MKH2-02-003-PR-1290 | PO for Earthing System | 2026-04-13 → 2026-04-29 A (+16d) | 2026-04-22 → 2026-04-30 A (+8d) | 0% → 100% | 17d → none |  |
| MKH2-02-003-PR-1300 | Material Fabrication for Earthing System | 2026-04-23 → 2026-05-02 A (+9d) | 2026-05-20 → 2026-06-17 A (+28d) | 0% → 100% | 17d → none |  |
| MKH2-02-003-PR-1310 | Material Delivery for 1st lot of Earthing System | 2026-05-21 → 2026-06-18 A (+28d) | 2026-06-18 → 2026-07-01 A (+13d) | 0% → 100% | 17d → none | resources Cost for Proc [1]; Purchaser [650 h] → Purchaser [650 h]; Cost for Proc [1] |
| CHAN | **OPEN CHANNEL** | 2026-04-15 → 2026-06-10 (+56d) | 2026-05-10 → 2026-09-08 (+121d) |  |  |  |
| MKH2-02-003-PR-1320 | PO for RIP-RAP Material & Its Acessories | 2026-04-15 → 2026-06-10 A (+56d) | 2026-04-19 → 2026-06-11 A (+53d) | 0% → 100% | 23d → none |  |
| MKH2-02-003-PR-1330 | Material Delivery for RIP-RAP Material & Its Acessories | 2026-04-20 → 2026-06-17 A (+58d) | 2026-05-10 → 2026-09-08 A (+121d) | 0% → 100% | 23d → none | resources Cost for Proc [1]; Purchaser [1450 h] → Purchaser [1450 h]; Cost for Proc [1] |
| LLI | **LONG LEAD ITEM** | 2026-04-13 → 2026-04-25 (+12d) | 2026-08-16 → 2026-12-20 (+126d) |  |  |  |
| POW | **ELECTRICAL POWER** | 2026-04-13 → 2026-05-16 (+33d) | 2026-08-02 → 2026-12-09 (+129d) |  |  |  |
| 1 | **LV-CABLES** | 2026-04-13 → 2026-05-16 (+33d) | 2026-07-25 → 2026-12-08 (+136d) |  |  |  |
| MKH2-02-003-PR-1340 | PO for Low Voltage Cables | 2026-04-13 → 2026-05-16 A (+33d) | 2026-04-19 → 2026-05-17 A (+28d) | 0% → 100% | 17d → none |  |
| MKH2-02-003-PR-1350 | Material Fabrication for Low Voltage Cables - Stage 1 | 2026-04-20 → 2026-05-17 A (+27d) | 2026-04-29 → 2026-05-18 A (+19d) | 0% → 100% | 17d → none |  |
| MKH2-02-003-PR-1360 | Material Fabrication for Low Voltage Cables - Stage 2 | 2026-04-30 → 2026-05-17 A (+17d) | 2026-05-23 → 2026-05-18 A (-5d) | 0% → 100% | 17d → none |  |
| MKH2-02-003-PR-1370 | Material Fabrication for Low Voltage Cables - Stage 3 | 2026-05-24 → 2026-05-17 A (-7d) | 2026-06-18 → 2026-05-18 A (-31d) | 0% → 100% | 17d → none |  |
| MKH2-02-003-PR-1380 | 6/2 | 2026-06-20 → 2026-05-20 A (-31d) | 2026-07-14 → 2026-06-25 A (-19d) | 0% → 100% | 17d → none | was named Material Delivery for Low Voltage Cables 1st Lot; resources Cost for Proc [1]; Purchaser [1650 h] → Purchaser [1650 h]; Cost for Proc [1] |
| MKH2-02-003-PR-1390 | Staging Time for Low Voltage Cables | 2026-07-15 → 2026-05-20 A (-56d) | 2026-07-25 → 2026-12-08 (+136d) | 0% → 60% | 17d → -8d |  |
| 2 | **LV-DISTRIBUTION PANNELS** | 2026-04-13 → 2026-05-25 (+42d) | 2026-08-02 → 2026-12-09 (+129d) |  |  |  |
| MKH2-02-003-PR-1400 | PO for Low Voltage Distribution Panels | 2026-04-13 → 2026-05-25 A (+42d) | 2026-04-18 → 2026-05-26 A (+38d) | 0% → 100% | 18d → none |  |
| MKH2-02-003-PR-1410 | Material Fabrication for Low Voltage Distribution Panels - Stage 1 | 2026-04-19 → 2026-06-10 A (+52d) | 2026-05-07 → 2026-06-11 A (+35d) | 0% → 100% | 18d → none |  |
| MKH2-02-003-PR-1420 | Material Fabrication for Low Voltage Distribution Panels - Stage 2 | 2026-05-09 → 2026-06-13 A (+35d) | 2026-05-30 → 2026-06-14 A (+15d) | 0% → 100% | 18d → none |  |
| MKH2-02-003-PR-1430 | Material Fabrication for Low Voltage Distribution Panels - Stage 3 | 2026-05-31 → 2026-06-30 A (+30d) | 2026-06-17 → 2026-07-01 A (+14d) | 0% → 100% | 18d → none |  |
| MKH2-02-003-PR-1440 | Material Delivery for Low Voltage Distribution Panels 1st Lot | 2026-06-18 → 2026-07-02 A (+14d) | 2026-07-13 → 2026-07-18 A (+5d) | 0% → 100% | 18d → none | resources Cost for Proc [1]; Purchaser [1250 h] → Purchaser [1250 h]; Cost for Proc [1] |
| MKH2-02-003-PR-1450 | Material Delivery for Low Voltage Distribution Panels 2nd Lot | 2026-07-14 → 2026-07-18 A (+4d) | 2026-07-22 → 2026-08-29 A (+38d) | 0% → 100% | 18d → none | resources Cost for Proc [1]; Purchaser [1250 h] → Purchaser [1250 h]; Cost for Proc [1] |
| MKH2-02-003-PR-1460 | Staging Time for LV Distribution pannel | 2026-07-23 → 2026-07-18 A (-5d) | 2026-08-02 → 2026-12-09 (+129d) |  | 18d → -10d |  |
| LIGH1 | **STREET LIGHTING** | 2026-04-13 → 2026-04-25 (+12d) | 2026-08-16 → 2026-12-20 (+126d) |  |  |  |
| POL | **POLES** | 2026-04-13 → 2026-04-25 (+12d) | 2026-08-02 → 2026-10-15 (+74d) |  |  |  |
| MKH2-02-003-PR-1470 | PO for Lighting poles single arm & double arm | 2026-04-13 → 2026-04-25 A (+12d) | 2026-04-16 → 2026-04-26 A (+10d) | 0% → 100% | 18d → none |  |
| MKH2-02-003-PR-1480 | Material Fabrication for Lighting poles - Stage 1 | 2026-04-18 → 2026-04-27 A (+9d) | 2026-04-27 → 2026-04-30 A (+3d) | 0% → 100% | 18d → none |  |
| MKH2-02-003-PR-1490 | Material Fabrication for Lighting poles - Stage 2 | 2026-04-28 → 2026-06-04 A (+37d) | 2026-05-20 → 2026-06-06 A (+17d) | 0% → 100% | 18d → none |  |
| MKH2-02-003-PR-1500 | Material Fabrication for Lighting poles - Stage 3 | 2026-05-21 → 2026-06-08 A (+18d) | 2026-06-16 → 2026-06-09 A (-7d) | 0% → 100% | 18d → none |  |
| MKH2-02-003-PR-1510 | Material Delivery for Lighting poles 1st lot | 2026-06-17 → 2026-06-10 A (-7d) | 2026-07-12 → 2026-06-18 A (-24d) | 0% → 100% | 18d → none | resources Cost for Proc [1]; Purchaser [850 h] → Purchaser [850 h]; Cost for Proc [1] |
| MKH2-02-003-PR-1530 | Staging Time for Street Light poles | 2026-07-23 → 2026-06-10 A (-43d) | 2026-08-02 → 2026-10-15 (+74d) |  | 18d → 37d |  |
| MKH2-02-003-PR-1520 | Material Delivery for Lighting poles 2nd lot | 2026-07-13 → 2026-06-18 A (-25d) | 2026-07-22 → 2026-06-25 A (-27d) | 0% → 100% | 18d → none | resources Cost for Proc [1]; Purchaser [650 h] → Purchaser [650 h]; Cost for Proc [1] |
| PANN | **PANNELS & FEEDER PILLERS** | 2026-04-13 → 2026-05-25 (+42d) | 2026-08-12 → 2026-12-20 (+130d) |  |  |  |
| MKH2-02-003-PR-1540 | PO for Lighting Panels/Feeder Pillers | 2026-04-13 → 2026-05-25 A (+42d) | 2026-04-15 → 2026-05-26 A (+41d) | 0% → 100% | 18d → none |  |
| MKH2-02-003-PR-1550 | Material Fabrication for Lighting Panels/Feeder Pillers - Stage 1 | 2026-04-16 → 2026-06-10 A (+55d) | 2026-05-09 → 2026-06-11 A (+33d) | 0% → 100% | 18d → none |  |
| MKH2-02-003-PR-1560 | Material Fabrication for Lighting Panels/Feeder Pillers - Stage 2 | 2026-05-10 → 2026-08-13 A (+95d) | 2026-06-04 → 2026-08-15 A (+72d) | 0% → 100% | 18d → none |  |
| MKH2-02-003-PR-1570 | Material Fabrication for Lighting Panels/Feeder Pillers - Stage 3 | 2026-06-06 → 2026-08-15 A (+70d) | 2026-06-28 → 2026-08-16 A (+49d) | 0% → 100% | 18d → none |  |
| MKH2-02-003-PR-1580 | Material Delivery for Lighting Panels/Feeder Pillers 1st lot | 2026-06-29 → 2026-08-20 A (+52d) | 2026-07-23 → 2026-08-29 A (+37d) | 0% → 100% | 18d → none | resources Cost for Proc [1]; Purchaser [850 h] → Purchaser [850 h]; Cost for Proc [1] |
| MKH2-02-003-PR-1600 | Staging Time for Lighting Panels/Feeder Pillers | 2026-08-03 → 2026-08-20 A (+17d) | 2026-08-12 → 2026-12-20 (+130d) |  | 18d → -10d |  |
| MKH2-02-003-PR-1590 | Material Delivery for Lighting Panels/Feeder Pillers 2nd lot | 2026-07-25 → 2026-08-26 A (+32d) | 2026-08-02 → 2026-08-29 A (+27d) | 0% → 100% | 18d → none | resources Cost for Proc [1]; Purchaser [650 h] → Purchaser [650 h]; Cost for Proc [1] |
| LUM | **LUMINAIRE** | 2026-04-13 → 2026-04-25 (+12d) | 2026-08-16 → 2026-12-17 (+123d) |  |  |  |

| ID | Task | Start | Finish | Complete | Total float | Other |
| --- | --- | --- | --- | --- | --- | --- |
| MKH2-02-003-PR-1610 | PO for Street Lighting Luminaire | 2026-04-13 → 2026-04-25 A (+12d) | 2026-04-19 → 2026-04-26 A (+7d) | 0% → 100% | 15d → none |  |
| MKH2-02-003-PR-1620 | Material Fabrication for Street Lighting Luminaire - Stage 1 | 2026-04-20 → 2026-04-27 A (+7d) | 2026-05-12 → 2026-04-30 A (-12d) | 0% → 100% | 15d → none |  |
| MKH2-02-003-PR-1630 | Material Fabrication for Street Lighting Luminaire - Stage 2 | 2026-05-13 → 2026-06-06 A (+24d) | 2026-06-08 → 2026-06-07 A (-1d) | 0% → 100% | 15d → none |  |
| MKH2-02-003-PR-1640 | Material Fabrication for Street Lighting Luminaire - Stage 3 | 2026-06-09 → 2026-06-08 A (-1d) | 2026-07-01 → 2026-06-09 A (-22d) | 0% → 100% | 15d → none |  |
| MKH2-02-003-PR-1650 | Material Delivery for Street Lighting Luminaire 1st lot | 2026-07-02 → 2026-06-10 A (-22d) | 2026-07-27 → 2026-06-18 A (-39d) | 0% → 100% | 15d → none | resources Cost for Proc [1]; Purchaser [650 h] → Purchaser [650 h]; Cost for Proc [1] |
| MKH2-02-003-PR-1670 | Staging Time for Street Lighting Luminaire | 2026-08-06 → 2026-06-10 A (-57d) | 2026-08-16 → 2026-12-17 (+123d) |  | 15d → -8d |  |
| MKH2-02-003-PR-1660 | Material Delivery for Street Lighting Luminaire 2nd lot | 2026-07-28 → 2026-06-20 A (-38d) | 2026-08-05 → 2026-06-25 A (-41d) | 0% → 100% | 15d → none |  |
| CONST | **CONSTRUCTION PHASE** | 2026-03-26 → 2026-02-18 (-36d) | 2027-06-14 → 2027-07-26 (+42d) |  |  |  |
| ROD | **ROADS** | 2026-03-26 → 2026-02-18 (-36d) | 2027-06-07 → 2027-07-07 (+30d) |  |  |  |
| ART-03 | **ARTERIAL-03 (2+510 to 4+267.54)** | 2026-03-26 → 2026-02-18 (-36d) | 2027-03-15 → 2027-03-03 (-12d) |  |  |  |
| BOX-1 | **Box Culvert - 1** | 2026-03-26 → 2026-03-04 (-22d) | 2026-07-05 → 2026-08-22 (+48d) |  |  |  |
| MKH2-02-003-CN-2030 | Excavation in (all types of soil) including all the required backfilling [Road-1 -ARTERIAL-03 (2+510 to 4+267.54) ] | 2026-03-26 → 2026-03-04 A (-22d) | 2026-04-19 → 2026-04-30 A (+11d) | 0% → 100% | 0d → none |  |
| MKH2-02-003-CN-2050 | Plain Concrete for box culvert [Road-1 -ARTERIAL-03 (2+510 to 4+267.54) ] | 2026-04-20 → 2026-05-07 A (+17d) | 2026-05-13 → 2026-05-09 A (-4d) | 0% → 100% | 19d → none |  |
| MKH2-02-003-CN-2070 | Steel Reinforcement for box culverts as per drawings and the Engineer's instructions [Road-1 -ARTERIAL-03 (2+510 to 4+26 | 2026-05-14 → 2026-05-13 A (-1d) | 2026-06-10 → 2026-08-21 A (+72d) | 0% → 100% | 19d → none |  |
| MKH2-02-003-CN-2080 | Concrete for box culvert including bitumenous coating (Steel Reinforcement is measured separately) [Road-1 -ARTERIAL-03 | 2026-06-11 → 2026-06-03 A (-8d) | 2026-07-05 → 2026-08-22 A (+48d) | 0% → 100% | 19d → none |  |
| ART03 RD | **ARTERIAL-03-ROAD** | 2026-04-20 → 2026-02-18 (-61d) | 2027-03-15 → 2027-03-03 (-12d) |  |  |  |
| 2 | **ROADS & ROUNDABOUT** | 2026-04-20 → 2026-02-18 (-61d) | 2027-03-15 → 2027-03-03 (-12d) |  |  |  |
| 2 | **EARTHWORKS & SITE GRADING** | 2026-04-20 → 2026-02-18 (-61d) | 2026-08-08 → 2026-04-18 (-112d) |  |  |  |
| MKH2-02-003-CN-1050 | Roadway Excavation for cuttings ARTERIAL-03 Stage-1 | 2026-04-20 → 2026-02-18 A (-61d) | 2026-05-06 → 2026-03-05 A (-62d) | 0% → 100% | 0d → none |  |
| MKH2-02-003-CN-1150 | Embankments -ARTERIAL-03 | 2026-07-05 → 2026-02-19 A (-136d) | 2026-07-21 → 2026-04-09 A (-103d) | 0% → 100% | 9d → none |  |
| MKH2-02-003-CN-1060 | Roadway Excavation for cuttings ARTERIAL-03 Stage-2 | 2026-05-07 → 2026-03-05 A (-63d) | 2026-05-24 → 2026-03-10 A (-75d) | 0% → 100% | 0d → none |  |
| MKH2-02-003-CN-1070 | Roadway Excavation for cuttings ARTERIAL-03 Stage-3 | 2026-05-25 → 2026-03-10 A (-76d) | 2026-06-14 → 2026-04-09 A (-66d) | 0% → 100% | 11d → none |  |
| MKH2-02-003-CN-1200 | Subgrade for ARTERIAL-03 | 2026-07-22 → 2026-03-10 A (-134d) | 2026-08-08 → 2026-04-18 A (-112d) | 0% → 100% | 9d → none |  |
| MKH2-02-003-CN-1080 | Roadway Excavation for cuttings ARTERIAL-03 Stage-4 | 2026-06-17 → 2026-04-09 A (-69d) | 2026-07-04 → 2026-04-16 A (-79d) | 0% → 100% | 9d → none |  |
| 1 | **ASPHALT WORKS** | 2026-08-09 → 2026-03-14 (-148d) | 2027-01-07 → 2027-02-07 (+31d) |  |  |  |
| MKH2-02-003-CN-1250 | Aggregate base course at ARTERIAL-03 | 2026-08-09 → 2026-03-14 A (-148d) | 2026-08-31 → 2026-04-21 A (-132d) | 0% → 100% | 21d → none |  |
| MKH2-02-003-CN-1300 | Prime Coat (MC1) ARTERIAL-03 | 2026-09-01 → 2026-04-08 A (-146d) | 2026-09-16 → 2026-04-30 A (-139d) | 0% → 100% | 21d → none |  |
| MKH2-02-003-CN-1350 | Bituminous base course for ARTERIAL-03 | 2026-09-17 → 2026-04-09 A (-161d) | 2026-10-12 → 2026-05-03 A (-162d) | 0% → 100% | 21d → none |  |
| MKH2-02-003-CN-1400 | Tack coat at ARTERIAL-03 | 2026-11-21 → 2026-12-21 (+30d) | 2026-12-14 → 2027-01-13 (+30d) |  | 16d → -10d |  |
| MKH2-02-003-CN-1450 | Bituminous concrete wearing course, ARTERIAL-03 | 2026-12-15 → 2027-01-14 (+30d) | 2027-01-07 → 2027-02-07 (+31d) |  | 17d → 24d |  |
| FINIS | **FINISHING WORKS** | 2027-01-09 → 2026-04-25 (-259d) | 2027-03-15 → 2027-03-03 (-12d) |  |  |  |
| MKH2-02-003-CN-1500 | Installation of Precast Concrete curb at ARTERIAL-03 | 2027-01-09 → 2026-04-25 A (-259d) | 2027-01-26 → 2026-08-18 A (-161d) | 0% → 100% | 17d → none |  |
| MKH2-02-003-CN-1540 | 60mm thick - Interlocking block pavers for sidewalk/footpath ARTERIAL-03 | 2027-01-27 → 2026-07-30 A (-181d) | 2027-02-15 → 2026-09-19 A (-149d) | 0% → 100% | 17d → none |  |
| MKH2-02-003-CN-1580 | Pavement markings [Road-1 -ARTERIAL-03 (2+510 to 4+267.54) ] | 2027-02-16 → 2027-02-08 (-8d) | 2027-02-28 → 2027-02-18 (-10d) |  | 17d → 24d |  |
| MKH2-02-003-CN-1630 | Installation of Traffic Signs [Road-1 -ARTERIAL-03 (2+510 to 4+267.54) ] | 2027-03-01 → 2027-02-20 (-9d) | 2027-03-15 → 2027-03-03 (-12d) |  | 17d → 24d |  |
| 1 | **ELECTRICAL** | 2026-08-09 → 2026-04-01 (-130d) | 2027-01-14 → 2027-01-03 (-11d) |  |  |  |
| 2 | **LV NETWORKS** | 2026-08-09 → 2026-04-01 (-130d) | 2026-11-26 → 2027-01-03 (+38d) |  |  |  |
| MKH2-02-003-CN-1890 | Installation of Road Crossing Ducts 2 ways at ARTERIAL-03 | 2026-08-09 → 2026-04-01 A (-130d) | 2026-08-24 → 2026-04-23 A (-123d) | 0% → 100% | 9d → none |  |
| MKH2-02-003-CN-1920 | Installation of Road Crossing Ducts 4 ways at ARTERIAL-03 | 2026-08-25 → 2026-04-09 A (-138d) | 2026-09-10 → 2026-04-25 A (-138d) | 0% → 100% | 17d → none |  |
| MKH2-02-003-CN-1940 | Installation of Road Crossing Ducts 6 ways at ARTERIAL-03 | 2026-09-12 → 2026-06-10 A (-94d) | 2026-09-28 → 2026-06-11 A (-109d) | 0% → 100% | 17d → none |  |
| MKH2-02-003-CN-1950 | Drawpit with medium duty steel cover for ARTERIAL-3 Road size600x600x1000mm | 2026-09-29 → 2026-09-03 A (-26d) | 2026-10-17 → 2026-09-23 A (-24d) | 0% → 100% | 17d → none |  |
| MKH2-02-003-CN-1970 | Drawpit with medium duty steel cover, for ARTERIAL-3 Road size 900x900x1200mm | 2026-10-18 → 2026-09-05 A (-43d) | 2026-11-03 → 2026-09-08 A (-56d) | 0% → 100% | 17d → none |  |
| MKH2-02-003-CN-2010 | Street Lighting panels [Road-1 -ARTERIAL-03 (2+510 to 4+267.54) ] | 2026-11-18 → 2026-09-24 A (-55d) | 2026-11-26 → 2026-09-26 A (-61d) | 0% → 100% | 17d → none |  |
| MKH2-02-003-CN-2000 | Feeder pillars [Road-1 -ARTERIAL-03 (2+510 to 4+267.54) ] | 2026-11-04 → 2026-12-21 (+47d) | 2026-11-17 → 2027-01-03 (+47d) |  | 17d → 28d |  |
| 1 | **LV CABLES** | 2026-08-25 → 2026-06-25 (-61d) | 2026-11-19 → 2026-08-20 (-91d) |  |  |  |
| MKH2-02-003-CN-1690 | Installation of Low Voltage Cables -ARTERIAL-03 Stage-1 | 2026-08-25 → 2026-06-25 A (-61d) | 2026-09-17 → 2026-07-16 A (-63d) | 0% → 100% | 9d → none |  |
| MKH2-02-003-CN-1700 | Installation of Low Voltage Cables -ARTERIAL-03 Stage-2 | 2026-09-19 → 2026-08-06 A (-44d) | 2026-10-13 → 2026-08-08 A (-66d) | 0% → 100% | 9d → none |  |
| MKH2-02-003-CN-1710 | Installation of Low Voltage Cables -ARTERIAL-03 Stage-3 | 2026-10-14 → 2026-08-08 A (-67d) | 2026-11-01 → 2026-08-09 A (-84d) | 0% → 100% | 9d → none |  |
| MKH2-02-003-CN-1720 | Installation of Low Voltage Cables -ARTERIAL-03 Stage-4 | 2026-11-02 → 2026-08-17 A (-77d) | 2026-11-19 → 2026-08-20 A (-91d) | 0% → 100% | 9d → none |  |
| 3 | **STREET LIGHTING NETWORK INCLUDING ALL** | 2026-11-21 → 2026-06-10 (-164d) | 2026-12-31 → 2026-07-18 (-166d) |  |  |  |
| MKH2-02-003-CN-1770 | Installation of Lighting Poles 2-Arms ARTERIAL-03 | 2026-11-21 → 2026-06-10 A (-164d) | 2026-12-10 → 2026-07-18 A (-145d) | 0% → 100% | 9d → none |  |
| MKH2-02-003-CN-1810 | Installation of Lighting Luminaires for 2-Arms ARTERIAL-03 | 2026-12-12 → 2026-06-14 A (-181d) | 2026-12-31 → 2026-07-18 A (-166d) | 0% → 100% | 9d → none |  |
| 4 | **EARTHING** | 2027-01-02 → 2026-09-30 (-94d) | 2027-01-14 → 2026-12-29 (-16d) |  |  |  |
| MKH2-02-003-CN-1850 | Installation of Earthing System for ARTERIAL-03 | 2027-01-02 → 2026-09-30 A (-94d) | 2027-01-14 → 2026-12-29 (-16d) | 0% → 20% | 12d → 84d |  |
| ART-04 | **ARTERIAL-04 (0+000 to 1+0.83)** | 2026-05-25 → 2026-03-10 (-76d) | 2027-05-06 → 2027-05-24 (+18d) |  |  |  |
| BOX-2 | **Box Culvert - 2** | 2026-05-25 → 2026-03-25 (-61d) | 2026-08-31 → 2026-08-05 (-26d) |  |  |  |
| MKH2-02-003-CN-2040 | Excavation in (all types of soil) including all the required backfilling [Road-2 -ARTERIAL-04 (0+000 to 1+083) ] | 2026-05-25 → 2026-03-25 A (-61d) | 2026-06-21 → 2026-03-31 A (-82d) | 0% → 100% | 0d → none |  |
| MKH2-02-003-CN-2060 | Plain Concrete for box culvert [Road-2 -ARTERIAL-04 (0+000 to 1+083) ] | 2026-06-22 → 2026-04-07 A (-76d) | 2026-07-14 → 2026-04-07 A (-98d) | 0% → 100% | 11d → none |  |
| MKH2-02-003-CN-2090 | Steel Reinforcement for box culverts as per drawings and the Engineer's instructions [Road-1 -ARTERIAL-03 (2+510 to 4+26 | 2026-07-15 → 2026-04-09 A (-97d) | 2026-08-08 → 2026-08-05 A (-3d) | 0% → 100% | 11d → none |  |
| MKH2-02-003-CN-2120 | Concrete for box culvert including bitumenous coating (Steel Reinforcement is measured separately) [Road-2 -ARTERIAL-04 | 2026-08-09 → 2026-04-28 A (-103d) | 2026-08-31 → 2026-08-03 A (-28d) | 0% → 100% | 11d → none |  |
| ART04 RD | **ARTERIAL-04-ROAD** | 2026-06-22 → 2026-03-10 (-104d) | 2027-05-06 → 2027-05-24 (+18d) |  |  |  |
| 3 | **ROADS** | 2026-06-22 → 2026-03-10 (-104d) | 2027-03-14 → 2027-04-13 (+30d) |  |  |  |
| 3 | **EARTHWORKS & SITE GRADING** | 2026-06-22 → 2026-03-10 (-104d) | 2026-09-20 → 2026-10-26 (+36d) |  |  |  |
| MKH2-02-003-CN-1090 | Roadway Excavation for cuttings ARTERIAL-04 Stage-1 | 2026-06-22 → 2026-03-10 A (-104d) | 2026-07-14 → 2026-05-16 A (-59d) | 0% → 100% | 9d → none |  |
| MKH2-02-003-CN-1160 | Embankments -ARTERIAL-04 | 2026-08-08 → 2026-04-20 A (-110d) | 2026-08-27 → 2026-10-26 (+60d) | 0% → 95% | 11d → 58d |  |
| MKH2-02-003-CN-1210 | Subgrade for ARTERIAL-04 | 2026-08-29 → 2026-04-25 A (-126d) | 2026-09-20 → 2026-07-29 A (-53d) | 0% → 100% | 11d → none |  |
| MKH2-02-003-CN-1100 | Roadway Excavation for cuttings ARTERIAL-04 Stage-2 | 2026-07-15 → 2026-05-20 A (-56d) | 2026-08-06 → 2026-10-15 (+70d) | 0% → 98% | 11d → 58d |  |
| 2 | **ASPHALT WORKS** | 2026-09-21 → 2026-05-20 (-124d) | 2027-01-23 → 2027-02-23 (+31d) |  |  |  |
| MKH2-02-003-CN-1260 | Aggregate base course at ARTERIAL-04 | 2026-09-21 → 2026-05-20 A (-124d) | 2026-10-10 → 2026-08-05 A (-66d) | 0% → 100% | 23d → none |  |
| MKH2-02-003-CN-1310 | Prime Coat (MC1) ARTERIAL-04 | 2026-10-11 → 2026-05-25 A (-139d) | 2026-10-27 → 2026-08-09 A (-79d) | 0% → 100% | 23d → none |  |

| ID | Task | Start | Finish | Complete | Total float |
| --- | --- | --- | --- | --- | --- |
| MKH2-02-003-CN-1360 | Bituminous base course for ARTERIAL-04 | 2026-10-28 → 2026-05-31 A (-150d) | 2026-11-19 → 2026-08-13 A (-98d) | 0% → 100% | 23d → none |
| MKH2-02-003-CN-1410 | Tack coat at ARTERIAL-04 | 2026-12-15 → 2027-01-14 (+30d) | 2026-12-30 → 2027-01-30 (+31d) |  | 16d → -10d |
| MKH2-02-003-CN-1460 | Bituminous concrete wearing course, ARTERIAL-04 | 2026-12-31 → 2027-01-31 (+31d) | 2027-01-23 → 2027-02-23 (+31d) |  | 16d → -10d |
| 1 | **FINISHING WORKS** | 2027-01-24 → 2026-09-05 (-141d) | 2027-03-14 → 2027-04-13 (+30d) |  |  |
| MKH2-02-003-CN-1510 | Installation of Precast Concrete curb at ARTERIAL-04 | 2027-01-24 → 2026-09-05 A (-141d) | 2027-02-01 → 2027-03-04 (+31d) | 0% → 55% | 16d → -10d |
| MKH2-02-003-CN-1550 | 60mm thick - Interlocking block pavers for sidewalk/footpath ARTERIAL-04 | 2027-02-02 → 2026-09-19 A (-136d) | 2027-02-15 → 2027-03-22 (+35d) | 0% → 35% | 16d → -10d |
| MKH2-02-003-CN-1590 | Pavement markings [Road-2 -ARTERIAL-04 (0+000 to 1+083) ] | 2027-02-16 → 2027-03-23 (+35d) | 2027-02-27 → 2027-04-01 (+33d) |  | 23d → -3d |
| MKH2-02-003-CN-1640 | Installation of Traffic Signs [Road-2 -ARTERIAL-04 (0+000 to 1+083) ] | 2027-02-28 → 2027-04-03 (+34d) | 2027-03-14 → 2027-04-13 (+30d) |  | 23d → -3d |
| 6 | **ELECTRICAL WORKS (MKH2-01-007-DAR-TS8-0-SL-DWG-1010-00)** | 2026-09-21 → 2026-06-03 (-110d) | 2027-05-06 → 2027-05-24 (+18d) |  |  |
| 2 | **LV NETWORKS** | 2026-09-21 → 2026-06-03 (-110d) | 2027-02-07 → 2027-02-24 (+17d) |  |  |
| MKH2-02-003-CN-1900 | Installation of Road Crossing Ducts 2 ways at ARTERIAL-04 Stage-1 | 2026-09-21 → 2026-06-03 A (-110d) | 2026-10-15 → 2026-06-04 A (-133d) | 0% → 100% | 11d → none |
| MKH2-02-003-CN-1930 | Installation of Road Crossing Ducts 4 ways at ARTERIAL-04 | 2026-11-10 → 2026-06-03 A (-160d) | 2026-12-03 → 2026-08-08 A (-117d) | 0% → 100% | 11d → none |
| MKH2-02-003-CN-1910 | Installation of Road Crossing Ducts 2 ways at ARTERIAL-04 Stage-2 | 2026-10-17 → 2026-08-05 A (-73d) | 2026-11-09 → 2026-08-07 A (-94d) | 0% → 100% | 11d → none |
| MKH2-02-003-CN-1960 | Drawpit with medium duty steel cover for ARTERIAL-4 Road size600x600x1000mm | 2026-12-05 → 2026-09-16 A (-80d) | 2026-12-16 → 2027-01-13 (+28d) | 0% → 20% | 11d → 28d |
| MKH2-02-003-CN-1980 | Drawpit with medium duty steel cover, for ARTERIAL-4 Road size 900x900x1200mm | 2026-12-17 → 2026-09-16 A (-92d) | 2026-12-29 → 2026-09-24 A (-96d) | 0% → 100% | 11d → none |
| MKH2-02-003-CN-1990 | Street Lighting panels [Road-2 -ARTERIAL-04 (0+000 to 1+083) ] | 2027-01-02 → 2026-09-26 A (-98d) | 2027-01-21 → 2026-09-27 A (-116d) | 0% → 100% | 9d → none |
| MKH2-02-003-CN-2020 | Supply and installation of KWH meter mounting frame including concrete block for installation of KWH meter according to | 2027-01-23 → 2027-02-08 (+16d) | 2027-02-07 → 2027-02-24 (+17d) |  | 9d → 7d |
| 1 | **LV CABLES** | 2027-02-08 → 2026-08-20 (-172d) | 2027-03-09 → 2027-03-15 (+6d) |  |  |
| MKH2-02-003-CN-1730 | Installation of Low Voltage Cables -ARTERIAL-04 Stage-1 | 2027-02-08 → 2026-08-20 A (-172d) | 2027-02-21 → 2026-08-24 A (-181d) | 0% → 100% | 9d → none |
| MKH2-02-003-CN-1740 | Installation of Low Voltage Cables -ARTERIAL-04 Stage-2 | 2027-02-23 → 2026-08-24 A (-183d) | 2027-03-09 → 2027-03-15 (+6d) | 0% → 90% | 9d → 7d |
| 3 | **STREET LIGHTING NETWORK INCLUDING ALL** | 2027-03-14 → 2026-08-18 (-208d) | 2027-04-13 → 2027-04-27 (+14d) |  |  |
| MKH2-02-003-CN-1780 | Installation of Lighting Poles 2-Arms ARTERIAL-04 | 2027-03-14 → 2026-08-18 A (-208d) | 2027-03-30 → 2027-04-01 (+2d) | 0% → 90% | 9d → 7d |
| MKH2-02-003-CN-1820 | Installation of Lighting Luminaires for 2-Arms ARTERIAL-04 | 2027-03-31 → 2026-08-22 A (-221d) | 2027-04-13 → 2027-04-27 (+14d) | 0% → 90% | 9d → -3d |
| 4 | **EARTHING** | 2027-04-14 → 2026-09-30 (-196d) | 2027-05-06 → 2027-05-24 (+18d) |  |  |
| MKH2-02-003-CN-1860 | Installation of Earthing System for ARTERIAL-04 | 2027-04-14 → 2026-09-30 A (-196d) | 2027-05-06 → 2027-05-24 (+18d) | 0% → 20% | 9d → -3d |
| 5 | **CONNECTION TO 5th RING ROAD (IF-0+000 to 1+258)** | 2026-07-15 → 2026-09-22 (+69d) | 2027-06-07 → 2027-07-07 (+30d) |  |  |
| RING | **EARTHWORKS & SITE GRADING** | 2026-07-15 → 2026-09-22 (+69d) | 2026-10-21 → 2026-12-15 (+55d) |  |  |
| MKH2-02-003-CN-1130 | Roadway Excavation for cuttings Connecting to 5th Ring road stage-1 | 2026-07-15 → 2026-09-22 A (+69d) | 2026-08-08 → 2026-10-03 A (+56d) | 0% → 100% | 9d → none |
| MKH2-02-003-CN-1190 | Embankments -to Road connecting roat to 5th Ring road | 2026-09-02 → 2026-09-23 A (+21d) | 2026-09-27 → 2026-11-21 (+55d) | 0% → 20% | 10d → -36d |
| MKH2-02-003-CN-1240 | Subgrade for Connecting Road to RING ROAD-5 | 2026-09-28 → 2026-09-30 A (+2d) | 2026-10-21 → 2026-12-15 (+55d) | 0% → 15% | 10d → -36d |
| MKH2-02-003-CN-1140 | Roadway Excavation for cuttings Connecting to 5th Ring road stage-2 | 2026-08-09 → 2026-10-04 A (+56d) | 2026-09-01 → 2026-10-31 (+60d) | 0% → 20% | 10d → -36d |
| ROAD | **ASPHALT WORKS** | 2026-10-22 → 2026-12-16 (+55d) | 2027-04-10 → 2027-05-10 (+30d) |  |  |
| MKH2-02-003-CN-1290 | Aggregate base course at to Road connecting roat to 5th Ring road | 2026-10-22 → 2026-12-16 (+55d) | 2026-11-11 → 2027-01-05 (+55d) |  | 10d → -36d |
| MKH2-02-003-CN-1340 | Prime Coat (MC1) to Road connecting roat to 5th Ring road | 2026-11-12 → 2027-01-06 (+55d) | 2026-11-25 → 2027-01-19 (+55d) |  | 10d → -36d |
| MKH2-02-003-CN-1390 | Bituminous base course to Road connecting roat to 5th Ring road | 2026-11-26 → 2027-01-20 (+55d) | 2026-12-14 → 2027-02-07 (+55d) |  | 10d → -36d |
| MKH2-02-003-CN-1440 | Tack coat at to Road connecting roat to 5th Ring road | 2027-02-16 → 2027-03-23 (+35d) | 2027-03-16 → 2027-04-15 (+30d) |  | 16d → -10d |
| MKH2-02-003-CN-1490 | Bituminous concrete wearing course, to Road connecting roat to 5th Ring road | 2027-03-17 → 2027-04-17 (+31d) | 2027-04-10 → 2027-05-10 (+30d) |  | 16d → -10d |
| 5 FIN | **FINISHING WORKS** | 2027-04-11 → 2027-05-11 (+30d) | 2027-06-07 → 2027-07-07 (+30d) |  |  |
| MKH2-02-003-CN-1620 | Pavement markings [Road-5 -CONNECTION TO 5th RING ROAD (IF-0+000 to 1+258) ] | 2027-04-11 → 2027-05-11 (+30d) | 2027-04-28 → 2027-06-01 (+34d) |  | 16d → -10d |
| MKH2-02-003-CN-1670 | Installation of Traffic Signs [Road-5 -CONNECTION TO 5th RING ROAD (IF-0+000 to 1+258) ] | 2027-04-29 → 2027-06-02 (+34d) | 2027-05-20 → 2027-06-20 (+31d) |  | 16d → -10d |
| MKH2-02-003-CN-1680 | Installation of Traffic Signs [Road-5 -CONNECTION TO 5th RING ROAD (IF-0+000 to 1+258) ] | 2027-05-22 → 2027-06-21 (+30d) | 2027-06-07 → 2027-07-07 (+30d) |  | 16d → -10d |
| 3 | **RAMP-2-IN (0+000 to 0+400)** | 2026-08-09 → 2026-08-05 (-4d) | 2027-05-04 → 2027-07-01 (+58d) |  |  |
| 3 | **ROADS** | 2026-08-09 → 2026-08-05 (-4d) | 2027-02-14 → 2027-03-30 (+44d) |  |  |
| 1 | **EARTHWORKS & SITE GRADING** | 2026-08-09 → 2026-08-05 (-4d) | 2026-10-13 → 2026-11-22 (+40d) |  |  |
| MKH2-02-003-CN-1110 | Roadway Excavation for cuttings RAMP-2-IN | 2026-08-09 → 2026-08-05 A (-4d) | 2026-09-01 → 2026-10-27 (+56d) | 0% → 98% | 9d → -19d |
| MKH2-02-003-CN-1170 | Embankments -RAMP-02-IN | 2026-09-02 → 2026-08-08 A (-25d) | 2026-09-17 → 2026-11-09 (+53d) | 0% → 80% | 9d → -19d |
| MKH2-02-003-CN-1220 | Subgrade for RAMP-2 IN | 2026-09-19 → 2026-08-13 A (-37d) | 2026-10-13 → 2026-11-22 (+40d) | 0% → 70% | 9d → -19d |
| 2 | **ASPHALT WORKS** | 2026-10-14 → 2026-08-15 (-60d) | 2027-01-23 → 2027-03-23 (+59d) |  |  |
| MKH2-02-003-CN-1270 | Aggregate base course at RAMP-IN | 2026-10-14 → 2026-08-15 A (-60d) | 2026-11-05 → 2026-12-15 (+40d) | 0% → 70% | 9d → -19d |
| MKH2-02-003-CN-1320 | Prime Coat (MC1) RAMP-02- IN | 2026-11-07 → 2026-08-31 A (-68d) | 2026-11-22 → 2026-12-31 (+39d) | 0% → 70% | 9d → -19d |
| MKH2-02-003-CN-1370 | Bituminous base course for RAMP-02 IN | 2026-11-23 → 2026-09-27 A (-57d) | 2026-12-09 → 2027-01-18 (+40d) | 0% → 30% | 9d → -19d |
| MKH2-02-003-CN-1420 | Tack coat at RAMP-2-IN | 2026-12-15 → 2027-02-08 (+55d) | 2026-12-30 → 2027-02-24 (+56d) |  | 10d → -36d |
| MKH2-02-003-CN-1470 | Bituminous concrete wearing course, RAMP-2-IN | 2026-12-31 → 2027-02-25 (+56d) | 2027-01-23 → 2027-03-23 (+59d) |  | 11d → -36d |
| FIN | **FINISHING WORKS** | 2026-12-10 → 2027-01-19 (+40d) | 2027-02-14 → 2027-03-30 (+44d) |  |  |
| MKH2-02-003-CN-1520 | Installation of Precast Concrete curb at RAMP-2-IN | 2026-12-10 → 2027-01-19 (+40d) | 2026-12-26 → 2027-02-03 (+39d) |  | 9d → 17d |
| MKH2-02-003-CN-1560 | 60mm thick - Interlocking block pavers for sidewalk/footpath RAMP-2-IN | 2026-12-27 → 2027-02-04 (+39d) | 2027-01-11 → 2027-02-20 (+40d) |  | 9d → 17d |
| MKH2-02-003-CN-1600 | Pavement markings [Road-3 -RAMP-2-IN (0+000 to 0+400) ] | 2027-01-12 → 2027-02-21 (+40d) | 2027-01-27 → 2027-03-09 (+41d) |  | 9d → 17d |
| MKH2-02-003-CN-1650 | Installation of Traffic Signs [Road-3 -RAMP-2-IN (0+000 to 0+400) ] | 2027-01-28 → 2027-03-14 (+45d) | 2027-02-14 → 2027-03-30 (+44d) |  | 9d → 17d |
| 4 | **ELECTRICAL WORKS (MKH2-01-007-DAR-TS8-0-SL-DWG-1010-00)** | 2027-01-24 → 2027-03-24 (+59d) | 2027-05-04 → 2027-07-01 (+58d) |  |  |
| 1 | **LV CABLES** | 2027-01-24 → 2027-03-24 (+59d) | 2027-02-16 → 2027-04-17 (+60d) |  |  |
| MKH2-02-003-CN-1750 | Installation of Low Voltage Cables -RAMP-2 in | 2027-01-24 → 2027-03-24 (+59d) | 2027-02-16 → 2027-04-17 (+60d) |  | 11d → -36d |
| 3 | **STREET LIGHTING NETWORK INCLUDING ALL** | 2027-02-17 → 2027-04-18 (+60d) | 2027-04-10 → 2027-06-07 (+58d) |  |  |
| MKH2-02-003-CN-1790 | Installation of Lighting Poles 1-Arms In RAMP-2 IN | 2027-02-17 → 2027-04-18 (+60d) | 2027-03-17 → 2027-05-11 (+55d) |  | 11d → -36d |
| MKH2-02-003-CN-1830 | Installation of Lighting Luminaires for 1-Arms RAMP-02 IN | 2027-03-18 → 2027-05-12 (+55d) | 2027-04-10 → 2027-06-07 (+58d) |  | 11d → -36d |
| 4 | **EARTHING** | 2027-04-11 → 2027-06-08 (+58d) | 2027-05-04 → 2027-07-01 (+58d) |  |  |
| MKH2-02-003-CN-1870 | Installation of Earthing System for RAMP-02 IN | 2027-04-11 → 2027-06-08 (+58d) | 2027-05-04 → 2027-07-01 (+58d) |  | 11d → -36d |
| 4 | **RAMP-2-OUT (0+398 to 0+000)** | 2026-09-02 → 2026-08-05 (-28d) | 2027-03-18 → 2027-05-12 (+55d) |  |  |
| 3 | **ROADS** | 2026-09-02 → 2026-08-05 (-28d) | 2027-03-18 → 2027-05-12 (+55d) |  |  |
| 1 | **EARTHWORKS & SITE GRADING** | 2026-09-02 → 2026-08-05 (-28d) | 2026-10-22 → 2026-08-27 (-56d) |  |  |
| MKH2-02-003-CN-1120 | Roadway Excavation for cuttings RAMP-2-out | 2026-09-02 → 2026-08-05 A (-28d) | 2026-09-17 → 2026-08-17 A (-31d) | 0% → 100% | 13d → none |

| ID | Task | Start | Finish | Complete | Total float | Other |
| --- | --- | --- | --- | --- | --- | --- |
| MKH2-02-003-CN-1180 | Embankments -RAMP-02-out | 2026-09-19 → 2026-08-06 A (-44d) | 2026-10-05 → 2026-08-22 A (-44d) | 0% → 100% | 13d → none |  |
| MKH2-02-003-CN-1230 | Subgrade for RAMP-2 OUT | 2026-10-06 → 2026-08-08 A (-59d) | 2026-10-22 → 2026-08-27 A (-56d) | 0% → 100% | 13d → none |  |
| 2 | **ASPHALT WORKS** | 2026-10-24 → 2026-08-09 (-76d) | 2027-02-08 → 2027-04-08 (+59d) |  |  |  |
| MKH2-02-003-CN-1280 | Aggregate base course at RAMP-OUT | 2026-10-24 → 2026-08-09 A (-76d) | 2026-11-10 → 2026-08-30 A (-72d) | 0% → 100% | 13d → none |  |
| MKH2-02-003-CN-1330 | Prime Coat (MC1) RAMP-02- OUT | 2026-11-11 → 2026-08-12 A (-91d) | 2026-11-26 → 2026-08-31 A (-87d) | 0% → 100% | 13d → none |  |
| MKH2-02-003-CN-1380 | Bituminous base course for RAMP-02 OUT | 2026-11-28 → 2026-08-13 A (-107d) | 2026-12-14 → 2026-11-05 (-39d) | 0% → 50% | 13d → 78d |  |
| MKH2-02-003-CN-1430 | Tack coat at RAMP-2-OUT | 2026-12-31 → 2027-02-25 (+56d) | 2027-01-16 → 2027-03-16 (+59d) |  | 10d → -16d |  |
| MKH2-02-003-CN-1480 | Bituminous concrete wearing course, RAMP-2-OUT | 2027-01-17 → 2027-03-17 (+59d) | 2027-02-08 → 2027-04-08 (+59d) |  | 16d → -10d |  |
| FIN | **FINISHING WORKS** | 2027-01-17 → 2027-03-17 (+59d) | 2027-03-18 → 2027-05-12 (+55d) |  |  |  |
| MKH2-02-003-CN-1530 | Installation of Precast Concrete curb at RAMP-2-OUT | 2027-01-17 → 2027-03-17 (+59d) | 2027-01-30 → 2027-03-30 (+59d) |  | 10d → -16d |  |
| MKH2-02-003-CN-1570 | 60mm thick - Interlocking block pavers for sidewalk/footpath RAMP-2-OUT | 2027-01-31 → 2027-03-31 (+59d) | 2027-02-15 → 2027-04-15 (+59d) |  | 10d → -16d |  |
| MKH2-02-003-CN-1610 | Pavement markings [Road-4 -RAMP-2-OUT (0+398 to 0+000) ] | 2027-02-16 → 2027-04-17 (+60d) | 2027-03-01 → 2027-04-28 (+58d) |  | 10d → -16d |  |
| MKH2-02-003-CN-1660 | Installation of Traffic Signs [Road-4 -RAMP-2-OUT (0+398 to 0+000) ] | 2027-03-02 → 2027-04-29 (+58d) | 2027-03-18 → 2027-05-12 (+55d) |  | 10d → -16d |  |
| 4 | **ELECTRICAL WORKS (MKH2-01-007-DAR-TS8-0-SL-DWG-1010-00)** | 2026-12-15 → 2026-09-10 (-96d) | 2027-03-18 → 2027-04-27 (+40d) |  |  |  |
| 1 | **LV CABLES** | 2026-12-15 → 2026-09-10 (-96d) | 2027-01-07 → 2026-11-30 (-38d) |  |  |  |
| MKH2-02-003-CN-1760 | Installation of Low Voltage Cables -RAMP-2 out | 2026-12-15 → 2026-09-10 A (-96d) | 2027-01-07 → 2026-11-30 (-38d) | 0% → 30% | 22d → 97d |  |
| 3 | **STREET LIGHTING NETWORK INCLUDING ALL** | 2027-01-09 → 2026-09-10 (-121d) | 2027-03-01 → 2027-04-13 (+43d) |  |  |  |
| MKH2-02-003-CN-1800 | Installation of Lighting Poles 1-Arms In RAMP-2 OUT | 2027-01-09 → 2026-09-10 A (-121d) | 2027-01-30 → 2026-12-22 (-39d) | 0% → 30% | 22d → 97d |  |
| MKH2-02-003-CN-1840 | Installation of Lighting Luminaires for 1-Arms RAMP-02 OUT | 2027-02-15 → 2026-09-12 A (-156d) | 2027-03-01 → 2027-04-13 (+43d) | 0% → 30% | 9d → 17d |  |
| 4 | **EARTHING** | 2027-03-02 → 2027-04-14 (+43d) | 2027-03-18 → 2027-04-27 (+40d) |  |  |  |
| MKH2-02-003-CN-1880 | Installation of Earthing System for RAMP-02 OUT | 2027-03-02 → 2027-04-14 (+43d) | 2027-03-18 → 2027-04-27 (+40d) |  | 9d → 17d |  |
| DEM | **DEMOLISHING WORKS** | 2026-06-15 → 2026-04-08 (-68d) | 2026-08-10 → 2026-10-22 (+73d) |  |  |  |
| DEMO | **DEMOLISHING Works** | 2026-06-15 → 2026-04-08 (-68d) | 2026-08-10 → 2026-10-22 (+73d) |  |  |  |
| MKH2-02-003-CN-1020 | Removal of the existing asphalt layers (up to base course layer) | 2026-07-09 → 2026-04-08 A (-92d) | 2026-07-18 → 2026-05-16 A (-63d) | 0% → 100% | 20d → none |  |
| MKH2-02-003-CN-1000 | Removal of existing curbstone | 2026-06-15 → 2026-04-11 A (-65d) | 2026-06-22 → 2026-05-06 A (-47d) | 0% → 100% | 20d → none |  |
| MKH2-02-003-CN-1030 | Removal of the existing signages | 2026-07-19 → 2026-04-11 A (-99d) | 2026-07-27 → 2026-05-06 A (-82d) | 0% → 100% | 20d → none |  |
| MKH2-02-003-CN-1040 | Removal of the existing Street Lighting Poles | 2026-07-28 → 2026-04-11 A (-108d) | 2026-08-10 → 2026-05-06 A (-96d) | 0% → 100% | 20d → none |  |
| MKH2-02-003-CN-1010 | Milling of the existing asphalt layer | 2026-06-23 → 2026-10-07 (+106d) | 2026-07-08 → 2026-10-22 (+106d) |  | 20d → 142d |  |
| OPEN | **Open Drain Channels** | 2026-06-22 → 2026-03-14 (-100d) | 2027-06-14 → 2027-07-26 (+42d) |  |  |  |
| Section 1 | **Near RAMP-Out Location, from Ch1+640 to Ch 1+899** | 2026-06-22 → 2026-03-14 (-100d) | 2026-09-02 → 2026-06-28 (-66d) |  |  |  |
| MKH2-02-003-CN-2100 | Excavation for Channel | 2026-06-22 → 2026-03-14 A (-100d) | 2026-07-15 → 2026-04-02 A (-104d) | 0% → 100% | 0d → none | resources Excavator [210 h]; Truck [1180 h]; Compactor [210 h]; Driver [210 h]; Eq. Operator [420 h]; Channel excavation in all type of soil [17037.2]; Labor [10500 h] → Excavator [210 h]; Truck [1180 h]; Compactor [210 h]; Labor [10500 h]; Driver [210 h]; Eq. Operator [420 h]; Channel excavation in all type of soil [17037.2] |
| MKH2-02-003-CN-2180 | Embankment for Channel Berms | 2026-07-16 → 2026-04-20 A (-87d) | 2026-08-09 → 2026-06-03 A (-67d) | 0% → 100% | 0d → none |  |
| MKH2-02-003-CN-2250 | Riprap Grouting | 2026-08-10 → 2026-06-11 A (-60d) | 2026-09-02 → 2026-06-28 A (-66d) | 0% → 100% | 0d → none |  |
| Section 2 | **Near Ramp- In location from Ch 1+270 to Ch 1+530** | 2026-08-10 → 2026-04-02 (-130d) | 2026-12-14 → 2026-07-09 (-158d) |  |  |  |
| MKH2-02-003-CN-2110 | Excavation for Channel | 2026-08-10 → 2026-04-02 A (-130d) | 2026-09-02 → 2026-05-14 A (-111d) | 0% → 100% | 0d → none | resources Excavator [210 h]; Truck [210 h]; Compactor [210 h]; Driver [210 h]; Eq. Operator [420 h]; Channel excavation in all type of soil [17037.1]; Labor [10500 h] → Excavator [210 h]; Truck [210 h]; Compactor [210 h]; Labor [10500 h]; Driver [210 h]; Eq. Operator [420 h]; Channel excavation in all type of soil [17037.1] |
| MKH2-02-003-CN-2190 | Embankment for Channel Berms | 2026-09-03 → 2026-06-04 A (-91d) | 2026-09-28 → 2026-06-28 A (-92d) | 0% → 100% | 0d → none |  |
| MKH2-02-003-CN-2260 | Riprap Grouting | 2026-11-21 → 2026-06-29 A (-145d) | 2026-12-14 → 2026-07-09 A (-158d) | 0% → 100% | 18d → none |  |
| Section 3 | **Near Ramp- In location from Ch 1+010 to Ch 1+270** | 2026-09-29 → 2026-05-16 (-136d) | 2026-12-10 → 2026-07-23 (-140d) |  |  |  |
| MKH2-02-003-CN-2130 | Excavation for Channel | 2026-09-29 → 2026-05-16 A (-136d) | 2026-10-22 → 2026-06-17 A (-127d) | 0% → 100% | 0d → none | resources Excavator [210 h]; Truck [210 h]; Compactor [210 h]; Driver [210 h]; Eq. Operator [420 h]; Channel excavation in all type of soil [17037.1]; Labor [10500 h] → Excavator [210 h]; Truck [210 h]; Compactor [210 h]; Labor [10500 h]; Driver [210 h]; Eq. Operator [420 h]; Channel excavation in all type of soil [17037.1] |
| MKH2-02-003-CN-2200 | Embankment for Channel Berms | 2026-10-24 → 2026-06-28 A (-118d) | 2026-11-16 → 2026-07-04 A (-135d) | 0% → 100% | 0d → none |  |
| MKH2-02-003-CN-2270 | Riprap Grouting | 2026-11-17 → 2026-07-11 A (-129d) | 2026-12-10 → 2026-07-23 A (-140d) | 0% → 100% | 0d → none |  |
| Section 4 | **Near Ramp- In location from Ch 0+750 to Ch 1+010** | 2026-11-17 → 2026-06-17 (-153d) | 2027-01-28 → 2026-07-30 (-182d) |  |  |  |
| MKH2-02-003-CN-2140 | Excavation for Channel | 2026-11-17 → 2026-06-17 A (-153d) | 2026-12-10 → 2026-07-21 A (-142d) | 0% → 100% | 0d → none | resources Excavator [210 h]; Truck [210 h]; Compactor [210 h]; Driver [210 h]; Eq. Operator [420 h]; Channel excavation in all type of soil [17037.1]; Labor [10500 h] → Excavator [210 h]; Truck [210 h]; Compactor [210 h]; Labor [10500 h]; Driver [210 h]; Eq. Operator [420 h]; Channel excavation in all type of soil [17037.1] |
| MKH2-02-003-CN-2210 | Embankment for Channel Berms | 2026-12-12 → 2026-07-05 A (-160d) | 2027-01-04 → 2026-07-29 A (-159d) | 0% → 100% | 0d → none |  |
| MKH2-02-003-CN-2280 | Riprap Grouting | 2027-01-05 → 2026-07-25 A (-164d) | 2027-01-28 → 2026-07-30 A (-182d) | 0% → 100% | 0d → none |  |
| Section 5 | **Near Ramp- In location from Ch 0+490 to Ch 0+750** | 2027-01-05 → 2026-07-21 (-168d) | 2027-03-23 → 2026-08-10 (-225d) |  |  |  |
| MKH2-02-003-CN-2150 | Excavation for Channel | 2027-01-05 → 2026-07-21 A (-168d) | 2027-01-28 → 2026-07-22 A (-190d) | 0% → 100% | 0d → none | resources Excavator [210 h]; Truck [210 h]; Compactor [210 h]; Driver [210 h]; Eq. Operator [420 h]; Channel excavation in all type of soil [17037.1]; Labor [10500 h] → Excavator [210 h]; Truck [210 h]; Compactor [210 h]; Labor [10500 h]; Driver [210 h]; Eq. Operator [420 h]; Channel excavation in all type of soil [17037.1] |
| MKH2-02-003-CN-2220 | Embankment for Channel Berms | 2027-01-30 → 2026-07-30 A (-184d) | 2027-02-23 → 2026-08-06 A (-201d) | 0% → 100% | 0d → none |  |
| MKH2-02-003-CN-2290 | Riprap Grouting | 2027-02-24 → 2026-08-01 A (-207d) | 2027-03-23 → 2026-08-10 A (-225d) | 0% → 100% | 5d → none |  |
| Section 6 | **Near Ramp- In location from Ch 0+230 to Ch 0+490** | 2027-02-24 → 2026-07-22 (-217d) | 2027-05-11 → 2026-09-03 (-250d) |  |  |  |
| MKH2-02-003-CN-2160 | Excavation for Channel | 2027-02-24 → 2026-07-22 A (-217d) | 2027-03-23 → 2026-07-23 A (-243d) | 0% → 100% | 0d → none | resources Excavator [210 h]; Truck [210 h]; Compactor [210 h]; Driver [210 h]; Eq. Operator [420 h]; Channel excavation in all type of soil [17037.1]; Labor [10500 h] → Excavator [210 h]; Truck [210 h]; Compactor [210 h]; Labor [10500 h]; Driver [210 h]; Eq. Operator [420 h]; Channel excavation in all type of soil [17037.1] |
| MKH2-02-003-CN-2230 | Embankment for Channel Berms | 2027-03-24 → 2026-08-12 A (-224d) | 2027-04-17 → 2026-08-13 A (-247d) | 0% → 100% | 5d → none |  |
| MKH2-02-003-CN-2300 | Riprap Grouting | 2027-04-18 → 2026-08-12 A (-249d) | 2027-05-11 → 2026-09-03 A (-250d) | 0% → 100% | 5d → none |  |
| Section 7 | **Near Ramp- In location from Ch 0+000 to Ch 0+230** | 2027-03-30 → 2026-07-23 (-250d) | 2027-06-14 → 2027-07-26 (+42d) |  |  |  |
| MKH2-02-003-CN-2170 | Excavation for Channel | 2027-03-30 → 2026-07-23 A (-250d) | 2027-04-22 → 2027-01-10 (-102d) | 0% → 98% | 0d → 84d | resources Excavator [210 h]; Truck [210 h]; Compactor [210 h]; Driver [210 h]; Eq. Operator [420 h]; Channel excavation in all type of soil [17037.1]; Labor [10500 h] → Excavator [210 h]; Truck [210 h]; Compactor [210 h]; Labor [10500 h]; Driver [210 h]; Eq. Operator [420 h]; Channel excavation in all type of soil [17037.1] |
| MKH2-02-003-CN-2240 | Embankment for Channel Berms | 2027-04-24 → 2026-09-09 A (-227d) | 2027-05-20 → 2027-02-03 (-106d) | 0% → 98% | 0d → 84d |  |
| MKH2-02-003-CN-2310 | Riprap Grouting | 2027-05-22 → 2026-09-09 A (-255d) | 2027-06-14 → 2027-07-26 (+42d) | 0% → 4% | 0d → -36d |  |
| T & C | **TESTING & COMMISSIONING** | 2027-03-20 → 2027-05-13 (+54d) | 2027-06-26 → 2027-08-07 (+42d) |  |  |  |
| MKH2-02-003-TC-1010 | Test for Box Culvert | 2027-03-20 → 2027-05-13 (+54d) | 2027-03-25 → 2027-05-23 (+59d) |  | 10d → -16d | resources Cost for Testing & Comissioning [70]; QA/QC Engineer [3400 h] → QA/QC Engineer [3400 h]; Cost for Testing & Comissioning [70] |
| MKH2-02-003-TC-1000 | Test for Electrical Networks | 2027-05-08 → 2027-07-03 (+56d) | 2027-05-13 → 2027-07-08 (+56d) |  | 31d → -14d | resources Cost for Testing & Comissioning [70]; QA/QC Engineer [4140 h] → QA/QC Engineer [4140 h]; Cost for Testing & Comissioning [70] |
| MKH2-02-003-TC-1030 | Test for Roads | 2027-06-08 → 2027-07-08 (+30d) | 2027-06-14 → 2027-07-14 (+30d) |  | 16d → -10d | resources Cost for Testing & Comissioning [60]; QA/QC Engineer [3600 h] → QA/QC Engineer [3600 h]; Cost for Testing & Comissioning [60] |
| MKH2-02-003-TC-1020 | Test for Open Drain channel | 2027-06-15 → 2027-07-27 (+42d) | 2027-06-26 → 2027-08-07 (+42d) |  | 0d → -36d | resources Cost for Testing & Comissioning [70]; QA/QC Engineer [3600 h] → QA/QC Engineer [3600 h]; Cost for Testing & Comissioning [70] |
| PRO C & DEM | **PROJECT CLOSEOUT & DEMOBILIZATION** | 2027-03-27 → 2027-05-24 (+58d) | 2027-08-14 → 2027-09-26 (+43d) |  |  |  |
| 1 | **As-Built DWGs** | 2027-03-27 → 2027-05-24 (+58d) | 2027-07-19 → 2027-08-30 (+42d) |  |  |  |
| 1 | **As-Built DWGs Submittals** | 2027-03-27 → 2027-05-24 (+58d) | 2027-07-07 → 2027-08-18 (+42d) |  |  |  |
| MKH2-02-003-CO-1050 | As-Built DWGs Submittal for Box Culvert | 2027-03-27 → 2027-05-24 (+58d) | 2027-04-03 → 2027-05-31 (+58d) |  | 10d → -16d |  |
| MKH2-02-003-CO-1040 | As-Built DWGs Submittal for Electrical Networks | 2027-05-18 → 2027-07-10 (+53d) | 2027-05-25 → 2027-07-17 (+53d) |  | 31d → -14d |  |
| MKH2-02-003-CO-1070 | As-Built DWGs Submittal for Roads | 2027-06-15 → 2027-07-27 (+42d) | 2027-06-22 → 2027-08-03 (+42d) |  | 16d → -20d |  |
| MKH2-02-003-CO-1060 | As-Built DWGs Submittal for Open Drain channel | 2027-06-27 → 2027-08-08 (+42d) | 2027-07-07 → 2027-08-18 (+42d) |  | 0d → -36d |  |
| 2 | **As-Built DWGs Approvals** | 2027-04-04 → 2027-06-01 (+58d) | 2027-07-19 → 2027-08-30 (+42d) |  |  |  |

| ID | Task | Start | Finish | Total float |
| --- | --- | --- | --- | --- |
| MKH2-02-003-CO-1090 | As-Built DWGs Approval for Box Culvert | 2027-04-04 → 2027-06-01 (+58d) | 2027-04-11 → 2027-06-08 (+58d) | 10d → -16d |
| MKH2-02-003-CO-1080 | As-Built DWGs Approval for Electrical Networks | 2027-05-26 → 2027-07-18 (+53d) | 2027-06-05 → 2027-07-27 (+52d) | 31d → -14d |
| MKH2-02-003-CO-1110 | As-Built DWGs Approval for Roads | 2027-06-23 → 2027-08-04 (+42d) | 2027-06-30 → 2027-08-11 (+42d) | 16d → -20d |
| MKH2-02-003-CO-1100 | As-Built DWGs Approval for Open Drain channel | 2027-07-08 → 2027-08-19 (+42d) | 2027-07-19 → 2027-08-30 (+42d) | 0d → -36d |
| 2 | **Demobilization** | 2027-07-20 → 2027-08-31 (+42d) | 2027-08-14 → 2027-09-26 (+43d) |  |
| MKH2-02-003-CO-1000 | Demobilization of Manpower | 2027-07-20 → 2027-08-31 (+42d) | 2027-07-25 → 2027-09-05 (+42d) | 0d → -36d |
| MKH2-02-003-CO-1010 | Removal of Equipment from Site | 2027-07-26 → 2027-09-06 (+42d) | 2027-07-31 → 2027-09-11 (+42d) | 0d → -36d |
| MKH2-02-003-CO-1020 | Site Clean Up | 2027-08-01 → 2027-09-12 (+42d) | 2027-08-05 → 2027-09-16 (+42d) | 0d → -36d |
| MKH2-02-003-CO-1030 | Restoration of Ground Surfaces | 2027-08-07 → 2027-09-18 (+42d) | 2027-08-14 → 2027-09-26 (+43d) | 0d → -36d |

## Version 3 (data date 2026-10-13, saved 2026-10-11, file 2. MKH2-02-003-ENJ-WPR-035-13-10-2026 UP 32.xer)

Last finish 2027-09-26 → 2027-09-12 (-14d). Complete tasks 307 → 310.

Changed:

| ID | Task | Start | Finish | Complete | Total float |
| --- | --- | --- | --- | --- | --- |
| KEY | **KEY MILESTONES** |  | 2027-09-26 → 2027-09-12 (-14d) |  |  |
| GEN | **GENERAL MILESTONES** |  | 2027-09-26 → 2027-09-12 (-14d) |  |  |
| MKH2-02-003-MS-1100 | Project Completion | 2027-09-26 → 2027-09-12 (-14d) | 2027-09-26 → 2027-09-12 (-14d) |  | -36d → -25d |
| OVER ALL | **CONTRACTUAL MILESTONE** |  | 2027-09-26 → 2027-09-12 (-14d) |  |  |
| MKH2-02-003-MS-1040 | Completion of Road Works | 2027-02-07 → 2027-01-25 (-13d) | 2027-02-07 → 2027-01-25 (-13d) |  | 7d → 18d |
| MKH2-02-003-MS-1050 | Completion of Open Drain Channel | 2027-07-26 → 2027-07-13 (-13d) | 2027-07-26 → 2027-07-13 (-13d) |  | -20d → -9d |
| MKH2-02-003-MS-1060 | Completion of All Works | 2027-09-26 → 2027-09-12 (-14d) | 2027-09-26 → 2027-09-12 (-14d) |  | -36d → -25d |
| MKH2-02-003-MS-1070 | Final Handover | 2027-09-26 → 2027-09-12 (-14d) | 2027-09-26 → 2027-09-12 (-14d) |  | -36d → -25d |
| PRO | **PROCUREMENT** |  | 2026-12-20 → 2026-12-27 (+7d) |  |  |
| SLI | **SHORT LEAD ITEM** |  | 2026-11-29 → 2026-12-06 (+7d) |  |  |
| ROAD | **ROAD WORKS-CIVIL** |  | 2026-11-29 → 2026-12-06 (+7d) |  |  |
| BBC& BWC | **BITUMINOUS BASE & WEARING COURSE** |  | 2026-11-01 → 2026-11-08 (+7d) |  |  |
| MKH2-02-003-PR-1130 | Material Delivery for 1st lot to the Site |  | 2026-11-01 → 2026-11-08 (+7d) |  | -6d → -12d |
| INTR | **INTERLOCKING PAVING BLOCKS** |  | 2026-11-26 → 2026-12-03 (+7d) |  |  |
| MKH2-02-003-PR-1190 | Material Delivery for 1st lot of Interlocking Block Pavers |  | 2026-11-26 → 2026-12-03 (+7d) | 80% → 90% | -6d → -12d |
| MARK | **PAVEMENT MARKING** |  | 2026-11-29 → 2026-12-06 (+7d) |  |  |
| MKH2-02-003-PR-1210 | Material Fabrication for Pavement Markings | 2026-10-07 → 2026-10-14 (+7d) | 2026-11-03 → 2026-11-10 (+7d) |  | -10d → -16d |
| MKH2-02-003-PR-1220 | Material Delivery for 1st lot of Pavement Markings | 2026-11-04 → 2026-11-11 (+7d) | 2026-11-29 → 2026-12-06 (+7d) |  | -10d → -16d |
| LLI | **LONG LEAD ITEM** |  | 2026-12-20 → 2026-12-27 (+7d) |  |  |
| POW | **ELECTRICAL POWER** |  | 2026-12-09 → 2026-12-16 (+7d) |  |  |
| 1 | **LV-CABLES** |  | 2026-12-08 → 2026-12-15 (+7d) |  |  |
| MKH2-02-003-PR-1390 | Staging Time for Low Voltage Cables |  | 2026-12-08 → 2026-12-15 (+7d) |  | -8d → -14d |
| 2 | **LV-DISTRIBUTION PANNELS** |  | 2026-12-09 → 2026-12-16 (+7d) |  |  |
| MKH2-02-003-PR-1460 | Staging Time for LV Distribution pannel |  | 2026-12-09 → 2026-12-16 (+7d) |  | -10d → -16d |
| LIGH1 | **STREET LIGHTING** |  | 2026-12-20 → 2026-12-27 (+7d) |  |  |
| POL | **POLES** |  | 2026-10-15 → 2026-10-22 (+7d) |  |  |
| MKH2-02-003-PR-1530 | Staging Time for Street Light poles |  | 2026-10-15 → 2026-10-22 (+7d) |  | 37d → 31d |
| PANN | **PANNELS & FEEDER PILLERS** |  | 2026-12-20 → 2026-12-27 (+7d) |  |  |
| MKH2-02-003-PR-1600 | Staging Time for Lighting Panels/Feeder Pillers |  | 2026-12-20 → 2026-12-27 (+7d) |  | -10d → -16d |
| LUM | **LUMINAIRE** |  | 2026-12-17 → 2026-12-24 (+7d) |  |  |
| MKH2-02-003-PR-1670 | Staging Time for Street Lighting Luminaire |  | 2026-12-17 → 2026-12-24 (+7d) |  | -8d → -14d |
| CONST | **CONSTRUCTION PHASE** |  | 2027-07-26 → 2027-07-14 (-12d) |  |  |
| ROD | **ROADS** |  | 2027-07-07 → 2027-07-14 (+7d) |  |  |
| ART-03 | **ARTERIAL-03 (2+510 to 4+267.54)** |  | 2027-03-03 → 2027-03-14 (+11d) |  |  |
| ART03 RD | **ARTERIAL-03-ROAD** |  | 2027-03-03 → 2027-03-14 (+11d) |  |  |
| 2 | **ROADS & ROUNDABOUT** |  | 2027-03-03 → 2027-03-14 (+11d) |  |  |
| 1 | **ASPHALT WORKS** |  | 2027-02-07 → 2027-02-14 (+7d) |  |  |
| MKH2-02-003-CN-1400 | Tack coat at ARTERIAL-03 | 2026-12-21 → 2026-12-28 (+7d) | 2027-01-13 → 2027-01-20 (+7d) |  | -10d → -16d |
| MKH2-02-003-CN-1450 | Bituminous concrete wearing course, ARTERIAL-03 | 2027-01-14 → 2027-01-21 (+7d) | 2027-02-07 → 2027-02-14 (+7d) |  | 24d → 18d |
| FINIS | **FINISHING WORKS** |  | 2027-03-03 → 2027-03-14 (+11d) |  |  |
| MKH2-02-003-CN-1580 | Pavement markings [Road-1 -ARTERIAL-03 (2+510 to 4+267.54) ] | 2027-02-08 → 2027-02-15 (+7d) | 2027-02-18 → 2027-02-27 (+9d) |  | 24d → 18d |
| MKH2-02-003-CN-1630 | Installation of Traffic Signs [Road-1 -ARTERIAL-03 (2+510 to 4+267.54) ] | 2027-02-20 → 2027-02-28 (+8d) | 2027-03-03 → 2027-03-14 (+11d) |  | 24d → 18d |
| 1 | **ELECTRICAL** |  | 2027-01-03 → 2026-10-10 (-85d) |  |  |
| 2 | **LV NETWORKS** |  | 2027-01-03 → 2026-10-04 (-91d) |  |  |
| MKH2-02-003-CN-2000 | Feeder pillars [Road-1 -ARTERIAL-03 (2+510 to 4+267.54) ] | 2026-12-21 → 2026-10-01 A (-81d) | 2027-01-03 → 2026-10-04 A (-91d) | 0% → 100% | 28d → none |
| 4 | **EARTHING** |  | 2026-12-29 → 2026-10-10 (-80d) |  |  |
| MKH2-02-003-CN-1850 | Installation of Earthing System for ARTERIAL-03 |  | 2026-12-29 → 2026-10-10 A (-80d) | 20% → 100% | 84d → none |
| ART-04 | **ARTERIAL-04 (0+000 to 1+0.83)** |  | 2027-05-24 → 2027-05-31 (+7d) |  |  |
| ART04 RD | **ARTERIAL-04-ROAD** |  | 2027-05-24 → 2027-05-31 (+7d) |  |  |
| 3 | **ROADS** |  | 2027-04-13 → 2027-04-20 (+7d) |  |  |
| 3 | **EARTHWORKS & SITE GRADING** |  | 2026-10-26 → 2026-11-02 (+7d) |  |  |
| MKH2-02-003-CN-1160 | Embankments -ARTERIAL-04 |  | 2026-10-26 → 2026-11-02 (+7d) |  | 58d → 52d |
| MKH2-02-003-CN-1100 | Roadway Excavation for cuttings ARTERIAL-04 Stage-2 |  | 2026-10-15 → 2026-10-22 (+7d) |  | 58d → 52d |
| 2 | **ASPHALT WORKS** |  | 2027-02-23 → 2027-03-02 (+7d) |  |  |
| MKH2-02-003-CN-1410 | Tack coat at ARTERIAL-04 | 2027-01-14 → 2027-01-21 (+7d) | 2027-01-30 → 2027-02-06 (+7d) |  | -10d → -16d |
| MKH2-02-003-CN-1460 | Bituminous concrete wearing course, ARTERIAL-04 | 2027-01-31 → 2027-02-07 (+7d) | 2027-02-23 → 2027-03-02 (+7d) |  | -10d → -16d |
| 1 | **FINISHING WORKS** |  | 2027-04-13 → 2027-04-20 (+7d) |  |  |
| MKH2-02-003-CN-1510 | Installation of Precast Concrete curb at ARTERIAL-04 |  | 2027-03-04 → 2027-03-15 (+11d) | 55% → 70% | -10d → -16d |
| MKH2-02-003-CN-1550 | 60mm thick - Interlocking block pavers for sidewalk/footpath ARTERIAL-04 |  | 2027-03-22 → 2027-03-29 (+7d) | 35% → 60% | -10d → -16d |
| MKH2-02-003-CN-1590 | Pavement markings [Road-2 -ARTERIAL-04 (0+000 to 1+083) ] | 2027-03-23 → 2027-03-30 (+7d) | 2027-04-01 → 2027-04-08 (+7d) |  | -3d → -9d |
| MKH2-02-003-CN-1640 | Installation of Traffic Signs [Road-2 -ARTERIAL-04 (0+000 to 1+083) ] | 2027-04-03 → 2027-04-10 (+7d) | 2027-04-13 → 2027-04-20 (+7d) |  | -3d → -9d |
| 6 | **ELECTRICAL WORKS (MKH2-01-007-DAR-TS8-0-SL-DWG-1010-00)** |  | 2027-05-24 → 2027-05-31 (+7d) |  |  |
| 2 | **LV NETWORKS** |  | 2027-02-24 → 2027-02-10 (-14d) |  |  |
| MKH2-02-003-CN-1960 | Drawpit with medium duty steel cover for ARTERIAL-4 Road size600x600x1000mm |  | 2027-01-13 → 2026-10-05 A (-100d) | 20% → 100% | 28d → none |
| MKH2-02-003-CN-2020 | Supply and installation of KWH meter mounting frame including concrete block for installation of KWH meter according to | 2027-02-08 → 2027-01-26 (-13d) | 2027-02-24 → 2027-02-10 (-14d) |  | 7d → 18d |
| 1 | **LV CABLES** |  | 2027-03-15 → 2027-02-27 (-16d) |  |  |
| MKH2-02-003-CN-1740 | Installation of Low Voltage Cables -ARTERIAL-04 Stage-2 |  | 2027-03-15 → 2027-02-27 (-16d) |  | 7d → 18d |
| 3 | **STREET LIGHTING NETWORK INCLUDING ALL** |  | 2027-04-27 → 2027-05-04 (+7d) |  |  |
| MKH2-02-003-CN-1780 | Installation of Lighting Poles 2-Arms ARTERIAL-04 |  | 2027-04-01 → 2027-03-20 (-12d) |  | 7d → 18d |
| MKH2-02-003-CN-1820 | Installation of Lighting Luminaires for 2-Arms ARTERIAL-04 |  | 2027-04-27 → 2027-05-04 (+7d) |  | -3d → -9d |

| ID | Task | Start | Finish | Complete | Total float |
| --- | --- | --- | --- | --- | --- |
| 4 | **EARTHING** |  | 2027-05-24 → 2027-05-31 (+7d) |  |  |
| MKH2-02-003-CN-1860 | Installation of Earthing System for ARTERIAL-04 |  | 2027-05-24 → 2027-05-31 (+7d) |  | -3d → -9d |
| 5 | **CONNECTION TO 5th RING ROAD (IF-0+000 to 1+258)** |  | 2027-07-07 → 2027-07-14 (+7d) |  |  |
| RING | **EARTHWORKS & SITE GRADING** |  | 2026-12-15 → 2026-11-28 (-17d) |  |  |
| MKH2-02-003-CN-1190 | Embankments -to Road connecting roat to 5th Ring road |  | 2026-11-21 → 2026-11-03 (-18d) | 20% → 90% | -36d → -21d |
| MKH2-02-003-CN-1240 | Subgrade for Connecting Road to RING ROAD-5 |  | 2026-12-15 → 2026-11-28 (-17d) | 15% → 80% | -36d → -21d |
| MKH2-02-003-CN-1140 | Roadway Excavation for cuttings Connecting to 5th Ring road stage-2 |  | 2026-10-31 → 2026-10-14 (-17d) | 20% → 70% | -36d → -21d |
| ROAD | **ASPHALT WORKS** | 2026-12-16 → 2026-10-08 (-69d) | 2027-05-10 → 2027-05-20 (+10d) |  |  |
| MKH2-02-003-CN-1290 | Aggregate base course at to Road connecting roat to 5th Ring road | 2026-12-16 → 2026-10-08 A (-69d) | 2027-01-05 → 2026-12-19 (-17d) | 0% → 40% | -36d → -21d |
| MKH2-02-003-CN-1340 | Prime Coat (MC1) to Road connecting roat to 5th Ring road | 2027-01-06 → 2026-12-20 (-17d) | 2027-01-19 → 2027-01-02 (-17d) |  | -36d → -21d |
| MKH2-02-003-CN-1390 | Bituminous base course to Road connecting roat to 5th Ring road | 2027-01-20 → 2027-01-03 (-17d) | 2027-02-07 → 2027-01-20 (-18d) |  | -36d → -21d |
| MKH2-02-003-CN-1440 | Tack coat at to Road connecting roat to 5th Ring road | 2027-03-23 → 2027-03-30 (+7d) | 2027-04-15 → 2027-04-22 (+7d) |  | -10d → -16d |
| MKH2-02-003-CN-1490 | Bituminous concrete wearing course, to Road connecting roat to 5th Ring road | 2027-04-17 → 2027-04-24 (+7d) | 2027-05-10 → 2027-05-20 (+10d) |  | -10d → -16d |
| 5 FIN | **FINISHING WORKS** | 2027-05-11 → 2027-05-22 (+11d) | 2027-07-07 → 2027-07-14 (+7d) |  |  |
| MKH2-02-003-CN-1620 | Pavement markings [Road-5 -CONNECTION TO 5th RING ROAD (IF-0+000 to 1+258) ] | 2027-05-11 → 2027-05-22 (+11d) | 2027-06-01 → 2027-06-08 (+7d) |  | -10d → -16d |
| MKH2-02-003-CN-1670 | Installation of Traffic Signs [Road-5 -CONNECTION TO 5th RING ROAD (IF-0+000 to 1+258) ] | 2027-06-02 → 2027-06-09 (+7d) | 2027-06-20 → 2027-06-27 (+7d) |  | -10d → -16d |
| MKH2-02-003-CN-1680 | Installation of Traffic Signs [Road-5 -CONNECTION TO 5th RING ROAD (IF-0+000 to 1+258) ] | 2027-06-21 → 2027-06-28 (+7d) | 2027-07-07 → 2027-07-14 (+7d) |  | -10d → -16d |
| 3 | **RAMP-2-IN (0+000 to 0+400)** |  | 2027-07-01 → 2027-06-19 (-12d) |  |  |
| 3 | **ROADS** |  | 2027-03-30 → 2027-04-06 (+7d) |  |  |
| 1 | **EARTHWORKS & SITE GRADING** |  | 2026-11-22 → 2026-11-29 (+7d) |  |  |
| MKH2-02-003-CN-1110 | Roadway Excavation for cuttings RAMP-2-IN |  | 2026-10-27 → 2026-11-03 (+7d) |  | -19d → -25d |
| MKH2-02-003-CN-1170 | Embankments -RAMP-02-IN |  | 2026-11-09 → 2026-11-16 (+7d) | 80% → 95% | -19d → -25d |
| MKH2-02-003-CN-1220 | Subgrade for RAMP-2 IN |  | 2026-11-22 → 2026-11-29 (+7d) |  | -19d → -25d |
| 2 | **ASPHALT WORKS** |  | 2027-03-23 → 2027-03-07 (-16d) |  |  |
| MKH2-02-003-CN-1270 | Aggregate base course at RAMP-IN |  | 2026-12-15 → 2026-12-22 (+7d) |  | -19d → -25d |
| MKH2-02-003-CN-1320 | Prime Coat (MC1) RAMP-02- IN |  | 2026-12-31 → 2027-01-07 (+7d) |  | -19d → -25d |
| MKH2-02-003-CN-1370 | Bituminous base course for RAMP-02 IN |  | 2027-01-18 → 2027-01-25 (+7d) |  | -19d → -25d |
| MKH2-02-003-CN-1420 | Tack coat at RAMP-2-IN | 2027-02-08 → 2027-01-26 (-13d) | 2027-02-24 → 2027-02-10 (-14d) |  | -36d → -25d |
| MKH2-02-003-CN-1470 | Bituminous concrete wearing course, RAMP-2-IN | 2027-02-25 → 2027-02-11 (-14d) | 2027-03-23 → 2027-03-07 (-16d) |  | -36d → -25d |
| FIN | **FINISHING WORKS** | 2027-01-19 → 2027-01-26 (+7d) | 2027-03-30 → 2027-04-06 (+7d) |  |  |
| MKH2-02-003-CN-1520 | Installation of Precast Concrete curb at RAMP-2-IN | 2027-01-19 → 2027-01-26 (+7d) | 2027-02-03 → 2027-02-10 (+7d) |  | 17d → 11d |
| MKH2-02-003-CN-1560 | 60mm thick - Interlocking block pavers for sidewalk/footpath RAMP-2-IN | 2027-02-04 → 2027-02-11 (+7d) | 2027-02-20 → 2027-02-28 (+8d) |  | 17d → 11d |
| MKH2-02-003-CN-1600 | Pavement markings [Road-3 -RAMP-2-IN (0+000 to 0+400) ] | 2027-02-21 → 2027-03-01 (+8d) | 2027-03-09 → 2027-03-20 (+11d) |  | 17d → 11d |
| MKH2-02-003-CN-1650 | Installation of Traffic Signs [Road-3 -RAMP-2-IN (0+000 to 0+400) ] | 2027-03-14 → 2027-03-21 (+7d) | 2027-03-30 → 2027-04-06 (+7d) |  | 17d → 11d |
| 4 | **ELECTRICAL WORKS (MKH2-01-007-DAR-TS8-0-SL-DWG-1010-00)** | 2027-03-24 → 2027-03-08 (-16d) | 2027-07-01 → 2027-06-19 (-12d) |  |  |
| 1 | **LV CABLES** | 2027-03-24 → 2027-03-08 (-16d) | 2027-04-17 → 2027-04-04 (-13d) |  |  |
| MKH2-02-003-CN-1750 | Installation of Low Voltage Cables -RAMP-2 in | 2027-03-24 → 2027-03-08 (-16d) | 2027-04-17 → 2027-04-04 (-13d) |  | -36d → -25d |
| 3 | **STREET LIGHTING NETWORK INCLUDING ALL** | 2027-04-18 → 2027-04-05 (-13d) | 2027-06-07 → 2027-05-25 (-13d) |  |  |
| MKH2-02-003-CN-1790 | Installation of Lighting Poles 1-Arms In RAMP-2 IN | 2027-04-18 → 2027-04-05 (-13d) | 2027-05-11 → 2027-04-28 (-13d) |  | -36d → -25d |
| MKH2-02-003-CN-1830 | Installation of Lighting Luminaires for 1-Arms RAMP-02 IN | 2027-05-12 → 2027-04-29 (-13d) | 2027-06-07 → 2027-05-25 (-13d) |  | -36d → -25d |
| 4 | **EARTHING** | 2027-06-08 → 2027-05-26 (-13d) | 2027-07-01 → 2027-06-19 (-12d) |  |  |
| MKH2-02-003-CN-1870 | Installation of Earthing System for RAMP-02 IN | 2027-06-08 → 2027-05-26 (-13d) | 2027-07-01 → 2027-06-19 (-12d) |  | -36d → -25d |
| 4 | **RAMP-2-OUT (0+398 to 0+000)** |  | 2027-05-12 → 2027-05-04 (-8d) |  |  |
| 3 | **ROADS** |  | 2027-05-12 → 2027-04-29 (-13d) |  |  |
| 2 | **ASPHALT WORKS** |  | 2027-04-08 → 2027-03-27 (-12d) |  |  |
| MKH2-02-003-CN-1380 | Bituminous base course for RAMP-02 OUT |  | 2026-11-05 → 2026-11-12 (+7d) |  | 78d → 72d |
| MKH2-02-003-CN-1430 | Tack coat at RAMP-2-OUT | 2027-02-25 → 2027-02-11 (-14d) | 2027-03-16 → 2027-02-28 (-16d) |  | -16d → -5d |
| MKH2-02-003-CN-1480 | Bituminous concrete wearing course, RAMP-2-OUT | 2027-03-17 → 2027-03-01 (-16d) | 2027-04-08 → 2027-03-27 (-12d) |  | -10d → 1d |
| FIN | **FINISHING WORKS** | 2027-03-17 → 2027-03-01 (-16d) | 2027-05-12 → 2027-04-29 (-13d) |  |  |
| MKH2-02-003-CN-1530 | Installation of Precast Concrete curb at RAMP-2-OUT | 2027-03-17 → 2027-03-01 (-16d) | 2027-03-30 → 2027-03-17 (-13d) |  | -16d → -5d |
| MKH2-02-003-CN-1570 | 60mm thick - Interlocking block pavers for sidewalk/footpath RAMP-2-OUT | 2027-03-31 → 2027-03-18 (-13d) | 2027-04-15 → 2027-04-03 (-12d) |  | -16d → -5d |
| MKH2-02-003-CN-1610 | Pavement markings [Road-4 -RAMP-2-OUT (0+398 to 0+000) ] | 2027-04-17 → 2027-04-04 (-13d) | 2027-04-28 → 2027-04-15 (-13d) |  | -16d → -5d |
| MKH2-02-003-CN-1660 | Installation of Traffic Signs [Road-4 -RAMP-2-OUT (0+398 to 0+000) ] | 2027-04-29 → 2027-04-17 (-12d) | 2027-05-12 → 2027-04-29 (-13d) |  | -16d → -5d |
| 4 | **ELECTRICAL WORKS (MKH2-01-007-DAR-TS8-0-SL-DWG-1010-00)** |  | 2027-04-27 → 2027-05-04 (+7d) |  |  |
| 1 | **LV CABLES** |  | 2026-11-30 → 2026-12-07 (+7d) |  |  |
| MKH2-02-003-CN-1760 | Installation of Low Voltage Cables -RAMP-2 out |  | 2026-11-30 → 2026-12-07 (+7d) |  | 97d → 91d |
| 3 | **STREET LIGHTING NETWORK INCLUDING ALL** |  | 2027-04-13 → 2027-04-20 (+7d) |  |  |
| MKH2-02-003-CN-1800 | Installation of Lighting Poles 1-Arms In RAMP-2 OUT |  | 2026-12-22 → 2026-12-29 (+7d) |  | 97d → 91d |
| MKH2-02-003-CN-1840 | Installation of Lighting Luminaires for 1-Arms RAMP-02 OUT |  | 2027-04-13 → 2027-04-20 (+7d) |  | 17d → 11d |
| 4 | **EARTHING** | 2027-04-14 → 2027-04-21 (+7d) | 2027-04-27 → 2027-05-04 (+7d) |  |  |
| MKH2-02-003-CN-1880 | Installation of Earthing System for RAMP-02 OUT | 2027-04-14 → 2027-04-21 (+7d) | 2027-04-27 → 2027-05-04 (+7d) |  | 17d → 11d |
| DEM | **DEMOLISHING WORKS** |  | 2026-10-22 → 2026-10-29 (+7d) |  |  |
| DEMO | **DEMOLISHING Works** |  | 2026-10-22 → 2026-10-29 (+7d) |  |  |
| MKH2-02-003-CN-1010 | Milling of the existing asphalt layer | 2026-10-07 → 2026-10-14 (+7d) | 2026-10-22 → 2026-10-29 (+7d) |  | 142d → 136d |
| OPEN | **Open Drain Channels** |  | 2027-07-26 → 2027-07-13 (-13d) |  |  |
| Section 7 | **Near Ramp- In location from Ch 0+000 to Ch 0+230** |  | 2027-07-26 → 2027-07-13 (-13d) |  |  |
| MKH2-02-003-CN-2170 | Excavation for Channel |  | 2027-01-10 → 2027-01-07 (-3d) |  | 84d → 86d |
| MKH2-02-003-CN-2240 | Embankment for Channel Berms |  | 2027-02-03 → 2027-02-01 (-2d) |  | 84d → 86d |
| MKH2-02-003-CN-2310 | Riprap Grouting |  | 2027-07-26 → 2027-07-13 (-13d) |  | -36d → -25d |
| T & C | **TESTING & COMMISSIONING** | 2027-05-13 → 2027-05-01 (-12d) | 2027-08-07 → 2027-07-25 (-13d) |  |  |

| ID | Task | Start | Finish | Total float |
| --- | --- | --- | --- | --- |
| MKH2-02-003-TC-1010 | Test for Box Culvert | 2027-05-13 → 2027-05-01 (-12d) | 2027-05-23 → 2027-05-06 (-17d) | -16d → -5d |
| MKH2-02-003-TC-1000 | Test for Electrical Networks | 2027-07-03 → 2027-06-20 (-13d) | 2027-07-08 → 2027-06-26 (-12d) | -14d → -3d |
| MKH2-02-003-TC-1020 | Test for Open Drain channel | 2027-07-27 → 2027-07-14 (-13d) | 2027-08-07 → 2027-07-25 (-13d) | -36d → -25d |
| MKH2-02-003-TC-1030 | Test for Roads | 2027-07-08 → 2027-07-15 (+7d) | 2027-07-14 → 2027-07-21 (+7d) | -10d → -16d |
| PRO C & DEM | **PROJECT CLOSEOUT & DEMOBILIZATION** | 2027-05-24 → 2027-05-08 (-16d) | 2027-09-26 → 2027-09-12 (-14d) |  |
| 1 | **As-Built DWGs** | 2027-05-24 → 2027-05-08 (-16d) | 2027-08-30 → 2027-08-17 (-13d) |  |
| 1 | **As-Built DWGs Submittals** | 2027-05-24 → 2027-05-08 (-16d) | 2027-08-18 → 2027-08-05 (-13d) |  |
| MKH2-02-003-CO-1050 | As-Built DWGs Submittal for Box Culvert | 2027-05-24 → 2027-05-08 (-16d) | 2027-05-31 → 2027-05-18 (-13d) | -16d → -5d |
| MKH2-02-003-CO-1040 | As-Built DWGs Submittal for Electrical Networks | 2027-07-10 → 2027-06-27 (-13d) | 2027-07-17 → 2027-07-04 (-13d) | -14d → -3d |
| MKH2-02-003-CO-1070 | As-Built DWGs Submittal for Roads | 2027-07-27 → 2027-07-22 (-5d) | 2027-08-03 → 2027-07-29 (-5d) | -20d → -16d |
| MKH2-02-003-CO-1060 | As-Built DWGs Submittal for Open Drain channel | 2027-08-08 → 2027-07-26 (-13d) | 2027-08-18 → 2027-08-05 (-13d) | -36d → -25d |
| 2 | **As-Built DWGs Approvals** | 2027-06-01 → 2027-05-19 (-13d) | 2027-08-30 → 2027-08-17 (-13d) |  |
| MKH2-02-003-CO-1090 | As-Built DWGs Approval for Box Culvert | 2027-06-01 → 2027-05-19 (-13d) | 2027-06-08 → 2027-05-26 (-13d) | -16d → -5d |
| MKH2-02-003-CO-1080 | As-Built DWGs Approval for Electrical Networks | 2027-07-18 → 2027-07-05 (-13d) | 2027-07-27 → 2027-07-14 (-13d) | -14d → -3d |
| MKH2-02-003-CO-1110 | As-Built DWGs Approval for Roads | 2027-08-04 → 2027-07-31 (-4d) | 2027-08-11 → 2027-08-07 (-4d) | -20d → -16d |
| MKH2-02-003-CO-1100 | As-Built DWGs Approval for Open Drain channel | 2027-08-19 → 2027-08-07 (-12d) | 2027-08-30 → 2027-08-17 (-13d) | -36d → -25d |
| 2 | **Demobilization** | 2027-08-31 → 2027-08-18 (-13d) | 2027-09-26 → 2027-09-12 (-14d) |  |
| MKH2-02-003-CO-1000 | Demobilization of Manpower | 2027-08-31 → 2027-08-18 (-13d) | 2027-09-05 → 2027-08-23 (-13d) | -36d → -25d |
| MKH2-02-003-CO-1010 | Removal of Equipment from Site | 2027-09-06 → 2027-08-24 (-13d) | 2027-09-11 → 2027-08-29 (-13d) | -36d → -25d |
| MKH2-02-003-CO-1020 | Site Clean Up | 2027-09-12 → 2027-08-30 (-13d) | 2027-09-16 → 2027-09-04 (-12d) | -36d → -25d |
| MKH2-02-003-CO-1030 | Restoration of Ground Surfaces | 2027-09-18 → 2027-09-05 (-13d) | 2027-09-26 → 2027-09-12 (-14d) | -36d → -25d |

## Version 4 (data date 2026-10-20, saved 2026-10-18, file 2. MKH2-02-003-ENJ-WPR-036-20-10-2026 UP 33.xer)

Note of the change: Weekly folders named by the Thursday the week ends on: a report dated after one Thursday up to the next goes in the next Thursday's folder (26-Oct → W05 - 29-Oct-2026); all weeks moved accordingly, W00 removed

Last finish 2027-09-12 → 2027-08-30 (-13d). Complete tasks 310 → 312.

Changed:

| ID | Task | Start | Finish | Complete | Total float |
| --- | --- | --- | --- | --- | --- |
| KEY | **KEY MILESTONES** |  | 2027-09-12 → 2027-08-30 (-13d) |  |  |
| GEN | **GENERAL MILESTONES** |  | 2027-09-12 → 2027-08-30 (-13d) |  |  |
| MKH2-02-003-MS-1100 | Project Completion | 2027-09-12 → 2027-08-30 (-13d) | 2027-09-12 → 2027-08-30 (-13d) |  | -25d → -14d |
| OVER ALL | **CONTRACTUAL MILESTONE** |  | 2027-09-12 → 2027-08-30 (-13d) |  |  |
| MKH2-02-003-MS-1040 | Completion of Road Works | 2027-01-25 → 2027-01-11 (-14d) | 2027-01-25 → 2027-01-11 (-14d) |  | 18d → 45d |
| MKH2-02-003-MS-1050 | Completion of Open Drain Channel | 2027-07-13 → 2027-06-29 (-14d) | 2027-07-13 → 2027-06-29 (-14d) |  | -9d → 3d |
| MKH2-02-003-MS-1060 | Completion of All Works | 2027-09-12 → 2027-08-30 (-13d) | 2027-09-12 → 2027-08-30 (-13d) |  | -25d → -14d |
| MKH2-02-003-MS-1070 | Final Handover | 2027-09-12 → 2027-08-30 (-13d) | 2027-09-12 → 2027-08-30 (-13d) |  | -25d → -14d |
| PRO | **PROCUREMENT** |  | 2026-12-27 → 2027-01-03 (+7d) |  |  |
| SLI | **SHORT LEAD ITEM** |  | 2026-12-06 → 2026-12-13 (+7d) |  |  |
| ROAD | **ROAD WORKS-CIVIL** |  | 2026-12-06 → 2026-12-13 (+7d) |  |  |
| BBC& BWC | **BITUMINOUS BASE & WEARING COURSE** |  | 2026-11-08 → 2026-11-15 (+7d) |  |  |
| MKH2-02-003-PR-1130 | Material Delivery for 1st lot to the Site |  | 2026-11-08 → 2026-11-15 (+7d) |  | -12d → -10d |
| INTR | **INTERLOCKING PAVING BLOCKS** |  | 2026-12-03 → 2026-12-10 (+7d) |  |  |
| MKH2-02-003-PR-1190 | Material Delivery for 1st lot of Interlocking Block Pavers |  | 2026-12-03 → 2026-12-10 (+7d) |  | -12d → -10d |
| MARK | **PAVEMENT MARKING** |  | 2026-12-06 → 2026-12-13 (+7d) |  |  |
| MKH2-02-003-PR-1210 | Material Fabrication for Pavement Markings | 2026-10-14 → 2026-10-21 (+7d) | 2026-11-10 → 2026-11-17 (+7d) |  | -16d → -14d |
| MKH2-02-003-PR-1220 | Material Delivery for 1st lot of Pavement Markings | 2026-11-11 → 2026-11-18 (+7d) | 2026-12-06 → 2026-12-13 (+7d) |  | -16d → -14d |
| LLI | **LONG LEAD ITEM** |  | 2026-12-27 → 2027-01-03 (+7d) |  |  |
| POW | **ELECTRICAL POWER** |  | 2026-12-16 → 2026-12-23 (+7d) |  |  |
| 1 | **LV-CABLES** |  | 2026-12-15 → 2026-12-22 (+7d) |  |  |
| MKH2-02-003-PR-1390 | Staging Time for Low Voltage Cables |  | 2026-12-15 → 2026-12-22 (+7d) |  | -14d → -12d |
| 2 | **LV-DISTRIBUTION PANNELS** |  | 2026-12-16 → 2026-12-23 (+7d) |  |  |
| MKH2-02-003-PR-1460 | Staging Time for LV Distribution pannel |  | 2026-12-16 → 2026-12-23 (+7d) |  | -16d → -14d |
| LIGH1 | **STREET LIGHTING** |  | 2026-12-27 → 2027-01-03 (+7d) |  |  |
| POL | **POLES** |  | 2026-10-22 → 2026-10-29 (+7d) |  |  |
| MKH2-02-003-PR-1530 | Staging Time for Street Light poles |  | 2026-10-22 → 2026-10-29 (+7d) |  | 31d → 33d |
| PANN | **PANNELS & FEEDER PILLERS** |  | 2026-12-27 → 2027-01-03 (+7d) |  |  |
| MKH2-02-003-PR-1600 | Staging Time for Lighting Panels/Feeder Pillers |  | 2026-12-27 → 2027-01-03 (+7d) |  | -16d → -14d |
| LUM | **LUMINAIRE** |  | 2026-12-24 → 2026-12-31 (+7d) |  |  |
| MKH2-02-003-PR-1670 | Staging Time for Street Lighting Luminaire |  | 2026-12-24 → 2026-12-31 (+7d) |  | -14d → -12d |
| CONST | **CONSTRUCTION PHASE** |  | 2027-07-14 → 2027-07-12 (-2d) |  |  |
| ROD | **ROADS** |  | 2027-07-14 → 2027-07-12 (-2d) |  |  |
| ART-03 | **ARTERIAL-03 (2+510 to 4+267.54)** |  | 2027-03-14 → 2027-03-21 (+7d) |  |  |
| ART03 RD | **ARTERIAL-03-ROAD** |  | 2027-03-14 → 2027-03-21 (+7d) |  |  |
| 2 | **ROADS & ROUNDABOUT** |  | 2027-03-14 → 2027-03-21 (+7d) |  |  |
| 1 | **ASPHALT WORKS** |  | 2027-02-14 → 2027-02-21 (+7d) |  |  |
| MKH2-02-003-CN-1400 | Tack coat at ARTERIAL-03 | 2026-12-28 → 2027-01-04 (+7d) | 2027-01-20 → 2027-01-27 (+7d) |  | -16d → -14d |
| MKH2-02-003-CN-1450 | Bituminous concrete wearing course, ARTERIAL-03 | 2027-01-21 → 2027-01-28 (+7d) | 2027-02-14 → 2027-02-21 (+7d) |  | 18d → 12d |
| FINIS | **FINISHING WORKS** |  | 2027-03-14 → 2027-03-21 (+7d) |  |  |
| MKH2-02-003-CN-1580 | Pavement markings [Road-1 -ARTERIAL-03 (2+510 to 4+267.54) ] | 2027-02-15 → 2027-02-23 (+8d) | 2027-02-27 → 2027-03-06 (+7d) |  | 18d → 12d |
| MKH2-02-003-CN-1630 | Installation of Traffic Signs [Road-1 -ARTERIAL-03 (2+510 to 4+267.54) ] | 2027-02-28 → 2027-03-07 (+7d) | 2027-03-14 → 2027-03-21 (+7d) |  | 18d → 12d |
| ART-04 | **ARTERIAL-04 (0+000 to 1+0.83)** |  | 2027-05-31 → 2027-05-08 (-23d) |  |  |
| ART04 RD | **ARTERIAL-04-ROAD** |  | 2027-05-31 → 2027-05-08 (-23d) |  |  |
| 3 | **ROADS** |  | 2027-04-20 → 2027-04-18 (-2d) |  |  |
| 3 | **EARTHWORKS & SITE GRADING** |  | 2026-11-02 → 2026-11-09 (+7d) |  |  |
| MKH2-02-003-CN-1160 | Embankments -ARTERIAL-04 |  | 2026-11-02 → 2026-11-09 (+7d) |  | 52d → 54d |
| MKH2-02-003-CN-1100 | Roadway Excavation for cuttings ARTERIAL-04 Stage-2 |  | 2026-10-22 → 2026-10-29 (+7d) |  | 52d → 54d |
| 2 | **ASPHALT WORKS** |  | 2027-03-02 → 2027-03-09 (+7d) |  |  |
| MKH2-02-003-CN-1410 | Tack coat at ARTERIAL-04 | 2027-01-21 → 2027-01-28 (+7d) | 2027-02-06 → 2027-02-13 (+7d) |  | -16d → -14d |
| MKH2-02-003-CN-1460 | Bituminous concrete wearing course, ARTERIAL-04 | 2027-02-07 → 2027-02-14 (+7d) | 2027-03-02 → 2027-03-09 (+7d) |  | -16d → -14d |
| 1 | **FINISHING WORKS** |  | 2027-04-20 → 2027-04-18 (-2d) |  |  |
| MKH2-02-003-CN-1510 | Installation of Precast Concrete curb at ARTERIAL-04 |  | 2027-03-15 → 2027-03-22 (+7d) |  | -16d → -14d |
| MKH2-02-003-CN-1550 | 60mm thick - Interlocking block pavers for sidewalk/footpath ARTERIAL-04 |  | 2027-03-29 → 2027-03-27 (-2d) | 60% → 70% | -16d → -14d |
| MKH2-02-003-CN-1590 | Pavement markings [Road-2 -ARTERIAL-04 (0+000 to 1+083) ] | 2027-03-30 → 2027-03-28 (-2d) | 2027-04-08 → 2027-04-06 (-2d) |  | -9d → 8d |
| MKH2-02-003-CN-1640 | Installation of Traffic Signs [Road-2 -ARTERIAL-04 (0+000 to 1+083) ] | 2027-04-10 → 2027-04-07 (-3d) | 2027-04-20 → 2027-04-18 (-2d) |  | -9d → 8d |
| 6 | **ELECTRICAL WORKS (MKH2-01-007-DAR-TS8-0-SL-DWG-1010-00)** |  | 2027-05-31 → 2027-05-08 (-23d) |  |  |
| 2 | **LV NETWORKS** |  | 2027-02-10 → 2027-01-27 (-14d) |  |  |
| MKH2-02-003-CN-2020 | Supply and installation of KWH meter mounting frame including concrete block for installation of KWH meter according to | 2027-01-26 → 2027-01-12 (-14d) | 2027-02-10 → 2027-01-27 (-14d) |  | 18d → 45d |
| 1 | **LV CABLES** |  | 2027-02-27 → 2027-02-11 (-16d) |  |  |
| MKH2-02-003-CN-1740 | Installation of Low Voltage Cables -ARTERIAL-04 Stage-2 |  | 2027-02-27 → 2027-02-11 (-16d) |  | 18d → 45d |
| 3 | **STREET LIGHTING NETWORK INCLUDING ALL** |  | 2027-05-04 → 2027-05-02 (-2d) |  |  |
| MKH2-02-003-CN-1780 | Installation of Lighting Poles 2-Arms ARTERIAL-04 |  | 2027-03-20 → 2027-03-02 (-18d) |  | 18d → 45d |
| MKH2-02-003-CN-1820 | Installation of Lighting Luminaires for 2-Arms ARTERIAL-04 |  | 2027-05-04 → 2027-05-02 (-2d) |  | -9d → 8d |
| 4 | **EARTHING** |  | 2027-05-31 → 2027-05-08 (-23d) |  |  |
| MKH2-02-003-CN-1860 | Installation of Earthing System for ARTERIAL-04 |  | 2027-05-31 → 2027-05-08 (-23d) | 20% → 80% | -9d → 8d |
| 5 | **CONNECTION TO 5th RING ROAD (IF-0+000 to 1+258)** |  | 2027-07-14 → 2027-07-12 (-2d) |  |  |
| RING | **EARTHWORKS & SITE GRADING** |  | 2026-11-28 → 2026-11-01 (-27d) |  |  |
| MKH2-02-003-CN-1190 | Embankments -to Road connecting roat to 5th Ring road |  | 2026-11-03 → 2026-10-25 (-9d) | 90% → 95% | -21d → 15d |
| MKH2-02-003-CN-1240 | Subgrade for Connecting Road to RING ROAD-5 |  | 2026-11-28 → 2026-11-01 (-27d) | 80% → 90% | -21d → 15d |

| ID | Task | Start | Finish | Complete | Total float |
| --- | --- | --- | --- | --- | --- |
| MKH2-02-003-CN-1140 | Roadway Excavation for cuttings Connecting to 5th Ring road stage-2 |  | 2026-10-14 → 2026-10-12 A (-2d) | 70% → 100% | -21d → none |
| ROAD | **ASPHALT WORKS** |  | 2027-05-20 → 2027-05-18 (-2d) |  |  |
| MKH2-02-003-CN-1290 | Aggregate base course at to Road connecting roat to 5th Ring road |  | 2026-12-19 → 2026-11-07 (-42d) | 40% → 80% | -21d → 15d |
| MKH2-02-003-CN-1340 | Prime Coat (MC1) to Road connecting roat to 5th Ring road | 2026-12-20 → 2026-11-08 (-42d) | 2027-01-02 → 2026-11-21 (-42d) |  | -21d → 15d |
| MKH2-02-003-CN-1390 | Bituminous base course to Road connecting roat to 5th Ring road | 2027-01-03 → 2026-11-22 (-42d) | 2027-01-20 → 2026-12-09 (-42d) |  | -21d → 15d |
| MKH2-02-003-CN-1440 | Tack coat at to Road connecting roat to 5th Ring road | 2027-03-30 → 2027-03-28 (-2d) | 2027-04-22 → 2027-04-20 (-2d) |  | -16d → -14d |
| MKH2-02-003-CN-1490 | Bituminous concrete wearing course, to Road connecting roat to 5th Ring road | 2027-04-24 → 2027-04-21 (-3d) | 2027-05-20 → 2027-05-18 (-2d) |  | -16d → -14d |
| 5 FIN | **FINISHING WORKS** | 2027-05-22 → 2027-05-19 (-3d) | 2027-07-14 → 2027-07-12 (-2d) |  |  |
| MKH2-02-003-CN-1620 | Pavement markings [Road-5 -CONNECTION TO 5th RING ROAD (IF-0+000 to 1+258) ] | 2027-05-22 → 2027-05-19 (-3d) | 2027-06-08 → 2027-06-06 (-2d) |  | -16d → -14d |
| MKH2-02-003-CN-1670 | Installation of Traffic Signs [Road-5 -CONNECTION TO 5th RING ROAD (IF-0+000 to 1+258) ] | 2027-06-09 → 2027-06-07 (-2d) | 2027-06-27 → 2027-06-24 (-3d) |  | -16d → -14d |
| MKH2-02-003-CN-1680 | Installation of Traffic Signs [Road-5 -CONNECTION TO 5th RING ROAD (IF-0+000 to 1+258) ] | 2027-06-28 → 2027-06-26 (-2d) | 2027-07-14 → 2027-07-12 (-2d) |  | -16d → -14d |
| 3 | **RAMP-2-IN (0+000 to 0+400)** |  | 2027-06-19 → 2027-06-05 (-14d) |  |  |
| 3 | **ROADS** |  | 2027-04-06 → 2027-03-23 (-14d) |  |  |
| 1 | **EARTHWORKS & SITE GRADING** |  | 2026-11-29 → 2026-11-15 (-14d) |  |  |
| MKH2-02-003-CN-1110 | Roadway Excavation for cuttings RAMP-2-IN |  | 2026-11-03 → 2026-10-14 A (-20d) | 98% → 100% | -25d → none |
| MKH2-02-003-CN-1170 | Embankments -RAMP-02-IN |  | 2026-11-16 → 2026-11-02 (-14d) |  | -25d → -13d |
| MKH2-02-003-CN-1220 | Subgrade for RAMP-2 IN |  | 2026-11-29 → 2026-11-15 (-14d) | 70% → 90% | -25d → -13d |
| 2 | **ASPHALT WORKS** |  | 2027-03-07 → 2027-02-20 (-15d) |  |  |
| MKH2-02-003-CN-1270 | Aggregate base course at RAMP-IN |  | 2026-12-22 → 2026-12-08 (-14d) | 70% → 90% | -25d → -13d |
| MKH2-02-003-CN-1320 | Prime Coat (MC1) RAMP-02- IN |  | 2027-01-07 → 2026-12-24 (-14d) |  | -25d → -13d |
| MKH2-02-003-CN-1370 | Bituminous base course for RAMP-02 IN |  | 2027-01-25 → 2027-01-11 (-14d) |  | -25d → -13d |
| MKH2-02-003-CN-1420 | Tack coat at RAMP-2-IN | 2027-01-26 → 2027-01-12 (-14d) | 2027-02-10 → 2027-01-27 (-14d) |  | -25d → -13d |
| MKH2-02-003-CN-1470 | Bituminous concrete wearing course, RAMP-2-IN | 2027-02-11 → 2027-01-28 (-14d) | 2027-03-07 → 2027-02-20 (-15d) |  | -25d → -13d |
| FIN | **FINISHING WORKS** | 2027-01-26 → 2027-01-12 (-14d) | 2027-04-06 → 2027-03-23 (-14d) |  |  |
| MKH2-02-003-CN-1520 | Installation of Precast Concrete curb at RAMP-2-IN | 2027-01-26 → 2027-01-12 (-14d) | 2027-02-10 → 2027-01-27 (-14d) |  | 11d → 23d |
| MKH2-02-003-CN-1560 | 60mm thick - Interlocking block pavers for sidewalk/footpath RAMP-2-IN | 2027-02-11 → 2027-01-28 (-14d) | 2027-02-28 → 2027-02-13 (-15d) |  | 11d → 23d |
| MKH2-02-003-CN-1600 | Pavement markings [Road-3 -RAMP-2-IN (0+000 to 0+400) ] | 2027-03-01 → 2027-02-14 (-15d) | 2027-03-20 → 2027-03-02 (-18d) |  | 11d → 23d |
| MKH2-02-003-CN-1650 | Installation of Traffic Signs [Road-3 -RAMP-2-IN (0+000 to 0+400) ] | 2027-03-21 → 2027-03-03 (-18d) | 2027-04-06 → 2027-03-23 (-14d) |  | 11d → 23d |
| 4 | **ELECTRICAL WORKS (MKH2-01-007-DAR-TS8-0-SL-DWG-1010-00)** | 2027-03-08 → 2027-02-21 (-15d) | 2027-06-19 → 2027-06-05 (-14d) |  |  |
| 1 | **LV CABLES** | 2027-03-08 → 2027-02-21 (-15d) | 2027-04-04 → 2027-03-21 (-14d) |  |  |
| MKH2-02-003-CN-1750 | Installation of Low Voltage Cables -RAMP-2 in | 2027-03-08 → 2027-02-21 (-15d) | 2027-04-04 → 2027-03-21 (-14d) |  | -25d → -13d |
| 3 | **STREET LIGHTING NETWORK INCLUDING ALL** | 2027-04-05 → 2027-03-22 (-14d) | 2027-05-25 → 2027-05-08 (-17d) |  |  |
| MKH2-02-003-CN-1790 | Installation of Lighting Poles 1-Arms In RAMP-2 IN | 2027-04-05 → 2027-03-22 (-14d) | 2027-04-28 → 2027-04-14 (-14d) |  | -25d → -13d |
| MKH2-02-003-CN-1830 | Installation of Lighting Luminaires for 1-Arms RAMP-02 IN | 2027-04-29 → 2027-04-15 (-14d) | 2027-05-25 → 2027-05-08 (-17d) |  | -25d → -13d |
| 4 | **EARTHING** | 2027-05-26 → 2027-05-09 (-17d) | 2027-06-19 → 2027-06-05 (-14d) |  |  |
| MKH2-02-003-CN-1870 | Installation of Earthing System for RAMP-02 IN | 2027-05-26 → 2027-05-09 (-17d) | 2027-06-19 → 2027-06-05 (-14d) |  | -25d → -13d |
| 4 | **RAMP-2-OUT (0+398 to 0+000)** |  | 2027-05-04 → 2027-04-20 (-14d) |  |  |
| 3 | **ROADS** |  | 2027-04-29 → 2027-04-15 (-14d) |  |  |
| 2 | **ASPHALT WORKS** |  | 2027-03-27 → 2027-03-09 (-18d) |  |  |
| MKH2-02-003-CN-1380 | Bituminous base course for RAMP-02 OUT |  | 2026-11-12 → 2026-10-29 (-14d) | 50% → 70% | 72d → 84d |
| MKH2-02-003-CN-1430 | Tack coat at RAMP-2-OUT | 2027-02-11 → 2027-01-28 (-14d) | 2027-02-28 → 2027-02-13 (-15d) |  | -5d → 7d |
| MKH2-02-003-CN-1480 | Bituminous concrete wearing course, RAMP-2-OUT | 2027-03-01 → 2027-02-14 (-15d) | 2027-03-27 → 2027-03-09 (-18d) |  | 1d → 13d |
| FIN | **FINISHING WORKS** | 2027-03-01 → 2027-02-14 (-15d) | 2027-04-29 → 2027-04-15 (-14d) |  |  |
| MKH2-02-003-CN-1530 | Installation of Precast Concrete curb at RAMP-2-OUT | 2027-03-01 → 2027-02-14 (-15d) | 2027-03-17 → 2027-02-28 (-17d) |  | -5d → 7d |
| MKH2-02-003-CN-1570 | 60mm thick - Interlocking block pavers for sidewalk/footpath RAMP-2-OUT | 2027-03-18 → 2027-03-01 (-17d) | 2027-04-03 → 2027-03-20 (-14d) |  | -5d → 7d |
| MKH2-02-003-CN-1610 | Pavement markings [Road-4 -RAMP-2-OUT (0+398 to 0+000) ] | 2027-04-04 → 2027-03-21 (-14d) | 2027-04-15 → 2027-04-01 (-14d) |  | -5d → 7d |
| MKH2-02-003-CN-1660 | Installation of Traffic Signs [Road-4 -RAMP-2-OUT (0+398 to 0+000) ] | 2027-04-17 → 2027-04-03 (-14d) | 2027-04-29 → 2027-04-15 (-14d) |  | -5d → 7d |
| 4 | **ELECTRICAL WORKS (MKH2-01-007-DAR-TS8-0-SL-DWG-1010-00)** |  | 2027-05-04 → 2027-04-20 (-14d) |  |  |
| 1 | **LV CABLES** |  | 2026-12-07 → 2026-11-23 (-14d) |  |  |
| MKH2-02-003-CN-1760 | Installation of Low Voltage Cables -RAMP-2 out |  | 2026-12-07 → 2026-11-23 (-14d) |  | 91d → 103d |
| 3 | **STREET LIGHTING NETWORK INCLUDING ALL** |  | 2027-04-20 → 2027-04-06 (-14d) |  |  |
| MKH2-02-003-CN-1800 | Installation of Lighting Poles 1-Arms In RAMP-2 OUT |  | 2026-12-29 → 2026-12-15 (-14d) |  | 91d → 103d |
| MKH2-02-003-CN-1840 | Installation of Lighting Luminaires for 1-Arms RAMP-02 OUT |  | 2027-04-20 → 2027-04-06 (-14d) |  | 11d → 23d |
| 4 | **EARTHING** | 2027-04-21 → 2027-04-07 (-14d) | 2027-05-04 → 2027-04-20 (-14d) |  |  |
| MKH2-02-003-CN-1880 | Installation of Earthing System for RAMP-02 OUT | 2027-04-21 → 2027-04-07 (-14d) | 2027-05-04 → 2027-04-20 (-14d) |  | 11d → 23d |
| DEM | **DEMOLISHING WORKS** |  | 2026-10-29 → 2026-11-05 (+7d) |  |  |
| DEMO | **DEMOLISHING Works** |  | 2026-10-29 → 2026-11-05 (+7d) |  |  |
| MKH2-02-003-CN-1010 | Milling of the existing asphalt layer | 2026-10-14 → 2026-10-21 (+7d) | 2026-10-29 → 2026-11-05 (+7d) |  | 136d → 130d |
| OPEN | **Open Drain Channels** |  | 2027-07-13 → 2027-06-29 (-14d) |  |  |
| Section 7 | **Near Ramp- In location from Ch 0+000 to Ch 0+230** |  | 2027-07-13 → 2027-06-29 (-14d) |  |  |
| MKH2-02-003-CN-2170 | Excavation for Channel |  | 2027-01-07 → 2027-01-14 (+7d) |  | 86d → 80d |
| MKH2-02-003-CN-2240 | Embankment for Channel Berms |  | 2027-02-01 → 2027-02-08 (+7d) |  | 86d → 80d |
| MKH2-02-003-CN-2310 | Riprap Grouting |  | 2027-07-13 → 2027-06-29 (-14d) |  | -25d → -13d |
| T & C | **TESTING & COMMISSIONING** | 2027-05-01 → 2027-04-17 (-14d) | 2027-07-25 → 2027-07-19 (-6d) |  |  |
| MKH2-02-003-TC-1010 | Test for Box Culvert | 2027-05-01 → 2027-04-17 (-14d) | 2027-05-06 → 2027-04-22 (-14d) |  | -5d → 7d |
| MKH2-02-003-TC-1000 | Test for Electrical Networks | 2027-06-20 → 2027-06-06 (-14d) | 2027-06-26 → 2027-06-12 (-14d) |  | -3d → 9d |
| MKH2-02-003-TC-1020 | Test for Open Drain channel | 2027-07-14 → 2027-06-30 (-14d) | 2027-07-25 → 2027-07-11 (-14d) |  | -25d → -13d |
| MKH2-02-003-TC-1030 | Test for Roads | 2027-07-15 → 2027-07-13 (-2d) | 2027-07-21 → 2027-07-19 (-2d) |  | -16d → -14d |
| PRO C & DEM | **PROJECT CLOSEOUT & DEMOBILIZATION** | 2027-05-08 → 2027-04-24 (-14d) | 2027-09-12 → 2027-08-30 (-13d) |  |  |
| 1 | **As-Built DWGs** | 2027-05-08 → 2027-04-24 (-14d) | 2027-08-17 → 2027-08-04 (-13d) |  |  |

| ID | Task | Start | Finish | Total float |
| --- | --- | --- | --- | --- |
| 1 | **As-Built DWGs Submittals** | 2027-05-08 → 2027-04-24 (-14d) | 2027-08-05 → 2027-07-27 (-9d) |  |
| MKH2-02-003-CO-1050 | As-Built DWGs Submittal for Box Culvert | 2027-05-08 → 2027-04-24 (-14d) | 2027-05-18 → 2027-05-01 (-17d) | -5d → 7d |
| MKH2-02-003-CO-1040 | As-Built DWGs Submittal for Electrical Networks | 2027-06-27 → 2027-06-13 (-14d) | 2027-07-04 → 2027-06-20 (-14d) | -3d → 9d |
| MKH2-02-003-CO-1060 | As-Built DWGs Submittal for Open Drain channel | 2027-07-26 → 2027-07-12 (-14d) | 2027-08-05 → 2027-07-22 (-14d) | -25d → -13d |
| MKH2-02-003-CO-1070 | As-Built DWGs Submittal for Roads | 2027-07-22 → 2027-07-20 (-2d) | 2027-07-29 → 2027-07-27 (-2d) | -16d → -14d |
| 2 | **As-Built DWGs Approvals** | 2027-05-19 → 2027-05-02 (-17d) | 2027-08-17 → 2027-08-04 (-13d) |  |
| MKH2-02-003-CO-1090 | As-Built DWGs Approval for Box Culvert | 2027-05-19 → 2027-05-02 (-17d) | 2027-05-26 → 2027-05-09 (-17d) | -5d → 7d |
| MKH2-02-003-CO-1080 | As-Built DWGs Approval for Electrical Networks | 2027-07-05 → 2027-06-21 (-14d) | 2027-07-14 → 2027-06-30 (-14d) | -3d → 9d |
| MKH2-02-003-CO-1100 | As-Built DWGs Approval for Open Drain channel | 2027-08-07 → 2027-07-24 (-14d) | 2027-08-17 → 2027-08-03 (-14d) | -25d → -13d |
| MKH2-02-003-CO-1110 | As-Built DWGs Approval for Roads | 2027-07-31 → 2027-07-28 (-3d) | 2027-08-07 → 2027-08-04 (-3d) | -16d → -14d |
| 2 | **Demobilization** | 2027-08-18 → 2027-08-05 (-13d) | 2027-09-12 → 2027-08-30 (-13d) |  |
| MKH2-02-003-CO-1000 | Demobilization of Manpower | 2027-08-18 → 2027-08-05 (-13d) | 2027-08-23 → 2027-08-10 (-13d) | -25d → -14d |
| MKH2-02-003-CO-1010 | Removal of Equipment from Site | 2027-08-24 → 2027-08-11 (-13d) | 2027-08-29 → 2027-08-16 (-13d) | -25d → -14d |
| MKH2-02-003-CO-1020 | Site Clean Up | 2027-08-30 → 2027-08-17 (-13d) | 2027-09-04 → 2027-08-22 (-13d) | -25d → -14d |
| MKH2-02-003-CO-1030 | Restoration of Ground Surfaces | 2027-09-05 → 2027-08-23 (-13d) | 2027-09-12 → 2027-08-30 (-13d) | -25d → -14d |

## Version 5 (data date 2026-10-27, saved 2026-10-26, file 2. MKH2-02-003-ENJ-WPR-037-27-10-2026 UP 34.xer)

Last finish 2027-08-30 → 2027-09-05 (+6d). Complete tasks 312 → 315.

Changed:

| ID | Task | Start | Finish | Complete | Total float |
| --- | --- | --- | --- | --- | --- |
| KEY | **KEY MILESTONES** |  | 2027-08-30 → 2027-09-05 (+6d) |  |  |
| GEN | **GENERAL MILESTONES** |  | 2027-08-30 → 2027-09-05 (+6d) |  |  |
| MKH2-02-003-MS-1100 | Project Completion | 2027-08-30 → 2027-09-05 (+6d) | 2027-08-30 → 2027-09-05 (+6d) |  | -14d → -19d |
| OVER ALL | **CONTRACTUAL MILESTONE** |  | 2027-08-30 → 2027-09-05 (+6d) |  |  |
| MKH2-02-003-MS-1040 | Completion of Road Works | 2027-01-11 → 2027-01-18 (+7d) | 2027-01-11 → 2027-01-18 (+7d) |  | 45d → 39d |
| MKH2-02-003-MS-1050 | Completion of Open Drain Channel | 2027-06-29 → 2027-07-06 (+7d) | 2027-06-29 → 2027-07-06 (+7d) |  | 3d → -3d |
| MKH2-02-003-MS-1060 | Completion of All Works | 2027-08-30 → 2027-09-05 (+6d) | 2027-08-30 → 2027-09-05 (+6d) |  | -14d → -19d |
| MKH2-02-003-MS-1070 | Final Handover | 2027-08-30 → 2027-09-05 (+6d) | 2027-08-30 → 2027-09-05 (+6d) |  | -14d → -19d |
| PRO | **PROCUREMENT** |  | 2027-01-03 → 2027-01-07 (+4d) |  |  |
| SLI | **SHORT LEAD ITEM** |  | 2026-12-13 → 2026-12-20 (+7d) |  |  |
| ROAD | **ROAD WORKS-CIVIL** |  | 2026-12-13 → 2026-12-20 (+7d) |  |  |
| BBC& BWC | **BITUMINOUS BASE & WEARING COURSE** |  | 2026-11-15 → 2026-11-22 (+7d) |  |  |
| MKH2-02-003-PR-1130 | Material Delivery for 1st lot to the Site |  | 2026-11-15 → 2026-11-22 (+7d) | 75% → 80% | -10d → -16d |
| INTR | **INTERLOCKING PAVING BLOCKS** |  | 2026-12-10 → 2026-12-17 (+7d) |  |  |
| MKH2-02-003-PR-1190 | Material Delivery for 1st lot of Interlocking Block Pavers |  | 2026-12-10 → 2026-12-17 (+7d) |  | -10d → -16d |
| MARK | **PAVEMENT MARKING** |  | 2026-12-13 → 2026-12-20 (+7d) |  |  |
| MKH2-02-003-PR-1210 | Material Fabrication for Pavement Markings | 2026-10-21 → 2026-10-28 (+7d) | 2026-11-17 → 2026-11-24 (+7d) |  | -14d → -18d |
| MKH2-02-003-PR-1220 | Material Delivery for 1st lot of Pavement Markings | 2026-11-18 → 2026-11-25 (+7d) | 2026-12-13 → 2026-12-20 (+7d) |  | -14d → -18d |
| LLI | **LONG LEAD ITEM** |  | 2027-01-03 → 2027-01-07 (+4d) |  |  |
| POW | **ELECTRICAL POWER** |  | 2026-12-23 → 2026-12-29 (+6d) |  |  |
| 1 | **LV-CABLES** |  | 2026-12-22 → 2026-12-29 (+7d) |  |  |
| MKH2-02-003-PR-1390 | Staging Time for Low Voltage Cables |  | 2026-12-22 → 2026-12-29 (+7d) |  | -12d → -18d |
| 2 | **LV-DISTRIBUTION PANNELS** |  | 2026-12-23 → 2026-08-29 (-116d) |  |  |
| MKH2-02-003-PR-1460 | Staging Time for LV Distribution pannel |  | 2026-12-23 → 2026-08-29 A (-116d) | 0% → 100% | -14d → none |
| LIGH1 | **STREET LIGHTING** |  | 2027-01-03 → 2027-01-07 (+4d) |  |  |
| POL | **POLES** |  | 2026-10-29 → 2026-11-05 (+7d) |  |  |
| MKH2-02-003-PR-1530 | Staging Time for Street Light poles |  | 2026-10-29 → 2026-11-05 (+7d) |  | 33d → 36d |
| PANN | **PANNELS & FEEDER PILLERS** |  | 2027-01-03 → 2026-08-29 (-127d) |  |  |
| MKH2-02-003-PR-1600 | Staging Time for Lighting Panels/Feeder Pillers |  | 2027-01-03 → 2026-08-29 A (-127d) | 0% → 100% | -14d → none |
| LUM | **LUMINAIRE** |  | 2026-12-31 → 2027-01-07 (+7d) |  |  |
| MKH2-02-003-PR-1670 | Staging Time for Street Lighting Luminaire |  | 2026-12-31 → 2027-01-07 (+7d) |  | -12d → -18d |
| CONST | **CONSTRUCTION PHASE** |  | 2027-07-12 → 2027-07-17 (+5d) |  |  |
| ROD | **ROADS** |  | 2027-07-12 → 2027-07-17 (+5d) |  |  |
| ART-03 | **ARTERIAL-03 (2+510 to 4+267.54)** |  | 2027-03-21 → 2027-03-25 (+4d) |  |  |
| ART03 RD | **ARTERIAL-03-ROAD** |  | 2027-03-21 → 2027-03-25 (+4d) |  |  |
| 2 | **ROADS & ROUNDABOUT** |  | 2027-03-21 → 2027-03-25 (+4d) |  |  |
| 1 | **ASPHALT WORKS** |  | 2027-02-21 → 2027-02-27 (+6d) |  |  |
| MKH2-02-003-CN-1400 | Tack coat at ARTERIAL-03 | 2027-01-04 → 2027-01-09 (+5d) | 2027-01-27 → 2027-02-01 (+5d) |  | -14d → -18d |
| MKH2-02-003-CN-1450 | Bituminous concrete wearing course, ARTERIAL-03 | 2027-01-28 → 2027-02-02 (+5d) | 2027-02-21 → 2027-02-27 (+6d) |  | 12d → 8d |
| FINIS | **FINISHING WORKS** |  | 2027-03-21 → 2027-03-25 (+4d) |  |  |
| MKH2-02-003-CN-1580 | Pavement markings [Road-1 -ARTERIAL-03 (2+510 to 4+267.54) ] | 2027-02-23 → 2027-02-28 (+5d) | 2027-03-06 → 2027-03-14 (+8d) |  | 12d → 8d |
| MKH2-02-003-CN-1630 | Installation of Traffic Signs [Road-1 -ARTERIAL-03 (2+510 to 4+267.54) ] | 2027-03-07 → 2027-03-15 (+8d) | 2027-03-21 → 2027-03-25 (+4d) |  | 12d → 8d |
| ART-04 | **ARTERIAL-04 (0+000 to 1+0.83)** |  | 2027-05-08 → 2027-05-12 (+4d) |  |  |
| ART04 RD | **ARTERIAL-04-ROAD** |  | 2027-05-08 → 2027-05-12 (+4d) |  |  |
| 3 | **ROADS** |  | 2027-04-18 → 2027-04-22 (+4d) |  |  |
| 3 | **EARTHWORKS & SITE GRADING** |  | 2026-11-09 → 2026-11-16 (+7d) |  |  |
| MKH2-02-003-CN-1160 | Embankments -ARTERIAL-04 |  | 2026-11-09 → 2026-11-16 (+7d) |  | 54d → 48d |
| MKH2-02-003-CN-1100 | Roadway Excavation for cuttings ARTERIAL-04 Stage-2 |  | 2026-10-29 → 2026-11-05 (+7d) |  | 54d → 48d |
| 2 | **ASPHALT WORKS** |  | 2027-03-09 → 2027-03-17 (+8d) |  |  |
| MKH2-02-003-CN-1410 | Tack coat at ARTERIAL-04 | 2027-01-28 → 2027-02-02 (+5d) | 2027-02-13 → 2027-02-17 (+4d) |  | -14d → -18d |
| MKH2-02-003-CN-1460 | Bituminous concrete wearing course, ARTERIAL-04 | 2027-02-14 → 2027-02-18 (+4d) | 2027-03-09 → 2027-03-17 (+8d) |  | -14d → -18d |
| 1 | **FINISHING WORKS** |  | 2027-04-18 → 2027-04-22 (+4d) |  |  |
| MKH2-02-003-CN-1510 | Installation of Precast Concrete curb at ARTERIAL-04 |  | 2027-03-22 → 2027-03-27 (+5d) |  | -14d → -18d |
| MKH2-02-003-CN-1550 | 60mm thick - Interlocking block pavers for sidewalk/footpath ARTERIAL-04 |  | 2027-03-27 → 2027-03-31 (+4d) |  | -14d → -18d |
| MKH2-02-003-CN-1590 | Pavement markings [Road-2 -ARTERIAL-04 (0+000 to 1+083) ] | 2027-03-28 → 2027-04-01 (+4d) | 2027-04-06 → 2027-04-11 (+5d) |  | 8d → 4d |
| MKH2-02-003-CN-1640 | Installation of Traffic Signs [Road-2 -ARTERIAL-04 (0+000 to 1+083) ] | 2027-04-07 → 2027-04-12 (+5d) | 2027-04-18 → 2027-04-22 (+4d) |  | 8d → 4d |
| 6 | **ELECTRICAL WORKS (MKH2-01-007-DAR-TS8-0-SL-DWG-1010-00)** |  | 2027-05-08 → 2027-05-12 (+4d) |  |  |
| 2 | **LV NETWORKS** |  | 2027-01-27 → 2027-02-03 (+7d) |  |  |
| MKH2-02-003-CN-2020 | Supply and installation of KWH meter mounting frame including concrete block for installation of KWH meter according to | 2027-01-12 → 2027-01-19 (+7d) | 2027-01-27 → 2027-02-03 (+7d) |  | 45d → 39d |
| 1 | **LV CABLES** |  | 2027-02-11 → 2027-02-18 (+7d) |  |  |
| MKH2-02-003-CN-1740 | Installation of Low Voltage Cables -ARTERIAL-04 Stage-2 |  | 2027-02-11 → 2027-02-18 (+7d) |  | 45d → 39d |
| 3 | **STREET LIGHTING NETWORK INCLUDING ALL** |  | 2027-05-02 → 2027-05-06 (+4d) |  |  |
| MKH2-02-003-CN-1780 | Installation of Lighting Poles 2-Arms ARTERIAL-04 |  | 2027-03-02 → 2027-03-09 (+7d) |  | 45d → 39d |
| MKH2-02-003-CN-1820 | Installation of Lighting Luminaires for 2-Arms ARTERIAL-04 |  | 2027-05-02 → 2027-05-06 (+4d) |  | 8d → 4d |
| 4 | **EARTHING** |  | 2027-05-08 → 2027-05-12 (+4d) |  |  |
| MKH2-02-003-CN-1860 | Installation of Earthing System for ARTERIAL-04 |  | 2027-05-08 → 2027-05-12 (+4d) |  | 8d → 4d |
| 5 | **CONNECTION TO 5th RING ROAD (IF-0+000 to 1+258)** |  | 2027-07-12 → 2027-07-17 (+5d) |  |  |
| RING | **EARTHWORKS & SITE GRADING** |  | 2026-11-01 → 2026-11-08 (+7d) |  |  |
| MKH2-02-003-CN-1190 | Embankments -to Road connecting roat to 5th Ring road |  | 2026-10-25 → 2026-11-01 (+7d) |  | 15d → 9d |
| MKH2-02-003-CN-1240 | Subgrade for Connecting Road to RING ROAD-5 |  | 2026-11-01 → 2026-11-08 (+7d) |  | 15d → 9d |

| ID | Task | Start | Finish | Complete | Total float |
| --- | --- | --- | --- | --- | --- |
| ROAD | **ASPHALT WORKS** |  | 2027-05-18 → 2027-05-23 (+5d) |  |  |
| MKH2-02-003-CN-1290 | Aggregate base course at to Road connecting roat to 5th Ring road |  | 2026-11-07 → 2026-11-14 (+7d) |  | 15d → 9d |
| MKH2-02-003-CN-1340 | Prime Coat (MC1) to Road connecting roat to 5th Ring road | 2026-11-08 → 2026-10-18 A (-21d) | 2026-11-21 → 2026-11-28 (+7d) | 0% → 80% | 15d → 9d |
| MKH2-02-003-CN-1390 | Bituminous base course to Road connecting roat to 5th Ring road | 2026-11-22 → 2026-10-19 A (-34d) | 2026-12-09 → 2026-12-16 (+7d) | 0% → 70% | 15d → 9d |
| MKH2-02-003-CN-1440 | Tack coat at to Road connecting roat to 5th Ring road | 2027-03-28 → 2027-04-01 (+4d) | 2027-04-20 → 2027-04-25 (+5d) |  | -14d → -18d |
| MKH2-02-003-CN-1490 | Bituminous concrete wearing course, to Road connecting roat to 5th Ring road | 2027-04-21 → 2027-04-26 (+5d) | 2027-05-18 → 2027-05-23 (+5d) |  | -14d → -18d |
| 5 FIN | **FINISHING WORKS** | 2027-05-19 → 2027-05-24 (+5d) | 2027-07-12 → 2027-07-17 (+5d) |  |  |
| MKH2-02-003-CN-1620 | Pavement markings [Road-5 -CONNECTION TO 5th RING ROAD (IF-0+000 to 1+258) ] | 2027-05-19 → 2027-05-24 (+5d) | 2027-06-06 → 2027-06-10 (+4d) |  | -14d → -18d |
| MKH2-02-003-CN-1670 | Installation of Traffic Signs [Road-5 -CONNECTION TO 5th RING ROAD (IF-0+000 to 1+258) ] | 2027-06-07 → 2027-06-12 (+5d) | 2027-06-24 → 2027-06-29 (+5d) |  | -14d → -18d |
| MKH2-02-003-CN-1680 | Installation of Traffic Signs [Road-5 -CONNECTION TO 5th RING ROAD (IF-0+000 to 1+258) ] | 2027-06-26 → 2027-06-30 (+4d) | 2027-07-12 → 2027-07-17 (+5d) |  | -14d → -18d |
| 3 | **RAMP-2-IN (0+000 to 0+400)** |  | 2027-06-05 → 2027-06-12 (+7d) |  |  |
| 3 | **ROADS** |  | 2027-03-23 → 2027-03-30 (+7d) |  |  |
| 1 | **EARTHWORKS & SITE GRADING** |  | 2026-11-15 → 2026-11-22 (+7d) |  |  |
| MKH2-02-003-CN-1170 | Embankments -RAMP-02-IN |  | 2026-11-02 → 2026-11-09 (+7d) |  | -13d → -19d |
| MKH2-02-003-CN-1220 | Subgrade for RAMP-2 IN |  | 2026-11-15 → 2026-11-22 (+7d) |  | -13d → -19d |
| 2 | **ASPHALT WORKS** |  | 2027-02-20 → 2027-02-28 (+8d) |  |  |
| MKH2-02-003-CN-1270 | Aggregate base course at RAMP-IN |  | 2026-12-08 → 2026-12-15 (+7d) |  | -13d → -19d |
| MKH2-02-003-CN-1320 | Prime Coat (MC1) RAMP-02- IN |  | 2026-12-24 → 2026-12-31 (+7d) |  | -13d → -19d |
| MKH2-02-003-CN-1370 | Bituminous base course for RAMP-02 IN |  | 2027-01-11 → 2027-01-18 (+7d) |  | -13d → -19d |
| MKH2-02-003-CN-1420 | Tack coat at RAMP-2-IN | 2027-01-12 → 2027-01-19 (+7d) | 2027-01-27 → 2027-02-03 (+7d) |  | -13d → -19d |
| MKH2-02-003-CN-1470 | Bituminous concrete wearing course, RAMP-2-IN | 2027-01-28 → 2027-02-04 (+7d) | 2027-02-20 → 2027-02-28 (+8d) |  | -13d → -19d |
| FIN | **FINISHING WORKS** | 2027-01-12 → 2027-01-19 (+7d) | 2027-03-23 → 2027-03-30 (+7d) |  |  |
| MKH2-02-003-CN-1520 | Installation of Precast Concrete curb at RAMP-2-IN | 2027-01-12 → 2027-01-19 (+7d) | 2027-01-27 → 2027-02-03 (+7d) |  | 23d → 17d |
| MKH2-02-003-CN-1560 | 60mm thick - Interlocking block pavers for sidewalk/footpath RAMP-2-IN | 2027-01-28 → 2027-02-04 (+7d) | 2027-02-13 → 2027-02-20 (+7d) |  | 23d → 17d |
| MKH2-02-003-CN-1600 | Pavement markings [Road-3 -RAMP-2-IN (0+000 to 0+400) ] | 2027-02-14 → 2027-02-21 (+7d) | 2027-03-02 → 2027-03-09 (+7d) |  | 23d → 17d |
| MKH2-02-003-CN-1650 | Installation of Traffic Signs [Road-3 -RAMP-2-IN (0+000 to 0+400) ] | 2027-03-03 → 2027-03-14 (+11d) | 2027-03-23 → 2027-03-30 (+7d) |  | 23d → 17d |
| 4 | **ELECTRICAL WORKS (MKH2-01-007-DAR-TS8-0-SL-DWG-1010-00)** | 2027-02-21 → 2027-03-01 (+8d) | 2027-06-05 → 2027-06-12 (+7d) |  |  |
| 1 | **LV CABLES** | 2027-02-21 → 2027-03-01 (+8d) | 2027-03-21 → 2027-03-28 (+7d) |  |  |
| MKH2-02-003-CN-1750 | Installation of Low Voltage Cables -RAMP-2 in | 2027-02-21 → 2027-03-01 (+8d) | 2027-03-21 → 2027-03-28 (+7d) |  | -13d → -19d |
| 3 | **STREET LIGHTING NETWORK INCLUDING ALL** | 2027-03-22 → 2027-03-29 (+7d) | 2027-05-08 → 2027-05-18 (+10d) |  |  |
| MKH2-02-003-CN-1790 | Installation of Lighting Poles 1-Arms In RAMP-2 IN | 2027-03-22 → 2027-03-29 (+7d) | 2027-04-14 → 2027-04-21 (+7d) |  | -13d → -19d |
| MKH2-02-003-CN-1830 | Installation of Lighting Luminaires for 1-Arms RAMP-02 IN | 2027-04-15 → 2027-04-22 (+7d) | 2027-05-08 → 2027-05-18 (+10d) |  | -13d → -19d |
| 4 | **EARTHING** | 2027-05-09 → 2027-05-19 (+10d) | 2027-06-05 → 2027-06-12 (+7d) |  |  |
| MKH2-02-003-CN-1870 | Installation of Earthing System for RAMP-02 IN | 2027-05-09 → 2027-05-19 (+10d) | 2027-06-05 → 2027-06-12 (+7d) |  | -13d → -19d |
| 4 | **RAMP-2-OUT (0+398 to 0+000)** |  | 2027-04-20 → 2027-04-27 (+7d) |  |  |
| 3 | **ROADS** |  | 2027-04-15 → 2027-04-22 (+7d) |  |  |
| 2 | **ASPHALT WORKS** |  | 2027-03-09 → 2027-03-20 (+11d) |  |  |
| MKH2-02-003-CN-1380 | Bituminous base course for RAMP-02 OUT |  | 2026-10-29 → 2026-10-20 A (-9d) | 70% → 100% | 84d → none |
| MKH2-02-003-CN-1430 | Tack coat at RAMP-2-OUT | 2027-01-28 → 2027-02-04 (+7d) | 2027-02-13 → 2027-02-20 (+7d) |  | 7d → 1d |
| MKH2-02-003-CN-1480 | Bituminous concrete wearing course, RAMP-2-OUT | 2027-02-14 → 2027-02-21 (+7d) | 2027-03-09 → 2027-03-20 (+11d) |  | 13d → 7d |
| FIN | **FINISHING WORKS** | 2027-02-14 → 2027-02-21 (+7d) | 2027-04-15 → 2027-04-22 (+7d) |  |  |
| MKH2-02-003-CN-1530 | Installation of Precast Concrete curb at RAMP-2-OUT | 2027-02-14 → 2027-02-21 (+7d) | 2027-02-28 → 2027-03-07 (+7d) |  | 7d → 1d |
| MKH2-02-003-CN-1570 | 60mm thick - Interlocking block pavers for sidewalk/footpath RAMP-2-OUT | 2027-03-01 → 2027-03-08 (+7d) | 2027-03-20 → 2027-03-27 (+7d) |  | 7d → 1d |
| MKH2-02-003-CN-1610 | Pavement markings [Road-4 -RAMP-2-OUT (0+398 to 0+000) ] | 2027-03-21 → 2027-03-28 (+7d) | 2027-04-01 → 2027-04-08 (+7d) |  | 7d → 1d |
| MKH2-02-003-CN-1660 | Installation of Traffic Signs [Road-4 -RAMP-2-OUT (0+398 to 0+000) ] | 2027-04-03 → 2027-04-10 (+7d) | 2027-04-15 → 2027-04-22 (+7d) |  | 7d → 1d |
| 4 | **ELECTRICAL WORKS (MKH2-01-007-DAR-TS8-0-SL-DWG-1010-00)** |  | 2027-04-20 → 2027-04-27 (+7d) |  |  |
| 1 | **LV CABLES** |  | 2026-11-23 → 2026-11-21 (-2d) |  |  |
| MKH2-02-003-CN-1760 | Installation of Low Voltage Cables -RAMP-2 out |  | 2026-11-23 → 2026-11-21 (-2d) |  | 103d → 105d |
| 3 | **STREET LIGHTING NETWORK INCLUDING ALL** |  | 2027-04-06 → 2027-04-13 (+7d) |  |  |
| MKH2-02-003-CN-1800 | Installation of Lighting Poles 1-Arms In RAMP-2 OUT |  | 2026-12-15 → 2026-12-13 (-2d) |  | 103d → 105d |
| MKH2-02-003-CN-1840 | Installation of Lighting Luminaires for 1-Arms RAMP-02 OUT |  | 2027-04-06 → 2027-04-13 (+7d) |  | 23d → 17d |
| 4 | **EARTHING** | 2027-04-07 → 2027-04-14 (+7d) | 2027-04-20 → 2027-04-27 (+7d) |  |  |
| MKH2-02-003-CN-1880 | Installation of Earthing System for RAMP-02 OUT | 2027-04-07 → 2027-04-14 (+7d) | 2027-04-20 → 2027-04-27 (+7d) |  | 23d → 17d |
| DEM | **DEMOLISHING WORKS** |  | 2026-11-05 → 2026-11-12 (+7d) |  |  |
| DEMO | **DEMOLISHING Works** |  | 2026-11-05 → 2026-11-12 (+7d) |  |  |
| MKH2-02-003-CN-1010 | Milling of the existing asphalt layer | 2026-10-21 → 2026-10-28 (+7d) | 2026-11-05 → 2026-11-12 (+7d) |  | 130d → 124d |
| OPEN | **Open Drain Channels** |  | 2027-06-29 → 2027-07-06 (+7d) |  |  |
| Section 7 | **Near Ramp- In location from Ch 0+000 to Ch 0+230** |  | 2027-06-29 → 2027-07-06 (+7d) |  |  |
| MKH2-02-003-CN-2170 | Excavation for Channel |  | 2027-01-14 → 2027-01-19 (+5d) |  | 80d → 76d |
| MKH2-02-003-CN-2240 | Embankment for Channel Berms |  | 2027-02-08 → 2027-02-13 (+5d) |  | 80d → 76d |
| MKH2-02-003-CN-2310 | Riprap Grouting |  | 2027-06-29 → 2027-07-06 (+7d) |  | -13d → -19d |
| T & C | **TESTING & COMMISSIONING** | 2027-04-17 → 2026-10-20 (-179d) | 2027-07-19 → 2027-07-24 (+5d) |  |  |
| MKH2-02-003-TC-1000 | Test for Electrical Networks | 2027-06-06 → 2026-10-20 A (-229d) | 2027-06-12 → 2027-06-19 (+7d) | 0% → 20% | 9d → 3d |
| MKH2-02-003-TC-1010 | Test for Box Culvert | 2027-04-17 → 2027-04-24 (+7d) | 2027-04-22 → 2027-04-29 (+7d) |  | 7d → 1d |
| MKH2-02-003-TC-1020 | Test for Open Drain channel | 2027-06-30 → 2027-07-07 (+7d) | 2027-07-11 → 2027-07-18 (+7d) |  | -13d → -19d |
| MKH2-02-003-TC-1030 | Test for Roads | 2027-07-13 → 2027-07-18 (+5d) | 2027-07-19 → 2027-07-24 (+5d) |  | -14d → -18d |
| PRO C & DEM | **PROJECT CLOSEOUT & DEMOBILIZATION** | 2027-04-24 → 2027-05-01 (+7d) | 2027-08-30 → 2027-09-05 (+6d) |  |  |
| 1 | **As-Built DWGs** | 2027-04-24 → 2027-05-01 (+7d) | 2027-08-04 → 2027-08-10 (+6d) |  |  |
| 1 | **As-Built DWGs Submittals** | 2027-04-24 → 2027-05-01 (+7d) | 2027-07-27 → 2027-08-01 (+5d) |  |  |
| MKH2-02-003-CO-1050 | As-Built DWGs Submittal for Box Culvert | 2027-04-24 → 2027-05-01 (+7d) | 2027-05-01 → 2027-05-08 (+7d) |  | 7d → 1d |

| ID | Task | Start | Finish | Total float |
| --- | --- | --- | --- | --- |
| MKH2-02-003-CO-1040 | As-Built DWGs Submittal for Electrical Networks | 2027-06-13 → 2027-06-20 (+7d) | 2027-06-20 → 2027-06-27 (+7d) | 9d → 3d |
| MKH2-02-003-CO-1060 | As-Built DWGs Submittal for Open Drain channel | 2027-07-12 → 2027-07-19 (+7d) | 2027-07-22 → 2027-07-29 (+7d) | -13d → -19d |
| MKH2-02-003-CO-1070 | As-Built DWGs Submittal for Roads | 2027-07-20 → 2027-07-25 (+5d) | 2027-07-27 → 2027-08-01 (+5d) | -14d → -18d |
| 2 | **As-Built DWGs Approvals** | 2027-05-02 → 2027-05-09 (+7d) | 2027-08-04 → 2027-08-10 (+6d) |  |
| MKH2-02-003-CO-1090 | As-Built DWGs Approval for Box Culvert | 2027-05-02 → 2027-05-09 (+7d) | 2027-05-09 → 2027-05-19 (+10d) | 7d → 1d |
| MKH2-02-003-CO-1080 | As-Built DWGs Approval for Electrical Networks | 2027-06-21 → 2027-06-28 (+7d) | 2027-06-30 → 2027-07-07 (+7d) | 9d → 3d |
| MKH2-02-003-CO-1100 | As-Built DWGs Approval for Open Drain channel | 2027-07-24 → 2027-07-31 (+7d) | 2027-08-03 → 2027-08-10 (+7d) | -13d → -19d |
| MKH2-02-003-CO-1110 | As-Built DWGs Approval for Roads | 2027-07-28 → 2027-08-02 (+5d) | 2027-08-04 → 2027-08-09 (+5d) | -14d → -18d |
| 2 | **Demobilization** | 2027-08-05 → 2027-08-11 (+6d) | 2027-08-30 → 2027-09-05 (+6d) |  |
| MKH2-02-003-CO-1000 | Demobilization of Manpower | 2027-08-05 → 2027-08-11 (+6d) | 2027-08-10 → 2027-08-16 (+6d) | -14d → -19d |
| MKH2-02-003-CO-1010 | Removal of Equipment from Site | 2027-08-11 → 2027-08-17 (+6d) | 2027-08-16 → 2027-08-22 (+6d) | -14d → -19d |
| MKH2-02-003-CO-1020 | Site Clean Up | 2027-08-17 → 2027-08-23 (+6d) | 2027-08-22 → 2027-08-28 (+6d) | -14d → -19d |
| MKH2-02-003-CO-1030 | Restoration of Ground Surfaces | 2027-08-23 → 2027-08-29 (+6d) | 2027-08-30 → 2027-09-05 (+6d) | -14d → -19d |

## Version 6 (data date 2026-11-03, saved 2026-11-01, file 2. MKH2-02-003-ENJ-WPR-038-03-11-2026 UP 35.xer)

Last finish 2027-09-05 → 2027-09-11 (+6d). Complete tasks 315 → 318.

Changed:

| ID | Task | Start | Finish | Complete | Total float |
| --- | --- | --- | --- | --- | --- |
| KEY | **KEY MILESTONES** |  | 2027-09-05 → 2027-09-11 (+6d) |  |  |
| GEN | **GENERAL MILESTONES** |  | 2027-09-05 → 2027-09-11 (+6d) |  |  |
| MKH2-02-003-MS-1100 | Project Completion | 2027-09-05 → 2027-09-11 (+6d) | 2027-09-05 → 2027-09-11 (+6d) |  | -19d → -24d |
| OVER ALL | **CONTRACTUAL MILESTONE** |  | 2027-09-05 → 2027-09-11 (+6d) |  |  |
| MKH2-02-003-MS-1040 | Completion of Road Works | 2027-01-18 → 2027-01-14 (-4d) | 2027-01-18 → 2027-01-14 (-4d) |  | 39d → 42d |
| MKH2-02-003-MS-1050 | Completion of Open Drain Channel | 2027-07-06 → 2027-06-16 (-20d) | 2027-07-06 → 2027-06-16 (-20d) |  | -3d → 14d |
| MKH2-02-003-MS-1060 | Completion of All Works | 2027-09-05 → 2027-09-11 (+6d) | 2027-09-05 → 2027-09-11 (+6d) |  | -19d → -24d |
| MKH2-02-003-MS-1070 | Final Handover | 2027-09-05 → 2027-09-11 (+6d) | 2027-09-05 → 2027-09-11 (+6d) |  | -19d → -24d |
| PRO | **PROCUREMENT** |  | 2027-01-07 → 2027-01-14 (+7d) |  |  |
| SLI | **SHORT LEAD ITEM** |  | 2026-12-20 → 2026-12-27 (+7d) |  |  |
| ROAD | **ROAD WORKS-CIVIL** |  | 2026-12-20 → 2026-12-27 (+7d) |  |  |
| BBC& BWC | **BITUMINOUS BASE & WEARING COURSE** |  | 2026-11-22 → 2026-11-29 (+7d) |  |  |
| MKH2-02-003-PR-1130 | Material Delivery for 1st lot to the Site |  | 2026-11-22 → 2026-11-29 (+7d) |  | -16d → -22d |
| INTR | **INTERLOCKING PAVING BLOCKS** |  | 2026-12-17 → 2026-12-24 (+7d) |  |  |
| MKH2-02-003-PR-1190 | Material Delivery for 1st lot of Interlocking Block Pavers |  | 2026-12-17 → 2026-12-24 (+7d) |  | -16d → -22d |
| MARK | **PAVEMENT MARKING** |  | 2026-12-20 → 2026-12-27 (+7d) |  |  |
| MKH2-02-003-PR-1210 | Material Fabrication for Pavement Markings | 2026-10-28 → 2026-11-04 (+7d) | 2026-11-24 → 2026-12-01 (+7d) |  | -18d → -24d |
| MKH2-02-003-PR-1220 | Material Delivery for 1st lot of Pavement Markings | 2026-11-25 → 2026-12-02 (+7d) | 2026-12-20 → 2026-12-27 (+7d) |  | -18d → -24d |
| LLI | **LONG LEAD ITEM** |  | 2027-01-07 → 2027-01-14 (+7d) |  |  |
| POW | **ELECTRICAL POWER** |  | 2026-12-29 → 2027-01-05 (+7d) |  |  |
| 1 | **LV-CABLES** |  | 2026-12-29 → 2027-01-05 (+7d) |  |  |
| MKH2-02-003-PR-1390 | Staging Time for Low Voltage Cables |  | 2026-12-29 → 2027-01-05 (+7d) |  | -18d → -24d |
| LIGH1 | **STREET LIGHTING** |  | 2027-01-07 → 2027-01-14 (+7d) |  |  |
| POL | **POLES** |  | 2026-11-05 → 2026-11-12 (+7d) |  |  |
| MKH2-02-003-PR-1530 | Staging Time for Street Light poles |  | 2026-11-05 → 2026-11-12 (+7d) |  | 36d → 30d |
| LUM | **LUMINAIRE** |  | 2027-01-07 → 2027-01-14 (+7d) |  |  |
| MKH2-02-003-PR-1670 | Staging Time for Street Lighting Luminaire |  | 2027-01-07 → 2027-01-14 (+7d) |  | -18d → -24d |
| CONST | **CONSTRUCTION PHASE** |  | 2027-07-17 → 2027-07-24 (+7d) |  |  |
| ROD | **ROADS** |  | 2027-07-17 → 2027-07-24 (+7d) |  |  |
| ART-03 | **ARTERIAL-03 (2+510 to 4+267.54)** |  | 2027-03-25 → 2027-04-01 (+7d) |  |  |
| ART03 RD | **ARTERIAL-03-ROAD** |  | 2027-03-25 → 2027-04-01 (+7d) |  |  |
| 2 | **ROADS & ROUNDABOUT** |  | 2027-03-25 → 2027-04-01 (+7d) |  |  |
| 1 | **ASPHALT WORKS** |  | 2027-02-27 → 2027-03-06 (+7d) |  |  |
| MKH2-02-003-CN-1400 | Tack coat at ARTERIAL-03 | 2027-01-09 → 2027-01-16 (+7d) | 2027-02-01 → 2027-02-08 (+7d) |  | -18d → -24d |
| MKH2-02-003-CN-1450 | Bituminous concrete wearing course, ARTERIAL-03 | 2027-02-02 → 2027-02-09 (+7d) | 2027-02-27 → 2027-03-06 (+7d) |  | 8d → 2d |
| FINIS | **FINISHING WORKS** |  | 2027-03-25 → 2027-04-01 (+7d) |  |  |
| MKH2-02-003-CN-1580 | Pavement markings [Road-1 -ARTERIAL-03 (2+510 to 4+267.54) ] | 2027-02-28 → 2027-03-07 (+7d) | 2027-03-14 → 2027-03-21 (+7d) |  | 8d → 2d |
| MKH2-02-003-CN-1630 | Installation of Traffic Signs [Road-1 -ARTERIAL-03 (2+510 to 4+267.54) ] | 2027-03-15 → 2027-03-22 (+7d) | 2027-03-25 → 2027-04-01 (+7d) |  | 8d → 2d |
| ART-04 | **ARTERIAL-04 (0+000 to 1+0.83)** |  | 2027-05-12 → 2027-05-23 (+11d) |  |  |
| ART04 RD | **ARTERIAL-04-ROAD** |  | 2027-05-12 → 2027-05-23 (+11d) |  |  |
| 3 | **ROADS** |  | 2027-04-22 → 2027-04-29 (+7d) |  |  |
| 3 | **EARTHWORKS & SITE GRADING** |  | 2026-11-16 → 2026-11-23 (+7d) |  |  |
| MKH2-02-003-CN-1160 | Embankments -ARTERIAL-04 |  | 2026-11-16 → 2026-11-23 (+7d) |  | 48d → 42d |
| MKH2-02-003-CN-1100 | Roadway Excavation for cuttings ARTERIAL-04 Stage-2 |  | 2026-11-05 → 2026-11-12 (+7d) |  | 48d → 42d |
| 2 | **ASPHALT WORKS** |  | 2027-03-17 → 2027-03-24 (+7d) |  |  |
| MKH2-02-003-CN-1410 | Tack coat at ARTERIAL-04 | 2027-02-02 → 2027-02-09 (+7d) | 2027-02-17 → 2027-02-25 (+8d) |  | -18d → -24d |
| MKH2-02-003-CN-1460 | Bituminous concrete wearing course, ARTERIAL-04 | 2027-02-18 → 2027-02-27 (+9d) | 2027-03-17 → 2027-03-24 (+7d) |  | -18d → -24d |
| 1 | **FINISHING WORKS** |  | 2027-04-22 → 2027-04-29 (+7d) |  |  |
| MKH2-02-003-CN-1510 | Installation of Precast Concrete curb at ARTERIAL-04 |  | 2027-03-27 → 2027-04-03 (+7d) | 70% → 80% | -18d → -24d |
| MKH2-02-003-CN-1550 | 60mm thick - Interlocking block pavers for sidewalk/footpath ARTERIAL-04 |  | 2027-03-31 → 2027-04-07 (+7d) | 70% → 75% | -18d → -24d |
| MKH2-02-003-CN-1590 | Pavement markings [Road-2 -ARTERIAL-04 (0+000 to 1+083) ] | 2027-04-01 → 2027-04-08 (+7d) | 2027-04-11 → 2027-04-18 (+7d) |  | 4d → -2d |
| MKH2-02-003-CN-1640 | Installation of Traffic Signs [Road-2 -ARTERIAL-04 (0+000 to 1+083) ] | 2027-04-12 → 2027-04-19 (+7d) | 2027-04-22 → 2027-04-29 (+7d) |  | 4d → -2d |
| 6 | **ELECTRICAL WORKS (MKH2-01-007-DAR-TS8-0-SL-DWG-1010-00)** |  | 2027-05-12 → 2027-05-23 (+11d) |  |  |
| 2 | **LV NETWORKS** |  | 2027-02-03 → 2027-01-31 (-3d) |  |  |
| MKH2-02-003-CN-2020 | Supply and installation of KWH meter mounting frame including concrete block for installation of KWH meter according to | 2027-01-19 → 2027-01-16 (-3d) | 2027-02-03 → 2027-01-31 (-3d) |  | 39d → 42d |
| 1 | **LV CABLES** |  | 2027-02-18 → 2027-02-15 (-3d) |  |  |
| MKH2-02-003-CN-1740 | Installation of Low Voltage Cables -ARTERIAL-04 Stage-2 |  | 2027-02-18 → 2027-02-15 (-3d) |  | 39d → 42d |
| 3 | **STREET LIGHTING NETWORK INCLUDING ALL** |  | 2027-05-06 → 2027-05-13 (+7d) |  |  |
| MKH2-02-003-CN-1780 | Installation of Lighting Poles 2-Arms ARTERIAL-04 |  | 2027-03-09 → 2027-03-06 (-3d) |  | 39d → 42d |
| MKH2-02-003-CN-1820 | Installation of Lighting Luminaires for 2-Arms ARTERIAL-04 |  | 2027-05-06 → 2027-05-13 (+7d) |  | 4d → -2d |
| 4 | **EARTHING** |  | 2027-05-12 → 2027-05-23 (+11d) |  |  |
| MKH2-02-003-CN-1860 | Installation of Earthing System for ARTERIAL-04 |  | 2027-05-12 → 2027-05-23 (+11d) |  | 4d → -2d |
| 5 | **CONNECTION TO 5th RING ROAD (IF-0+000 to 1+258)** |  | 2027-07-17 → 2027-07-24 (+7d) |  |  |
| RING | **EARTHWORKS & SITE GRADING** |  | 2026-11-08 → 2026-11-15 (+7d) |  |  |
| MKH2-02-003-CN-1190 | Embankments -to Road connecting roat to 5th Ring road |  | 2026-11-01 → 2026-11-08 (+7d) | 95% → 98% | 9d → 3d |
| MKH2-02-003-CN-1240 | Subgrade for Connecting Road to RING ROAD-5 |  | 2026-11-08 → 2026-11-15 (+7d) | 90% → 95% | 9d → 3d |
| ROAD | **ASPHALT WORKS** |  | 2027-05-23 → 2027-05-30 (+7d) |  |  |
| MKH2-02-003-CN-1290 | Aggregate base course at to Road connecting roat to 5th Ring road |  | 2026-11-14 → 2026-11-21 (+7d) |  | 9d → 3d |
| MKH2-02-003-CN-1340 | Prime Coat (MC1) to Road connecting roat to 5th Ring road |  | 2026-11-28 → 2026-12-05 (+7d) |  | 9d → 3d |
| MKH2-02-003-CN-1390 | Bituminous base course to Road connecting roat to 5th Ring road |  | 2026-12-16 → 2026-12-23 (+7d) |  | 9d → 3d |

| ID | Task | Start | Finish | Complete | Total float |
| --- | --- | --- | --- | --- | --- |
| MKH2-02-003-CN-1440 | Tack coat at to Road connecting roat to 5th Ring road | 2027-04-01 → 2027-04-08 (+7d) | 2027-04-25 → 2027-05-02 (+7d) |  | -18d → -24d |
| MKH2-02-003-CN-1490 | Bituminous concrete wearing course, to Road connecting roat to 5th Ring road | 2027-04-26 → 2027-05-03 (+7d) | 2027-05-23 → 2027-05-30 (+7d) |  | -18d → -24d |
| 5 FIN | **FINISHING WORKS** | 2027-05-24 → 2027-05-31 (+7d) | 2027-07-17 → 2027-07-24 (+7d) |  |  |
| MKH2-02-003-CN-1620 | Pavement markings [Road-5 -CONNECTION TO 5th RING ROAD (IF-0+000 to 1+258) ] | 2027-05-24 → 2027-05-31 (+7d) | 2027-06-10 → 2027-06-17 (+7d) |  | -18d → -24d |
| MKH2-02-003-CN-1670 | Installation of Traffic Signs [Road-5 -CONNECTION TO 5th RING ROAD (IF-0+000 to 1+258) ] | 2027-06-12 → 2027-06-19 (+7d) | 2027-06-29 → 2027-07-06 (+7d) |  | -18d → -24d |
| MKH2-02-003-CN-1680 | Installation of Traffic Signs [Road-5 -CONNECTION TO 5th RING ROAD (IF-0+000 to 1+258) ] | 2027-06-30 → 2027-07-07 (+7d) | 2027-07-17 → 2027-07-24 (+7d) |  | -18d → -24d |
| 3 | **RAMP-2-IN (0+000 to 0+400)** |  | 2027-06-12 → 2027-05-13 (-30d) |  |  |
| 3 | **ROADS** |  | 2027-03-30 → 2027-02-08 (-50d) |  |  |
| 1 | **EARTHWORKS & SITE GRADING** |  | 2026-11-22 → 2026-11-16 (-6d) |  |  |
| MKH2-02-003-CN-1170 | Embankments -RAMP-02-IN |  | 2026-11-09 → 2026-11-16 (+7d) |  | -19d → 20d |
| MKH2-02-003-CN-1220 | Subgrade for RAMP-2 IN |  | 2026-11-22 → 2026-10-27 A (-26d) | 90% → 100% | -19d → none |
| 2 | **ASPHALT WORKS** |  | 2027-02-28 → 2027-02-01 (-27d) |  |  |
| MKH2-02-003-CN-1270 | Aggregate base course at RAMP-IN |  | 2026-12-15 → 2026-10-28 A (-48d) | 90% → 100% | -19d → none |
| MKH2-02-003-CN-1320 | Prime Coat (MC1) RAMP-02- IN |  | 2026-12-31 → 2026-10-29 A (-63d) | 70% → 100% | -19d → none |
| MKH2-02-003-CN-1370 | Bituminous base course for RAMP-02 IN |  | 2027-01-18 → 2026-12-03 (-46d) |  | -19d → 20d |
| MKH2-02-003-CN-1420 | Tack coat at RAMP-2-IN | 2027-01-19 → 2026-12-24 (-26d) | 2027-02-03 → 2027-01-09 (-25d) |  | -19d → 3d |
| MKH2-02-003-CN-1470 | Bituminous concrete wearing course, RAMP-2-IN | 2027-02-04 → 2027-01-10 (-25d) | 2027-02-28 → 2027-02-01 (-27d) |  | -19d → 3d |
| FIN | **FINISHING WORKS** | 2027-01-19 → 2026-12-05 (-45d) | 2027-03-30 → 2027-02-08 (-50d) |  |  |
| MKH2-02-003-CN-1520 | Installation of Precast Concrete curb at RAMP-2-IN | 2027-01-19 → 2026-12-05 (-45d) | 2027-02-03 → 2026-12-20 (-45d) |  | 17d → 56d |
| MKH2-02-003-CN-1560 | 60mm thick - Interlocking block pavers for sidewalk/footpath RAMP-2-IN | 2027-02-04 → 2026-12-21 (-45d) | 2027-02-20 → 2027-01-05 (-46d) |  | 17d → 56d |
| MKH2-02-003-CN-1600 | Pavement markings [Road-3 -RAMP-2-IN (0+000 to 0+400) ] | 2027-02-21 → 2027-01-06 (-46d) | 2027-03-09 → 2027-01-21 (-47d) |  | 17d → 56d |
| MKH2-02-003-CN-1650 | Installation of Traffic Signs [Road-3 -RAMP-2-IN (0+000 to 0+400) ] | 2027-03-14 → 2027-01-23 (-50d) | 2027-03-30 → 2027-02-08 (-50d) |  | 17d → 56d |
| 4 | **ELECTRICAL WORKS (MKH2-01-007-DAR-TS8-0-SL-DWG-1010-00)** | 2027-03-01 → 2027-02-02 (-27d) | 2027-06-12 → 2027-05-13 (-30d) |  |  |
| 1 | **LV CABLES** | 2027-03-01 → 2027-02-02 (-27d) | 2027-03-28 → 2027-02-27 (-29d) |  |  |
| MKH2-02-003-CN-1750 | Installation of Low Voltage Cables -RAMP-2 in | 2027-03-01 → 2027-02-02 (-27d) | 2027-03-28 → 2027-02-27 (-29d) |  | -19d → 3d |
| 3 | **STREET LIGHTING NETWORK INCLUDING ALL** | 2027-03-29 → 2027-02-28 (-29d) | 2027-05-18 → 2027-04-19 (-29d) |  |  |
| MKH2-02-003-CN-1790 | Installation of Lighting Poles 1-Arms In RAMP-2 IN | 2027-03-29 → 2027-02-28 (-29d) | 2027-04-21 → 2027-03-27 (-25d) |  | -19d → 3d |
| MKH2-02-003-CN-1830 | Installation of Lighting Luminaires for 1-Arms RAMP-02 IN | 2027-04-22 → 2027-03-28 (-25d) | 2027-05-18 → 2027-04-19 (-29d) |  | -19d → 3d |
| 4 | **EARTHING** | 2027-05-19 → 2027-04-20 (-29d) | 2027-06-12 → 2027-05-13 (-30d) |  |  |
| MKH2-02-003-CN-1870 | Installation of Earthing System for RAMP-02 IN | 2027-05-19 → 2027-04-20 (-29d) | 2027-06-12 → 2027-05-13 (-30d) |  | -19d → 3d |
| 4 | **RAMP-2-OUT (0+398 to 0+000)** |  | 2027-04-27 → 2027-03-28 (-30d) |  |  |
| 3 | **ROADS** |  | 2027-04-22 → 2027-03-28 (-25d) |  |  |
| 2 | **ASPHALT WORKS** |  | 2027-03-20 → 2027-02-17 (-31d) |  |  |
| MKH2-02-003-CN-1430 | Tack coat at RAMP-2-OUT | 2027-02-04 → 2027-01-10 (-25d) | 2027-02-20 → 2027-01-25 (-26d) |  | 1d → 23d |
| MKH2-02-003-CN-1480 | Bituminous concrete wearing course, RAMP-2-OUT | 2027-02-21 → 2027-01-26 (-26d) | 2027-03-20 → 2027-02-17 (-31d) |  | 7d → 29d |
| FIN | **FINISHING WORKS** | 2027-02-21 → 2027-01-26 (-26d) | 2027-04-22 → 2027-03-28 (-25d) |  |  |
| MKH2-02-003-CN-1530 | Installation of Precast Concrete curb at RAMP-2-OUT | 2027-02-21 → 2027-01-26 (-26d) | 2027-03-07 → 2027-02-08 (-27d) |  | 1d → 23d |
| MKH2-02-003-CN-1570 | 60mm thick - Interlocking block pavers for sidewalk/footpath RAMP-2-OUT | 2027-03-08 → 2027-02-09 (-27d) | 2027-03-27 → 2027-02-25 (-30d) |  | 1d → 23d |
| MKH2-02-003-CN-1610 | Pavement markings [Road-4 -RAMP-2-OUT (0+398 to 0+000) ] | 2027-03-28 → 2027-02-27 (-29d) | 2027-04-08 → 2027-03-14 (-25d) |  | 1d → 23d |
| MKH2-02-003-CN-1660 | Installation of Traffic Signs [Road-4 -RAMP-2-OUT (0+398 to 0+000) ] | 2027-04-10 → 2027-03-15 (-26d) | 2027-04-22 → 2027-03-28 (-25d) |  | 1d → 23d |
| 4 | **ELECTRICAL WORKS (MKH2-01-007-DAR-TS8-0-SL-DWG-1010-00)** |  | 2027-04-27 → 2027-03-09 (-49d) |  |  |
| 1 | **LV CABLES** |  | 2026-11-21 → 2026-11-28 (+7d) |  |  |
| MKH2-02-003-CN-1760 | Installation of Low Voltage Cables -RAMP-2 out |  | 2026-11-21 → 2026-11-28 (+7d) |  | 105d → 99d |
| 3 | **STREET LIGHTING NETWORK INCLUDING ALL** |  | 2027-04-13 → 2027-02-23 (-49d) |  |  |
| MKH2-02-003-CN-1800 | Installation of Lighting Poles 1-Arms In RAMP-2 OUT |  | 2026-12-13 → 2026-12-20 (+7d) |  | 105d → 99d |
| MKH2-02-003-CN-1840 | Installation of Lighting Luminaires for 1-Arms RAMP-02 OUT |  | 2027-04-13 → 2027-02-23 (-49d) |  | 17d → 56d |
| 4 | **EARTHING** | 2027-04-14 → 2027-02-24 (-49d) | 2027-04-27 → 2027-03-09 (-49d) |  |  |
| MKH2-02-003-CN-1880 | Installation of Earthing System for RAMP-02 OUT | 2027-04-14 → 2027-02-24 (-49d) | 2027-04-27 → 2027-03-09 (-49d) |  | 17d → 56d |
| DEM | **DEMOLISHING WORKS** |  | 2026-11-12 → 2026-11-19 (+7d) |  |  |
| DEMO | **DEMOLISHING Works** |  | 2026-11-12 → 2026-11-19 (+7d) |  |  |
| MKH2-02-003-CN-1010 | Milling of the existing asphalt layer | 2026-10-28 → 2026-11-04 (+7d) | 2026-11-12 → 2026-11-19 (+7d) |  | 124d → 118d |
| OPEN | **Open Drain Channels** |  | 2027-07-06 → 2027-06-16 (-20d) |  |  |
| Section 7 | **Near Ramp- In location from Ch 0+000 to Ch 0+230** |  | 2027-07-06 → 2027-06-16 (-20d) |  |  |
| MKH2-02-003-CN-2170 | Excavation for Channel |  | 2027-01-19 → 2027-01-26 (+7d) |  | 76d → 70d |
| MKH2-02-003-CN-2240 | Embankment for Channel Berms |  | 2027-02-13 → 2027-02-20 (+7d) |  | 76d → 70d |
| MKH2-02-003-CN-2310 | Riprap Grouting |  | 2027-07-06 → 2027-06-16 (-20d) | 4% → 15% | -19d → -2d |
| T & C | **TESTING & COMMISSIONING** |  | 2027-07-24 → 2027-07-31 (+7d) |  |  |
| MKH2-02-003-TC-1000 | Test for Electrical Networks |  | 2027-06-19 → 2027-05-30 (-20d) | 20% → 75% | 3d → 20d |
| MKH2-02-003-TC-1010 | Test for Box Culvert | 2027-04-24 → 2027-03-29 (-26d) | 2027-04-29 → 2027-04-04 (-25d) |  | 1d → 23d |
| MKH2-02-003-TC-1020 | Test for Open Drain channel | 2027-07-07 → 2027-06-17 (-20d) | 2027-07-18 → 2027-06-28 (-20d) |  | -19d → -2d |
| MKH2-02-003-TC-1030 | Test for Roads | 2027-07-18 → 2027-07-25 (+7d) | 2027-07-24 → 2027-07-31 (+7d) |  | -18d → -24d |
| PRO C & DEM | **PROJECT CLOSEOUT & DEMOBILIZATION** | 2027-05-01 → 2027-04-05 (-26d) | 2027-09-05 → 2027-09-11 (+6d) |  |  |
| 1 | **As-Built DWGs** | 2027-05-01 → 2027-04-05 (-26d) | 2027-08-10 → 2027-08-16 (+6d) |  |  |
| 1 | **As-Built DWGs Submittals** | 2027-05-01 → 2027-04-05 (-26d) | 2027-08-01 → 2027-08-08 (+7d) |  |  |
| MKH2-02-003-CO-1050 | As-Built DWGs Submittal for Box Culvert | 2027-05-01 → 2027-04-05 (-26d) | 2027-05-08 → 2027-04-12 (-26d) |  | 1d → 23d |
| MKH2-02-003-CO-1040 | As-Built DWGs Submittal for Electrical Networks | 2027-06-20 → 2027-05-31 (-20d) | 2027-06-27 → 2027-06-07 (-20d) |  | 3d → 20d |
| MKH2-02-003-CO-1060 | As-Built DWGs Submittal for Open Drain channel | 2027-07-19 → 2027-06-29 (-20d) | 2027-07-29 → 2027-07-10 (-19d) |  | -19d → -2d |
| MKH2-02-003-CO-1070 | As-Built DWGs Submittal for Roads | 2027-07-25 → 2027-08-01 (+7d) | 2027-08-01 → 2027-08-08 (+7d) |  | -18d → -24d |
| 2 | **As-Built DWGs Approvals** | 2027-05-09 → 2027-04-13 (-26d) | 2027-08-10 → 2027-08-16 (+6d) |  |  |
| MKH2-02-003-CO-1090 | As-Built DWGs Approval for Box Culvert | 2027-05-09 → 2027-04-13 (-26d) | 2027-05-19 → 2027-04-20 (-29d) |  | 1d → 23d |

| ID | Task | Start | Finish | Total float |
| --- | --- | --- | --- | --- |
| MKH2-02-003-CO-1080 | As-Built DWGs Approval for Electrical Networks | 2027-06-28 → 2027-06-08 (-20d) | 2027-07-07 → 2027-06-17 (-20d) | 3d → 20d |
| MKH2-02-003-CO-1100 | As-Built DWGs Approval for Open Drain channel | 2027-07-31 → 2027-07-11 (-20d) | 2027-08-10 → 2027-07-21 (-20d) | -19d → -2d |
| MKH2-02-003-CO-1110 | As-Built DWGs Approval for Roads | 2027-08-02 → 2027-08-09 (+7d) | 2027-08-09 → 2027-08-16 (+7d) | -18d → -24d |
| 2 | **Demobilization** | 2027-08-11 → 2027-08-17 (+6d) | 2027-09-05 → 2027-09-11 (+6d) |  |
| MKH2-02-003-CO-1000 | Demobilization of Manpower | 2027-08-11 → 2027-08-17 (+6d) | 2027-08-16 → 2027-08-22 (+6d) | -19d → -24d |
| MKH2-02-003-CO-1010 | Removal of Equipment from Site | 2027-08-17 → 2027-08-23 (+6d) | 2027-08-22 → 2027-08-28 (+6d) | -19d → -24d |
| MKH2-02-003-CO-1020 | Site Clean Up | 2027-08-23 → 2027-08-29 (+6d) | 2027-08-28 → 2027-09-02 (+5d) | -19d → -24d |
| MKH2-02-003-CO-1030 | Restoration of Ground Surfaces | 2027-08-29 → 2027-09-04 (+6d) | 2027-09-05 → 2027-09-11 (+6d) | -19d → -24d |

## Version 7 (data date 2026-11-10, saved 2026-11-09, file 2. MKH2-02-003-ENJ-WPR-039-10-11-2026 UP 36.xer)

Last finish 2027-09-11 → 2027-09-18 (+7d). Complete tasks 318 → 322.

Changed:

| ID | Task | Start | Finish | Complete | Total float |
| --- | --- | --- | --- | --- | --- |
| KEY | **KEY MILESTONES** |  | 2027-09-11 → 2027-09-18 (+7d) |  |  |
| GEN | **GENERAL MILESTONES** |  | 2027-09-11 → 2027-09-18 (+7d) |  |  |
| MKH2-02-003-MS-1100 | Project Completion | 2027-09-11 → 2027-09-18 (+7d) | 2027-09-11 → 2027-09-18 (+7d) |  | -24d → -30d |
| OVER ALL | **CONTRACTUAL MILESTONE** |  | 2027-09-11 → 2027-09-18 (+7d) |  |  |
| MKH2-02-003-MS-1040 | Completion of Road Works | 2027-01-14 → 2027-01-21 (+7d) | 2027-01-14 → 2027-01-21 (+7d) |  | 42d → 36d |
| MKH2-02-003-MS-1050 | Completion of Open Drain Channel | 2027-06-16 → 2027-06-23 (+7d) | 2027-06-16 → 2027-06-23 (+7d) |  | 14d → 8d |
| MKH2-02-003-MS-1060 | Completion of All Works | 2027-09-11 → 2027-09-18 (+7d) | 2027-09-11 → 2027-09-18 (+7d) |  | -24d → -30d |
| MKH2-02-003-MS-1070 | Final Handover | 2027-09-11 → 2027-09-18 (+7d) | 2027-09-11 → 2027-09-18 (+7d) |  | -24d → -30d |
| PRO | **PROCUREMENT** |  | 2027-01-14 → 2027-01-21 (+7d) |  |  |
| SLI | **SHORT LEAD ITEM** |  | 2026-12-27 → 2027-01-03 (+7d) |  |  |
| ROAD | **ROAD WORKS-CIVIL** |  | 2026-12-27 → 2027-01-03 (+7d) |  |  |
| BBC& BWC | **BITUMINOUS BASE & WEARING COURSE** |  | 2026-11-29 → 2026-12-06 (+7d) |  |  |
| MKH2-02-003-PR-1130 | Material Delivery for 1st lot to the Site |  | 2026-11-29 → 2026-12-06 (+7d) | 80% → 85% | -22d → -28d |
| INTR | **INTERLOCKING PAVING BLOCKS** |  | 2026-12-24 → 2026-12-31 (+7d) |  |  |
| MKH2-02-003-PR-1190 | Material Delivery for 1st lot of Interlocking Block Pavers |  | 2026-12-24 → 2026-12-31 (+7d) |  | -22d → -28d |
| MARK | **PAVEMENT MARKING** |  | 2026-12-27 → 2027-01-03 (+7d) |  |  |
| MKH2-02-003-PR-1210 | Material Fabrication for Pavement Markings | 2026-11-04 → 2026-11-11 (+7d) | 2026-12-01 → 2026-12-08 (+7d) |  | -24d → -30d |
| MKH2-02-003-PR-1220 | Material Delivery for 1st lot of Pavement Markings | 2026-12-02 → 2026-12-09 (+7d) | 2026-12-27 → 2027-01-03 (+7d) |  | -24d → -30d |
| LLI | **LONG LEAD ITEM** |  | 2027-01-14 → 2027-01-21 (+7d) |  |  |
| POW | **ELECTRICAL POWER** |  | 2027-01-05 → 2027-01-12 (+7d) |  |  |
| 1 | **LV-CABLES** |  | 2027-01-05 → 2027-01-12 (+7d) |  |  |
| MKH2-02-003-PR-1390 | Staging Time for Low Voltage Cables |  | 2027-01-05 → 2027-01-12 (+7d) |  | -24d → -30d |
| LIGH1 | **STREET LIGHTING** |  | 2027-01-14 → 2027-01-21 (+7d) |  |  |
| POL | **POLES** |  | 2026-11-12 → 2026-11-19 (+7d) |  |  |
| MKH2-02-003-PR-1530 | Staging Time for Street Light poles |  | 2026-11-12 → 2026-11-19 (+7d) |  | 30d → 24d |
| LUM | **LUMINAIRE** |  | 2027-01-14 → 2027-01-21 (+7d) |  |  |
| MKH2-02-003-PR-1670 | Staging Time for Street Lighting Luminaire |  | 2027-01-14 → 2027-01-21 (+7d) |  | -24d → -30d |
| CONST | **CONSTRUCTION PHASE** |  | 2027-07-24 → 2027-07-31 (+7d) |  |  |
| ROD | **ROADS** |  | 2027-07-24 → 2027-07-31 (+7d) |  |  |
| ART-03 | **ARTERIAL-03 (2+510 to 4+267.54)** |  | 2027-04-01 → 2027-04-08 (+7d) |  |  |
| ART03 RD | **ARTERIAL-03-ROAD** |  | 2027-04-01 → 2027-04-08 (+7d) |  |  |
| 2 | **ROADS & ROUNDABOUT** |  | 2027-04-01 → 2027-04-08 (+7d) |  |  |
| 1 | **ASPHALT WORKS** |  | 2027-03-06 → 2027-03-16 (+10d) |  |  |
| MKH2-02-003-CN-1400 | Tack coat at ARTERIAL-03 | 2027-01-16 → 2027-01-23 (+7d) | 2027-02-08 → 2027-02-15 (+7d) |  | -24d → -30d |
| MKH2-02-003-CN-1450 | Bituminous concrete wearing course, ARTERIAL-03 | 2027-02-09 → 2027-02-16 (+7d) | 2027-03-06 → 2027-03-16 (+10d) |  | 2d → -4d |
| FINIS | **FINISHING WORKS** |  | 2027-04-01 → 2027-04-08 (+7d) |  |  |
| MKH2-02-003-CN-1630 | Installation of Traffic Signs [Road-1 -ARTERIAL-03 (2+510 to 4+267.54) ] | 2027-03-22 → 2026-11-02 A (-140d) | 2027-04-01 → 2027-04-08 (+7d) | 0% → 20% | 2d → -4d |
| MKH2-02-003-CN-1580 | Pavement markings [Road-1 -ARTERIAL-03 (2+510 to 4+267.54) ] | 2027-03-07 → 2027-03-17 (+10d) | 2027-03-21 → 2027-03-28 (+7d) |  | 2d → -4d |
| ART-04 | **ARTERIAL-04 (0+000 to 1+0.83)** |  | 2027-05-23 → 2027-05-30 (+7d) |  |  |
| ART04 RD | **ARTERIAL-04-ROAD** |  | 2027-05-23 → 2027-05-30 (+7d) |  |  |
| 3 | **ROADS** |  | 2027-04-29 → 2027-05-06 (+7d) |  |  |
| 3 | **EARTHWORKS & SITE GRADING** |  | 2026-11-23 → 2026-11-30 (+7d) |  |  |
| MKH2-02-003-CN-1160 | Embankments -ARTERIAL-04 |  | 2026-11-23 → 2026-11-30 (+7d) |  | 42d → 36d |
| MKH2-02-003-CN-1100 | Roadway Excavation for cuttings ARTERIAL-04 Stage-2 |  | 2026-11-12 → 2026-11-19 (+7d) |  | 42d → 36d |
| 2 | **ASPHALT WORKS** |  | 2027-03-24 → 2027-03-31 (+7d) |  |  |
| MKH2-02-003-CN-1410 | Tack coat at ARTERIAL-04 | 2027-02-09 → 2027-02-16 (+7d) | 2027-02-25 → 2027-03-04 (+7d) |  | -24d → -30d |
| MKH2-02-003-CN-1460 | Bituminous concrete wearing course, ARTERIAL-04 | 2027-02-27 → 2027-03-06 (+7d) | 2027-03-24 → 2027-03-31 (+7d) |  | -24d → -30d |
| 1 | **FINISHING WORKS** |  | 2027-04-29 → 2027-05-06 (+7d) |  |  |
| MKH2-02-003-CN-1510 | Installation of Precast Concrete curb at ARTERIAL-04 |  | 2027-04-03 → 2027-04-10 (+7d) | 80% → 85% | -24d → -30d |
| MKH2-02-003-CN-1550 | 60mm thick - Interlocking block pavers for sidewalk/footpath ARTERIAL-04 |  | 2027-04-07 → 2027-04-14 (+7d) | 75% → 80% | -24d → -30d |
| MKH2-02-003-CN-1590 | Pavement markings [Road-2 -ARTERIAL-04 (0+000 to 1+083) ] | 2027-04-08 → 2027-04-15 (+7d) | 2027-04-18 → 2027-04-25 (+7d) |  | -2d → -8d |
| MKH2-02-003-CN-1640 | Installation of Traffic Signs [Road-2 -ARTERIAL-04 (0+000 to 1+083) ] | 2027-04-19 → 2027-04-26 (+7d) | 2027-04-29 → 2027-05-06 (+7d) |  | -2d → -8d |
| 6 | **ELECTRICAL WORKS (MKH2-01-007-DAR-TS8-0-SL-DWG-1010-00)** |  | 2027-05-23 → 2027-05-30 (+7d) |  |  |
| 2 | **LV NETWORKS** |  | 2027-01-31 → 2027-02-07 (+7d) |  |  |
| MKH2-02-003-CN-2020 | Supply and installation of KWH meter mounting frame including concrete block for installation of KWH meter according to | 2027-01-16 → 2027-01-23 (+7d) | 2027-01-31 → 2027-02-07 (+7d) |  | 42d → 36d |
| 1 | **LV CABLES** |  | 2027-02-15 → 2027-02-23 (+8d) |  |  |
| MKH2-02-003-CN-1740 | Installation of Low Voltage Cables -ARTERIAL-04 Stage-2 |  | 2027-02-15 → 2027-02-23 (+8d) |  | 42d → 36d |
| 3 | **STREET LIGHTING NETWORK INCLUDING ALL** |  | 2027-05-13 → 2027-05-24 (+11d) |  |  |
| MKH2-02-003-CN-1780 | Installation of Lighting Poles 2-Arms ARTERIAL-04 |  | 2027-03-06 → 2027-03-16 (+10d) |  | 42d → 36d |
| MKH2-02-003-CN-1820 | Installation of Lighting Luminaires for 2-Arms ARTERIAL-04 |  | 2027-05-13 → 2027-05-24 (+11d) |  | -2d → -8d |
| 4 | **EARTHING** |  | 2027-05-23 → 2027-05-30 (+7d) |  |  |
| MKH2-02-003-CN-1860 | Installation of Earthing System for ARTERIAL-04 |  | 2027-05-23 → 2027-05-30 (+7d) |  | -2d → -8d |
| 5 | **CONNECTION TO 5th RING ROAD (IF-0+000 to 1+258)** |  | 2027-07-24 → 2027-07-31 (+7d) |  |  |
| RING | **EARTHWORKS & SITE GRADING** |  | 2026-11-15 → 2026-11-01 (-14d) |  |  |
| MKH2-02-003-CN-1190 | Embankments -to Road connecting roat to 5th Ring road |  | 2026-11-08 → 2026-10-31 A (-8d) | 98% → 100% | 3d → none |
| MKH2-02-003-CN-1240 | Subgrade for Connecting Road to RING ROAD-5 |  | 2026-11-15 → 2026-11-01 A (-14d) | 95% → 100% | 3d → none |
| ROAD | **ASPHALT WORKS** |  | 2027-05-30 → 2027-06-06 (+7d) |  |  |
| MKH2-02-003-CN-1290 | Aggregate base course at to Road connecting roat to 5th Ring road |  | 2026-11-21 → 2026-11-02 A (-19d) | 80% → 100% | 3d → none |
| MKH2-02-003-CN-1340 | Prime Coat (MC1) to Road connecting roat to 5th Ring road |  | 2026-12-05 → 2026-11-24 (-11d) | 80% → 85% | 3d → 12d |
| MKH2-02-003-CN-1390 | Bituminous base course to Road connecting roat to 5th Ring road |  | 2026-12-23 → 2026-12-13 (-10d) | 70% → 85% | 3d → 12d |

| ID | Task | Start | Finish | Complete | Total float |
| --- | --- | --- | --- | --- | --- |
| MKH2-02-003-CN-1440 | Tack coat at to Road connecting roat to 5th Ring road | 2027-04-08 → 2027-04-15 (+7d) | 2027-05-02 → 2027-05-09 (+7d) |  | -24d → -30d |
| MKH2-02-003-CN-1490 | Bituminous concrete wearing course, to Road connecting roat to 5th Ring road | 2027-05-03 → 2027-05-10 (+7d) | 2027-05-30 → 2027-06-06 (+7d) |  | -24d → -30d |
| 5 FIN | **FINISHING WORKS** | 2027-05-31 → 2027-06-07 (+7d) | 2027-07-24 → 2027-07-31 (+7d) |  |  |
| MKH2-02-003-CN-1620 | Pavement markings [Road-5 -CONNECTION TO 5th RING ROAD (IF-0+000 to 1+258) ] | 2027-05-31 → 2027-06-07 (+7d) | 2027-06-17 → 2027-06-24 (+7d) |  | -24d → -30d |
| MKH2-02-003-CN-1670 | Installation of Traffic Signs [Road-5 -CONNECTION TO 5th RING ROAD (IF-0+000 to 1+258) ] | 2027-06-19 → 2027-06-26 (+7d) | 2027-07-06 → 2027-07-13 (+7d) |  | -24d → -30d |
| MKH2-02-003-CN-1680 | Installation of Traffic Signs [Road-5 -CONNECTION TO 5th RING ROAD (IF-0+000 to 1+258) ] | 2027-07-07 → 2027-07-14 (+7d) | 2027-07-24 → 2027-07-31 (+7d) |  | -24d → -30d |
| 3 | **RAMP-2-IN (0+000 to 0+400)** |  | 2027-05-13 → 2027-05-03 (-10d) |  |  |
| 3 | **ROADS** |  | 2027-02-08 → 2027-02-02 (-6d) |  |  |
| 1 | **EARTHWORKS & SITE GRADING** |  | 2026-11-16 → 2026-11-01 (-15d) |  |  |
| MKH2-02-003-CN-1170 | Embankments -RAMP-02-IN |  | 2026-11-16 → 2026-11-01 A (-15d) | 95% → 100% | 20d → none |
| 2 | **ASPHALT WORKS** |  | 2027-02-01 → 2027-01-21 (-11d) |  |  |
| MKH2-02-003-CN-1370 | Bituminous base course for RAMP-02 IN |  | 2026-12-03 → 2026-11-28 (-5d) | 30% → 98% | 20d → 25d |
| MKH2-02-003-CN-1420 | Tack coat at RAMP-2-IN | 2026-12-24 → 2026-12-14 (-10d) | 2027-01-09 → 2026-12-29 (-11d) |  | 3d → 12d |
| MKH2-02-003-CN-1470 | Bituminous concrete wearing course, RAMP-2-IN | 2027-01-10 → 2026-12-30 (-11d) | 2027-02-01 → 2027-01-21 (-11d) |  | 3d → 12d |
| FIN | **FINISHING WORKS** | 2026-12-05 → 2026-11-01 (-34d) | 2027-02-08 → 2027-02-02 (-6d) |  |  |
| MKH2-02-003-CN-1520 | Installation of Precast Concrete curb at RAMP-2-IN | 2026-12-05 → 2026-11-01 A (-34d) | 2026-12-20 → 2026-12-14 (-6d) | 0% → 45% | 56d → 61d |
| MKH2-02-003-CN-1560 | 60mm thick - Interlocking block pavers for sidewalk/footpath RAMP-2-IN | 2026-12-21 → 2026-12-15 (-6d) | 2027-01-05 → 2026-12-30 (-6d) |  | 56d → 61d |
| MKH2-02-003-CN-1600 | Pavement markings [Road-3 -RAMP-2-IN (0+000 to 0+400) ] | 2027-01-06 → 2026-12-31 (-6d) | 2027-01-21 → 2027-01-16 (-5d) |  | 56d → 61d |
| MKH2-02-003-CN-1650 | Installation of Traffic Signs [Road-3 -RAMP-2-IN (0+000 to 0+400) ] | 2027-01-23 → 2027-01-17 (-6d) | 2027-02-08 → 2027-02-02 (-6d) |  | 56d → 61d |
| 4 | **ELECTRICAL WORKS (MKH2-01-007-DAR-TS8-0-SL-DWG-1010-00)** | 2027-02-02 → 2027-01-23 (-10d) | 2027-05-13 → 2027-05-03 (-10d) |  |  |
| 1 | **LV CABLES** | 2027-02-02 → 2027-01-23 (-10d) | 2027-02-27 → 2027-02-15 (-12d) |  |  |
| MKH2-02-003-CN-1750 | Installation of Low Voltage Cables -RAMP-2 in | 2027-02-02 → 2027-01-23 (-10d) | 2027-02-27 → 2027-02-15 (-12d) |  | 3d → 12d |
| 3 | **STREET LIGHTING NETWORK INCLUDING ALL** | 2027-02-28 → 2027-02-16 (-12d) | 2027-04-19 → 2027-04-08 (-11d) |  |  |
| MKH2-02-003-CN-1790 | Installation of Lighting Poles 1-Arms In RAMP-2 IN | 2027-02-28 → 2027-02-16 (-12d) | 2027-03-27 → 2027-03-16 (-11d) |  | 3d → 12d |
| MKH2-02-003-CN-1830 | Installation of Lighting Luminaires for 1-Arms RAMP-02 IN | 2027-03-28 → 2027-03-17 (-11d) | 2027-04-19 → 2027-04-08 (-11d) |  | 3d → 12d |
| 4 | **EARTHING** | 2027-04-20 → 2027-04-10 (-10d) | 2027-05-13 → 2027-05-03 (-10d) |  |  |
| MKH2-02-003-CN-1870 | Installation of Earthing System for RAMP-02 IN | 2027-04-20 → 2027-04-10 (-10d) | 2027-05-13 → 2027-05-03 (-10d) |  | 3d → 12d |
| 4 | **RAMP-2-OUT (0+398 to 0+000)** |  | 2027-03-28 → 2027-03-17 (-11d) |  |  |
| 3 | **ROADS** |  | 2027-03-28 → 2027-03-17 (-11d) |  |  |
| 2 | **ASPHALT WORKS** |  | 2027-02-17 → 2027-02-07 (-10d) |  |  |
| MKH2-02-003-CN-1430 | Tack coat at RAMP-2-OUT | 2027-01-10 → 2026-12-30 (-11d) | 2027-01-25 → 2027-01-14 (-11d) |  | 23d → 32d |
| MKH2-02-003-CN-1480 | Bituminous concrete wearing course, RAMP-2-OUT | 2027-01-26 → 2027-01-16 (-10d) | 2027-02-17 → 2027-02-07 (-10d) |  | 29d → 38d |
| FIN | **FINISHING WORKS** | 2027-01-26 → 2027-01-16 (-10d) | 2027-03-28 → 2027-03-17 (-11d) |  |  |
| MKH2-02-003-CN-1530 | Installation of Precast Concrete curb at RAMP-2-OUT | 2027-01-26 → 2027-01-16 (-10d) | 2027-02-08 → 2027-01-28 (-11d) |  | 23d → 32d |
| MKH2-02-003-CN-1570 | 60mm thick - Interlocking block pavers for sidewalk/footpath RAMP-2-OUT | 2027-02-09 → 2027-01-30 (-10d) | 2027-02-25 → 2027-02-14 (-11d) |  | 23d → 32d |
| MKH2-02-003-CN-1610 | Pavement markings [Road-4 -RAMP-2-OUT (0+398 to 0+000) ] | 2027-02-27 → 2027-02-15 (-12d) | 2027-03-14 → 2027-02-28 (-14d) |  | 23d → 32d |
| MKH2-02-003-CN-1660 | Installation of Traffic Signs [Road-4 -RAMP-2-OUT (0+398 to 0+000) ] | 2027-03-15 → 2027-03-01 (-14d) | 2027-03-28 → 2027-03-17 (-11d) |  | 23d → 32d |
| 4 | **ELECTRICAL WORKS (MKH2-01-007-DAR-TS8-0-SL-DWG-1010-00)** |  | 2027-03-09 → 2027-03-03 (-6d) |  |  |
| 1 | **LV CABLES** |  | 2026-11-28 → 2026-12-05 (+7d) |  |  |
| MKH2-02-003-CN-1760 | Installation of Low Voltage Cables -RAMP-2 out |  | 2026-11-28 → 2026-12-05 (+7d) |  | 99d → 93d |
| 3 | **STREET LIGHTING NETWORK INCLUDING ALL** |  | 2027-02-23 → 2027-02-16 (-7d) |  |  |
| MKH2-02-003-CN-1800 | Installation of Lighting Poles 1-Arms In RAMP-2 OUT |  | 2026-12-20 → 2026-12-27 (+7d) |  | 99d → 93d |
| MKH2-02-003-CN-1840 | Installation of Lighting Luminaires for 1-Arms RAMP-02 OUT |  | 2027-02-23 → 2027-02-16 (-7d) |  | 56d → 61d |
| 4 | **EARTHING** | 2027-02-24 → 2027-02-17 (-7d) | 2027-03-09 → 2027-03-03 (-6d) |  |  |
| MKH2-02-003-CN-1880 | Installation of Earthing System for RAMP-02 OUT | 2027-02-24 → 2027-02-17 (-7d) | 2027-03-09 → 2027-03-03 (-6d) |  | 56d → 61d |
| DEM | **DEMOLISHING WORKS** |  | 2026-11-19 → 2026-11-26 (+7d) |  |  |
| DEMO | **DEMOLISHING Works** |  | 2026-11-19 → 2026-11-26 (+7d) |  |  |
| MKH2-02-003-CN-1010 | Milling of the existing asphalt layer | 2026-11-04 → 2026-11-11 (+7d) | 2026-11-19 → 2026-11-26 (+7d) |  | 118d → 112d |
| OPEN | **Open Drain Channels** |  | 2027-06-16 → 2027-06-23 (+7d) |  |  |
| Section 7 | **Near Ramp- In location from Ch 0+000 to Ch 0+230** |  | 2027-06-16 → 2027-06-23 (+7d) |  |  |
| MKH2-02-003-CN-2170 | Excavation for Channel |  | 2027-01-26 → 2027-02-02 (+7d) |  | 70d → 64d |
| MKH2-02-003-CN-2240 | Embankment for Channel Berms |  | 2027-02-20 → 2027-02-28 (+8d) |  | 70d → 64d |
| MKH2-02-003-CN-2310 | Riprap Grouting |  | 2027-06-16 → 2027-06-23 (+7d) | 15% → 20% | -2d → -8d |
| T & C | **TESTING & COMMISSIONING** |  | 2027-07-31 → 2027-08-07 (+7d) |  |  |
| MKH2-02-003-TC-1000 | Test for Electrical Networks |  | 2027-05-30 → 2027-06-06 (+7d) |  | 20d → 14d |
| MKH2-02-003-TC-1010 | Test for Box Culvert | 2027-03-29 → 2027-03-18 (-11d) | 2027-04-04 → 2027-03-24 (-11d) |  | 23d → 32d |
| MKH2-02-003-TC-1020 | Test for Open Drain channel | 2027-06-17 → 2027-06-24 (+7d) | 2027-06-28 → 2027-07-05 (+7d) |  | -2d → -8d |
| MKH2-02-003-TC-1030 | Test for Roads | 2027-07-25 → 2027-08-01 (+7d) | 2027-07-31 → 2027-08-07 (+7d) |  | -24d → -30d |
| PRO C & DEM | **PROJECT CLOSEOUT & DEMOBILIZATION** | 2027-04-05 → 2027-03-25 (-11d) | 2027-09-11 → 2027-09-18 (+7d) |  |  |
| 1 | **As-Built DWGs** | 2027-04-05 → 2027-03-25 (-11d) | 2027-08-16 → 2027-08-23 (+7d) |  |  |
| 1 | **As-Built DWGs Submittals** | 2027-04-05 → 2027-03-25 (-11d) | 2027-08-08 → 2027-08-15 (+7d) |  |  |
| MKH2-02-003-CO-1050 | As-Built DWGs Submittal for Box Culvert | 2027-04-05 → 2027-03-25 (-11d) | 2027-04-12 → 2027-04-01 (-11d) |  | 23d → 32d |
| MKH2-02-003-CO-1040 | As-Built DWGs Submittal for Electrical Networks | 2027-05-31 → 2027-06-07 (+7d) | 2027-06-07 → 2027-06-14 (+7d) |  | 20d → 14d |
| MKH2-02-003-CO-1060 | As-Built DWGs Submittal for Open Drain channel | 2027-06-29 → 2027-07-06 (+7d) | 2027-07-10 → 2027-07-17 (+7d) |  | -2d → -8d |
| MKH2-02-003-CO-1070 | As-Built DWGs Submittal for Roads | 2027-08-01 → 2027-08-08 (+7d) | 2027-08-08 → 2027-08-15 (+7d) |  | -24d → -30d |
| 2 | **As-Built DWGs Approvals** | 2027-04-13 → 2027-04-03 (-10d) | 2027-08-16 → 2027-08-23 (+7d) |  |  |
| MKH2-02-003-CO-1090 | As-Built DWGs Approval for Box Culvert | 2027-04-13 → 2027-04-03 (-10d) | 2027-04-20 → 2027-04-10 (-10d) |  | 23d → 32d |
| MKH2-02-003-CO-1080 | As-Built DWGs Approval for Electrical Networks | 2027-06-08 → 2027-06-15 (+7d) | 2027-06-17 → 2027-06-24 (+7d) |  | 20d → 14d |
| MKH2-02-003-CO-1100 | As-Built DWGs Approval for Open Drain channel | 2027-07-11 → 2027-07-18 (+7d) | 2027-07-21 → 2027-07-28 (+7d) |  | -2d → -8d |
| MKH2-02-003-CO-1110 | As-Built DWGs Approval for Roads | 2027-08-09 → 2027-08-16 (+7d) | 2027-08-16 → 2027-08-23 (+7d) |  | -24d → -30d |

| ID | Task | Start | Finish | Total float |
| --- | --- | --- | --- | --- |
| 2 | **Demobilization** | 2027-08-17 → 2027-08-24 (+7d) | 2027-09-11 → 2027-09-18 (+7d) |  |
| MKH2-02-003-CO-1000 | Demobilization of Manpower | 2027-08-17 → 2027-08-24 (+7d) | 2027-08-22 → 2027-08-29 (+7d) | -24d → -30d |
| MKH2-02-003-CO-1010 | Removal of Equipment from Site | 2027-08-23 → 2027-08-30 (+7d) | 2027-08-28 → 2027-09-04 (+7d) | -24d → -30d |
| MKH2-02-003-CO-1020 | Site Clean Up | 2027-08-29 → 2027-09-05 (+7d) | 2027-09-02 → 2027-09-09 (+7d) | -24d → -30d |
| MKH2-02-003-CO-1030 | Restoration of Ground Surfaces | 2027-09-04 → 2027-09-11 (+7d) | 2027-09-11 → 2027-09-18 (+7d) | -24d → -30d |

## Version 8 (data date 2026-11-17, saved 2026-11-16, file 2. MKH2-02-003-ENJ-WPR-040-17-11-2026 UP 37.xer)

Last finish 2027-09-18 → 2027-09-26 (+8d). Complete tasks 322 → 326.

Changed:

| ID | Task | Start | Finish | Complete | Total float |
| --- | --- | --- | --- | --- | --- |
| KEY | **KEY MILESTONES** |  | 2027-09-18 → 2027-09-26 (+8d) |  |  |
| GEN | **GENERAL MILESTONES** |  | 2027-09-18 → 2027-09-26 (+8d) |  |  |
| MKH2-02-003-MS-1100 | Project Completion | 2027-09-18 → 2027-09-26 (+8d) | 2027-09-18 → 2027-09-26 (+8d) |  | -30d → -36d |
| OVER ALL | **CONTRACTUAL MILESTONE** |  | 2027-09-18 → 2027-09-26 (+8d) |  |  |
| MKH2-02-003-MS-1040 | Completion of Road Works | 2027-01-21 → 2027-01-28 (+7d) | 2027-01-21 → 2027-01-28 (+7d) |  | 36d → 58d |
| MKH2-02-003-MS-1050 | Completion of Open Drain Channel | 2027-06-23 → 2027-06-30 (+7d) | 2027-06-23 → 2027-06-30 (+7d) |  | 8d → 2d |
| MKH2-02-003-MS-1060 | Completion of All Works | 2027-09-18 → 2027-09-26 (+8d) | 2027-09-18 → 2027-09-26 (+8d) |  | -30d → -36d |
| MKH2-02-003-MS-1070 | Final Handover | 2027-09-18 → 2027-09-26 (+8d) | 2027-09-18 → 2027-09-26 (+8d) |  | -30d → -36d |
| PRO | **PROCUREMENT** |  | 2027-01-21 → 2027-01-28 (+7d) |  |  |
| SLI | **SHORT LEAD ITEM** |  | 2027-01-03 → 2027-01-10 (+7d) |  |  |
| ROAD | **ROAD WORKS-CIVIL** |  | 2027-01-03 → 2027-01-10 (+7d) |  |  |
| BBC& BWC | **BITUMINOUS BASE & WEARING COURSE** |  | 2026-12-06 → 2026-11-18 (-18d) |  |  |
| MKH2-02-003-PR-1130 | Material Delivery for 1st lot to the Site |  | 2026-12-06 → 2026-11-18 (-18d) |  | -28d → 10d |
| INTR | **INTERLOCKING PAVING BLOCKS** |  | 2026-12-31 → 2026-11-12 (-49d) |  |  |
| MKH2-02-003-PR-1190 | Material Delivery for 1st lot of Interlocking Block Pavers |  | 2026-12-31 → 2026-11-12 A (-49d) | 90% → 100% | -28d → none |
| MARK | **PAVEMENT MARKING** |  | 2027-01-03 → 2027-01-10 (+7d) |  |  |
| MKH2-02-003-PR-1210 | Material Fabrication for Pavement Markings | 2026-11-11 → 2026-11-18 (+7d) | 2026-12-08 → 2026-12-15 (+7d) |  | -30d → -36d |
| MKH2-02-003-PR-1220 | Material Delivery for 1st lot of Pavement Markings | 2026-12-09 → 2026-12-16 (+7d) | 2027-01-03 → 2027-01-10 (+7d) |  | -30d → -36d |
| LLI | **LONG LEAD ITEM** |  | 2027-01-21 → 2027-01-28 (+7d) |  |  |
| POW | **ELECTRICAL POWER** |  | 2027-01-12 → 2027-01-19 (+7d) |  |  |
| 1 | **LV-CABLES** |  | 2027-01-12 → 2027-01-19 (+7d) |  |  |
| MKH2-02-003-PR-1390 | Staging Time for Low Voltage Cables |  | 2027-01-12 → 2027-01-19 (+7d) |  | -30d → -36d |
| LIGH1 | **STREET LIGHTING** |  | 2027-01-21 → 2027-01-28 (+7d) |  |  |
| POL | **POLES** |  | 2026-11-19 → 2026-11-26 (+7d) |  |  |
| MKH2-02-003-PR-1530 | Staging Time for Street Light poles |  | 2026-11-19 → 2026-11-26 (+7d) |  | 24d → 18d |
| LUM | **LUMINAIRE** |  | 2027-01-21 → 2027-01-28 (+7d) |  |  |
| MKH2-02-003-PR-1670 | Staging Time for Street Lighting Luminaire |  | 2027-01-21 → 2027-01-28 (+7d) |  | -30d → -36d |
| CONST | **CONSTRUCTION PHASE** |  | 2027-07-31 → 2027-08-07 (+7d) |  |  |
| ROD | **ROADS** |  | 2027-07-31 → 2027-08-07 (+7d) |  |  |
| ART-03 | **ARTERIAL-03 (2+510 to 4+267.54)** |  | 2027-04-08 → 2027-04-15 (+7d) |  |  |
| ART03 RD | **ARTERIAL-03-ROAD** |  | 2027-04-08 → 2027-04-15 (+7d) |  |  |
| 2 | **ROADS & ROUNDABOUT** |  | 2027-04-08 → 2027-04-15 (+7d) |  |  |
| 1 | **ASPHALT WORKS** |  | 2027-03-16 → 2027-03-23 (+7d) |  |  |
| MKH2-02-003-CN-1400 | Tack coat at ARTERIAL-03 | 2027-01-23 → 2027-01-30 (+7d) | 2027-02-15 → 2027-02-23 (+8d) |  | -30d → -36d |
| MKH2-02-003-CN-1450 | Bituminous concrete wearing course, ARTERIAL-03 | 2027-02-16 → 2027-02-24 (+8d) | 2027-03-16 → 2027-03-23 (+7d) |  | -4d → -10d |
| FINIS | **FINISHING WORKS** |  | 2027-04-08 → 2027-04-15 (+7d) |  |  |
| MKH2-02-003-CN-1630 | Installation of Traffic Signs [Road-1 -ARTERIAL-03 (2+510 to 4+267.54) ] |  | 2027-04-08 → 2027-04-15 (+7d) |  | -4d → -10d |
| MKH2-02-003-CN-1580 | Pavement markings [Road-1 -ARTERIAL-03 (2+510 to 4+267.54) ] | 2027-03-17 → 2027-03-24 (+7d) | 2027-03-28 → 2027-04-04 (+7d) |  | -4d → -10d |
| ART-04 | **ARTERIAL-04 (0+000 to 1+0.83)** |  | 2027-05-30 → 2027-06-06 (+7d) |  |  |
| ART04 RD | **ARTERIAL-04-ROAD** |  | 2027-05-30 → 2027-06-06 (+7d) |  |  |
| 3 | **ROADS** |  | 2027-05-06 → 2027-05-13 (+7d) |  |  |
| 3 | **EARTHWORKS & SITE GRADING** |  | 2026-11-30 → 2026-12-07 (+7d) |  |  |
| MKH2-02-003-CN-1160 | Embankments -ARTERIAL-04 |  | 2026-11-30 → 2026-12-07 (+7d) |  | 36d → 30d |
| MKH2-02-003-CN-1100 | Roadway Excavation for cuttings ARTERIAL-04 Stage-2 |  | 2026-11-19 → 2026-11-26 (+7d) |  | 36d → 30d |
| 2 | **ASPHALT WORKS** |  | 2027-03-31 → 2027-04-07 (+7d) |  |  |
| MKH2-02-003-CN-1410 | Tack coat at ARTERIAL-04 | 2027-02-16 → 2027-02-24 (+8d) | 2027-03-04 → 2027-03-15 (+11d) |  | -30d → -36d |
| MKH2-02-003-CN-1460 | Bituminous concrete wearing course, ARTERIAL-04 | 2027-03-06 → 2027-03-16 (+10d) | 2027-03-31 → 2027-04-07 (+7d) |  | -30d → -36d |
| 1 | **FINISHING WORKS** |  | 2027-05-06 → 2027-05-13 (+7d) |  |  |
| MKH2-02-003-CN-1510 | Installation of Precast Concrete curb at ARTERIAL-04 |  | 2027-04-10 → 2027-04-17 (+7d) |  | -30d → -36d |
| MKH2-02-003-CN-1550 | 60mm thick - Interlocking block pavers for sidewalk/footpath ARTERIAL-04 |  | 2027-04-14 → 2027-04-21 (+7d) |  | -30d → -36d |
| MKH2-02-003-CN-1590 | Pavement markings [Road-2 -ARTERIAL-04 (0+000 to 1+083) ] | 2027-04-15 → 2027-04-22 (+7d) | 2027-04-25 → 2027-05-02 (+7d) |  | -8d → -14d |
| MKH2-02-003-CN-1640 | Installation of Traffic Signs [Road-2 -ARTERIAL-04 (0+000 to 1+083) ] | 2027-04-26 → 2027-05-03 (+7d) | 2027-05-06 → 2027-05-13 (+7d) |  | -8d → -14d |
| 6 | **ELECTRICAL WORKS (MKH2-01-007-DAR-TS8-0-SL-DWG-1010-00)** |  | 2027-05-30 → 2027-06-06 (+7d) |  |  |
| 2 | **LV NETWORKS** |  | 2027-02-07 → 2027-02-14 (+7d) |  |  |
| MKH2-02-003-CN-2020 | Supply and installation of KWH meter mounting frame including concrete block for installation of KWH meter according to | 2027-01-23 → 2027-01-30 (+7d) | 2027-02-07 → 2027-02-14 (+7d) |  | 36d → 58d |
| 1 | **LV CABLES** |  | 2027-02-23 → 2026-11-15 (-100d) |  |  |
| MKH2-02-003-CN-1740 | Installation of Low Voltage Cables -ARTERIAL-04 Stage-2 |  | 2027-02-23 → 2026-11-15 A (-100d) | 90% → 100% | 36d → none |
| 3 | **STREET LIGHTING NETWORK INCLUDING ALL** |  | 2027-05-24 → 2027-05-31 (+7d) |  |  |
| MKH2-02-003-CN-1780 | Installation of Lighting Poles 2-Arms ARTERIAL-04 |  | 2027-03-16 → 2026-11-16 A (-120d) | 90% → 100% | 36d → none |
| MKH2-02-003-CN-1820 | Installation of Lighting Luminaires for 2-Arms ARTERIAL-04 |  | 2027-05-24 → 2027-05-31 (+7d) |  | -8d → -14d |
| 4 | **EARTHING** |  | 2027-05-30 → 2027-06-06 (+7d) |  |  |
| MKH2-02-003-CN-1860 | Installation of Earthing System for ARTERIAL-04 |  | 2027-05-30 → 2027-06-06 (+7d) |  | -8d → -14d |
| 5 | **CONNECTION TO 5th RING ROAD (IF-0+000 to 1+258)** |  | 2027-07-31 → 2027-08-07 (+7d) |  |  |
| ROAD | **ASPHALT WORKS** |  | 2027-06-06 → 2027-06-13 (+7d) |  |  |
| MKH2-02-003-CN-1340 | Prime Coat (MC1) to Road connecting roat to 5th Ring road |  | 2026-11-24 → 2026-12-01 (+7d) |  | 12d → 6d |
| MKH2-02-003-CN-1390 | Bituminous base course to Road connecting roat to 5th Ring road |  | 2026-12-13 → 2026-12-20 (+7d) |  | 12d → 6d |
| MKH2-02-003-CN-1440 | Tack coat at to Road connecting roat to 5th Ring road | 2027-04-15 → 2027-04-22 (+7d) | 2027-05-09 → 2027-05-19 (+10d) |  | -30d → -36d |
| MKH2-02-003-CN-1490 | Bituminous concrete wearing course, to Road connecting roat to 5th Ring road | 2027-05-10 → 2027-05-20 (+10d) | 2027-06-06 → 2027-06-13 (+7d) |  | -30d → -36d |
| 5 FIN | **FINISHING WORKS** | 2027-06-07 → 2027-06-14 (+7d) | 2027-07-31 → 2027-08-07 (+7d) |  |  |
| MKH2-02-003-CN-1620 | Pavement markings [Road-5 -CONNECTION TO 5th RING ROAD (IF-0+000 to 1+258) ] | 2027-06-07 → 2027-06-14 (+7d) | 2027-06-24 → 2027-07-01 (+7d) |  | -30d → -36d |

| ID | Task | Start | Finish | Complete | Total float |
| --- | --- | --- | --- | --- | --- |
| MKH2-02-003-CN-1670 | Installation of Traffic Signs [Road-5 -CONNECTION TO 5th RING ROAD (IF-0+000 to 1+258) ] | 2027-06-26 → 2027-07-03 (+7d) | 2027-07-13 → 2027-07-20 (+7d) |  | -30d → -36d |
| MKH2-02-003-CN-1680 | Installation of Traffic Signs [Road-5 -CONNECTION TO 5th RING ROAD (IF-0+000 to 1+258) ] | 2027-07-14 → 2027-07-21 (+7d) | 2027-07-31 → 2027-08-07 (+7d) |  | -30d → -36d |
| 3 | **RAMP-2-IN (0+000 to 0+400)** |  | 2027-05-03 → 2027-05-10 (+7d) |  |  |
| 3 | **ROADS** |  | 2027-02-02 → 2027-01-28 (-5d) |  |  |
| 2 | **ASPHALT WORKS** |  | 2027-01-21 → 2027-01-28 (+7d) |  |  |
| MKH2-02-003-CN-1370 | Bituminous base course for RAMP-02 IN |  | 2026-11-28 → 2026-11-11 A (-17d) | 98% → 100% | 25d → none |
| MKH2-02-003-CN-1420 | Tack coat at RAMP-2-IN | 2026-12-14 → 2026-12-21 (+7d) | 2026-12-29 → 2027-01-05 (+7d) |  | 12d → 6d |
| MKH2-02-003-CN-1470 | Bituminous concrete wearing course, RAMP-2-IN | 2026-12-30 → 2027-01-06 (+7d) | 2027-01-21 → 2027-01-28 (+7d) |  | 12d → 6d |
| FIN | **FINISHING WORKS** |  | 2027-02-02 → 2027-01-23 (-10d) |  |  |
| MKH2-02-003-CN-1520 | Installation of Precast Concrete curb at RAMP-2-IN |  | 2026-12-14 → 2026-12-03 (-11d) |  | 61d → 70d |
| MKH2-02-003-CN-1560 | 60mm thick - Interlocking block pavers for sidewalk/footpath RAMP-2-IN | 2026-12-15 → 2026-12-05 (-10d) | 2026-12-30 → 2026-12-20 (-10d) |  | 61d → 70d |
| MKH2-02-003-CN-1600 | Pavement markings [Road-3 -RAMP-2-IN (0+000 to 0+400) ] | 2026-12-31 → 2026-12-21 (-10d) | 2027-01-16 → 2027-01-05 (-11d) |  | 61d → 70d |
| MKH2-02-003-CN-1650 | Installation of Traffic Signs [Road-3 -RAMP-2-IN (0+000 to 0+400) ] | 2027-01-17 → 2027-01-06 (-11d) | 2027-02-02 → 2027-01-23 (-10d) |  | 61d → 70d |
| 4 | **ELECTRICAL WORKS (MKH2-01-007-DAR-TS8-0-SL-DWG-1010-00)** | 2027-01-23 → 2026-11-12 (-72d) | 2027-05-03 → 2027-05-10 (+7d) |  |  |
| 1 | **LV CABLES** | 2027-01-23 → 2026-11-12 (-72d) | 2027-02-15 → 2027-02-23 (+8d) |  |  |
| MKH2-02-003-CN-1750 | Installation of Low Voltage Cables -RAMP-2 in | 2027-01-23 → 2026-11-12 A (-72d) | 2027-02-15 → 2027-02-23 (+8d) | 0% → 30% | 12d → 6d |
| 3 | **STREET LIGHTING NETWORK INCLUDING ALL** | 2027-02-16 → 2026-11-15 (-93d) | 2027-04-08 → 2027-04-15 (+7d) |  |  |
| MKH2-02-003-CN-1790 | Installation of Lighting Poles 1-Arms In RAMP-2 IN | 2027-02-16 → 2026-11-15 A (-93d) | 2027-03-16 → 2027-03-23 (+7d) | 0% → 10% | 12d → 6d |
| MKH2-02-003-CN-1830 | Installation of Lighting Luminaires for 1-Arms RAMP-02 IN | 2027-03-17 → 2027-03-24 (+7d) | 2027-04-08 → 2027-04-15 (+7d) |  | 12d → 6d |
| 4 | **EARTHING** | 2027-04-10 → 2027-04-17 (+7d) | 2027-05-03 → 2027-05-10 (+7d) |  |  |
| MKH2-02-003-CN-1870 | Installation of Earthing System for RAMP-02 IN | 2027-04-10 → 2027-04-17 (+7d) | 2027-05-03 → 2027-05-10 (+7d) |  | 12d → 6d |
| 4 | **RAMP-2-OUT (0+398 to 0+000)** |  | 2027-03-17 → 2027-03-24 (+7d) |  |  |
| 3 | **ROADS** |  | 2027-03-17 → 2027-03-24 (+7d) |  |  |
| 2 | **ASPHALT WORKS** |  | 2027-02-07 → 2027-02-14 (+7d) |  |  |
| MKH2-02-003-CN-1430 | Tack coat at RAMP-2-OUT | 2026-12-30 → 2027-01-06 (+7d) | 2027-01-14 → 2027-01-21 (+7d) |  | 32d → 26d |
| MKH2-02-003-CN-1480 | Bituminous concrete wearing course, RAMP-2-OUT | 2027-01-16 → 2027-01-23 (+7d) | 2027-02-07 → 2027-02-14 (+7d) |  | 38d → 32d |
| FIN | **FINISHING WORKS** | 2027-01-16 → 2027-01-23 (+7d) | 2027-03-17 → 2027-03-24 (+7d) |  |  |
| MKH2-02-003-CN-1530 | Installation of Precast Concrete curb at RAMP-2-OUT | 2027-01-16 → 2027-01-23 (+7d) | 2027-01-28 → 2027-02-04 (+7d) |  | 32d → 26d |
| MKH2-02-003-CN-1570 | 60mm thick - Interlocking block pavers for sidewalk/footpath RAMP-2-OUT | 2027-01-30 → 2027-02-06 (+7d) | 2027-02-14 → 2027-02-21 (+7d) |  | 32d → 26d |
| MKH2-02-003-CN-1610 | Pavement markings [Road-4 -RAMP-2-OUT (0+398 to 0+000) ] | 2027-02-15 → 2027-02-23 (+8d) | 2027-02-28 → 2027-03-07 (+7d) |  | 32d → 26d |
| MKH2-02-003-CN-1660 | Installation of Traffic Signs [Road-4 -RAMP-2-OUT (0+398 to 0+000) ] | 2027-03-01 → 2027-03-08 (+7d) | 2027-03-17 → 2027-03-24 (+7d) |  | 32d → 26d |
| 4 | **ELECTRICAL WORKS (MKH2-01-007-DAR-TS8-0-SL-DWG-1010-00)** |  | 2027-03-03 → 2027-02-20 (-11d) |  |  |
| 1 | **LV CABLES** |  | 2026-12-05 → 2026-12-12 (+7d) |  |  |
| MKH2-02-003-CN-1760 | Installation of Low Voltage Cables -RAMP-2 out |  | 2026-12-05 → 2026-12-12 (+7d) |  | 93d → 87d |
| 3 | **STREET LIGHTING NETWORK INCLUDING ALL** |  | 2027-02-16 → 2027-02-06 (-10d) |  |  |
| MKH2-02-003-CN-1800 | Installation of Lighting Poles 1-Arms In RAMP-2 OUT |  | 2026-12-27 → 2027-01-03 (+7d) |  | 93d → 87d |
| MKH2-02-003-CN-1840 | Installation of Lighting Luminaires for 1-Arms RAMP-02 OUT |  | 2027-02-16 → 2027-02-06 (-10d) |  | 61d → 70d |
| 4 | **EARTHING** | 2027-02-17 → 2027-02-07 (-10d) | 2027-03-03 → 2027-02-20 (-11d) |  |  |
| MKH2-02-003-CN-1880 | Installation of Earthing System for RAMP-02 OUT | 2027-02-17 → 2027-02-07 (-10d) | 2027-03-03 → 2027-02-20 (-11d) |  | 61d → 70d |
| DEM | **DEMOLISHING WORKS** |  | 2026-11-26 → 2026-12-03 (+7d) |  |  |
| DEMO | **DEMOLISHING Works** |  | 2026-11-26 → 2026-12-03 (+7d) |  |  |
| MKH2-02-003-CN-1010 | Milling of the existing asphalt layer | 2026-11-11 → 2026-11-15 A (+4d) | 2026-11-26 → 2026-12-03 (+7d) | 0% → 10% | 112d → 106d |
| OPEN | **Open Drain Channels** |  | 2027-06-23 → 2027-06-30 (+7d) |  |  |
| Section 7 | **Near Ramp- In location from Ch 0+000 to Ch 0+230** |  | 2027-06-23 → 2027-06-30 (+7d) |  |  |
| MKH2-02-003-CN-2170 | Excavation for Channel |  | 2027-02-02 → 2027-02-09 (+7d) |  | 64d → 58d |
| MKH2-02-003-CN-2240 | Embankment for Channel Berms |  | 2027-02-28 → 2027-03-07 (+7d) |  | 64d → 58d |
| MKH2-02-003-CN-2310 | Riprap Grouting |  | 2027-06-23 → 2027-06-30 (+7d) | 20% → 25% | -8d → -14d |
| T & C | **TESTING & COMMISSIONING** |  | 2027-08-07 → 2027-08-14 (+7d) |  |  |
| MKH2-02-003-TC-1000 | Test for Electrical Networks |  | 2027-06-06 → 2027-06-13 (+7d) |  | 14d → 8d |
| MKH2-02-003-TC-1010 | Test for Box Culvert | 2027-03-18 → 2026-11-11 A (-127d) | 2027-03-24 → 2027-03-31 (+7d) | 0% → 40% | 32d → 26d |
| MKH2-02-003-TC-1020 | Test for Open Drain channel | 2027-06-24 → 2026-11-11 A (-225d) | 2027-07-05 → 2027-07-12 (+7d) | 0% → 40% | -8d → -14d |
| MKH2-02-003-TC-1030 | Test for Roads | 2027-08-01 → 2026-11-12 A (-262d) | 2027-08-07 → 2027-08-14 (+7d) | 0% → 40% | -30d → -36d |
| PRO C & DEM | **PROJECT CLOSEOUT & DEMOBILIZATION** | 2027-03-25 → 2027-04-01 (+7d) | 2027-09-18 → 2027-09-26 (+8d) |  |  |
| 1 | **As-Built DWGs** | 2027-03-25 → 2027-04-01 (+7d) | 2027-08-23 → 2027-08-30 (+7d) |  |  |
| 1 | **As-Built DWGs Submittals** | 2027-03-25 → 2027-04-01 (+7d) | 2027-08-15 → 2027-08-22 (+7d) |  |  |
| MKH2-02-003-CO-1050 | As-Built DWGs Submittal for Box Culvert | 2027-03-25 → 2027-04-01 (+7d) | 2027-04-01 → 2027-04-08 (+7d) |  | 32d → 26d |
| MKH2-02-003-CO-1040 | As-Built DWGs Submittal for Electrical Networks | 2027-06-07 → 2027-06-14 (+7d) | 2027-06-14 → 2027-06-21 (+7d) |  | 14d → 8d |
| MKH2-02-003-CO-1060 | As-Built DWGs Submittal for Open Drain channel | 2027-07-06 → 2027-07-13 (+7d) | 2027-07-17 → 2027-07-24 (+7d) |  | -8d → -14d |
| MKH2-02-003-CO-1070 | As-Built DWGs Submittal for Roads | 2027-08-08 → 2027-08-15 (+7d) | 2027-08-15 → 2027-08-22 (+7d) |  | -30d → -36d |
| 2 | **As-Built DWGs Approvals** | 2027-04-03 → 2027-04-10 (+7d) | 2027-08-23 → 2027-08-30 (+7d) |  |  |
| MKH2-02-003-CO-1090 | As-Built DWGs Approval for Box Culvert | 2027-04-03 → 2027-04-10 (+7d) | 2027-04-10 → 2027-04-17 (+7d) |  | 32d → 26d |
| MKH2-02-003-CO-1080 | As-Built DWGs Approval for Electrical Networks | 2027-06-15 → 2027-06-22 (+7d) | 2027-06-24 → 2027-07-01 (+7d) |  | 14d → 8d |
| MKH2-02-003-CO-1100 | As-Built DWGs Approval for Open Drain channel | 2027-07-18 → 2027-07-25 (+7d) | 2027-07-28 → 2027-08-04 (+7d) |  | -8d → -14d |
| MKH2-02-003-CO-1110 | As-Built DWGs Approval for Roads | 2027-08-16 → 2027-08-23 (+7d) | 2027-08-23 → 2027-08-30 (+7d) |  | -30d → -36d |
| 2 | **Demobilization** | 2027-08-24 → 2027-08-31 (+7d) | 2027-09-18 → 2027-09-26 (+8d) |  |  |
| MKH2-02-003-CO-1000 | Demobilization of Manpower | 2027-08-24 → 2027-08-31 (+7d) | 2027-08-29 → 2027-09-05 (+7d) |  | -30d → -36d |
| MKH2-02-003-CO-1010 | Removal of Equipment from Site | 2027-08-30 → 2027-09-06 (+7d) | 2027-09-04 → 2027-09-11 (+7d) |  | -30d → -36d |
| MKH2-02-003-CO-1020 | Site Clean Up | 2027-09-05 → 2027-09-12 (+7d) | 2027-09-09 → 2027-09-16 (+7d) |  | -30d → -36d |
| MKH2-02-003-CO-1030 | Restoration of Ground Surfaces | 2027-09-11 → 2027-09-18 (+7d) | 2027-09-18 → 2027-09-26 (+8d) |  | -30d → -36d |

## Version 9 (data date 2026-11-24, saved 2026-11-23, file 2. MKH2-02-003-ENJ-WPR-041-24-11-2026 UP 38.xer)

Last finish 2027-09-26 → 2027-09-06 (-20d). Complete tasks 326 → 331.

Changed:

| ID | Task | Start | Finish | Complete | Total float |
| --- | --- | --- | --- | --- | --- |
| KEY | **KEY MILESTONES** |  | 2027-09-26 → 2027-09-06 (-20d) |  |  |
| GEN | **GENERAL MILESTONES** |  | 2027-09-26 → 2027-09-06 (-20d) |  |  |
| MKH2-02-003-MS-1100 | Project Completion | 2027-09-26 → 2027-09-06 (-20d) | 2027-09-26 → 2027-09-06 (-20d) |  | -36d → -20d |
| OVER ALL | **CONTRACTUAL MILESTONE** |  | 2027-09-26 → 2027-09-06 (-20d) |  |  |
| MKH2-02-003-MS-1040 | Completion of Road Works | 2027-01-28 → 2027-02-04 (+7d) | 2027-01-28 → 2027-02-04 (+7d) |  | 58d → 52d |
| MKH2-02-003-MS-1050 | Completion of Open Drain Channel | 2027-06-30 → 2027-07-07 (+7d) | 2027-06-30 → 2027-07-07 (+7d) |  | 2d → -4d |
| MKH2-02-003-MS-1060 | Completion of All Works | 2027-09-26 → 2027-09-06 (-20d) | 2027-09-26 → 2027-09-06 (-20d) |  | -36d → -20d |
| MKH2-02-003-MS-1070 | Final Handover | 2027-09-26 → 2027-09-06 (-20d) | 2027-09-26 → 2027-09-06 (-20d) |  | -36d → -20d |
| PRO | **PROCUREMENT** |  | 2027-01-28 → 2027-02-04 (+7d) |  |  |
| SLI | **SHORT LEAD ITEM** |  | 2027-01-10 → 2027-01-17 (+7d) |  |  |
| ROAD | **ROAD WORKS-CIVIL** |  | 2027-01-10 → 2027-01-17 (+7d) |  |  |
| BBC& BWC | **BITUMINOUS BASE & WEARING COURSE** |  | 2026-11-18 → 2026-11-25 (+7d) |  |  |
| MKH2-02-003-PR-1130 | Material Delivery for 1st lot to the Site |  | 2026-11-18 → 2026-11-25 (+7d) |  | 10d → 26d |
| MARK | **PAVEMENT MARKING** |  | 2027-01-10 → 2027-01-17 (+7d) |  |  |
| MKH2-02-003-PR-1210 | Material Fabrication for Pavement Markings | 2026-11-18 → 2026-11-25 (+7d) | 2026-12-15 → 2026-12-22 (+7d) |  | -36d → -20d |
| MKH2-02-003-PR-1220 | Material Delivery for 1st lot of Pavement Markings | 2026-12-16 → 2026-12-23 (+7d) | 2027-01-10 → 2027-01-17 (+7d) |  | -36d → -20d |
| LLI | **LONG LEAD ITEM** |  | 2027-01-28 → 2027-02-04 (+7d) |  |  |
| POW | **ELECTRICAL POWER** |  | 2027-01-19 → 2027-01-26 (+7d) |  |  |
| 1 | **LV-CABLES** |  | 2027-01-19 → 2027-01-26 (+7d) |  |  |
| MKH2-02-003-PR-1390 | Staging Time for Low Voltage Cables |  | 2027-01-19 → 2027-01-26 (+7d) |  | -36d → -20d |
| LIGH1 | **STREET LIGHTING** |  | 2027-01-28 → 2027-02-04 (+7d) |  |  |
| POL | **POLES** |  | 2026-11-26 → 2026-12-03 (+7d) |  |  |
| MKH2-02-003-PR-1530 | Staging Time for Street Light poles |  | 2026-11-26 → 2026-12-03 (+7d) |  | 18d → 34d |
| LUM | **LUMINAIRE** |  | 2027-01-28 → 2027-02-04 (+7d) |  |  |
| MKH2-02-003-PR-1670 | Staging Time for Street Lighting Luminaire |  | 2027-01-28 → 2027-02-04 (+7d) |  | -36d → -20d |
| CONST | **CONSTRUCTION PHASE** |  | 2027-08-07 → 2027-07-07 (-31d) |  |  |
| ROD | **ROADS** |  | 2027-08-07 → 2027-06-26 (-42d) |  |  |
| ART-03 | **ARTERIAL-03 (2+510 to 4+267.54)** |  | 2027-04-15 → 2027-04-22 (+7d) |  |  |
| ART03 RD | **ARTERIAL-03-ROAD** |  | 2027-04-15 → 2027-04-22 (+7d) |  |  |
| 2 | **ROADS & ROUNDABOUT** |  | 2027-04-15 → 2027-04-22 (+7d) |  |  |
| 1 | **ASPHALT WORKS** |  | 2027-03-23 → 2027-03-30 (+7d) |  |  |
| MKH2-02-003-CN-1400 | Tack coat at ARTERIAL-03 | 2027-01-30 → 2027-02-06 (+7d) | 2027-02-23 → 2027-03-02 (+7d) |  | -36d → -20d |
| MKH2-02-003-CN-1450 | Bituminous concrete wearing course, ARTERIAL-03 | 2027-02-24 → 2027-03-03 (+7d) | 2027-03-23 → 2027-03-30 (+7d) |  | -10d → 0d |
| FINIS | **FINISHING WORKS** |  | 2027-04-15 → 2027-04-22 (+7d) |  |  |
| MKH2-02-003-CN-1630 | Installation of Traffic Signs [Road-1 -ARTERIAL-03 (2+510 to 4+267.54) ] |  | 2027-04-15 → 2027-04-22 (+7d) |  | -10d → 0d |
| MKH2-02-003-CN-1580 | Pavement markings [Road-1 -ARTERIAL-03 (2+510 to 4+267.54) ] | 2027-03-24 → 2027-03-31 (+7d) | 2027-04-04 → 2027-04-11 (+7d) |  | -10d → 0d |
| ART-04 | **ARTERIAL-04 (0+000 to 1+0.83)** |  | 2027-06-06 → 2027-06-13 (+7d) |  |  |
| ART04 RD | **ARTERIAL-04-ROAD** |  | 2027-06-06 → 2027-06-13 (+7d) |  |  |
| 3 | **ROADS** |  | 2027-05-13 → 2027-05-24 (+11d) |  |  |
| 3 | **EARTHWORKS & SITE GRADING** |  | 2026-12-07 → 2026-12-14 (+7d) |  |  |
| MKH2-02-003-CN-1160 | Embankments -ARTERIAL-04 |  | 2026-12-07 → 2026-12-14 (+7d) |  | 30d → 46d |
| MKH2-02-003-CN-1100 | Roadway Excavation for cuttings ARTERIAL-04 Stage-2 |  | 2026-11-26 → 2026-12-03 (+7d) |  | 30d → 46d |
| 2 | **ASPHALT WORKS** |  | 2027-04-07 → 2027-04-14 (+7d) |  |  |
| MKH2-02-003-CN-1410 | Tack coat at ARTERIAL-04 | 2027-02-24 → 2027-03-03 (+7d) | 2027-03-15 → 2027-03-22 (+7d) |  | -36d → -20d |
| MKH2-02-003-CN-1460 | Bituminous concrete wearing course, ARTERIAL-04 | 2027-03-16 → 2027-03-23 (+7d) | 2027-04-07 → 2027-04-14 (+7d) |  | -36d → -20d |
| 1 | **FINISHING WORKS** |  | 2027-05-13 → 2027-05-24 (+11d) |  |  |
| MKH2-02-003-CN-1510 | Installation of Precast Concrete curb at ARTERIAL-04 |  | 2027-04-17 → 2027-04-24 (+7d) | 85% → 95% | -36d → -20d |
| MKH2-02-003-CN-1550 | 60mm thick - Interlocking block pavers for sidewalk/footpath ARTERIAL-04 |  | 2027-04-21 → 2027-04-28 (+7d) |  | -36d → -20d |
| MKH2-02-003-CN-1590 | Pavement markings [Road-2 -ARTERIAL-04 (0+000 to 1+083) ] | 2027-04-22 → 2027-04-29 (+7d) | 2027-05-02 → 2027-05-09 (+7d) |  | -14d → -20d |
| MKH2-02-003-CN-1640 | Installation of Traffic Signs [Road-2 -ARTERIAL-04 (0+000 to 1+083) ] | 2027-05-03 → 2027-05-10 (+7d) | 2027-05-13 → 2027-05-24 (+11d) |  | -14d → -20d |
| 6 | **ELECTRICAL WORKS (MKH2-01-007-DAR-TS8-0-SL-DWG-1010-00)** |  | 2027-06-06 → 2027-06-13 (+7d) |  |  |
| 2 | **LV NETWORKS** |  | 2027-02-14 → 2027-02-21 (+7d) |  |  |
| MKH2-02-003-CN-2020 | Supply and installation of KWH meter mounting frame including concrete block for installation of KWH meter according to | 2027-01-30 → 2027-02-06 (+7d) | 2027-02-14 → 2027-02-21 (+7d) |  | 58d → 52d |
| 3 | **STREET LIGHTING NETWORK INCLUDING ALL** |  | 2027-05-31 → 2027-06-07 (+7d) |  |  |
| MKH2-02-003-CN-1820 | Installation of Lighting Luminaires for 2-Arms ARTERIAL-04 |  | 2027-05-31 → 2027-06-07 (+7d) |  | -14d → -20d |
| 4 | **EARTHING** |  | 2027-06-06 → 2027-06-13 (+7d) |  |  |
| MKH2-02-003-CN-1860 | Installation of Earthing System for ARTERIAL-04 |  | 2027-06-06 → 2027-06-13 (+7d) |  | -14d → -20d |
| 5 | **CONNECTION TO 5th RING ROAD (IF-0+000 to 1+258)** |  | 2027-08-07 → 2027-06-26 (-42d) |  |  |
| ROAD | **ASPHALT WORKS** |  | 2027-06-13 → 2026-11-23 (-202d) |  |  |
| MKH2-02-003-CN-1340 | Prime Coat (MC1) to Road connecting roat to 5th Ring road |  | 2026-12-01 → 2026-11-18 A (-13d) | 85% → 100% | 6d → none |
| MKH2-02-003-CN-1390 | Bituminous base course to Road connecting roat to 5th Ring road | 2026-10-19 A → 2026-11-19 A (+31d) | 2026-12-20 → 2026-11-21 A (-29d) | 85% → 100% | 6d → none |
| MKH2-02-003-CN-1440 | Tack coat at to Road connecting roat to 5th Ring road | 2027-04-22 → 2026-11-21 A (-152d) | 2027-05-19 → 2026-11-23 A (-177d) | 0% → 100% | -36d → none |
| MKH2-02-003-CN-1490 | Bituminous concrete wearing course, to Road connecting roat to 5th Ring road | 2027-05-20 → 2026-11-21 A (-180d) | 2027-06-13 → 2026-11-23 A (-202d) | 0% → 100% | -36d → none |
| 5 FIN | **FINISHING WORKS** | 2027-06-14 → 2027-04-29 (-46d) | 2027-08-07 → 2027-06-26 (-42d) |  |  |
| MKH2-02-003-CN-1620 | Pavement markings [Road-5 -CONNECTION TO 5th RING ROAD (IF-0+000 to 1+258) ] | 2027-06-14 → 2027-04-29 (-46d) | 2027-07-01 → 2027-05-20 (-42d) |  | -36d → 0d |
| MKH2-02-003-CN-1670 | Installation of Traffic Signs [Road-5 -CONNECTION TO 5th RING ROAD (IF-0+000 to 1+258) ] | 2027-07-03 → 2027-05-22 (-42d) | 2027-07-20 → 2027-06-08 (-42d) |  | -36d → 0d |
| MKH2-02-003-CN-1680 | Installation of Traffic Signs [Road-5 -CONNECTION TO 5th RING ROAD (IF-0+000 to 1+258) ] | 2027-07-21 → 2027-06-09 (-42d) | 2027-08-07 → 2027-06-26 (-42d) |  | -36d → 0d |
| 3 | **RAMP-2-IN (0+000 to 0+400)** |  | 2027-05-10 → 2027-05-20 (+10d) |  |  |
| 3 | **ROADS** |  | 2027-01-28 → 2027-01-23 (-5d) |  |  |
| 2 | **ASPHALT WORKS** |  | 2027-01-28 → 2027-01-03 (-25d) |  |  |

| ID | Task | Start | Finish | Complete | Total float |
| --- | --- | --- | --- | --- | --- |
| MKH2-02-003-CN-1420 | Tack coat at RAMP-2-IN | 2026-12-21 → 2026-11-25 (-26d) | 2027-01-05 → 2026-12-10 (-26d) |  | 6d → 28d |
| MKH2-02-003-CN-1470 | Bituminous concrete wearing course, RAMP-2-IN | 2027-01-06 → 2026-12-12 (-25d) | 2027-01-28 → 2027-01-03 (-25d) |  | 6d → 28d |
| 4 | **ELECTRICAL WORKS (MKH2-01-007-DAR-TS8-0-SL-DWG-1010-00)** |  | 2027-05-10 → 2027-05-20 (+10d) |  |  |
| 1 | **LV CABLES** |  | 2027-02-23 → 2027-01-27 (-27d) |  |  |
| MKH2-02-003-CN-1750 | Installation of Low Voltage Cables -RAMP-2 in |  | 2027-02-23 → 2027-01-27 (-27d) | 30% → 40% | 6d → 28d |
| 3 | **STREET LIGHTING NETWORK INCLUDING ALL** |  | 2027-04-15 → 2027-03-21 (-25d) |  |  |
| MKH2-02-003-CN-1790 | Installation of Lighting Poles 1-Arms In RAMP-2 IN |  | 2027-03-23 → 2027-02-21 (-30d) | 10% → 20% | 6d → 28d |
| MKH2-02-003-CN-1830 | Installation of Lighting Luminaires for 1-Arms RAMP-02 IN | 2027-03-24 → 2027-02-23 (-29d) | 2027-04-15 → 2027-03-21 (-25d) |  | 6d → 28d |
| 4 | **EARTHING** | 2027-04-17 → 2027-04-24 (+7d) | 2027-05-10 → 2027-05-20 (+10d) |  |  |
| MKH2-02-003-CN-1870 | Installation of Earthing System for RAMP-02 IN | 2027-04-17 → 2027-04-24 (+7d) | 2027-05-10 → 2027-05-20 (+10d) |  | 6d → 0d |
| 4 | **RAMP-2-OUT (0+398 to 0+000)** |  | 2027-03-24 → 2027-02-20 (-32d) |  |  |
| 3 | **ROADS** |  | 2027-03-24 → 2027-02-15 (-37d) |  |  |
| 2 | **ASPHALT WORKS** |  | 2027-02-14 → 2027-01-19 (-26d) |  |  |
| MKH2-02-003-CN-1430 | Tack coat at RAMP-2-OUT | 2027-01-06 → 2026-12-12 (-25d) | 2027-01-21 → 2026-12-27 (-25d) |  | 26d → 54d |
| MKH2-02-003-CN-1480 | Bituminous concrete wearing course, RAMP-2-OUT | 2027-01-23 → 2026-12-28 (-26d) | 2027-02-14 → 2027-01-19 (-26d) |  | 32d → 54d |
| FIN | **FINISHING WORKS** | 2027-01-23 → 2026-11-18 (-66d) | 2027-03-24 → 2027-02-15 (-37d) |  |  |
| MKH2-02-003-CN-1530 | Installation of Precast Concrete curb at RAMP-2-OUT | 2027-01-23 → 2026-11-18 A (-66d) | 2027-02-04 → 2027-01-03 (-32d) | 0% → 50% | 26d → 54d |
| MKH2-02-003-CN-1570 | 60mm thick - Interlocking block pavers for sidewalk/footpath RAMP-2-OUT | 2027-02-06 → 2027-01-04 (-33d) | 2027-02-21 → 2027-01-19 (-33d) |  | 26d → 54d |
| MKH2-02-003-CN-1610 | Pavement markings [Road-4 -RAMP-2-OUT (0+398 to 0+000) ] | 2027-02-23 → 2027-01-20 (-34d) | 2027-03-07 → 2027-02-01 (-34d) |  | 26d → 54d |
| MKH2-02-003-CN-1660 | Installation of Traffic Signs [Road-4 -RAMP-2-OUT (0+398 to 0+000) ] | 2027-03-08 → 2027-02-02 (-34d) | 2027-03-24 → 2027-02-15 (-37d) |  | 26d → 54d |
| 1 | **LV CABLES** |  | 2026-12-12 → 2026-12-19 (+7d) |  |  |
| MKH2-02-003-CN-1760 | Installation of Low Voltage Cables -RAMP-2 out |  | 2026-12-12 → 2026-12-19 (+7d) | 30% → 40% | 87d → 81d |
| MKH2-02-003-CN-1800 | Installation of Lighting Poles 1-Arms In RAMP-2 OUT |  | 2027-01-03 → 2027-01-10 (+7d) | 30% → 40% | 87d → 81d |
| DEM | **DEMOLISHING WORKS** |  | 2026-12-03 → 2026-11-21 (-12d) |  |  |
| DEMO | **DEMOLISHING Works** |  | 2026-12-03 → 2026-11-21 (-12d) |  |  |
| MKH2-02-003-CN-1010 | Milling of the existing asphalt layer |  | 2026-12-03 → 2026-11-21 A (-12d) | 10% → 100% | 106d → none |
| OPEN | **Open Drain Channels** |  | 2027-06-30 → 2027-07-07 (+7d) |  |  |
| Section 7 | **Near Ramp- In location from Ch 0+000 to Ch 0+230** |  | 2027-06-30 → 2027-07-07 (+7d) |  |  |
| MKH2-02-003-CN-2170 | Excavation for Channel |  | 2027-02-09 → 2027-02-16 (+7d) |  | 58d → 52d |
| MKH2-02-003-CN-2240 | Embankment for Channel Berms |  | 2027-03-07 → 2027-03-17 (+10d) |  | 58d → 52d |
| MKH2-02-003-CN-2310 | Riprap Grouting |  | 2027-06-30 → 2027-07-07 (+7d) |  | -14d → -20d |
| T & C | **TESTING & COMMISSIONING** |  | 2027-08-14 → 2027-07-19 (-26d) |  |  |
| MKH2-02-003-TC-1000 | Test for Electrical Networks |  | 2027-06-13 → 2027-06-20 (+7d) |  | 8d → 2d |
| MKH2-02-003-TC-1010 | Test for Box Culvert |  | 2027-03-31 → 2027-02-23 (-36d) | 40% → 50% | 26d → 54d |
| MKH2-02-003-TC-1020 | Test for Open Drain channel |  | 2027-07-12 → 2027-07-19 (+7d) | 40% → 50% | -14d → -20d |
| MKH2-02-003-TC-1030 | Test for Roads |  | 2027-08-14 → 2027-07-03 (-42d) | 40% → 50% | -36d → 0d |
| PRO C & DEM | **PROJECT CLOSEOUT & DEMOBILIZATION** | 2027-04-01 → 2027-02-24 (-36d) | 2027-09-26 → 2027-09-06 (-20d) |  |  |
| 1 | **As-Built DWGs** | 2027-04-01 → 2027-02-24 (-36d) | 2027-08-30 → 2027-08-11 (-19d) |  |  |
| 1 | **As-Built DWGs Submittals** | 2027-04-01 → 2027-02-24 (-36d) | 2027-08-22 → 2027-07-31 (-22d) |  |  |
| MKH2-02-003-CO-1050 | As-Built DWGs Submittal for Box Culvert | 2027-04-01 → 2027-02-24 (-36d) | 2027-04-08 → 2027-03-03 (-36d) |  | 26d → 54d |
| MKH2-02-003-CO-1040 | As-Built DWGs Submittal for Electrical Networks | 2027-06-14 → 2027-06-21 (+7d) | 2027-06-21 → 2027-06-28 (+7d) |  | 8d → 2d |
| MKH2-02-003-CO-1070 | As-Built DWGs Submittal for Roads | 2027-08-15 → 2027-07-08 (-38d) | 2027-08-22 → 2027-07-15 (-38d) |  | -36d → -4d |
| MKH2-02-003-CO-1060 | As-Built DWGs Submittal for Open Drain channel | 2027-07-13 → 2027-07-20 (+7d) | 2027-07-24 → 2027-07-31 (+7d) |  | -14d → -20d |
| 2 | **As-Built DWGs Approvals** | 2027-04-10 → 2027-03-04 (-37d) | 2027-08-30 → 2027-08-11 (-19d) |  |  |
| MKH2-02-003-CO-1090 | As-Built DWGs Approval for Box Culvert | 2027-04-10 → 2027-03-04 (-37d) | 2027-04-17 → 2027-03-15 (-33d) |  | 26d → 54d |
| MKH2-02-003-CO-1080 | As-Built DWGs Approval for Electrical Networks | 2027-06-22 → 2027-06-29 (+7d) | 2027-07-01 → 2027-07-08 (+7d) |  | 8d → 2d |
| MKH2-02-003-CO-1110 | As-Built DWGs Approval for Roads | 2027-08-23 → 2027-07-17 (-37d) | 2027-08-30 → 2027-07-24 (-37d) |  | -36d → -4d |
| MKH2-02-003-CO-1100 | As-Built DWGs Approval for Open Drain channel | 2027-07-25 → 2027-08-01 (+7d) | 2027-08-04 → 2027-08-11 (+7d) |  | -14d → -20d |
| 2 | **Demobilization** | 2027-08-31 → 2027-08-12 (-19d) | 2027-09-26 → 2027-09-06 (-20d) |  |  |
| MKH2-02-003-CO-1000 | Demobilization of Manpower | 2027-08-31 → 2027-08-12 (-19d) | 2027-09-05 → 2027-08-17 (-19d) |  | -36d → -20d |
| MKH2-02-003-CO-1010 | Removal of Equipment from Site | 2027-09-06 → 2027-08-18 (-19d) | 2027-09-11 → 2027-08-23 (-19d) |  | -36d → -20d |
| MKH2-02-003-CO-1020 | Site Clean Up | 2027-09-12 → 2027-08-24 (-19d) | 2027-09-16 → 2027-08-29 (-18d) |  | -36d → -20d |
| MKH2-02-003-CO-1030 | Restoration of Ground Surfaces | 2027-09-18 → 2027-08-30 (-19d) | 2027-09-26 → 2027-09-06 (-20d) |  | -36d → -20d |
