# ????? ????? ????? ?????? ??????? ???????? ???????? ???????? ??????? ???? ??????? (????????)

How a schedule from Primavera P6 changed from version to version. A marks actual dates.

## Version 1 (data date 2026-06-25, saved 2026-07-12, file 1. MKH2-02-004-Baseline Programme.xer)

| ID | WBS | Task | Duration | Start | Finish | Predecessors | Total float |
| --- | --- | --- | --- | --- | --- | --- | --- |
|  | 1 | **Key Milestones** |  | 2026-06-25 | 2027-08-24 |  |  |
|  | 1 | **General Milestone** |  | 2026-06-25 | 2027-08-24 |  |  |
| MKH2-02-004-KM-1000 |  | Project Commencement Date | 0d | 2026-06-25 | 2026-06-25 |  | 0d |
| MKH2-02-004-KM-1010 |  | Project Completion Date | 0d | 2027-08-24 | 2027-08-24 | MKH2-02-004-KM-1070 FF, MKH2-02-004-DEM-1040 FF | 0d |
|  | 2 | **Contractual Milestone** |  | 2026-07-12 | 2027-08-24 |  |  |
|  | 1 | **Engineering & Mobilization** |  | 2026-07-12 | 2026-08-23 |  |  |
| MKH2-02-004-KM-1030 |  | Submission of the Work Plan (Baseline Programme) | 0d | 2026-07-12 | 2026-07-12 | MKH2-02-004-MOB-1120 FF | 0d |
| MKH2-02-004-KM-1020 |  | Completion of Mobilization | 0d | 2026-07-23 | 2026-07-23 | MKH2-02-004-MOB-1040 FF, MKH2-02-004-MOB-1190 FF, MKH2-02-004-MOB-1200 FF, MKH2-02-004-MOB-1210 FF, MKH2-02-004-MOB-1220 FF, MKH2-02-004-MOB-1230 FF, MKH2-02-004-MOB-1180 FF | 0d |
| MKH2-02-004-KM-1040 |  | Submission and Approval of Drawings and Materials | 0d | 2026-08-23 | 2026-08-23 | MKH2-02-004-SHD-1200 FF, MKH2-02-004-SHD-1190 FF, MKH2-02-004-SHD-1180 FF, MKH2-02-004-SHD-1170 FF, MKH2-02-004-SHD-1160 FF, MKH2-02-004-SHD-1150 FF, MKH2-02-004-SHD-1140 FF, MKH2-02-004-SHD-1130 FF, MKH2-02-004-SHD-1230 FF, MKH2-02-004-SHD-1220 FF, MKH2-02-004-SHD-1210 FF, MKH2-02-004-MTS-1010 FF, MKH2-02-004-MTS-1030 FF, MKH2-02-004-MTS-1050 FF, MKH2-02-004-MTS-1070 FF, MKH2-02-004-MTS-1090 FF, MKH2-02-004-MTS-1110 FF, MKH2-02-004-MTS-1130 FF, MKH2-02-004-MTS-1170 FF, MKH2-02-004-MTS-1150 FF, MKH2-02-004-SHD-1120 FF | 18d |
|  | 2 | **Construction** |  | 2027-02-24 | 2027-08-24 |  |  |
| MKH2-02-004-KM-1060 |  | Completion of Storm Water Drainage | 0d | 2027-02-24 | 2027-02-24 | MKH2-02-004-CNS-3340 FF | 15d |
| MKH2-02-004-KM-1050 |  | Completion of Road Works | 0d | 2027-04-24 | 2027-04-24 | MKH2-02-004-CNS-1480 FF | 15d |
| MKH2-02-004-KM-1070 |  | Completion of Entire Project | 0d | 2027-08-24 | 2027-08-24 | MKH2-02-004-DEM-1040 FF | 0d |
|  | 2 | **Mobilization** |  | 2026-06-25 | 2026-07-23 |  |  |
|  | 2 | **Site Facilities & Offices** |  | 2026-06-25 | 2026-07-23 |  |  |
| MKH2-02-004-MOB-1000 |  | Site Layout Plan | 5d | 2026-06-25 | 2026-06-30 | MKH2-02-004-KM-1000 SS | 0d |
| MKH2-02-004-MOB-1010 |  | Clear & Grub for Offices & Access Road | 4d | 2026-07-01 | 2026-07-05 | MKH2-02-004-MOB-1000 | 0d |
| MKH2-02-004-MOB-1020 |  | Construct Site Access Roads | 3d | 2026-07-01 | 2026-07-04 | MKH2-02-004-MOB-1000 | 0d |
| MKH2-02-004-MOB-1040 |  | Construct Site Offices & Storage | 17d | 2026-07-05 | 2026-07-23 | MKH2-02-004-MOB-1020 | 0d |
| MKH2-02-004-MOB-1050 |  | Install Project Signs | 10d | 2026-07-05 | 2026-07-15 | MKH2-02-004-MOB-1020 | 0d |
| MKH2-02-004-MOB-1030 |  | Construct Temporary Fence | 7d | 2026-07-06 | 2026-07-13 | MKH2-02-004-MOB-1010 | 0d |
| MKH2-02-004-MOB-1060 |  | Install Site Facilities | 4d | 2026-07-14 | 2026-07-18 | MKH2-02-004-MOB-1030 | 0d |
| MKH2-02-004-MOB-1070 |  | Electrical Works & Connections | 7d | 2026-07-14 | 2026-07-21 | MKH2-02-004-MOB-1030 | 2d |
| MKH2-02-004-MOB-1080 |  | Construct Parking Sheds | 7d | 2026-07-14 | 2026-07-21 | MKH2-02-004-MOB-1030 | 2d |
| MKH2-02-004-MOB-1090 |  | Mobilization of Equipment | 7d | 2026-07-16 | 2026-07-23 | MKH2-02-004-MOB-1050 | 0d |
| MKH2-02-004-MOB-1100 |  | Mobilization of Manpower | 5d | 2026-07-19 | 2026-07-23 | MKH2-02-004-MOB-1060 | 0d |
|  | 4 | **Topographic Survey** |  | 2026-06-25 | 2026-07-18 |  |  |
| MKH2-02-004-MOB-1240 |  | Site Survey Works | 20d | 2026-06-25 | 2026-07-18 | MKH2-02-004-KM-1000 SS | 1d |
|  | 1 | **Permit's and Authority Approvals** |  | 2026-06-25 | 2026-07-18 |  |  |
| MKH2-02-004-MOB-1110 |  | Excavation & Backfilling Permit | 20d | 2026-06-25 | 2026-07-18 | MKH2-02-004-KM-1000 SS | 5d |
|  | 3 | **Preliminary Submittals** |  | 2026-07-05 | 2026-07-23 |  |  |
|  | 1 | **Preparation and Submittal by Contractor's** |  | 2026-07-05 | 2026-07-12 |  |  |
| MKH2-02-004-MOB-1120 |  | Preparation and Submittal of Detailed Work Order Programme (baseline schedule) | 7d | 2026-07-05 | 2026-07-12 | MKH2-02-004-MOB-1020 | 0d |
| MKH2-02-004-MOB-1130 |  | Preparation and Submittal of Project Execution Plan | 7d | 2026-07-05 | 2026-07-12 | MKH2-02-004-MOB-1020 | 0d |
| MKH2-02-004-MOB-1140 |  | Preparation and Submittal of Quality Management Plan | 7d | 2026-07-05 | 2026-07-12 | MKH2-02-004-MOB-1020 | 0d |
| MKH2-02-004-MOB-1150 |  | Preparation and Submittal of Safety Management Plan | 7d | 2026-07-05 | 2026-07-12 | MKH2-02-004-MOB-1020 | 0d |
| MKH2-02-004-MOB-1160 |  | Preparation and Submittal of Organization Chart | 7d | 2026-07-05 | 2026-07-12 | MKH2-02-004-MOB-1020 | 0d |
| MKH2-02-004-MOB-1170 |  | Preparation and Submittal of Communication Plan | 7d | 2026-07-05 | 2026-07-12 | MKH2-02-004-MOB-1020 | 0d |
|  | 2 | **Approval by the Employer's** |  | 2026-07-13 | 2026-07-23 |  |  |
| MKH2-02-004-MOB-1180 |  | Approval of Detailed Work Order Programme (baseline schedule) | 10d | 2026-07-13 | 2026-07-23 | MKH2-02-004-MOB-1120, MKH2-02-004-KM-1030 | 0d |
| MKH2-02-004-MOB-1190 |  | Approval of Project Execution Plan | 10d | 2026-07-13 | 2026-07-23 | MKH2-02-004-MOB-1130 | 0d |
| MKH2-02-004-MOB-1200 |  | Approval of Quality Management Plan | 10d | 2026-07-13 | 2026-07-23 | MKH2-02-004-MOB-1140 | 0d |
| MKH2-02-004-MOB-1210 |  | Approval of Safety Management Plan | 10d | 2026-07-13 | 2026-07-23 | MKH2-02-004-MOB-1150 | 0d |
| MKH2-02-004-MOB-1220 |  | Approval of Organization Chart | 10d | 2026-07-13 | 2026-07-23 | MKH2-02-004-MOB-1160 | 0d |
| MKH2-02-004-MOB-1230 |  | Approval of Comminumcation Plan | 10d | 2026-07-13 | 2026-07-23 | MKH2-02-004-MOB-1170 | 0d |
|  | 3 | **Engineering** |  | 2026-07-01 | 2026-08-23 |  |  |
|  | 2 | **Shop Drawings** |  | 2026-07-19 | 2026-08-17 |  |  |
|  | 1 | **Shop Drawings Submittal** |  | 2026-07-19 | 2026-08-05 |  |  |
|  | 1 | **Shop Drawings Submittal for Road Works** |  | 2026-07-19 | 2026-08-05 |  |  |
| MKH2-02-004-SHD-1000 |  | Shop DWG Submittal for Topographic Survey | 8d | 2026-07-19 | 2026-07-27 | MKH2-02-004-MOB-1240 | 23d |
| MKH2-02-004-SHD-1010 |  | Shop DWG Submittal for Road Layout Plan | 8d | 2026-07-28 | 2026-08-05 | MKH2-02-004-SHD-1000 | 23d |
| MKH2-02-004-SHD-1020 |  | Shop DWG Submittal for Typical Cross Section | 8d | 2026-07-28 | 2026-08-05 | MKH2-02-004-SHD-1000 | 23d |
| MKH2-02-004-SHD-1030 |  | Shop DWG Submittal for Road Setting Out | 8d | 2026-07-28 | 2026-08-05 | MKH2-02-004-SHD-1000 | 23d |
| MKH2-02-004-SHD-1040 |  | Shop DWG Submittal for Road Profiles | 8d | 2026-07-28 | 2026-08-05 | MKH2-02-004-SHD-1000 | 23d |
| MKH2-02-004-SHD-1050 |  | Shop DWG Submittal for Grading Layout Plan | 8d | 2026-07-28 | 2026-08-05 | MKH2-02-004-SHD-1000 | 23d |
| MKH2-02-004-SHD-1060 |  | Shop DWG Submittal for Curb Setting Out Points | 8d | 2026-07-28 | 2026-08-05 | MKH2-02-004-SHD-1000 | 23d |
| MKH2-02-004-SHD-1070 |  | Shop DWG Submittal for Signing & Marking Layout Plan | 8d | 2026-07-28 | 2026-08-05 | MKH2-02-004-SHD-1000 | 23d |
| MKH2-02-004-SHD-1080 |  | Shop DWG Submittal for Standards Details | 8d | 2026-07-28 | 2026-08-05 | MKH2-02-004-SHD-1000 | 23d |
|  | 6 | **Shop Drawings Submittal for Stormwater Network** |  | 2026-07-19 | 2026-07-27 |  |  |
| MKH2-02-004-SHD-1090 |  | Shop DWG Submittal for Stormwater Plans | 8d | 2026-07-19 | 2026-07-27 | MKH2-02-004-MOB-1240 | 6d |
| MKH2-02-004-SHD-1100 |  | Shop DWG Submittal for Stormwater Profiles | 8d | 2026-07-19 | 2026-07-27 | MKH2-02-004-MOB-1240 | 1d |
| MKH2-02-004-SHD-1110 |  | Shop DWG Submittal for Stormwater Standard Details | 8d | 2026-07-19 | 2026-07-27 | MKH2-02-004-MOB-1240 | 6d |
|  | 2 | **Shop Drawings Approval** |  | 2026-07-28 | 2026-08-17 |  |  |
|  | 1 | **Shop Drawings Approval for Road Works** |  | 2026-07-28 | 2026-08-17 |  |  |
| MKH2-02-004-SHD-1120 |  | Shop DWG Approval for Topographic Survey | 10d | 2026-07-28 | 2026-08-08 | MKH2-02-004-SHD-1000 | 31d |
| MKH2-02-004-SHD-1130 |  | Shop DWG Approval for Road Layout Plan | 10d | 2026-08-06 | 2026-08-17 | MKH2-02-004-SHD-1010 | 23d |
| MKH2-02-004-SHD-1140 |  | Shop DWG Approval for Typical Cross Section | 10d | 2026-08-06 | 2026-08-17 | MKH2-02-004-SHD-1020 | 23d |
| MKH2-02-004-SHD-1150 |  | Shop DWG Approval for Road Setting Out | 10d | 2026-08-06 | 2026-08-17 | MKH2-02-004-SHD-1030 | 23d |
| MKH2-02-004-SHD-1160 |  | Shop DWG Approval for Road Profiles | 10d | 2026-08-06 | 2026-08-17 | MKH2-02-004-SHD-1040 | 23d |
| MKH2-02-004-SHD-1170 |  | Shop DWG Approval for Grading Layout Plan | 10d | 2026-08-06 | 2026-08-17 | MKH2-02-004-SHD-1050 | 23d |

| ID | WBS | Task | Duration | Start | Finish | Predecessors | Total float |
| --- | --- | --- | --- | --- | --- | --- | --- |
| MKH2-02-004-SHD-1180 |  | Shop DWG Approval for Curb Setting Out Points | 10d | 2026-08-06 | 2026-08-17 | MKH2-02-004-SHD-1060 | 23d |
| MKH2-02-004-SHD-1190 |  | Shop DWG Approval for Signing & Marking Layout Plan | 10d | 2026-08-06 | 2026-08-17 | MKH2-02-004-SHD-1070 | 23d |
| MKH2-02-004-SHD-1200 |  | Shop DWG Approval for Standards Details | 10d | 2026-08-06 | 2026-08-17 | MKH2-02-004-SHD-1080, MKH2-02-004-SHD-1090, MKH2-02-004-SHD-1100, MKH2-02-004-SHD-1110 | 23d |
|  | 6 | **Shop Drawings Approval for Storm Network** |  | 2026-07-28 | 2026-08-08 |  |  |
| MKH2-02-004-SHD-1210 |  | Shop DWG Approval for Stormwater Plans | 10d | 2026-07-28 | 2026-08-08 | MKH2-02-004-SHD-1090 | 6d |
| MKH2-02-004-SHD-1220 |  | Shop DWG Approval for Stormwater Profiles | 10d | 2026-07-28 | 2026-08-08 | MKH2-02-004-SHD-1100 | 1d |
| MKH2-02-004-SHD-1230 |  | Shop DWG Approval for Stormwater Standard Details | 10d | 2026-07-28 | 2026-08-08 | MKH2-02-004-SHD-1110 | 6d |
|  | 3 | **Method Statements** |  | 2026-07-01 | 2026-08-11 |  |  |
|  | 1 | **Method Statements Submittal** |  | 2026-07-01 | 2026-07-30 |  |  |
| MKH2-02-004-MST-1000 |  | Preparation & Submission of Method Statement for Earthworks | 8d | 2026-07-01 | 2026-07-09 | MKH2-02-004-MOB-1000 | 2d |
| MKH2-02-004-MST-1010 |  | Preparation & Submission of Method Statement for Concrete Works | 8d | 2026-07-11 | 2026-07-19 | MKH2-02-004-MST-1000 | 22d |
| MKH2-02-004-MST-1020 |  | Preparation & Submission of Method Statement for Asphalt | 10d | 2026-07-20 | 2026-07-30 | MKH2-02-004-MST-1010 | 28d |
|  | 2 | **Method Statements Approval** |  | 2026-07-11 | 2026-08-11 |  |  |
| MKH2-02-004-MST-1030 |  | Approval of Method Statement for Earthworks | 10d | 2026-07-11 | 2026-07-21 | MKH2-02-004-MST-1000 | 2d |
| MKH2-02-004-MST-1040 |  | Approval of Method Statement for Concrete Works | 10d | 2026-07-20 | 2026-07-30 | MKH2-02-004-MST-1010 | 22d |
| MKH2-02-004-MST-1050 |  | Approval of Method Statement for Asphalt | 10d | 2026-08-01 | 2026-08-11 | MKH2-02-004-MST-1020 | 28d |
|  | 4 | **Pre-qualification and Material** |  | 2026-07-06 | 2026-08-23 |  |  |
|  | 2 | **Pre-qualification** |  | 2026-07-06 | 2026-08-04 |  |  |
|  | 1 | **Road Works - Civil** |  | 2026-07-19 | 2026-08-04 |  |  |
|  | 4 | **Aggregate Base Course** |  | 2026-07-19 | 2026-08-04 |  |  |
| MKH2-02-004-PRQ-1000 |  | Pre-Qualification Submittal for Aggregate Base Cource | 5d | 2026-07-19 | 2026-07-23 | MKH2-02-004-MOB-1240 | 18d |
| MKH2-02-004-PRQ-1010 |  | Pre-Qualification Approval for Aggregate Base Cource | 10d | 2026-07-25 | 2026-08-04 | MKH2-02-004-PRQ-1000 | 18d |
|  | 5 | **Bituminous Base Course** |  | 2026-07-19 | 2026-08-04 |  |  |
| MKH2-02-004-PRQ-1020 |  | Pre-Qualification Submittal for Bituminous Base Cource | 5d | 2026-07-19 | 2026-07-23 | MKH2-02-004-PRQ-1000 SS | 18d |
| MKH2-02-004-PRQ-1030 |  | Pre-Qualification Approval for Bituminous Base Cource | 10d | 2026-07-25 | 2026-08-04 | MKH2-02-004-PRQ-1020 | 18d |
|  | 7 | **Precast Concrete Kerb** |  | 2026-07-19 | 2026-08-04 |  |  |
| MKH2-02-004-PRQ-1040 |  | Pre-Qualification Submittal for Precast Concrete Kerb | 5d | 2026-07-19 | 2026-07-23 | MKH2-02-004-PRQ-1020 SS | 18d |
| MKH2-02-004-PRQ-1050 |  | Pre-Qualification Approval for Precast Concrete Kerb | 10d | 2026-07-25 | 2026-08-04 | MKH2-02-004-PRQ-1040, MKH2-02-004-MST-1040 FF | 18d |
|  | 8 | **Interlocking Block Pavers** |  | 2026-07-19 | 2026-08-04 |  |  |
| MKH2-02-004-PRQ-1060 |  | Pre-Qualification Submittal for Interlocking Block Pavers | 5d | 2026-07-19 | 2026-07-23 | MKH2-02-004-PRQ-1040 SS | 18d |
| MKH2-02-004-PRQ-1070 |  | Pre-Qualification Approval for Interlocking Block Pavers | 10d | 2026-07-25 | 2026-08-04 | MKH2-02-004-PRQ-1060 | 18d |
|  | 9 | **Pavement Markings** |  | 2026-07-19 | 2026-08-04 |  |  |
| MKH2-02-004-PRQ-1080 |  | Pre-Qualification Submittal for Pavement Markings | 5d | 2026-07-19 | 2026-07-23 | MKH2-02-004-PRQ-1060 SS | 18d |
| MKH2-02-004-PRQ-1090 |  | Pre-Qualification Approval for Pavement Markings | 10d | 2026-07-25 | 2026-08-04 | MKH2-02-004-PRQ-1080 | 18d |
|  | 10 | **Traffic Signs** |  | 2026-07-19 | 2026-08-04 |  |  |
| MKH2-02-004-PRQ-1100 |  | Pre-Qualification Submittal for Traffic Signs | 5d | 2026-07-19 | 2026-07-23 | MKH2-02-004-PRQ-1060 SS | 18d |
| MKH2-02-004-PRQ-1110 |  | Pre-Qualification Approval for Traffic Signs | 10d | 2026-07-25 | 2026-08-04 | MKH2-02-004-PRQ-1100 | 18d |
|  | 7 | **Storm Network** |  | 2026-07-06 | 2026-07-28 |  |  |
|  | 2 | **GRP Pipes** |  | 2026-07-06 | 2026-07-22 |  |  |
| MKH2-02-004-PRQ-1120 |  | Pre-Qualification Submittal for GRP Pipe | 5d | 2026-07-06 | 2026-07-11 | MKH2-02-004-MOB-1010 | 0d |
| MKH2-02-004-PRQ-1130 |  | Pre-Qualification Approval for GRP Pipe | 10d | 2026-07-12 | 2026-07-22 | MKH2-02-004-PRQ-1120 | 0d |
|  | 1 | **Catch Basin** |  | 2026-07-06 | 2026-07-22 |  |  |
| MKH2-02-004-PRQ-1160 |  | Pre-Qualification Submittal for Catch Basin | 5d | 2026-07-06 | 2026-07-11 | MKH2-02-004-MOB-1010 | 27d |
| MKH2-02-004-PRQ-1170 |  | Pre-Qualification Approval for Catch Basin | 10d | 2026-07-12 | 2026-07-22 | MKH2-02-004-PRQ-1160 | 27d |
|  | 6 | **Inlet Manholes** |  | 2026-07-12 | 2026-07-28 |  |  |
| MKH2-02-004-PRQ-1140 |  | Pre-Qualification Submittal for Inlet Manholes | 5d | 2026-07-12 | 2026-07-16 | MKH2-02-004-PRQ-1120, MKH2-02-004-PRQ-1120 FF | 14d |
| MKH2-02-004-PRQ-1150 |  | Pre-Qualification Approval for Inlet Manholes | 10d | 2026-07-18 | 2026-07-28 | MKH2-02-004-PRQ-1140 | 14d |
|  | 3 | **Material Submittal** |  | 2026-07-23 | 2026-08-23 |  |  |
|  | 1 | **Road Works - Civil** |  | 2026-08-05 | 2026-08-23 |  |  |
|  | 4 | **Aggregate Base Course** |  | 2026-08-05 | 2026-08-23 |  |  |
| MKH2-02-004-MTS-1000 |  | Design Submittal for Aggregate Base Cource | 6d | 2026-08-05 | 2026-08-11 | MKH2-02-004-PRQ-1010 | 18d |
| MKH2-02-004-MTS-1010 |  | Design Approval for Aggregate Base Cource | 10d | 2026-08-12 | 2026-08-23 | MKH2-02-004-MTS-1000 | 18d |
|  | 5 | **Bituminous Base Course** |  | 2026-08-05 | 2026-08-23 |  |  |
| MKH2-02-004-MTS-1020 |  | Design Submittal for Bituminous Base Cource | 6d | 2026-08-05 | 2026-08-11 | MKH2-02-004-PRQ-1030 | 18d |
| MKH2-02-004-MTS-1030 |  | Design Approval for Bituminous Base Cource | 10d | 2026-08-12 | 2026-08-23 | MKH2-02-004-MTS-1020 | 18d |
|  | 7 | **Precast Concrete Kerb** |  | 2026-08-05 | 2026-08-23 |  |  |
| MKH2-02-004-MTS-1040 |  | Material Submittal for Precast Concrete Kerb | 6d | 2026-08-05 | 2026-08-11 | MKH2-02-004-PRQ-1050 | 18d |
| MKH2-02-004-MTS-1050 |  | Material Approval for Precast Concrete Kerb | 10d | 2026-08-12 | 2026-08-23 | MKH2-02-004-MTS-1040 | 18d |
|  | 8 | **Interlocking Block Pavers** |  | 2026-08-05 | 2026-08-23 |  |  |
| MKH2-02-004-MTS-1060 |  | Material Submittal for Interlocking Block Pavers | 6d | 2026-08-05 | 2026-08-11 | MKH2-02-004-PRQ-1070 | 18d |
| MKH2-02-004-MTS-1070 |  | Material Approval for Interlocking Block Pavers | 10d | 2026-08-12 | 2026-08-23 | MKH2-02-004-MTS-1060 | 18d |
|  | 9 | **Pavement Markings** |  | 2026-08-05 | 2026-08-23 |  |  |
| MKH2-02-004-MTS-1080 |  | Material Submittal for Pavement Markings | 6d | 2026-08-05 | 2026-08-11 | MKH2-02-004-PRQ-1090 | 18d |
| MKH2-02-004-MTS-1090 |  | Material Approval for Pavement Markings | 10d | 2026-08-12 | 2026-08-23 | MKH2-02-004-MTS-1080 | 18d |
|  | 10 | **Traffic Signs** |  | 2026-08-05 | 2026-08-23 |  |  |
| MKH2-02-004-MTS-1100 |  | Material Submittal for Traffic Signs | 6d | 2026-08-05 | 2026-08-11 | MKH2-02-004-PRQ-1110 | 18d |
| MKH2-02-004-MTS-1110 |  | Material Approval for Traffic Signs | 10d | 2026-08-12 | 2026-08-23 | MKH2-02-004-MTS-1100 | 18d |
|  | 7 | **Storm Network** |  | 2026-07-23 | 2026-08-15 |  |  |
|  | 2 | **GRP Pipes** |  | 2026-07-23 | 2026-08-09 |  |  |
| MKH2-02-004-MTS-1120 |  | Material Submittal for GRP Pipe | 5d | 2026-07-23 | 2026-07-28 | MKH2-02-004-PRQ-1130 | 0d |

| ID | WBS | Task | Duration | Start | Finish | Predecessors | Total float |
| --- | --- | --- | --- | --- | --- | --- | --- |
| MKH2-02-004-MTS-1130 |  | Material Approval for GRP Pipe | 10d | 2026-07-29 | 2026-08-09 | MKH2-02-004-MTS-1120 | 0d |
|  | 1 | **Catch Basin** |  | 2026-07-23 | 2026-08-09 |  |  |
| MKH2-02-004-MTS-1160 |  | Material Submittal for Catch Basin | 5d | 2026-07-23 | 2026-07-28 | MKH2-02-004-PRQ-1170 | 27d |
| MKH2-02-004-MTS-1170 |  | Material Approval for Catch Basin | 10d | 2026-07-29 | 2026-08-09 | MKH2-02-004-MTS-1160 | 27d |
|  | 6 | **Inlet Manholes** |  | 2026-07-29 | 2026-08-15 |  |  |
| MKH2-02-004-MTS-1140 |  | Material Submittal for Inlet Manholes | 5d | 2026-07-29 | 2026-08-03 | MKH2-02-004-PRQ-1150 | 14d |
| MKH2-02-004-MTS-1150 |  | Material Approval for Inlet Manholes | 10d | 2026-08-04 | 2026-08-15 | MKH2-02-004-MTS-1140 | 14d |
|  | 4 | **Procurement** |  | 2026-08-10 | 2026-11-30 |  |  |
|  | 1 | **Road Works - Civil** |  | 2026-08-24 | 2026-11-30 |  |  |
|  | 4 | **Aggregate Base Course** |  | 2026-08-24 | 2026-11-08 |  |  |
| MKH2-02-004-PRC-1000 |  | PO for Aggregate Base Course | 5d | 2026-08-24 | 2026-08-29 | MKH2-02-004-MTS-1010, MKH2-02-004-MST-1050, MKH2-02-004-KM-1040 | 18d |
| MKH2-02-004-PRC-1010 |  | Material Delivery for Aggregate Base Course-Stage 1 | 30d | 2026-08-30 | 2026-10-04 | MKH2-02-004-PRC-1000, MKH2-02-004-SHD-1200, MKH2-02-004-SHD-1130, MKH2-02-004-SHD-1140, MKH2-02-004-SHD-1150, MKH2-02-004-SHD-1160, MKH2-02-004-SHD-1170, MKH2-02-004-SHD-1180, MKH2-02-004-SHD-1190, MKH2-02-004-SHD-1120 | 18d |
| MKH2-02-004-PRC-1020 |  | Material Delivery for Aggregate Base Course-Stage 2 | 30d | 2026-10-05 | 2026-11-08 | MKH2-02-004-PRC-1010 | 18d |
|  | 5 | **Bituminous Base Course** |  | 2026-08-30 | 2026-11-25 |  |  |
| MKH2-02-004-PRC-1030 |  | PO for Bituminous Base Course | 5d | 2026-08-30 | 2026-09-03 | MKH2-02-004-MTS-1030, MKH2-02-004-PRC-1000 | 20d |
| MKH2-02-004-PRC-1040 |  | Material Delivery for Bituminous Base Course-Stage 1 | 35d | 2026-09-05 | 2026-10-15 | MKH2-02-004-PRC-1030 | 27d |
| MKH2-02-004-PRC-1050 |  | Material Delivery for Bituminous Base Course-Stage 2 | 35d | 2026-10-17 | 2026-11-25 | MKH2-02-004-PRC-1040 | 27d |
|  | 7 | **Precast Concrete Curb** |  | 2026-09-05 | 2026-11-19 |  |  |
| MKH2-02-004-PRC-1060 |  | PO for Precast Concrete Curb | 5d | 2026-09-05 | 2026-09-09 | MKH2-02-004-MTS-1050, MKH2-02-004-PRC-1030 | 20d |
| MKH2-02-004-PRC-1070 |  | Material Fabrication for Precast Concrete Curb | 30d | 2026-09-10 | 2026-10-15 | MKH2-02-004-PRC-1060 | 23d |
| MKH2-02-004-PRC-1080 |  | Material Delivery for Precast Concrete Curb | 30d | 2026-10-17 | 2026-11-19 | MKH2-02-004-PRC-1070 | 23d |
|  | 8 | **Interlocking Block Pavers** |  | 2026-09-10 | 2026-11-23 |  |  |
| MKH2-02-004-PRC-1090 |  | PO for Interlocking Block Pavers | 3d | 2026-09-10 | 2026-09-13 | MKH2-02-004-MTS-1070, MKH2-02-004-PRC-1060 | 20d |
| MKH2-02-004-PRC-1100 |  | Material Fabrication for Interlocking Block Pavers | 30d | 2026-09-14 | 2026-10-19 | MKH2-02-004-PRC-1090 | 20d |
| MKH2-02-004-PRC-1110 |  | Material Delivery for Interlocking Block Pavers | 30d | 2026-10-20 | 2026-11-23 | MKH2-02-004-PRC-1100 | 20d |
|  | 9 | **Pavement Markings** |  | 2026-09-14 | 2026-11-16 |  |  |
| MKH2-02-004-PRC-1120 |  | PO for Pavement Markings | 4d | 2026-09-14 | 2026-09-17 | MKH2-02-004-MTS-1090, MKH2-02-004-PRC-1090 | 23d |
| MKH2-02-004-PRC-1130 |  | Material Fabrication for Pavement Markings | 25d | 2026-09-19 | 2026-10-18 | MKH2-02-004-PRC-1120 | 26d |
| MKH2-02-004-PRC-1140 |  | Material Delivery for Pavement Markings | 25d | 2026-10-19 | 2026-11-16 | MKH2-02-004-PRC-1130 | 26d |
|  | 10 | **Traffic Signs** |  | 2026-09-19 | 2026-11-30 |  |  |
| MKH2-02-004-PRC-1150 |  | PO for Traffic Signs | 6d | 2026-09-19 | 2026-09-26 | MKH2-02-004-MTS-1110, MKH2-02-004-PRC-1120 | 23d |
| MKH2-02-004-PRC-1160 |  | Material Fabrication for Traffic Signs | 28d | 2026-09-27 | 2026-10-28 | MKH2-02-004-PRC-1150 | 23d |
| MKH2-02-004-PRC-1170 |  | Material Delivery for Traffic Signs | 28d | 2026-10-29 | 2026-11-30 | MKH2-02-004-PRC-1160 | 23d |
|  | 7 | **Stormwater Utilities** |  | 2026-08-10 | 2026-11-16 |  |  |
|  | 2 | **GRP Pipes** |  | 2026-08-10 | 2026-10-29 |  |  |
| MKH2-02-004-PRC-1180 |  | PO for GRP Pipes | 5d | 2026-08-10 | 2026-08-15 | MKH2-02-004-MTS-1130, MKH2-02-004-SHD-1220 | 0d |
| MKH2-02-004-PRC-1190 |  | Material Fabrication for GRP Pipes | 16d | 2026-08-16 | 2026-09-02 | MKH2-02-004-PRC-1180, MKH2-02-004-SHD-1230, MKH2-02-004-SHD-1090, MKH2-02-004-SHD-1210 | 0d |
| MKH2-02-004-PRC-1200 |  | Material Delivery for GRP Pipes-Stage 1 | 16d | 2026-09-03 | 2026-09-21 | MKH2-02-004-PRC-1190 | 0d |
| MKH2-02-004-PRC-1210 |  | Material Delivery for GRP Pipes-Stage 2 | 16d | 2026-09-22 | 2026-10-11 | MKH2-02-004-PRC-1200 | 0d |
| MKH2-02-004-PRC-1220 |  | Material Delivery for GRP Pipes-Stage 3 | 16d | 2026-10-12 | 2026-10-29 | MKH2-02-004-PRC-1210 | 0d |
|  | 7 | **Catch Basins** |  | 2026-08-10 | 2026-11-16 |  |  |
| MKH2-02-004-PRC-1270 |  | PO for Catch Basins | 4d | 2026-08-10 | 2026-08-13 | MKH2-02-004-MTS-1170 | 27d |
| MKH2-02-004-PRC-1280 |  | Material Fabrication for Catch Basins | 20d | 2026-08-15 | 2026-09-06 | MKH2-02-004-PRC-1270 | 27d |
| MKH2-02-004-PRC-1290 |  | Material Delivery for Catch Basins-Stage 1 | 20d | 2026-09-07 | 2026-09-30 | MKH2-02-004-PRC-1280 | 27d |
| MKH2-02-004-PRC-1300 |  | Material Delivery for Catch Basins-Stage 2 | 20d | 2026-10-01 | 2026-10-24 | MKH2-02-004-PRC-1290 | 29d |
| MKH2-02-004-PRC-1310 |  | Material Delivery for Catch Basins-Stage 3 | 20d | 2026-10-25 | 2026-11-16 | MKH2-02-004-PRC-1300 | 29d |
|  | 6 | **Inlet Manholes** |  | 2026-08-16 | 2026-10-31 |  |  |
| MKH2-02-004-PRC-1230 |  | PO for Inlet Manholes | 5d | 2026-08-16 | 2026-08-20 | MKH2-02-004-MTS-1150 | 14d |
| MKH2-02-004-PRC-1240 |  | Material Fabrication for Inlet Manholes | 20d | 2026-08-22 | 2026-09-13 | MKH2-02-004-PRC-1230 | 14d |
| MKH2-02-004-PRC-1250 |  | Material Delivery for Inlet Manholes-Stage 1 | 20d | 2026-09-14 | 2026-10-07 | MKH2-02-004-PRC-1240 | 14d |
| MKH2-02-004-PRC-1260 |  | Material Delivery for Inlet Manholes-Stage 2 | 20d | 2026-10-08 | 2026-10-31 | MKH2-02-004-PRC-1250 | 29d |
|  | 5 | **Construction** |  | 2026-07-25 | 2027-06-03 |  |  |
|  | 1 | **Roads** |  | 2026-07-25 | 2027-06-03 |  |  |
|  | 3 | **Local 17** |  | 2026-07-25 | 2027-03-01 |  |  |
|  | 1 | **Road Works** |  | 2026-07-25 | 2027-03-01 |  |  |
|  | 1 | **Eartworks & Site grading** |  | 2026-07-25 | 2026-12-01 |  |  |
| MKH2-02-004-CNS-1020 |  | Road excavation [Local 17 ]-Stage 1 | 18d | 2026-07-25 | 2026-08-13 | MKH2-02-004-KM-1020, MKH2-02-004-MST-1030, MKH2-02-004-MOB-1110, MKH2-02-004-MOB-1040, MKH2-02-004-MOB-1070, MKH2-02-004-MOB-1080, MKH2-02-004-MOB-1090, MKH2-02-004-MOB-1100 | 0d |
| MKH2-02-004-CNS-1140 |  | Road backfilling [Local 17 ]-Stage 1 | 18d | 2026-07-25 | 2026-08-13 | MKH2-02-004-CNS-1020 SS | 0d |
| MKH2-02-004-CNS-1030 |  | Road excavation [Local 17 ]-Stage 2 | 18d | 2026-08-15 | 2026-09-03 | MKH2-02-004-CNS-1020 | 0d |
| MKH2-02-004-CNS-1150 |  | Road backfilling [Local 17 ]-Stage 2 | 18d | 2026-08-15 | 2026-09-03 | MKH2-02-004-CNS-1140, MKH2-02-004-CNS-1030 SS | 0d |
| MKH2-02-004-CNS-1260 |  | Subgrade [Local 17 ] | 15d | 2026-10-28 | 2026-11-14 | MKH2-02-004-CNS-2460, MKH2-02-004-CNS-2470, MKH2-02-004-CNS-1150 | 8d |
| MKH2-02-004-CNS-1340 |  | Aggregate base course [Local 17 ] | 15d | 2026-11-15 | 2026-12-01 | MKH2-02-004-CNS-1260, MKH2-02-004-PRC-1010, MKH2-02-004-PRC-1020 | 13d |
|  | 2 | **Asphalt Works** |  | 2026-12-02 | 2026-12-30 |  |  |
| MKH2-02-004-CNS-1420 |  | Prime Coat (MC1) [Local 17 ] | 10d | 2026-12-02 | 2026-12-13 | MKH2-02-004-CNS-1340, MKH2-02-004-PRC-1170, MKH2-02-004-PRC-1050 | 22d |
| MKH2-02-004-CNS-1500 |  | Bituminous base course [Local 17 ] | 15d | 2026-12-14 | 2026-12-30 | MKH2-02-004-CNS-1420, MKH2-02-004-PRC-1050 | 22d |
|  | 3 | **Finishing Works** |  | 2026-12-31 | 2027-03-01 |  |  |
|  | 1 | **Precast Concrete Curb** |  | 2026-12-31 | 2027-01-13 |  |  |
| MKH2-02-004-CNS-1580 |  | Installation of Precast Concrete curb [Local 17 ] | 12d | 2026-12-31 | 2027-01-13 | MKH2-02-004-CNS-1500, MKH2-02-004-PRC-1080 | 22d |
|  | 2 | **Precast Interlocking block pavers** |  | 2027-01-14 | 2027-01-26 |  |  |
| MKH2-02-004-CNS-1660 |  | Installation of Interlocking block pavers for sidewalk/footpath [Local 17 ] | 11d | 2027-01-14 | 2027-01-26 | MKH2-02-004-CNS-1580, MKH2-02-004-PRC-1110 | 22d |

| ID | WBS | Task | Duration | Start | Finish | Predecessors | Total float |
| --- | --- | --- | --- | --- | --- | --- | --- |
|  | 3 | **Pavement Markings** |  | 2027-01-27 | 2027-02-14 |  |  |
| MKH2-02-004-CNS-1740 |  | Pavement markings [Local 17 ] | 8d | 2027-01-27 | 2027-02-04 | MKH2-02-004-CNS-1660, MKH2-02-004-PRC-1140 | 22d |
| MKH2-02-004-CNS-1820 |  | (Speed Hump) with retroreflectiveThermoplastic yellow [Local 17 ] | 8d | 2027-02-06 | 2027-02-14 | MKH2-02-004-CNS-1740 | 22d |
|  | 4 | **Traffic Signage** |  | 2027-02-15 | 2027-03-01 |  |  |
| MKH2-02-004-CNS-1900 |  | Installation of Traffic Signs [Local 17 ] | 12d | 2027-02-15 | 2027-03-01 | MKH2-02-004-CNS-1820, MKH2-02-004-PRC-1170 | 22d |
|  | 2 | **Storm Water Drainage** |  | 2026-08-15 | 2027-01-02 |  |  |
|  | 1 | **Pipe Works** |  | 2026-08-15 | 2026-10-27 |  |  |
| MKH2-02-004-CNS-1980 |  | Excavation & Compaction (FDT) [Local 17 ]-Stage 1 | 13d | 2026-08-15 | 2026-08-29 | MKH2-02-004-CNS-1140 | 8d |
| MKH2-02-004-CNS-1990 |  | Excavation & Compaction (FDT) [Local 17 ]-Stage 2 | 13d | 2026-08-30 | 2026-09-13 | MKH2-02-004-CNS-1980, MKH2-02-004-CNS-1150 FF | 9d |
| MKH2-02-004-CNS-2100 |  | Sand Bedding [Local 17 ]-Stage 1 | 8d | 2026-08-30 | 2026-09-07 | MKH2-02-004-CNS-1980 | 8d |
| MKH2-02-004-CNS-2220 |  | Installation of GRP Pipe [Local 17 ]-Stage 1 | 14d | 2026-09-08 | 2026-09-24 | MKH2-02-004-CNS-2100, MKH2-02-004-PRC-1200 SS | 8d |
| MKH2-02-004-CNS-2110 |  | Sand Bedding [Local 17 ]-Stage 2 | 8d | 2026-09-14 | 2026-09-22 | MKH2-02-004-CNS-2100, MKH2-02-004-CNS-1990 | 9d |
| MKH2-02-004-CNS-2230 |  | Installation of GRP Pipe [Local 17 ]-Stage 2 | 14d | 2026-09-26 | 2026-10-11 | MKH2-02-004-CNS-2220, MKH2-02-004-CNS-2110 | 8d |
| MKH2-02-004-CNS-2340 |  | Sand Cover & Warning Tape [Local 17 ]-Stage 1 | 7d | 2026-09-26 | 2026-10-03 | MKH2-02-004-CNS-2220 | 15d |
| MKH2-02-004-CNS-2460 |  | Backfilling & Compaction [Local 17 ]-Stage 1 | 7d | 2026-10-04 | 2026-10-11 | MKH2-02-004-CNS-2340 | 15d |
| MKH2-02-004-CNS-2350 |  | Sand Cover & Warning Tape [Local 17 ]-Stage 2 | 7d | 2026-10-12 | 2026-10-19 | MKH2-02-004-CNS-2340, MKH2-02-004-CNS-2230 | 8d |
| MKH2-02-004-CNS-2470 |  | Backfilling & Compaction [Local 17 ]-Stage 2 | 7d | 2026-10-20 | 2026-10-27 | MKH2-02-004-CNS-2460, MKH2-02-004-CNS-2350 | 8d |
|  | 2 | **Manholes** |  | 2026-10-08 | 2026-11-17 |  |  |
| MKH2-02-004-CNS-2600 |  | Installation of Manholes [Local 17 ]-Stage 1-[MH 01 to MH 07] | 7d | 2026-10-08 | 2026-10-15 | MKH2-02-004-PRC-1250, MKH2-02-004-CNS-2220 | 14d |
| MKH2-02-004-CNS-2610 |  | Installation of Manholes [Local 17 ]-Stage 2-[MH 08 to MH 14] | 7d | 2026-10-17 | 2026-10-24 | MKH2-02-004-CNS-2600 | 28d |
| MKH2-02-004-CNS-2620 |  | Installation of Manholes [Local 17 ]-Stage 3-[MH 15 to MH 21] | 7d | 2026-10-25 | 2026-11-01 | MKH2-02-004-CNS-2610 | 28d |
| MKH2-02-004-CNS-2630 |  | Installation of Manholes [Local 17 ]-Stage 4-[MH 22 to MH 28] | 7d | 2026-11-02 | 2026-11-09 | MKH2-02-004-CNS-2620 | 28d |
| MKH2-02-004-CNS-2640 |  | Installation of Manholes [Local 17 ]-Stage 5-[MH 29 to MH 33] | 7d | 2026-11-10 | 2026-11-17 | MKH2-02-004-CNS-2630 | 28d |
|  | 3 | **Catch Basins** |  | 2026-10-17 | 2027-01-02 |  |  |
| MKH2-02-004-CNS-2800 |  | Construction of Catch basins [Local 17 ]-Stage 1-[01 to 10] | 7d | 2026-10-17 | 2026-10-24 | MKH2-02-004-PRC-1290, MKH2-02-004-CNS-2220, MKH2-02-004-CNS-2600 | 14d |
| MKH2-02-004-CNS-2810 |  | Construction of Catch basins [Local 17 ]-Stage 2-[11 to 20] | 7d | 2026-10-25 | 2026-11-01 | MKH2-02-004-CNS-2800 | 25d |
| MKH2-02-004-CNS-2820 |  | Construction of Catch basins [Local 17 ]-Stage 3-[21 to 30] | 7d | 2026-11-02 | 2026-11-09 | MKH2-02-004-CNS-2810 | 25d |
| MKH2-02-004-CNS-2830 |  | Construction of Catch basins [Local 17 ]-Stage 4-[31 to 40] | 7d | 2026-11-10 | 2026-11-17 | MKH2-02-004-CNS-2820 | 25d |
| MKH2-02-004-CNS-2840 |  | Construction of Catch basins [Local 17 ]-Stage 5-[41 to 50] | 7d | 2026-11-18 | 2026-11-25 | MKH2-02-004-CNS-2830 | 25d |
| MKH2-02-004-CNS-2850 |  | Construction of Catch basins [Local 17 ]-Stage 6-[51 to 60] | 7d | 2026-11-26 | 2026-12-03 | MKH2-02-004-CNS-2840 | 25d |
| MKH2-02-004-CNS-2860 |  | Construction of Catch basins [Local 17 ]-Stage 7-[61 to 70] | 7d | 2026-12-05 | 2026-12-12 | MKH2-02-004-CNS-2850 | 25d |
| MKH2-02-004-CNS-2870 |  | Construction of Catch basins [Local 17 ]-Stage 8-[71 to 80] | 7d | 2026-12-13 | 2026-12-20 | MKH2-02-004-CNS-2860 | 25d |
| MKH2-02-004-CNS-2880 |  | Construction of Catch basins [Local 17 ]-Stage 9-[81 to 90] | 7d | 2026-12-21 | 2026-12-28 | MKH2-02-004-CNS-2870 | 25d |
| MKH2-02-004-CNS-2890 |  | Construction of Catch basins [Local 17 ]-Stage 10-[91 to 96] | 4d | 2026-12-29 | 2027-01-02 | MKH2-02-004-CNS-2880 | 25d |
|  | 4 | **Concrete chambers Pipes** |  | 2026-10-25 | 2026-12-15 |  |  |
| MKH2-02-004-CNS-3140 |  | Excavation and Compaction (FDT) [Local 17 ]-Stage 1 | 11d | 2026-10-25 | 2026-11-05 | MKH2-02-004-CNS-2800 | 14d |
| MKH2-02-004-CNS-3150 |  | Excavation and Compaction (FDT) [Local 17 ]-Stage 2 | 11d | 2026-11-07 | 2026-11-18 | MKH2-02-004-CNS-3140 | 15d |
| MKH2-02-004-CNS-3230 |  | Installation of Pipes [Local 17 ]-Stage 1 | 12d | 2026-11-07 | 2026-11-19 | MKH2-02-004-CNS-3140 | 14d |
| MKH2-02-004-CNS-3240 |  | Installation of Pipes [Local 17 ]-Stage 2 | 12d | 2026-11-21 | 2026-12-03 | MKH2-02-004-CNS-3230, MKH2-02-004-CNS-3150 | 14d |
| MKH2-02-004-CNS-3320 |  | Backfilling & Compaction [Local 17 ]-Stage 1 | 10d | 2026-11-21 | 2026-12-01 | MKH2-02-004-CNS-3230 | 16d |
| MKH2-02-004-CNS-3330 |  | Backfilling & Compaction [Local 17 ]-Stage 2 | 10d | 2026-12-05 | 2026-12-15 | MKH2-02-004-CNS-3320, MKH2-02-004-CNS-3240, MKH2-02-004-CNS-2640 | 14d |
|  | 5 | **Local 11** |  | 2026-09-05 | 2027-02-28 |  |  |
|  | 1 | **Road Works** |  | 2026-09-05 | 2027-02-28 |  |  |
|  | 1 | **Eartworks & Site grading** |  | 2026-09-05 | 2026-12-14 |  |  |
| MKH2-02-004-CNS-1060 |  | Road excavation [Local 11 ]-Stage 1 | 11d | 2026-09-05 | 2026-09-16 | MKH2-02-004-CNS-1150 | 0d |
| MKH2-02-004-CNS-1180 |  | Road backfilling [Local 11 ]-Stage 1 | 11d | 2026-09-05 | 2026-09-16 | MKH2-02-004-CNS-1060 SS | 0d |
| MKH2-02-004-CNS-1070 |  | Road excavation [Local 11 ]-Stage 2 | 11d | 2026-09-17 | 2026-09-30 | MKH2-02-004-CNS-1060 | 0d |
| MKH2-02-004-CNS-1190 |  | Road backfilling [Local 11 ]-Stage 2 | 11d | 2026-09-17 | 2026-09-30 | MKH2-02-004-CNS-1180, MKH2-02-004-CNS-1070 SS | 0d |
| MKH2-02-004-CNS-1280 |  | Subgrade [Local 11 ] | 9d | 2026-11-24 | 2026-12-03 | MKH2-02-004-CNS-2500, MKH2-02-004-CNS-1190, MKH2-02-004-CNS-2510, MKH2-02-004-CNS-1260 | 0d |
| MKH2-02-004-CNS-1360 |  | Aggregate base course [Local 11 ] | 9d | 2026-12-05 | 2026-12-14 | MKH2-02-004-CNS-1280, MKH2-02-004-PRC-1010, MKH2-02-004-PRC-1020, MKH2-02-004-CNS-1340, MKH2-02-004-PRC-1140, MKH2-02-004-PRC-1110, MKH2-02-004-PRC-1080 | 11d |
|  | 2 | **Asphalt Works** |  | 2026-12-15 | 2027-01-09 |  |  |
| MKH2-02-004-CNS-1440 |  | Prime Coat (MC1) [Local 11 ] | 10d | 2026-12-15 | 2026-12-26 | MKH2-02-004-CNS-1360, MKH2-02-004-CNS-1420 | 23d |
| MKH2-02-004-CNS-1520 |  | Bituminous base course [Local 11 ] | 12d | 2026-12-27 | 2027-01-09 | MKH2-02-004-CNS-1440, MKH2-02-004-MST-1050, MKH2-02-004-PRC-1050, MKH2-02-004-PRC-1300 | 23d |
|  | 3 | **Finishing Works** |  | 2027-01-10 | 2027-02-28 |  |  |
|  | 1 | **Precast Concrete Curb** |  | 2027-01-10 | 2027-01-21 |  |  |
| MKH2-02-004-CNS-1600 |  | Installation of Precast Concrete curb [Local 11 ] | 11d | 2027-01-10 | 2027-01-21 | MKH2-02-004-CNS-1520, MKH2-02-004-PRC-1080 | 23d |
|  | 2 | **Precast Interlocking block pavers** |  | 2027-01-23 | 2027-02-02 |  |  |
| MKH2-02-004-CNS-1680 |  | Installation of Interlocking block pavers for sidewalk/footpath [Local 11 ] | 10d | 2027-01-23 | 2027-02-02 | MKH2-02-004-CNS-1600, MKH2-02-004-PRC-1110, MKH2-02-004-CNS-1520 | 23d |
|  | 3 | **Pavement Markings** |  | 2027-02-03 | 2027-02-18 |  |  |
| MKH2-02-004-CNS-1760 |  | Pavement markings [Local 11 ] | 7d | 2027-02-03 | 2027-02-10 | MKH2-02-004-CNS-1680, MKH2-02-004-PRC-1140, MKH2-02-004-CNS-1520 | 23d |
| MKH2-02-004-CNS-1840 |  | (Speed Hump) with retroreflectiveThermoplastic yellow [Local 11 ] | 7d | 2027-02-11 | 2027-02-18 | MKH2-02-004-CNS-1760 | 23d |
|  | 4 | **Traffic Signage** |  | 2027-02-20 | 2027-02-28 |  |  |
| MKH2-02-004-CNS-1920 |  | Installation of Traffic Signs [Local 11 ] | 7d | 2027-02-20 | 2027-02-28 | MKH2-02-004-CNS-1840, MKH2-02-004-PRC-1170, MKH2-02-004-CNS-1520 | 23d |
|  | 2 | **Storm Water Drainage** |  | 2026-10-01 | 2026-12-19 |  |  |
|  | 1 | **Pipe Works** |  | 2026-10-01 | 2026-11-23 |  |  |
| MKH2-02-004-CNS-2020 |  | Excavation & Compaction (FDT) [Local 11 ]-Stage 1 | 8d | 2026-10-01 | 2026-10-10 | MKH2-02-004-CNS-1190 | 0d |
| MKH2-02-004-CNS-2030 |  | Excavation & Compaction (FDT) [Local 11 ]-Stage 2 | 8d | 2026-10-11 | 2026-10-19 | MKH2-02-004-CNS-2020 | 3d |
| MKH2-02-004-CNS-2140 |  | Sand Bedding [Local 11 ]-Stage 1 | 6d | 2026-10-11 | 2026-10-17 | MKH2-02-004-CNS-2020 | 0d |
| MKH2-02-004-CNS-2260 |  | Installation of GRP Pipe [Local 11 ]-Stage 1 | 11d | 2026-10-18 | 2026-10-29 | MKH2-02-004-CNS-2140, MKH2-02-004-PRC-1210 | 0d |
| MKH2-02-004-CNS-2150 |  | Sand Bedding [Local 11 ]-Stage 2 | 6d | 2026-10-20 | 2026-10-26 | MKH2-02-004-CNS-2140, MKH2-02-004-CNS-2030 | 3d |

| ID | WBS | Task | Duration | Start | Finish | Predecessors | Total float |
| --- | --- | --- | --- | --- | --- | --- | --- |
| MKH2-02-004-CNS-2270 |  | Installation of GRP Pipe [Local 11 ]-Stage 2 | 11d | 2026-10-31 | 2026-11-11 | MKH2-02-004-CNS-2260, MKH2-02-004-CNS-2150, MKH2-02-004-PRC-1220 | 0d |
| MKH2-02-004-CNS-2380 |  | Sand Cover & Warning Tape [Local 11 ]-Stage 1 | 5d | 2026-10-31 | 2026-11-04 | MKH2-02-004-CNS-2260 | 6d |
| MKH2-02-004-CNS-2500 |  | Backfilling & Compaction [Local 11 ]-Stage 1 | 5d | 2026-11-05 | 2026-11-10 | MKH2-02-004-CNS-2380 | 6d |
| MKH2-02-004-CNS-2390 |  | Sand Cover & Warning Tape [Local 11 ]-Stage 2 | 5d | 2026-11-12 | 2026-11-17 | MKH2-02-004-CNS-2380, MKH2-02-004-CNS-2270 | 0d |
| MKH2-02-004-CNS-2510 |  | Backfilling & Compaction [Local 11 ]-Stage 2 | 5d | 2026-11-18 | 2026-11-23 | MKH2-02-004-CNS-2500, MKH2-02-004-CNS-2390 | 0d |
|  | 2 | **Manholes** |  | 2026-11-01 | 2026-11-24 |  |  |
| MKH2-02-004-CNS-2680 |  | Installation of Manholes [Local 11 ]-Stage 1-[MH 01 to MH 07] | 7d | 2026-11-01 | 2026-11-08 | MKH2-02-004-CNS-2260, MKH2-02-004-PRC-1260 | 30d |
| MKH2-02-004-CNS-2690 |  | Installation of Manholes [Local 11 ]-Stage 2-[MH 08 to MH 14] | 7d | 2026-11-09 | 2026-11-16 | MKH2-02-004-CNS-2680 | 33d |
| MKH2-02-004-CNS-2700 |  | Installation of Manholes [Local 11 ]-Stage 3-[MH 15 to MH 20] | 7d | 2026-11-17 | 2026-11-24 | MKH2-02-004-CNS-2690 | 33d |
|  | 3 | **Catch Basins** |  | 2026-11-09 | 2026-12-19 |  |  |
| MKH2-02-004-CNS-2950 |  | Construction of Catch basins [Local 11 ]-Stage 1-[01 to 10] | 7d | 2026-11-09 | 2026-11-16 | MKH2-02-004-CNS-2680 | 30d |
| MKH2-02-004-CNS-2960 |  | Construction of Catch basins [Local 11 ]-Stage 2-[11 to 20] | 7d | 2026-11-17 | 2026-11-24 | MKH2-02-004-CNS-2950 | 33d |
| MKH2-02-004-CNS-2970 |  | Construction of Catch basins [Local 11 ]-Stage 3-[21 to 30] | 7d | 2026-11-25 | 2026-12-02 | MKH2-02-004-CNS-2960, MKH2-02-004-CNS-2700 | 33d |
| MKH2-02-004-CNS-2980 |  | Construction of Catch basins [Local 11 ]-Stage 4-[31 to 40] | 7d | 2026-12-03 | 2026-12-10 | MKH2-02-004-CNS-2970 | 33d |
| MKH2-02-004-CNS-2990 |  | Construction of Catch basins [Local 11 ]-Stage 5-[41 to 50] | 7d | 2026-12-12 | 2026-12-19 | MKH2-02-004-CNS-2980 | 33d |
|  | 4 | **Concrete chambers Pipes** |  | 2026-11-17 | 2026-12-15 |  |  |
| MKH2-02-004-CNS-3170 |  | Excavation and Compaction (FDT) [Local 11 ] | 9d | 2026-11-17 | 2026-11-26 | MKH2-02-004-CNS-2950 | 30d |
| MKH2-02-004-CNS-3260 |  | Installation of Pipes [Local 11 ] | 7d | 2026-11-28 | 2026-12-05 | MKH2-02-004-CNS-3170 | 30d |
| MKH2-02-004-CNS-3350 |  | Backfilling & Compaction [Local 11 ] | 9d | 2026-12-06 | 2026-12-15 | MKH2-02-004-CNS-3260, MKH2-02-004-CNS-2700 | 30d |
|  | 6 | **Local 29** |  | 2026-10-01 | 2027-03-03 |  |  |
|  | 1 | **Road Works** |  | 2026-10-01 | 2027-03-03 |  |  |
|  | 1 | **Eartworks & Site grading** |  | 2026-10-01 | 2027-01-05 |  |  |
| MKH2-02-004-CNS-1080 |  | Road excavation [Local 29 ] | 10d | 2026-10-01 | 2026-10-12 | MKH2-02-004-CNS-1190 | 3d |
| MKH2-02-004-CNS-1200 |  | Road backfilling [Local 29 ] | 10d | 2026-10-01 | 2026-10-12 | MKH2-02-004-CNS-1080 SS | 3d |
| MKH2-02-004-CNS-1290 |  | Subgrade [Local 29 ] | 14d | 2026-12-05 | 2026-12-20 | MKH2-02-004-CNS-2520, MKH2-02-004-CNS-1200, MKH2-02-004-CNS-1280 | 0d |
| MKH2-02-004-CNS-1370 |  | Aggregate base course [Local 29 ] | 14d | 2026-12-21 | 2027-01-05 | MKH2-02-004-CNS-1290, MKH2-02-004-PRC-1020, MKH2-02-004-CNS-1360 | 6d |
|  | 2 | **Asphalt Works** |  | 2027-01-06 | 2027-01-26 |  |  |
| MKH2-02-004-CNS-1450 |  | Prime Coat (MC1) [Local 29 ] | 8d | 2027-01-06 | 2027-01-14 | MKH2-02-004-CNS-1370, MKH2-02-004-CNS-1440 | 18d |
| MKH2-02-004-CNS-1530 |  | Bituminous base course [Local 29 ] | 10d | 2027-01-16 | 2027-01-26 | MKH2-02-004-CNS-1450, MKH2-02-004-PRC-1050 | 20d |
|  | 3 | **Finishing Works** |  | 2027-01-27 | 2027-03-03 |  |  |
|  | 1 | **Precast Concrete Curb** |  | 2027-01-27 | 2027-02-02 |  |  |
| MKH2-02-004-CNS-1610 |  | Installation of Precast Concrete curb [Local 29 ] | 6d | 2027-01-27 | 2027-02-02 | MKH2-02-004-CNS-1530, MKH2-02-004-PRC-1080 | 20d |
|  | 2 | **Precast Interlocking block pavers** |  | 2027-02-03 | 2027-02-09 |  |  |
| MKH2-02-004-CNS-1690 |  | Installation of Interlocking block pavers for sidewalk/footpath [Local 29 ] | 6d | 2027-02-03 | 2027-02-09 | MKH2-02-004-CNS-1610, MKH2-02-004-PRC-1110 | 20d |
|  | 3 | **Pavement Markings** |  | 2027-02-10 | 2027-02-24 |  |  |
| MKH2-02-004-CNS-1770 |  | Pavement markings [Local 29 ] | 6d | 2027-02-10 | 2027-02-16 | MKH2-02-004-CNS-1690, MKH2-02-004-PRC-1140, MKH2-02-004-CNS-1530 | 20d |
| MKH2-02-004-CNS-1850 |  | (Speed Hump) with retroreflectiveThermoplastic yellow [Local 29 ] | 6d | 2027-02-17 | 2027-02-24 | MKH2-02-004-CNS-1770 | 20d |
|  | 4 | **Traffic Signage** |  | 2027-02-25 | 2027-03-03 |  |  |
| MKH2-02-004-CNS-1930 |  | Installation of Traffic Signs [Local 29 ] | 6d | 2027-02-25 | 2027-03-03 | MKH2-02-004-CNS-1850, MKH2-02-004-PRC-1170, MKH2-02-004-CNS-1530 | 20d |
|  | 2 | **Storm Water Drainage** |  | 2026-10-13 | 2026-12-20 |  |  |
|  | 1 | **Pipe Works** |  | 2026-10-13 | 2026-11-18 |  |  |
| MKH2-02-004-CNS-2040 |  | Excavation & Compaction (FDT) [Local 29 ] | 6d | 2026-10-13 | 2026-10-19 | MKH2-02-004-CNS-1200 | 13d |
| MKH2-02-004-CNS-2160 |  | Sand Bedding [Local 29 ] | 6d | 2026-10-20 | 2026-10-26 | MKH2-02-004-CNS-2040 | 13d |
| MKH2-02-004-CNS-2280 |  | Installation of GRP Pipe [Local 29 ] | 9d | 2026-10-27 | 2026-11-05 | MKH2-02-004-CNS-2160, MKH2-02-004-PRC-1200, MKH2-02-004-PRC-1210 | 13d |
| MKH2-02-004-CNS-2400 |  | Sand Cover & Warning Tape [Local 29 ] | 5d | 2026-11-07 | 2026-11-11 | MKH2-02-004-CNS-2280 | 13d |
| MKH2-02-004-CNS-2520 |  | Backfilling & Compaction [Local 29 ] | 6d | 2026-11-12 | 2026-11-18 | MKH2-02-004-CNS-2400 | 13d |
|  | 2 | **Manholes** |  | 2026-11-07 | 2026-11-22 |  |  |
| MKH2-02-004-CNS-2710 |  | Installation of Manholes [Local 29 ]-Stage 1-[MH 01 to MH 07] | 7d | 2026-11-07 | 2026-11-14 | MKH2-02-004-CNS-2280 | 26d |
| MKH2-02-004-CNS-2720 |  | Installation of Manholes [Local 29 ]-Stage 2-[MH 08 to MH 15] | 7d | 2026-11-15 | 2026-11-22 | MKH2-02-004-CNS-2710 | 28d |
|  | 3 | **Catch Basins** |  | 2026-11-15 | 2026-12-13 |  |  |
| MKH2-02-004-CNS-3000 |  | Construction of Catch basins [Local 29 ]-Stage 1-[01 to 10] | 7d | 2026-11-15 | 2026-11-22 | MKH2-02-004-CNS-2710 | 26d |
| MKH2-02-004-CNS-3010 |  | Construction of Catch basins [Local 29 ]-Stage 2-[11 to 20] | 7d | 2026-11-23 | 2026-11-30 | MKH2-02-004-CNS-3000 | 26d |
| MKH2-02-004-CNS-3020 |  | Construction of Catch basins [Local 29 ]-Stage 3-[21 to 30] | 7d | 2026-12-01 | 2026-12-08 | MKH2-02-004-CNS-3010 | 26d |
| MKH2-02-004-CNS-3030 |  | Construction of Catch basins [Local 29 ]-Stage 4-[31 to 35] | 4d | 2026-12-09 | 2026-12-13 | MKH2-02-004-CNS-3020 | 26d |
|  | 4 | **Concrete chambers Pipes** |  | 2026-11-23 | 2026-12-20 |  |  |
| MKH2-02-004-CNS-3180 |  | Excavation and Compaction (FDT) [Local 29 ] | 7d | 2026-11-23 | 2026-11-30 | MKH2-02-004-CNS-3000, MKH2-02-004-CNS-2720 | 28d |
| MKH2-02-004-CNS-3270 |  | Installation of Pipes [Local 29 ] | 9d | 2026-12-01 | 2026-12-10 | MKH2-02-004-CNS-3180 | 28d |
| MKH2-02-004-CNS-3360 |  | Backfilling & Compaction [Local 29 ] | 6d | 2026-12-14 | 2026-12-20 | MKH2-02-004-CNS-3270, MKH2-02-004-CNS-2720, MKH2-02-004-CNS-3030 | 26d |
|  | 7 | **Local 30** |  | 2026-10-13 | 2027-03-21 |  |  |
|  | 1 | **Road Works** |  | 2026-10-13 | 2027-03-21 |  |  |
|  | 1 | **Eartworks & Site grading** |  | 2026-10-13 | 2027-01-19 |  |  |
| MKH2-02-004-CNS-1090 |  | Road excavation [Local 30 ] | 11d | 2026-10-13 | 2026-10-25 | MKH2-02-004-CNS-1200 | 3d |
| MKH2-02-004-CNS-1210 |  | Road backfilling [Local 30 ] | 11d | 2026-10-13 | 2026-10-25 | MKH2-02-004-CNS-1090 SS | 3d |
| MKH2-02-004-CNS-1300 |  | Subgrade [Local 30 ] | 14d | 2026-12-21 | 2027-01-05 | MKH2-02-004-CNS-2530, MKH2-02-004-CNS-1210, MKH2-02-004-CNS-1290 | 0d |
| MKH2-02-004-CNS-1380 |  | Aggregate base course [Local 30 ] | 12d | 2027-01-06 | 2027-01-19 | MKH2-02-004-CNS-1300, MKH2-02-004-PRC-1020, MKH2-02-004-CNS-1370 | 6d |
|  | 2 | **Asphalt Works** |  | 2027-01-20 | 2027-02-09 |  |  |
| MKH2-02-004-CNS-1460 |  | Prime Coat (MC1) [Local 30 ] | 8d | 2027-01-20 | 2027-01-28 | MKH2-02-004-CNS-1380, MKH2-02-004-CNS-1450 | 14d |
| MKH2-02-004-CNS-1540 |  | Bituminous base course [Local 30 ] | 10d | 2027-01-30 | 2027-02-09 | MKH2-02-004-CNS-1460, MKH2-02-004-PRC-1050 | 14d |
|  | 3 | **Finishing Works** |  | 2027-02-10 | 2027-03-21 |  |  |
|  | 1 | **Precast Concrete Curb** |  | 2027-02-10 | 2027-02-16 |  |  |

| ID | WBS | Task | Duration | Start | Finish | Predecessors | Total float |
| --- | --- | --- | --- | --- | --- | --- | --- |
| MKH2-02-004-CNS-1620 |  | Installation of Precast Concrete curb [Local 30 ] | 6d | 2027-02-10 | 2027-02-16 | MKH2-02-004-PRC-1080, MKH2-02-004-CNS-1540 | 14d |
|  | 2 | **Precast Interlocking block pavers** |  | 2027-02-17 | 2027-02-24 |  |  |
| MKH2-02-004-CNS-1700 |  | Installation of Interlocking block pavers for sidewalk/footpath [Local 30 ] | 6d | 2027-02-17 | 2027-02-24 | MKH2-02-004-CNS-1620, MKH2-02-004-PRC-1110 | 14d |
|  | 3 | **Pavement Markings** |  | 2027-02-25 | 2027-03-14 |  |  |
| MKH2-02-004-CNS-1780 |  | Pavement markings [Local 30 ] | 6d | 2027-02-25 | 2027-03-03 | MKH2-02-004-CNS-1700, MKH2-02-004-PRC-1140, MKH2-02-004-CNS-1540 | 14d |
| MKH2-02-004-CNS-1860 |  | (Speed Hump) with retroreflectiveThermoplastic yellow [Local 30 ] | 6d | 2027-03-04 | 2027-03-14 | MKH2-02-004-CNS-1780 | 14d |
|  | 4 | **Traffic Signage** |  | 2027-03-15 | 2027-03-21 |  |  |
| MKH2-02-004-CNS-1940 |  | Installation of Traffic Signs [Local 30 ] | 6d | 2027-03-15 | 2027-03-21 | MKH2-02-004-CNS-1860, MKH2-02-004-PRC-1170, MKH2-02-004-CNS-1930, MKH2-02-004-CNS-1540, MKH2-02-004-CNS-1920, MKH2-02-004-CNS-1900 | 14d |
|  | 2 | **Storm Water Drainage** |  | 2026-10-26 | 2027-01-12 |  |  |
|  | 1 | **Pipe Works** |  | 2026-10-26 | 2026-12-09 |  |  |
| MKH2-02-004-CNS-2050 |  | Excavation & Compaction (FDT) [Local 30 ] | 6d | 2026-10-26 | 2026-11-01 | MKH2-02-004-CNS-1210 | 9d |
| MKH2-02-004-CNS-2170 |  | Sand Bedding [Local 30 ] | 6d | 2026-11-02 | 2026-11-08 | MKH2-02-004-CNS-2050 | 9d |
| MKH2-02-004-CNS-2290 |  | Installation of GRP Pipe [Local 30 ] | 10d | 2026-11-09 | 2026-11-19 | MKH2-02-004-CNS-2170, MKH2-02-004-PRC-1220 | 9d |
| MKH2-02-004-CNS-2410 |  | Sand Cover & Warning Tape [Local 30 ] | 5d | 2026-11-21 | 2026-11-25 | MKH2-02-004-CNS-2290 | 9d |
| MKH2-02-004-CNS-2530 |  | Backfilling & Compaction [Local 30 ] | 12d | 2026-11-26 | 2026-12-09 | MKH2-02-004-CNS-2410 | 9d |
|  | 2 | **Manholes** |  | 2026-11-21 | 2026-12-22 |  |  |
| MKH2-02-004-CNS-2730 |  | Installation of Manholes [Local 30 ]-Stage 1-[MH 01 to MH 07] | 14d | 2026-11-21 | 2026-12-06 | MKH2-02-004-CNS-2290, MKH2-02-004-PRC-1260 | 12d |
| MKH2-02-004-CNS-2740 |  | Installation of Manholes [Local 30 ]-Stage 2-[MH 08 to MH 14] | 14d | 2026-12-07 | 2026-12-22 | MKH2-02-004-CNS-2730 | 24d |
|  | 3 | **Catch Basins** |  | 2026-12-07 | 2027-01-11 |  |  |
| MKH2-02-004-CNS-3040 |  | Construction of Catch basins [Local 30 ]-Stage 1-[01 to 10] | 10d | 2026-12-07 | 2026-12-17 | MKH2-02-004-CNS-2730, MKH2-02-004-PRC-1310 | 12d |
| MKH2-02-004-CNS-3050 |  | Construction of Catch basins [Local 30 ]-Stage 2-[11 to 20] | 10d | 2026-12-19 | 2026-12-29 | MKH2-02-004-CNS-3040 | 13d |
| MKH2-02-004-CNS-3060 |  | Construction of Catch basins [Local 30 ]-Stage 3-[21 to 31] | 11d | 2026-12-30 | 2027-01-11 | MKH2-02-004-CNS-3050 | 13d |
|  | 4 | **Concrete chambers Pipes** |  | 2026-12-19 | 2027-01-12 |  |  |
| MKH2-02-004-CNS-3190 |  | Excavation and Compaction (FDT) [Local 30 ] | 7d | 2026-12-19 | 2026-12-26 | MKH2-02-004-CNS-3040, MKH2-02-004-CNS-3330 | 12d |
| MKH2-02-004-CNS-3280 |  | Installation of Pipes [Local 30 ] | 9d | 2026-12-27 | 2027-01-05 | MKH2-02-004-CNS-3190 | 12d |
| MKH2-02-004-CNS-3370 |  | Backfilling & Compaction [Local 30 ] | 6d | 2027-01-06 | 2027-01-12 | MKH2-02-004-CNS-3280, MKH2-02-004-CNS-2740, MKH2-02-004-CNS-3360, MKH2-02-004-CNS-3350, MKH2-02-004-CNS-3060 FF | 12d |
|  | 8 | **Local 31** |  | 2026-10-26 | 2027-05-06 |  |  |
|  | 1 | **Road Works** |  | 2026-10-26 | 2027-05-06 |  |  |
|  | 1 | **Eartworks & Site grading** |  | 2026-10-26 | 2027-02-16 |  |  |
| MKH2-02-004-CNS-1100 |  | Road excavation [Local 31 ]-Stage 1 | 12d | 2026-10-26 | 2026-11-08 | MKH2-02-004-CNS-1210 | 3d |
| MKH2-02-004-CNS-1220 |  | Road backfilling [Local 31 ]-Stage 1 | 12d | 2026-10-26 | 2026-11-08 | MKH2-02-004-CNS-1100 SS | 3d |
| MKH2-02-004-CNS-1110 |  | Road excavation [Local 31 ]-Stage 2 | 12d | 2026-11-09 | 2026-11-22 | MKH2-02-004-CNS-1100 | 10d |
| MKH2-02-004-CNS-1230 |  | Road backfilling [Local 31 ]-Stage 2 | 12d | 2026-11-09 | 2026-11-22 | MKH2-02-004-CNS-1220, MKH2-02-004-CNS-1110 SS | 10d |
| MKH2-02-004-CNS-1310 |  | Subgrade [Local 31 ] | 18d | 2027-01-06 | 2027-01-26 | MKH2-02-004-CNS-1230, MKH2-02-004-CNS-2540, MKH2-02-004-CNS-2550, MKH2-02-004-CNS-1300 | 0d |
| MKH2-02-004-CNS-1390 |  | Aggregate base course [Local 31 ] | 18d | 2027-01-27 | 2027-02-16 | MKH2-02-004-CNS-1310, MKH2-02-004-PRC-1020, MKH2-02-004-CNS-3370, MKH2-02-004-CNS-1380 | 0d |
|  | 2 | **Asphalt Works** |  | 2027-02-17 | 2027-03-15 |  |  |
| MKH2-02-004-CNS-1470 |  | Prime Coat (MC1) [Local 31 ] | 9d | 2027-02-17 | 2027-02-28 | MKH2-02-004-CNS-1390, MKH2-02-004-CNS-1440, MKH2-02-004-CNS-1460 | 0d |
| MKH2-02-004-CNS-1550 |  | Bituminous base course [Local 31 ] | 10d | 2027-03-01 | 2027-03-15 | MKH2-02-004-CNS-1470, MKH2-02-004-PRC-1050, MKH2-02-004-CNS-1520 | 0d |
|  | 3 | **Finishing Works** |  | 2027-03-16 | 2027-05-06 |  |  |
|  | 1 | **Precast Concrete Curb** |  | 2027-03-16 | 2027-03-27 |  |  |
| MKH2-02-004-CNS-1630 |  | Installation of Precast Concrete curb [Local 31 ] | 10d | 2027-03-16 | 2027-03-27 | MKH2-02-004-CNS-1550, MKH2-02-004-PRC-1080 | 0d |
|  | 2 | **Precast Interlocking block pavers** |  | 2027-03-28 | 2027-04-06 |  |  |
| MKH2-02-004-CNS-1710 |  | Installation of Interlocking block pavers for sidewalk/footpath [Local 31 ] | 9d | 2027-03-28 | 2027-04-06 | MKH2-02-004-CNS-1630, MKH2-02-004-PRC-1110 | 0d |
|  | 3 | **Pavement Markings** |  | 2027-04-07 | 2027-04-27 |  |  |
| MKH2-02-004-CNS-1790 |  | Pavement markings [Local 31 ] | 9d | 2027-04-07 | 2027-04-17 | MKH2-02-004-CNS-1710, MKH2-02-004-PRC-1140, MKH2-02-004-CNS-1550, MKH2-02-004-CNS-1940 | 0d |
| MKH2-02-004-CNS-1870 |  | (Speed Hump) with retroreflectiveThermoplastic yellow [Local 31 ] | 9d | 2027-04-18 | 2027-04-27 | MKH2-02-004-CNS-1790 | 0d |
|  | 4 | **Traffic Signage** |  | 2027-04-28 | 2027-05-06 |  |  |
| MKH2-02-004-CNS-1950 |  | Installation of Traffic Signs [Local 31 ] | 8d | 2027-04-28 | 2027-05-06 | MKH2-02-004-CNS-1870, MKH2-02-004-PRC-1170, MKH2-02-004-CNS-1550 | 20d |
|  | 2 | **Storm Water Drainage** |  | 2026-11-09 | 2027-02-02 |  |  |
|  | 1 | **Pipe Works** |  | 2026-11-09 | 2026-12-31 |  |  |
| MKH2-02-004-CNS-2060 |  | Excavation & Compaction (FDT) [Local 31 ]-Stage 1 | 8d | 2026-11-09 | 2026-11-17 | MKH2-02-004-CNS-1220 | 4d |
| MKH2-02-004-CNS-2070 |  | Excavation & Compaction (FDT) [Local 31 ]-Stage 2 | 8d | 2026-11-18 | 2026-11-26 | MKH2-02-004-CNS-2060, MKH2-02-004-CNS-1230 FF | 6d |
| MKH2-02-004-CNS-2180 |  | Sand Bedding [Local 31 ]-Stage 1 | 10d | 2026-11-18 | 2026-11-29 | MKH2-02-004-CNS-2060 | 4d |
| MKH2-02-004-CNS-2190 |  | Sand Bedding [Local 31 ]-Stage 2 | 10d | 2026-11-30 | 2026-12-10 | MKH2-02-004-CNS-2180, MKH2-02-004-CNS-2070 | 4d |
| MKH2-02-004-CNS-2300 |  | Installation of GRP Pipe [Local 31 ]-Stage 1 | 8d | 2026-11-30 | 2026-12-08 | MKH2-02-004-CNS-2180, MKH2-02-004-PRC-1220 | 6d |
| MKH2-02-004-CNS-2420 |  | Sand Cover & Warning Tape [Local 31 ]-Stage 1 | 5d | 2026-12-09 | 2026-12-14 | MKH2-02-004-CNS-2300 | 9d |
| MKH2-02-004-CNS-2310 |  | Installation of GRP Pipe [Local 31 ]-Stage 2 | 8d | 2026-12-12 | 2026-12-20 | MKH2-02-004-CNS-2300, MKH2-02-004-CNS-2190, MKH2-02-004-PRC-1220 | 4d |
| MKH2-02-004-CNS-2540 |  | Backfilling & Compaction [Local 31 ]-Stage 1 | 5d | 2026-12-15 | 2026-12-20 | MKH2-02-004-CNS-2420 | 9d |
| MKH2-02-004-CNS-2430 |  | Sand Cover & Warning Tape [Local 31 ]-Stage 2 | 5d | 2026-12-21 | 2026-12-26 | MKH2-02-004-CNS-2420, MKH2-02-004-CNS-2310 | 4d |
| MKH2-02-004-CNS-2550 |  | Backfilling & Compaction [Local 31 ]-Stage 2 | 5d | 2026-12-27 | 2026-12-31 | MKH2-02-004-CNS-2540, MKH2-02-004-CNS-2430 | 4d |
|  | 2 | **Manholes** |  | 2026-12-09 | 2027-01-24 |  |  |
| MKH2-02-004-CNS-2750 |  | Installation of Manholes [Local 31 ]-Stage 1-[MH 01 to MH 07] | 14d | 2026-12-09 | 2026-12-24 | MKH2-02-004-CNS-2300 | 33d |
| MKH2-02-004-CNS-2760 |  | Installation of Manholes [Local 31 ]-Stage 2-[MH 08 to MH 14] | 14d | 2026-12-26 | 2027-01-10 | MKH2-02-004-CNS-2750 | 33d |
| MKH2-02-004-CNS-2770 |  | Installation of Manholes [Local 31 ]-Stage 3-[MH 15 to MH 20] | 12d | 2027-01-11 | 2027-01-24 | MKH2-02-004-CNS-2760 | 33d |
|  | 3 | **Catch Basins** |  | 2026-12-26 | 2027-01-23 |  |  |
| MKH2-02-004-CNS-3070 |  | Construction of Catch basins [Local 31 ]-Stage 1-[01 to 10] | 5d | 2026-12-26 | 2026-12-30 | MKH2-02-004-CNS-2750 | 33d |
| MKH2-02-004-CNS-3080 |  | Construction of Catch basins [Local 31 ]-Stage 2-[11 to 20] | 5d | 2026-12-31 | 2027-01-05 | MKH2-02-004-CNS-3070, MKH2-02-004-CNS-2990 | 34d |
| MKH2-02-004-CNS-3090 |  | Construction of Catch basins [Local 31 ]-Stage 3-[21 to 31] | 5d | 2027-01-06 | 2027-01-11 | MKH2-02-004-CNS-3080, MKH2-02-004-CNS-2890 | 34d |
| MKH2-02-004-CNS-3100 |  | Construction of Catch basins [Local 31 ]-Stage 4-[31 to 40] | 5d | 2027-01-12 | 2027-01-17 | MKH2-02-004-CNS-3090 | 34d |
| MKH2-02-004-CNS-3110 |  | Construction of Catch basins [Local 31 ]-Stage 5-[41 to 49] | 5d | 2027-01-18 | 2027-01-23 | MKH2-02-004-CNS-3100, MKH2-02-004-CNS-3060 | 34d |

| ID | WBS | Task | Duration | Start | Finish | Predecessors | Total float |
| --- | --- | --- | --- | --- | --- | --- | --- |
|  | 4 | **Concrete chambers Pipes** |  | 2026-12-31 | 2027-02-02 |  |  |
| MKH2-02-004-CNS-3200 |  | Excavation and Compaction (FDT) [Local 31 ] | 9d | 2026-12-31 | 2027-01-10 | MKH2-02-004-CNS-3070 | 33d |
| MKH2-02-004-CNS-3290 |  | Installation of Pipes [Local 31 ] | 12d | 2027-01-11 | 2027-01-24 | MKH2-02-004-CNS-3200 | 33d |
| MKH2-02-004-CNS-3380 |  | Backfilling & Compaction [Local 31 ] | 8d | 2027-01-25 | 2027-02-02 | MKH2-02-004-CNS-3290, MKH2-02-004-CNS-2770, MKH2-02-004-CNS-3110 | 33d |
|  | 4 | **Local 28** |  | 2026-11-09 | 2027-06-03 |  |  |
|  | 1 | **Road Works** |  | 2026-11-09 | 2027-06-03 |  |  |
|  | 1 | **Eartworks & Site grading** |  | 2026-11-09 | 2027-03-08 |  |  |
| MKH2-02-004-CNS-1040 |  | Road excavation [Local 28 ]-Stage 1 | 12d | 2026-11-09 | 2026-11-22 | MKH2-02-004-CNS-1220 | 3d |
| MKH2-02-004-CNS-1160 |  | Road backfilling [Local 28 ]-Stage 1 | 12d | 2026-11-09 | 2026-11-22 | MKH2-02-004-CNS-1040 SS | 3d |
| MKH2-02-004-CNS-1050 |  | Road excavation [Local 28 ]-Stage 2 | 12d | 2026-11-23 | 2026-12-06 | MKH2-02-004-CNS-1040 | 3d |
| MKH2-02-004-CNS-1170 |  | Road backfilling [Local 28 ]-Stage 2 | 12d | 2026-11-23 | 2026-12-06 | MKH2-02-004-CNS-1160, MKH2-02-004-CNS-1050 SS | 3d |
| MKH2-02-004-CNS-1270 |  | Subgrade [Local 28 ] | 16d | 2027-02-01 | 2027-02-18 | MKH2-02-004-CNS-2480, MKH2-02-004-CNS-2490, MKH2-02-004-CNS-1170, MKH2-02-004-CNS-1310 | 3d |
| MKH2-02-004-CNS-1350 |  | Aggregate base course [Local 28 ] | 14d | 2027-02-20 | 2027-03-08 | MKH2-02-004-CNS-1270, MKH2-02-004-PRC-1020, MKH2-02-004-CNS-1390 | 3d |
|  | 2 | **Asphalt Works** |  | 2027-03-09 | 2027-04-01 |  |  |
| MKH2-02-004-CNS-1430 |  | Prime Coat (MC1) [Local 28 ] | 8d | 2027-03-09 | 2027-03-21 | MKH2-02-004-CNS-1350, MKH2-02-004-CNS-1460, MKH2-02-004-CNS-1470 | 3d |
| MKH2-02-004-CNS-1510 |  | Bituminous base course [Local 28 ] | 10d | 2027-03-22 | 2027-04-01 | MKH2-02-004-CNS-1430, MKH2-02-004-PRC-1050, MKH2-02-004-CNS-1540 | 3d |
|  | 3 | **Finishing Works** |  | 2027-04-03 | 2027-06-03 |  |  |
|  | 1 | **Precast Concrete Curb** |  | 2027-04-03 | 2027-04-13 |  |  |
| MKH2-02-004-CNS-1590 |  | Installation of Precast Concrete curb [Local 28 ] | 10d | 2027-04-03 | 2027-04-13 | MKH2-02-004-CNS-1510, MKH2-02-004-PRC-1080 | 3d |
|  | 2 | **Precast Interlocking block pavers** |  | 2027-04-14 | 2027-04-24 |  |  |
| MKH2-02-004-CNS-1670 |  | Installation of Interlocking block pavers for sidewalk/footpath [Local 28 ] | 9d | 2027-04-14 | 2027-04-24 | MKH2-02-004-CNS-1590, MKH2-02-004-PRC-1110 | 3d |
|  | 3 | **Pavement Markings** |  | 2027-04-28 | 2027-05-24 |  |  |
| MKH2-02-004-CNS-1750 |  | Pavement markings [Local 28 ] | 10d | 2027-04-28 | 2027-05-09 | MKH2-02-004-CNS-1670, MKH2-02-004-PRC-1140, MKH2-02-004-CNS-1510, MKH2-02-004-CNS-1870 | 0d |
| MKH2-02-004-CNS-1830 |  | (Speed Hump) with retroreflectiveThermoplastic yellow [Local 28 ] | 9d | 2027-05-10 | 2027-05-24 | MKH2-02-004-CNS-1750, MKH2-02-004-ABD-1020 | 0d |
|  | 4 | **Traffic Signage** |  | 2027-05-25 | 2027-06-03 |  |  |
| MKH2-02-004-CNS-1910 |  | Installation of Traffic Signs [Local 28 ] | 9d | 2027-05-25 | 2027-06-03 | MKH2-02-004-CNS-1830, MKH2-02-004-PRC-1170, MKH2-02-004-CNS-1510 | 0d |
|  | 2 | **Storm Water Drainage** |  | 2026-12-07 | 2027-02-24 |  |  |
|  | 1 | **Pipe Works** |  | 2026-12-07 | 2027-01-31 |  |  |
| MKH2-02-004-CNS-2000 |  | Excavation & Compaction (FDT) [Local 28 ]-Stage 1 | 10d | 2026-12-07 | 2026-12-17 | MKH2-02-004-CNS-1170 | 3d |
| MKH2-02-004-CNS-2010 |  | Excavation & Compaction (FDT) [Local 28 ]-Stage 2 | 10d | 2026-12-19 | 2026-12-29 | MKH2-02-004-CNS-2000 | 3d |
| MKH2-02-004-CNS-2120 |  | Sand Bedding [Local 28 ]-Stage 1 | 8d | 2026-12-19 | 2026-12-27 | MKH2-02-004-CNS-2000 | 3d |
| MKH2-02-004-CNS-2240 |  | Installation of GRP Pipe [Local 28 ]-Stage 1 | 10d | 2026-12-28 | 2027-01-07 | MKH2-02-004-CNS-2120, MKH2-02-004-PRC-1220 | 3d |
| MKH2-02-004-CNS-2130 |  | Sand Bedding [Local 28 ]-Stage 2 | 8d | 2026-12-30 | 2027-01-07 | MKH2-02-004-CNS-2120, MKH2-02-004-CNS-2010 | 3d |
| MKH2-02-004-CNS-2250 |  | Installation of GRP Pipe [Local 28 ]-Stage 2 | 10d | 2027-01-09 | 2027-01-19 | MKH2-02-004-CNS-2240, MKH2-02-004-CNS-2130, MKH2-02-004-PRC-1220 | 3d |
| MKH2-02-004-CNS-2360 |  | Sand Cover & Warning Tape [Local 28 ]-Stage 1 | 5d | 2027-01-09 | 2027-01-13 | MKH2-02-004-CNS-2240 | 8d |
| MKH2-02-004-CNS-2480 |  | Backfilling & Compaction [Local 28 ]-Stage 1 | 5d | 2027-01-14 | 2027-01-19 | MKH2-02-004-CNS-2360 | 8d |
| MKH2-02-004-CNS-2370 |  | Sand Cover & Warning Tape [Local 28 ]-Stage 2 | 5d | 2027-01-20 | 2027-01-25 | MKH2-02-004-CNS-2360, MKH2-02-004-CNS-2250 | 3d |
| MKH2-02-004-CNS-2490 |  | Backfilling & Compaction [Local 28 ]-Stage 2 | 5d | 2027-01-26 | 2027-01-31 | MKH2-02-004-CNS-2480, MKH2-02-004-CNS-2370 | 3d |
|  | 2 | **Manholes** |  | 2027-01-20 | 2027-02-06 |  |  |
| MKH2-02-004-CNS-2650 |  | Installation of Manholes [Local 28 ]-Stage 1-[MH 01 to MH 07] | 5d | 2027-01-20 | 2027-01-25 | MKH2-02-004-CNS-2250 | 23d |
| MKH2-02-004-CNS-2660 |  | Installation of Manholes [Local 28 ]-Stage 2-[MH 08 to MH 14] | 5d | 2027-01-26 | 2027-01-31 | MKH2-02-004-CNS-2650 | 23d |
| MKH2-02-004-CNS-2670 |  | Installation of Manholes [Local 28 ]-Stage 3-[MH 15 to MH 20] | 5d | 2027-02-01 | 2027-02-06 | MKH2-02-004-CNS-2660 | 23d |
|  | 3 | **Catch Basins** |  | 2027-01-20 | 2027-02-17 |  |  |
| MKH2-02-004-CNS-2900 |  | Construction of Catch basins [Local 28 ]-Stage 1-[01 to 10] | 5d | 2027-01-20 | 2027-01-25 | MKH2-02-004-CNS-2250 | 15d |
| MKH2-02-004-CNS-2910 |  | Construction of Catch basins [Local 28 ]-Stage 2-[11 to 20] | 5d | 2027-01-26 | 2027-01-31 | MKH2-02-004-CNS-2900 | 20d |
| MKH2-02-004-CNS-2920 |  | Construction of Catch basins [Local 28 ]-Stage 3-[21 to 30] | 5d | 2027-02-01 | 2027-02-06 | MKH2-02-004-CNS-2910 | 20d |
| MKH2-02-004-CNS-2930 |  | Construction of Catch basins [Local 28 ]-Stage 4-[31 to 40] | 5d | 2027-02-07 | 2027-02-11 | MKH2-02-004-CNS-2920 | 20d |
| MKH2-02-004-CNS-2940 |  | Construction of Catch basins [Local 28 ]-Stage 5-[41 to 50] | 5d | 2027-02-13 | 2027-02-17 | MKH2-02-004-CNS-2930 | 20d |
|  | 4 | **Concrete chambers Pipes** |  | 2027-01-26 | 2027-02-24 |  |  |
| MKH2-02-004-CNS-3160 |  | Excavation and Compaction (FDT) [Local 28 ] | 8d | 2027-01-26 | 2027-02-03 | MKH2-02-004-CNS-2900, MKH2-02-004-CNS-3310, MKH2-02-004-CNS-3300 | 15d |
| MKH2-02-004-CNS-3250 |  | Installation of Pipes [Local 28 ] | 10d | 2027-02-04 | 2027-02-15 | MKH2-02-004-CNS-3160 | 15d |
| MKH2-02-004-CNS-3340 |  | Backfilling & Compaction [Local 28 ] | 7d | 2027-02-16 | 2027-02-24 | MKH2-02-004-CNS-3250, MKH2-02-004-CNS-2670 | 15d |
|  | 2 | **Local 10** |  | 2026-12-07 | 2027-05-08 |  |  |
|  | 1 | **Road Works** |  | 2026-12-07 | 2027-05-08 |  |  |
|  | 1 | **Eartworks & Site grading** |  | 2026-12-07 | 2027-03-27 |  |  |
| MKH2-02-004-CNS-1010 |  | Road excavation [Local 10 ] | 6d | 2026-12-07 | 2026-12-13 | MKH2-02-004-CNS-1170 | 18d |
| MKH2-02-004-CNS-1130 |  | Road backfilling [Local 10 ] | 6d | 2026-12-07 | 2026-12-13 | MKH2-02-004-CNS-1010 SS | 18d |
| MKH2-02-004-CNS-1250 |  | Subgrade [Local 10 ] | 7d | 2027-03-09 | 2027-03-20 | MKH2-02-004-CNS-1130, MKH2-02-004-CNS-2450, MKH2-02-004-CNS-1270, MKH2-02-004-CNS-1350, MKH2-02-004-CNS-1270 FF | 15d |
| MKH2-02-004-CNS-1330 |  | Aggregate base course [Local 10 ] | 6d | 2027-03-21 | 2027-03-27 | MKH2-02-004-CNS-1250, MKH2-02-004-PRC-1020, MKH2-02-004-CNS-1350 | 15d |
|  | 2 | **Asphalt Works** |  | 2027-03-28 | 2027-04-05 |  |  |
| MKH2-02-004-CNS-1410 |  | Prime Coat (MC1) [Local 10 ] | 4d | 2027-03-28 | 2027-03-31 | MKH2-02-004-CNS-1330, MKH2-02-004-CNS-1430, MKH2-02-004-CNS-1430 FF | 23d |
| MKH2-02-004-CNS-1490 |  | Bituminous base course [Local 10 ] | 4d | 2027-04-01 | 2027-04-05 | MKH2-02-004-CNS-1410, MKH2-02-004-PRC-1050 | 25d |
|  | 3 | **Finishing Works** |  | 2027-04-14 | 2027-05-08 |  |  |
|  | 1 | **Precast Concrete Curb** |  | 2027-04-14 | 2027-04-20 |  |  |
| MKH2-02-004-CNS-1570 |  | Installation of Precast Concrete curb [Local 10 ] | 6d | 2027-04-14 | 2027-04-20 | MKH2-02-004-CNS-1490, MKH2-02-004-PRC-1080, MKH2-02-004-CNS-1590 | 18d |
|  | 2 | **Precast Interlocking block pavers** |  | 2027-04-21 | 2027-04-26 |  |  |
| MKH2-02-004-CNS-1650 |  | Installation of Interlocking block pavers for sidewalk/footpath [Local 10 ] | 5d | 2027-04-21 | 2027-04-26 | MKH2-02-004-CNS-1570, MKH2-02-004-PRC-1110 | 19d |
|  | 3 | **Pavement Markings** |  | 2027-04-27 | 2027-05-04 |  |  |
| MKH2-02-004-CNS-1730 |  | Pavement markings [Local 10 ] | 4d | 2027-04-27 | 2027-05-01 | MKH2-02-004-CNS-1650, MKH2-02-004-PRC-1140, MKH2-02-004-CNS-1490 | 19d |
| MKH2-02-004-CNS-1810 |  | (Speed Hump) with retroreflectiveThermoplastic yellow [Local 10 ] | 3d | 2027-05-02 | 2027-05-04 | MKH2-02-004-CNS-1730 | 19d |

| ID | WBS | Task | Duration | Start | Finish | Predecessors | Total float |
| --- | --- | --- | --- | --- | --- | --- | --- |
|  | 4 | **Traffic Signage** |  | 2027-05-05 | 2027-05-08 |  |  |
| MKH2-02-004-CNS-1890 |  | Installation of Traffic Signs [Local 10 ] | 3d | 2027-05-05 | 2027-05-08 | MKH2-02-004-CNS-1810, MKH2-02-004-PRC-1170, MKH2-02-004-CNS-1490 | 19d |
|  | 2 | **Storm Water Drainage** |  | 2026-12-14 | 2027-01-18 |  |  |
|  | 1 | **Pipe Works** |  | 2026-12-14 | 2027-01-02 |  |  |
| MKH2-02-004-CNS-1970 |  | Excavation & Compaction (FDT) [Local 10 ] | 4d | 2026-12-14 | 2026-12-17 | MKH2-02-004-CNS-1130 | 21d |
| MKH2-02-004-CNS-2090 |  | Sand Bedding [Local 10 ] | 3d | 2026-12-19 | 2026-12-21 | MKH2-02-004-CNS-1970 | 21d |
| MKH2-02-004-CNS-2210 |  | Installation of GRP Pipe [Local 10 ] | 5d | 2026-12-22 | 2026-12-27 | MKH2-02-004-CNS-2090, MKH2-02-004-PRC-1220 | 21d |
| MKH2-02-004-CNS-2330 |  | Sand Cover & Warning Tape [Local 10 ] | 2d | 2026-12-28 | 2026-12-29 | MKH2-02-004-CNS-2210 | 27d |
| MKH2-02-004-CNS-2450 |  | Backfilling & Compaction [Local 10 ] | 3d | 2026-12-30 | 2027-01-02 | MKH2-02-004-CNS-2330 | 27d |
|  | 2 | **Manholes** |  | 2026-12-28 | 2027-01-07 |  |  |
| MKH2-02-004-CNS-2580 |  | Installation of Manholes [Local 10 ]-Stage 1-[MH 01 to MH 07] | 5d | 2026-12-28 | 2027-01-02 | MKH2-02-004-CNS-2210 | 21d |
| MKH2-02-004-CNS-2590 |  | Installation of Manholes [Local 10 ]-Stage 2-[MH 08 to MH 11] | 5d | 2027-01-03 | 2027-01-07 | MKH2-02-004-CNS-2580, MKH2-02-004-CNS-2450 | 27d |
|  | 3 | **Catch Basins** |  | 2027-01-03 | 2027-01-06 |  |  |
| MKH2-02-004-CNS-2790 |  | Construction of Catch basins [Local 10 ] | 4d | 2027-01-03 | 2027-01-06 | MKH2-02-004-PRC-1300, MKH2-02-004-CNS-2210, MKH2-02-004-CNS-2580, MKH2-02-004-CNS-2990 | 21d |
|  | 4 | **Concrete chambers Pipes** |  | 2027-01-07 | 2027-01-18 |  |  |
| MKH2-02-004-CNS-3130 |  | Excavation and Compaction (FDT) [Local 10 ] | 3d | 2027-01-07 | 2027-01-10 | MKH2-02-004-CNS-2790 | 21d |
| MKH2-02-004-CNS-3220 |  | Installation of Pipes [Local 10 ] | 4d | 2027-01-11 | 2027-01-14 | MKH2-02-004-CNS-3130 | 21d |
| MKH2-02-004-CNS-3310 |  | Backfilling & Compaction [Local 10 ] | 3d | 2027-01-16 | 2027-01-18 | MKH2-02-004-CNS-3220, MKH2-02-004-CNS-2590 | 21d |
|  | 1 | **Collector 02** |  | 2026-12-14 | 2027-05-12 |  |  |
|  | 1 | **Road Works** |  | 2026-12-14 | 2027-05-12 |  |  |
|  | 1 | **Eartworks & Site grading** |  | 2026-12-14 | 2027-04-10 |  |  |
| MKH2-02-004-CNS-1000 |  | Road excavation [Collector 02 ] | 6d | 2026-12-14 | 2026-12-20 | MKH2-02-004-CNS-1130 | 18d |
| MKH2-02-004-CNS-1120 |  | Road backfilling [Collector 02 ] | 6d | 2026-12-14 | 2026-12-20 | MKH2-02-004-CNS-1000 SS | 18d |
| MKH2-02-004-CNS-1240 |  | Subgrade [Collector 02 ] | 6d | 2027-03-28 | 2027-04-03 | MKH2-02-004-CNS-1120, MKH2-02-004-CNS-2440, MKH2-02-004-CNS-1330, MKH2-02-004-CNS-1250 | 15d |
| MKH2-02-004-CNS-1320 |  | Aggregate base course [Collector 02 ] | 6d | 2027-04-04 | 2027-04-10 | MKH2-02-004-CNS-1240, MKH2-02-004-PRC-1020, MKH2-02-004-CNS-1330 | 15d |
|  | 2 | **Asphalt Works** |  | 2027-04-11 | 2027-04-24 |  |  |
| MKH2-02-004-CNS-1400 |  | Prime Coat (MC1) [Collector 02 ] | 6d | 2027-04-11 | 2027-04-17 | MKH2-02-004-CNS-1320, MKH2-02-004-CNS-1410 | 15d |
| MKH2-02-004-CNS-1480 |  | Bituminous base course [Collector 02 ] | 6d | 2027-04-18 | 2027-04-24 | MKH2-02-004-CNS-1400, MKH2-02-004-PRC-1050 | 15d |
|  | 3 | **Finishing Works** |  | 2027-04-25 | 2027-05-12 |  |  |
|  | 1 | **Precast Concrete Curb** |  | 2027-04-25 | 2027-04-28 |  |  |
| MKH2-02-004-CNS-1560 |  | Installation of Precast Concrete curb [Collector 02 ] | 4d | 2027-04-25 | 2027-04-28 | MKH2-02-004-CNS-1480, MKH2-02-004-PRC-1080, MKH2-02-004-CNS-1570, MKH2-02-004-KM-1050 | 15d |
|  | 2 | **Precast Interlocking block pavers** |  | 2027-04-29 | 2027-05-02 |  |  |
| MKH2-02-004-CNS-1640 |  | Installation of Interlocking block pavers for sidewalk/footpath [Collector 02 ] | 3d | 2027-04-29 | 2027-05-02 | MKH2-02-004-CNS-1560, MKH2-02-004-PRC-1110 | 15d |
|  | 3 | **Pavement Markings** |  | 2027-05-03 | 2027-05-09 |  |  |
| MKH2-02-004-CNS-1720 |  | Pavement markings [Collector 02 ] | 3d | 2027-05-03 | 2027-05-05 | MKH2-02-004-CNS-1640, MKH2-02-004-PRC-1140, MKH2-02-004-CNS-1480 | 15d |
| MKH2-02-004-CNS-1800 |  | (Speed Hump) with retroreflectiveThermoplastic yellow [Collector 02 ] | 3d | 2027-05-06 | 2027-05-09 | MKH2-02-004-CNS-1720, MKH2-02-004-CNS-1480 | 15d |
|  | 4 | **Traffic Signage** |  | 2027-05-10 | 2027-05-12 |  |  |
| MKH2-02-004-CNS-1880 |  | Installation of Traffic Signs [Collector 02 ] | 3d | 2027-05-10 | 2027-05-12 | MKH2-02-004-CNS-1800, MKH2-02-004-PRC-1170, MKH2-02-004-CNS-1480 | 15d |
|  | 2 | **Storm Water Drainage** |  | 2026-12-21 | 2027-01-21 |  |  |
|  | 1 | **Pipe Works** |  | 2026-12-21 | 2027-01-13 |  |  |
| MKH2-02-004-CNS-1960 |  | Excavation & Compaction (FDT) [Collector 02 ] | 4d | 2026-12-21 | 2026-12-24 | MKH2-02-004-CNS-1120 | 18d |
| MKH2-02-004-CNS-2080 |  | Sand Bedding [Collector 02 ] | 3d | 2026-12-26 | 2026-12-28 | MKH2-02-004-CNS-1960 | 18d |
| MKH2-02-004-CNS-2200 |  | Installation of GRP Pipe [Collector 02 ] | 5d | 2026-12-29 | 2027-01-03 | MKH2-02-004-CNS-2080, MKH2-02-004-PRC-1220 | 18d |
| MKH2-02-004-CNS-2320 |  | Sand Cover & Warning Tape [Collector 02 ] | 3d | 2027-01-04 | 2027-01-06 | MKH2-02-004-CNS-2200 | 18d |
| MKH2-02-004-CNS-2440 |  | Backfilling & Compaction [Collector 02 ] | 6d | 2027-01-07 | 2027-01-13 | MKH2-02-004-CNS-2320 | 18d |
|  | 2 | **Manholes** |  | 2027-01-04 | 2027-01-17 |  |  |
| MKH2-02-004-CNS-2560 |  | Installation of Manholes [Collector 02 ]-Stage 1-[MH 01 to MH 07] | 6d | 2027-01-04 | 2027-01-10 | MKH2-02-004-CNS-2200 | 18d |
| MKH2-02-004-CNS-2570 |  | Installation of Manholes [Collector 02 ]-Stage 2-[MH 08 to MH 11] | 6d | 2027-01-11 | 2027-01-17 | MKH2-02-004-CNS-2560 | 20d |
|  | 3 | **Catch Basins** |  | 2027-01-11 | 2027-01-13 |  |  |
| MKH2-02-004-CNS-2780 |  | Construction of Catch basins [Collector 02 ] | 3d | 2027-01-11 | 2027-01-13 | MKH2-02-004-PRC-1300, MKH2-02-004-CNS-2560, MKH2-02-004-CNS-2890 | 18d |
|  | 4 | **Concrete chambers Pipes** |  | 2027-01-14 | 2027-01-21 |  |  |
| MKH2-02-004-CNS-3120 |  | Excavation and Compaction (FDT) [Collector 02 ] | 2d | 2027-01-14 | 2027-01-16 | MKH2-02-004-CNS-2780, MKH2-02-004-CNS-2440 | 18d |
| MKH2-02-004-CNS-3210 |  | Installation of Pipes [Collector 02 ] | 3d | 2027-01-17 | 2027-01-19 | MKH2-02-004-CNS-3120 | 18d |
| MKH2-02-004-CNS-3300 |  | Backfilling & Compaction [Collector 02 ] | 2d | 2027-01-20 | 2027-01-21 | MKH2-02-004-CNS-3210, MKH2-02-004-CNS-2570 | 18d |
|  | 6 | **Testing and Commissioning** |  | 2027-02-25 | 2027-06-27 |  |  |
| MKH2-02-004-T&C-1000 |  | Test for Stormwater Utilities | 20d | 2027-02-25 | 2027-03-23 | MKH2-02-004-CNS-3350, MKH2-02-004-CNS-3380, MKH2-02-004-CNS-2520, MKH2-02-004-CNS-3360, MKH2-02-004-CNS-2530, MKH2-02-004-CNS-3370, MKH2-02-004-CNS-3340, MKH2-02-004-CNS-2450, MKH2-02-004-CNS-3310, MKH2-02-004-CNS-2440, MKH2-02-004-CNS-3300, MKH2-02-004-CNS-3330, MKH2-02-004-KM-1060, MKH2-02-004-CNS-2940 | 15d |
| MKH2-02-004-T&C-1010 |  | Test for Road Works | 20d | 2027-06-05 | 2027-06-27 | MKH2-02-004-CNS-1920, MKH2-02-004-CNS-1950, MKH2-02-004-CNS-1930, MKH2-02-004-CNS-1940, MKH2-02-004-CNS-1910, MKH2-02-004-CNS-1900, MKH2-02-004-CNS-1890, MKH2-02-004-CNS-1880 | 0d |
|  | 7 | **Project Hand Over & Close-out** |  | 2027-03-24 | 2027-08-24 |  |  |
|  | 1 | **As-Built DWGs** |  | 2027-03-24 | 2027-08-01 |  |  |
|  | 1 | **As-Built DWGs Submittal** |  | 2027-03-24 | 2027-07-14 |  |  |
| MKH2-02-004-ABD-1000 |  | As-Built DWGs Submittal for Stormwater Utilities | 15d | 2027-03-24 | 2027-04-10 | MKH2-02-004-T&C-1000 | 15d |
| MKH2-02-004-ABD-1010 |  | As-Built DWGs Submittal for Road Works | 15d | 2027-06-28 | 2027-07-14 | MKH2-02-004-T&C-1010 | 0d |
|  | 2 | **As-Built DWGs Approval** |  | 2027-04-11 | 2027-08-01 |  |  |
| MKH2-02-004-ABD-1020 |  | As- Built DWGs Approval for Stormwater Utilities | 10d | 2027-04-11 | 2027-04-21 | MKH2-02-004-ABD-1000 | 15d |
| MKH2-02-004-ABD-1030 |  | As- Built DWGs Approval for Road Works | 15d | 2027-07-15 | 2027-08-01 | MKH2-02-004-ABD-1010, MKH2-02-004-ABD-1020 | 0d |
|  | 2 | **Demobilization** |  | 2027-08-02 | 2027-08-24 |  |  |
| MKH2-02-004-DEM-1000 |  | Demobilization of Manpower | 10d | 2027-08-02 | 2027-08-12 | MKH2-02-004-ABD-1020, MKH2-02-004-ABD-1030 | 0d |
| MKH2-02-004-DEM-1010 |  | Removal of Equipment from Site | 10d | 2027-08-02 | 2027-08-12 | MKH2-02-004-ABD-1020, MKH2-02-004-ABD-1030 | 0d |
| MKH2-02-004-DEM-1020 |  | Site Clean Up | 10d | 2027-08-02 | 2027-08-12 | MKH2-02-004-ABD-1020, MKH2-02-004-ABD-1030 | 0d |
| MKH2-02-004-DEM-1030 |  | Removal of Site Offices and Structures | 10d | 2027-08-02 | 2027-08-12 | MKH2-02-004-ABD-1020, MKH2-02-004-ABD-1030 | 0d |

| ID | Task | Duration | Start | Finish | Predecessors | Total float |
| --- | --- | --- | --- | --- | --- | --- |
| MKH2-02-004-DEM-1040 | Restoration of Ground Surfaces | 10d | 2027-08-14 | 2027-08-24 | MKH2-02-004-DEM-1030, MKH2-02-004-DEM-1020, MKH2-02-004-DEM-1010, MKH2-02-004-DEM-1000 | 0d |

## Version 2 (data date 2026-10-06, saved 2026-10-05, file 2. MKH2-02-004-ENJ-WPR-015-06-10-2026 UP 12.xer)

Note of the change: Name weekly folders by the Thursday each week starts on (W01 - 01-Oct-2026 … W10 - 03-Dec-2026); tidy step keeps uploads in place

Last finish 2027-08-24 → 2027-10-03 (+40d). Complete tasks 0 → 131.

Changed:

| ID | Task | Start | Finish | Complete | Total float |
| --- | --- | --- | --- | --- | --- |
| 1 | **Key Milestones** |  | 2027-08-24 → 2027-10-03 (+40d) |  |  |
| 1 | **General Milestone** |  | 2027-08-24 → 2027-10-03 (+40d) |  |  |
| MKH2-02-004-KM-1000 | Project Commencement Date | 2026-06-25 A | 2026-06-25 A | 0% → 100% | 0d → none |
| MKH2-02-004-KM-1010 | Project Completion Date | 2027-08-24 → 2027-10-03 (+40d) | 2027-08-24 → 2027-10-03 (+40d) |  | 0d → -33d |
| 2 | **Contractual Milestone** |  | 2027-08-24 → 2027-10-03 (+40d) |  |  |
| 1 | **Engineering & Mobilization** |  | 2026-08-23 → 2026-09-19 (+27d) |  |  |
| MKH2-02-004-KM-1030 | Submission of the Work Plan (Baseline Programme) | 2026-07-12 A | 2026-07-12 A | 0% → 100% | 0d → none |
| MKH2-02-004-KM-1020 | Completion of Mobilization | 2026-07-23 → 2026-08-15 A (+23d) | 2026-07-23 → 2026-08-15 A (+23d) | 0% → 100% | 0d → none |
| MKH2-02-004-KM-1040 | Submission and Approval of Drawings and Materials | 2026-08-23 → 2026-09-19 A (+27d) | 2026-08-23 → 2026-09-19 A (+27d) | 0% → 100% | 18d → none |
| 2 | **Construction** | 2027-02-24 → 2027-03-27 (+31d) | 2027-08-24 → 2027-10-03 (+40d) |  |  |
| MKH2-02-004-KM-1060 | Completion of Storm Water Drainage | 2027-02-24 → 2027-03-27 (+31d) | 2027-02-24 → 2027-03-27 (+31d) |  | 15d → -8d |
| MKH2-02-004-KM-1050 | Completion of Road Works | 2027-04-24 → 2027-06-03 (+40d) | 2027-04-24 → 2027-06-03 (+40d) |  | 15d → -16d |
| MKH2-02-004-KM-1070 | Completion of Entire Project | 2027-08-24 → 2027-10-03 (+40d) | 2027-08-24 → 2027-10-03 (+40d) |  | 0d → -33d |
| 2 | **Mobilization** |  | 2026-07-23 → 2026-08-17 (+25d) |  |  |
| 2 | **Site Facilities & Offices** |  | 2026-07-23 → 2026-08-17 (+25d) |  |  |
| MKH2-02-004-MOB-1000 | Site Layout Plan | 2026-06-25 A | 2026-06-30 A | 0% → 100% | 0d → none |
| MKH2-02-004-MOB-1090 | Mobilization of Equipment | 2026-07-16 → 2026-06-25 A (-21d) | 2026-07-23 → 2026-07-04 A (-19d) | 0% → 100% | 0d → none |
| MKH2-02-004-MOB-1100 | Mobilization of Manpower | 2026-07-19 → 2026-06-25 A (-24d) | 2026-07-23 → 2026-06-30 A (-23d) | 0% → 100% | 0d → none |
| MKH2-02-004-MOB-1010 | Clear & Grub for Offices & Access Road | 2026-07-01 A | 2026-07-05 A | 0% → 100% | 0d → none |
| MKH2-02-004-MOB-1020 | Construct Site Access Roads | 2026-07-01 A | 2026-07-04 A | 0% → 100% | 0d → none |
| MKH2-02-004-MOB-1040 | Construct Site Offices & Storage | 2026-07-05 A | 2026-07-23 → 2026-08-15 A (+23d) | 0% → 100% | 0d → none |
| MKH2-02-004-MOB-1030 | Construct Temporary Fence | 2026-07-06 A | 2026-07-13 A | 0% → 100% | 0d → none |
| MKH2-02-004-MOB-1060 | Install Site Facilities | 2026-07-14 A | 2026-07-18 → 2026-08-16 A (+29d) | 0% → 100% | 0d → none |
| MKH2-02-004-MOB-1070 | Electrical Works & Connections | 2026-07-14 A | 2026-07-21 → 2026-08-16 A (+26d) | 0% → 100% | 2d → none |
| MKH2-02-004-MOB-1080 | Construct Parking Sheds | 2026-07-14 A | 2026-07-21 → 2026-08-16 A (+26d) | 0% → 100% | 2d → none |
| MKH2-02-004-MOB-1050 | Install Project Signs | 2026-07-05 → 2026-08-12 A (+38d) | 2026-07-15 → 2026-08-17 A (+33d) | 0% → 100% | 0d → none |
| MKH2-02-004-MOB-1240 | Site Survey Works | 2026-06-25 A | 2026-07-18 A | 0% → 100% | 1d → none |
| MKH2-02-004-MOB-1110 | Excavation & Backfilling Permit | 2026-06-25 A | 2026-07-18 A | 0% → 100% | 5d → none |
| 3 | **Preliminary Submittals** |  | 2026-07-23 → 2026-07-19 (-4d) |  |  |
| MKH2-02-004-MOB-1120 | Preparation and Submittal of Detailed Work Order Programme (baseline schedule) | 2026-07-05 A | 2026-07-12 A | 0% → 100% | 0d → none |
| MKH2-02-004-MOB-1130 | Preparation and Submittal of Project Execution Plan | 2026-07-05 A | 2026-07-12 A | 0% → 100% | 0d → none |
| MKH2-02-004-MOB-1140 | Preparation and Submittal of Quality Management Plan | 2026-07-05 A | 2026-07-12 A | 0% → 100% | 0d → none |
| MKH2-02-004-MOB-1150 | Preparation and Submittal of Safety Management Plan | 2026-07-05 A | 2026-07-12 A | 0% → 100% | 0d → none |
| MKH2-02-004-MOB-1160 | Preparation and Submittal of Organization Chart | 2026-07-05 A | 2026-07-12 A | 0% → 100% | 0d → none |
| MKH2-02-004-MOB-1170 | Preparation and Submittal of Communication Plan | 2026-07-05 A | 2026-07-12 A | 0% → 100% | 0d → none |
| 2 | **Approval by the Employer's** |  | 2026-07-23 → 2026-07-19 (-4d) |  |  |
| MKH2-02-004-MOB-1180 | Approval of Detailed Work Order Programme (baseline schedule) | 2026-07-13 A | 2026-07-23 → 2026-07-13 A (-10d) | 0% → 100% | 0d → none |
| MKH2-02-004-MOB-1190 | Approval of Project Execution Plan | 2026-07-13 A | 2026-07-23 → 2026-07-15 A (-8d) | 0% → 100% | 0d → none |
| MKH2-02-004-MOB-1200 | Approval of Quality Management Plan | 2026-07-13 A | 2026-07-23 → 2026-07-19 A (-4d) | 0% → 100% | 0d → none |
| MKH2-02-004-MOB-1210 | Approval of Safety Management Plan | 2026-07-13 A | 2026-07-23 → 2026-07-14 A (-9d) | 0% → 100% | 0d → none |
| MKH2-02-004-MOB-1220 | Approval of Organization Chart | 2026-07-13 A | 2026-07-23 → 2026-07-14 A (-9d) | 0% → 100% | 0d → none |
| MKH2-02-004-MOB-1230 | Approval of Comminumcation Plan | 2026-07-13 A | 2026-07-23 → 2026-07-14 A (-9d) | 0% → 100% | 0d → none |
| 3 | **Engineering** | 2026-07-01 → 2026-07-06 (+5d) | 2026-08-23 → 2026-09-19 (+27d) |  |  |
| 2 | **Shop Drawings** | 2026-07-19 → 2026-07-06 (-13d) | 2026-08-17 → 2026-09-19 (+33d) |  |  |
| 1 | **Shop Drawings Submittal** | 2026-07-19 → 2026-07-06 (-13d) | 2026-08-05 → 2026-07-09 (-27d) |  |  |
| 1 | **Shop Drawings Submittal for Road Works** | 2026-07-19 → 2026-07-06 (-13d) | 2026-08-05 → 2026-07-09 (-27d) |  |  |
| MKH2-02-004-SHD-1000 | Shop DWG Submittal for Topographic Survey | 2026-07-19 → 2026-07-06 A (-13d) | 2026-07-27 → 2026-07-09 A (-18d) | 0% → 100% | 23d → none |
| MKH2-02-004-SHD-1010 | Shop DWG Submittal for Road Layout Plan | 2026-07-28 → 2026-07-06 A (-22d) | 2026-08-05 → 2026-07-06 A (-30d) | 0% → 100% | 23d → none |
| MKH2-02-004-SHD-1020 | Shop DWG Submittal for Typical Cross Section | 2026-07-28 → 2026-07-06 A (-22d) | 2026-08-05 → 2026-07-06 A (-30d) | 0% → 100% | 23d → none |
| MKH2-02-004-SHD-1030 | Shop DWG Submittal for Road Setting Out | 2026-07-28 → 2026-07-06 A (-22d) | 2026-08-05 → 2026-07-06 A (-30d) | 0% → 100% | 23d → none |
| MKH2-02-004-SHD-1040 | Shop DWG Submittal for Road Profiles | 2026-07-28 → 2026-07-06 A (-22d) | 2026-08-05 → 2026-07-06 A (-30d) | 0% → 100% | 23d → none |
| MKH2-02-004-SHD-1050 | Shop DWG Submittal for Grading Layout Plan | 2026-07-28 → 2026-07-09 A (-19d) | 2026-08-05 → 2026-07-09 A (-27d) | 0% → 100% | 23d → none |
| MKH2-02-004-SHD-1060 | Shop DWG Submittal for Curb Setting Out Points | 2026-07-28 → 2026-07-09 A (-19d) | 2026-08-05 → 2026-07-09 A (-27d) | 0% → 100% | 23d → none |
| MKH2-02-004-SHD-1070 | Shop DWG Submittal for Signing & Marking Layout Plan | 2026-07-28 → 2026-07-09 A (-19d) | 2026-08-05 → 2026-07-09 A (-27d) | 0% → 100% | 23d → none |
| MKH2-02-004-SHD-1080 | Shop DWG Submittal for Standards Details | 2026-07-28 → 2026-07-09 A (-19d) | 2026-08-05 → 2026-07-09 A (-27d) | 0% → 100% | 23d → none |
| 6 | **Shop Drawings Submittal for Stormwater Network** | 2026-07-19 → 2026-07-09 (-10d) | 2026-07-27 → 2026-07-09 (-18d) |  |  |
| MKH2-02-004-SHD-1090 | Shop DWG Submittal for Stormwater Plans | 2026-07-19 → 2026-07-09 A (-10d) | 2026-07-27 → 2026-07-09 A (-18d) | 0% → 100% | 6d → none |
| MKH2-02-004-SHD-1100 | Shop DWG Submittal for Stormwater Profiles | 2026-07-19 → 2026-07-09 A (-10d) | 2026-07-27 → 2026-07-09 A (-18d) | 0% → 100% | 1d → none |
| MKH2-02-004-SHD-1110 | Shop DWG Submittal for Stormwater Standard Details | 2026-07-19 → 2026-07-09 A (-10d) | 2026-07-27 → 2026-07-09 A (-18d) | 0% → 100% | 6d → none |
| 2 | **Shop Drawings Approval** | 2026-07-28 → 2026-07-06 (-22d) | 2026-08-17 → 2026-09-19 (+33d) |  |  |
| 1 | **Shop Drawings Approval for Road Works** | 2026-07-28 → 2026-07-06 (-22d) | 2026-08-17 → 2026-09-19 (+33d) |  |  |
| MKH2-02-004-SHD-1130 | Shop DWG Approval for Road Layout Plan | 2026-08-06 → 2026-07-06 A (-31d) | 2026-08-17 → 2026-07-08 A (-40d) | 0% → 100% | 23d → none |
| MKH2-02-004-SHD-1140 | Shop DWG Approval for Typical Cross Section | 2026-08-06 → 2026-07-06 A (-31d) | 2026-08-17 → 2026-07-07 A (-41d) | 0% → 100% | 23d → none |
| MKH2-02-004-SHD-1160 | Shop DWG Approval for Road Profiles | 2026-08-06 → 2026-07-06 A (-31d) | 2026-08-17 → 2026-07-08 A (-40d) | 0% → 100% | 23d → none |
| MKH2-02-004-SHD-1180 | Shop DWG Approval for Curb Setting Out Points | 2026-08-06 → 2026-07-09 A (-28d) | 2026-08-17 → 2026-07-13 A (-35d) | 0% → 100% | 23d → none |
| MKH2-02-004-SHD-1200 | Shop DWG Approval for Standards Details | 2026-08-06 → 2026-07-09 A (-28d) | 2026-08-17 → 2026-07-28 A (-20d) | 0% → 100% | 23d → none |
| MKH2-02-004-SHD-1120 | Shop DWG Approval for Topographic Survey | 2026-07-28 → 2026-08-03 A (+6d) | 2026-08-08 → 2026-08-03 A (-5d) | 0% → 100% | 31d → none |
| MKH2-02-004-SHD-1150 | Shop DWG Approval for Road Setting Out | 2026-08-06 → 2026-08-03 A (-3d) | 2026-08-17 → 2026-08-03 A (-14d) | 0% → 100% | 23d → none |
| MKH2-02-004-SHD-1170 | Shop DWG Approval for Grading Layout Plan | 2026-08-06 → 2026-08-03 A (-3d) | 2026-08-17 → 2026-08-06 A (-11d) | 0% → 100% | 23d → none |
| MKH2-02-004-SHD-1190 | Shop DWG Approval for Signing & Marking Layout Plan | 2026-08-06 → 2026-09-16 A (+41d) | 2026-08-17 → 2026-09-19 A (+33d) | 0% → 100% | 23d → none |

| ID | Task | Start | Finish | Complete | Total float |
| --- | --- | --- | --- | --- | --- |
| 6 | **Shop Drawings Approval for Storm Network** | 2026-07-28 → 2026-07-22 (-6d) | 2026-08-08 → 2026-07-22 (-17d) |  |  |
| MKH2-02-004-SHD-1210 | Shop DWG Approval for Stormwater Plans | 2026-07-28 → 2026-07-22 A (-6d) | 2026-08-08 → 2026-07-22 A (-17d) | 0% → 100% | 6d → none |
| MKH2-02-004-SHD-1220 | Shop DWG Approval for Stormwater Profiles | 2026-07-28 → 2026-07-22 A (-6d) | 2026-08-08 → 2026-07-22 A (-17d) | 0% → 100% | 1d → none |
| MKH2-02-004-SHD-1230 | Shop DWG Approval for Stormwater Standard Details | 2026-07-28 → 2026-07-22 A (-6d) | 2026-08-08 → 2026-07-22 A (-17d) | 0% → 100% | 6d → none |
| 3 | **Method Statements** | 2026-07-01 → 2026-07-11 (+10d) | 2026-08-11 → 2026-07-21 (-21d) |  |  |
| 1 | **Method Statements Submittal** | 2026-07-01 → 2026-07-11 (+10d) | 2026-07-30 → 2026-07-18 (-12d) |  |  |
| MKH2-02-004-MST-1000 | Preparation & Submission of Method Statement for Earthworks | 2026-07-01 → 2026-07-11 A (+10d) | 2026-07-09 → 2026-07-13 A (+4d) | 0% → 100% | 2d → none |
| MKH2-02-004-MST-1010 | Preparation & Submission of Method Statement for Concrete Works | 2026-07-11 → 2026-07-16 A (+5d) | 2026-07-19 → 2026-07-16 A (-3d) | 0% → 100% | 22d → none |
| MKH2-02-004-MST-1020 | Preparation & Submission of Method Statement for Asphalt | 2026-07-20 → 2026-07-16 A (-4d) | 2026-07-30 → 2026-07-18 A (-12d) | 0% → 100% | 28d → none |
| 2 | **Method Statements Approval** |  | 2026-08-11 → 2026-07-21 (-21d) |  |  |
| MKH2-02-004-MST-1030 | Approval of Method Statement for Earthworks | 2026-07-11 A | 2026-07-21 → 2026-07-13 A (-8d) | 0% → 100% | 2d → none |
| MKH2-02-004-MST-1040 | Approval of Method Statement for Concrete Works | 2026-07-20 → 2026-07-16 A (-4d) | 2026-07-30 → 2026-07-21 A (-9d) | 0% → 100% | 22d → none |
| MKH2-02-004-MST-1050 | Approval of Method Statement for Asphalt | 2026-08-01 → 2026-07-18 A (-14d) | 2026-08-11 → 2026-07-21 A (-21d) | 0% → 100% | 28d → none |
| 4 | **Pre-qualification and Material** | 2026-07-06 → 2026-07-11 (+5d) | 2026-08-23 → 2026-08-29 (+6d) |  |  |
| 2 | **Pre-qualification** | 2026-07-06 → 2026-07-11 (+5d) | 2026-08-04 → 2026-08-02 (-2d) |  |  |
| 1 | **Road Works - Civil** | 2026-07-19 → 2026-07-11 (-8d) | 2026-08-04 → 2026-08-02 (-2d) |  |  |
| 4 | **Aggregate Base Course** | 2026-07-19 → 2026-07-11 (-8d) | 2026-08-04 → 2026-07-15 (-20d) |  |  |
| MKH2-02-004-PRQ-1000 | Pre-Qualification Submittal for Aggregate Base Cource | 2026-07-19 → 2026-07-11 A (-8d) | 2026-07-23 → 2026-07-15 A (-8d) | 0% → 100% | 18d → none |
| MKH2-02-004-PRQ-1010 | Pre-Qualification Approval for Aggregate Base Cource | 2026-07-25 → 2026-07-11 A (-14d) | 2026-08-04 → 2026-07-15 A (-20d) | 0% → 100% | 18d → none |
| 5 | **Bituminous Base Course** | 2026-07-19 → 2026-07-28 (+9d) | 2026-08-04 → 2026-08-02 (-2d) |  |  |
| MKH2-02-004-PRQ-1020 | Pre-Qualification Submittal for Bituminous Base Cource | 2026-07-19 → 2026-07-28 A (+9d) | 2026-07-23 → 2026-08-02 A (+10d) | 0% → 100% | 18d → none |
| MKH2-02-004-PRQ-1030 | Pre-Qualification Approval for Bituminous Base Cource | 2026-07-25 → 2026-07-28 A (+3d) | 2026-08-04 → 2026-08-02 A (-2d) | 0% → 100% | 18d → none |
| 7 | **Precast Concrete Kerb** | 2026-07-19 → 2026-07-11 (-8d) | 2026-08-04 → 2026-07-15 (-20d) |  |  |
| MKH2-02-004-PRQ-1040 | Pre-Qualification Submittal for Precast Concrete Kerb | 2026-07-19 → 2026-07-11 A (-8d) | 2026-07-23 → 2026-07-15 A (-8d) | 0% → 100% | 18d → none |
| MKH2-02-004-PRQ-1050 | Pre-Qualification Approval for Precast Concrete Kerb | 2026-07-25 → 2026-07-11 A (-14d) | 2026-08-04 → 2026-07-15 A (-20d) | 0% → 100% | 18d → none |
| 8 | **Interlocking Block Pavers** | 2026-07-19 → 2026-07-12 (-7d) | 2026-08-04 → 2026-07-14 (-21d) |  |  |
| MKH2-02-004-PRQ-1060 | Pre-Qualification Submittal for Interlocking Block Pavers | 2026-07-19 → 2026-07-12 A (-7d) | 2026-07-23 → 2026-07-14 A (-9d) | 0% → 100% | 18d → none |
| MKH2-02-004-PRQ-1070 | Pre-Qualification Approval for Interlocking Block Pavers | 2026-07-25 → 2026-07-12 A (-13d) | 2026-08-04 → 2026-07-14 A (-21d) | 0% → 100% | 18d → none |
| 9 | **Pavement Markings** | 2026-07-19 → 2026-07-16 (-3d) | 2026-08-04 → 2026-07-16 (-19d) |  |  |
| MKH2-02-004-PRQ-1080 | Pre-Qualification Submittal for Pavement Markings | 2026-07-19 → 2026-07-16 A (-3d) | 2026-07-23 → 2026-07-16 A (-7d) | 0% → 100% | 18d → none |
| MKH2-02-004-PRQ-1090 | Pre-Qualification Approval for Pavement Markings | 2026-07-25 → 2026-07-16 A (-9d) | 2026-08-04 → 2026-07-16 A (-19d) | 0% → 100% | 18d → none |
| 10 | **Traffic Signs** | 2026-07-19 → 2026-07-16 (-3d) | 2026-08-04 → 2026-07-16 (-19d) |  |  |
| MKH2-02-004-PRQ-1100 | Pre-Qualification Submittal for Traffic Signs | 2026-07-19 → 2026-07-16 A (-3d) | 2026-07-23 → 2026-07-16 A (-7d) | 0% → 100% | 18d → none |
| MKH2-02-004-PRQ-1110 | Pre-Qualification Approval for Traffic Signs | 2026-07-25 → 2026-07-16 A (-9d) | 2026-08-04 → 2026-07-16 A (-19d) | 0% → 100% | 18d → none |
| 7 | **Storm Network** | 2026-07-06 → 2026-07-11 (+5d) | 2026-07-28 → 2026-07-14 (-14d) |  |  |
| 2 | **GRP Pipes** | 2026-07-06 → 2026-07-11 (+5d) | 2026-07-22 → 2026-07-11 (-11d) |  |  |
| MKH2-02-004-PRQ-1120 | Pre-Qualification Submittal for GRP Pipe | 2026-07-06 → 2026-07-11 A (+5d) | 2026-07-11 A | 0% → 100% | 0d → none |
| MKH2-02-004-PRQ-1130 | Pre-Qualification Approval for GRP Pipe | 2026-07-12 → 2026-07-11 A (-1d) | 2026-07-22 → 2026-07-11 A (-11d) | 0% → 100% | 0d → none |
| 1 | **Catch Basin** | 2026-07-06 → 2026-07-11 (+5d) | 2026-07-22 → 2026-07-11 (-11d) |  |  |
| MKH2-02-004-PRQ-1160 | Pre-Qualification Submittal for Catch Basin | 2026-07-06 → 2026-07-11 A (+5d) | 2026-07-11 A | 0% → 100% | 27d → none |
| MKH2-02-004-PRQ-1170 | Pre-Qualification Approval for Catch Basin | 2026-07-12 → 2026-07-11 A (-1d) | 2026-07-22 → 2026-07-11 A (-11d) | 0% → 100% | 27d → none |
| 6 | **Inlet Manholes** | 2026-07-12 → 2026-07-13 (+1d) | 2026-07-28 → 2026-07-14 (-14d) |  |  |
| MKH2-02-004-PRQ-1140 | Pre-Qualification Submittal for Inlet Manholes | 2026-07-12 → 2026-07-13 A (+1d) | 2026-07-16 → 2026-07-14 A (-2d) | 0% → 100% | 14d → none |
| MKH2-02-004-PRQ-1150 | Pre-Qualification Approval for Inlet Manholes | 2026-07-18 → 2026-07-13 A (-5d) | 2026-07-28 → 2026-07-14 A (-14d) | 0% → 100% | 14d → none |
| 3 | **Material Submittal** | 2026-07-23 → 2026-07-11 (-12d) | 2026-08-23 → 2026-08-29 (+6d) |  |  |
| 1 | **Road Works - Civil** | 2026-08-05 → 2026-07-19 (-17d) | 2026-08-23 → 2026-08-29 (+6d) |  |  |
| 4 | **Aggregate Base Course** |  | 2026-08-23 → 2026-08-27 (+4d) |  |  |
| MKH2-02-004-MTS-1000 | Design Submittal for Aggregate Base Cource | 2026-08-05 A | 2026-08-11 → 2026-08-05 A (-6d) | 0% → 100% | 18d → none |
| MKH2-02-004-MTS-1010 | Design Approval for Aggregate Base Cource | 2026-08-12 → 2026-08-22 A (+10d) | 2026-08-23 → 2026-08-27 A (+4d) | 0% → 100% | 18d → none |
| 5 | **Bituminous Base Course** | 2026-08-05 → 2026-07-28 (-8d) | 2026-08-23 → 2026-08-02 (-21d) |  |  |
| MKH2-02-004-MTS-1020 | Design Submittal for Bituminous Base Cource | 2026-08-05 → 2026-07-28 A (-8d) | 2026-08-11 → 2026-07-28 A (-14d) | 0% → 100% | 18d → none |
| MKH2-02-004-MTS-1030 | Design Approval for Bituminous Base Cource | 2026-08-12 → 2026-07-28 A (-15d) | 2026-08-23 → 2026-08-02 A (-21d) | 0% → 100% | 18d → none |
| 7 | **Precast Concrete Kerb** | 2026-08-05 → 2026-08-22 (+17d) |  |  |  |
| MKH2-02-004-MTS-1040 | Material Submittal for Precast Concrete Kerb | 2026-08-05 → 2026-08-22 A (+17d) | 2026-08-11 → 2026-08-23 A (+12d) | 0% → 100% | 18d → none |
| MKH2-02-004-MTS-1050 | Material Approval for Precast Concrete Kerb | 2026-08-12 → 2026-08-22 A (+10d) | 2026-08-23 A | 0% → 100% | 18d → none |
| 8 | **Interlocking Block Pavers** | 2026-08-05 → 2026-08-22 (+17d) |  |  |  |
| MKH2-02-004-MTS-1060 | Material Submittal for Interlocking Block Pavers | 2026-08-05 → 2026-08-22 A (+17d) | 2026-08-11 → 2026-08-23 A (+12d) | 0% → 100% | 18d → none |
| MKH2-02-004-MTS-1070 | Material Approval for Interlocking Block Pavers | 2026-08-12 → 2026-08-22 A (+10d) | 2026-08-23 A | 0% → 100% | 18d → none |
| 9 | **Pavement Markings** | 2026-08-05 → 2026-08-27 (+22d) | 2026-08-23 → 2026-08-29 (+6d) |  |  |
| MKH2-02-004-MTS-1080 | Material Submittal for Pavement Markings | 2026-08-05 → 2026-08-27 A (+22d) | 2026-08-11 → 2026-08-29 A (+18d) | 0% → 100% | 18d → none |
| MKH2-02-004-MTS-1090 | Material Approval for Pavement Markings | 2026-08-12 → 2026-08-27 A (+15d) | 2026-08-23 → 2026-08-29 A (+6d) | 0% → 100% | 18d → none |
| 10 | **Traffic Signs** | 2026-08-05 → 2026-07-19 (-17d) | 2026-08-23 → 2026-07-20 (-34d) |  |  |
| MKH2-02-004-MTS-1100 | Material Submittal for Traffic Signs | 2026-08-05 → 2026-07-19 A (-17d) | 2026-08-11 → 2026-07-20 A (-22d) | 0% → 100% | 18d → none |
| MKH2-02-004-MTS-1110 | Material Approval for Traffic Signs | 2026-08-12 → 2026-07-19 A (-24d) | 2026-08-23 → 2026-07-20 A (-34d) | 0% → 100% | 18d → none |
| 7 | **Storm Network** | 2026-07-23 → 2026-07-11 (-12d) | 2026-08-15 → 2026-07-21 (-25d) |  |  |
| 2 | **GRP Pipes** | 2026-07-23 → 2026-07-11 (-12d) | 2026-08-09 → 2026-07-12 (-28d) |  |  |
| MKH2-02-004-MTS-1120 | Material Submittal for GRP Pipe | 2026-07-23 → 2026-07-11 A (-12d) | 2026-07-28 → 2026-07-12 A (-16d) | 0% → 100% | 0d → none |
| MKH2-02-004-MTS-1130 | Material Approval for GRP Pipe | 2026-07-29 → 2026-07-11 A (-18d) | 2026-08-09 → 2026-07-12 A (-28d) | 0% → 100% | 0d → none |
| 1 | **Catch Basin** | 2026-07-23 → 2026-07-19 (-4d) | 2026-08-09 → 2026-07-21 (-19d) |  |  |
| MKH2-02-004-MTS-1160 | Material Submittal for Catch Basin | 2026-07-23 → 2026-07-19 A (-4d) | 2026-07-28 → 2026-07-19 A (-9d) | 0% → 100% | 27d → none |

| ID | Task | Start | Finish | Complete | Total float | Other |
| --- | --- | --- | --- | --- | --- | --- |
| MKH2-02-004-MTS-1170 | Material Approval for Catch Basin | 2026-07-29 → 2026-07-19 A (-10d) | 2026-08-09 → 2026-07-21 A (-19d) | 0% → 100% | 27d → none |  |
| 6 | **Inlet Manholes** | 2026-07-29 → 2026-07-19 (-10d) | 2026-08-15 → 2026-07-21 (-25d) |  |  |  |
| MKH2-02-004-MTS-1140 | Material Submittal for Inlet Manholes | 2026-07-29 → 2026-07-19 A (-10d) | 2026-08-03 → 2026-07-19 A (-15d) | 0% → 100% | 14d → none |  |
| MKH2-02-004-MTS-1150 | Material Approval for Inlet Manholes | 2026-08-04 → 2026-07-19 A (-16d) | 2026-08-15 → 2026-07-21 A (-25d) | 0% → 100% | 14d → none |  |
| 4 | **Procurement** | 2026-08-10 → 2026-07-15 (-26d) | 2026-11-30 → 2027-01-06 (+37d) |  |  |  |
| 1 | **Road Works - Civil** | 2026-08-24 → 2026-09-30 (+37d) | 2026-11-30 → 2027-01-06 (+37d) |  |  |  |
| 4 | **Aggregate Base Course** | 2026-08-24 → 2026-10-06 (+43d) | 2026-11-08 → 2026-12-20 (+42d) |  |  |  |
| MKH2-02-004-PRC-1000 | PO for Aggregate Base Course | 2026-08-24 → 2026-10-06 (+43d) | 2026-08-29 → 2026-10-11 (+43d) |  | 18d → -18d |  |
| MKH2-02-004-PRC-1010 | Material Delivery for Aggregate Base Course-Stage 1 | 2026-08-30 → 2026-10-12 (+43d) | 2026-10-04 → 2026-11-15 (+42d) |  | 18d → -18d |  |
| MKH2-02-004-PRC-1020 | Material Delivery for Aggregate Base Course-Stage 2 | 2026-10-05 → 2026-11-16 (+42d) | 2026-11-08 → 2026-12-20 (+42d) |  | 18d → -18d |  |
| 5 | **Bituminous Base Course** | 2026-08-30 → 2026-10-12 (+43d) | 2026-11-25 → 2027-01-06 (+42d) |  |  |  |
| MKH2-02-004-PRC-1030 | PO for Bituminous Base Course | 2026-08-30 → 2026-10-12 (+43d) | 2026-09-03 → 2026-10-17 (+44d) |  | 20d → -16d |  |
| MKH2-02-004-PRC-1040 | Material Delivery for Bituminous Base Course-Stage 1 | 2026-09-05 → 2026-10-18 (+43d) | 2026-10-15 → 2026-11-26 (+42d) |  | 27d → -9d |  |
| MKH2-02-004-PRC-1050 | Material Delivery for Bituminous Base Course-Stage 2 | 2026-10-17 → 2026-11-28 (+42d) | 2026-11-25 → 2027-01-06 (+42d) |  | 27d → -9d |  |
| 7 | **Precast Concrete Curb** | 2026-09-05 → 2026-10-18 (+43d) | 2026-11-19 → 2026-12-31 (+42d) |  |  |  |
| MKH2-02-004-PRC-1060 | PO for Precast Concrete Curb | 2026-09-05 → 2026-10-18 (+43d) | 2026-09-09 → 2026-10-22 (+43d) |  | 20d → -16d |  |
| MKH2-02-004-PRC-1070 | Material Fabrication for Precast Concrete Curb | 2026-09-10 → 2026-10-24 (+44d) | 2026-10-15 → 2026-11-26 (+42d) |  | 23d → -13d |  |
| MKH2-02-004-PRC-1080 | Material Delivery for Precast Concrete Curb | 2026-10-17 → 2026-11-28 (+42d) | 2026-11-19 → 2026-12-31 (+42d) |  | 23d → -13d |  |
| 8 | **Interlocking Block Pavers** | 2026-09-10 → 2026-10-24 (+44d) | 2026-11-23 → 2027-01-04 (+42d) |  |  |  |
| MKH2-02-004-PRC-1090 | PO for Interlocking Block Pavers | 2026-09-10 → 2026-10-24 (+44d) | 2026-09-13 → 2026-10-26 (+43d) |  | 20d → -16d |  |
| MKH2-02-004-PRC-1100 | Material Fabrication for Interlocking Block Pavers | 2026-09-14 → 2026-10-27 (+43d) | 2026-10-19 → 2026-11-30 (+42d) |  | 20d → -16d |  |
| MKH2-02-004-PRC-1110 | Material Delivery for Interlocking Block Pavers | 2026-10-20 → 2026-12-01 (+42d) | 2026-11-23 → 2027-01-04 (+42d) |  | 20d → -16d |  |
| 9 | **Pavement Markings** | 2026-09-14 → 2026-10-27 (+43d) | 2026-11-16 → 2026-12-28 (+42d) |  |  |  |
| MKH2-02-004-PRC-1120 | PO for Pavement Markings | 2026-09-14 → 2026-10-27 (+43d) | 2026-09-17 → 2026-10-31 (+44d) |  | 23d → -10d |  |
| MKH2-02-004-PRC-1130 | Material Fabrication for Pavement Markings | 2026-09-19 → 2026-11-01 (+43d) | 2026-10-18 → 2026-11-29 (+42d) |  | 26d → -10d |  |
| MKH2-02-004-PRC-1140 | Material Delivery for Pavement Markings | 2026-10-19 → 2026-11-30 (+42d) | 2026-11-16 → 2026-12-28 (+42d) |  | 26d → -10d |  |
| 10 | **Traffic Signs** | 2026-09-19 → 2026-09-30 (+11d) | 2026-11-30 → 2027-01-04 (+35d) |  |  |  |
| MKH2-02-004-PRC-1150 | PO for Traffic Signs | 2026-09-19 → 2026-09-30 A (+11d) | 2026-09-26 → 2026-10-04 A (+8d) | 0% → 100% | 23d → none |  |
| MKH2-02-004-PRC-1160 | Material Fabrication for Traffic Signs | 2026-09-27 → 2026-11-01 (+35d) | 2026-10-28 → 2026-12-02 (+35d) |  | 23d → -7d |  |
| MKH2-02-004-PRC-1170 | Material Delivery for Traffic Signs | 2026-10-29 → 2026-12-03 (+35d) | 2026-11-30 → 2027-01-04 (+35d) |  | 23d → -7d |  |
| 7 | **Stormwater Utilities** | 2026-08-10 → 2026-07-15 (-26d) | 2026-11-16 → 2026-12-14 (+28d) |  |  |  |
| 2 | **GRP Pipes** | 2026-08-10 → 2026-07-15 (-26d) | 2026-10-29 → 2026-09-20 (-39d) |  |  |  |
| MKH2-02-004-PRC-1180 | PO for GRP Pipes | 2026-08-10 → 2026-07-15 A (-26d) | 2026-08-15 → 2026-07-15 A (-31d) | 0% → 100% | 0d → none |  |
| MKH2-02-004-PRC-1190 | Material Fabrication for GRP Pipes | 2026-08-16 → 2026-07-16 A (-31d) | 2026-09-02 → 2026-07-20 A (-44d) | 0% → 100% | 0d → none |  |
| MKH2-02-004-PRC-1200 | Material Delivery for GRP Pipes-Stage 1 | 2026-09-03 → 2026-07-27 A (-38d) | 2026-09-21 → 2026-08-03 A (-49d) | 0% → 100% | 0d → none |  |
| MKH2-02-004-PRC-1210 | Material Delivery for GRP Pipes-Stage 2 | 2026-09-22 → 2026-09-09 A (-13d) | 2026-10-11 → 2026-09-14 A (-27d) | 0% → 100% | 0d → none |  |
| MKH2-02-004-PRC-1220 | Material Delivery for GRP Pipes-Stage 3 | 2026-10-12 → 2026-09-15 A (-27d) | 2026-10-29 → 2026-09-20 A (-39d) | 0% → 100% | 0d → none |  |
| 7 | **Catch Basins** | 2026-08-10 → 2026-07-15 (-26d) | 2026-11-16 → 2026-12-14 (+28d) |  |  |  |
| MKH2-02-004-PRC-1270 | PO for Catch Basins | 2026-08-10 → 2026-07-15 A (-26d) | 2026-08-13 → 2026-07-15 A (-29d) | 0% → 100% | 27d → none |  |
| MKH2-02-004-PRC-1280 | Material Fabrication for Catch Basins | 2026-08-15 → 2026-09-09 A (+25d) | 2026-09-06 → 2026-09-12 A (+6d) | 0% → 100% | 27d → none |  |
| MKH2-02-004-PRC-1290 | Material Delivery for Catch Basins-Stage 1 | 2026-09-07 → 2026-09-13 A (+6d) | 2026-09-30 → 2026-10-28 (+28d) | 0% → 60% | 27d → 3d |  |
| MKH2-02-004-PRC-1300 | Material Delivery for Catch Basins-Stage 2 | 2026-10-01 → 2026-10-29 (+28d) | 2026-10-24 → 2026-11-21 (+28d) |  | 29d → 5d |  |
| MKH2-02-004-PRC-1310 | Material Delivery for Catch Basins-Stage 3 | 2026-10-25 → 2026-11-22 (+28d) | 2026-11-16 → 2026-12-14 (+28d) |  | 29d → 5d |  |
| 6 | **Inlet Manholes** | 2026-08-16 → 2026-08-13 (-3d) | 2026-10-31 → 2026-09-20 (-41d) |  |  |  |
| MKH2-02-004-PRC-1230 | PO for Inlet Manholes | 2026-08-16 → 2026-08-13 A (-3d) | 2026-08-20 → 2026-08-13 A (-7d) | 0% → 100% | 14d → none |  |
| MKH2-02-004-PRC-1240 | Material Fabrication for Inlet Manholes | 2026-08-22 → 2026-08-15 A (-7d) | 2026-09-13 → 2026-08-18 A (-26d) | 0% → 100% | 14d → none |  |
| MKH2-02-004-PRC-1250 | Material Delivery for Inlet Manholes-Stage 1 | 2026-09-14 → 2026-08-22 A (-23d) | 2026-10-07 → 2026-09-05 A (-32d) | 0% → 100% | 14d → none |  |
| MKH2-02-004-PRC-1260 | Material Delivery for Inlet Manholes-Stage 2 | 2026-10-08 → 2026-09-16 A (-22d) | 2026-10-31 → 2026-09-20 A (-41d) | 0% → 100% | 29d → none |  |
| 5 | **Construction** | 2026-07-25 → 2026-07-07 (-18d) | 2027-06-03 → 2027-07-12 (+39d) |  |  |  |
| 1 | **Roads** | 2026-07-25 → 2026-07-07 (-18d) | 2027-06-03 → 2027-07-12 (+39d) |  |  |  |
| 3 | **Local 17** | 2026-07-25 → 2026-07-07 (-18d) | 2027-03-01 → 2027-04-25 (+55d) |  |  |  |
| 1 | **Road Works** | 2026-07-25 → 2026-07-07 (-18d) | 2027-03-01 → 2027-04-25 (+55d) |  |  |  |
| 1 | **Eartworks & Site grading** | 2026-07-25 → 2026-07-07 (-18d) | 2026-12-01 → 2027-01-21 (+51d) |  |  |  |
| MKH2-02-004-CNS-1020 | Road excavation [Local 17 ]-Stage 1 | 2026-07-25 → 2026-07-07 A (-18d) | 2026-08-13 → 2026-08-20 A (+7d) | 0% → 100% | 0d → none | resources Roadway Excavation for cuttings (all types of soil) [34938]; Bulldozer [720 h]; Truck [1440 h]; Labor [2160 h]; Driver [1440 h]; Eq. Operator [720 h] → Bulldozer [720 h]; Truck [1440 h]; Labor [2160 h]; Driver [1440 h]; Eq. Operator [720 h]; Roadway Excavation for cuttings (all types of soil) [34938] |
| MKH2-02-004-CNS-1140 | Road backfilling [Local 17 ]-Stage 1 | 2026-07-25 → 2026-07-15 A (-10d) | 2026-08-13 → 2026-08-01 A (-12d) | 0% → 100% | 0d → none | resources Embankments to the ROW with common / suitable excavated material or with suitable imported material [17582]; Bulldozer [360 h]; Water Tanker [360 h]; Truck [720 h]; Road Roller [360 h]; Bobcat [360 h]; Labor [1080 h]; Driver [1080 h]; Eq. Operator [1080 h] → Bulldozer [360 h]; Water Tanker [360 h]; Truck [720 h]; Road Roller [360 h]; Labor [1080 h]; Driver [1080 h]; Eq. Operator [1080 h]; Bobcat [360 h]; Embankments to the ROW with common / suitable excavated material or with suitable imported material [17582] |
| MKH2-02-004-CNS-1150 | Road backfilling [Local 17 ]-Stage 2 | 2026-08-15 → 2026-08-01 A (-14d) | 2026-09-03 → 2026-10-22 (+49d) | 0% → 45% | 0d → -24d | resources Embankments to the ROW with common / suitable excavated material or with suitable imported material [17582]; Grader [360 h]; Truck [720 h]; Road Roller [360 h]; Compactor [360 h]; Labor [1080 h]; Driver [720 h]; Eq. Operator [1080 h] → Grader [360 h]; Truck [720 h]; Road Roller [360 h]; Compactor [360 h]; Labor [1080 h]; Driver [720 h]; Eq. Operator [1080 h]; Embankments to the ROW with common / suitable excavated material or with suitable imported material [17582] |
| MKH2-02-004-CNS-1030 | Road excavation [Local 17 ]-Stage 2 | 2026-08-15 → 2026-08-20 A (+5d) | 2026-09-03 → 2026-10-17 (+44d) | 0% → 60% | 0d → -24d | resources Roadway Excavation for cuttings (all types of soil) [34937]; Excavator [720 h]; Water Tanker [720 h]; Grader [720 h]; Truck [1440 h]; Bobcat [720 h]; Labor [2160 h]; Driver [2160 h]; Eq. Operator [2160 h] → Excavator [720 h]; Water Tanker [720 h]; Grader [720 h]; Truck [1440 h]; Labor [2160 h]; Driver [2160 h]; Eq. Operator [2160 h]; Bobcat [720 h]; Roadway Excavation for cuttings (all types of soil) [34937] |
| MKH2-02-004-CNS-1260 | Subgrade [Local 17 ] | 2026-10-28 → 2026-12-19 (+52d) | 2026-11-14 → 2027-01-04 (+51d) |  | 8d → -33d | resources Subgrade [10735]; Water Tanker [300 h]; Truck [600 h]; Road Roller [300 h]; Labor [600 h]; Driver [900 h]; Eq. Operator [300 h] → Water Tanker [300 h]; Truck [600 h]; Road Roller [300 h]; Labor [600 h]; Driver [900 h]; Eq. Operator [300 h]; Subgrade [10735] |
| MKH2-02-004-CNS-1340 | Aggregate base course [Local 17 ] | 2026-11-15 → 2027-01-05 (+51d) | 2026-12-01 → 2027-01-21 (+51d) |  | 13d → -31d | resources Aggregate base course [7157]; Loader [300 h]; Water Tanker [300 h]; Truck [600 h]; Road Roller [300 h]; Labor [900 h]; Driver [900 h]; Eq. Operator [600 h] → Loader [300 h]; Water Tanker [300 h]; Truck [600 h]; Road Roller [300 h]; Labor [900 h]; Driver [900 h]; Eq. Operator [600 h]; Aggregate base course [7157] |
| 2 | **Asphalt Works** | 2026-12-02 → 2027-01-23 (+52d) | 2026-12-30 → 2027-02-20 (+52d) |  |  |  |
| MKH2-02-004-CNS-1420 | Prime Coat (MC1) [Local 17 ] | 2026-12-02 → 2027-01-23 (+52d) | 2026-12-13 → 2027-02-02 (+51d) |  | 22d → -22d | resources Bituminous base course (Grading I - Class A), including Prime Coat (MC1) [251]; Water Tanker [100 h]; Truck [100 h]; Road Roller [100 h]; Asphalte Paver [100 h]; Labor [200 h]; Driver [200 h]; Eq. Operator [200 h] → Water Tanker [100 h]; Truck [100 h]; Road Roller [100 h]; Asphalte Paver [100 h]; Labor [200 h]; Driver [200 h]; Eq. Operator [200 h]; Bituminous base course (Grading I - Class A), including Prime Coat (MC1) [251] |
| MKH2-02-004-CNS-1500 | Bituminous base course [Local 17 ] | 2026-12-14 → 2027-02-03 (+51d) | 2026-12-30 → 2027-02-20 (+52d) |  | 22d → -22d | resources Bituminous base course (Grading I - Class A), including Prime Coat (MC1) [2255]; Truck [300 h]; Road Roller [150 h]; Asphalte Paver [150 h]; Labor [600 h]; Driver [300 h]; Eq. Operator [300 h] → Truck [300 h]; Road Roller [150 h]; Asphalte Paver [150 h]; Labor [600 h]; Driver [300 h]; Eq. Operator [300 h]; Bituminous base course (Grading I - Class A), including Prime Coat (MC1) [2255] |
| 3 | **Finishing Works** | 2026-12-31 → 2027-02-21 (+52d) | 2027-03-01 → 2027-04-25 (+55d) |  |  |  |
| 1 | **Precast Concrete Curb** | 2026-12-31 → 2027-02-21 (+52d) | 2027-01-13 → 2027-03-07 (+53d) |  |  |  |
| MKH2-02-004-CNS-1580 | Installation of Precast Concrete curb [Local 17 ] | 2026-12-31 → 2027-02-21 (+52d) | 2027-01-13 → 2027-03-07 (+53d) |  | 22d → -22d | resources Precast Concrete Kerb, Type K1-B [6961]; Labor [1080 h]; Skilled Labor [720 h] → Labor [1080 h]; Skilled Labor [720 h]; Precast Concrete Kerb, Type K1-B [6961] |
| 2 | **Precast Interlocking block pavers** | 2027-01-14 → 2027-03-08 (+53d) | 2027-01-26 → 2027-03-23 (+56d) |  |  |  |
| MKH2-02-004-CNS-1660 | Installation of Interlocking block pavers for sidewalk/footpath [Local 17 ] | 2027-01-14 → 2027-03-08 (+53d) | 2027-01-26 → 2027-03-23 (+56d) |  | 22d → -22d | resources 60mm thick - Interlocking block pavers for sidewalk/footpath [7988]; Road Roller [330 h]; Compactor [330 h]; Labor [990 h]; Eq. Operator [660 h]; Mason [1980 h] → Road Roller [330 h]; Compactor [330 h]; Labor [990 h]; Eq. Operator [660 h]; Mason [1980 h]; 60mm thick - Interlocking block pavers for sidewalk/footpath [7988] |
| 3 | **Pavement Markings** | 2027-01-27 → 2027-03-24 (+56d) | 2027-02-14 → 2027-04-11 (+56d) |  |  |  |
| MKH2-02-004-CNS-1740 | Pavement markings [Local 17 ] | 2027-01-27 → 2027-03-24 (+56d) | 2027-02-04 → 2027-04-01 (+56d) |  | 22d → -22d | resources Retroreflective Thermoplastic White Traffic lines [1550]; Labor [160 h]; Skilled Labor [160 h] → Labor [160 h]; Skilled Labor [160 h]; Retroreflective Thermoplastic White Traffic lines [1550] |
| MKH2-02-004-CNS-1820 | (Speed Hump) with retroreflectiveThermoplastic yellow [Local 17 ] | 2027-02-06 → 2027-04-03 (+56d) | 2027-02-14 → 2027-04-11 (+56d) |  | 22d → -22d | resources (Speed Hump) with retroreflectiveThermoplastic yellow [5]; Labor [240 h]; Skilled Labor [160 h] → Labor [240 h]; Skilled Labor [160 h]; (Speed Hump) with retroreflectiveThermoplastic yellow [5] |

| ID | Task | Start | Finish | Complete | Total float | Other |
| --- | --- | --- | --- | --- | --- | --- |
| 4 | **Traffic Signage** | 2027-02-15 → 2027-04-12 (+56d) | 2027-03-01 → 2027-04-25 (+55d) |  |  |  |
| MKH2-02-004-CNS-1900 | Installation of Traffic Signs [Local 17 ] | 2027-02-15 → 2027-04-12 (+56d) | 2027-03-01 → 2027-04-25 (+55d) |  | 22d → -22d | resources Traffic signs, ground mounted, Sheet Alumenium, (breakaway)Single post, with all accessories [49]; Labor [360 h]; Skilled Labor [240 h] → Labor [360 h]; Skilled Labor [240 h]; Traffic signs, ground mounted, Sheet Alumenium, (breakaway)Single post, with all accessories [49] |
| 2 | **Storm Water Drainage** | 2026-08-15 → 2026-10-06 (+52d) | 2027-01-02 → 2027-02-09 (+38d) |  |  |  |
| 1 | **Pipe Works** | 2026-08-15 → 2026-10-06 (+52d) | 2026-10-27 → 2026-12-17 (+51d) |  |  |  |
| MKH2-02-004-CNS-1980 | Excavation & Compaction (FDT) [Local 17 ]-Stage 1 | 2026-08-15 → 2026-10-06 (+52d) | 2026-08-29 → 2026-10-20 (+52d) |  | 8d → -33d | resources Depth: 0.0m - 1.5m [642]; Excavator [390 h]; Water Tanker [390 h]; Truck [780 h]; Bobcat [390 h]; Compactor [390 h]; Labor [1170 h]; Driver [1170 h]; Eq. Operator [1170 h] → Excavator [390 h]; Water Tanker [390 h]; Truck [780 h]; Compactor [390 h]; Labor [1170 h]; Driver [1170 h]; Eq. Operator [1170 h]; Bobcat [390 h]; Depth: 0.0m - 1.5m [642] |
| MKH2-02-004-CNS-1990 | Excavation & Compaction (FDT) [Local 17 ]-Stage 2 | 2026-08-30 → 2026-10-21 (+52d) | 2026-09-13 → 2026-11-04 (+52d) |  | 9d → -32d | resources Depth: 0.0m - 1.5m [641]; Truck [780 h]; Labor [1170 h]; Driver [780 h] → Truck [780 h]; Labor [1170 h]; Driver [780 h]; Depth: 0.0m - 1.5m [641] |
| MKH2-02-004-CNS-2100 | Sand Bedding [Local 17 ]-Stage 1 | 2026-08-30 → 2026-10-21 (+52d) | 2026-09-07 → 2026-10-29 (+52d) |  | 8d → -33d | resources Depth: 1.51m - 2.5m [642]; Loader [160 h]; Truck [160 h]; Labor [320 h]; Driver [160 h]; Eq. Operator [160 h] → Loader [160 h]; Truck [160 h]; Labor [320 h]; Driver [160 h]; Eq. Operator [160 h]; Depth: 1.51m - 2.5m [642] |
| MKH2-02-004-CNS-2220 | Installation of GRP Pipe [Local 17 ]-Stage 1 | 2026-09-08 → 2026-10-31 (+53d) | 2026-09-24 → 2026-11-15 (+52d) |  | 8d → -33d | resources Depth: more than 2.5m [642]; Labor [280 h]; Plumber [140 h] → Labor [280 h]; Plumber [140 h]; Depth: more than 2.5m [642] |
| MKH2-02-004-CNS-2110 | Sand Bedding [Local 17 ]-Stage 2 | 2026-09-14 → 2026-11-05 (+52d) | 2026-09-22 → 2026-11-14 (+53d) |  | 9d → -32d | resources Depth: 1.51m - 2.5m [641]; Loader [160 h]; Truck [160 h]; Labor [320 h]; Driver [160 h]; Eq. Operator [160 h] → Loader [160 h]; Truck [160 h]; Labor [320 h]; Driver [160 h]; Eq. Operator [160 h]; Depth: 1.51m - 2.5m [641] |
| MKH2-02-004-CNS-2230 | Installation of GRP Pipe [Local 17 ]-Stage 2 | 2026-09-26 → 2026-11-16 (+51d) | 2026-10-11 → 2026-12-01 (+51d) |  | 8d → -33d | resources Depth: more than 2.5m [641]; Crane [140 h]; Labor [280 h]; Eq. Operator [140 h]; Plumber [140 h] → Crane [140 h]; Labor [280 h]; Eq. Operator [140 h]; Plumber [140 h]; Depth: more than 2.5m [641] |
| MKH2-02-004-CNS-2340 | Sand Cover & Warning Tape [Local 17 ]-Stage 1 | 2026-09-26 → 2026-11-16 (+51d) | 2026-10-03 → 2026-11-23 (+51d) |  | 15d → -26d | resources Depth: 1.51m - 2.5m [642]; Loader [70 h]; Labor [140 h]; Skilled Labor [70 h]; Eq. Operator [70 h] → Loader [70 h]; Labor [140 h]; Skilled Labor [70 h]; Eq. Operator [70 h]; Depth: 1.51m - 2.5m [642] |
| MKH2-02-004-CNS-2460 | Backfilling & Compaction [Local 17 ]-Stage 1 | 2026-10-04 → 2026-11-24 (+51d) | 2026-10-11 → 2026-12-01 (+51d) |  | 15d → -26d | resources Depth: > 3.5m [642]; Water Tanker [70 h]; Truck [70 h]; Compactor [70 h]; Labor [140 h]; Driver [140 h]; Eq. Operator [70 h] → Water Tanker [70 h]; Truck [70 h]; Compactor [70 h]; Labor [140 h]; Driver [140 h]; Eq. Operator [70 h]; Depth: > 3.5m [642] |
| MKH2-02-004-CNS-2350 | Sand Cover & Warning Tape [Local 17 ]-Stage 2 | 2026-10-12 → 2026-12-02 (+51d) | 2026-10-19 → 2026-12-09 (+51d) |  | 8d → -33d | resources Depth: 1.51m - 2.5m [641]; Loader [70 h]; Labor [140 h]; Skilled Labor [70 h]; Eq. Operator [70 h] → Loader [70 h]; Labor [140 h]; Skilled Labor [70 h]; Eq. Operator [70 h]; Depth: 1.51m - 2.5m [641] |
| MKH2-02-004-CNS-2470 | Backfilling & Compaction [Local 17 ]-Stage 2 | 2026-10-20 → 2026-12-10 (+51d) | 2026-10-27 → 2026-12-17 (+51d) |  | 8d → -33d | resources Depth: > 3.5m [641]; Bulldozer [70 h]; Truck [70 h]; Labor [140 h]; Driver [70 h]; Eq. Operator [70 h] → Bulldozer [70 h]; Truck [70 h]; Labor [140 h]; Driver [70 h]; Eq. Operator [70 h]; Depth: > 3.5m [641] |
| 2 | **Manholes** | 2026-10-08 → 2026-11-16 (+39d) | 2026-11-17 → 2026-12-26 (+39d) |  |  |  |
| MKH2-02-004-CNS-2600 | Installation of Manholes [Local 17 ]-Stage 1-[MH 01 to MH 07] | 2026-10-08 → 2026-11-16 (+39d) | 2026-10-15 → 2026-11-23 (+39d) |  | 14d → -19d | resources MH depth more than 2.5 m [7]; Excavator [140 h]; Labor [280 h]; Skilled Labor [140 h]; Eq. Operator [140 h] → Excavator [140 h]; Labor [280 h]; Skilled Labor [140 h]; Eq. Operator [140 h]; MH depth more than 2.5 m [7] |
| MKH2-02-004-CNS-2610 | Installation of Manholes [Local 17 ]-Stage 2-[MH 08 to MH 14] | 2026-10-17 → 2026-11-24 (+38d) | 2026-10-24 → 2026-12-01 (+38d) |  | 28d → -5d | resources MH depth more than 2.5 m [7]; Crane [140 h]; Labor [280 h]; Skilled Labor [140 h]; Eq. Operator [140 h] → Crane [140 h]; Labor [280 h]; Skilled Labor [140 h]; Eq. Operator [140 h]; MH depth more than 2.5 m [7] |
| MKH2-02-004-CNS-2620 | Installation of Manholes [Local 17 ]-Stage 3-[MH 15 to MH 21] | 2026-10-25 → 2026-12-02 (+38d) | 2026-11-01 → 2026-12-09 (+38d) |  | 28d → -5d | resources MH depth more than 2.5 m [7]; Excavator [140 h]; Labor [280 h]; Skilled Labor [140 h]; Eq. Operator [140 h] → Excavator [140 h]; Labor [280 h]; Skilled Labor [140 h]; Eq. Operator [140 h]; MH depth more than 2.5 m [7] |
| MKH2-02-004-CNS-2630 | Installation of Manholes [Local 17 ]-Stage 4-[MH 22 to MH 28] | 2026-11-02 → 2026-12-10 (+38d) | 2026-11-09 → 2026-12-17 (+38d) |  | 28d → -5d | resources MH depth more than 2.5 m [7]; Excavator [140 h]; Crane [140 h]; Labor [280 h]; Skilled Labor [140 h]; Eq. Operator [280 h] → Excavator [140 h]; Crane [140 h]; Labor [280 h]; Skilled Labor [140 h]; Eq. Operator [280 h]; MH depth more than 2.5 m [7] |
| MKH2-02-004-CNS-2640 | Installation of Manholes [Local 17 ]-Stage 5-[MH 29 to MH 33] | 2026-11-10 → 2026-12-19 (+39d) | 2026-11-17 → 2026-12-26 (+39d) |  | 28d → -5d | resources MH depth more than 2.5 m [5]; Labor [280 h]; Skilled Labor [140 h] → Labor [280 h]; Skilled Labor [140 h]; MH depth more than 2.5 m [5] |
| 3 | **Catch Basins** | 2026-10-17 → 2026-11-24 (+38d) | 2027-01-02 → 2027-02-09 (+38d) |  |  |  |
| MKH2-02-004-CNS-2800 | Construction of Catch basins [Local 17 ]-Stage 1-[01 to 10] | 2026-10-17 → 2026-11-24 (+38d) | 2026-10-24 → 2026-12-01 (+38d) |  | 14d → -19d | resources Single Catch basin [10]; Excavator [140 h]; Labor [280 h]; Eq. Operator [140 h]; Mason [140 h] → Excavator [140 h]; Labor [280 h]; Eq. Operator [140 h]; Mason [140 h]; Single Catch basin [10] |
| MKH2-02-004-CNS-2810 | Construction of Catch basins [Local 17 ]-Stage 2-[11 to 20] | 2026-10-25 → 2026-12-02 (+38d) | 2026-11-01 → 2026-12-09 (+38d) |  | 25d → -8d | resources Single Catch basin [10]; Excavator [140 h]; Labor [280 h]; Eq. Operator [140 h]; Mason [140 h] → Excavator [140 h]; Labor [280 h]; Eq. Operator [140 h]; Mason [140 h]; Single Catch basin [10] |
| MKH2-02-004-CNS-2820 | Construction of Catch basins [Local 17 ]-Stage 3-[21 to 30] | 2026-11-02 → 2026-12-10 (+38d) | 2026-11-09 → 2026-12-17 (+38d) |  | 25d → -8d | resources Single Catch basin [10]; Labor [280 h]; Mason [140 h] → Labor [280 h]; Mason [140 h]; Single Catch basin [10] |
| MKH2-02-004-CNS-2830 | Construction of Catch basins [Local 17 ]-Stage 4-[31 to 40] | 2026-11-10 → 2026-12-19 (+39d) | 2026-11-17 → 2026-12-26 (+39d) |  | 25d → -8d | resources Single Catch basin [10]; Excavator [140 h]; Labor [280 h]; Eq. Operator [140 h]; Mason [140 h] → Excavator [140 h]; Labor [280 h]; Eq. Operator [140 h]; Mason [140 h]; Single Catch basin [10] |
| MKH2-02-004-CNS-2840 | Construction of Catch basins [Local 17 ]-Stage 5-[41 to 50] | 2026-11-18 → 2026-12-27 (+39d) | 2026-11-25 → 2027-01-03 (+39d) |  | 25d → -8d | resources Single Catch basin [10]; Excavator [140 h]; Labor [280 h]; Eq. Operator [140 h]; Mason [140 h] → Excavator [140 h]; Labor [280 h]; Eq. Operator [140 h]; Mason [140 h]; Single Catch basin [10] |
| MKH2-02-004-CNS-2850 | Construction of Catch basins [Local 17 ]-Stage 6-[51 to 60] | 2026-11-26 → 2027-01-04 (+39d) | 2026-12-03 → 2027-01-11 (+39d) |  | 25d → -8d | resources Single Catch basin [10]; Labor [280 h]; Mason [140 h] → Labor [280 h]; Mason [140 h]; Single Catch basin [10] |
| MKH2-02-004-CNS-2860 | Construction of Catch basins [Local 17 ]-Stage 7-[61 to 70] | 2026-12-05 → 2027-01-12 (+38d) | 2026-12-12 → 2027-01-19 (+38d) |  | 25d → -8d | resources Single Catch basin [10]; Excavator [140 h]; Labor [280 h]; Eq. Operator [140 h]; Mason [140 h] → Excavator [140 h]; Labor [280 h]; Eq. Operator [140 h]; Mason [140 h]; Single Catch basin [10] |
| MKH2-02-004-CNS-2870 | Construction of Catch basins [Local 17 ]-Stage 8-[71 to 80] | 2026-12-13 → 2027-01-20 (+38d) | 2026-12-20 → 2027-01-27 (+38d) |  | 25d → -8d | resources Single Catch basin [10]; Excavator [140 h]; Labor [280 h]; Eq. Operator [140 h]; Mason [140 h] → Excavator [140 h]; Labor [280 h]; Eq. Operator [140 h]; Mason [140 h]; Single Catch basin [10] |
| MKH2-02-004-CNS-2880 | Construction of Catch basins [Local 17 ]-Stage 9-[81 to 90] | 2026-12-21 → 2027-01-28 (+38d) | 2026-12-28 → 2027-02-04 (+38d) |  | 25d → -8d | resources Single Catch basin [10]; Labor [280 h]; Mason [140 h] → Labor [280 h]; Mason [140 h]; Single Catch basin [10] |
| MKH2-02-004-CNS-2890 | Construction of Catch basins [Local 17 ]-Stage 10-[91 to 96] | 2026-12-29 → 2027-02-06 (+39d) | 2027-01-02 → 2027-02-09 (+38d) |  | 25d → -8d | resources Single Catch basin [6]; Excavator [80 h]; Labor [160 h]; Eq. Operator [80 h]; Mason [80 h] → Excavator [80 h]; Labor [160 h]; Eq. Operator [80 h]; Mason [80 h]; Single Catch basin [6] |
| 4 | **Concrete chambers Pipes** | 2026-10-25 → 2026-12-02 (+38d) | 2026-12-15 → 2027-01-23 (+39d) |  |  |  |
| MKH2-02-004-CNS-3140 | Excavation and Compaction (FDT) [Local 17 ]-Stage 1 | 2026-10-25 → 2026-12-02 (+38d) | 2026-11-05 → 2026-12-14 (+39d) |  | 14d → -19d | resources 300mm Diameter [889]; Excavator [220 h]; Water Tanker [220 h]; Truck [220 h]; Compactor [220 h]; Labor [440 h]; Driver [440 h]; Eq. Operator [440 h] → Excavator [220 h]; Water Tanker [220 h]; Truck [220 h]; Compactor [220 h]; Labor [440 h]; Driver [440 h]; Eq. Operator [440 h]; 300mm Diameter [889] |
| MKH2-02-004-CNS-3150 | Excavation and Compaction (FDT) [Local 17 ]-Stage 2 | 2026-11-07 → 2026-12-15 (+38d) | 2026-11-18 → 2026-12-27 (+39d) |  | 15d → -18d | resources 300mm Diameter [888]; Excavator [220 h]; Truck [220 h]; Labor [440 h]; Driver [220 h]; Eq. Operator [220 h] → Excavator [220 h]; Truck [220 h]; Labor [440 h]; Driver [220 h]; Eq. Operator [220 h]; 300mm Diameter [888] |
| MKH2-02-004-CNS-3230 | Installation of Pipes [Local 17 ]-Stage 1 | 2026-11-07 → 2026-12-15 (+38d) | 2026-11-19 → 2026-12-28 (+39d) |  | 14d → -19d | resources 400mm Diameter [889]; Loader [240 h]; Truck [240 h]; Crane [240 h]; Labor [480 h]; Driver [240 h]; Eq. Operator [480 h]; Plumber [240 h] → Loader [240 h]; Truck [240 h]; Crane [240 h]; Labor [480 h]; Driver [240 h]; Eq. Operator [480 h]; Plumber [240 h]; 400mm Diameter [889] |
| MKH2-02-004-CNS-3240 | Installation of Pipes [Local 17 ]-Stage 2 | 2026-11-21 → 2026-12-29 (+38d) | 2026-12-03 → 2027-01-11 (+39d) |  | 14d → -19d | resources 400mm Diameter [888]; Loader [240 h]; Truck [240 h]; Labor [480 h]; Driver [240 h]; Eq. Operator [240 h]; Plumber [240 h] → Loader [240 h]; Truck [240 h]; Labor [480 h]; Driver [240 h]; Eq. Operator [240 h]; Plumber [240 h]; 400mm Diameter [888] |
| MKH2-02-004-CNS-3320 | Backfilling & Compaction [Local 17 ]-Stage 1 | 2026-11-21 → 2026-12-29 (+38d) | 2026-12-01 → 2027-01-09 (+39d) |  | 16d → -17d | resources 300mm Diameter [889]; Labor [400 h]; Plumber [200 h] → Labor [400 h]; Plumber [200 h]; 300mm Diameter [889] |
| MKH2-02-004-CNS-3330 | Backfilling & Compaction [Local 17 ]-Stage 2 | 2026-12-05 → 2027-01-12 (+38d) | 2026-12-15 → 2027-01-23 (+39d) |  | 14d → -19d | resources 300mm Diameter [888]; Labor [400 h]; Plumber [200 h] → Labor [400 h]; Plumber [200 h]; 300mm Diameter [888] |
| 5 | **Local 11** | 2026-09-05 → 2026-08-05 (-31d) | 2027-02-28 → 2027-04-22 (+53d) |  |  |  |
| 1 | **Road Works** | 2026-09-05 → 2026-08-05 (-31d) | 2027-02-28 → 2027-04-22 (+53d) |  |  |  |
| 1 | **Eartworks & Site grading** | 2026-09-05 → 2026-08-05 (-31d) | 2026-12-14 → 2027-02-01 (+49d) |  |  |  |
| MKH2-02-004-CNS-1060 | Road excavation [Local 11 ]-Stage 1 | 2026-09-05 → 2026-08-05 A (-31d) | 2026-09-16 → 2026-09-03 A (-13d) | 0% → 100% | 0d → none | resources Roadway Excavation for cuttings (all types of soil) [21755]; Excavator [440 h]; Bulldozer [440 h]; Grader [440 h]; Truck [880 h]; Bobcat [440 h]; Labor [1320 h]; Driver [880 h]; Eq. Operator [1760 h] → Excavator [440 h]; Bulldozer [440 h]; Grader [440 h]; Truck [880 h]; Labor [1320 h]; Driver [880 h]; Eq. Operator [1760 h]; Bobcat [440 h]; Roadway Excavation for cuttings (all types of soil) [21755] |
| MKH2-02-004-CNS-1070 | Road excavation [Local 11 ]-Stage 2 | 2026-09-17 → 2026-09-03 A (-14d) | 2026-09-30 → 2026-10-31 (+31d) | 0% → 85% | 0d → -24d | resources Roadway Excavation for cuttings (all types of soil) [21755]; Excavator [440 h]; Water Tanker [440 h]; Truck [880 h]; Bobcat [440 h]; Labor [1320 h]; Driver [1320 h]; Eq. Operator [880 h] → Excavator [440 h]; Water Tanker [440 h]; Truck [880 h]; Labor [1320 h]; Driver [1320 h]; Eq. Operator [880 h]; Bobcat [440 h]; Roadway Excavation for cuttings (all types of soil) [21755] |
| MKH2-02-004-CNS-1180 | Road backfilling [Local 11 ]-Stage 1 | 2026-09-05 → 2026-09-09 A (+4d) | 2026-09-16 → 2026-09-24 A (+8d) | 0% → 100% | 0d → none | resources Embankments to the ROW with common / suitable excavated material or with suitable imported material [10948]; Bulldozer [220 h]; Water Tanker [220 h]; Grader [220 h]; Truck [440 h]; Road Roller [220 h]; Bobcat [220 h]; Labor [660 h]; Driver [660 h]; Eq. Operator [880 h] → Bulldozer [220 h]; Water Tanker [220 h]; Grader [220 h]; Truck [440 h]; Road Roller [220 h]; Labor [660 h]; Driver [660 h]; Eq. Operator [880 h]; Bobcat [220 h]; Embankments to the ROW with common / suitable excavated material or with suitable imported material [10948] |
| MKH2-02-004-CNS-1190 | Road backfilling [Local 11 ]-Stage 2 | 2026-09-17 → 2026-10-24 (+37d) | 2026-09-30 → 2026-11-04 (+35d) |  | 0d → -24d | resources Embankments to the ROW with common / suitable excavated material or with suitable imported material [10948]; Truck [440 h]; Road Roller [220 h]; Compactor [220 h]; Labor [660 h]; Driver [440 h]; Eq. Operator [440 h] → Truck [440 h]; Road Roller [220 h]; Compactor [220 h]; Labor [660 h]; Driver [440 h]; Eq. Operator [440 h]; Embankments to the ROW with common / suitable excavated material or with suitable imported material [10948] |
| MKH2-02-004-CNS-1280 | Subgrade [Local 11 ] | 2026-11-24 → 2027-01-05 (+42d) | 2026-12-03 → 2027-01-14 (+42d) |  | 0d → -33d | resources Subgrade [6684]; Water Tanker [180 h]; Grader [180 h]; Truck [360 h]; Road Roller [180 h]; Bobcat [180 h]; Compactor [180 h]; Labor [360 h]; Driver [540 h]; Eq. Operator [720 h] → Water Tanker [180 h]; Grader [180 h]; Truck [360 h]; Road Roller [180 h]; Compactor [180 h]; Labor [360 h]; Driver [540 h]; Eq. Operator [720 h]; Bobcat [180 h]; Subgrade [6684] |
| MKH2-02-004-CNS-1360 | Aggregate base course [Local 11 ] | 2026-12-05 → 2027-01-23 (+49d) | 2026-12-14 → 2027-02-01 (+49d) |  | 11d → -31d | resources Aggregate base course [4456]; Loader [180 h]; Water Tanker [180 h]; Grader [180 h]; Truck [360 h]; Road Roller [180 h]; Labor [540 h]; Driver [540 h]; Eq. Operator [540 h] → Loader [180 h]; Water Tanker [180 h]; Grader [180 h]; Truck [360 h]; Road Roller [180 h]; Labor [540 h]; Driver [540 h]; Eq. Operator [540 h]; Aggregate base course [4456] |
| 2 | **Asphalt Works** | 2026-12-15 → 2027-02-03 (+50d) | 2027-01-09 → 2027-03-01 (+51d) |  |  |  |
| MKH2-02-004-CNS-1440 | Prime Coat (MC1) [Local 11 ] | 2026-12-15 → 2027-02-03 (+50d) | 2026-12-26 → 2027-02-14 (+50d) |  | 23d → -20d | resources Bituminous base course (Grading I - Class A), including Prime Coat (MC1) [156]; Water Tanker [100 h]; Truck [100 h]; Road Roller [100 h]; Labor [200 h]; Driver [200 h]; Eq. Operator [100 h] → Water Tanker [100 h]; Truck [100 h]; Road Roller [100 h]; Labor [200 h]; Driver [200 h]; Eq. Operator [100 h]; Bituminous base course (Grading I - Class A), including Prime Coat (MC1) [156] |
| MKH2-02-004-CNS-1520 | Bituminous base course [Local 11 ] | 2026-12-27 → 2027-02-15 (+50d) | 2027-01-09 → 2027-03-01 (+51d) |  | 23d → -20d | resources Bituminous base course (Grading I - Class A), including Prime Coat (MC1) [1404]; Truck [240 h]; Road Roller [120 h]; Asphalte Paver [120 h]; Labor [480 h]; Driver [240 h]; Eq. Operator [240 h] → Truck [240 h]; Road Roller [120 h]; Asphalte Paver [120 h]; Labor [480 h]; Driver [240 h]; Eq. Operator [240 h]; Bituminous base course (Grading I - Class A), including Prime Coat (MC1) [1404] |
| 3 | **Finishing Works** | 2027-01-10 → 2027-03-02 (+51d) | 2027-02-28 → 2027-04-22 (+53d) |  |  |  |
| 1 | **Precast Concrete Curb** | 2027-01-10 → 2027-03-02 (+51d) | 2027-01-21 → 2027-03-17 (+55d) |  |  |  |
| MKH2-02-004-CNS-1600 | Installation of Precast Concrete curb [Local 11 ] | 2027-01-10 → 2027-03-02 (+51d) | 2027-01-21 → 2027-03-17 (+55d) |  | 23d → -20d | resources Precast Concrete Kerb, Type K1-A [4335]; Labor [660 h]; Skilled Labor [440 h] → Labor [660 h]; Skilled Labor [440 h]; Precast Concrete Kerb, Type K1-A [4335] |
| 2 | **Precast Interlocking block pavers** | 2027-01-23 → 2027-03-18 (+54d) | 2027-02-02 → 2027-03-29 (+55d) |  |  |  |
| MKH2-02-004-CNS-1680 | Installation of Interlocking block pavers for sidewalk/footpath [Local 11 ] | 2027-01-23 → 2027-03-18 (+54d) | 2027-02-02 → 2027-03-29 (+55d) |  | 23d → -20d | resources 60mm thick - Interlocking block pavers for sidewalk/footpath [4974]; Road Roller [200 h]; Compactor [200 h]; Labor [600 h]; Eq. Operator [400 h]; Mason [1200 h] → Road Roller [200 h]; Compactor [200 h]; Labor [600 h]; Eq. Operator [400 h]; Mason [1200 h]; 60mm thick - Interlocking block pavers for sidewalk/footpath [4974] |
| 3 | **Pavement Markings** | 2027-02-03 → 2027-03-30 (+55d) | 2027-02-18 → 2027-04-14 (+55d) |  |  |  |
| MKH2-02-004-CNS-1760 | Pavement markings [Local 11 ] | 2027-02-03 → 2027-03-30 (+55d) | 2027-02-10 → 2027-04-06 (+55d) |  | 23d → -20d | resources Retroreflective Thermoplastic White Traffic lines [965]; Labor [140 h]; Skilled Labor [140 h] → Labor [140 h]; Skilled Labor [140 h]; Retroreflective Thermoplastic White Traffic lines [965] |
| MKH2-02-004-CNS-1840 | (Speed Hump) with retroreflectiveThermoplastic yellow [Local 11 ] | 2027-02-11 → 2027-04-07 (+55d) | 2027-02-18 → 2027-04-14 (+55d) |  | 23d → -20d | resources (Speed Hump) with retroreflectiveThermoplastic yellow [3]; Labor [210 h]; Skilled Labor [140 h] → Labor [210 h]; Skilled Labor [140 h]; (Speed Hump) with retroreflectiveThermoplastic yellow [3] |
| 4 | **Traffic Signage** | 2027-02-20 → 2027-04-15 (+54d) | 2027-02-28 → 2027-04-22 (+53d) |  |  |  |
| MKH2-02-004-CNS-1920 | Installation of Traffic Signs [Local 11 ] | 2027-02-20 → 2027-04-15 (+54d) | 2027-02-28 → 2027-04-22 (+53d) |  | 23d → -20d | resources Traffic signs, ground mounted, Sheet Alumenium, (breakaway)Single post, with all accessories [30]; Labor [210 h]; Skilled Labor [140 h] → Labor [210 h]; Skilled Labor [140 h]; Traffic signs, ground mounted, Sheet Alumenium, (breakaway)Single post, with all accessories [30] |
| 2 | **Storm Water Drainage** | 2026-10-01 → 2026-09-17 (-14d) | 2026-12-19 → 2027-01-18 (+30d) |  |  |  |
| 1 | **Pipe Works** | 2026-10-01 → 2026-09-17 (-14d) | 2026-11-23 → 2026-12-24 (+31d) |  |  |  |
| MKH2-02-004-CNS-2020 | Excavation & Compaction (FDT) [Local 11 ]-Stage 1 | 2026-10-01 → 2026-09-17 A (-14d) | 2026-10-10 → 2026-11-11 (+32d) | 0% → 50% | 0d → -24d | resources Depth: 0.0m - 1.5m [427]; Water Tanker [240 h]; Truck [480 h]; Bobcat [240 h]; Compactor [240 h]; Labor [720 h]; Driver [720 h]; Eq. Operator [480 h] → Water Tanker [240 h]; Truck [480 h]; Compactor [240 h]; Labor [720 h]; Driver [720 h]; Eq. Operator [480 h]; Bobcat [240 h]; Depth: 0.0m - 1.5m [427] |
| MKH2-02-004-CNS-2140 | Sand Bedding [Local 11 ]-Stage 1 | 2026-10-11 → 2026-09-20 A (-21d) | 2026-10-17 → 2026-11-17 (+31d) | 0% → 30% | 0d → -24d | resources Depth: 1.51m - 2.5m [427]; Loader [120 h]; Truck [120 h]; Labor [240 h]; Driver [120 h]; Eq. Operator [120 h] → Loader [120 h]; Truck [120 h]; Labor [240 h]; Driver [120 h]; Eq. Operator [120 h]; Depth: 1.51m - 2.5m [427] |
| MKH2-02-004-CNS-2260 | Installation of GRP Pipe [Local 11 ]-Stage 1 | 2026-10-18 → 2026-10-01 A (-17d) | 2026-10-29 → 2026-11-30 (+32d) | 0% → 10% | 0d → -24d | resources Depth: 1.51m - 2.5m [427]; Labor [220 h]; Plumber [110 h] → Labor [220 h]; Plumber [110 h]; Depth: 1.51m - 2.5m [427] |
| MKH2-02-004-CNS-2030 | Excavation & Compaction (FDT) [Local 11 ]-Stage 2 | 2026-10-11 → 2026-11-12 (+32d) | 2026-10-19 → 2026-11-21 (+33d) |  | 3d → -22d | resources Depth: 0.0m - 1.5m [426]; Excavator [240 h]; Truck [480 h]; Labor [720 h]; Driver [480 h]; Eq. Operator [240 h] → Excavator [240 h]; Truck [480 h]; Labor [720 h]; Driver [480 h]; Eq. Operator [240 h]; Depth: 0.0m - 1.5m [426] |
| MKH2-02-004-CNS-2150 | Sand Bedding [Local 11 ]-Stage 2 | 2026-10-20 → 2026-11-22 (+33d) | 2026-10-26 → 2026-11-28 (+33d) |  | 3d → -22d | resources Depth: 1.51m - 2.5m [426]; Loader [120 h]; Truck [120 h]; Labor [240 h]; Driver [120 h]; Eq. Operator [120 h] → Loader [120 h]; Truck [120 h]; Labor [240 h]; Driver [120 h]; Eq. Operator [120 h]; Depth: 1.51m - 2.5m [426] |
| MKH2-02-004-CNS-2270 | Installation of GRP Pipe [Local 11 ]-Stage 2 | 2026-10-31 → 2026-12-01 (+31d) | 2026-11-11 → 2026-12-13 (+32d) |  | 0d → -24d | resources Depth: 1.51m - 2.5m [426]; Crane [110 h]; Labor [220 h]; Eq. Operator [110 h]; Plumber [110 h] → Crane [110 h]; Labor [220 h]; Eq. Operator [110 h]; Plumber [110 h]; Depth: 1.51m - 2.5m [426] |
| MKH2-02-004-CNS-2380 | Sand Cover & Warning Tape [Local 11 ]-Stage 1 | 2026-10-31 → 2026-12-01 (+31d) | 2026-11-04 → 2026-12-06 (+32d) |  | 6d → -18d | resources Depth: 0.0m - 1.5m [427]; Loader [50 h]; Labor [100 h]; Skilled Labor [50 h]; Eq. Operator [50 h] → Loader [50 h]; Labor [100 h]; Skilled Labor [50 h]; Eq. Operator [50 h]; Depth: 0.0m - 1.5m [427] |
| MKH2-02-004-CNS-2500 | Backfilling & Compaction [Local 11 ]-Stage 1 | 2026-11-05 → 2026-12-07 (+32d) | 2026-11-10 → 2026-12-12 (+32d) |  | 6d → -18d | resources Depth: 2.51m - 3.5m [427]; Bulldozer [50 h]; Water Tanker [50 h]; Truck [50 h]; Compactor [50 h]; Labor [100 h]; Driver [100 h]; Eq. Operator [100 h] → Bulldozer [50 h]; Water Tanker [50 h]; Truck [50 h]; Compactor [50 h]; Labor [100 h]; Driver [100 h]; Eq. Operator [100 h]; Depth: 2.51m - 3.5m [427] |

| ID | Task | Start | Finish | Complete | Total float | Other |
| --- | --- | --- | --- | --- | --- | --- |
| MKH2-02-004-CNS-2390 | Sand Cover & Warning Tape [Local 11 ]-Stage 2 | 2026-11-12 → 2026-12-14 (+32d) | 2026-11-17 → 2026-12-19 (+32d) |  | 0d → -24d | resources Depth: 0.0m - 1.5m [426]; Loader [50 h]; Labor [100 h]; Skilled Labor [50 h]; Eq. Operator [50 h] → Loader [50 h]; Labor [100 h]; Skilled Labor [50 h]; Eq. Operator [50 h]; Depth: 0.0m - 1.5m [426] |
| MKH2-02-004-CNS-2510 | Backfilling & Compaction [Local 11 ]-Stage 2 | 2026-11-18 → 2026-12-20 (+32d) | 2026-11-23 → 2026-12-24 (+31d) |  | 0d → -24d | resources Depth: 2.51m - 3.5m [426]; Bulldozer [50 h]; Truck [50 h]; Labor [100 h]; Driver [50 h]; Eq. Operator [50 h] → Bulldozer [50 h]; Truck [50 h]; Labor [100 h]; Driver [50 h]; Eq. Operator [50 h]; Depth: 2.51m - 3.5m [426] |
| 2 | **Manholes** | 2026-11-01 → 2026-10-03 (-29d) | 2026-11-24 → 2026-12-24 (+30d) |  |  |  |
| MKH2-02-004-CNS-2680 | Installation of Manholes [Local 11 ]-Stage 1-[MH 01 to MH 07] | 2026-11-01 → 2026-10-03 A (-29d) | 2026-11-08 → 2026-12-08 (+30d) | 0% → 20% | 30d → 4d | resources MH depth 1.51 - 2.5m [7]; Excavator [140 h]; Labor [280 h]; Skilled Labor [140 h]; Eq. Operator [140 h] → Excavator [140 h]; Labor [280 h]; Skilled Labor [140 h]; Eq. Operator [140 h]; MH depth 1.51 - 2.5m [7] |
| MKH2-02-004-CNS-2690 | Installation of Manholes [Local 11 ]-Stage 2-[MH 08 to MH 14] | 2026-11-09 → 2026-12-09 (+30d) | 2026-11-16 → 2026-12-16 (+30d) |  | 33d → 7d | resources MH depth 1.51 - 2.5m [7]; Excavator [140 h]; Crane [140 h]; Labor [280 h]; Skilled Labor [140 h]; Eq. Operator [280 h] → Excavator [140 h]; Crane [140 h]; Labor [280 h]; Skilled Labor [140 h]; Eq. Operator [280 h]; MH depth 1.51 - 2.5m [7] |
| MKH2-02-004-CNS-2700 | Installation of Manholes [Local 11 ]-Stage 3-[MH 15 to MH 20] | 2026-11-17 → 2026-12-17 (+30d) | 2026-11-24 → 2026-12-24 (+30d) |  | 33d → 7d | resources MH depth 1.51 - 2.5m [6]; Labor [280 h]; Skilled Labor [140 h] → Labor [280 h]; Skilled Labor [140 h]; MH depth 1.51 - 2.5m [6] |
| 3 | **Catch Basins** | 2026-11-09 → 2026-12-09 (+30d) | 2026-12-19 → 2027-01-18 (+30d) |  |  |  |
| MKH2-02-004-CNS-2950 | Construction of Catch basins [Local 11 ]-Stage 1-[01 to 10] | 2026-11-09 → 2026-12-09 (+30d) | 2026-11-16 → 2026-12-16 (+30d) |  | 30d → 4d | resources Single Catch basin [10]; Excavator [140 h]; Labor [280 h]; Eq. Operator [140 h]; Mason [140 h] → Excavator [140 h]; Labor [280 h]; Eq. Operator [140 h]; Mason [140 h]; Single Catch basin [10] |
| MKH2-02-004-CNS-2960 | Construction of Catch basins [Local 11 ]-Stage 2-[11 to 20] | 2026-11-17 → 2026-12-17 (+30d) | 2026-11-24 → 2026-12-24 (+30d) |  | 33d → 7d | resources Single Catch basin [10]; Excavator [140 h]; Labor [280 h]; Eq. Operator [140 h]; Mason [140 h] → Excavator [140 h]; Labor [280 h]; Eq. Operator [140 h]; Mason [140 h]; Single Catch basin [10] |
| MKH2-02-004-CNS-2970 | Construction of Catch basins [Local 11 ]-Stage 3-[21 to 30] | 2026-11-25 → 2026-12-26 (+31d) | 2026-12-02 → 2027-01-02 (+31d) |  | 33d → 7d | resources Single Catch basin [10]; Excavator [140 h]; Labor [280 h]; Eq. Operator [140 h]; Mason [140 h] → Excavator [140 h]; Labor [280 h]; Eq. Operator [140 h]; Mason [140 h]; Single Catch basin [10] |
| MKH2-02-004-CNS-2980 | Construction of Catch basins [Local 11 ]-Stage 4-[31 to 40] | 2026-12-03 → 2027-01-03 (+31d) | 2026-12-10 → 2027-01-10 (+31d) |  | 33d → 7d | resources Single Catch basin [10]; Excavator [140 h]; Labor [280 h]; Eq. Operator [140 h]; Mason [140 h] → Excavator [140 h]; Labor [280 h]; Eq. Operator [140 h]; Mason [140 h]; Single Catch basin [10] |
| MKH2-02-004-CNS-2990 | Construction of Catch basins [Local 11 ]-Stage 5-[41 to 50] | 2026-12-12 → 2027-01-11 (+30d) | 2026-12-19 → 2027-01-18 (+30d) |  | 33d → 7d | resources Single Catch basin [10]; Excavator [140 h]; Labor [280 h]; Eq. Operator [140 h]; Mason [140 h] → Excavator [140 h]; Labor [280 h]; Eq. Operator [140 h]; Mason [140 h]; Single Catch basin [10] |
| 4 | **Concrete chambers Pipes** | 2026-11-17 → 2026-12-17 (+30d) | 2026-12-15 → 2027-01-14 (+30d) |  |  |  |
| MKH2-02-004-CNS-3170 | Excavation and Compaction (FDT) [Local 11 ] | 2026-11-17 → 2026-12-17 (+30d) | 2026-11-26 → 2026-12-27 (+31d) |  | 30d → 4d | resources 300mm Diameter [1050]; Excavator [180 h]; Truck [180 h]; Labor [360 h]; Driver [180 h]; Eq. Operator [180 h] → Excavator [180 h]; Truck [180 h]; Labor [360 h]; Driver [180 h]; Eq. Operator [180 h]; 300mm Diameter [1050] |
| MKH2-02-004-CNS-3260 | Installation of Pipes [Local 11 ] | 2026-11-28 → 2026-12-28 (+30d) | 2026-12-05 → 2027-01-04 (+30d) |  | 30d → 4d | resources 400mm Diameter [1050]; Loader [140 h]; Truck [140 h]; Crane [140 h]; Labor [280 h]; Driver [140 h]; Eq. Operator [280 h]; Plumber [140 h] → Loader [140 h]; Truck [140 h]; Crane [140 h]; Labor [280 h]; Driver [140 h]; Eq. Operator [280 h]; Plumber [140 h]; 400mm Diameter [1050] |
| MKH2-02-004-CNS-3350 | Backfilling & Compaction [Local 11 ] | 2026-12-06 → 2027-01-05 (+30d) | 2026-12-15 → 2027-01-14 (+30d) |  | 30d → 4d | resources 300mm Diameter [1050]; Labor [360 h]; Plumber [180 h] → Labor [360 h]; Plumber [180 h]; 300mm Diameter [1050] |
| 6 | **Local 29** | 2026-10-01 → 2026-08-11 (-51d) | 2027-03-03 → 2027-04-19 (+47d) |  |  |  |
| 1 | **Road Works** | 2026-10-01 → 2026-08-11 (-51d) | 2027-03-03 → 2027-04-19 (+47d) |  |  |  |
| 1 | **Eartworks & Site grading** | 2026-10-01 → 2026-08-11 (-51d) | 2027-01-05 → 2027-02-17 (+43d) |  |  |  |
| MKH2-02-004-CNS-1080 | Road excavation [Local 29 ] | 2026-10-01 → 2026-08-11 A (-51d) | 2026-10-12 → 2026-08-22 A (-51d) | 0% → 100% | 3d → none | resources Roadway Excavation for cuttings (all types of soil) [23904]; Bulldozer [500 h]; Water Tanker [500 h]; Truck [1000 h]; Labor [1500 h]; Driver [1500 h]; Eq. Operator [500 h] → Bulldozer [500 h]; Water Tanker [500 h]; Truck [1000 h]; Labor [1500 h]; Driver [1500 h]; Eq. Operator [500 h]; Roadway Excavation for cuttings (all types of soil) [23904] |
| MKH2-02-004-CNS-1200 | Road backfilling [Local 29 ] | 2026-10-01 → 2026-08-12 A (-50d) | 2026-10-12 → 2026-11-10 (+29d) | 0% → 85% | 3d → -9d | resources Embankments to the ROW with common / suitable excavated material or with suitable imported material [12029]; Bulldozer [300 h]; Water Tanker [300 h]; Truck [600 h]; Road Roller [300 h]; Labor [900 h]; Driver [900 h]; Eq. Operator [600 h] → Bulldozer [300 h]; Water Tanker [300 h]; Truck [600 h]; Road Roller [300 h]; Labor [900 h]; Driver [900 h]; Eq. Operator [600 h]; Embankments to the ROW with common / suitable excavated material or with suitable imported material [12029] |
| MKH2-02-004-CNS-1290 | Subgrade [Local 29 ] | 2026-12-05 → 2027-01-16 (+42d) | 2026-12-20 → 2027-01-31 (+42d) |  | 0d → -33d | resources Subgrade [3672]; Truck [280 h]; Road Roller [140 h]; Labor [280 h]; Driver [280 h]; Eq. Operator [140 h] → Truck [280 h]; Road Roller [140 h]; Labor [280 h]; Driver [280 h]; Eq. Operator [140 h]; Subgrade [3672] |
| MKH2-02-004-CNS-1370 | Aggregate base course [Local 29 ] | 2026-12-21 → 2027-02-02 (+43d) | 2027-01-05 → 2027-02-17 (+43d) |  | 6d → -31d | resources Aggregate base course [2448]; Loader [140 h]; Grader [140 h]; Truck [280 h]; Road Roller [140 h]; Labor [420 h]; Driver [280 h]; Eq. Operator [420 h] → Loader [140 h]; Grader [140 h]; Truck [280 h]; Road Roller [140 h]; Labor [420 h]; Driver [280 h]; Eq. Operator [420 h]; Aggregate base course [2448] |
| 2 | **Asphalt Works** | 2027-01-06 → 2027-02-18 (+43d) | 2027-01-26 → 2027-03-15 (+48d) |  |  |  |
| MKH2-02-004-CNS-1450 | Prime Coat (MC1) [Local 29 ] | 2027-01-06 → 2027-02-18 (+43d) | 2027-01-14 → 2027-02-28 (+45d) |  | 18d → -19d | resources Bituminous base course (Grading I - Class A), including Prime Coat (MC1) [86]; Truck [80 h]; Road Roller [80 h]; Asphalte Paver [80 h]; Labor [160 h]; Driver [80 h]; Eq. Operator [160 h] → Truck [80 h]; Road Roller [80 h]; Asphalte Paver [80 h]; Labor [160 h]; Driver [80 h]; Eq. Operator [160 h]; Bituminous base course (Grading I - Class A), including Prime Coat (MC1) [86] |
| MKH2-02-004-CNS-1530 | Bituminous base course [Local 29 ] | 2027-01-16 → 2027-03-01 (+44d) | 2027-01-26 → 2027-03-15 (+48d) |  | 20d → -17d | resources Bituminous base course (Grading I - Class A), including Prime Coat (MC1) [772]; Truck [200 h]; Road Roller [100 h]; Labor [400 h]; Driver [200 h]; Eq. Operator [100 h] → Truck [200 h]; Road Roller [100 h]; Labor [400 h]; Driver [200 h]; Eq. Operator [100 h]; Bituminous base course (Grading I - Class A), including Prime Coat (MC1) [772] |
| 3 | **Finishing Works** | 2027-01-27 → 2027-03-16 (+48d) | 2027-03-03 → 2027-04-19 (+47d) |  |  |  |
| 1 | **Precast Concrete Curb** | 2027-01-27 → 2027-03-16 (+48d) | 2027-02-02 → 2027-03-22 (+48d) |  |  |  |
| MKH2-02-004-CNS-1610 | Installation of Precast Concrete curb [Local 29 ] | 2027-01-27 → 2027-03-16 (+48d) | 2027-02-02 → 2027-03-22 (+48d) |  | 20d → -17d | resources Precast Concrete Kerb, Type K4 [2381]; Labor [360 h]; Skilled Labor [240 h] → Labor [360 h]; Skilled Labor [240 h]; Precast Concrete Kerb, Type K4 [2381] |
| 2 | **Precast Interlocking block pavers** | 2027-02-03 → 2027-03-23 (+48d) | 2027-02-09 → 2027-03-29 (+48d) |  |  |  |
| MKH2-02-004-CNS-1690 | Installation of Interlocking block pavers for sidewalk/footpath [Local 29 ] | 2027-02-03 → 2027-03-23 (+48d) | 2027-02-09 → 2027-03-29 (+48d) |  | 20d → -17d | resources 60mm thick - Interlocking block pavers for sidewalk/footpath [2733]; Labor [360 h]; Mason [720 h] → Labor [360 h]; Mason [720 h]; 60mm thick - Interlocking block pavers for sidewalk/footpath [2733] |
| 3 | **Pavement Markings** | 2027-02-10 → 2027-03-30 (+48d) | 2027-02-24 → 2027-04-12 (+47d) |  |  |  |
| MKH2-02-004-CNS-1770 | Pavement markings [Local 29 ] | 2027-02-10 → 2027-03-30 (+48d) | 2027-02-16 → 2027-04-05 (+48d) |  | 20d → -17d | resources Retroreflective Thermoplastic Yellow, Traffic lines [530]; Labor [60 h]; Skilled Labor [60 h] → Labor [60 h]; Skilled Labor [60 h]; Retroreflective Thermoplastic Yellow, Traffic lines [530] |
| MKH2-02-004-CNS-1850 | (Speed Hump) with retroreflectiveThermoplastic yellow [Local 29 ] | 2027-02-17 → 2027-04-06 (+48d) | 2027-02-24 → 2027-04-12 (+47d) |  | 20d → -17d | resources (Speed Hump) with retroreflectiveThermoplastic yellow [2]; Labor [180 h]; Skilled Labor [120 h] → Labor [180 h]; Skilled Labor [120 h]; (Speed Hump) with retroreflectiveThermoplastic yellow [2] |
| 4 | **Traffic Signage** | 2027-02-25 → 2027-04-13 (+47d) | 2027-03-03 → 2027-04-19 (+47d) |  |  |  |
| MKH2-02-004-CNS-1930 | Installation of Traffic Signs [Local 29 ] | 2027-02-25 → 2027-04-13 (+47d) | 2027-03-03 → 2027-04-19 (+47d) |  | 20d → -17d | resources Traffic signs, ground mounted, Sheet Alumenium, (breakaway)Single post, with all accessories [17]; Labor [180 h]; Skilled Labor [120 h] → Labor [180 h]; Skilled Labor [120 h]; Traffic signs, ground mounted, Sheet Alumenium, (breakaway)Single post, with all accessories [17] |
| 2 | **Storm Water Drainage** | 2026-10-13 → 2026-11-11 (+29d) | 2026-12-20 → 2027-01-18 (+29d) |  |  |  |
| 1 | **Pipe Works** | 2026-10-13 → 2026-11-11 (+29d) | 2026-11-18 → 2026-12-17 (+29d) |  |  |  |
| MKH2-02-004-CNS-2040 | Excavation & Compaction (FDT) [Local 29 ] | 2026-10-13 → 2026-11-11 (+29d) | 2026-10-19 → 2026-11-17 (+29d) |  | 13d → -9d | resources Depth: 0.0m - 1.5m [513]; Excavator [300 h]; Water Tanker [300 h]; Truck [600 h]; Compactor [300 h]; Labor [900 h]; Driver [900 h]; Eq. Operator [600 h] → Excavator [300 h]; Water Tanker [300 h]; Truck [600 h]; Compactor [300 h]; Labor [900 h]; Driver [900 h]; Eq. Operator [600 h]; Depth: 0.0m - 1.5m [513] |
| MKH2-02-004-CNS-2160 | Sand Bedding [Local 29 ] | 2026-10-20 → 2026-11-18 (+29d) | 2026-10-26 → 2026-11-24 (+29d) |  | 13d → -9d | resources Depth: 1.51m - 2.5m [513]; Loader [60 h]; Truck [60 h]; Labor [120 h]; Driver [60 h]; Eq. Operator [60 h] → Loader [60 h]; Truck [60 h]; Labor [120 h]; Driver [60 h]; Eq. Operator [60 h]; Depth: 1.51m - 2.5m [513] |
| MKH2-02-004-CNS-2280 | Installation of GRP Pipe [Local 29 ] | 2026-10-27 → 2026-11-25 (+29d) | 2026-11-05 → 2026-12-05 (+30d) |  | 13d → -9d | resources Depth: more than 2.5m [513]; Labor [180 h]; Plumber [90 h] → Labor [180 h]; Plumber [90 h]; Depth: more than 2.5m [513] |
| MKH2-02-004-CNS-2400 | Sand Cover & Warning Tape [Local 29 ] | 2026-11-07 → 2026-12-06 (+29d) | 2026-11-11 → 2026-12-10 (+29d) |  | 13d → -9d | resources Depth: 1.51m - 2.5m [513]; Loader [50 h]; Labor [100 h]; Skilled Labor [50 h]; Eq. Operator [50 h] → Loader [50 h]; Labor [100 h]; Skilled Labor [50 h]; Eq. Operator [50 h]; Depth: 1.51m - 2.5m [513] |
| MKH2-02-004-CNS-2520 | Backfilling & Compaction [Local 29 ] | 2026-11-12 → 2026-12-12 (+30d) | 2026-11-18 → 2026-12-17 (+29d) |  | 13d → -9d | resources Depth: 3.51m - 4.5m [513]; Bulldozer [120 h]; Water Tanker [120 h]; Truck [120 h]; Compactor [120 h]; Labor [240 h]; Driver [240 h]; Eq. Operator [240 h] → Bulldozer [120 h]; Water Tanker [120 h]; Truck [120 h]; Compactor [120 h]; Labor [240 h]; Driver [240 h]; Eq. Operator [240 h]; Depth: 3.51m - 4.5m [513] |
| 2 | **Manholes** | 2026-11-07 → 2026-12-06 (+29d) | 2026-11-22 → 2026-12-21 (+29d) |  |  |  |
| MKH2-02-004-CNS-2710 | Installation of Manholes [Local 29 ]-Stage 1-[MH 01 to MH 07] | 2026-11-07 → 2026-12-06 (+29d) | 2026-11-14 → 2026-12-13 (+29d) |  | 26d → 1d | resources MH depth more than 2.5 m [7]; Excavator [140 h]; Crane [140 h]; Labor [280 h]; Skilled Labor [140 h]; Eq. Operator [280 h] → Excavator [140 h]; Crane [140 h]; Labor [280 h]; Skilled Labor [140 h]; Eq. Operator [280 h]; MH depth more than 2.5 m [7] |
| MKH2-02-004-CNS-2720 | Installation of Manholes [Local 29 ]-Stage 2-[MH 08 to MH 15] | 2026-11-15 → 2026-12-14 (+29d) | 2026-11-22 → 2026-12-21 (+29d) |  | 28d → 3d | resources MH depth 0 - 1.5m [8]; Excavator [210 h]; Labor [420 h]; Skilled Labor [210 h]; Eq. Operator [210 h] → Excavator [210 h]; Labor [420 h]; Skilled Labor [210 h]; Eq. Operator [210 h]; MH depth 0 - 1.5m [8] |
| 3 | **Catch Basins** | 2026-11-15 → 2026-12-14 (+29d) | 2026-12-13 → 2027-01-11 (+29d) |  |  |  |
| MKH2-02-004-CNS-3000 | Construction of Catch basins [Local 29 ]-Stage 1-[01 to 10] | 2026-11-15 → 2026-12-14 (+29d) | 2026-11-22 → 2026-12-21 (+29d) |  | 26d → 1d | resources Double Catch basin [10]; Labor [280 h]; Mason [140 h] → Labor [280 h]; Mason [140 h]; Double Catch basin [10] |
| MKH2-02-004-CNS-3010 | Construction of Catch basins [Local 29 ]-Stage 2-[11 to 20] | 2026-11-23 → 2026-12-22 (+29d) | 2026-11-30 → 2026-12-29 (+29d) |  | 26d → 1d | resources Double Catch basin [10]; Excavator [140 h]; Labor [280 h]; Eq. Operator [140 h]; Mason [140 h] → Excavator [140 h]; Labor [280 h]; Eq. Operator [140 h]; Mason [140 h]; Double Catch basin [10] |
| MKH2-02-004-CNS-3020 | Construction of Catch basins [Local 29 ]-Stage 3-[21 to 30] | 2026-12-01 → 2026-12-30 (+29d) | 2026-12-08 → 2027-01-06 (+29d) |  | 26d → 1d | resources Double Catch basin [10]; Excavator [140 h]; Labor [280 h]; Eq. Operator [140 h]; Mason [140 h] → Excavator [140 h]; Labor [280 h]; Eq. Operator [140 h]; Mason [140 h]; Double Catch basin [10] |
| MKH2-02-004-CNS-3030 | Construction of Catch basins [Local 29 ]-Stage 4-[31 to 35] | 2026-12-09 → 2027-01-07 (+29d) | 2026-12-13 → 2027-01-11 (+29d) |  | 26d → 1d | resources Double Catch basin [5]; Excavator [80 h]; Labor [160 h]; Eq. Operator [80 h]; Mason [80 h] → Excavator [80 h]; Labor [160 h]; Eq. Operator [80 h]; Mason [80 h]; Double Catch basin [5] |
| 4 | **Concrete chambers Pipes** | 2026-11-23 → 2026-12-22 (+29d) | 2026-12-20 → 2027-01-18 (+29d) |  |  |  |
| MKH2-02-004-CNS-3180 | Excavation and Compaction (FDT) [Local 29 ] | 2026-11-23 → 2026-12-22 (+29d) | 2026-11-30 → 2026-12-29 (+29d) |  | 28d → 3d | resources 300mm Diameter [675]; Excavator [140 h]; Water Tanker [140 h]; Truck [140 h]; Compactor [140 h]; Labor [280 h]; Driver [280 h]; Eq. Operator [280 h] → Excavator [140 h]; Water Tanker [140 h]; Truck [140 h]; Compactor [140 h]; Labor [280 h]; Driver [280 h]; Eq. Operator [280 h]; 300mm Diameter [675] |
| MKH2-02-004-CNS-3270 | Installation of Pipes [Local 29 ] | 2026-12-01 → 2026-12-30 (+29d) | 2026-12-10 → 2027-01-09 (+30d) |  | 28d → 3d | resources 400mm Diameter [675]; Loader [90 h]; Truck [90 h]; Labor [180 h]; Driver [90 h]; Eq. Operator [90 h]; Plumber [90 h] → Loader [90 h]; Truck [90 h]; Labor [180 h]; Driver [90 h]; Eq. Operator [90 h]; Plumber [90 h]; 400mm Diameter [675] |
| MKH2-02-004-CNS-3360 | Backfilling & Compaction [Local 29 ] | 2026-12-14 → 2027-01-12 (+29d) | 2026-12-20 → 2027-01-18 (+29d) |  | 26d → 1d | resources 300mm Diameter [675]; Labor [240 h] → Labor [240 h]; 300mm Diameter [675] |
| 7 | **Local 30** | 2026-10-13 → 2026-07-21 (-84d) | 2027-03-21 → 2027-05-03 (+43d) |  |  |  |
| 1 | **Road Works** | 2026-10-13 → 2026-07-21 (-84d) | 2027-03-21 → 2027-05-03 (+43d) |  |  |  |
| 1 | **Eartworks & Site grading** | 2026-10-13 → 2026-07-21 (-84d) | 2027-01-19 → 2027-03-04 (+44d) |  |  |  |
| MKH2-02-004-CNS-1090 | Road excavation [Local 30 ] | 2026-10-13 → 2026-07-21 A (-84d) | 2026-10-25 → 2026-08-22 A (-64d) | 0% → 100% | 3d → none | resources Roadway Excavation for cuttings (all types of soil) [23904]; Excavator [550 h]; Bulldozer [550 h]; Grader [550 h]; Truck [1100 h]; Bobcat [550 h]; Labor [1650 h]; Driver [1100 h]; Eq. Operator [2200 h] → Excavator [550 h]; Bulldozer [550 h]; Grader [550 h]; Truck [1100 h]; Labor [1650 h]; Driver [1100 h]; Eq. Operator [2200 h]; Bobcat [550 h]; Roadway Excavation for cuttings (all types of soil) [23904] |
| MKH2-02-004-CNS-1210 | Road backfilling [Local 30 ] | 2026-10-13 → 2026-07-22 A (-83d) | 2026-10-25 → 2026-11-16 (+22d) | 0% → 88% | 3d → -3d | resources Embankments to the ROW with common / suitable excavated material or with suitable imported material [12029]; Bulldozer [220 h]; Grader [220 h]; Truck [440 h]; Road Roller [220 h]; Bobcat [220 h]; Labor [660 h]; Driver [440 h]; Eq. Operator [880 h] → Bulldozer [220 h]; Grader [220 h]; Truck [440 h]; Road Roller [220 h]; Labor [660 h]; Driver [440 h]; Eq. Operator [880 h]; Bobcat [220 h]; Embankments to the ROW with common / suitable excavated material or with suitable imported material [12029] |
| MKH2-02-004-CNS-1300 | Subgrade [Local 30 ] | 2026-12-21 → 2026-09-19 A (-93d) | 2027-01-05 → 2027-02-13 (+39d) | 0% → 50% | 0d → -33d | resources Subgrade [3672]; Water Tanker [140 h]; Grader [140 h]; Truck [280 h]; Road Roller [140 h]; Labor [280 h]; Driver [420 h]; Eq. Operator [280 h] → Water Tanker [140 h]; Grader [140 h]; Truck [280 h]; Road Roller [140 h]; Labor [280 h]; Driver [420 h]; Eq. Operator [280 h]; Subgrade [3672] |
| MKH2-02-004-CNS-1380 | Aggregate base course [Local 30 ] | 2027-01-06 → 2027-02-18 (+43d) | 2027-01-19 → 2027-03-04 (+44d) |  | 6d → -31d | resources Aggregate base course [2448]; Loader [120 h]; Water Tanker [120 h]; Truck [240 h]; Road Roller [120 h]; Labor [360 h]; Driver [360 h]; Eq. Operator [240 h] → Loader [120 h]; Water Tanker [120 h]; Truck [240 h]; Road Roller [120 h]; Labor [360 h]; Driver [360 h]; Eq. Operator [240 h]; Aggregate base course [2448] |
| 2 | **Asphalt Works** | 2027-01-20 → 2027-03-06 (+45d) | 2027-02-09 → 2027-03-29 (+48d) |  |  |  |
| MKH2-02-004-CNS-1460 | Prime Coat (MC1) [Local 30 ] | 2027-01-20 → 2027-03-06 (+45d) | 2027-01-28 → 2027-03-17 (+48d) |  | 14d → -23d | resources Bituminous base course (Grading I - Class A), including Prime Coat (MC1) [86]; Water Tanker [80 h]; Grader [80 h]; Truck [80 h]; Road Roller [80 h]; Asphalte Paver [80 h]; Labor [160 h]; Driver [160 h]; Eq. Operator [240 h] → Water Tanker [80 h]; Grader [80 h]; Truck [80 h]; Road Roller [80 h]; Asphalte Paver [80 h]; Labor [160 h]; Driver [160 h]; Eq. Operator [240 h]; Bituminous base course (Grading I - Class A), including Prime Coat (MC1) [86] |
| MKH2-02-004-CNS-1540 | Bituminous base course [Local 30 ] | 2027-01-30 → 2027-03-18 (+47d) | 2027-02-09 → 2027-03-29 (+48d) |  | 14d → -23d | resources Bituminous base course (Grading I - Class A), including Prime Coat (MC1) [772]; Truck [200 h]; Road Roller [100 h]; Asphalte Paver [100 h]; Labor [400 h]; Driver [200 h]; Eq. Operator [200 h] → Truck [200 h]; Road Roller [100 h]; Asphalte Paver [100 h]; Labor [400 h]; Driver [200 h]; Eq. Operator [200 h]; Bituminous base course (Grading I - Class A), including Prime Coat (MC1) [772] |
| 3 | **Finishing Works** | 2027-02-10 → 2027-03-30 (+48d) | 2027-03-21 → 2027-05-03 (+43d) |  |  |  |
| 1 | **Precast Concrete Curb** | 2027-02-10 → 2027-03-30 (+48d) | 2027-02-16 → 2027-04-05 (+48d) |  |  |  |
| MKH2-02-004-CNS-1620 | Installation of Precast Concrete curb [Local 30 ] | 2027-02-10 → 2027-03-30 (+48d) | 2027-02-16 → 2027-04-05 (+48d) |  | 14d → -23d | resources Precast Concrete Kerb, Type K1-B [2381]; Labor [360 h]; Skilled Labor [240 h] → Labor [360 h]; Skilled Labor [240 h]; Precast Concrete Kerb, Type K1-B [2381] |
| 2 | **Precast Interlocking block pavers** | 2027-02-17 → 2027-04-06 (+48d) | 2027-02-24 → 2027-04-12 (+47d) |  |  |  |
| MKH2-02-004-CNS-1700 | Installation of Interlocking block pavers for sidewalk/footpath [Local 30 ] | 2027-02-17 → 2027-04-06 (+48d) | 2027-02-24 → 2027-04-12 (+47d) |  | 14d → -23d | resources 60mm thick - Interlocking block pavers for sidewalk/footpath [2733]; Road Roller [120 h]; Compactor [120 h]; Labor [360 h]; Eq. Operator [240 h]; Mason [720 h] → Road Roller [120 h]; Compactor [120 h]; Labor [360 h]; Eq. Operator [240 h]; Mason [720 h]; 60mm thick - Interlocking block pavers for sidewalk/footpath [2733] |

| ID | Task | Start | Finish | Complete | Total float | Other |
| --- | --- | --- | --- | --- | --- | --- |
| 3 | **Pavement Markings** | 2027-02-25 → 2027-04-13 (+47d) | 2027-03-14 → 2027-04-26 (+43d) |  |  |  |
| MKH2-02-004-CNS-1780 | Pavement markings [Local 30 ] | 2027-02-25 → 2027-04-13 (+47d) | 2027-03-03 → 2027-04-19 (+47d) |  | 14d → -23d | resources Retroreflective Thermoplastic White Traffic lines [530]; Labor [60 h]; Skilled Labor [60 h] → Labor [60 h]; Skilled Labor [60 h]; Retroreflective Thermoplastic White Traffic lines [530] |
| MKH2-02-004-CNS-1860 | (Speed Hump) with retroreflectiveThermoplastic yellow [Local 30 ] | 2027-03-04 → 2027-04-20 (+47d) | 2027-03-14 → 2027-04-26 (+43d) |  | 14d → -23d | resources (Speed Hump) with retroreflectiveThermoplastic yellow [2]; Labor [180 h]; Skilled Labor [120 h] → Labor [180 h]; Skilled Labor [120 h]; (Speed Hump) with retroreflectiveThermoplastic yellow [2] |
| 4 | **Traffic Signage** | 2027-03-15 → 2027-04-27 (+43d) | 2027-03-21 → 2027-05-03 (+43d) |  |  |  |
| MKH2-02-004-CNS-1940 | Installation of Traffic Signs [Local 30 ] | 2027-03-15 → 2027-04-27 (+43d) | 2027-03-21 → 2027-05-03 (+43d) |  | 14d → -23d | resources Traffic signs, ground mounted, Sheet Alumenium, (breakaway)Single post, with all accessories [17]; Labor [180 h]; Skilled Labor [120 h] → Labor [180 h]; Skilled Labor [120 h]; Traffic signs, ground mounted, Sheet Alumenium, (breakaway)Single post, with all accessories [17] |
| 2 | **Storm Water Drainage** | 2026-10-26 → 2026-08-26 (-61d) | 2027-01-12 → 2027-02-17 (+36d) |  |  |  |
| 1 | **Pipe Works** | 2026-10-26 → 2026-08-26 (-61d) | 2026-12-09 → 2026-09-19 (-81d) |  |  |  |
| MKH2-02-004-CNS-2050 | Excavation & Compaction (FDT) [Local 30 ] | 2026-10-26 → 2026-08-26 A (-61d) | 2026-11-01 → 2026-09-16 A (-46d) | 0% → 100% | 9d → none | resources Depth: 0.0m - 1.5m [582]; Truck [600 h]; Bobcat [300 h]; Labor [900 h]; Driver [600 h]; Eq. Operator [300 h] → Truck [600 h]; Labor [900 h]; Driver [600 h]; Eq. Operator [300 h]; Bobcat [300 h]; Depth: 0.0m - 1.5m [582] |
| MKH2-02-004-CNS-2170 | Sand Bedding [Local 30 ] | 2026-11-02 → 2026-08-29 A (-65d) | 2026-11-08 → 2026-09-17 A (-52d) | 0% → 100% | 9d → none | resources Depth: 1.51m - 2.5m [582]; Loader [60 h]; Truck [60 h]; Labor [120 h]; Driver [60 h]; Eq. Operator [60 h] → Loader [60 h]; Truck [60 h]; Labor [120 h]; Driver [60 h]; Eq. Operator [60 h]; Depth: 1.51m - 2.5m [582] |
| MKH2-02-004-CNS-2290 | Installation of GRP Pipe [Local 30 ] | 2026-11-09 → 2026-08-29 A (-72d) | 2026-11-19 → 2026-09-19 A (-61d) | 0% → 100% | 9d → none | resources Depth: 0.0m - 1.5m [582]; Crane [100 h]; Labor [200 h]; Eq. Operator [100 h]; Plumber [100 h] → Crane [100 h]; Labor [200 h]; Eq. Operator [100 h]; Plumber [100 h]; Depth: 0.0m - 1.5m [582] |
| MKH2-02-004-CNS-2410 | Sand Cover & Warning Tape [Local 30 ] | 2026-11-21 → 2026-09-03 A (-79d) | 2026-11-25 → 2026-09-19 A (-67d) | 0% → 100% | 9d → none | resources Depth: 2.51m - 3.5m [582]; Loader [50 h]; Labor [100 h]; Skilled Labor [50 h]; Eq. Operator [50 h] → Loader [50 h]; Labor [100 h]; Skilled Labor [50 h]; Eq. Operator [50 h]; Depth: 2.51m - 3.5m [582] |
| MKH2-02-004-CNS-2530 | Backfilling & Compaction [Local 30 ] | 2026-11-26 → 2026-09-03 A (-84d) | 2026-12-09 → 2026-09-19 A (-81d) | 0% → 100% | 9d → none | resources Depth: 4.51m - 5.5 m [582]; Truck [120 h]; Labor [240 h]; Driver [120 h] → Truck [120 h]; Labor [240 h]; Driver [120 h]; Depth: 4.51m - 5.5 m [582] |
| 2 | **Manholes** | 2026-11-21 → 2026-09-03 (-79d) | 2026-12-22 → 2026-09-21 (-92d) |  |  |  |
| MKH2-02-004-CNS-2730 | Installation of Manholes [Local 30 ]-Stage 1-[MH 01 to MH 07] | 2026-11-21 → 2026-09-03 A (-79d) | 2026-12-06 → 2026-09-17 A (-80d) | 0% → 100% | 12d → none | resources MH depth 1.51 - 2.5m [7]; Labor [280 h]; Skilled Labor [140 h] → Labor [280 h]; Skilled Labor [140 h]; MH depth 1.51 - 2.5m [7] |
| MKH2-02-004-CNS-2740 | Installation of Manholes [Local 30 ]-Stage 2-[MH 08 to MH 14] | 2026-12-07 → 2026-09-19 A (-79d) | 2026-12-22 → 2026-09-21 A (-92d) | 0% → 100% | 24d → none | resources MH depth 2.51 - 3.5m [7]; Excavator [140 h]; Crane [140 h]; Labor [280 h]; Skilled Labor [140 h]; Eq. Operator [280 h] → Excavator [140 h]; Crane [140 h]; Labor [280 h]; Skilled Labor [140 h]; Eq. Operator [280 h]; MH depth 2.51 - 3.5m [7] |
| 3 | **Catch Basins** | 2026-12-07 → 2026-12-15 (+8d) | 2027-01-11 → 2027-01-19 (+8d) |  |  |  |
| MKH2-02-004-CNS-3040 | Construction of Catch basins [Local 30 ]-Stage 1-[01 to 10] | 2026-12-07 → 2026-12-15 (+8d) | 2026-12-17 → 2026-12-26 (+9d) |  | 12d → 5d | resources Single Catch basin [10]; Labor [200 h]; Mason [100 h] → Labor [200 h]; Mason [100 h]; Single Catch basin [10] |
| MKH2-02-004-CNS-3050 | Construction of Catch basins [Local 30 ]-Stage 2-[11 to 20] | 2026-12-19 → 2026-12-27 (+8d) | 2026-12-29 → 2027-01-06 (+8d) |  | 13d → 6d | resources Single Catch basin [10]; Excavator [100 h]; Labor [200 h]; Eq. Operator [100 h]; Mason [100 h] → Excavator [100 h]; Labor [200 h]; Eq. Operator [100 h]; Mason [100 h]; Single Catch basin [10] |
| MKH2-02-004-CNS-3060 | Construction of Catch basins [Local 30 ]-Stage 3-[21 to 31] | 2026-12-30 → 2027-01-07 (+8d) | 2027-01-11 → 2027-01-19 (+8d) |  | 13d → 6d | resources Single Catch basin [11]; Excavator [110 h]; Labor [220 h]; Eq. Operator [110 h]; Mason [110 h] → Excavator [110 h]; Labor [220 h]; Eq. Operator [110 h]; Mason [110 h]; Single Catch basin [11] |
| 4 | **Concrete chambers Pipes** | 2026-12-19 → 2027-01-24 (+36d) | 2027-01-12 → 2027-02-17 (+36d) |  |  |  |
| MKH2-02-004-CNS-3190 | Excavation and Compaction (FDT) [Local 30 ] | 2026-12-19 → 2027-01-24 (+36d) | 2026-12-26 → 2027-01-31 (+36d) |  | 12d → -19d | resources 300mm Diameter [616]; Excavator [140 h]; Truck [140 h]; Labor [280 h]; Driver [140 h]; Eq. Operator [140 h] → Excavator [140 h]; Truck [140 h]; Labor [280 h]; Driver [140 h]; Eq. Operator [140 h]; 300mm Diameter [616] |
| MKH2-02-004-CNS-3280 | Installation of Pipes [Local 30 ] | 2026-12-27 → 2027-02-01 (+36d) | 2027-01-05 → 2027-02-10 (+36d) |  | 12d → -19d | resources 400mm Diameter [616]; Loader [90 h]; Truck [90 h]; Labor [180 h]; Driver [90 h]; Eq. Operator [90 h]; Plumber [90 h] → Loader [90 h]; Truck [90 h]; Labor [180 h]; Driver [90 h]; Eq. Operator [90 h]; Plumber [90 h]; 400mm Diameter [616] |
| MKH2-02-004-CNS-3370 | Backfilling & Compaction [Local 30 ] | 2027-01-06 → 2027-02-11 (+36d) | 2027-01-12 → 2027-02-17 (+36d) |  | 12d → -19d | resources 300mm Diameter [616]; Labor [240 h]; Plumber [120 h] → Labor [240 h]; Plumber [120 h]; 300mm Diameter [616] |
| 8 | **Local 31** | 2026-10-26 → 2026-07-29 (-89d) | 2027-05-06 → 2027-06-19 (+44d) |  |  |  |
| 1 | **Road Works** | 2026-10-26 → 2026-07-29 (-89d) | 2027-05-06 → 2027-06-19 (+44d) |  |  |  |
| 1 | **Eartworks & Site grading** | 2026-10-26 → 2026-07-29 (-89d) | 2027-02-16 → 2027-03-31 (+43d) |  |  |  |
| MKH2-02-004-CNS-1100 | Road excavation [Local 31 ]-Stage 1 | 2026-10-26 → 2026-07-29 A (-89d) | 2026-11-08 → 2026-11-23 (+15d) | 0% → 85% | 3d → -3d | resources Roadway Excavation for cuttings (all types of soil) [19398]; Excavator [480 h]; Bulldozer [480 h]; Water Tanker [480 h]; Truck [960 h]; Labor [1440 h]; Driver [1440 h]; Eq. Operator [960 h] → Excavator [480 h]; Bulldozer [480 h]; Water Tanker [480 h]; Truck [960 h]; Labor [1440 h]; Driver [1440 h]; Eq. Operator [960 h]; Roadway Excavation for cuttings (all types of soil) [19398] |
| MKH2-02-004-CNS-1220 | Road backfilling [Local 31 ]-Stage 1 | 2026-10-26 → 2026-09-05 A (-51d) | 2026-11-08 → 2026-09-19 A (-50d) | 0% → 100% | 3d → none | resources Embankments to the ROW with common / suitable excavated material or with suitable imported material [9763]; Water Tanker [240 h]; Grader [240 h]; Truck [480 h]; Road Roller [240 h]; Compactor [240 h]; Labor [720 h]; Driver [720 h]; Eq. Operator [720 h] → Water Tanker [240 h]; Grader [240 h]; Truck [480 h]; Road Roller [240 h]; Compactor [240 h]; Labor [720 h]; Driver [720 h]; Eq. Operator [720 h]; Embankments to the ROW with common / suitable excavated material or with suitable imported material [9763] |
| MKH2-02-004-CNS-1230 | Road backfilling [Local 31 ]-Stage 2 | 2026-11-09 → 2026-10-01 A (-39d) | 2026-11-22 → 2026-12-07 (+15d) | 0% → 32% | 10d → -3d | resources Embankments to the ROW with common / suitable excavated material or with suitable imported material [9762]; Bulldozer [240 h]; Truck [480 h]; Road Roller [240 h]; Labor [720 h]; Driver [480 h]; Eq. Operator [480 h] → Bulldozer [240 h]; Truck [480 h]; Road Roller [240 h]; Labor [720 h]; Driver [480 h]; Eq. Operator [480 h]; Embankments to the ROW with common / suitable excavated material or with suitable imported material [9762] |
| MKH2-02-004-CNS-1110 | Road excavation [Local 31 ]-Stage 2 | 2026-11-09 → 2026-11-24 (+15d) | 2026-11-22 → 2026-12-07 (+15d) |  | 10d → -3d | resources Roadway Excavation for cuttings (all types of soil) [19398]; Truck [960 h]; Labor [1440 h]; Driver [960 h] → Truck [960 h]; Labor [1440 h]; Driver [960 h]; Roadway Excavation for cuttings (all types of soil) [19398] |
| MKH2-02-004-CNS-1310 | Subgrade [Local 31 ] | 2027-01-06 → 2027-02-14 (+39d) | 2027-01-26 → 2027-03-07 (+40d) |  | 0d → -33d | resources Subgrade [5962]; Truck [360 h]; Road Roller [180 h]; Bobcat [180 h]; Compactor [180 h]; Labor [360 h]; Driver [360 h]; Eq. Operator [540 h] → Truck [360 h]; Road Roller [180 h]; Compactor [180 h]; Labor [360 h]; Driver [360 h]; Eq. Operator [540 h]; Bobcat [180 h]; Subgrade [5962] |
| MKH2-02-004-CNS-1390 | Aggregate base course [Local 31 ] | 2027-01-27 → 2027-03-08 (+40d) | 2027-02-16 → 2027-03-31 (+43d) |  | 0d → -33d | resources Aggregate base course [3974]; Loader [180 h]; Truck [360 h]; Road Roller [180 h]; Labor [540 h]; Driver [360 h]; Eq. Operator [360 h] → Loader [180 h]; Truck [360 h]; Road Roller [180 h]; Labor [540 h]; Driver [360 h]; Eq. Operator [360 h]; Aggregate base course [3974] |
| 2 | **Asphalt Works** | 2027-02-17 → 2027-04-01 (+43d) | 2027-03-15 → 2027-04-22 (+38d) |  |  |  |
| MKH2-02-004-CNS-1470 | Prime Coat (MC1) [Local 31 ] | 2027-02-17 → 2027-04-01 (+43d) | 2027-02-28 → 2027-04-11 (+42d) |  | 0d → -33d | resources Bituminous base course (Grading I - Class A), including Prime Coat (MC1) [138]; Truck [90 h]; Road Roller [90 h]; Asphalte Paver [90 h]; Labor [180 h]; Driver [90 h]; Eq. Operator [180 h] → Truck [90 h]; Road Roller [90 h]; Asphalte Paver [90 h]; Labor [180 h]; Driver [90 h]; Eq. Operator [180 h]; Bituminous base course (Grading I - Class A), including Prime Coat (MC1) [138] |
| MKH2-02-004-CNS-1550 | Bituminous base course [Local 31 ] | 2027-03-01 → 2027-04-12 (+42d) | 2027-03-15 → 2027-04-22 (+38d) |  | 0d → -33d | resources Bituminous base course (Grading I - Class A), including Prime Coat (MC1) [1250]; Truck [200 h]; Road Roller [100 h]; Asphalte Paver [100 h]; Labor [400 h]; Driver [200 h]; Eq. Operator [200 h] → Truck [200 h]; Road Roller [100 h]; Asphalte Paver [100 h]; Labor [400 h]; Driver [200 h]; Eq. Operator [200 h]; Bituminous base course (Grading I - Class A), including Prime Coat (MC1) [1250] |
| 3 | **Finishing Works** | 2027-03-16 → 2027-04-24 (+39d) | 2027-05-06 → 2027-06-19 (+44d) |  |  |  |
| 1 | **Precast Concrete Curb** | 2027-03-16 → 2027-04-24 (+39d) | 2027-03-27 → 2027-05-04 (+38d) |  |  |  |
| MKH2-02-004-CNS-1630 | Installation of Precast Concrete curb [Local 31 ] | 2027-03-16 → 2027-04-24 (+39d) | 2027-03-27 → 2027-05-04 (+38d) |  | 0d → -33d | resources Depressed curbs Type K2 [3865]; Labor [600 h]; Skilled Labor [400 h] → Labor [600 h]; Skilled Labor [400 h]; Depressed curbs Type K2 [3865] |
| 2 | **Precast Interlocking block pavers** | 2027-03-28 → 2027-05-05 (+38d) | 2027-04-06 → 2027-05-19 (+43d) |  |  |  |
| MKH2-02-004-CNS-1710 | Installation of Interlocking block pavers for sidewalk/footpath [Local 31 ] | 2027-03-28 → 2027-05-05 (+38d) | 2027-04-06 → 2027-05-19 (+43d) |  | 0d → -33d | resources 60mm thick - Interlocking block pavers for sidewalk/footpath [4434]; Labor [540 h]; Mason [1080 h] → Labor [540 h]; Mason [1080 h]; 60mm thick - Interlocking block pavers for sidewalk/footpath [4434] |
| 3 | **Pavement Markings** | 2027-04-07 → 2027-05-20 (+43d) | 2027-04-27 → 2027-06-09 (+43d) |  |  |  |
| MKH2-02-004-CNS-1790 | Pavement markings [Local 31 ] | 2027-04-07 → 2027-05-20 (+43d) | 2027-04-17 → 2027-05-30 (+43d) |  | 0d → -33d | resources Retroreflective Thermoplastic Yellow, Traffic lines [862]; Labor [90 h]; Skilled Labor [90 h] → Labor [90 h]; Skilled Labor [90 h]; Retroreflective Thermoplastic Yellow, Traffic lines [862] |
| MKH2-02-004-CNS-1870 | (Speed Hump) with retroreflectiveThermoplastic yellow [Local 31 ] | 2027-04-18 → 2027-05-31 (+43d) | 2027-04-27 → 2027-06-09 (+43d) |  | 0d → -33d | resources (Speed Hump) with retroreflectiveThermoplastic yellow [3]; Labor [270 h]; Skilled Labor [180 h] → Labor [270 h]; Skilled Labor [180 h]; (Speed Hump) with retroreflectiveThermoplastic yellow [3] |
| 4 | **Traffic Signage** | 2027-04-28 → 2027-06-10 (+43d) | 2027-05-06 → 2027-06-19 (+44d) |  |  |  |
| MKH2-02-004-CNS-1950 | Installation of Traffic Signs [Local 31 ] | 2027-04-28 → 2027-06-10 (+43d) | 2027-05-06 → 2027-06-19 (+44d) |  | 20d → -13d | resources Traffic signs, ground mounted, Sheet Alumenium, (breakaway)Single post, with all accessories [27]; Labor [240 h]; Skilled Labor [160 h] → Labor [240 h]; Skilled Labor [160 h]; Traffic signs, ground mounted, Sheet Alumenium, (breakaway)Single post, with all accessories [27] |
| 2 | **Storm Water Drainage** | 2026-11-09 → 2026-11-17 (+8d) | 2027-02-02 → 2027-03-09 (+35d) |  |  |  |
| 1 | **Pipe Works** | 2026-11-09 → 2026-11-17 (+8d) | 2026-12-31 → 2027-01-09 (+9d) |  |  |  |
| MKH2-02-004-CNS-2060 | Excavation & Compaction (FDT) [Local 31 ]-Stage 1 | 2026-11-09 → 2026-11-17 (+8d) | 2026-11-17 → 2026-11-25 (+8d) |  | 4d → -3d | resources Depth: 0.0m - 1.5m [298]; Excavator [160 h]; Water Tanker [160 h]; Truck [320 h]; Compactor [160 h]; Labor [480 h]; Driver [480 h]; Eq. Operator [320 h] → Excavator [160 h]; Water Tanker [160 h]; Truck [320 h]; Compactor [160 h]; Labor [480 h]; Driver [480 h]; Eq. Operator [320 h]; Depth: 0.0m - 1.5m [298] |
| MKH2-02-004-CNS-2180 | Sand Bedding [Local 31 ]-Stage 1 | 2026-11-18 → 2026-11-26 (+8d) | 2026-11-29 → 2026-12-07 (+8d) |  | 4d → -3d | resources Depth: > 2.5m [298]; Loader [100 h]; Truck [100 h]; Labor [200 h]; Driver [100 h]; Eq. Operator [100 h] → Loader [100 h]; Truck [100 h]; Labor [200 h]; Driver [100 h]; Eq. Operator [100 h]; Depth: > 2.5m [298] |
| MKH2-02-004-CNS-2070 | Excavation & Compaction (FDT) [Local 31 ]-Stage 2 | 2026-11-18 → 2026-11-29 (+11d) | 2026-11-26 → 2026-12-07 (+11d) |  | 6d → -3d | resources Depth: 0.0m - 1.5m [297]; Excavator [160 h]; Truck [320 h]; Labor [480 h]; Driver [320 h]; Eq. Operator [160 h] → Excavator [160 h]; Truck [320 h]; Labor [480 h]; Driver [320 h]; Eq. Operator [160 h]; Depth: 0.0m - 1.5m [297] |
| MKH2-02-004-CNS-2190 | Sand Bedding [Local 31 ]-Stage 2 | 2026-11-30 → 2026-12-08 (+8d) | 2026-12-10 → 2026-12-19 (+9d) |  | 4d → -3d | resources Depth: > 2.5m [297]; Loader [100 h]; Truck [100 h]; Labor [200 h]; Driver [100 h]; Eq. Operator [100 h] → Loader [100 h]; Truck [100 h]; Labor [200 h]; Driver [100 h]; Eq. Operator [100 h]; Depth: > 2.5m [297] |
| MKH2-02-004-CNS-2300 | Installation of GRP Pipe [Local 31 ]-Stage 1 | 2026-11-30 → 2026-12-08 (+8d) | 2026-12-08 → 2026-12-16 (+8d) |  | 6d → -1d | resources Depth: 1.51m - 2.5m [298]; Labor [160 h]; Plumber [80 h] → Labor [160 h]; Plumber [80 h]; Depth: 1.51m - 2.5m [298] |
| MKH2-02-004-CNS-2420 | Sand Cover & Warning Tape [Local 31 ]-Stage 1 | 2026-12-09 → 2026-12-17 (+8d) | 2026-12-14 → 2026-12-22 (+8d) |  | 9d → 2d | resources Depth: more than 3.5m [298]; Loader [50 h]; Labor [100 h]; Skilled Labor [50 h]; Eq. Operator [50 h] → Loader [50 h]; Labor [100 h]; Skilled Labor [50 h]; Eq. Operator [50 h]; Depth: more than 3.5m [298] |
| MKH2-02-004-CNS-2310 | Installation of GRP Pipe [Local 31 ]-Stage 2 | 2026-12-12 → 2026-12-20 (+8d) | 2026-12-20 → 2026-12-28 (+8d) |  | 4d → -3d | resources Depth: 1.51m - 2.5m [297]; Crane [80 h]; Labor [160 h]; Eq. Operator [80 h]; Plumber [80 h] → Crane [80 h]; Labor [160 h]; Eq. Operator [80 h]; Plumber [80 h]; Depth: 1.51m - 2.5m [297] |
| MKH2-02-004-CNS-2540 | Backfilling & Compaction [Local 31 ]-Stage 1 | 2026-12-15 → 2026-12-23 (+8d) | 2026-12-20 → 2026-12-28 (+8d) |  | 9d → 2d | resources Depth: more than 5.5m [298]; Bulldozer [50 h]; Water Tanker [50 h]; Truck [50 h]; Compactor [50 h]; Labor [100 h]; Driver [100 h]; Eq. Operator [100 h] → Bulldozer [50 h]; Water Tanker [50 h]; Truck [50 h]; Compactor [50 h]; Labor [100 h]; Driver [100 h]; Eq. Operator [100 h]; Depth: more than 5.5m [298] |
| MKH2-02-004-CNS-2430 | Sand Cover & Warning Tape [Local 31 ]-Stage 2 | 2026-12-21 → 2026-12-29 (+8d) | 2026-12-26 → 2027-01-03 (+8d) |  | 4d → -3d | resources Depth: more than 3.5m [297]; Loader [50 h]; Labor [100 h]; Skilled Labor [50 h]; Eq. Operator [50 h] → Loader [50 h]; Labor [100 h]; Skilled Labor [50 h]; Eq. Operator [50 h]; Depth: more than 3.5m [297] |
| MKH2-02-004-CNS-2550 | Backfilling & Compaction [Local 31 ]-Stage 2 | 2026-12-27 → 2027-01-04 (+8d) | 2026-12-31 → 2027-01-09 (+9d) |  | 4d → -3d | resources Depth: more than 5.5m [297]; Bulldozer [50 h]; Truck [50 h]; Labor [100 h]; Driver [50 h]; Eq. Operator [50 h] → Bulldozer [50 h]; Truck [50 h]; Labor [100 h]; Driver [50 h]; Eq. Operator [50 h]; Depth: more than 5.5m [297] |
| 2 | **Manholes** | 2026-12-09 → 2026-12-17 (+8d) | 2027-01-24 → 2027-02-01 (+8d) |  |  |  |
| MKH2-02-004-CNS-2750 | Installation of Manholes [Local 31 ]-Stage 1-[MH 01 to MH 07] | 2026-12-09 → 2026-12-17 (+8d) | 2026-12-24 → 2027-01-02 (+9d) |  | 33d → 26d | resources MH depth 3.51 - 4.5m [7]; Excavator [140 h]; Labor [280 h]; Skilled Labor [140 h]; Eq. Operator [140 h] → Excavator [140 h]; Labor [280 h]; Skilled Labor [140 h]; Eq. Operator [140 h]; MH depth 3.51 - 4.5m [7] |
| MKH2-02-004-CNS-2760 | Installation of Manholes [Local 31 ]-Stage 2-[MH 08 to MH 14] | 2026-12-26 → 2027-01-03 (+8d) | 2027-01-10 → 2027-01-18 (+8d) |  | 33d → 26d | resources MH depth 4.51 - 5.5 m [7]; Crane [140 h]; Labor [280 h]; Skilled Labor [140 h]; Eq. Operator [140 h] → Crane [140 h]; Labor [280 h]; Skilled Labor [140 h]; Eq. Operator [140 h]; MH depth 4.51 - 5.5 m [7] |
| MKH2-02-004-CNS-2770 | Installation of Manholes [Local 31 ]-Stage 3-[MH 15 to MH 20] | 2027-01-11 → 2027-01-19 (+8d) | 2027-01-24 → 2027-02-01 (+8d) |  | 33d → 26d | resources MH depth more than 5.5 m [6]; Excavator [120 h]; Labor [240 h]; Skilled Labor [120 h]; Eq. Operator [120 h] → Excavator [120 h]; Labor [240 h]; Skilled Labor [120 h]; Eq. Operator [120 h]; MH depth more than 5.5 m [6] |
| 3 | **Catch Basins** | 2026-12-26 → 2027-01-03 (+8d) | 2027-01-23 → 2027-02-28 (+36d) |  |  |  |
| MKH2-02-004-CNS-3070 | Construction of Catch basins [Local 31 ]-Stage 1-[01 to 10] | 2026-12-26 → 2027-01-03 (+8d) | 2026-12-30 → 2027-01-07 (+8d) |  | 33d → 26d | resources Double Catch basin [10]; Excavator [100 h]; Labor [200 h]; Eq. Operator [100 h]; Mason [100 h] → Excavator [100 h]; Labor [200 h]; Eq. Operator [100 h]; Mason [100 h]; Double Catch basin [10] |
| MKH2-02-004-CNS-3080 | Construction of Catch basins [Local 31 ]-Stage 2-[11 to 20] | 2026-12-31 → 2027-01-19 (+19d) | 2027-01-05 → 2027-01-24 (+19d) |  | 34d → 18d | resources Double Catch basin [10]; Labor [200 h]; Mason [100 h] → Labor [200 h]; Mason [100 h]; Double Catch basin [10] |
| MKH2-02-004-CNS-3090 | Construction of Catch basins [Local 31 ]-Stage 3-[21 to 31] | 2027-01-06 → 2027-02-10 (+35d) | 2027-01-11 → 2027-02-15 (+35d) |  | 34d → 4d | resources Double Catch basin [10]; Excavator [100 h]; Labor [200 h]; Eq. Operator [100 h]; Mason [100 h] → Excavator [100 h]; Labor [200 h]; Eq. Operator [100 h]; Mason [100 h]; Double Catch basin [10] |
| MKH2-02-004-CNS-3100 | Construction of Catch basins [Local 31 ]-Stage 4-[31 to 40] | 2027-01-12 → 2027-02-16 (+35d) | 2027-01-17 → 2027-02-21 (+35d) |  | 34d → 4d | resources Double Catch basin [10]; Excavator [100 h]; Labor [200 h]; Eq. Operator [100 h]; Mason [100 h] → Excavator [100 h]; Labor [200 h]; Eq. Operator [100 h]; Mason [100 h]; Double Catch basin [10] |
| MKH2-02-004-CNS-3110 | Construction of Catch basins [Local 31 ]-Stage 5-[41 to 49] | 2027-01-18 → 2027-02-23 (+36d) | 2027-01-23 → 2027-02-28 (+36d) |  | 34d → 4d | resources Double Catch basin [9]; Excavator [100 h]; Labor [200 h]; Eq. Operator [100 h]; Mason [100 h] → Excavator [100 h]; Labor [200 h]; Eq. Operator [100 h]; Mason [100 h]; Double Catch basin [9] |
| 4 | **Concrete chambers Pipes** | 2026-12-31 → 2027-01-09 (+9d) | 2027-02-02 → 2027-03-09 (+35d) |  |  |  |
| MKH2-02-004-CNS-3200 | Excavation and Compaction (FDT) [Local 31 ] | 2026-12-31 → 2027-01-09 (+9d) | 2027-01-10 → 2027-01-18 (+8d) |  | 33d → 26d | resources 300mm Diameter [850]; Excavator [180 h]; Water Tanker [180 h]; Truck [180 h]; Compactor [180 h]; Labor [360 h]; Driver [360 h]; Eq. Operator [360 h] → Excavator [180 h]; Water Tanker [180 h]; Truck [180 h]; Compactor [180 h]; Labor [360 h]; Driver [360 h]; Eq. Operator [360 h]; 300mm Diameter [850] |
| MKH2-02-004-CNS-3290 | Installation of Pipes [Local 31 ] | 2027-01-11 → 2027-01-19 (+8d) | 2027-01-24 → 2027-02-01 (+8d) |  | 33d → 26d | resources 400mm Diameter [850]; Loader [120 h]; Truck [120 h]; Crane [120 h]; Labor [240 h]; Driver [120 h]; Eq. Operator [240 h]; Plumber [120 h] → Loader [120 h]; Truck [120 h]; Crane [120 h]; Labor [240 h]; Driver [120 h]; Eq. Operator [240 h]; Plumber [120 h]; 400mm Diameter [850] |

| ID | Task | Start | Finish | Complete | Total float | Other |
| --- | --- | --- | --- | --- | --- | --- |
| MKH2-02-004-CNS-3380 | Backfilling & Compaction [Local 31 ] | 2027-01-25 → 2027-03-01 (+35d) | 2027-02-02 → 2027-03-09 (+35d) |  | 33d → 4d | resources 300mm Diameter [850]; Labor [320 h] → Labor [320 h]; 300mm Diameter [850] |
| 4 | **Local 28** | 2026-11-09 → 2026-08-05 (-96d) | 2027-06-03 → 2027-07-12 (+39d) |  |  |  |
| 1 | **Road Works** | 2026-11-09 → 2026-08-05 (-96d) | 2027-06-03 → 2027-07-12 (+39d) |  |  |  |
| 1 | **Eartworks & Site grading** | 2026-11-09 → 2026-08-05 (-96d) | 2027-03-08 → 2027-04-17 (+40d) |  |  |  |
| MKH2-02-004-CNS-1040 | Road excavation [Local 28 ]-Stage 1 | 2026-11-09 → 2026-08-05 A (-96d) | 2026-11-22 → 2026-09-03 A (-80d) | 0% → 100% | 3d → none | resources Roadway Excavation for cuttings (all types of soil) [19357]; Excavator [480 h]; Bulldozer [480 h]; Truck [960 h]; Labor [1440 h]; Driver [960 h]; Eq. Operator [960 h] → Excavator [480 h]; Bulldozer [480 h]; Truck [960 h]; Labor [1440 h]; Driver [960 h]; Eq. Operator [960 h]; Roadway Excavation for cuttings (all types of soil) [19357] |
| MKH2-02-004-CNS-1160 | Road backfilling [Local 28 ]-Stage 1 | 2026-11-09 → 2026-08-08 A (-93d) | 2026-11-22 → 2026-08-22 A (-92d) | 0% → 100% | 3d → none | resources Embankments to the ROW with common / suitable excavated material or with suitable imported material [9741]; Bulldozer [240 h]; Water Tanker [240 h]; Truck [480 h]; Road Roller [240 h]; Labor [720 h]; Driver [720 h]; Eq. Operator [480 h] → Bulldozer [240 h]; Water Tanker [240 h]; Truck [480 h]; Road Roller [240 h]; Labor [720 h]; Driver [720 h]; Eq. Operator [480 h]; Embankments to the ROW with common / suitable excavated material or with suitable imported material [9741] |
| MKH2-02-004-CNS-1050 | Road excavation [Local 28 ]-Stage 2 | 2026-11-23 → 2026-08-22 A (-93d) | 2026-12-06 → 2026-09-14 A (-83d) | 0% → 100% | 3d → none | resources Roadway Excavation for cuttings (all types of soil) [19356]; Bulldozer [480 h]; Water Tanker [480 h]; Truck [960 h]; Labor [1440 h]; Driver [1440 h]; Eq. Operator [480 h] → Bulldozer [480 h]; Water Tanker [480 h]; Truck [960 h]; Labor [1440 h]; Driver [1440 h]; Eq. Operator [480 h]; Roadway Excavation for cuttings (all types of soil) [19356] |
| MKH2-02-004-CNS-1170 | Road backfilling [Local 28 ]-Stage 2 | 2026-11-23 → 2026-08-22 A (-93d) | 2026-12-06 → 2026-11-25 (-11d) | 0% → 65% | 3d → 33d | resources Embankments to the ROW with common / suitable excavated material or with suitable imported material [9741]; Bulldozer [240 h]; Truck [480 h]; Road Roller [240 h]; Compactor [240 h]; Labor [720 h]; Driver [480 h]; Eq. Operator [720 h] → Bulldozer [240 h]; Truck [480 h]; Road Roller [240 h]; Compactor [240 h]; Labor [720 h]; Driver [480 h]; Eq. Operator [720 h]; Embankments to the ROW with common / suitable excavated material or with suitable imported material [9741] |
| MKH2-02-004-CNS-1270 | Subgrade [Local 28 ] | 2027-02-01 → 2027-03-08 (+35d) | 2027-02-18 → 2027-03-29 (+39d) |  | 3d → -26d | resources Subgrade [5947]; Truck [320 h]; Road Roller [160 h]; Labor [320 h]; Driver [320 h]; Eq. Operator [160 h] → Truck [320 h]; Road Roller [160 h]; Labor [320 h]; Driver [320 h]; Eq. Operator [160 h]; Subgrade [5947] |
| MKH2-02-004-CNS-1350 | Aggregate base course [Local 28 ] | 2027-02-20 → 2027-04-01 (+40d) | 2027-03-08 → 2027-04-17 (+40d) |  | 3d → -28d | resources Aggregate base course [3965]; Loader [140 h]; Truck [280 h]; Road Roller [140 h]; Labor [420 h]; Driver [280 h]; Eq. Operator [280 h] → Loader [140 h]; Truck [280 h]; Road Roller [140 h]; Labor [420 h]; Driver [280 h]; Eq. Operator [280 h]; Aggregate base course [3965] |
| 2 | **Asphalt Works** | 2027-03-09 → 2027-04-18 (+40d) | 2027-04-01 → 2027-05-08 (+37d) |  |  |  |
| MKH2-02-004-CNS-1430 | Prime Coat (MC1) [Local 28 ] | 2027-03-09 → 2027-04-18 (+40d) | 2027-03-21 → 2027-04-26 (+36d) |  | 3d → -28d | resources Bituminous base course (Grading I - Class A), including Prime Coat (MC1) [139]; Grader [80 h]; Truck [80 h]; Road Roller [80 h]; Asphalte Paver [80 h]; Labor [160 h]; Driver [80 h]; Eq. Operator [240 h] → Grader [80 h]; Truck [80 h]; Road Roller [80 h]; Asphalte Paver [80 h]; Labor [160 h]; Driver [80 h]; Eq. Operator [240 h]; Bituminous base course (Grading I - Class A), including Prime Coat (MC1) [139] |
| MKH2-02-004-CNS-1510 | Bituminous base course [Local 28 ] | 2027-03-22 → 2027-04-27 (+36d) | 2027-04-01 → 2027-05-08 (+37d) |  | 3d → -28d | resources Bituminous base course (Grading I - Class A), including Prime Coat (MC1) [1249]; Truck [200 h]; Road Roller [100 h]; Asphalte Paver [100 h]; Labor [400 h]; Driver [200 h]; Eq. Operator [200 h] → Truck [200 h]; Road Roller [100 h]; Asphalte Paver [100 h]; Labor [400 h]; Driver [200 h]; Eq. Operator [200 h]; Bituminous base course (Grading I - Class A), including Prime Coat (MC1) [1249] |
| 3 | **Finishing Works** | 2027-04-03 → 2027-05-09 (+36d) | 2027-06-03 → 2027-07-12 (+39d) |  |  |  |
| 1 | **Precast Concrete Curb** | 2027-04-03 → 2027-05-09 (+36d) | 2027-04-13 → 2027-05-24 (+41d) |  |  |  |
| MKH2-02-004-CNS-1590 | Installation of Precast Concrete curb [Local 28 ] | 2027-04-03 → 2027-05-09 (+36d) | 2027-04-13 → 2027-05-24 (+41d) |  | 3d → -28d | resources Depressed curbs Type K2 [3857]; Labor [600 h]; Skilled Labor [400 h] → Labor [600 h]; Skilled Labor [400 h]; Depressed curbs Type K2 [3857] |
| 2 | **Precast Interlocking block pavers** | 2027-04-14 → 2027-05-25 (+41d) | 2027-04-24 → 2027-06-03 (+40d) |  |  |  |
| MKH2-02-004-CNS-1670 | Installation of Interlocking block pavers for sidewalk/footpath [Local 28 ] | 2027-04-14 → 2027-05-25 (+41d) | 2027-04-24 → 2027-06-03 (+40d) |  | 3d → -28d | resources 60mm thick - Interlocking block pavers for sidewalk/footpath [4426]; Labor [540 h]; Mason [1080 h] → Labor [540 h]; Mason [1080 h]; 60mm thick - Interlocking block pavers for sidewalk/footpath [4426] |
| 3 | **Pavement Markings** | 2027-04-28 → 2027-06-10 (+43d) | 2027-05-24 → 2027-07-01 (+38d) |  |  |  |
| MKH2-02-004-CNS-1750 | Pavement markings [Local 28 ] | 2027-04-28 → 2027-06-10 (+43d) | 2027-05-09 → 2027-06-21 (+43d) |  | 0d → -33d | resources Retroreflective Thermoplastic Yellow, Traffic lines [859]; Labor [100 h]; Skilled Labor [100 h] → Labor [100 h]; Skilled Labor [100 h]; Retroreflective Thermoplastic Yellow, Traffic lines [859] |
| MKH2-02-004-CNS-1830 | (Speed Hump) with retroreflectiveThermoplastic yellow [Local 28 ] | 2027-05-10 → 2027-06-22 (+43d) | 2027-05-24 → 2027-07-01 (+38d) |  | 0d → -33d | resources (Speed Hump) with retroreflectiveThermoplastic yellow [3]; Labor [270 h]; Skilled Labor [180 h] → Labor [270 h]; Skilled Labor [180 h]; (Speed Hump) with retroreflectiveThermoplastic yellow [3] |
| 4 | **Traffic Signage** | 2027-05-25 → 2027-07-03 (+39d) | 2027-06-03 → 2027-07-12 (+39d) |  |  |  |
| MKH2-02-004-CNS-1910 | Installation of Traffic Signs [Local 28 ] | 2027-05-25 → 2027-07-03 (+39d) | 2027-06-03 → 2027-07-12 (+39d) |  | 0d → -33d | resources Traffic signs, ground mounted, Sheet Alumenium, (breakaway)Single post, with all accessories [27]; Labor [270 h]; Skilled Labor [180 h] → Labor [270 h]; Skilled Labor [180 h]; Traffic signs, ground mounted, Sheet Alumenium, (breakaway)Single post, with all accessories [27] |
| 2 | **Storm Water Drainage** | 2026-12-07 → 2026-09-09 (-89d) | 2027-02-24 → 2027-03-27 (+31d) |  |  |  |
| 1 | **Pipe Works** | 2026-12-07 → 2026-09-09 (-89d) | 2027-01-31 → 2026-12-22 (-40d) |  |  |  |
| MKH2-02-004-CNS-2000 | Excavation & Compaction (FDT) [Local 28 ]-Stage 1 | 2026-12-07 → 2026-09-09 A (-89d) | 2026-12-17 → 2026-09-17 A (-91d) | 0% → 100% | 3d → none | resources Depth: 0.0m - 1.5m [371]; Excavator [200 h]; Water Tanker [200 h]; Truck [400 h]; Compactor [200 h]; Labor [600 h]; Driver [600 h]; Eq. Operator [400 h] → Excavator [200 h]; Water Tanker [200 h]; Truck [400 h]; Compactor [200 h]; Labor [600 h]; Driver [600 h]; Eq. Operator [400 h]; Depth: 0.0m - 1.5m [371] |
| MKH2-02-004-CNS-2120 | Sand Bedding [Local 28 ]-Stage 1 | 2026-12-19 → 2026-09-10 A (-100d) | 2026-12-27 → 2026-09-19 A (-99d) | 0% → 100% | 3d → none | resources Depth: 1.51m - 2.5m [371]; Loader [80 h]; Truck [80 h]; Labor [160 h]; Driver [80 h]; Eq. Operator [80 h] → Loader [80 h]; Truck [80 h]; Labor [160 h]; Driver [80 h]; Eq. Operator [80 h]; Depth: 1.51m - 2.5m [371] |
| MKH2-02-004-CNS-2240 | Installation of GRP Pipe [Local 28 ]-Stage 1 | 2026-12-28 → 2026-09-12 A (-107d) | 2027-01-07 → 2026-09-24 A (-105d) | 0% → 100% | 3d → none | resources Depth: 0.0m - 1.5m [371]; Labor [200 h]; Plumber [100 h] → Labor [200 h]; Plumber [100 h]; Depth: 0.0m - 1.5m [371] |
| MKH2-02-004-CNS-2010 | Excavation & Compaction (FDT) [Local 28 ]-Stage 2 | 2026-12-19 → 2026-09-23 A (-87d) | 2026-12-29 → 2026-12-02 (-27d) | 0% → 60% | 3d → 37d | resources Depth: 0.0m - 1.5m [370]; Excavator [200 h]; Truck [400 h]; Labor [600 h]; Driver [400 h]; Eq. Operator [200 h] → Excavator [200 h]; Truck [400 h]; Labor [600 h]; Driver [400 h]; Eq. Operator [200 h]; Depth: 0.0m - 1.5m [370] |
| MKH2-02-004-CNS-2130 | Sand Bedding [Local 28 ]-Stage 2 | 2026-12-30 → 2026-09-26 A (-95d) | 2027-01-07 → 2026-12-08 (-30d) | 0% → 60% | 3d → 37d | resources Depth: 1.51m - 2.5m [370]; Loader [80 h]; Truck [80 h]; Labor [160 h]; Driver [80 h]; Eq. Operator [80 h] → Loader [80 h]; Truck [80 h]; Labor [160 h]; Driver [80 h]; Eq. Operator [80 h]; Depth: 1.51m - 2.5m [370] |
| MKH2-02-004-CNS-2360 | Sand Cover & Warning Tape [Local 28 ]-Stage 1 | 2027-01-09 → 2026-09-26 A (-105d) | 2027-01-13 → 2026-09-27 A (-108d) | 0% → 100% | 8d → none | resources Depth: more than 2.5m [371]; Loader [50 h]; Labor [100 h]; Skilled Labor [50 h]; Eq. Operator [50 h] → Loader [50 h]; Labor [100 h]; Skilled Labor [50 h]; Eq. Operator [50 h]; Depth: more than 2.5m [371] |
| MKH2-02-004-CNS-2250 | Installation of GRP Pipe [Local 28 ]-Stage 2 | 2027-01-09 → 2026-09-27 A (-104d) | 2027-01-19 → 2026-12-15 (-35d) | 0% → 60% | 3d → 37d | resources Depth: 0.0m - 1.5m [370]; Crane [100 h]; Labor [200 h]; Eq. Operator [100 h]; Plumber [100 h] → Crane [100 h]; Labor [200 h]; Eq. Operator [100 h]; Plumber [100 h]; Depth: 0.0m - 1.5m [370] |
| MKH2-02-004-CNS-2480 | Backfilling & Compaction [Local 28 ]-Stage 1 | 2027-01-14 → 2026-09-27 A (-109d) | 2027-01-19 → 2026-09-28 A (-113d) | 0% → 100% | 8d → none | resources Depth: less than 2.5 m [371]; Bulldozer [50 h]; Water Tanker [50 h]; Truck [50 h]; Compactor [50 h]; Labor [100 h]; Driver [100 h]; Eq. Operator [100 h] → Bulldozer [50 h]; Water Tanker [50 h]; Truck [50 h]; Compactor [50 h]; Labor [100 h]; Driver [100 h]; Eq. Operator [100 h]; Depth: less than 2.5 m [371] |
| MKH2-02-004-CNS-2370 | Sand Cover & Warning Tape [Local 28 ]-Stage 2 | 2027-01-20 → 2026-09-30 A (-112d) | 2027-01-25 → 2026-12-19 (-37d) | 0% → 50% | 3d → 37d | resources Depth: more than 2.5m [370]; Loader [50 h]; Labor [100 h]; Skilled Labor [50 h]; Eq. Operator [50 h] → Loader [50 h]; Labor [100 h]; Skilled Labor [50 h]; Eq. Operator [50 h]; Depth: more than 2.5m [370] |
| MKH2-02-004-CNS-2490 | Backfilling & Compaction [Local 28 ]-Stage 2 | 2027-01-26 → 2026-10-03 A (-115d) | 2027-01-31 → 2026-12-22 (-40d) | 0% → 50% | 3d → 37d | resources Depth: less than 2.5 m [370]; Truck [50 h]; Labor [100 h]; Driver [50 h] → Truck [50 h]; Labor [100 h]; Driver [50 h]; Depth: less than 2.5 m [370] |
| 2 | **Manholes** | 2027-01-20 → 2026-09-13 (-129d) | 2027-02-06 → 2026-12-21 (-47d) |  |  |  |
| MKH2-02-004-CNS-2650 | Installation of Manholes [Local 28 ]-Stage 1-[MH 01 to MH 07] | 2027-01-20 → 2026-09-13 A (-129d) | 2027-01-25 → 2026-09-23 A (-124d) | 0% → 100% | 23d → none | resources MH depth 0 - 1.5m [7]; Excavator [150 h]; Crane [150 h]; Labor [300 h]; Skilled Labor [150 h]; Eq. Operator [300 h] → Excavator [150 h]; Crane [150 h]; Labor [300 h]; Skilled Labor [150 h]; Eq. Operator [300 h]; MH depth 0 - 1.5m [7] |
| MKH2-02-004-CNS-2660 | Installation of Manholes [Local 28 ]-Stage 2-[MH 08 to MH 14] | 2027-01-26 → 2026-09-24 A (-124d) | 2027-01-31 → 2026-09-28 A (-125d) | 0% → 100% | 23d → none | resources MH depth 0 - 1.5m [7]; Excavator [150 h]; Labor [300 h]; Skilled Labor [150 h]; Eq. Operator [150 h] → Excavator [150 h]; Labor [300 h]; Skilled Labor [150 h]; Eq. Operator [150 h]; MH depth 0 - 1.5m [7] |
| MKH2-02-004-CNS-2670 | Installation of Manholes [Local 28 ]-Stage 3-[MH 15 to MH 20] | 2027-02-01 → 2026-09-30 A (-124d) | 2027-02-06 → 2026-12-21 (-47d) | 0% → 80% | 23d → 63d | resources MH depth 0 - 1.5m [6]; Crane [150 h]; Labor [300 h]; Skilled Labor [150 h]; Eq. Operator [150 h] → Crane [150 h]; Labor [300 h]; Skilled Labor [150 h]; Eq. Operator [150 h]; MH depth 0 - 1.5m [6] |
| 3 | **Catch Basins** | 2027-01-20 → 2026-12-16 (-35d) | 2027-02-17 → 2027-01-13 (-35d) |  |  |  |
| MKH2-02-004-CNS-2900 | Construction of Catch basins [Local 28 ]-Stage 1-[01 to 10] | 2027-01-20 → 2026-12-16 (-35d) | 2027-01-25 → 2026-12-21 (-35d) |  | 15d → 45d | resources Double Catch basin [10]; Excavator [100 h]; Labor [200 h]; Eq. Operator [100 h]; Mason [100 h] → Excavator [100 h]; Labor [200 h]; Eq. Operator [100 h]; Mason [100 h]; Double Catch basin [10] |
| MKH2-02-004-CNS-2910 | Construction of Catch basins [Local 28 ]-Stage 2-[11 to 20] | 2027-01-26 → 2026-12-22 (-35d) | 2027-01-31 → 2026-12-27 (-35d) |  | 20d → 50d | resources Double Catch basin [10]; Labor [200 h]; Mason [100 h] → Labor [200 h]; Mason [100 h]; Double Catch basin [10] |
| MKH2-02-004-CNS-2920 | Construction of Catch basins [Local 28 ]-Stage 3-[21 to 30] | 2027-02-01 → 2026-12-28 (-35d) | 2027-02-06 → 2027-01-02 (-35d) |  | 20d → 50d | resources Double Catch basin [10]; Excavator [100 h]; Labor [200 h]; Eq. Operator [100 h]; Mason [100 h] → Excavator [100 h]; Labor [200 h]; Eq. Operator [100 h]; Mason [100 h]; Double Catch basin [10] |
| MKH2-02-004-CNS-2930 | Construction of Catch basins [Local 28 ]-Stage 4-[31 to 40] | 2027-02-07 → 2027-01-03 (-35d) | 2027-02-11 → 2027-01-07 (-35d) |  | 20d → 50d | resources Double Catch basin [10]; Excavator [100 h]; Labor [200 h]; Eq. Operator [100 h]; Mason [100 h] → Excavator [100 h]; Labor [200 h]; Eq. Operator [100 h]; Mason [100 h]; Double Catch basin [10] |
| MKH2-02-004-CNS-2940 | Construction of Catch basins [Local 28 ]-Stage 5-[41 to 50] | 2027-02-13 → 2027-01-09 (-35d) | 2027-02-17 → 2027-01-13 (-35d) |  | 20d → 50d | resources Double Catch basin [10]; Labor [200 h]; Mason [100 h] → Labor [200 h]; Mason [100 h]; Double Catch basin [10] |
| 4 | **Concrete chambers Pipes** | 2027-01-26 → 2027-02-23 (+28d) | 2027-02-24 → 2027-03-27 (+31d) |  |  |  |
| MKH2-02-004-CNS-3160 | Excavation and Compaction (FDT) [Local 28 ] | 2027-01-26 → 2027-02-23 (+28d) | 2027-02-03 → 2027-03-03 (+28d) |  | 15d → -8d | resources 300mm Diameter [993]; Water Tanker [240 h]; Truck [240 h]; Compactor [240 h]; Labor [480 h]; Driver [480 h]; Eq. Operator [240 h] → Water Tanker [240 h]; Truck [240 h]; Compactor [240 h]; Labor [480 h]; Driver [480 h]; Eq. Operator [240 h]; 300mm Diameter [993] |
| MKH2-02-004-CNS-3250 | Installation of Pipes [Local 28 ] | 2027-02-04 → 2027-03-04 (+28d) | 2027-02-15 → 2027-03-18 (+31d) |  | 15d → -8d | resources 400mm Diameter [993]; Loader [100 h]; Truck [100 h]; Labor [200 h]; Driver [100 h]; Eq. Operator [100 h]; Plumber [100 h] → Loader [100 h]; Truck [100 h]; Labor [200 h]; Driver [100 h]; Eq. Operator [100 h]; Plumber [100 h]; 400mm Diameter [993] |
| MKH2-02-004-CNS-3340 | Backfilling & Compaction [Local 28 ] | 2027-02-16 → 2027-03-20 (+32d) | 2027-02-24 → 2027-03-27 (+31d) |  | 15d → -8d | resources 300mm Diameter [993]; Labor [280 h] → Labor [280 h]; 300mm Diameter [993] |
| 2 | **Local 10** | 2026-12-07 → 2026-07-07 (-153d) | 2027-05-08 → 2027-06-17 (+40d) |  |  |  |
| 1 | **Road Works** | 2026-12-07 → 2026-07-07 (-153d) | 2027-05-08 → 2027-06-17 (+40d) |  |  |  |
| 1 | **Eartworks & Site grading** | 2026-12-07 → 2026-07-07 (-153d) | 2027-03-27 → 2027-05-02 (+36d) |  |  |  |
| MKH2-02-004-CNS-1010 | Road excavation [Local 10 ] | 2026-12-07 → 2026-07-07 A (-153d) | 2026-12-13 → 2026-11-29 (-14d) | 0% → 90% | 18d → 33d | resources Roadway Excavation for cuttings (all types of soil) [10638]; Excavator [240 h]; Bulldozer [240 h]; Water Tanker [240 h]; Truck [480 h]; Labor [720 h]; Driver [720 h]; Eq. Operator [480 h] → Excavator [240 h]; Bulldozer [240 h]; Water Tanker [240 h]; Truck [480 h]; Labor [720 h]; Driver [720 h]; Eq. Operator [480 h]; Roadway Excavation for cuttings (all types of soil) [10638] |
| MKH2-02-004-CNS-1130 | Road backfilling [Local 10 ] | 2026-12-07 → 2026-07-15 A (-145d) | 2026-12-13 → 2026-11-29 (-14d) | 0% → 90% | 18d → 33d | resources Embankments to the ROW with common / suitable excavated material or with suitable imported material [5353]; Bulldozer [120 h]; Truck [240 h]; Road Roller [120 h]; Compactor [120 h]; Labor [360 h]; Driver [240 h]; Eq. Operator [360 h] → Bulldozer [120 h]; Truck [240 h]; Road Roller [120 h]; Compactor [120 h]; Labor [360 h]; Driver [240 h]; Eq. Operator [360 h]; Embankments to the ROW with common / suitable excavated material or with suitable imported material [5353] |
| MKH2-02-004-CNS-1250 | Subgrade [Local 10 ] | 2027-03-09 → 2027-04-18 (+40d) | 2027-03-20 → 2027-04-25 (+36d) |  | 15d → -16d | resources Subgrade [1634]; Grader [70 h]; Truck [140 h]; Road Roller [70 h]; Labor [140 h]; Driver [140 h]; Eq. Operator [140 h] → Grader [70 h]; Truck [140 h]; Road Roller [70 h]; Labor [140 h]; Driver [140 h]; Eq. Operator [140 h]; Subgrade [1634] |
| MKH2-02-004-CNS-1330 | Aggregate base course [Local 10 ] | 2027-03-21 → 2027-04-26 (+36d) | 2027-03-27 → 2027-05-02 (+36d) |  | 15d → -16d | resources Aggregate base course [1090]; Loader [60 h]; Grader [60 h]; Truck [120 h]; Road Roller [60 h]; Labor [180 h]; Driver [120 h]; Eq. Operator [180 h] → Loader [60 h]; Grader [60 h]; Truck [120 h]; Road Roller [60 h]; Labor [180 h]; Driver [120 h]; Eq. Operator [180 h]; Aggregate base course [1090] |
| 2 | **Asphalt Works** | 2027-03-28 → 2027-05-03 (+36d) | 2027-04-05 → 2027-05-11 (+36d) |  |  |  |
| MKH2-02-004-CNS-1410 | Prime Coat (MC1) [Local 10 ] | 2027-03-28 → 2027-05-03 (+36d) | 2027-03-31 → 2027-05-06 (+36d) |  | 23d → -8d | resources Bituminous base course (Grading I - Class A), including Prime Coat (MC1) [38]; Truck [40 h]; Road Roller [40 h]; Asphalte Paver [40 h]; Labor [80 h]; Driver [40 h]; Eq. Operator [80 h] → Truck [40 h]; Road Roller [40 h]; Asphalte Paver [40 h]; Labor [80 h]; Driver [40 h]; Eq. Operator [80 h]; Bituminous base course (Grading I - Class A), including Prime Coat (MC1) [38] |
| MKH2-02-004-CNS-1490 | Bituminous base course [Local 10 ] | 2027-04-01 → 2027-05-08 (+37d) | 2027-04-05 → 2027-05-11 (+36d) |  | 25d → -6d | resources Bituminous base course (Grading I - Class A), including Prime Coat (MC1) [343]; Truck [80 h]; Road Roller [40 h]; Labor [160 h]; Driver [80 h]; Eq. Operator [40 h] → Truck [80 h]; Road Roller [40 h]; Labor [160 h]; Driver [80 h]; Eq. Operator [40 h]; Bituminous base course (Grading I - Class A), including Prime Coat (MC1) [343] |
| 3 | **Finishing Works** | 2027-04-14 → 2027-05-25 (+41d) | 2027-05-08 → 2027-06-17 (+40d) |  |  |  |
| 1 | **Precast Concrete Curb** | 2027-04-14 → 2027-05-25 (+41d) | 2027-04-20 → 2027-05-31 (+41d) |  |  |  |
| MKH2-02-004-CNS-1570 | Installation of Precast Concrete curb [Local 10 ] | 2027-04-14 → 2027-05-25 (+41d) | 2027-04-20 → 2027-05-31 (+41d) |  | 18d → -13d | resources Precast Concrete Kerb, Type K4 [1060]; Labor [180 h]; Skilled Labor [120 h] → Labor [180 h]; Skilled Labor [120 h]; Precast Concrete Kerb, Type K4 [1060] |
| 2 | **Precast Interlocking block pavers** | 2027-04-21 → 2027-06-01 (+41d) | 2027-04-26 → 2027-06-06 (+41d) |  |  |  |
| MKH2-02-004-CNS-1650 | Installation of Interlocking block pavers for sidewalk/footpath [Local 10 ] | 2027-04-21 → 2027-06-01 (+41d) | 2027-04-26 → 2027-06-06 (+41d) |  | 19d → -12d | resources 60mm thick - Interlocking block pavers for sidewalk/footpath [1216]; Labor [150 h]; Mason [300 h] → Labor [150 h]; Mason [300 h]; 60mm thick - Interlocking block pavers for sidewalk/footpath [1216] |
| 3 | **Pavement Markings** | 2027-04-27 → 2027-06-07 (+41d) | 2027-05-04 → 2027-06-14 (+41d) |  |  |  |
| MKH2-02-004-CNS-1730 | Pavement markings [Local 10 ] | 2027-04-27 → 2027-06-07 (+41d) | 2027-05-01 → 2027-06-10 (+40d) |  | 19d → -12d | resources Retroreflective Thermoplastic Yellow, Traffic lines [236]; Labor [40 h]; Skilled Labor [40 h] → Labor [40 h]; Skilled Labor [40 h]; Retroreflective Thermoplastic Yellow, Traffic lines [236] |
| MKH2-02-004-CNS-1810 | (Speed Hump) with retroreflectiveThermoplastic yellow [Local 10 ] | 2027-05-02 → 2027-06-12 (+41d) | 2027-05-04 → 2027-06-14 (+41d) |  | 19d → -12d | resources (Speed Hump) with retroreflectiveThermoplastic yellow [1]; Labor [90 h]; Skilled Labor [60 h] → Labor [90 h]; Skilled Labor [60 h]; (Speed Hump) with retroreflectiveThermoplastic yellow [1] |
| 4 | **Traffic Signage** | 2027-05-05 → 2027-06-15 (+41d) | 2027-05-08 → 2027-06-17 (+40d) |  |  |  |
| MKH2-02-004-CNS-1890 | Installation of Traffic Signs [Local 10 ] | 2027-05-05 → 2027-06-15 (+41d) | 2027-05-08 → 2027-06-17 (+40d) |  | 19d → -12d | resources Traffic signs, ground mounted, Sheet Alumenium, (breakaway)Single post, with all accessories [7]; Labor [90 h]; Skilled Labor [60 h] → Labor [90 h]; Skilled Labor [60 h]; Traffic signs, ground mounted, Sheet Alumenium, (breakaway)Single post, with all accessories [7] |
| 2 | **Storm Water Drainage** | 2026-12-14 → 2026-09-10 (-95d) | 2027-01-18 → 2027-02-03 (+16d) |  |  |  |

| ID | Task | Start | Finish | Complete | Total float | Other |
| --- | --- | --- | --- | --- | --- | --- |
| 1 | **Pipe Works** | 2026-12-14 → 2026-09-10 (-95d) | 2027-01-02 → 2026-12-19 (-14d) |  |  |  |
| MKH2-02-004-CNS-1970 | Excavation & Compaction (FDT) [Local 10 ] | 2026-12-14 → 2026-09-10 A (-95d) | 2026-12-17 → 2026-12-03 (-14d) | 0% → 30% | 21d → 33d | resources Depth: 0.0m - 1.5m [139]; Excavator [80 h]; Truck [160 h]; Labor [240 h]; Driver [160 h]; Eq. Operator [80 h] → Excavator [80 h]; Truck [160 h]; Labor [240 h]; Driver [160 h]; Eq. Operator [80 h]; Depth: 0.0m - 1.5m [139] |
| MKH2-02-004-CNS-2090 | Sand Bedding [Local 10 ] | 2026-12-19 → 2026-09-12 A (-98d) | 2026-12-21 → 2026-12-07 (-14d) | 0% → 20% | 21d → 33d | resources Depth: 1.51m - 2.5m [139]; Loader [30 h]; Truck [30 h]; Labor [60 h]; Driver [30 h]; Eq. Operator [30 h] → Loader [30 h]; Truck [30 h]; Labor [60 h]; Driver [30 h]; Eq. Operator [30 h]; Depth: 1.51m - 2.5m [139] |
| MKH2-02-004-CNS-2210 | Installation of GRP Pipe [Local 10 ] | 2026-12-22 → 2026-09-12 A (-101d) | 2026-12-27 → 2026-12-13 (-14d) | 0% → 20% | 21d → 33d | resources Depth: 1.51m - 2.5m [139]; Crane [50 h]; Labor [100 h]; Eq. Operator [50 h]; Plumber [50 h] → Crane [50 h]; Labor [100 h]; Eq. Operator [50 h]; Plumber [50 h]; Depth: 1.51m - 2.5m [139] |
| MKH2-02-004-CNS-2330 | Sand Cover & Warning Tape [Local 10 ] | 2026-12-28 → 2026-12-14 (-14d) | 2026-12-29 → 2026-12-15 (-14d) |  | 27d → 39d | resources Depth: 0.0m - 1.5m [139]; Loader [20 h]; Labor [40 h]; Skilled Labor [20 h]; Eq. Operator [20 h] → Loader [20 h]; Labor [40 h]; Skilled Labor [20 h]; Eq. Operator [20 h]; Depth: 0.0m - 1.5m [139] |
| MKH2-02-004-CNS-2450 | Backfilling & Compaction [Local 10 ] | 2026-12-30 → 2026-12-16 (-14d) | 2027-01-02 → 2026-12-19 (-14d) |  | 27d → 39d | resources Depth: 2.51m - 3.5m [139]; Bulldozer [30 h]; Truck [30 h]; Labor [60 h]; Driver [30 h]; Eq. Operator [30 h] → Bulldozer [30 h]; Truck [30 h]; Labor [60 h]; Driver [30 h]; Eq. Operator [30 h]; Depth: 2.51m - 3.5m [139] |
| 2 | **Manholes** | 2026-12-28 → 2026-12-14 (-14d) | 2027-01-07 → 2026-12-24 (-14d) |  |  |  |
| MKH2-02-004-CNS-2580 | Installation of Manholes [Local 10 ]-Stage 1-[MH 01 to MH 07] | 2026-12-28 → 2026-12-14 (-14d) | 2027-01-02 → 2026-12-19 (-14d) |  | 21d → 33d | resources MH depth 1.51 - 2.5m [7]; Labor [300 h]; Skilled Labor [150 h] → Labor [300 h]; Skilled Labor [150 h]; MH depth 1.51 - 2.5m [7] |
| MKH2-02-004-CNS-2590 | Installation of Manholes [Local 10 ]-Stage 2-[MH 08 to MH 11] | 2027-01-03 → 2026-12-20 (-14d) | 2027-01-07 → 2026-12-24 (-14d) |  | 27d → 39d | resources MH depth 1.51 - 2.5m [4]; Excavator [100 h]; Crane [100 h]; Labor [200 h]; Skilled Labor [100 h]; Eq. Operator [200 h] → Excavator [100 h]; Crane [100 h]; Labor [200 h]; Skilled Labor [100 h]; Eq. Operator [200 h]; MH depth 1.51 - 2.5m [4] |
| 3 | **Catch Basins** | 2027-01-03 → 2027-01-19 (+16d) | 2027-01-06 → 2027-01-23 (+17d) |  |  |  |
| MKH2-02-004-CNS-2790 | Construction of Catch basins [Local 10 ] | 2027-01-03 → 2027-01-19 (+16d) | 2027-01-06 → 2027-01-23 (+17d) |  | 21d → 7d | resources Double Catch basin [10]; Labor [80 h]; Mason [40 h] → Labor [80 h]; Mason [40 h]; Double Catch basin [10] |
| 4 | **Concrete chambers Pipes** | 2027-01-07 → 2027-01-24 (+17d) | 2027-01-18 → 2027-02-03 (+16d) |  |  |  |
| MKH2-02-004-CNS-3130 | Excavation and Compaction (FDT) [Local 10 ] | 2027-01-07 → 2027-01-24 (+17d) | 2027-01-10 → 2027-01-26 (+16d) |  | 21d → 7d | resources 300mm Diameter [174]; Excavator [30 h]; Truck [30 h]; Labor [60 h]; Driver [30 h]; Eq. Operator [30 h] → Excavator [30 h]; Truck [30 h]; Labor [60 h]; Driver [30 h]; Eq. Operator [30 h]; 300mm Diameter [174] |
| MKH2-02-004-CNS-3220 | Installation of Pipes [Local 10 ] | 2027-01-11 → 2027-01-27 (+16d) | 2027-01-14 → 2027-01-31 (+17d) |  | 21d → 7d | resources 400mm Diameter [174]; Loader [40 h]; Truck [40 h]; Labor [80 h]; Driver [40 h]; Eq. Operator [40 h]; Plumber [40 h] → Loader [40 h]; Truck [40 h]; Labor [80 h]; Driver [40 h]; Eq. Operator [40 h]; Plumber [40 h]; 400mm Diameter [174] |
| MKH2-02-004-CNS-3310 | Backfilling & Compaction [Local 10 ] | 2027-01-16 → 2027-02-01 (+16d) | 2027-01-18 → 2027-02-03 (+16d) |  | 21d → 7d | resources 300mm Diameter [174]; Labor [60 h] → Labor [60 h]; 300mm Diameter [174] |
| 1 | **Collector 02** | 2026-12-14 → 2026-07-21 (-146d) | 2027-05-12 → 2027-06-22 (+41d) |  |  |  |
| 1 | **Road Works** | 2026-12-14 → 2026-07-21 (-146d) | 2027-05-12 → 2027-06-22 (+41d) |  |  |  |
| 1 | **Eartworks & Site grading** | 2026-12-14 → 2026-07-21 (-146d) | 2027-04-10 → 2027-05-20 (+40d) |  |  |  |
| MKH2-02-004-CNS-1000 | Road excavation [Collector 02 ] | 2026-12-14 → 2026-07-21 A (-146d) | 2026-12-20 → 2026-12-02 (-18d) | 0% → 90% | 18d → 33d | resources Roadway Excavation for cuttings (all types of soil) [6145]; Excavator [120 h]; Bulldozer [120 h]; Water Tanker [120 h]; Grader [120 h]; Truck [240 h]; Bobcat [120 h]; Labor [360 h]; Driver [360 h]; Eq. Operator [480 h] → Excavator [120 h]; Bulldozer [120 h]; Water Tanker [120 h]; Grader [120 h]; Truck [240 h]; Labor [360 h]; Driver [360 h]; Eq. Operator [480 h]; Bobcat [120 h]; Roadway Excavation for cuttings (all types of soil) [6145] |
| MKH2-02-004-CNS-1120 | Road backfilling [Collector 02 ] | 2026-12-14 → 2026-07-22 A (-145d) | 2026-12-20 → 2026-12-02 (-18d) | 0% → 90% | 18d → 33d | resources Embankments to the ROW with common / suitable excavated material or with suitable imported material [3092]; Bulldozer [60 h]; Water Tanker [60 h]; Grader [60 h]; Truck [120 h]; Road Roller [60 h]; Bobcat [60 h]; Labor [180 h]; Driver [180 h]; Eq. Operator [240 h] → Bulldozer [60 h]; Water Tanker [60 h]; Grader [60 h]; Truck [120 h]; Road Roller [60 h]; Labor [180 h]; Driver [180 h]; Eq. Operator [240 h]; Bobcat [60 h]; Embankments to the ROW with common / suitable excavated material or with suitable imported material [3092] |
| MKH2-02-004-CNS-1240 | Subgrade [Collector 02 ] | 2027-03-28 → 2027-05-03 (+36d) | 2027-04-03 → 2027-05-09 (+36d) |  | 15d → -16d | resources Subgrade [944]; Water Tanker [60 h]; Truck [120 h]; Road Roller [60 h]; Compactor [60 h]; Labor [120 h]; Driver [180 h]; Eq. Operator [120 h] → Water Tanker [60 h]; Truck [120 h]; Road Roller [60 h]; Compactor [60 h]; Labor [120 h]; Driver [180 h]; Eq. Operator [120 h]; Subgrade [944] |
| MKH2-02-004-CNS-1320 | Aggregate base course [Collector 02 ] | 2027-04-04 → 2027-05-10 (+36d) | 2027-04-10 → 2027-05-20 (+40d) |  | 15d → -16d | resources Aggregate base course [629]; Loader [60 h]; Water Tanker [60 h]; Truck [120 h]; Road Roller [60 h]; Labor [180 h]; Driver [180 h]; Eq. Operator [120 h] → Loader [60 h]; Water Tanker [60 h]; Truck [120 h]; Road Roller [60 h]; Labor [180 h]; Driver [180 h]; Eq. Operator [120 h]; Aggregate base course [629] |
| 2 | **Asphalt Works** | 2027-04-11 → 2027-05-22 (+41d) | 2027-04-24 → 2027-06-03 (+40d) |  |  |  |
| MKH2-02-004-CNS-1400 | Prime Coat (MC1) [Collector 02 ] | 2027-04-11 → 2027-05-22 (+41d) | 2027-04-17 → 2027-05-27 (+40d) |  | 15d → -16d | resources Bituminous base course (Grading I - Class A), including Prime Coat (MC1) [22]; Water Tanker [60 h]; Grader [60 h]; Truck [60 h]; Road Roller [60 h]; Asphalte Paver [60 h]; Labor [120 h]; Driver [120 h]; Eq. Operator [180 h] → Water Tanker [60 h]; Grader [60 h]; Truck [60 h]; Road Roller [60 h]; Asphalte Paver [60 h]; Labor [120 h]; Driver [120 h]; Eq. Operator [180 h]; Bituminous base course (Grading I - Class A), including Prime Coat (MC1) [22] |
| MKH2-02-004-CNS-1480 | Bituminous base course [Collector 02 ] | 2027-04-18 → 2027-05-29 (+41d) | 2027-04-24 → 2027-06-03 (+40d) |  | 15d → -16d | resources Bituminous base course (Grading I - Class A), including Prime Coat (MC1) [199]; Truck [120 h]; Road Roller [60 h]; Asphalte Paver [60 h]; Labor [240 h]; Driver [120 h]; Eq. Operator [120 h] → Truck [120 h]; Road Roller [60 h]; Asphalte Paver [60 h]; Labor [240 h]; Driver [120 h]; Eq. Operator [120 h]; Bituminous base course (Grading I - Class A), including Prime Coat (MC1) [199] |
| 3 | **Finishing Works** | 2027-04-25 → 2027-06-05 (+41d) | 2027-05-12 → 2027-06-22 (+41d) |  |  |  |
| 1 | **Precast Concrete Curb** | 2027-04-25 → 2027-06-05 (+41d) | 2027-04-28 → 2027-06-08 (+41d) |  |  |  |
| MKH2-02-004-CNS-1560 | Installation of Precast Concrete curb [Collector 02 ] | 2027-04-25 → 2027-06-05 (+41d) | 2027-04-28 → 2027-06-08 (+41d) |  | 15d → -16d | resources Precast Concrete Kerb, Type K1-A [612]; Labor [120 h]; Skilled Labor [80 h] → Labor [120 h]; Skilled Labor [80 h]; Precast Concrete Kerb, Type K1-A [612] |
| 2 | **Precast Interlocking block pavers** | 2027-04-29 → 2027-06-09 (+41d) | 2027-05-02 → 2027-06-12 (+41d) |  |  |  |
| MKH2-02-004-CNS-1640 | Installation of Interlocking block pavers for sidewalk/footpath [Collector 02 ] | 2027-04-29 → 2027-06-09 (+41d) | 2027-05-02 → 2027-06-12 (+41d) |  | 15d → -16d | resources 60mm thick - Interlocking block pavers for sidewalk/footpath [702]; Road Roller [30 h]; Compactor [30 h]; Labor [90 h]; Eq. Operator [60 h]; Mason [180 h] → Road Roller [30 h]; Compactor [30 h]; Labor [90 h]; Eq. Operator [60 h]; Mason [180 h]; 60mm thick - Interlocking block pavers for sidewalk/footpath [702] |
| 3 | **Pavement Markings** | 2027-05-03 → 2027-06-13 (+41d) | 2027-05-09 → 2027-06-19 (+41d) |  |  |  |
| MKH2-02-004-CNS-1720 | Pavement markings [Collector 02 ] | 2027-05-03 → 2027-06-13 (+41d) | 2027-05-05 → 2027-06-15 (+41d) |  | 15d → -16d | resources Retroreflective Thermoplastic White Traffic lines [136]; Labor [30 h]; Skilled Labor [30 h] → Labor [30 h]; Skilled Labor [30 h]; Retroreflective Thermoplastic White Traffic lines [136] |
| MKH2-02-004-CNS-1800 | (Speed Hump) with retroreflectiveThermoplastic yellow [Collector 02 ] | 2027-05-06 → 2027-06-16 (+41d) | 2027-05-09 → 2027-06-19 (+41d) |  | 15d → -16d | resources (Speed Hump) with retroreflectiveThermoplastic yellow [1]; Labor [90 h]; Skilled Labor [60 h] → Labor [90 h]; Skilled Labor [60 h]; (Speed Hump) with retroreflectiveThermoplastic yellow [1] |
| 4 | **Traffic Signage** | 2027-05-10 → 2027-06-20 (+41d) | 2027-05-12 → 2027-06-22 (+41d) |  |  |  |
| MKH2-02-004-CNS-1880 | Installation of Traffic Signs [Collector 02 ] | 2027-05-10 → 2027-06-20 (+41d) | 2027-05-12 → 2027-06-22 (+41d) |  | 15d → -16d | resources Traffic signs, ground mounted, Sheet Alumenium, (breakaway)Single post, with all accessories [4]; Labor [90 h]; Skilled Labor [60 h] → Labor [90 h]; Skilled Labor [60 h]; Traffic signs, ground mounted, Sheet Alumenium, (breakaway)Single post, with all accessories [4] |
| 2 | **Storm Water Drainage** | 2026-12-21 → 2026-12-03 (-18d) | 2027-01-21 → 2027-02-21 (+31d) |  |  |  |
| 1 | **Pipe Works** | 2026-12-21 → 2026-12-03 (-18d) | 2027-01-13 → 2026-12-27 (-17d) |  |  |  |
| MKH2-02-004-CNS-1960 | Excavation & Compaction (FDT) [Collector 02 ] | 2026-12-21 → 2026-12-03 (-18d) | 2026-12-24 → 2026-12-07 (-17d) |  | 18d → 33d | resources Depth: 0.0m - 1.5m [254]; Excavator [160 h]; Water Tanker [160 h]; Truck [320 h]; Bobcat [160 h]; Compactor [160 h]; Labor [480 h]; Driver [480 h]; Eq. Operator [480 h] → Excavator [160 h]; Water Tanker [160 h]; Truck [320 h]; Compactor [160 h]; Labor [480 h]; Driver [480 h]; Eq. Operator [480 h]; Bobcat [160 h]; Depth: 0.0m - 1.5m [254] |
| MKH2-02-004-CNS-2080 | Sand Bedding [Collector 02 ] | 2026-12-26 → 2026-12-08 (-18d) | 2026-12-28 → 2026-12-10 (-18d) |  | 18d → 33d | resources Depth: 1.51m - 2.5m [254]; Loader [60 h]; Truck [60 h]; Labor [120 h]; Driver [60 h]; Eq. Operator [60 h] → Loader [60 h]; Truck [60 h]; Labor [120 h]; Driver [60 h]; Eq. Operator [60 h]; Depth: 1.51m - 2.5m [254] |
| MKH2-02-004-CNS-2200 | Installation of GRP Pipe [Collector 02 ] | 2026-12-29 → 2026-12-12 (-17d) | 2027-01-03 → 2026-12-16 (-18d) |  | 18d → 33d | resources Depth: 0.0m - 1.5m [254]; Labor [100 h]; Plumber [50 h] → Labor [100 h]; Plumber [50 h]; Depth: 0.0m - 1.5m [254] |
| MKH2-02-004-CNS-2320 | Sand Cover & Warning Tape [Collector 02 ] | 2027-01-04 → 2026-12-17 (-18d) | 2027-01-06 → 2026-12-20 (-17d) |  | 18d → 33d | resources Depth: more than 2.5m [254]; Loader [30 h]; Labor [60 h]; Skilled Labor [30 h]; Eq. Operator [30 h] → Loader [30 h]; Labor [60 h]; Skilled Labor [30 h]; Eq. Operator [30 h]; Depth: more than 2.5m [254] |
| MKH2-02-004-CNS-2440 | Backfilling & Compaction [Collector 02 ] | 2027-01-07 → 2026-12-21 (-17d) | 2027-01-13 → 2026-12-27 (-17d) |  | 18d → 33d | resources Depth: less than 2.5 m [254]; Bulldozer [60 h]; Water Tanker [60 h]; Truck [60 h]; Compactor [60 h]; Labor [120 h]; Driver [120 h]; Eq. Operator [120 h] → Bulldozer [60 h]; Water Tanker [60 h]; Truck [60 h]; Compactor [60 h]; Labor [120 h]; Driver [120 h]; Eq. Operator [120 h]; Depth: less than 2.5 m [254] |
| 2 | **Manholes** | 2027-01-04 → 2026-12-17 (-18d) | 2027-01-17 → 2026-12-30 (-18d) |  |  |  |
| MKH2-02-004-CNS-2560 | Installation of Manholes [Collector 02 ]-Stage 1-[MH 01 to MH 07] | 2027-01-04 → 2026-12-17 (-18d) | 2027-01-10 → 2026-12-23 (-18d) |  | 18d → 33d | resources MH depth 0 - 1.5m [7]; Excavator [180 h]; Crane [180 h]; Labor [360 h]; Skilled Labor [180 h]; Eq. Operator [360 h] → Excavator [180 h]; Crane [180 h]; Labor [360 h]; Skilled Labor [180 h]; Eq. Operator [360 h]; MH depth 0 - 1.5m [7] |
| MKH2-02-004-CNS-2570 | Installation of Manholes [Collector 02 ]-Stage 2-[MH 08 to MH 11] | 2027-01-11 → 2026-12-24 (-18d) | 2027-01-17 → 2026-12-30 (-18d) |  | 20d → 35d | resources MH depth 0 - 1.5m [4]; Excavator [60 h]; Crane [60 h]; Labor [120 h]; Skilled Labor [60 h]; Eq. Operator [120 h] → Excavator [60 h]; Crane [60 h]; Labor [120 h]; Skilled Labor [60 h]; Eq. Operator [120 h]; MH depth 0 - 1.5m [4] |
| 3 | **Catch Basins** | 2027-01-11 → 2027-02-10 (+30d) | 2027-01-13 → 2027-02-13 (+31d) |  |  |  |
| MKH2-02-004-CNS-2780 | Construction of Catch basins [Collector 02 ] | 2027-01-11 → 2027-02-10 (+30d) | 2027-01-13 → 2027-02-13 (+31d) |  | 18d → -8d | resources Single Catch basin [2]; Excavator [30 h]; Labor [60 h]; Eq. Operator [30 h]; Mason [30 h] → Excavator [30 h]; Labor [60 h]; Eq. Operator [30 h]; Mason [30 h]; Single Catch basin [2] |
| 4 | **Concrete chambers Pipes** | 2027-01-14 → 2027-02-14 (+31d) | 2027-01-21 → 2027-02-21 (+31d) |  |  |  |
| MKH2-02-004-CNS-3120 | Excavation and Compaction (FDT) [Collector 02 ] | 2027-01-14 → 2027-02-14 (+31d) | 2027-01-16 → 2027-02-15 (+30d) |  | 18d → -8d | resources 300mm Diameter [5]; Water Tanker [20 h]; Truck [20 h]; Compactor [20 h]; Labor [40 h]; Driver [40 h]; Eq. Operator [20 h] → Water Tanker [20 h]; Truck [20 h]; Compactor [20 h]; Labor [40 h]; Driver [40 h]; Eq. Operator [20 h]; 300mm Diameter [5] |
| MKH2-02-004-CNS-3210 | Installation of Pipes [Collector 02 ] | 2027-01-17 → 2027-02-16 (+30d) | 2027-01-19 → 2027-02-18 (+30d) |  | 18d → -8d | resources 400mm Diameter [5]; Loader [30 h]; Truck [30 h]; Crane [30 h]; Labor [60 h]; Driver [30 h]; Eq. Operator [60 h]; Plumber [30 h] → Loader [30 h]; Truck [30 h]; Crane [30 h]; Labor [60 h]; Driver [30 h]; Eq. Operator [60 h]; Plumber [30 h]; 400mm Diameter [5] |
| MKH2-02-004-CNS-3300 | Backfilling & Compaction [Collector 02 ] | 2027-01-20 → 2027-02-20 (+31d) | 2027-01-21 → 2027-02-21 (+31d) |  | 18d → -8d | resources 300mm Diameter [5]; Labor [40 h]; Plumber [20 h] → Labor [40 h]; Plumber [20 h]; 300mm Diameter [5] |
| 6 | **Testing and Commissioning** | 2027-02-25 → 2027-03-28 (+31d) | 2027-06-27 → 2027-08-04 (+38d) |  |  |  |
| MKH2-02-004-T&C-1000 | Test for Stormwater Utilities | 2027-02-25 → 2027-03-28 (+31d) | 2027-03-23 → 2027-04-19 (+27d) |  | 15d → -8d |  |
| MKH2-02-004-T&C-1010 | Test for Road Works | 2027-06-05 → 2027-07-13 (+38d) | 2027-06-27 → 2027-08-04 (+38d) |  | 0d → -33d |  |
| 7 | **Project Hand Over & Close-out** | 2027-03-24 → 2027-04-20 (+27d) | 2027-08-24 → 2027-10-03 (+40d) |  |  |  |
| 1 | **As-Built DWGs** | 2027-03-24 → 2027-04-20 (+27d) | 2027-08-01 → 2027-09-08 (+38d) |  |  |  |
| 1 | **As-Built DWGs Submittal** | 2027-03-24 → 2027-04-20 (+27d) | 2027-07-14 → 2027-08-22 (+39d) |  |  |  |
| MKH2-02-004-ABD-1000 | As-Built DWGs Submittal for Stormwater Utilities | 2027-03-24 → 2027-04-20 (+27d) | 2027-04-10 → 2027-05-06 (+26d) |  | 15d → -8d |  |
| MKH2-02-004-ABD-1010 | As-Built DWGs Submittal for Road Works | 2027-06-28 → 2027-08-05 (+38d) | 2027-07-14 → 2027-08-22 (+39d) |  | 0d → -33d |  |
| 2 | **As-Built DWGs Approval** | 2027-04-11 → 2027-05-08 (+27d) | 2027-08-01 → 2027-09-08 (+38d) |  |  |  |
| MKH2-02-004-ABD-1020 | As- Built DWGs Approval for Stormwater Utilities | 2027-04-11 → 2027-05-08 (+27d) | 2027-04-21 → 2027-05-23 (+32d) |  | 15d → -8d |  |
| MKH2-02-004-ABD-1030 | As- Built DWGs Approval for Road Works | 2027-07-15 → 2027-08-23 (+39d) | 2027-08-01 → 2027-09-08 (+38d) |  | 0d → -33d |  |
| 2 | **Demobilization** | 2027-08-02 → 2027-09-09 (+38d) | 2027-08-24 → 2027-10-03 (+40d) |  |  |  |
| MKH2-02-004-DEM-1000 | Demobilization of Manpower | 2027-08-02 → 2027-09-09 (+38d) | 2027-08-12 → 2027-09-20 (+39d) |  | 0d → -33d |  |
| MKH2-02-004-DEM-1010 | Removal of Equipment from Site | 2027-08-02 → 2027-09-09 (+38d) | 2027-08-12 → 2027-09-20 (+39d) |  | 0d → -33d |  |
| MKH2-02-004-DEM-1020 | Site Clean Up | 2027-08-02 → 2027-09-09 (+38d) | 2027-08-12 → 2027-09-20 (+39d) |  | 0d → -33d |  |
| MKH2-02-004-DEM-1030 | Removal of Site Offices and Structures | 2027-08-02 → 2027-09-09 (+38d) | 2027-08-12 → 2027-09-20 (+39d) |  | 0d → -33d |  |
| MKH2-02-004-DEM-1040 | Restoration of Ground Surfaces | 2027-08-14 → 2027-09-21 (+38d) | 2027-08-24 → 2027-10-03 (+40d) |  | 0d → -33d |  |

## Version 3 (data date 2026-10-13, saved 2026-10-12, file 2. MKH2-02-004-ENJ-WPR-016-13-10-2026 UP 13.xer)

Last finish 2027-10-03 → 2027-10-07 (+4d). Complete tasks 131 → 142.

Changed:

| ID | Task | Start | Finish | Complete | Total float |
| --- | --- | --- | --- | --- | --- |
| 1 | **Key Milestones** |  | 2027-10-03 → 2027-10-07 (+4d) |  |  |
| 1 | **General Milestone** |  | 2027-10-03 → 2027-10-07 (+4d) |  |  |
| MKH2-02-004-KM-1010 | Project Completion Date | 2027-10-03 → 2027-10-07 (+4d) | 2027-10-03 → 2027-10-07 (+4d) |  | -33d → -37d |
| 2 | **Contractual Milestone** |  | 2027-10-03 → 2027-10-07 (+4d) |  |  |
| 2 | **Construction** | 2027-03-27 → 2027-04-03 (+7d) | 2027-10-03 → 2027-10-07 (+4d) |  |  |
| MKH2-02-004-KM-1060 | Completion of Storm Water Drainage | 2027-03-27 → 2027-04-03 (+7d) | 2027-03-27 → 2027-04-03 (+7d) |  | -8d → -14d |
| MKH2-02-004-KM-1050 | Completion of Road Works | 2027-06-03 → 2027-06-08 (+5d) | 2027-06-03 → 2027-06-08 (+5d) |  | -16d → -20d |
| MKH2-02-004-KM-1070 | Completion of Entire Project | 2027-10-03 → 2027-10-07 (+4d) | 2027-10-03 → 2027-10-07 (+4d) |  | -33d → -37d |
| 4 | **Procurement** |  | 2027-01-06 → 2027-01-13 (+7d) |  |  |
| 1 | **Road Works - Civil** |  | 2027-01-06 → 2027-01-13 (+7d) |  |  |
| 4 | **Aggregate Base Course** | 2026-10-06 → 2026-10-13 (+7d) | 2026-12-20 → 2026-12-27 (+7d) |  |  |
| MKH2-02-004-PRC-1000 | PO for Aggregate Base Course | 2026-10-06 → 2026-10-13 (+7d) | 2026-10-11 → 2026-10-18 (+7d) |  | -18d → -24d |
| MKH2-02-004-PRC-1010 | Material Delivery for Aggregate Base Course-Stage 1 | 2026-10-12 → 2026-10-19 (+7d) | 2026-11-15 → 2026-11-22 (+7d) |  | -18d → -24d |
| MKH2-02-004-PRC-1020 | Material Delivery for Aggregate Base Course-Stage 2 | 2026-11-16 → 2026-11-23 (+7d) | 2026-12-20 → 2026-12-27 (+7d) |  | -18d → -24d |
| 5 | **Bituminous Base Course** | 2026-10-12 → 2026-10-19 (+7d) | 2027-01-06 → 2027-01-13 (+7d) |  |  |
| MKH2-02-004-PRC-1030 | PO for Bituminous Base Course | 2026-10-12 → 2026-10-19 (+7d) | 2026-10-17 → 2026-10-24 (+7d) |  | -16d → -22d |
| MKH2-02-004-PRC-1040 | Material Delivery for Bituminous Base Course-Stage 1 | 2026-10-18 → 2026-10-25 (+7d) | 2026-11-26 → 2026-12-03 (+7d) |  | -9d → -15d |
| MKH2-02-004-PRC-1050 | Material Delivery for Bituminous Base Course-Stage 2 | 2026-11-28 → 2026-12-05 (+7d) | 2027-01-06 → 2027-01-13 (+7d) |  | -9d → -15d |
| 7 | **Precast Concrete Curb** | 2026-10-18 → 2026-10-25 (+7d) | 2026-12-31 → 2027-01-07 (+7d) |  |  |
| MKH2-02-004-PRC-1060 | PO for Precast Concrete Curb | 2026-10-18 → 2026-10-25 (+7d) | 2026-10-22 → 2026-10-29 (+7d) |  | -16d → -22d |
| MKH2-02-004-PRC-1070 | Material Fabrication for Precast Concrete Curb | 2026-10-24 → 2026-10-31 (+7d) | 2026-11-26 → 2026-12-03 (+7d) |  | -13d → -19d |
| MKH2-02-004-PRC-1080 | Material Delivery for Precast Concrete Curb | 2026-11-28 → 2026-12-05 (+7d) | 2026-12-31 → 2027-01-07 (+7d) |  | -13d → -19d |
| 8 | **Interlocking Block Pavers** | 2026-10-24 → 2026-10-31 (+7d) | 2027-01-04 → 2027-01-11 (+7d) |  |  |
| MKH2-02-004-PRC-1090 | PO for Interlocking Block Pavers | 2026-10-24 → 2026-10-31 (+7d) | 2026-10-26 → 2026-11-02 (+7d) |  | -16d → -22d |
| MKH2-02-004-PRC-1100 | Material Fabrication for Interlocking Block Pavers | 2026-10-27 → 2026-11-03 (+7d) | 2026-11-30 → 2026-12-07 (+7d) |  | -16d → -22d |
| MKH2-02-004-PRC-1110 | Material Delivery for Interlocking Block Pavers | 2026-12-01 → 2026-12-08 (+7d) | 2027-01-04 → 2027-01-11 (+7d) |  | -16d → -22d |
| 9 | **Pavement Markings** | 2026-10-27 → 2026-11-03 (+7d) | 2026-12-28 → 2027-01-04 (+7d) |  |  |
| MKH2-02-004-PRC-1120 | PO for Pavement Markings | 2026-10-27 → 2026-11-03 (+7d) | 2026-10-31 → 2026-11-07 (+7d) |  | -10d → -16d |
| MKH2-02-004-PRC-1130 | Material Fabrication for Pavement Markings | 2026-11-01 → 2026-11-08 (+7d) | 2026-11-29 → 2026-12-06 (+7d) |  | -10d → -16d |
| MKH2-02-004-PRC-1140 | Material Delivery for Pavement Markings | 2026-11-30 → 2026-12-07 (+7d) | 2026-12-28 → 2027-01-04 (+7d) |  | -10d → -16d |
| 10 | **Traffic Signs** |  | 2027-01-04 → 2026-10-12 (-84d) |  |  |
| MKH2-02-004-PRC-1160 | Material Fabrication for Traffic Signs | 2026-11-01 → 2026-10-05 A (-27d) | 2026-12-02 → 2026-10-10 A (-53d) | 0% → 100% | -7d → none |
| MKH2-02-004-PRC-1170 | Material Delivery for Traffic Signs | 2026-12-03 → 2026-10-11 A (-53d) | 2027-01-04 → 2026-10-12 A (-84d) | 0% → 100% | -7d → none |
| 7 | **Stormwater Utilities** |  | 2026-12-14 → 2026-11-14 (-30d) |  |  |
| 7 | **Catch Basins** |  | 2026-12-14 → 2026-11-14 (-30d) |  |  |
| MKH2-02-004-PRC-1290 | Material Delivery for Catch Basins-Stage 1 |  | 2026-10-28 → 2026-10-07 A (-21d) | 60% → 100% | 3d → none |
| MKH2-02-004-PRC-1300 | Material Delivery for Catch Basins-Stage 2 | 2026-10-29 → 2026-10-08 A (-21d) | 2026-11-21 → 2026-10-21 (-31d) | 0% → 80% | 5d → 31d |
| MKH2-02-004-PRC-1310 | Material Delivery for Catch Basins-Stage 3 | 2026-11-22 → 2026-10-22 (-31d) | 2026-12-14 → 2026-11-14 (-30d) |  | 5d → 31d |
| 5 | **Construction** |  | 2027-07-12 → 2027-07-17 (+5d) |  |  |
| 1 | **Roads** |  | 2027-07-12 → 2027-07-17 (+5d) |  |  |
| 3 | **Local 17** |  | 2027-04-25 → 2027-05-02 (+7d) |  |  |
| 1 | **Road Works** |  | 2027-04-25 → 2027-05-02 (+7d) |  |  |
| 1 | **Eartworks & Site grading** |  | 2027-01-21 → 2027-01-28 (+7d) |  |  |
| MKH2-02-004-CNS-1150 | Road backfilling [Local 17 ]-Stage 2 |  | 2026-10-22 → 2026-10-29 (+7d) |  | -24d → -25d |
| MKH2-02-004-CNS-1030 | Road excavation [Local 17 ]-Stage 2 |  | 2026-10-17 → 2026-10-24 (+7d) |  | -24d → -25d |
| MKH2-02-004-CNS-1260 | Subgrade [Local 17 ] | 2026-12-19 → 2026-12-26 (+7d) | 2027-01-04 → 2027-01-11 (+7d) |  | -33d → -37d |
| MKH2-02-004-CNS-1340 | Aggregate base course [Local 17 ] | 2027-01-05 → 2027-01-12 (+7d) | 2027-01-21 → 2027-01-28 (+7d) |  | -31d → -37d |
| 2 | **Asphalt Works** | 2027-01-23 → 2027-01-30 (+7d) | 2027-02-20 → 2027-02-28 (+8d) |  |  |
| MKH2-02-004-CNS-1420 | Prime Coat (MC1) [Local 17 ] | 2027-01-23 → 2027-01-30 (+7d) | 2027-02-02 → 2027-02-09 (+7d) |  | -22d → -28d |
| MKH2-02-004-CNS-1500 | Bituminous base course [Local 17 ] | 2027-02-03 → 2027-02-10 (+7d) | 2027-02-20 → 2027-02-28 (+8d) |  | -22d → -28d |
| 3 | **Finishing Works** | 2027-02-21 → 2027-03-01 (+8d) | 2027-04-25 → 2027-05-02 (+7d) |  |  |
| 1 | **Precast Concrete Curb** | 2027-02-21 → 2027-03-01 (+8d) | 2027-03-07 → 2027-03-17 (+10d) |  |  |
| MKH2-02-004-CNS-1580 | Installation of Precast Concrete curb [Local 17 ] | 2027-02-21 → 2027-03-01 (+8d) | 2027-03-07 → 2027-03-17 (+10d) |  | -22d → -28d |
| 2 | **Precast Interlocking block pavers** | 2027-03-08 → 2027-03-18 (+10d) | 2027-03-23 → 2027-03-30 (+7d) |  |  |
| MKH2-02-004-CNS-1660 | Installation of Interlocking block pavers for sidewalk/footpath [Local 17 ] | 2027-03-08 → 2027-03-18 (+10d) | 2027-03-23 → 2027-03-30 (+7d) |  | -22d → -28d |
| 3 | **Pavement Markings** | 2027-03-24 → 2027-03-31 (+7d) | 2027-04-11 → 2027-04-18 (+7d) |  |  |
| MKH2-02-004-CNS-1740 | Pavement markings [Local 17 ] | 2027-03-24 → 2027-03-31 (+7d) | 2027-04-01 → 2027-04-08 (+7d) |  | -22d → -28d |
| MKH2-02-004-CNS-1820 | (Speed Hump) with retroreflectiveThermoplastic yellow [Local 17 ] | 2027-04-03 → 2027-04-10 (+7d) | 2027-04-11 → 2027-04-18 (+7d) |  | -22d → -28d |
| 4 | **Traffic Signage** | 2027-04-12 → 2027-04-19 (+7d) | 2027-04-25 → 2027-05-02 (+7d) |  |  |
| MKH2-02-004-CNS-1900 | Installation of Traffic Signs [Local 17 ] | 2027-04-12 → 2027-04-19 (+7d) | 2027-04-25 → 2027-05-02 (+7d) |  | -22d → -28d |
| 2 | **Storm Water Drainage** | 2026-10-06 → 2026-10-13 (+7d) | 2027-02-09 → 2027-02-16 (+7d) |  |  |
| 1 | **Pipe Works** | 2026-10-06 → 2026-10-13 (+7d) | 2026-12-17 → 2026-12-24 (+7d) |  |  |
| MKH2-02-004-CNS-1980 | Excavation & Compaction (FDT) [Local 17 ]-Stage 1 | 2026-10-06 → 2026-10-13 (+7d) | 2026-10-20 → 2026-10-27 (+7d) |  | -33d → -37d |
| MKH2-02-004-CNS-1990 | Excavation & Compaction (FDT) [Local 17 ]-Stage 2 | 2026-10-21 → 2026-10-28 (+7d) | 2026-11-04 → 2026-11-11 (+7d) |  | -32d → -36d |
| MKH2-02-004-CNS-2100 | Sand Bedding [Local 17 ]-Stage 1 | 2026-10-21 → 2026-10-28 (+7d) | 2026-10-29 → 2026-11-05 (+7d) |  | -33d → -37d |
| MKH2-02-004-CNS-2220 | Installation of GRP Pipe [Local 17 ]-Stage 1 | 2026-10-31 → 2026-11-07 (+7d) | 2026-11-15 → 2026-11-22 (+7d) |  | -33d → -37d |
| MKH2-02-004-CNS-2110 | Sand Bedding [Local 17 ]-Stage 2 | 2026-11-05 → 2026-11-12 (+7d) | 2026-11-14 → 2026-11-21 (+7d) |  | -32d → -36d |
| MKH2-02-004-CNS-2230 | Installation of GRP Pipe [Local 17 ]-Stage 2 | 2026-11-16 → 2026-11-23 (+7d) | 2026-12-01 → 2026-12-08 (+7d) |  | -33d → -37d |
| MKH2-02-004-CNS-2340 | Sand Cover & Warning Tape [Local 17 ]-Stage 1 | 2026-11-16 → 2026-11-23 (+7d) | 2026-11-23 → 2026-11-30 (+7d) |  | -26d → -30d |
| MKH2-02-004-CNS-2460 | Backfilling & Compaction [Local 17 ]-Stage 1 | 2026-11-24 → 2026-12-01 (+7d) | 2026-12-01 → 2026-12-08 (+7d) |  | -26d → -30d |

| ID | Task | Start | Finish | Complete | Total float |
| --- | --- | --- | --- | --- | --- |
| MKH2-02-004-CNS-2350 | Sand Cover & Warning Tape [Local 17 ]-Stage 2 | 2026-12-02 → 2026-12-09 (+7d) | 2026-12-09 → 2026-12-16 (+7d) |  | -33d → -37d |
| MKH2-02-004-CNS-2470 | Backfilling & Compaction [Local 17 ]-Stage 2 | 2026-12-10 → 2026-12-17 (+7d) | 2026-12-17 → 2026-12-24 (+7d) |  | -33d → -37d |
| 2 | **Manholes** | 2026-11-16 → 2026-11-23 (+7d) | 2026-12-26 → 2027-01-02 (+7d) |  |  |
| MKH2-02-004-CNS-2600 | Installation of Manholes [Local 17 ]-Stage 1-[MH 01 to MH 07] | 2026-11-16 → 2026-11-23 (+7d) | 2026-11-23 → 2026-11-30 (+7d) |  | -19d → -25d |
| MKH2-02-004-CNS-2610 | Installation of Manholes [Local 17 ]-Stage 2-[MH 08 to MH 14] | 2026-11-24 → 2026-12-01 (+7d) | 2026-12-01 → 2026-12-08 (+7d) |  | -5d → -11d |
| MKH2-02-004-CNS-2620 | Installation of Manholes [Local 17 ]-Stage 3-[MH 15 to MH 21] | 2026-12-02 → 2026-12-09 (+7d) | 2026-12-09 → 2026-12-16 (+7d) |  | -5d → -11d |
| MKH2-02-004-CNS-2630 | Installation of Manholes [Local 17 ]-Stage 4-[MH 22 to MH 28] | 2026-12-10 → 2026-12-17 (+7d) | 2026-12-17 → 2026-12-24 (+7d) |  | -5d → -11d |
| MKH2-02-004-CNS-2640 | Installation of Manholes [Local 17 ]-Stage 5-[MH 29 to MH 33] | 2026-12-19 → 2026-12-26 (+7d) | 2026-12-26 → 2027-01-02 (+7d) |  | -5d → -11d |
| 3 | **Catch Basins** | 2026-11-24 → 2026-12-01 (+7d) | 2027-02-09 → 2027-02-16 (+7d) |  |  |
| MKH2-02-004-CNS-2800 | Construction of Catch basins [Local 17 ]-Stage 1-[01 to 10] | 2026-11-24 → 2026-12-01 (+7d) | 2026-12-01 → 2026-12-08 (+7d) |  | -19d → -25d |
| MKH2-02-004-CNS-2810 | Construction of Catch basins [Local 17 ]-Stage 2-[11 to 20] | 2026-12-02 → 2026-12-09 (+7d) | 2026-12-09 → 2026-12-16 (+7d) |  | -8d → -14d |
| MKH2-02-004-CNS-2820 | Construction of Catch basins [Local 17 ]-Stage 3-[21 to 30] | 2026-12-10 → 2026-12-17 (+7d) | 2026-12-17 → 2026-12-24 (+7d) |  | -8d → -14d |
| MKH2-02-004-CNS-2830 | Construction of Catch basins [Local 17 ]-Stage 4-[31 to 40] | 2026-12-19 → 2026-12-26 (+7d) | 2026-12-26 → 2027-01-02 (+7d) |  | -8d → -14d |
| MKH2-02-004-CNS-2840 | Construction of Catch basins [Local 17 ]-Stage 5-[41 to 50] | 2026-12-27 → 2027-01-03 (+7d) | 2027-01-03 → 2027-01-10 (+7d) |  | -8d → -14d |
| MKH2-02-004-CNS-2850 | Construction of Catch basins [Local 17 ]-Stage 6-[51 to 60] | 2027-01-04 → 2027-01-11 (+7d) | 2027-01-11 → 2027-01-18 (+7d) |  | -8d → -14d |
| MKH2-02-004-CNS-2860 | Construction of Catch basins [Local 17 ]-Stage 7-[61 to 70] | 2027-01-12 → 2027-01-19 (+7d) | 2027-01-19 → 2027-01-26 (+7d) |  | -8d → -14d |
| MKH2-02-004-CNS-2870 | Construction of Catch basins [Local 17 ]-Stage 8-[71 to 80] | 2027-01-20 → 2027-01-27 (+7d) | 2027-01-27 → 2027-02-03 (+7d) |  | -8d → -14d |
| MKH2-02-004-CNS-2880 | Construction of Catch basins [Local 17 ]-Stage 9-[81 to 90] | 2027-01-28 → 2027-02-04 (+7d) | 2027-02-04 → 2027-02-11 (+7d) |  | -8d → -14d |
| MKH2-02-004-CNS-2890 | Construction of Catch basins [Local 17 ]-Stage 10-[91 to 96] | 2027-02-06 → 2027-02-13 (+7d) | 2027-02-09 → 2027-02-16 (+7d) |  | -8d → -14d |
| 4 | **Concrete chambers Pipes** | 2026-12-02 → 2026-12-09 (+7d) | 2027-01-23 → 2027-01-30 (+7d) |  |  |
| MKH2-02-004-CNS-3140 | Excavation and Compaction (FDT) [Local 17 ]-Stage 1 | 2026-12-02 → 2026-12-09 (+7d) | 2026-12-14 → 2026-12-21 (+7d) |  | -19d → -25d |
| MKH2-02-004-CNS-3150 | Excavation and Compaction (FDT) [Local 17 ]-Stage 2 | 2026-12-15 → 2026-12-22 (+7d) | 2026-12-27 → 2027-01-03 (+7d) |  | -18d → -24d |
| MKH2-02-004-CNS-3230 | Installation of Pipes [Local 17 ]-Stage 1 | 2026-12-15 → 2026-12-22 (+7d) | 2026-12-28 → 2027-01-04 (+7d) |  | -19d → -25d |
| MKH2-02-004-CNS-3240 | Installation of Pipes [Local 17 ]-Stage 2 | 2026-12-29 → 2027-01-05 (+7d) | 2027-01-11 → 2027-01-18 (+7d) |  | -19d → -25d |
| MKH2-02-004-CNS-3320 | Backfilling & Compaction [Local 17 ]-Stage 1 | 2026-12-29 → 2027-01-05 (+7d) | 2027-01-09 → 2027-01-16 (+7d) |  | -17d → -23d |
| MKH2-02-004-CNS-3330 | Backfilling & Compaction [Local 17 ]-Stage 2 | 2027-01-12 → 2027-01-19 (+7d) | 2027-01-23 → 2027-01-30 (+7d) |  | -19d → -25d |
| 5 | **Local 11** |  | 2027-04-22 → 2027-04-29 (+7d) |  |  |
| 1 | **Road Works** |  | 2027-04-22 → 2027-04-29 (+7d) |  |  |
| 1 | **Eartworks & Site grading** |  | 2027-02-01 → 2027-02-08 (+7d) |  |  |
| MKH2-02-004-CNS-1070 | Road excavation [Local 11 ]-Stage 2 |  | 2026-10-31 → 2026-10-10 A (-21d) | 85% → 100% | -24d → none |
| MKH2-02-004-CNS-1190 | Road backfilling [Local 11 ]-Stage 2 | 2026-10-24 → 2026-10-31 (+7d) | 2026-11-04 → 2026-11-11 (+7d) |  | -24d → -12d |
| MKH2-02-004-CNS-1280 | Subgrade [Local 11 ] | 2027-01-05 → 2027-01-12 (+7d) | 2027-01-14 → 2027-01-21 (+7d) |  | -33d → -36d |
| MKH2-02-004-CNS-1360 | Aggregate base course [Local 11 ] | 2027-01-23 → 2027-01-30 (+7d) | 2027-02-01 → 2027-02-08 (+7d) |  | -31d → -37d |
| 2 | **Asphalt Works** | 2027-02-03 → 2027-02-10 (+7d) | 2027-03-01 → 2027-03-08 (+7d) |  |  |
| MKH2-02-004-CNS-1440 | Prime Coat (MC1) [Local 11 ] | 2027-02-03 → 2027-02-10 (+7d) | 2027-02-14 → 2027-02-21 (+7d) |  | -20d → -26d |
| MKH2-02-004-CNS-1520 | Bituminous base course [Local 11 ] | 2027-02-15 → 2027-02-23 (+8d) | 2027-03-01 → 2027-03-08 (+7d) |  | -20d → -26d |
| 3 | **Finishing Works** | 2027-03-02 → 2027-03-09 (+7d) | 2027-04-22 → 2027-04-29 (+7d) |  |  |
| 1 | **Precast Concrete Curb** | 2027-03-02 → 2027-03-09 (+7d) | 2027-03-17 → 2027-03-24 (+7d) |  |  |
| MKH2-02-004-CNS-1600 | Installation of Precast Concrete curb [Local 11 ] | 2027-03-02 → 2027-03-09 (+7d) | 2027-03-17 → 2027-03-24 (+7d) |  | -20d → -26d |
| 2 | **Precast Interlocking block pavers** | 2027-03-18 → 2027-03-25 (+7d) | 2027-03-29 → 2027-04-05 (+7d) |  |  |
| MKH2-02-004-CNS-1680 | Installation of Interlocking block pavers for sidewalk/footpath [Local 11 ] | 2027-03-18 → 2027-03-25 (+7d) | 2027-03-29 → 2027-04-05 (+7d) |  | -20d → -26d |
| 3 | **Pavement Markings** | 2027-03-30 → 2027-04-06 (+7d) | 2027-04-14 → 2027-04-21 (+7d) |  |  |
| MKH2-02-004-CNS-1760 | Pavement markings [Local 11 ] | 2027-03-30 → 2027-04-06 (+7d) | 2027-04-06 → 2027-04-13 (+7d) |  | -20d → -26d |
| MKH2-02-004-CNS-1840 | (Speed Hump) with retroreflectiveThermoplastic yellow [Local 11 ] | 2027-04-07 → 2027-04-14 (+7d) | 2027-04-14 → 2027-04-21 (+7d) |  | -20d → -26d |
| 4 | **Traffic Signage** | 2027-04-15 → 2027-04-22 (+7d) | 2027-04-22 → 2027-04-29 (+7d) |  |  |
| MKH2-02-004-CNS-1920 | Installation of Traffic Signs [Local 11 ] | 2027-04-15 → 2027-04-22 (+7d) | 2027-04-22 → 2027-04-29 (+7d) |  | -20d → -26d |
| 2 | **Storm Water Drainage** |  | 2027-01-18 → 2026-12-22 (-27d) |  |  |
| 1 | **Pipe Works** |  | 2026-12-24 → 2026-12-14 (-10d) |  |  |
| MKH2-02-004-CNS-2020 | Excavation & Compaction (FDT) [Local 11 ]-Stage 1 |  | 2026-11-11 → 2026-10-08 A (-34d) | 50% → 100% | -24d → none |
| MKH2-02-004-CNS-2140 | Sand Bedding [Local 11 ]-Stage 1 |  | 2026-11-17 → 2026-10-08 A (-40d) | 30% → 100% | -24d → none |
| MKH2-02-004-CNS-2260 | Installation of GRP Pipe [Local 11 ]-Stage 1 |  | 2026-11-30 → 2026-10-11 A (-50d) | 10% → 100% | -24d → none |
| MKH2-02-004-CNS-2030 | Excavation & Compaction (FDT) [Local 11 ]-Stage 2 | 2026-11-12 → 2026-10-10 A (-33d) | 2026-11-21 → 2026-11-16 (-5d) | 0% → 80% | -22d → -12d |
| MKH2-02-004-CNS-2380 | Sand Cover & Warning Tape [Local 11 ]-Stage 1 | 2026-12-01 → 2026-10-11 A (-51d) | 2026-12-06 → 2026-11-14 (-22d) | 0% → 80% | -18d → 4d |
| MKH2-02-004-CNS-2150 | Sand Bedding [Local 11 ]-Stage 2 | 2026-11-22 → 2026-10-12 A (-41d) | 2026-11-28 → 2026-11-19 (-9d) | 0% → 60% | -22d → -12d |
| MKH2-02-004-CNS-2270 | Installation of GRP Pipe [Local 11 ]-Stage 2 | 2026-12-01 → 2026-10-12 A (-50d) | 2026-12-13 → 2026-12-02 (-11d) | 0% → 60% | -24d → -12d |
| MKH2-02-004-CNS-2500 | Backfilling & Compaction [Local 11 ]-Stage 1 | 2026-12-07 → 2026-10-12 A (-56d) | 2026-12-12 → 2026-11-16 (-26d) | 0% → 70% | -18d → 7d |
| MKH2-02-004-CNS-2390 | Sand Cover & Warning Tape [Local 11 ]-Stage 2 | 2026-12-14 → 2026-12-03 (-11d) | 2026-12-19 → 2026-12-08 (-11d) |  | -24d → -12d |
| MKH2-02-004-CNS-2510 | Backfilling & Compaction [Local 11 ]-Stage 2 | 2026-12-20 → 2026-12-09 (-11d) | 2026-12-24 → 2026-12-14 (-10d) |  | -24d → -12d |
| 2 | **Manholes** |  | 2026-12-24 → 2026-11-19 (-35d) |  |  |
| MKH2-02-004-CNS-2680 | Installation of Manholes [Local 11 ]-Stage 1-[MH 01 to MH 07] |  | 2026-12-08 → 2026-10-10 A (-59d) | 20% → 100% | 4d → none |
| MKH2-02-004-CNS-2690 | Installation of Manholes [Local 11 ]-Stage 2-[MH 08 to MH 14] | 2026-12-09 → 2026-10-10 A (-60d) | 2026-12-16 → 2026-10-12 A (-65d) | 0% → 100% | 7d → none |
| MKH2-02-004-CNS-2700 | Installation of Manholes [Local 11 ]-Stage 3-[MH 15 to MH 20] | 2026-12-17 → 2026-11-12 (-35d) | 2026-12-24 → 2026-11-19 (-35d) |  | 7d → 37d |
| 3 | **Catch Basins** | 2026-12-09 → 2026-11-12 (-27d) | 2027-01-18 → 2026-12-22 (-27d) |  |  |
| MKH2-02-004-CNS-2950 | Construction of Catch basins [Local 11 ]-Stage 1-[01 to 10] | 2026-12-09 → 2026-11-12 (-27d) | 2026-12-16 → 2026-11-19 (-27d) |  | 4d → 27d |
| MKH2-02-004-CNS-2960 | Construction of Catch basins [Local 11 ]-Stage 2-[11 to 20] | 2026-12-17 → 2026-11-21 (-26d) | 2026-12-24 → 2026-11-28 (-26d) |  | 7d → 30d |
| MKH2-02-004-CNS-2970 | Construction of Catch basins [Local 11 ]-Stage 3-[21 to 30] | 2026-12-26 → 2026-11-29 (-27d) | 2027-01-02 → 2026-12-06 (-27d) |  | 7d → 30d |
| MKH2-02-004-CNS-2980 | Construction of Catch basins [Local 11 ]-Stage 4-[31 to 40] | 2027-01-03 → 2026-12-07 (-27d) | 2027-01-10 → 2026-12-14 (-27d) |  | 7d → 30d |
| MKH2-02-004-CNS-2990 | Construction of Catch basins [Local 11 ]-Stage 5-[41 to 50] | 2027-01-11 → 2026-12-15 (-27d) | 2027-01-18 → 2026-12-22 (-27d) |  | 7d → 30d |
| 4 | **Concrete chambers Pipes** | 2026-12-17 → 2026-11-21 (-26d) | 2027-01-14 → 2026-12-19 (-26d) |  |  |
| MKH2-02-004-CNS-3170 | Excavation and Compaction (FDT) [Local 11 ] | 2026-12-17 → 2026-11-21 (-26d) | 2026-12-27 → 2026-11-30 (-27d) |  | 4d → 27d |

| ID | Task | Start | Finish | Complete | Total float |
| --- | --- | --- | --- | --- | --- |
| MKH2-02-004-CNS-3260 | Installation of Pipes [Local 11 ] | 2026-12-28 → 2026-12-01 (-27d) | 2027-01-04 → 2026-12-08 (-27d) |  | 4d → 27d |
| MKH2-02-004-CNS-3350 | Backfilling & Compaction [Local 11 ] | 2027-01-05 → 2026-12-09 (-27d) | 2027-01-14 → 2026-12-19 (-26d) |  | 4d → 27d |
| 6 | **Local 29** |  | 2027-04-19 → 2027-04-26 (+7d) |  |  |
| 1 | **Road Works** |  | 2027-04-19 → 2027-04-26 (+7d) |  |  |
| 1 | **Eartworks & Site grading** |  | 2027-02-17 → 2027-02-25 (+8d) |  |  |
| MKH2-02-004-CNS-1200 | Road backfilling [Local 29 ] |  | 2026-11-10 → 2026-11-17 (+7d) |  | -9d → -12d |
| MKH2-02-004-CNS-1290 | Subgrade [Local 29 ] | 2027-01-16 → 2027-01-23 (+7d) | 2027-01-31 → 2027-02-07 (+7d) |  | -33d → -36d |
| MKH2-02-004-CNS-1370 | Aggregate base course [Local 29 ] | 2027-02-02 → 2027-02-09 (+7d) | 2027-02-17 → 2027-02-25 (+8d) |  | -31d → -37d |
| 2 | **Asphalt Works** | 2027-02-18 → 2027-02-27 (+9d) | 2027-03-15 → 2027-03-22 (+7d) |  |  |
| MKH2-02-004-CNS-1450 | Prime Coat (MC1) [Local 29 ] | 2027-02-18 → 2027-02-27 (+9d) | 2027-02-28 → 2027-03-07 (+7d) |  | -19d → -25d |
| MKH2-02-004-CNS-1530 | Bituminous base course [Local 29 ] | 2027-03-01 → 2027-03-08 (+7d) | 2027-03-15 → 2027-03-22 (+7d) |  | -17d → -23d |
| 3 | **Finishing Works** | 2027-03-16 → 2027-03-23 (+7d) | 2027-04-19 → 2027-04-26 (+7d) |  |  |
| 1 | **Precast Concrete Curb** | 2027-03-16 → 2027-03-23 (+7d) | 2027-03-22 → 2027-03-29 (+7d) |  |  |
| MKH2-02-004-CNS-1610 | Installation of Precast Concrete curb [Local 29 ] | 2027-03-16 → 2027-03-23 (+7d) | 2027-03-22 → 2027-03-29 (+7d) |  | -17d → -23d |
| 2 | **Precast Interlocking block pavers** | 2027-03-23 → 2027-03-30 (+7d) | 2027-03-29 → 2027-04-05 (+7d) |  |  |
| MKH2-02-004-CNS-1690 | Installation of Interlocking block pavers for sidewalk/footpath [Local 29 ] | 2027-03-23 → 2027-03-30 (+7d) | 2027-03-29 → 2027-04-05 (+7d) |  | -17d → -23d |
| 3 | **Pavement Markings** | 2027-03-30 → 2027-04-06 (+7d) | 2027-04-12 → 2027-04-19 (+7d) |  |  |
| MKH2-02-004-CNS-1770 | Pavement markings [Local 29 ] | 2027-03-30 → 2027-04-06 (+7d) | 2027-04-05 → 2027-04-12 (+7d) |  | -17d → -23d |
| MKH2-02-004-CNS-1850 | (Speed Hump) with retroreflectiveThermoplastic yellow [Local 29 ] | 2027-04-06 → 2027-04-13 (+7d) | 2027-04-12 → 2027-04-19 (+7d) |  | -17d → -23d |
| 4 | **Traffic Signage** | 2027-04-13 → 2027-04-20 (+7d) | 2027-04-19 → 2027-04-26 (+7d) |  |  |
| MKH2-02-004-CNS-1930 | Installation of Traffic Signs [Local 29 ] | 2027-04-13 → 2027-04-20 (+7d) | 2027-04-19 → 2027-04-26 (+7d) |  | -17d → -23d |
| 2 | **Storm Water Drainage** | 2026-11-11 → 2026-11-18 (+7d) | 2027-01-18 → 2027-01-25 (+7d) |  |  |
| 1 | **Pipe Works** | 2026-11-11 → 2026-11-18 (+7d) | 2026-12-17 → 2026-12-24 (+7d) |  |  |
| MKH2-02-004-CNS-2040 | Excavation & Compaction (FDT) [Local 29 ] | 2026-11-11 → 2026-11-18 (+7d) | 2026-11-17 → 2026-11-24 (+7d) |  | -9d → -12d |
| MKH2-02-004-CNS-2160 | Sand Bedding [Local 29 ] | 2026-11-18 → 2026-11-25 (+7d) | 2026-11-24 → 2026-12-01 (+7d) |  | -9d → -12d |
| MKH2-02-004-CNS-2280 | Installation of GRP Pipe [Local 29 ] | 2026-11-25 → 2026-12-02 (+7d) | 2026-12-05 → 2026-12-12 (+7d) |  | -9d → -12d |
| MKH2-02-004-CNS-2400 | Sand Cover & Warning Tape [Local 29 ] | 2026-12-06 → 2026-12-13 (+7d) | 2026-12-10 → 2026-12-17 (+7d) |  | -9d → -12d |
| MKH2-02-004-CNS-2520 | Backfilling & Compaction [Local 29 ] | 2026-12-12 → 2026-12-19 (+7d) | 2026-12-17 → 2026-12-24 (+7d) |  | -9d → -12d |
| 2 | **Manholes** | 2026-12-06 → 2026-12-13 (+7d) | 2026-12-21 → 2026-12-28 (+7d) |  |  |
| MKH2-02-004-CNS-2710 | Installation of Manholes [Local 29 ]-Stage 1-[MH 01 to MH 07] | 2026-12-06 → 2026-12-13 (+7d) | 2026-12-13 → 2026-12-20 (+7d) |  | 1d → -5d |
| MKH2-02-004-CNS-2720 | Installation of Manholes [Local 29 ]-Stage 2-[MH 08 to MH 15] | 2026-12-14 → 2026-12-21 (+7d) | 2026-12-21 → 2026-12-28 (+7d) |  | 3d → -3d |
| 3 | **Catch Basins** | 2026-12-14 → 2026-12-21 (+7d) | 2027-01-11 → 2027-01-18 (+7d) |  |  |
| MKH2-02-004-CNS-3000 | Construction of Catch basins [Local 29 ]-Stage 1-[01 to 10] | 2026-12-14 → 2026-12-21 (+7d) | 2026-12-21 → 2026-12-28 (+7d) |  | 1d → -5d |
| MKH2-02-004-CNS-3010 | Construction of Catch basins [Local 29 ]-Stage 2-[11 to 20] | 2026-12-22 → 2026-12-29 (+7d) | 2026-12-29 → 2027-01-05 (+7d) |  | 1d → -5d |
| MKH2-02-004-CNS-3020 | Construction of Catch basins [Local 29 ]-Stage 3-[21 to 30] | 2026-12-30 → 2027-01-06 (+7d) | 2027-01-06 → 2027-01-13 (+7d) |  | 1d → -5d |
| MKH2-02-004-CNS-3030 | Construction of Catch basins [Local 29 ]-Stage 4-[31 to 35] | 2027-01-07 → 2027-01-14 (+7d) | 2027-01-11 → 2027-01-18 (+7d) |  | 1d → -5d |
| 4 | **Concrete chambers Pipes** | 2026-12-22 → 2026-12-29 (+7d) | 2027-01-18 → 2027-01-25 (+7d) |  |  |
| MKH2-02-004-CNS-3180 | Excavation and Compaction (FDT) [Local 29 ] | 2026-12-22 → 2026-12-29 (+7d) | 2026-12-29 → 2027-01-05 (+7d) |  | 3d → -3d |
| MKH2-02-004-CNS-3270 | Installation of Pipes [Local 29 ] | 2026-12-30 → 2027-01-06 (+7d) | 2027-01-09 → 2027-01-16 (+7d) |  | 3d → -3d |
| MKH2-02-004-CNS-3360 | Backfilling & Compaction [Local 29 ] | 2027-01-12 → 2027-01-19 (+7d) | 2027-01-18 → 2027-01-25 (+7d) |  | 1d → -5d |
| 7 | **Local 30** |  | 2027-05-03 → 2027-05-10 (+7d) |  |  |
| 1 | **Road Works** |  | 2027-05-03 → 2027-05-10 (+7d) |  |  |
| 1 | **Eartworks & Site grading** |  | 2027-03-04 → 2027-03-15 (+11d) |  |  |
| MKH2-02-004-CNS-1210 | Road backfilling [Local 30 ] |  | 2026-11-16 → 2026-11-23 (+7d) |  | -3d → -9d |
| MKH2-02-004-CNS-1300 | Subgrade [Local 30 ] |  | 2027-02-13 → 2026-10-10 A (-126d) | 50% → 100% | -33d → none |
| MKH2-02-004-CNS-1380 | Aggregate base course [Local 30 ] | 2027-02-18 → 2027-02-27 (+9d) | 2027-03-04 → 2027-03-15 (+11d) |  | -31d → -37d |
| 2 | **Asphalt Works** | 2027-03-06 → 2027-03-16 (+10d) | 2027-03-29 → 2027-04-05 (+7d) |  |  |
| MKH2-02-004-CNS-1460 | Prime Coat (MC1) [Local 30 ] | 2027-03-06 → 2027-03-16 (+10d) | 2027-03-17 → 2027-03-24 (+7d) |  | -23d → -29d |
| MKH2-02-004-CNS-1540 | Bituminous base course [Local 30 ] | 2027-03-18 → 2027-03-25 (+7d) | 2027-03-29 → 2027-04-05 (+7d) |  | -23d → -29d |
| 3 | **Finishing Works** | 2027-03-30 → 2027-04-06 (+7d) | 2027-05-03 → 2027-05-10 (+7d) |  |  |
| 1 | **Precast Concrete Curb** | 2027-03-30 → 2027-04-06 (+7d) | 2027-04-05 → 2027-04-12 (+7d) |  |  |
| MKH2-02-004-CNS-1620 | Installation of Precast Concrete curb [Local 30 ] | 2027-03-30 → 2027-04-06 (+7d) | 2027-04-05 → 2027-04-12 (+7d) |  | -23d → -29d |
| 2 | **Precast Interlocking block pavers** | 2027-04-06 → 2027-04-13 (+7d) | 2027-04-12 → 2027-04-19 (+7d) |  |  |
| MKH2-02-004-CNS-1700 | Installation of Interlocking block pavers for sidewalk/footpath [Local 30 ] | 2027-04-06 → 2027-04-13 (+7d) | 2027-04-12 → 2027-04-19 (+7d) |  | -23d → -29d |
| 3 | **Pavement Markings** | 2027-04-13 → 2027-04-20 (+7d) | 2027-04-26 → 2027-05-03 (+7d) |  |  |
| MKH2-02-004-CNS-1780 | Pavement markings [Local 30 ] | 2027-04-13 → 2027-04-20 (+7d) | 2027-04-19 → 2027-04-26 (+7d) |  | -23d → -29d |
| MKH2-02-004-CNS-1860 | (Speed Hump) with retroreflectiveThermoplastic yellow [Local 30 ] | 2027-04-20 → 2027-04-27 (+7d) | 2027-04-26 → 2027-05-03 (+7d) |  | -23d → -29d |
| 4 | **Traffic Signage** | 2027-04-27 → 2027-05-04 (+7d) | 2027-05-03 → 2027-05-10 (+7d) |  |  |
| MKH2-02-004-CNS-1940 | Installation of Traffic Signs [Local 30 ] | 2027-04-27 → 2027-05-04 (+7d) | 2027-05-03 → 2027-05-10 (+7d) |  | -23d → -29d |
| 2 | **Storm Water Drainage** |  | 2027-02-17 → 2027-02-25 (+8d) |  |  |
| 3 | **Catch Basins** | 2026-12-15 → 2026-11-24 (-21d) | 2027-01-19 → 2026-12-29 (-21d) |  |  |
| MKH2-02-004-CNS-3040 | Construction of Catch basins [Local 30 ]-Stage 1-[01 to 10] | 2026-12-15 → 2026-11-24 (-21d) | 2026-12-26 → 2026-12-05 (-21d) |  | 5d → 23d |
| MKH2-02-004-CNS-3050 | Construction of Catch basins [Local 30 ]-Stage 2-[11 to 20] | 2026-12-27 → 2026-12-06 (-21d) | 2027-01-06 → 2026-12-16 (-21d) |  | 6d → 24d |
| MKH2-02-004-CNS-3060 | Construction of Catch basins [Local 30 ]-Stage 3-[21 to 31] | 2027-01-07 → 2026-12-17 (-21d) | 2027-01-19 → 2026-12-29 (-21d) |  | 6d → 24d |
| 4 | **Concrete chambers Pipes** | 2027-01-24 → 2027-01-31 (+7d) | 2027-02-17 → 2027-02-25 (+8d) |  |  |
| MKH2-02-004-CNS-3190 | Excavation and Compaction (FDT) [Local 30 ] | 2027-01-24 → 2027-01-31 (+7d) | 2027-01-31 → 2027-02-07 (+7d) |  | -19d → -25d |
| MKH2-02-004-CNS-3280 | Installation of Pipes [Local 30 ] | 2027-02-01 → 2027-02-08 (+7d) | 2027-02-10 → 2027-02-17 (+7d) |  | -19d → -25d |
| MKH2-02-004-CNS-3370 | Backfilling & Compaction [Local 30 ] | 2027-02-11 → 2027-02-18 (+7d) | 2027-02-17 → 2027-02-25 (+8d) |  | -19d → -25d |
| 8 | **Local 31** |  | 2027-06-19 → 2027-06-23 (+4d) |  |  |
| 1 | **Road Works** |  | 2027-06-19 → 2027-06-23 (+4d) |  |  |

| ID | Task | Start | Finish | Complete | Total float |
| --- | --- | --- | --- | --- | --- |
| 1 | **Eartworks & Site grading** |  | 2027-03-31 → 2027-04-05 (+5d) |  |  |
| MKH2-02-004-CNS-1100 | Road excavation [Local 31 ]-Stage 1 |  | 2026-11-23 → 2026-11-30 (+7d) |  | -3d → -9d |
| MKH2-02-004-CNS-1230 | Road backfilling [Local 31 ]-Stage 2 |  | 2026-12-07 → 2026-12-14 (+7d) | 32% → 55% | -3d → -9d |
| MKH2-02-004-CNS-1110 | Road excavation [Local 31 ]-Stage 2 | 2026-11-24 → 2026-12-01 (+7d) | 2026-12-07 → 2026-12-14 (+7d) |  | -3d → -9d |
| MKH2-02-004-CNS-1310 | Subgrade [Local 31 ] | 2027-02-14 → 2027-02-08 (-6d) | 2027-03-07 → 2027-03-01 (-6d) |  | -33d → -28d |
| MKH2-02-004-CNS-1390 | Aggregate base course [Local 31 ] | 2027-03-08 → 2027-03-16 (+8d) | 2027-03-31 → 2027-04-05 (+5d) |  | -33d → -37d |
| 2 | **Asphalt Works** | 2027-04-01 → 2027-04-06 (+5d) | 2027-04-22 → 2027-04-27 (+5d) |  |  |
| MKH2-02-004-CNS-1470 | Prime Coat (MC1) [Local 31 ] | 2027-04-01 → 2027-04-06 (+5d) | 2027-04-11 → 2027-04-15 (+4d) |  | -33d → -37d |
| MKH2-02-004-CNS-1550 | Bituminous base course [Local 31 ] | 2027-04-12 → 2027-04-17 (+5d) | 2027-04-22 → 2027-04-27 (+5d) |  | -33d → -37d |
| 3 | **Finishing Works** | 2027-04-24 → 2027-04-28 (+4d) | 2027-06-19 → 2027-06-23 (+4d) |  |  |
| 1 | **Precast Concrete Curb** | 2027-04-24 → 2027-04-28 (+4d) | 2027-05-04 → 2027-05-09 (+5d) |  |  |
| MKH2-02-004-CNS-1630 | Installation of Precast Concrete curb [Local 31 ] | 2027-04-24 → 2027-04-28 (+4d) | 2027-05-04 → 2027-05-09 (+5d) |  | -33d → -37d |
| 2 | **Precast Interlocking block pavers** | 2027-05-05 → 2027-05-10 (+5d) | 2027-05-19 → 2027-05-24 (+5d) |  |  |
| MKH2-02-004-CNS-1710 | Installation of Interlocking block pavers for sidewalk/footpath [Local 31 ] | 2027-05-05 → 2027-05-10 (+5d) | 2027-05-19 → 2027-05-24 (+5d) |  | -33d → -37d |
| 3 | **Pavement Markings** | 2027-05-20 → 2027-05-25 (+5d) | 2027-06-09 → 2027-06-14 (+5d) |  |  |
| MKH2-02-004-CNS-1790 | Pavement markings [Local 31 ] | 2027-05-20 → 2027-05-25 (+5d) | 2027-05-30 → 2027-06-03 (+4d) |  | -33d → -37d |
| MKH2-02-004-CNS-1870 | (Speed Hump) with retroreflectiveThermoplastic yellow [Local 31 ] | 2027-05-31 → 2027-06-05 (+5d) | 2027-06-09 → 2027-06-14 (+5d) |  | -33d → -37d |
| 4 | **Traffic Signage** | 2027-06-10 → 2027-06-15 (+5d) | 2027-06-19 → 2027-06-23 (+4d) |  |  |
| MKH2-02-004-CNS-1950 | Installation of Traffic Signs [Local 31 ] | 2027-06-10 → 2027-06-15 (+5d) | 2027-06-19 → 2027-06-23 (+4d) |  | -13d → -17d |
| 2 | **Storm Water Drainage** | 2026-11-17 → 2026-11-24 (+7d) | 2027-03-09 → 2027-03-20 (+11d) |  |  |
| 1 | **Pipe Works** | 2026-11-17 → 2026-11-24 (+7d) | 2027-01-09 → 2027-01-16 (+7d) |  |  |
| MKH2-02-004-CNS-2060 | Excavation & Compaction (FDT) [Local 31 ]-Stage 1 | 2026-11-17 → 2026-11-24 (+7d) | 2026-11-25 → 2026-12-02 (+7d) |  | -3d → -9d |
| MKH2-02-004-CNS-2180 | Sand Bedding [Local 31 ]-Stage 1 | 2026-11-26 → 2026-12-03 (+7d) | 2026-12-07 → 2026-12-14 (+7d) |  | -3d → -9d |
| MKH2-02-004-CNS-2070 | Excavation & Compaction (FDT) [Local 31 ]-Stage 2 | 2026-11-29 → 2026-12-06 (+7d) | 2026-12-07 → 2026-12-14 (+7d) |  | -3d → -9d |
| MKH2-02-004-CNS-2190 | Sand Bedding [Local 31 ]-Stage 2 | 2026-12-08 → 2026-12-15 (+7d) | 2026-12-19 → 2026-12-26 (+7d) |  | -3d → -9d |
| MKH2-02-004-CNS-2300 | Installation of GRP Pipe [Local 31 ]-Stage 1 | 2026-12-08 → 2026-12-15 (+7d) | 2026-12-16 → 2026-12-23 (+7d) |  | -1d → -7d |
| MKH2-02-004-CNS-2420 | Sand Cover & Warning Tape [Local 31 ]-Stage 1 | 2026-12-17 → 2026-12-24 (+7d) | 2026-12-22 → 2026-12-29 (+7d) |  | 2d → -4d |
| MKH2-02-004-CNS-2310 | Installation of GRP Pipe [Local 31 ]-Stage 2 | 2026-12-20 → 2026-12-27 (+7d) | 2026-12-28 → 2027-01-04 (+7d) |  | -3d → -9d |
| MKH2-02-004-CNS-2540 | Backfilling & Compaction [Local 31 ]-Stage 1 | 2026-12-23 → 2026-12-30 (+7d) | 2026-12-28 → 2027-01-04 (+7d) |  | 2d → -4d |
| MKH2-02-004-CNS-2430 | Sand Cover & Warning Tape [Local 31 ]-Stage 2 | 2026-12-29 → 2027-01-05 (+7d) | 2027-01-03 → 2027-01-10 (+7d) |  | -3d → -9d |
| MKH2-02-004-CNS-2550 | Backfilling & Compaction [Local 31 ]-Stage 2 | 2027-01-04 → 2027-01-11 (+7d) | 2027-01-09 → 2027-01-16 (+7d) |  | -3d → -9d |
| 2 | **Manholes** | 2026-12-17 → 2026-12-24 (+7d) | 2027-02-01 → 2027-02-08 (+7d) |  |  |
| MKH2-02-004-CNS-2750 | Installation of Manholes [Local 31 ]-Stage 1-[MH 01 to MH 07] | 2026-12-17 → 2026-12-24 (+7d) | 2027-01-02 → 2027-01-09 (+7d) |  | 26d → 20d |
| MKH2-02-004-CNS-2760 | Installation of Manholes [Local 31 ]-Stage 2-[MH 08 to MH 14] | 2027-01-03 → 2027-01-10 (+7d) | 2027-01-18 → 2027-01-25 (+7d) |  | 26d → 20d |
| MKH2-02-004-CNS-2770 | Installation of Manholes [Local 31 ]-Stage 3-[MH 15 to MH 20] | 2027-01-19 → 2027-01-26 (+7d) | 2027-02-01 → 2027-02-08 (+7d) |  | 26d → 20d |
| 3 | **Catch Basins** | 2027-01-03 → 2027-01-10 (+7d) | 2027-02-28 → 2027-03-07 (+7d) |  |  |
| MKH2-02-004-CNS-3070 | Construction of Catch basins [Local 31 ]-Stage 1-[01 to 10] | 2027-01-03 → 2027-01-10 (+7d) | 2027-01-07 → 2027-01-14 (+7d) |  | 26d → 20d |
| MKH2-02-004-CNS-3080 | Construction of Catch basins [Local 31 ]-Stage 2-[11 to 20] | 2027-01-19 → 2027-01-16 (-3d) | 2027-01-24 → 2027-01-20 (-4d) |  | 18d → 21d |
| MKH2-02-004-CNS-3090 | Construction of Catch basins [Local 31 ]-Stage 3-[21 to 31] | 2027-02-10 → 2027-02-17 (+7d) | 2027-02-15 → 2027-02-23 (+8d) |  | 4d → -2d |
| MKH2-02-004-CNS-3100 | Construction of Catch basins [Local 31 ]-Stage 4-[31 to 40] | 2027-02-16 → 2027-02-24 (+8d) | 2027-02-21 → 2027-03-01 (+8d) |  | 4d → -2d |
| MKH2-02-004-CNS-3110 | Construction of Catch basins [Local 31 ]-Stage 5-[41 to 49] | 2027-02-23 → 2027-03-02 (+7d) | 2027-02-28 → 2027-03-07 (+7d) |  | 4d → -2d |
| 4 | **Concrete chambers Pipes** | 2027-01-09 → 2027-01-16 (+7d) | 2027-03-09 → 2027-03-20 (+11d) |  |  |
| MKH2-02-004-CNS-3200 | Excavation and Compaction (FDT) [Local 31 ] | 2027-01-09 → 2027-01-16 (+7d) | 2027-01-18 → 2027-01-25 (+7d) |  | 26d → 20d |
| MKH2-02-004-CNS-3290 | Installation of Pipes [Local 31 ] | 2027-01-19 → 2027-01-26 (+7d) | 2027-02-01 → 2027-02-08 (+7d) |  | 26d → 20d |
| MKH2-02-004-CNS-3380 | Backfilling & Compaction [Local 31 ] | 2027-03-01 → 2027-03-08 (+7d) | 2027-03-09 → 2027-03-20 (+11d) |  | 4d → -2d |
| 4 | **Local 28** |  | 2027-07-12 → 2027-07-17 (+5d) |  |  |
| 1 | **Road Works** |  | 2027-07-12 → 2027-07-17 (+5d) |  |  |
| 1 | **Eartworks & Site grading** |  | 2027-04-17 → 2027-04-21 (+4d) |  |  |
| MKH2-02-004-CNS-1170 | Road backfilling [Local 28 ]-Stage 2 |  | 2026-11-25 → 2026-12-02 (+7d) |  | 33d → 27d |
| MKH2-02-004-CNS-1270 | Subgrade [Local 28 ] | 2027-03-08 → 2027-03-02 (-6d) | 2027-03-29 → 2027-03-23 (-6d) |  | -26d → -21d |
| MKH2-02-004-CNS-1350 | Aggregate base course [Local 28 ] | 2027-04-01 → 2027-04-06 (+5d) | 2027-04-17 → 2027-04-21 (+4d) |  | -28d → -32d |
| 2 | **Asphalt Works** | 2027-04-18 → 2027-04-22 (+4d) | 2027-05-08 → 2027-05-12 (+4d) |  |  |
| MKH2-02-004-CNS-1430 | Prime Coat (MC1) [Local 28 ] | 2027-04-18 → 2027-04-22 (+4d) | 2027-04-26 → 2027-05-01 (+5d) |  | -28d → -32d |
| MKH2-02-004-CNS-1510 | Bituminous base course [Local 28 ] | 2027-04-27 → 2027-05-02 (+5d) | 2027-05-08 → 2027-05-12 (+4d) |  | -28d → -32d |
| 3 | **Finishing Works** | 2027-05-09 → 2027-05-13 (+4d) | 2027-07-12 → 2027-07-17 (+5d) |  |  |
| 1 | **Precast Concrete Curb** | 2027-05-09 → 2027-05-13 (+4d) | 2027-05-24 → 2027-05-29 (+5d) |  |  |
| MKH2-02-004-CNS-1590 | Installation of Precast Concrete curb [Local 28 ] | 2027-05-09 → 2027-05-13 (+4d) | 2027-05-24 → 2027-05-29 (+5d) |  | -28d → -32d |
| 2 | **Precast Interlocking block pavers** | 2027-05-25 → 2027-05-30 (+5d) | 2027-06-03 → 2027-06-08 (+5d) |  |  |
| MKH2-02-004-CNS-1670 | Installation of Interlocking block pavers for sidewalk/footpath [Local 28 ] | 2027-05-25 → 2027-05-30 (+5d) | 2027-06-03 → 2027-06-08 (+5d) |  | -28d → -32d |
| 3 | **Pavement Markings** | 2027-06-10 → 2027-06-15 (+5d) | 2027-07-01 → 2027-07-06 (+5d) |  |  |
| MKH2-02-004-CNS-1750 | Pavement markings [Local 28 ] | 2027-06-10 → 2027-06-15 (+5d) | 2027-06-21 → 2027-06-26 (+5d) |  | -33d → -37d |
| MKH2-02-004-CNS-1830 | (Speed Hump) with retroreflectiveThermoplastic yellow [Local 28 ] | 2027-06-22 → 2027-06-27 (+5d) | 2027-07-01 → 2027-07-06 (+5d) |  | -33d → -37d |
| 4 | **Traffic Signage** | 2027-07-03 → 2027-07-07 (+4d) | 2027-07-12 → 2027-07-17 (+5d) |  |  |
| MKH2-02-004-CNS-1910 | Installation of Traffic Signs [Local 28 ] | 2027-07-03 → 2027-07-07 (+4d) | 2027-07-12 → 2027-07-17 (+5d) |  | -33d → -37d |
| 2 | **Storm Water Drainage** |  | 2027-03-27 → 2027-04-03 (+7d) |  |  |
| MKH2-02-004-CNS-2010 | Excavation & Compaction (FDT) [Local 28 ]-Stage 2 |  | 2026-12-02 → 2026-10-07 A (-56d) | 60% → 100% | 37d → none |
| MKH2-02-004-CNS-2130 | Sand Bedding [Local 28 ]-Stage 2 |  |  | 60% → 80% |  |
| 4 | **Concrete chambers Pipes** | 2027-02-23 → 2027-03-02 (+7d) | 2027-03-27 → 2027-04-03 (+7d) |  |  |
| MKH2-02-004-CNS-3160 | Excavation and Compaction (FDT) [Local 28 ] | 2027-02-23 → 2027-03-02 (+7d) | 2027-03-03 → 2027-03-14 (+11d) |  | -8d → -14d |
| MKH2-02-004-CNS-3250 | Installation of Pipes [Local 28 ] | 2027-03-04 → 2027-03-15 (+11d) | 2027-03-18 → 2027-03-25 (+7d) |  | -8d → -14d |

| ID | Task | Start | Finish | Total float |
| --- | --- | --- | --- | --- |
| MKH2-02-004-CNS-3340 | Backfilling & Compaction [Local 28 ] | 2027-03-20 → 2027-03-27 (+7d) | 2027-03-27 → 2027-04-03 (+7d) | -8d → -14d |
| 2 | **Local 10** |  | 2027-06-17 → 2027-06-22 (+5d) |  |
| 1 | **Road Works** |  | 2027-06-17 → 2027-06-22 (+5d) |  |
| 1 | **Eartworks & Site grading** |  | 2027-05-02 → 2027-05-06 (+4d) |  |
| MKH2-02-004-CNS-1010 | Road excavation [Local 10 ] |  | 2026-11-29 → 2026-12-06 (+7d) | 33d → 27d |
| MKH2-02-004-CNS-1130 | Road backfilling [Local 10 ] |  | 2026-11-29 → 2026-12-06 (+7d) | 33d → 27d |
| MKH2-02-004-CNS-1250 | Subgrade [Local 10 ] | 2027-04-18 → 2027-04-22 (+4d) | 2027-04-25 → 2027-04-29 (+4d) | -16d → -20d |
| MKH2-02-004-CNS-1330 | Aggregate base course [Local 10 ] | 2027-04-26 → 2027-05-01 (+5d) | 2027-05-02 → 2027-05-06 (+4d) | -16d → -20d |
| 2 | **Asphalt Works** | 2027-05-03 → 2027-05-08 (+5d) | 2027-05-11 → 2027-05-20 (+9d) |  |
| MKH2-02-004-CNS-1410 | Prime Coat (MC1) [Local 10 ] | 2027-05-03 → 2027-05-08 (+5d) | 2027-05-06 → 2027-05-11 (+5d) | -8d → -12d |
| MKH2-02-004-CNS-1490 | Bituminous base course [Local 10 ] | 2027-05-08 → 2027-05-12 (+4d) | 2027-05-11 → 2027-05-20 (+9d) | -6d → -10d |
| 3 | **Finishing Works** | 2027-05-25 → 2027-05-30 (+5d) | 2027-06-17 → 2027-06-22 (+5d) |  |
| 1 | **Precast Concrete Curb** | 2027-05-25 → 2027-05-30 (+5d) | 2027-05-31 → 2027-06-05 (+5d) |  |
| MKH2-02-004-CNS-1570 | Installation of Precast Concrete curb [Local 10 ] | 2027-05-25 → 2027-05-30 (+5d) | 2027-05-31 → 2027-06-05 (+5d) | -13d → -17d |
| 2 | **Precast Interlocking block pavers** | 2027-06-01 → 2027-06-06 (+5d) | 2027-06-06 → 2027-06-10 (+4d) |  |
| MKH2-02-004-CNS-1650 | Installation of Interlocking block pavers for sidewalk/footpath [Local 10 ] | 2027-06-01 → 2027-06-06 (+5d) | 2027-06-06 → 2027-06-10 (+4d) | -12d → -16d |
| 3 | **Pavement Markings** | 2027-06-07 → 2027-06-12 (+5d) | 2027-06-14 → 2027-06-19 (+5d) |  |
| MKH2-02-004-CNS-1730 | Pavement markings [Local 10 ] | 2027-06-07 → 2027-06-12 (+5d) | 2027-06-10 → 2027-06-15 (+5d) | -12d → -16d |
| MKH2-02-004-CNS-1810 | (Speed Hump) with retroreflectiveThermoplastic yellow [Local 10 ] | 2027-06-12 → 2027-06-16 (+4d) | 2027-06-14 → 2027-06-19 (+5d) | -12d → -16d |
| 4 | **Traffic Signage** | 2027-06-15 → 2027-06-20 (+5d) | 2027-06-17 → 2027-06-22 (+5d) |  |
| MKH2-02-004-CNS-1890 | Installation of Traffic Signs [Local 10 ] | 2027-06-15 → 2027-06-20 (+5d) | 2027-06-17 → 2027-06-22 (+5d) | -12d → -16d |
| 2 | **Storm Water Drainage** |  | 2027-02-03 → 2027-01-11 (-23d) |  |
| 1 | **Pipe Works** |  | 2026-12-19 → 2026-12-26 (+7d) |  |
| MKH2-02-004-CNS-1970 | Excavation & Compaction (FDT) [Local 10 ] |  | 2026-12-03 → 2026-12-10 (+7d) | 33d → 27d |
| MKH2-02-004-CNS-2090 | Sand Bedding [Local 10 ] |  | 2026-12-07 → 2026-12-14 (+7d) | 33d → 27d |
| MKH2-02-004-CNS-2210 | Installation of GRP Pipe [Local 10 ] |  | 2026-12-13 → 2026-12-20 (+7d) | 33d → 27d |
| MKH2-02-004-CNS-2330 | Sand Cover & Warning Tape [Local 10 ] | 2026-12-14 → 2026-12-21 (+7d) | 2026-12-15 → 2026-12-22 (+7d) | 39d → 33d |
| MKH2-02-004-CNS-2450 | Backfilling & Compaction [Local 10 ] | 2026-12-16 → 2026-12-23 (+7d) | 2026-12-19 → 2026-12-26 (+7d) | 39d → 33d |
| 2 | **Manholes** | 2026-12-14 → 2026-12-21 (+7d) | 2026-12-24 → 2026-12-31 (+7d) |  |
| MKH2-02-004-CNS-2580 | Installation of Manholes [Local 10 ]-Stage 1-[MH 01 to MH 07] | 2026-12-14 → 2026-12-21 (+7d) | 2026-12-19 → 2026-12-26 (+7d) | 33d → 27d |
| MKH2-02-004-CNS-2590 | Installation of Manholes [Local 10 ]-Stage 2-[MH 08 to MH 11] | 2026-12-20 → 2026-12-27 (+7d) | 2026-12-24 → 2026-12-31 (+7d) | 39d → 33d |
| 3 | **Catch Basins** | 2027-01-19 → 2026-12-27 (-23d) | 2027-01-23 → 2026-12-30 (-24d) |  |
| MKH2-02-004-CNS-2790 | Construction of Catch basins [Local 10 ] | 2027-01-19 → 2026-12-27 (-23d) | 2027-01-23 → 2026-12-30 (-24d) | 7d → 27d |
| 4 | **Concrete chambers Pipes** | 2027-01-24 → 2026-12-31 (-24d) | 2027-02-03 → 2027-01-11 (-23d) |  |
| MKH2-02-004-CNS-3130 | Excavation and Compaction (FDT) [Local 10 ] | 2027-01-24 → 2026-12-31 (-24d) | 2027-01-26 → 2027-01-03 (-23d) | 7d → 27d |
| MKH2-02-004-CNS-3220 | Installation of Pipes [Local 10 ] | 2027-01-27 → 2027-01-04 (-23d) | 2027-01-31 → 2027-01-07 (-24d) | 7d → 27d |
| MKH2-02-004-CNS-3310 | Backfilling & Compaction [Local 10 ] | 2027-02-01 → 2027-01-09 (-23d) | 2027-02-03 → 2027-01-11 (-23d) | 7d → 27d |
| 1 | **Collector 02** |  | 2027-06-22 → 2027-06-27 (+5d) |  |
| 1 | **Road Works** |  | 2027-06-22 → 2027-06-27 (+5d) |  |
| 1 | **Eartworks & Site grading** |  | 2027-05-20 → 2027-05-25 (+5d) |  |
| MKH2-02-004-CNS-1000 | Road excavation [Collector 02 ] |  | 2026-12-02 → 2026-12-09 (+7d) | 33d → 27d |
| MKH2-02-004-CNS-1120 | Road backfilling [Collector 02 ] |  | 2026-12-02 → 2026-12-09 (+7d) | 33d → 27d |
| MKH2-02-004-CNS-1240 | Subgrade [Collector 02 ] | 2027-05-03 → 2027-05-08 (+5d) | 2027-05-09 → 2027-05-13 (+4d) | -16d → -20d |
| MKH2-02-004-CNS-1320 | Aggregate base course [Collector 02 ] | 2027-05-10 → 2027-05-19 (+9d) | 2027-05-20 → 2027-05-25 (+5d) | -16d → -20d |
| 2 | **Asphalt Works** | 2027-05-22 → 2027-05-26 (+4d) | 2027-06-03 → 2027-06-08 (+5d) |  |
| MKH2-02-004-CNS-1400 | Prime Coat (MC1) [Collector 02 ] | 2027-05-22 → 2027-05-26 (+4d) | 2027-05-27 → 2027-06-01 (+5d) | -16d → -20d |
| MKH2-02-004-CNS-1480 | Bituminous base course [Collector 02 ] | 2027-05-29 → 2027-06-02 (+4d) | 2027-06-03 → 2027-06-08 (+5d) | -16d → -20d |
| 3 | **Finishing Works** | 2027-06-05 → 2027-06-09 (+4d) | 2027-06-22 → 2027-06-27 (+5d) |  |
| 1 | **Precast Concrete Curb** | 2027-06-05 → 2027-06-09 (+4d) | 2027-06-08 → 2027-06-13 (+5d) |  |
| MKH2-02-004-CNS-1560 | Installation of Precast Concrete curb [Collector 02 ] | 2027-06-05 → 2027-06-09 (+4d) | 2027-06-08 → 2027-06-13 (+5d) | -16d → -20d |
| 2 | **Precast Interlocking block pavers** | 2027-06-09 → 2027-06-14 (+5d) | 2027-06-12 → 2027-06-16 (+4d) |  |
| MKH2-02-004-CNS-1640 | Installation of Interlocking block pavers for sidewalk/footpath [Collector 02 ] | 2027-06-09 → 2027-06-14 (+5d) | 2027-06-12 → 2027-06-16 (+4d) | -16d → -20d |
| 3 | **Pavement Markings** | 2027-06-13 → 2027-06-17 (+4d) | 2027-06-19 → 2027-06-23 (+4d) |  |
| MKH2-02-004-CNS-1720 | Pavement markings [Collector 02 ] | 2027-06-13 → 2027-06-17 (+4d) | 2027-06-15 → 2027-06-20 (+5d) | -16d → -20d |
| MKH2-02-004-CNS-1800 | (Speed Hump) with retroreflectiveThermoplastic yellow [Collector 02 ] | 2027-06-16 → 2027-06-21 (+5d) | 2027-06-19 → 2027-06-23 (+4d) | -16d → -20d |
| 4 | **Traffic Signage** | 2027-06-20 → 2027-06-24 (+4d) | 2027-06-22 → 2027-06-27 (+5d) |  |
| MKH2-02-004-CNS-1880 | Installation of Traffic Signs [Collector 02 ] | 2027-06-20 → 2027-06-24 (+4d) | 2027-06-22 → 2027-06-27 (+5d) | -16d → -20d |
| 2 | **Storm Water Drainage** | 2026-12-03 → 2026-12-10 (+7d) | 2027-02-21 → 2027-03-01 (+8d) |  |
| 1 | **Pipe Works** | 2026-12-03 → 2026-12-10 (+7d) | 2026-12-27 → 2027-01-03 (+7d) |  |
| MKH2-02-004-CNS-1960 | Excavation & Compaction (FDT) [Collector 02 ] | 2026-12-03 → 2026-12-10 (+7d) | 2026-12-07 → 2026-12-14 (+7d) | 33d → 27d |
| MKH2-02-004-CNS-2080 | Sand Bedding [Collector 02 ] | 2026-12-08 → 2026-12-15 (+7d) | 2026-12-10 → 2026-12-17 (+7d) | 33d → 27d |
| MKH2-02-004-CNS-2200 | Installation of GRP Pipe [Collector 02 ] | 2026-12-12 → 2026-12-19 (+7d) | 2026-12-16 → 2026-12-23 (+7d) | 33d → 27d |
| MKH2-02-004-CNS-2320 | Sand Cover & Warning Tape [Collector 02 ] | 2026-12-17 → 2026-12-24 (+7d) | 2026-12-20 → 2026-12-27 (+7d) | 33d → 27d |
| MKH2-02-004-CNS-2440 | Backfilling & Compaction [Collector 02 ] | 2026-12-21 → 2026-12-28 (+7d) | 2026-12-27 → 2027-01-03 (+7d) | 33d → 27d |
| 2 | **Manholes** | 2026-12-17 → 2026-12-24 (+7d) | 2026-12-30 → 2027-01-06 (+7d) |  |
| MKH2-02-004-CNS-2560 | Installation of Manholes [Collector 02 ]-Stage 1-[MH 01 to MH 07] | 2026-12-17 → 2026-12-24 (+7d) | 2026-12-23 → 2026-12-30 (+7d) | 33d → 27d |
| MKH2-02-004-CNS-2570 | Installation of Manholes [Collector 02 ]-Stage 2-[MH 08 to MH 11] | 2026-12-24 → 2026-12-31 (+7d) | 2026-12-30 → 2027-01-06 (+7d) | 35d → 29d |
| 3 | **Catch Basins** | 2027-02-10 → 2027-02-17 (+7d) | 2027-02-13 → 2027-02-20 (+7d) |  |
| MKH2-02-004-CNS-2780 | Construction of Catch basins [Collector 02 ] | 2027-02-10 → 2027-02-17 (+7d) | 2027-02-13 → 2027-02-20 (+7d) | -8d → -14d |
| 4 | **Concrete chambers Pipes** | 2027-02-14 → 2027-02-21 (+7d) | 2027-02-21 → 2027-03-01 (+8d) |  |

| ID | Task | Start | Finish | Total float |
| --- | --- | --- | --- | --- |
| MKH2-02-004-CNS-3120 | Excavation and Compaction (FDT) [Collector 02 ] | 2027-02-14 → 2027-02-21 (+7d) | 2027-02-15 → 2027-02-23 (+8d) | -8d → -14d |
| MKH2-02-004-CNS-3210 | Installation of Pipes [Collector 02 ] | 2027-02-16 → 2027-02-24 (+8d) | 2027-02-18 → 2027-02-27 (+9d) | -8d → -14d |
| MKH2-02-004-CNS-3300 | Backfilling & Compaction [Collector 02 ] | 2027-02-20 → 2027-02-28 (+8d) | 2027-02-21 → 2027-03-01 (+8d) | -8d → -14d |
| 6 | **Testing and Commissioning** | 2027-03-28 → 2027-04-04 (+7d) | 2027-08-04 → 2027-08-09 (+5d) |  |
| MKH2-02-004-T&C-1000 | Test for Stormwater Utilities | 2027-03-28 → 2027-04-04 (+7d) | 2027-04-19 → 2027-04-26 (+7d) | -8d → -14d |
| MKH2-02-004-T&C-1010 | Test for Road Works | 2027-07-13 → 2027-07-18 (+5d) | 2027-08-04 → 2027-08-09 (+5d) | -33d → -37d |
| 7 | **Project Hand Over & Close-out** | 2027-04-20 → 2027-04-27 (+7d) | 2027-10-03 → 2027-10-07 (+4d) |  |
| 1 | **As-Built DWGs** | 2027-04-20 → 2027-04-27 (+7d) | 2027-09-08 → 2027-09-13 (+5d) |  |
| 1 | **As-Built DWGs Submittal** | 2027-04-20 → 2027-04-27 (+7d) | 2027-08-22 → 2027-08-26 (+4d) |  |
| MKH2-02-004-ABD-1000 | As-Built DWGs Submittal for Stormwater Utilities | 2027-04-20 → 2027-04-27 (+7d) | 2027-05-06 → 2027-05-13 (+7d) | -8d → -14d |
| MKH2-02-004-ABD-1010 | As-Built DWGs Submittal for Road Works | 2027-08-05 → 2027-08-10 (+5d) | 2027-08-22 → 2027-08-26 (+4d) | -33d → -37d |
| 2 | **As-Built DWGs Approval** | 2027-05-08 → 2027-05-19 (+11d) | 2027-09-08 → 2027-09-13 (+5d) |  |
| MKH2-02-004-ABD-1020 | As- Built DWGs Approval for Stormwater Utilities | 2027-05-08 → 2027-05-19 (+11d) | 2027-05-23 → 2027-05-30 (+7d) | -8d → -14d |
| MKH2-02-004-ABD-1030 | As- Built DWGs Approval for Road Works | 2027-08-23 → 2027-08-28 (+5d) | 2027-09-08 → 2027-09-13 (+5d) | -33d → -37d |
| 2 | **Demobilization** | 2027-09-09 → 2027-09-14 (+5d) | 2027-10-03 → 2027-10-07 (+4d) |  |
| MKH2-02-004-DEM-1000 | Demobilization of Manpower | 2027-09-09 → 2027-09-14 (+5d) | 2027-09-20 → 2027-09-26 (+6d) | -33d → -37d |
| MKH2-02-004-DEM-1010 | Removal of Equipment from Site | 2027-09-09 → 2027-09-14 (+5d) | 2027-09-20 → 2027-09-26 (+6d) | -33d → -37d |
| MKH2-02-004-DEM-1020 | Site Clean Up | 2027-09-09 → 2027-09-14 (+5d) | 2027-09-20 → 2027-09-26 (+6d) | -33d → -37d |
| MKH2-02-004-DEM-1030 | Removal of Site Offices and Structures | 2027-09-09 → 2027-09-14 (+5d) | 2027-09-20 → 2027-09-26 (+6d) | -33d → -37d |
| MKH2-02-004-DEM-1040 | Restoration of Ground Surfaces | 2027-09-21 → 2027-09-27 (+6d) | 2027-10-03 → 2027-10-07 (+4d) | -33d → -37d |

## Version 4 (data date 2026-10-20, saved 2026-10-20, file 2. MKH2-02-004-ENJ-WPR-017-20-10-2026 UP 14.xer)

Note of the change: Weekly folders named by the Thursday the week ends on: a report dated after one Thursday up to the next goes in the next Thursday's folder (26-Oct → W05 - 29-Oct-2026); all weeks moved accordingly, W00 removed

Last finish 2027-10-07 → 2027-10-14 (+7d). Complete tasks 142 → 148.

Changed:

| ID | Task | Start | Finish | Complete | Total float |
| --- | --- | --- | --- | --- | --- |
| 1 | **Key Milestones** |  | 2027-10-07 → 2027-10-14 (+7d) |  |  |
| 1 | **General Milestone** |  | 2027-10-07 → 2027-10-14 (+7d) |  |  |
| MKH2-02-004-KM-1010 | Project Completion Date | 2027-10-07 → 2027-10-14 (+7d) | 2027-10-07 → 2027-10-14 (+7d) |  | -37d → -43d |
| 2 | **Contractual Milestone** |  | 2027-10-07 → 2027-10-14 (+7d) |  |  |
| 2 | **Construction** | 2027-04-03 → 2027-04-10 (+7d) | 2027-10-07 → 2027-10-14 (+7d) |  |  |
| MKH2-02-004-KM-1060 | Completion of Storm Water Drainage | 2027-04-03 → 2027-04-10 (+7d) | 2027-04-03 → 2027-04-10 (+7d) |  | -14d → -20d |
| MKH2-02-004-KM-1050 | Completion of Road Works | 2027-06-08 → 2027-06-15 (+7d) | 2027-06-08 → 2027-06-15 (+7d) |  | -20d → -26d |
| MKH2-02-004-KM-1070 | Completion of Entire Project | 2027-10-07 → 2027-10-14 (+7d) | 2027-10-07 → 2027-10-14 (+7d) |  | -37d → -43d |
| 4 | **Procurement** |  | 2027-01-13 → 2027-01-20 (+7d) |  |  |
| 1 | **Road Works - Civil** |  | 2027-01-13 → 2027-01-20 (+7d) |  |  |
| 4 | **Aggregate Base Course** | 2026-10-13 → 2026-10-20 (+7d) | 2026-12-27 → 2027-01-03 (+7d) |  |  |
| MKH2-02-004-PRC-1000 | PO for Aggregate Base Course | 2026-10-13 → 2026-10-20 (+7d) | 2026-10-18 → 2026-10-25 (+7d) |  | -24d → -30d |
| MKH2-02-004-PRC-1010 | Material Delivery for Aggregate Base Course-Stage 1 | 2026-10-19 → 2026-10-26 (+7d) | 2026-11-22 → 2026-11-29 (+7d) |  | -24d → -30d |
| MKH2-02-004-PRC-1020 | Material Delivery for Aggregate Base Course-Stage 2 | 2026-11-23 → 2026-11-30 (+7d) | 2026-12-27 → 2027-01-03 (+7d) |  | -24d → -30d |
| 5 | **Bituminous Base Course** | 2026-10-19 → 2026-10-26 (+7d) | 2027-01-13 → 2027-01-20 (+7d) |  |  |
| MKH2-02-004-PRC-1030 | PO for Bituminous Base Course | 2026-10-19 → 2026-10-26 (+7d) | 2026-10-24 → 2026-10-31 (+7d) |  | -22d → -28d |
| MKH2-02-004-PRC-1040 | Material Delivery for Bituminous Base Course-Stage 1 | 2026-10-25 → 2026-11-01 (+7d) | 2026-12-03 → 2026-12-10 (+7d) |  | -15d → -21d |
| MKH2-02-004-PRC-1050 | Material Delivery for Bituminous Base Course-Stage 2 | 2026-12-05 → 2026-12-12 (+7d) | 2027-01-13 → 2027-01-20 (+7d) |  | -15d → -21d |
| 7 | **Precast Concrete Curb** | 2026-10-25 → 2026-11-01 (+7d) | 2027-01-07 → 2027-01-14 (+7d) |  |  |
| MKH2-02-004-PRC-1060 | PO for Precast Concrete Curb | 2026-10-25 → 2026-11-01 (+7d) | 2026-10-29 → 2026-11-05 (+7d) |  | -22d → -28d |
| MKH2-02-004-PRC-1070 | Material Fabrication for Precast Concrete Curb | 2026-10-31 → 2026-11-07 (+7d) | 2026-12-03 → 2026-12-10 (+7d) |  | -19d → -25d |
| MKH2-02-004-PRC-1080 | Material Delivery for Precast Concrete Curb | 2026-12-05 → 2026-12-12 (+7d) | 2027-01-07 → 2027-01-14 (+7d) |  | -19d → -25d |
| 8 | **Interlocking Block Pavers** | 2026-10-31 → 2026-11-07 (+7d) | 2027-01-11 → 2027-01-18 (+7d) |  |  |
| MKH2-02-004-PRC-1090 | PO for Interlocking Block Pavers | 2026-10-31 → 2026-11-07 (+7d) | 2026-11-02 → 2026-11-09 (+7d) |  | -22d → -28d |
| MKH2-02-004-PRC-1100 | Material Fabrication for Interlocking Block Pavers | 2026-11-03 → 2026-11-10 (+7d) | 2026-12-07 → 2026-12-14 (+7d) |  | -22d → -28d |
| MKH2-02-004-PRC-1110 | Material Delivery for Interlocking Block Pavers | 2026-12-08 → 2026-12-15 (+7d) | 2027-01-11 → 2027-01-18 (+7d) |  | -22d → -28d |
| 9 | **Pavement Markings** | 2026-11-03 → 2026-11-10 (+7d) | 2027-01-04 → 2027-01-11 (+7d) |  |  |
| MKH2-02-004-PRC-1120 | PO for Pavement Markings | 2026-11-03 → 2026-11-10 (+7d) | 2026-11-07 → 2026-11-14 (+7d) |  | -16d → -22d |
| MKH2-02-004-PRC-1130 | Material Fabrication for Pavement Markings | 2026-11-08 → 2026-11-15 (+7d) | 2026-12-06 → 2026-12-13 (+7d) |  | -16d → -22d |
| MKH2-02-004-PRC-1140 | Material Delivery for Pavement Markings | 2026-12-07 → 2026-12-14 (+7d) | 2027-01-04 → 2027-01-11 (+7d) |  | -16d → -22d |
| 7 | **Stormwater Utilities** |  | 2026-11-14 → 2026-11-21 (+7d) |  |  |
| 7 | **Catch Basins** |  | 2026-11-14 → 2026-11-21 (+7d) |  |  |
| MKH2-02-004-PRC-1300 | Material Delivery for Catch Basins-Stage 2 |  | 2026-10-21 → 2026-10-28 (+7d) |  | 31d → 35d |
| MKH2-02-004-PRC-1310 | Material Delivery for Catch Basins-Stage 3 | 2026-10-22 → 2026-10-29 (+7d) | 2026-11-14 → 2026-11-21 (+7d) |  | 31d → 35d |
| 5 | **Construction** |  | 2027-07-17 → 2027-07-24 (+7d) |  |  |
| 1 | **Roads** |  | 2027-07-17 → 2027-07-24 (+7d) |  |  |
| 3 | **Local 17** |  | 2027-05-02 → 2027-05-09 (+7d) |  |  |
| 1 | **Road Works** |  | 2027-05-02 → 2027-05-09 (+7d) |  |  |
| 1 | **Eartworks & Site grading** |  | 2027-01-28 → 2027-02-04 (+7d) |  |  |
| MKH2-02-004-CNS-1150 | Road backfilling [Local 17 ]-Stage 2 |  | 2026-10-29 → 2026-11-05 (+7d) | 45% → 50% | -25d → -31d |
| MKH2-02-004-CNS-1030 | Road excavation [Local 17 ]-Stage 2 |  | 2026-10-24 → 2026-10-31 (+7d) |  | -25d → -31d |
| MKH2-02-004-CNS-1260 | Subgrade [Local 17 ] | 2026-12-26 → 2027-01-02 (+7d) | 2027-01-11 → 2027-01-18 (+7d) |  | -37d → -43d |
| MKH2-02-004-CNS-1340 | Aggregate base course [Local 17 ] | 2027-01-12 → 2027-01-19 (+7d) | 2027-01-28 → 2027-02-04 (+7d) |  | -37d → -43d |
| 2 | **Asphalt Works** | 2027-01-30 → 2027-02-06 (+7d) | 2027-02-28 → 2027-03-07 (+7d) |  |  |
| MKH2-02-004-CNS-1420 | Prime Coat (MC1) [Local 17 ] | 2027-01-30 → 2027-02-06 (+7d) | 2027-02-09 → 2027-02-16 (+7d) |  | -28d → -34d |
| MKH2-02-004-CNS-1500 | Bituminous base course [Local 17 ] | 2027-02-10 → 2027-02-17 (+7d) | 2027-02-28 → 2027-03-07 (+7d) |  | -28d → -34d |
| 3 | **Finishing Works** | 2027-03-01 → 2027-03-08 (+7d) | 2027-05-02 → 2027-05-09 (+7d) |  |  |
| 1 | **Precast Concrete Curb** | 2027-03-01 → 2027-03-08 (+7d) | 2027-03-17 → 2027-03-24 (+7d) |  |  |
| MKH2-02-004-CNS-1580 | Installation of Precast Concrete curb [Local 17 ] | 2027-03-01 → 2027-03-08 (+7d) | 2027-03-17 → 2027-03-24 (+7d) |  | -28d → -34d |
| 2 | **Precast Interlocking block pavers** | 2027-03-18 → 2027-03-25 (+7d) | 2027-03-30 → 2027-04-06 (+7d) |  |  |
| MKH2-02-004-CNS-1660 | Installation of Interlocking block pavers for sidewalk/footpath [Local 17 ] | 2027-03-18 → 2027-03-25 (+7d) | 2027-03-30 → 2027-04-06 (+7d) |  | -28d → -34d |
| 3 | **Pavement Markings** | 2027-03-31 → 2027-04-07 (+7d) | 2027-04-18 → 2027-04-25 (+7d) |  |  |
| MKH2-02-004-CNS-1740 | Pavement markings [Local 17 ] | 2027-03-31 → 2027-04-07 (+7d) | 2027-04-08 → 2027-04-15 (+7d) |  | -28d → -34d |
| MKH2-02-004-CNS-1820 | (Speed Hump) with retroreflectiveThermoplastic yellow [Local 17 ] | 2027-04-10 → 2027-04-17 (+7d) | 2027-04-18 → 2027-04-25 (+7d) |  | -28d → -34d |
| 4 | **Traffic Signage** | 2027-04-19 → 2027-04-26 (+7d) | 2027-05-02 → 2027-05-09 (+7d) |  |  |
| MKH2-02-004-CNS-1900 | Installation of Traffic Signs [Local 17 ] | 2027-04-19 → 2027-04-26 (+7d) | 2027-05-02 → 2027-05-09 (+7d) |  | -28d → -34d |
| 2 | **Storm Water Drainage** | 2026-10-13 → 2026-10-20 (+7d) | 2027-02-16 → 2027-02-24 (+8d) |  |  |
| 1 | **Pipe Works** | 2026-10-13 → 2026-10-20 (+7d) | 2026-12-24 → 2026-12-31 (+7d) |  |  |
| MKH2-02-004-CNS-1980 | Excavation & Compaction (FDT) [Local 17 ]-Stage 1 | 2026-10-13 → 2026-10-20 (+7d) | 2026-10-27 → 2026-11-03 (+7d) |  | -37d → -43d |
| MKH2-02-004-CNS-1990 | Excavation & Compaction (FDT) [Local 17 ]-Stage 2 | 2026-10-28 → 2026-11-04 (+7d) | 2026-11-11 → 2026-11-18 (+7d) |  | -36d → -42d |
| MKH2-02-004-CNS-2100 | Sand Bedding [Local 17 ]-Stage 1 | 2026-10-28 → 2026-11-04 (+7d) | 2026-11-05 → 2026-11-12 (+7d) |  | -37d → -43d |
| MKH2-02-004-CNS-2220 | Installation of GRP Pipe [Local 17 ]-Stage 1 | 2026-11-07 → 2026-11-14 (+7d) | 2026-11-22 → 2026-11-29 (+7d) |  | -37d → -43d |
| MKH2-02-004-CNS-2110 | Sand Bedding [Local 17 ]-Stage 2 | 2026-11-12 → 2026-11-19 (+7d) | 2026-11-21 → 2026-11-28 (+7d) |  | -36d → -42d |
| MKH2-02-004-CNS-2230 | Installation of GRP Pipe [Local 17 ]-Stage 2 | 2026-11-23 → 2026-11-30 (+7d) | 2026-12-08 → 2026-12-15 (+7d) |  | -37d → -43d |
| MKH2-02-004-CNS-2340 | Sand Cover & Warning Tape [Local 17 ]-Stage 1 | 2026-11-23 → 2026-11-30 (+7d) | 2026-11-30 → 2026-12-07 (+7d) |  | -30d → -36d |
| MKH2-02-004-CNS-2460 | Backfilling & Compaction [Local 17 ]-Stage 1 | 2026-12-01 → 2026-12-08 (+7d) | 2026-12-08 → 2026-12-15 (+7d) |  | -30d → -36d |
| MKH2-02-004-CNS-2350 | Sand Cover & Warning Tape [Local 17 ]-Stage 2 | 2026-12-09 → 2026-12-16 (+7d) | 2026-12-16 → 2026-12-23 (+7d) |  | -37d → -43d |
| MKH2-02-004-CNS-2470 | Backfilling & Compaction [Local 17 ]-Stage 2 | 2026-12-17 → 2026-12-24 (+7d) | 2026-12-24 → 2026-12-31 (+7d) |  | -37d → -43d |
| 2 | **Manholes** | 2026-11-23 → 2026-11-30 (+7d) | 2027-01-02 → 2027-01-09 (+7d) |  |  |
| MKH2-02-004-CNS-2600 | Installation of Manholes [Local 17 ]-Stage 1-[MH 01 to MH 07] | 2026-11-23 → 2026-11-30 (+7d) | 2026-11-30 → 2026-12-07 (+7d) |  | -25d → -31d |

| ID | Task | Start | Finish | Complete | Total float |
| --- | --- | --- | --- | --- | --- |
| MKH2-02-004-CNS-2610 | Installation of Manholes [Local 17 ]-Stage 2-[MH 08 to MH 14] | 2026-12-01 → 2026-12-08 (+7d) | 2026-12-08 → 2026-12-15 (+7d) |  | -11d → -17d |
| MKH2-02-004-CNS-2620 | Installation of Manholes [Local 17 ]-Stage 3-[MH 15 to MH 21] | 2026-12-09 → 2026-12-16 (+7d) | 2026-12-16 → 2026-12-23 (+7d) |  | -11d → -17d |
| MKH2-02-004-CNS-2630 | Installation of Manholes [Local 17 ]-Stage 4-[MH 22 to MH 28] | 2026-12-17 → 2026-12-24 (+7d) | 2026-12-24 → 2026-12-31 (+7d) |  | -11d → -17d |
| MKH2-02-004-CNS-2640 | Installation of Manholes [Local 17 ]-Stage 5-[MH 29 to MH 33] | 2026-12-26 → 2027-01-02 (+7d) | 2027-01-02 → 2027-01-09 (+7d) |  | -11d → -17d |
| 3 | **Catch Basins** | 2026-12-01 → 2026-12-08 (+7d) | 2027-02-16 → 2027-02-24 (+8d) |  |  |
| MKH2-02-004-CNS-2800 | Construction of Catch basins [Local 17 ]-Stage 1-[01 to 10] | 2026-12-01 → 2026-12-08 (+7d) | 2026-12-08 → 2026-12-15 (+7d) |  | -25d → -31d |
| MKH2-02-004-CNS-2810 | Construction of Catch basins [Local 17 ]-Stage 2-[11 to 20] | 2026-12-09 → 2026-12-16 (+7d) | 2026-12-16 → 2026-12-23 (+7d) |  | -14d → -20d |
| MKH2-02-004-CNS-2820 | Construction of Catch basins [Local 17 ]-Stage 3-[21 to 30] | 2026-12-17 → 2026-12-24 (+7d) | 2026-12-24 → 2026-12-31 (+7d) |  | -14d → -20d |
| MKH2-02-004-CNS-2830 | Construction of Catch basins [Local 17 ]-Stage 4-[31 to 40] | 2026-12-26 → 2027-01-02 (+7d) | 2027-01-02 → 2027-01-09 (+7d) |  | -14d → -20d |
| MKH2-02-004-CNS-2840 | Construction of Catch basins [Local 17 ]-Stage 5-[41 to 50] | 2027-01-03 → 2027-01-10 (+7d) | 2027-01-10 → 2027-01-17 (+7d) |  | -14d → -20d |
| MKH2-02-004-CNS-2850 | Construction of Catch basins [Local 17 ]-Stage 6-[51 to 60] | 2027-01-11 → 2027-01-18 (+7d) | 2027-01-18 → 2027-01-25 (+7d) |  | -14d → -20d |
| MKH2-02-004-CNS-2860 | Construction of Catch basins [Local 17 ]-Stage 7-[61 to 70] | 2027-01-19 → 2027-01-26 (+7d) | 2027-01-26 → 2027-02-02 (+7d) |  | -14d → -20d |
| MKH2-02-004-CNS-2870 | Construction of Catch basins [Local 17 ]-Stage 8-[71 to 80] | 2027-01-27 → 2027-02-03 (+7d) | 2027-02-03 → 2027-02-10 (+7d) |  | -14d → -20d |
| MKH2-02-004-CNS-2880 | Construction of Catch basins [Local 17 ]-Stage 9-[81 to 90] | 2027-02-04 → 2027-02-11 (+7d) | 2027-02-11 → 2027-02-18 (+7d) |  | -14d → -20d |
| MKH2-02-004-CNS-2890 | Construction of Catch basins [Local 17 ]-Stage 10-[91 to 96] | 2027-02-13 → 2027-02-20 (+7d) | 2027-02-16 → 2027-02-24 (+8d) |  | -14d → -20d |
| 4 | **Concrete chambers Pipes** | 2026-12-09 → 2026-12-16 (+7d) | 2027-01-30 → 2027-02-06 (+7d) |  |  |
| MKH2-02-004-CNS-3140 | Excavation and Compaction (FDT) [Local 17 ]-Stage 1 | 2026-12-09 → 2026-12-16 (+7d) | 2026-12-21 → 2026-12-28 (+7d) |  | -25d → -31d |
| MKH2-02-004-CNS-3150 | Excavation and Compaction (FDT) [Local 17 ]-Stage 2 | 2026-12-22 → 2026-12-29 (+7d) | 2027-01-03 → 2027-01-10 (+7d) |  | -24d → -30d |
| MKH2-02-004-CNS-3230 | Installation of Pipes [Local 17 ]-Stage 1 | 2026-12-22 → 2026-12-29 (+7d) | 2027-01-04 → 2027-01-11 (+7d) |  | -25d → -31d |
| MKH2-02-004-CNS-3240 | Installation of Pipes [Local 17 ]-Stage 2 | 2027-01-05 → 2027-01-12 (+7d) | 2027-01-18 → 2027-01-25 (+7d) |  | -25d → -31d |
| MKH2-02-004-CNS-3320 | Backfilling & Compaction [Local 17 ]-Stage 1 | 2027-01-05 → 2027-01-12 (+7d) | 2027-01-16 → 2027-01-23 (+7d) |  | -23d → -29d |
| MKH2-02-004-CNS-3330 | Backfilling & Compaction [Local 17 ]-Stage 2 | 2027-01-19 → 2027-01-26 (+7d) | 2027-01-30 → 2027-02-06 (+7d) |  | -25d → -31d |
| 5 | **Local 11** |  | 2027-04-29 → 2027-05-06 (+7d) |  |  |
| 1 | **Road Works** |  | 2027-04-29 → 2027-05-06 (+7d) |  |  |
| 1 | **Eartworks & Site grading** |  | 2027-02-08 → 2027-02-15 (+7d) |  |  |
| MKH2-02-004-CNS-1190 | Road backfilling [Local 11 ]-Stage 2 | 2026-10-31 → 2026-10-15 A (-16d) | 2026-11-11 → 2026-11-15 (+4d) | 0% → 25% | -12d → -13d |
| MKH2-02-004-CNS-1280 | Subgrade [Local 11 ] | 2027-01-12 → 2027-01-19 (+7d) | 2027-01-21 → 2027-01-28 (+7d) |  | -36d → -42d |
| MKH2-02-004-CNS-1360 | Aggregate base course [Local 11 ] | 2027-01-30 → 2027-02-06 (+7d) | 2027-02-08 → 2027-02-15 (+7d) |  | -37d → -43d |
| 2 | **Asphalt Works** | 2027-02-10 → 2027-02-17 (+7d) | 2027-03-08 → 2027-03-18 (+10d) |  |  |
| MKH2-02-004-CNS-1440 | Prime Coat (MC1) [Local 11 ] | 2027-02-10 → 2027-02-17 (+7d) | 2027-02-21 → 2027-03-01 (+8d) |  | -26d → -32d |
| MKH2-02-004-CNS-1520 | Bituminous base course [Local 11 ] | 2027-02-23 → 2027-03-02 (+7d) | 2027-03-08 → 2027-03-18 (+10d) |  | -26d → -32d |
| 3 | **Finishing Works** | 2027-03-09 → 2027-03-20 (+11d) | 2027-04-29 → 2027-05-06 (+7d) |  |  |
| 1 | **Precast Concrete Curb** | 2027-03-09 → 2027-03-20 (+11d) | 2027-03-24 → 2027-03-31 (+7d) |  |  |
| MKH2-02-004-CNS-1600 | Installation of Precast Concrete curb [Local 11 ] | 2027-03-09 → 2027-03-20 (+11d) | 2027-03-24 → 2027-03-31 (+7d) |  | -26d → -32d |
| 2 | **Precast Interlocking block pavers** | 2027-03-25 → 2027-04-01 (+7d) | 2027-04-05 → 2027-04-12 (+7d) |  |  |
| MKH2-02-004-CNS-1680 | Installation of Interlocking block pavers for sidewalk/footpath [Local 11 ] | 2027-03-25 → 2027-04-01 (+7d) | 2027-04-05 → 2027-04-12 (+7d) |  | -26d → -32d |
| 3 | **Pavement Markings** | 2027-04-06 → 2027-04-13 (+7d) | 2027-04-21 → 2027-04-28 (+7d) |  |  |
| MKH2-02-004-CNS-1760 | Pavement markings [Local 11 ] | 2027-04-06 → 2027-04-13 (+7d) | 2027-04-13 → 2027-04-20 (+7d) |  | -26d → -32d |
| MKH2-02-004-CNS-1840 | (Speed Hump) with retroreflectiveThermoplastic yellow [Local 11 ] | 2027-04-14 → 2027-04-21 (+7d) | 2027-04-21 → 2027-04-28 (+7d) |  | -26d → -32d |
| 4 | **Traffic Signage** | 2027-04-22 → 2027-04-29 (+7d) | 2027-04-29 → 2027-05-06 (+7d) |  |  |
| MKH2-02-004-CNS-1920 | Installation of Traffic Signs [Local 11 ] | 2027-04-22 → 2027-04-29 (+7d) | 2027-04-29 → 2027-05-06 (+7d) |  | -26d → -32d |
| 2 | **Storm Water Drainage** |  | 2026-12-22 → 2026-12-26 (+4d) |  |  |
| 1 | **Pipe Works** |  | 2026-12-14 → 2026-12-15 (+1d) |  |  |
| MKH2-02-004-CNS-2030 | Excavation & Compaction (FDT) [Local 11 ]-Stage 2 |  | 2026-11-16 → 2026-11-19 (+3d) |  | -12d → -13d |
| MKH2-02-004-CNS-2380 | Sand Cover & Warning Tape [Local 11 ]-Stage 1 |  | 2026-11-14 → 2026-10-17 A (-28d) | 80% → 100% | 4d → none |
| MKH2-02-004-CNS-2150 | Sand Bedding [Local 11 ]-Stage 2 |  | 2026-11-19 → 2026-11-23 (+4d) |  | -12d → -13d |
| MKH2-02-004-CNS-2270 | Installation of GRP Pipe [Local 11 ]-Stage 2 |  | 2026-12-02 → 2026-12-06 (+4d) |  | -12d → -13d |
| MKH2-02-004-CNS-2500 | Backfilling & Compaction [Local 11 ]-Stage 1 |  | 2026-11-16 → 2026-10-17 A (-30d) | 70% → 100% | 7d → none |
| MKH2-02-004-CNS-2390 | Sand Cover & Warning Tape [Local 11 ]-Stage 2 | 2026-12-03 → 2026-10-18 A (-46d) | 2026-12-08 → 2026-12-09 (+1d) | 0% → 60% | -12d → -13d |
| MKH2-02-004-CNS-2510 | Backfilling & Compaction [Local 11 ]-Stage 2 | 2026-12-09 → 2026-10-18 A (-52d) | 2026-12-14 → 2026-12-15 (+1d) | 0% → 60% | -12d → -13d |
| 2 | **Manholes** |  | 2026-11-19 → 2026-11-21 (+2d) |  |  |
| MKH2-02-004-CNS-2700 | Installation of Manholes [Local 11 ]-Stage 3-[MH 15 to MH 20] | 2026-11-12 → 2026-10-18 A (-25d) | 2026-11-19 → 2026-11-21 (+2d) | 0% → 20% | 37d → 36d |
| 3 | **Catch Basins** | 2026-11-12 → 2026-11-16 (+4d) | 2026-12-22 → 2026-12-26 (+4d) |  |  |
| MKH2-02-004-CNS-2950 | Construction of Catch basins [Local 11 ]-Stage 1-[01 to 10] | 2026-11-12 → 2026-11-16 (+4d) | 2026-11-19 → 2026-11-23 (+4d) |  | 27d → 24d |
| MKH2-02-004-CNS-2960 | Construction of Catch basins [Local 11 ]-Stage 2-[11 to 20] | 2026-11-21 → 2026-11-24 (+3d) | 2026-11-28 → 2026-12-01 (+3d) |  | 30d → 27d |
| MKH2-02-004-CNS-2970 | Construction of Catch basins [Local 11 ]-Stage 3-[21 to 30] | 2026-11-29 → 2026-12-02 (+3d) | 2026-12-06 → 2026-12-09 (+3d) |  | 30d → 27d |
| MKH2-02-004-CNS-2980 | Construction of Catch basins [Local 11 ]-Stage 4-[31 to 40] | 2026-12-07 → 2026-12-10 (+3d) | 2026-12-14 → 2026-12-17 (+3d) |  | 30d → 27d |
| MKH2-02-004-CNS-2990 | Construction of Catch basins [Local 11 ]-Stage 5-[41 to 50] | 2026-12-15 → 2026-12-19 (+4d) | 2026-12-22 → 2026-12-26 (+4d) |  | 30d → 27d |
| 4 | **Concrete chambers Pipes** | 2026-11-21 → 2026-11-24 (+3d) | 2026-12-19 → 2026-12-22 (+3d) |  |  |
| MKH2-02-004-CNS-3170 | Excavation and Compaction (FDT) [Local 11 ] | 2026-11-21 → 2026-11-24 (+3d) | 2026-11-30 → 2026-12-03 (+3d) |  | 27d → 24d |
| MKH2-02-004-CNS-3260 | Installation of Pipes [Local 11 ] | 2026-12-01 → 2026-12-05 (+4d) | 2026-12-08 → 2026-12-12 (+4d) |  | 27d → 24d |
| MKH2-02-004-CNS-3350 | Backfilling & Compaction [Local 11 ] | 2026-12-09 → 2026-12-13 (+4d) | 2026-12-19 → 2026-12-22 (+3d) |  | 27d → 24d |
| 6 | **Local 29** |  | 2027-04-26 → 2027-05-03 (+7d) |  |  |
| 1 | **Road Works** |  | 2027-04-26 → 2027-05-03 (+7d) |  |  |
| 1 | **Eartworks & Site grading** |  | 2027-02-25 → 2027-03-04 (+7d) |  |  |
| MKH2-02-004-CNS-1200 | Road backfilling [Local 29 ] |  | 2026-11-17 → 2026-11-21 (+4d) |  |  |
| MKH2-02-004-CNS-1290 | Subgrade [Local 29 ] | 2027-01-23 → 2027-01-30 (+7d) | 2027-02-07 → 2027-02-14 (+7d) |  | -36d → -42d |
| MKH2-02-004-CNS-1370 | Aggregate base course [Local 29 ] | 2027-02-09 → 2027-02-16 (+7d) | 2027-02-25 → 2027-03-04 (+7d) |  | -37d → -43d |
| 2 | **Asphalt Works** | 2027-02-27 → 2027-03-06 (+7d) | 2027-03-22 → 2027-03-29 (+7d) |  |  |
| MKH2-02-004-CNS-1450 | Prime Coat (MC1) [Local 29 ] | 2027-02-27 → 2027-03-06 (+7d) | 2027-03-07 → 2027-03-17 (+10d) |  | -25d → -31d |

| ID | Task | Start | Finish | Complete | Total float |
| --- | --- | --- | --- | --- | --- |
| MKH2-02-004-CNS-1530 | Bituminous base course [Local 29 ] | 2027-03-08 → 2027-03-18 (+10d) | 2027-03-22 → 2027-03-29 (+7d) |  | -23d → -29d |
| 3 | **Finishing Works** | 2027-03-23 → 2027-03-30 (+7d) | 2027-04-26 → 2027-05-03 (+7d) |  |  |
| 1 | **Precast Concrete Curb** | 2027-03-23 → 2027-03-30 (+7d) | 2027-03-29 → 2027-04-05 (+7d) |  |  |
| MKH2-02-004-CNS-1610 | Installation of Precast Concrete curb [Local 29 ] | 2027-03-23 → 2027-03-30 (+7d) | 2027-03-29 → 2027-04-05 (+7d) |  | -23d → -29d |
| 2 | **Precast Interlocking block pavers** | 2027-03-30 → 2027-04-06 (+7d) | 2027-04-05 → 2027-04-12 (+7d) |  |  |
| MKH2-02-004-CNS-1690 | Installation of Interlocking block pavers for sidewalk/footpath [Local 29 ] | 2027-03-30 → 2027-04-06 (+7d) | 2027-04-05 → 2027-04-12 (+7d) |  | -23d → -29d |
| 3 | **Pavement Markings** | 2027-04-06 → 2027-04-13 (+7d) | 2027-04-19 → 2027-04-26 (+7d) |  |  |
| MKH2-02-004-CNS-1770 | Pavement markings [Local 29 ] | 2027-04-06 → 2027-04-13 (+7d) | 2027-04-12 → 2027-04-19 (+7d) |  | -23d → -29d |
| MKH2-02-004-CNS-1850 | (Speed Hump) with retroreflectiveThermoplastic yellow [Local 29 ] | 2027-04-13 → 2027-04-20 (+7d) | 2027-04-19 → 2027-04-26 (+7d) |  | -23d → -29d |
| 4 | **Traffic Signage** | 2027-04-20 → 2027-04-27 (+7d) | 2027-04-26 → 2027-05-03 (+7d) |  |  |
| MKH2-02-004-CNS-1930 | Installation of Traffic Signs [Local 29 ] | 2027-04-20 → 2027-04-27 (+7d) | 2027-04-26 → 2027-05-03 (+7d) |  | -23d → -29d |
| 2 | **Storm Water Drainage** | 2026-11-18 → 2026-10-14 (-35d) | 2027-01-25 → 2027-01-07 (-18d) |  |  |
| 1 | **Pipe Works** | 2026-11-18 → 2026-10-14 (-35d) | 2026-12-24 → 2026-12-07 (-17d) |  |  |
| MKH2-02-004-CNS-2040 | Excavation & Compaction (FDT) [Local 29 ] | 2026-11-18 → 2026-10-14 A (-35d) | 2026-11-24 → 2026-11-28 (+4d) | 0% → 98% | -12d → 3d |
| MKH2-02-004-CNS-2160 | Sand Bedding [Local 29 ] | 2026-11-25 → 2026-10-15 A (-41d) | 2026-12-01 → 2026-11-30 (-1d) | 0% → 90% | -12d → 3d |
| MKH2-02-004-CNS-2280 | Installation of GRP Pipe [Local 29 ] | 2026-12-02 → 2026-10-17 A (-46d) | 2026-12-12 → 2026-12-02 (-10d) | 0% → 90% | -12d → 3d |
| MKH2-02-004-CNS-2400 | Sand Cover & Warning Tape [Local 29 ] | 2026-12-13 → 2026-10-18 A (-56d) | 2026-12-17 → 2026-12-05 (-12d) | 0% → 75% | -12d → 3d |
| MKH2-02-004-CNS-2520 | Backfilling & Compaction [Local 29 ] | 2026-12-19 → 2026-10-19 A (-61d) | 2026-12-24 → 2026-12-07 (-17d) | 0% → 75% | -12d → 3d |
| 2 | **Manholes** | 2026-12-13 → 2026-10-17 (-57d) | 2026-12-28 → 2026-12-06 (-22d) |  |  |
| MKH2-02-004-CNS-2710 | Installation of Manholes [Local 29 ]-Stage 1-[MH 01 to MH 07] | 2026-12-13 → 2026-10-17 A (-57d) | 2026-12-20 → 2026-10-19 A (-62d) | 0% → 100% | -5d → none |
| MKH2-02-004-CNS-2720 | Installation of Manholes [Local 29 ]-Stage 2-[MH 08 to MH 15] | 2026-12-21 → 2026-10-19 A (-63d) | 2026-12-28 → 2026-12-06 (-22d) | 0% → 70% | -3d → 16d |
| 3 | **Catch Basins** | 2026-12-21 → 2026-12-03 (-18d) | 2027-01-18 → 2026-12-31 (-18d) |  |  |
| MKH2-02-004-CNS-3000 | Construction of Catch basins [Local 29 ]-Stage 1-[01 to 10] | 2026-12-21 → 2026-12-03 (-18d) | 2026-12-28 → 2026-12-10 (-18d) |  | -5d → 10d |
| MKH2-02-004-CNS-3010 | Construction of Catch basins [Local 29 ]-Stage 2-[11 to 20] | 2026-12-29 → 2026-12-12 (-17d) | 2027-01-05 → 2026-12-19 (-17d) |  | -5d → 10d |
| MKH2-02-004-CNS-3020 | Construction of Catch basins [Local 29 ]-Stage 3-[21 to 30] | 2027-01-06 → 2026-12-20 (-17d) | 2027-01-13 → 2026-12-27 (-17d) |  | -5d → 10d |
| MKH2-02-004-CNS-3030 | Construction of Catch basins [Local 29 ]-Stage 4-[31 to 35] | 2027-01-14 → 2026-12-28 (-17d) | 2027-01-18 → 2026-12-31 (-18d) |  | -5d → 10d |
| 4 | **Concrete chambers Pipes** | 2026-12-29 → 2026-12-12 (-17d) | 2027-01-25 → 2027-01-07 (-18d) |  |  |
| MKH2-02-004-CNS-3180 | Excavation and Compaction (FDT) [Local 29 ] | 2026-12-29 → 2026-12-12 (-17d) | 2027-01-05 → 2026-12-19 (-17d) |  | -3d → 12d |
| MKH2-02-004-CNS-3270 | Installation of Pipes [Local 29 ] | 2027-01-06 → 2026-12-20 (-17d) | 2027-01-16 → 2026-12-29 (-18d) |  | -3d → 12d |
| MKH2-02-004-CNS-3360 | Backfilling & Compaction [Local 29 ] | 2027-01-19 → 2027-01-02 (-17d) | 2027-01-25 → 2027-01-07 (-18d) |  | -5d → 10d |
| 7 | **Local 30** |  | 2027-05-10 → 2027-05-22 (+12d) |  |  |
| 1 | **Road Works** |  | 2027-05-10 → 2027-05-22 (+12d) |  |  |
| 1 | **Eartworks & Site grading** |  | 2027-03-15 → 2027-03-22 (+7d) |  |  |
| MKH2-02-004-CNS-1210 | Road backfilling [Local 30 ] |  | 2026-11-23 → 2026-11-26 (+3d) |  | -9d → -12d |
| MKH2-02-004-CNS-1380 | Aggregate base course [Local 30 ] | 2027-02-27 → 2027-03-06 (+7d) | 2027-03-15 → 2027-03-22 (+7d) |  | -37d → -43d |
| 2 | **Asphalt Works** | 2027-03-16 → 2027-03-23 (+7d) | 2027-04-05 → 2027-04-12 (+7d) |  |  |
| MKH2-02-004-CNS-1460 | Prime Coat (MC1) [Local 30 ] | 2027-03-16 → 2027-03-23 (+7d) | 2027-03-24 → 2027-03-31 (+7d) |  | -29d → -35d |
| MKH2-02-004-CNS-1540 | Bituminous base course [Local 30 ] | 2027-03-25 → 2027-04-01 (+7d) | 2027-04-05 → 2027-04-12 (+7d) |  | -29d → -35d |
| 3 | **Finishing Works** | 2027-04-06 → 2027-04-13 (+7d) | 2027-05-10 → 2027-05-22 (+12d) |  |  |
| 1 | **Precast Concrete Curb** | 2027-04-06 → 2027-04-13 (+7d) | 2027-04-12 → 2027-04-19 (+7d) |  |  |
| MKH2-02-004-CNS-1620 | Installation of Precast Concrete curb [Local 30 ] | 2027-04-06 → 2027-04-13 (+7d) | 2027-04-12 → 2027-04-19 (+7d) |  | -29d → -35d |
| 2 | **Precast Interlocking block pavers** | 2027-04-13 → 2027-04-20 (+7d) | 2027-04-19 → 2027-04-26 (+7d) |  |  |
| MKH2-02-004-CNS-1700 | Installation of Interlocking block pavers for sidewalk/footpath [Local 30 ] | 2027-04-13 → 2027-04-20 (+7d) | 2027-04-19 → 2027-04-26 (+7d) |  | -29d → -35d |
| 3 | **Pavement Markings** | 2027-04-20 → 2027-04-27 (+7d) | 2027-05-03 → 2027-05-10 (+7d) |  |  |
| MKH2-02-004-CNS-1780 | Pavement markings [Local 30 ] | 2027-04-20 → 2027-04-27 (+7d) | 2027-04-26 → 2027-05-03 (+7d) |  | -29d → -35d |
| MKH2-02-004-CNS-1860 | (Speed Hump) with retroreflectiveThermoplastic yellow [Local 30 ] | 2027-04-27 → 2027-05-04 (+7d) | 2027-05-03 → 2027-05-10 (+7d) |  | -29d → -35d |
| 4 | **Traffic Signage** | 2027-05-04 → 2027-05-11 (+7d) | 2027-05-10 → 2027-05-22 (+12d) |  |  |
| MKH2-02-004-CNS-1940 | Installation of Traffic Signs [Local 30 ] | 2027-05-04 → 2027-05-11 (+7d) | 2027-05-10 → 2027-05-22 (+12d) |  | -29d → -35d |
| 2 | **Storm Water Drainage** |  | 2027-02-25 → 2027-03-04 (+7d) |  |  |
| 3 | **Catch Basins** | 2026-11-24 → 2026-10-18 (-37d) | 2026-12-29 → 2026-12-19 (-10d) |  |  |
| MKH2-02-004-CNS-3040 | Construction of Catch basins [Local 30 ]-Stage 1-[01 to 10] | 2026-11-24 → 2026-10-18 A (-37d) | 2026-12-05 → 2026-10-19 A (-47d) | 0% → 100% | 23d → none |
| MKH2-02-004-CNS-3050 | Construction of Catch basins [Local 30 ]-Stage 2-[11 to 20] | 2026-12-06 → 2026-10-19 A (-48d) | 2026-12-16 → 2026-12-06 (-10d) | 0% → 20% | 24d → 33d |
| MKH2-02-004-CNS-3060 | Construction of Catch basins [Local 30 ]-Stage 3-[21 to 31] | 2026-12-17 → 2026-12-07 (-10d) | 2026-12-29 → 2026-12-19 (-10d) |  | 24d → 33d |
| 4 | **Concrete chambers Pipes** | 2027-01-31 → 2027-02-07 (+7d) | 2027-02-25 → 2027-03-04 (+7d) |  |  |
| MKH2-02-004-CNS-3190 | Excavation and Compaction (FDT) [Local 30 ] | 2027-01-31 → 2027-02-07 (+7d) | 2027-02-07 → 2027-02-14 (+7d) |  | -25d → -31d |
| MKH2-02-004-CNS-3280 | Installation of Pipes [Local 30 ] | 2027-02-08 → 2027-02-15 (+7d) | 2027-02-17 → 2027-02-25 (+8d) |  | -25d → -31d |
| MKH2-02-004-CNS-3370 | Backfilling & Compaction [Local 30 ] | 2027-02-18 → 2027-02-27 (+9d) | 2027-02-25 → 2027-03-04 (+7d) |  | -25d → -31d |
| 8 | **Local 31** |  | 2027-06-23 → 2027-06-30 (+7d) |  |  |
| 1 | **Road Works** |  | 2027-06-23 → 2027-06-30 (+7d) |  |  |
| 1 | **Eartworks & Site grading** |  | 2027-04-05 → 2027-04-12 (+7d) |  |  |
| MKH2-02-004-CNS-1100 | Road excavation [Local 31 ]-Stage 1 |  | 2026-11-30 → 2026-10-14 A (-47d) | 85% → 100% | -9d → none |
| MKH2-02-004-CNS-1230 | Road backfilling [Local 31 ]-Stage 2 |  | 2026-12-14 → 2026-12-10 (-4d) | 55% → 70% | -9d → -6d |
| MKH2-02-004-CNS-1110 | Road excavation [Local 31 ]-Stage 2 | 2026-12-01 → 2026-10-15 A (-47d) | 2026-12-14 → 2026-12-10 (-4d) | 0% → 60% | -9d → -6d |
| MKH2-02-004-CNS-1310 | Subgrade [Local 31 ] | 2027-02-08 → 2027-02-15 (+7d) | 2027-03-01 → 2027-03-08 (+7d) |  | -28d → -34d |
| MKH2-02-004-CNS-1390 | Aggregate base course [Local 31 ] | 2027-03-16 → 2027-03-23 (+7d) | 2027-04-05 → 2027-04-12 (+7d) |  | -37d → -43d |
| 2 | **Asphalt Works** | 2027-04-06 → 2027-04-13 (+7d) | 2027-04-27 → 2027-05-04 (+7d) |  |  |
| MKH2-02-004-CNS-1470 | Prime Coat (MC1) [Local 31 ] | 2027-04-06 → 2027-04-13 (+7d) | 2027-04-15 → 2027-04-22 (+7d) |  | -37d → -43d |
| MKH2-02-004-CNS-1550 | Bituminous base course [Local 31 ] | 2027-04-17 → 2027-04-24 (+7d) | 2027-04-27 → 2027-05-04 (+7d) |  | -37d → -43d |
| 3 | **Finishing Works** | 2027-04-28 → 2027-05-05 (+7d) | 2027-06-23 → 2027-06-30 (+7d) |  |  |
| 1 | **Precast Concrete Curb** | 2027-04-28 → 2027-05-05 (+7d) | 2027-05-09 → 2027-05-20 (+11d) |  |  |

| ID | Task | Start | Finish | Complete | Total float |
| --- | --- | --- | --- | --- | --- |
| MKH2-02-004-CNS-1630 | Installation of Precast Concrete curb [Local 31 ] | 2027-04-28 → 2027-05-05 (+7d) | 2027-05-09 → 2027-05-20 (+11d) |  | -37d → -43d |
| 2 | **Precast Interlocking block pavers** | 2027-05-10 → 2027-05-22 (+12d) | 2027-05-24 → 2027-05-31 (+7d) |  |  |
| MKH2-02-004-CNS-1710 | Installation of Interlocking block pavers for sidewalk/footpath [Local 31 ] | 2027-05-10 → 2027-05-22 (+12d) | 2027-05-24 → 2027-05-31 (+7d) |  | -37d → -43d |
| 3 | **Pavement Markings** | 2027-05-25 → 2027-06-01 (+7d) | 2027-06-14 → 2027-06-21 (+7d) |  |  |
| MKH2-02-004-CNS-1790 | Pavement markings [Local 31 ] | 2027-05-25 → 2027-06-01 (+7d) | 2027-06-03 → 2027-06-10 (+7d) |  | -37d → -43d |
| MKH2-02-004-CNS-1870 | (Speed Hump) with retroreflectiveThermoplastic yellow [Local 31 ] | 2027-06-05 → 2027-06-12 (+7d) | 2027-06-14 → 2027-06-21 (+7d) |  | -37d → -43d |
| 4 | **Traffic Signage** | 2027-06-15 → 2027-06-22 (+7d) | 2027-06-23 → 2027-06-30 (+7d) |  |  |
| MKH2-02-004-CNS-1950 | Installation of Traffic Signs [Local 31 ] | 2027-06-15 → 2027-06-22 (+7d) | 2027-06-23 → 2027-06-30 (+7d) |  | -17d → -23d |
| 2 | **Storm Water Drainage** | 2026-11-24 → 2026-11-28 (+4d) | 2027-03-20 → 2027-03-27 (+7d) |  |  |
| 1 | **Pipe Works** | 2026-11-24 → 2026-11-28 (+4d) | 2027-01-16 → 2027-01-19 (+3d) |  |  |
| MKH2-02-004-CNS-2060 | Excavation & Compaction (FDT) [Local 31 ]-Stage 1 | 2026-11-24 → 2026-11-28 (+4d) | 2026-12-02 → 2026-12-06 (+4d) |  | -9d → -12d |
| MKH2-02-004-CNS-2070 | Excavation & Compaction (FDT) [Local 31 ]-Stage 2 | 2026-12-06 → 2026-12-07 (+1d) | 2026-12-14 → 2026-12-15 (+1d) |  | -9d → -10d |
| MKH2-02-004-CNS-2180 | Sand Bedding [Local 31 ]-Stage 1 | 2026-12-03 → 2026-12-07 (+4d) | 2026-12-14 → 2026-12-17 (+3d) |  | -9d → -12d |
| MKH2-02-004-CNS-2190 | Sand Bedding [Local 31 ]-Stage 2 | 2026-12-15 → 2026-12-19 (+4d) | 2026-12-26 → 2026-12-29 (+3d) |  | -9d → -12d |
| MKH2-02-004-CNS-2300 | Installation of GRP Pipe [Local 31 ]-Stage 1 | 2026-12-15 → 2026-12-19 (+4d) | 2026-12-23 → 2026-12-27 (+4d) |  | -7d → -10d |
| MKH2-02-004-CNS-2420 | Sand Cover & Warning Tape [Local 31 ]-Stage 1 | 2026-12-24 → 2026-12-28 (+4d) | 2026-12-29 → 2027-01-02 (+4d) |  | -4d → -7d |
| MKH2-02-004-CNS-2310 | Installation of GRP Pipe [Local 31 ]-Stage 2 | 2026-12-27 → 2026-12-30 (+3d) | 2027-01-04 → 2027-01-07 (+3d) |  | -9d → -12d |
| MKH2-02-004-CNS-2540 | Backfilling & Compaction [Local 31 ]-Stage 1 | 2026-12-30 → 2027-01-03 (+4d) | 2027-01-04 → 2027-01-07 (+3d) |  | -4d → -7d |
| MKH2-02-004-CNS-2430 | Sand Cover & Warning Tape [Local 31 ]-Stage 2 | 2027-01-05 → 2027-01-09 (+4d) | 2027-01-10 → 2027-01-13 (+3d) |  | -9d → -12d |
| MKH2-02-004-CNS-2550 | Backfilling & Compaction [Local 31 ]-Stage 2 | 2027-01-11 → 2027-01-14 (+3d) | 2027-01-16 → 2027-01-19 (+3d) |  | -9d → -12d |
| 2 | **Manholes** | 2026-12-24 → 2026-12-28 (+4d) | 2027-02-08 → 2027-02-11 (+3d) |  |  |
| MKH2-02-004-CNS-2750 | Installation of Manholes [Local 31 ]-Stage 1-[MH 01 to MH 07] | 2026-12-24 → 2026-12-28 (+4d) | 2027-01-09 → 2027-01-12 (+3d) |  | 20d → 17d |
| MKH2-02-004-CNS-2760 | Installation of Manholes [Local 31 ]-Stage 2-[MH 08 to MH 14] | 2027-01-10 → 2027-01-13 (+3d) | 2027-01-25 → 2027-01-28 (+3d) |  | 20d → 17d |
| MKH2-02-004-CNS-2770 | Installation of Manholes [Local 31 ]-Stage 3-[MH 15 to MH 20] | 2027-01-26 → 2027-01-30 (+4d) | 2027-02-08 → 2027-02-11 (+3d) |  | 20d → 17d |
| 3 | **Catch Basins** | 2027-01-10 → 2027-01-13 (+3d) | 2027-03-07 → 2027-03-17 (+10d) |  |  |
| MKH2-02-004-CNS-3070 | Construction of Catch basins [Local 31 ]-Stage 1-[01 to 10] | 2027-01-10 → 2027-01-13 (+3d) | 2027-01-14 → 2027-01-18 (+4d) |  | 20d → 17d |
| MKH2-02-004-CNS-3080 | Construction of Catch basins [Local 31 ]-Stage 2-[11 to 20] | 2027-01-16 → 2027-01-19 (+3d) | 2027-01-20 → 2027-01-24 (+4d) |  | 21d → 18d |
| MKH2-02-004-CNS-3090 | Construction of Catch basins [Local 31 ]-Stage 3-[21 to 31] | 2027-02-17 → 2027-02-25 (+8d) | 2027-02-23 → 2027-03-02 (+7d) |  | -2d → -8d |
| MKH2-02-004-CNS-3100 | Construction of Catch basins [Local 31 ]-Stage 4-[31 to 40] | 2027-02-24 → 2027-03-03 (+7d) | 2027-03-01 → 2027-03-08 (+7d) |  | -2d → -8d |
| MKH2-02-004-CNS-3110 | Construction of Catch basins [Local 31 ]-Stage 5-[41 to 49] | 2027-03-02 → 2027-03-09 (+7d) | 2027-03-07 → 2027-03-17 (+10d) |  | -2d → -8d |
| 4 | **Concrete chambers Pipes** | 2027-01-16 → 2027-01-19 (+3d) | 2027-03-20 → 2027-03-27 (+7d) |  |  |
| MKH2-02-004-CNS-3200 | Excavation and Compaction (FDT) [Local 31 ] | 2027-01-16 → 2027-01-19 (+3d) | 2027-01-25 → 2027-01-28 (+3d) |  | 20d → 17d |
| MKH2-02-004-CNS-3290 | Installation of Pipes [Local 31 ] | 2027-01-26 → 2027-01-30 (+4d) | 2027-02-08 → 2027-02-11 (+3d) |  | 20d → 17d |
| MKH2-02-004-CNS-3380 | Backfilling & Compaction [Local 31 ] | 2027-03-08 → 2027-03-18 (+10d) | 2027-03-20 → 2027-03-27 (+7d) |  | -2d → -8d |
| 4 | **Local 28** |  | 2027-07-17 → 2027-07-24 (+7d) |  |  |
| 1 | **Road Works** |  | 2027-07-17 → 2027-07-24 (+7d) |  |  |
| 1 | **Eartworks & Site grading** |  | 2027-04-21 → 2027-04-28 (+7d) |  |  |
| MKH2-02-004-CNS-1170 | Road backfilling [Local 28 ]-Stage 2 |  | 2026-12-02 → 2026-12-06 (+4d) | 65% → 70% | 27d → 24d |
| MKH2-02-004-CNS-1270 | Subgrade [Local 28 ] | 2027-03-02 → 2026-10-17 A (-136d) | 2027-03-23 → 2027-03-30 (+7d) | 0% → 55% | -21d → -27d |
| MKH2-02-004-CNS-1350 | Aggregate base course [Local 28 ] | 2027-04-06 → 2027-04-13 (+7d) | 2027-04-21 → 2027-04-28 (+7d) |  | -32d → -38d |
| 2 | **Asphalt Works** | 2027-04-22 → 2027-04-29 (+7d) | 2027-05-12 → 2027-05-24 (+12d) |  |  |
| MKH2-02-004-CNS-1430 | Prime Coat (MC1) [Local 28 ] | 2027-04-22 → 2027-04-29 (+7d) | 2027-05-01 → 2027-05-08 (+7d) |  | -32d → -38d |
| MKH2-02-004-CNS-1510 | Bituminous base course [Local 28 ] | 2027-05-02 → 2027-05-09 (+7d) | 2027-05-12 → 2027-05-24 (+12d) |  | -32d → -38d |
| 3 | **Finishing Works** | 2027-05-13 → 2027-05-25 (+12d) | 2027-07-17 → 2027-07-24 (+7d) |  |  |
| 1 | **Precast Concrete Curb** | 2027-05-13 → 2027-05-25 (+12d) | 2027-05-29 → 2027-06-05 (+7d) |  |  |
| MKH2-02-004-CNS-1590 | Installation of Precast Concrete curb [Local 28 ] | 2027-05-13 → 2027-05-25 (+12d) | 2027-05-29 → 2027-06-05 (+7d) |  | -32d → -38d |
| 2 | **Precast Interlocking block pavers** | 2027-05-30 → 2027-06-06 (+7d) | 2027-06-08 → 2027-06-15 (+7d) |  |  |
| MKH2-02-004-CNS-1670 | Installation of Interlocking block pavers for sidewalk/footpath [Local 28 ] | 2027-05-30 → 2027-06-06 (+7d) | 2027-06-08 → 2027-06-15 (+7d) |  | -32d → -38d |
| 3 | **Pavement Markings** | 2027-06-15 → 2027-06-22 (+7d) | 2027-07-06 → 2027-07-13 (+7d) |  |  |
| MKH2-02-004-CNS-1750 | Pavement markings [Local 28 ] | 2027-06-15 → 2027-06-22 (+7d) | 2027-06-26 → 2027-07-03 (+7d) |  | -37d → -43d |
| MKH2-02-004-CNS-1830 | (Speed Hump) with retroreflectiveThermoplastic yellow [Local 28 ] | 2027-06-27 → 2027-07-04 (+7d) | 2027-07-06 → 2027-07-13 (+7d) |  | -37d → -43d |
| 4 | **Traffic Signage** | 2027-07-07 → 2027-07-14 (+7d) | 2027-07-17 → 2027-07-24 (+7d) |  |  |
| MKH2-02-004-CNS-1910 | Installation of Traffic Signs [Local 28 ] | 2027-07-07 → 2027-07-14 (+7d) | 2027-07-17 → 2027-07-24 (+7d) |  | -37d → -43d |
| 2 | **Storm Water Drainage** |  | 2027-04-03 → 2027-04-10 (+7d) |  |  |
| 1 | **Pipe Works** |  | 2026-12-22 → 2026-12-26 (+4d) |  |  |
| MKH2-02-004-CNS-2130 | Sand Bedding [Local 28 ]-Stage 2 |  | 2026-12-08 → 2026-12-12 (+4d) | 80% → 98% | 37d → 34d |
| MKH2-02-004-CNS-2250 | Installation of GRP Pipe [Local 28 ]-Stage 2 |  | 2026-12-15 → 2026-12-19 (+4d) | 60% → 98% | 37d → 34d |
| MKH2-02-004-CNS-2370 | Sand Cover & Warning Tape [Local 28 ]-Stage 2 |  | 2026-12-19 → 2026-12-22 (+3d) | 50% → 60% | 37d → 34d |
| MKH2-02-004-CNS-2490 | Backfilling & Compaction [Local 28 ]-Stage 2 |  | 2026-12-22 → 2026-12-26 (+4d) | 50% → 60% | 37d → 34d |
| 2 | **Manholes** |  | 2026-12-21 → 2026-10-19 (-63d) |  |  |
| MKH2-02-004-CNS-2670 | Installation of Manholes [Local 28 ]-Stage 3-[MH 15 to MH 20] |  | 2026-12-21 → 2026-10-19 A (-63d) | 80% → 100% | 63d → none |
| 3 | **Catch Basins** | 2026-12-16 → 2026-12-20 (+4d) | 2027-01-13 → 2027-01-17 (+4d) |  |  |
| MKH2-02-004-CNS-2900 | Construction of Catch basins [Local 28 ]-Stage 1-[01 to 10] | 2026-12-16 → 2026-12-20 (+4d) | 2026-12-21 → 2026-12-24 (+3d) |  | 45d → 42d |
| MKH2-02-004-CNS-2910 | Construction of Catch basins [Local 28 ]-Stage 2-[11 to 20] | 2026-12-22 → 2026-12-26 (+4d) | 2026-12-27 → 2026-12-30 (+3d) |  | 50d → 47d |
| MKH2-02-004-CNS-2920 | Construction of Catch basins [Local 28 ]-Stage 3-[21 to 30] | 2026-12-28 → 2026-12-31 (+3d) | 2027-01-02 → 2027-01-05 (+3d) |  | 50d → 47d |
| MKH2-02-004-CNS-2930 | Construction of Catch basins [Local 28 ]-Stage 4-[31 to 40] | 2027-01-03 → 2027-01-06 (+3d) | 2027-01-07 → 2027-01-11 (+4d) |  | 50d → 47d |
| MKH2-02-004-CNS-2940 | Construction of Catch basins [Local 28 ]-Stage 5-[41 to 50] | 2027-01-09 → 2027-01-12 (+3d) | 2027-01-13 → 2027-01-17 (+4d) |  | 50d → 47d |
| 4 | **Concrete chambers Pipes** | 2027-03-02 → 2027-03-09 (+7d) | 2027-04-03 → 2027-04-10 (+7d) |  |  |
| MKH2-02-004-CNS-3160 | Excavation and Compaction (FDT) [Local 28 ] | 2027-03-02 → 2027-03-09 (+7d) | 2027-03-14 → 2027-03-21 (+7d) |  | -14d → -20d |
| MKH2-02-004-CNS-3250 | Installation of Pipes [Local 28 ] | 2027-03-15 → 2027-03-22 (+7d) | 2027-03-25 → 2027-04-01 (+7d) |  | -14d → -20d |

| ID | Task | Start | Finish | Total float |
| --- | --- | --- | --- | --- |
| MKH2-02-004-CNS-3340 | Backfilling & Compaction [Local 28 ] | 2027-03-27 → 2027-04-03 (+7d) | 2027-04-03 → 2027-04-10 (+7d) | -14d → -20d |
| 2 | **Local 10** |  | 2027-06-22 → 2027-06-29 (+7d) |  |
| 1 | **Road Works** |  | 2027-06-22 → 2027-06-29 (+7d) |  |
| 1 | **Eartworks & Site grading** |  | 2027-05-06 → 2027-05-13 (+7d) |  |
| MKH2-02-004-CNS-1010 | Road excavation [Local 10 ] |  | 2026-12-06 → 2026-12-09 (+3d) | 27d → 24d |
| MKH2-02-004-CNS-1130 | Road backfilling [Local 10 ] |  | 2026-12-06 → 2026-12-09 (+3d) | 27d → 24d |
| MKH2-02-004-CNS-1250 | Subgrade [Local 10 ] | 2027-04-22 → 2027-04-29 (+7d) | 2027-04-29 → 2027-05-06 (+7d) | -20d → -26d |
| MKH2-02-004-CNS-1330 | Aggregate base course [Local 10 ] | 2027-05-01 → 2027-05-08 (+7d) | 2027-05-06 → 2027-05-13 (+7d) | -20d → -26d |
| 2 | **Asphalt Works** | 2027-05-08 → 2027-05-19 (+11d) | 2027-05-20 → 2027-05-27 (+7d) |  |
| MKH2-02-004-CNS-1410 | Prime Coat (MC1) [Local 10 ] | 2027-05-08 → 2027-05-19 (+11d) | 2027-05-11 → 2027-05-23 (+12d) | -12d → -18d |
| MKH2-02-004-CNS-1490 | Bituminous base course [Local 10 ] | 2027-05-12 → 2027-05-24 (+12d) | 2027-05-20 → 2027-05-27 (+7d) | -10d → -16d |
| 3 | **Finishing Works** | 2027-05-30 → 2027-06-06 (+7d) | 2027-06-22 → 2027-06-29 (+7d) |  |
| 1 | **Precast Concrete Curb** | 2027-05-30 → 2027-06-06 (+7d) | 2027-06-05 → 2027-06-12 (+7d) |  |
| MKH2-02-004-CNS-1570 | Installation of Precast Concrete curb [Local 10 ] | 2027-05-30 → 2027-06-06 (+7d) | 2027-06-05 → 2027-06-12 (+7d) | -17d → -23d |
| 2 | **Precast Interlocking block pavers** | 2027-06-06 → 2027-06-13 (+7d) | 2027-06-10 → 2027-06-17 (+7d) |  |
| MKH2-02-004-CNS-1650 | Installation of Interlocking block pavers for sidewalk/footpath [Local 10 ] | 2027-06-06 → 2027-06-13 (+7d) | 2027-06-10 → 2027-06-17 (+7d) | -16d → -22d |
| 3 | **Pavement Markings** | 2027-06-12 → 2027-06-19 (+7d) | 2027-06-19 → 2027-06-26 (+7d) |  |
| MKH2-02-004-CNS-1730 | Pavement markings [Local 10 ] | 2027-06-12 → 2027-06-19 (+7d) | 2027-06-15 → 2027-06-22 (+7d) | -16d → -22d |
| MKH2-02-004-CNS-1810 | (Speed Hump) with retroreflectiveThermoplastic yellow [Local 10 ] | 2027-06-16 → 2027-06-23 (+7d) | 2027-06-19 → 2027-06-26 (+7d) | -16d → -22d |
| 4 | **Traffic Signage** | 2027-06-20 → 2027-06-27 (+7d) | 2027-06-22 → 2027-06-29 (+7d) |  |
| MKH2-02-004-CNS-1890 | Installation of Traffic Signs [Local 10 ] | 2027-06-20 → 2027-06-27 (+7d) | 2027-06-22 → 2027-06-29 (+7d) | -16d → -22d |
| 2 | **Storm Water Drainage** |  | 2027-01-11 → 2027-01-14 (+3d) |  |
| 1 | **Pipe Works** |  | 2026-12-26 → 2026-12-29 (+3d) |  |
| MKH2-02-004-CNS-1970 | Excavation & Compaction (FDT) [Local 10 ] |  | 2026-12-10 → 2026-12-14 (+4d) | 27d → 24d |
| MKH2-02-004-CNS-2090 | Sand Bedding [Local 10 ] |  | 2026-12-14 → 2026-12-17 (+3d) | 27d → 24d |
| MKH2-02-004-CNS-2210 | Installation of GRP Pipe [Local 10 ] |  | 2026-12-20 → 2026-12-23 (+3d) | 27d → 24d |
| MKH2-02-004-CNS-2330 | Sand Cover & Warning Tape [Local 10 ] | 2026-12-21 → 2026-12-24 (+3d) | 2026-12-22 → 2026-12-26 (+4d) | 33d → 30d |
| MKH2-02-004-CNS-2450 | Backfilling & Compaction [Local 10 ] | 2026-12-23 → 2026-12-27 (+4d) | 2026-12-26 → 2026-12-29 (+3d) | 33d → 30d |
| 2 | **Manholes** | 2026-12-21 → 2026-12-24 (+3d) | 2026-12-31 → 2027-01-04 (+4d) |  |
| MKH2-02-004-CNS-2580 | Installation of Manholes [Local 10 ]-Stage 1-[MH 01 to MH 07] | 2026-12-21 → 2026-12-24 (+3d) | 2026-12-26 → 2026-12-29 (+3d) | 27d → 24d |
| MKH2-02-004-CNS-2590 | Installation of Manholes [Local 10 ]-Stage 2-[MH 08 to MH 11] | 2026-12-27 → 2026-12-30 (+3d) | 2026-12-31 → 2027-01-04 (+4d) | 33d → 30d |
| 3 | **Catch Basins** | 2026-12-27 → 2026-12-30 (+3d) | 2026-12-30 → 2027-01-03 (+4d) |  |
| MKH2-02-004-CNS-2790 | Construction of Catch basins [Local 10 ] | 2026-12-27 → 2026-12-30 (+3d) | 2026-12-30 → 2027-01-03 (+4d) | 27d → 24d |
| 4 | **Concrete chambers Pipes** | 2026-12-31 → 2027-01-04 (+4d) | 2027-01-11 → 2027-01-14 (+3d) |  |
| MKH2-02-004-CNS-3130 | Excavation and Compaction (FDT) [Local 10 ] | 2026-12-31 → 2027-01-04 (+4d) | 2027-01-03 → 2027-01-06 (+3d) | 27d → 24d |
| MKH2-02-004-CNS-3220 | Installation of Pipes [Local 10 ] | 2027-01-04 → 2027-01-07 (+3d) | 2027-01-07 → 2027-01-11 (+4d) | 27d → 24d |
| MKH2-02-004-CNS-3310 | Backfilling & Compaction [Local 10 ] | 2027-01-09 → 2027-01-12 (+3d) | 2027-01-11 → 2027-01-14 (+3d) | 27d → 24d |
| 1 | **Collector 02** |  | 2027-06-27 → 2027-07-04 (+7d) |  |
| 1 | **Road Works** |  | 2027-06-27 → 2027-07-04 (+7d) |  |
| 1 | **Eartworks & Site grading** |  | 2027-05-25 → 2027-06-01 (+7d) |  |
| MKH2-02-004-CNS-1000 | Road excavation [Collector 02 ] |  | 2026-12-09 → 2026-12-13 (+4d) | 27d → 24d |
| MKH2-02-004-CNS-1120 | Road backfilling [Collector 02 ] |  | 2026-12-09 → 2026-12-13 (+4d) | 27d → 24d |
| MKH2-02-004-CNS-1240 | Subgrade [Collector 02 ] | 2027-05-08 → 2027-05-19 (+11d) | 2027-05-13 → 2027-05-25 (+12d) | -20d → -26d |
| MKH2-02-004-CNS-1320 | Aggregate base course [Collector 02 ] | 2027-05-19 → 2027-05-26 (+7d) | 2027-05-25 → 2027-06-01 (+7d) | -20d → -26d |
| 2 | **Asphalt Works** | 2027-05-26 → 2027-06-02 (+7d) | 2027-06-08 → 2027-06-15 (+7d) |  |
| MKH2-02-004-CNS-1400 | Prime Coat (MC1) [Collector 02 ] | 2027-05-26 → 2027-06-02 (+7d) | 2027-06-01 → 2027-06-08 (+7d) | -20d → -26d |
| MKH2-02-004-CNS-1480 | Bituminous base course [Collector 02 ] | 2027-06-02 → 2027-06-09 (+7d) | 2027-06-08 → 2027-06-15 (+7d) | -20d → -26d |
| 3 | **Finishing Works** | 2027-06-09 → 2027-06-16 (+7d) | 2027-06-27 → 2027-07-04 (+7d) |  |
| 1 | **Precast Concrete Curb** | 2027-06-09 → 2027-06-16 (+7d) | 2027-06-13 → 2027-06-20 (+7d) |  |
| MKH2-02-004-CNS-1560 | Installation of Precast Concrete curb [Collector 02 ] | 2027-06-09 → 2027-06-16 (+7d) | 2027-06-13 → 2027-06-20 (+7d) | -20d → -26d |
| 2 | **Precast Interlocking block pavers** | 2027-06-14 → 2027-06-21 (+7d) | 2027-06-16 → 2027-06-23 (+7d) |  |
| MKH2-02-004-CNS-1640 | Installation of Interlocking block pavers for sidewalk/footpath [Collector 02 ] | 2027-06-14 → 2027-06-21 (+7d) | 2027-06-16 → 2027-06-23 (+7d) | -20d → -26d |
| 3 | **Pavement Markings** | 2027-06-17 → 2027-06-24 (+7d) | 2027-06-23 → 2027-06-30 (+7d) |  |
| MKH2-02-004-CNS-1720 | Pavement markings [Collector 02 ] | 2027-06-17 → 2027-06-24 (+7d) | 2027-06-20 → 2027-06-27 (+7d) | -20d → -26d |
| MKH2-02-004-CNS-1800 | (Speed Hump) with retroreflectiveThermoplastic yellow [Collector 02 ] | 2027-06-21 → 2027-06-28 (+7d) | 2027-06-23 → 2027-06-30 (+7d) | -20d → -26d |
| 4 | **Traffic Signage** | 2027-06-24 → 2027-07-01 (+7d) | 2027-06-27 → 2027-07-04 (+7d) |  |
| MKH2-02-004-CNS-1880 | Installation of Traffic Signs [Collector 02 ] | 2027-06-24 → 2027-07-01 (+7d) | 2027-06-27 → 2027-07-04 (+7d) | -20d → -26d |
| 2 | **Storm Water Drainage** | 2026-12-10 → 2026-12-14 (+4d) | 2027-03-01 → 2027-03-08 (+7d) |  |
| 1 | **Pipe Works** | 2026-12-10 → 2026-12-14 (+4d) | 2027-01-03 → 2027-01-06 (+3d) |  |
| MKH2-02-004-CNS-1960 | Excavation & Compaction (FDT) [Collector 02 ] | 2026-12-10 → 2026-12-14 (+4d) | 2026-12-14 → 2026-12-17 (+3d) | 27d → 24d |
| MKH2-02-004-CNS-2080 | Sand Bedding [Collector 02 ] | 2026-12-15 → 2026-12-19 (+4d) | 2026-12-17 → 2026-12-21 (+4d) | 27d → 24d |
| MKH2-02-004-CNS-2200 | Installation of GRP Pipe [Collector 02 ] | 2026-12-19 → 2026-12-22 (+3d) | 2026-12-23 → 2026-12-27 (+4d) | 27d → 24d |
| MKH2-02-004-CNS-2320 | Sand Cover & Warning Tape [Collector 02 ] | 2026-12-24 → 2026-12-28 (+4d) | 2026-12-27 → 2026-12-30 (+3d) | 27d → 24d |
| MKH2-02-004-CNS-2440 | Backfilling & Compaction [Collector 02 ] | 2026-12-28 → 2026-12-31 (+3d) | 2027-01-03 → 2027-01-06 (+3d) | 27d → 24d |
| 2 | **Manholes** | 2026-12-24 → 2026-12-28 (+4d) | 2027-01-06 → 2027-01-10 (+4d) |  |
| MKH2-02-004-CNS-2560 | Installation of Manholes [Collector 02 ]-Stage 1-[MH 01 to MH 07] | 2026-12-24 → 2026-12-28 (+4d) | 2026-12-30 → 2027-01-03 (+4d) | 27d → 24d |
| MKH2-02-004-CNS-2570 | Installation of Manholes [Collector 02 ]-Stage 2-[MH 08 to MH 11] | 2026-12-31 → 2027-01-04 (+4d) | 2027-01-06 → 2027-01-10 (+4d) | 29d → 26d |
| 3 | **Catch Basins** | 2027-02-17 → 2027-02-25 (+8d) | 2027-02-20 → 2027-02-28 (+8d) |  |
| MKH2-02-004-CNS-2780 | Construction of Catch basins [Collector 02 ] | 2027-02-17 → 2027-02-25 (+8d) | 2027-02-20 → 2027-02-28 (+8d) | -14d → -20d |
| 4 | **Concrete chambers Pipes** | 2027-02-21 → 2027-03-01 (+8d) | 2027-03-01 → 2027-03-08 (+7d) |  |

| ID | Task | Start | Finish | Total float |
| --- | --- | --- | --- | --- |
| MKH2-02-004-CNS-3120 | Excavation and Compaction (FDT) [Collector 02 ] | 2027-02-21 → 2027-03-01 (+8d) | 2027-02-23 → 2027-03-02 (+7d) | -14d → -20d |
| MKH2-02-004-CNS-3210 | Installation of Pipes [Collector 02 ] | 2027-02-24 → 2027-03-03 (+7d) | 2027-02-27 → 2027-03-06 (+7d) | -14d → -20d |
| MKH2-02-004-CNS-3300 | Backfilling & Compaction [Collector 02 ] | 2027-02-28 → 2027-03-07 (+7d) | 2027-03-01 → 2027-03-08 (+7d) | -14d → -20d |
| 6 | **Testing and Commissioning** | 2027-04-04 → 2027-04-11 (+7d) | 2027-08-09 → 2027-08-16 (+7d) |  |
| MKH2-02-004-T&C-1000 | Test for Stormwater Utilities | 2027-04-04 → 2027-04-11 (+7d) | 2027-04-26 → 2027-05-03 (+7d) | -14d → -20d |
| MKH2-02-004-T&C-1010 | Test for Road Works | 2027-07-18 → 2027-07-25 (+7d) | 2027-08-09 → 2027-08-16 (+7d) | -37d → -43d |
| 7 | **Project Hand Over & Close-out** | 2027-04-27 → 2027-05-04 (+7d) | 2027-10-07 → 2027-10-14 (+7d) |  |
| 1 | **As-Built DWGs** | 2027-04-27 → 2027-05-04 (+7d) | 2027-09-13 → 2027-09-20 (+7d) |  |
| 1 | **As-Built DWGs Submittal** | 2027-04-27 → 2027-05-04 (+7d) | 2027-08-26 → 2027-09-02 (+7d) |  |
| MKH2-02-004-ABD-1000 | As-Built DWGs Submittal for Stormwater Utilities | 2027-04-27 → 2027-05-04 (+7d) | 2027-05-13 → 2027-05-25 (+12d) | -14d → -20d |
| MKH2-02-004-ABD-1010 | As-Built DWGs Submittal for Road Works | 2027-08-10 → 2027-08-17 (+7d) | 2027-08-26 → 2027-09-02 (+7d) | -37d → -43d |
| 2 | **As-Built DWGs Approval** | 2027-05-19 → 2027-05-26 (+7d) | 2027-09-13 → 2027-09-20 (+7d) |  |
| MKH2-02-004-ABD-1020 | As- Built DWGs Approval for Stormwater Utilities | 2027-05-19 → 2027-05-26 (+7d) | 2027-05-30 → 2027-06-06 (+7d) | -14d → -20d |
| MKH2-02-004-ABD-1030 | As- Built DWGs Approval for Road Works | 2027-08-28 → 2027-09-04 (+7d) | 2027-09-13 → 2027-09-20 (+7d) | -37d → -43d |
| 2 | **Demobilization** | 2027-09-14 → 2027-09-21 (+7d) | 2027-10-07 → 2027-10-14 (+7d) |  |
| MKH2-02-004-DEM-1000 | Demobilization of Manpower | 2027-09-14 → 2027-09-21 (+7d) | 2027-09-26 → 2027-10-03 (+7d) | -37d → -43d |
| MKH2-02-004-DEM-1010 | Removal of Equipment from Site | 2027-09-14 → 2027-09-21 (+7d) | 2027-09-26 → 2027-10-03 (+7d) | -37d → -43d |
| MKH2-02-004-DEM-1020 | Site Clean Up | 2027-09-14 → 2027-09-21 (+7d) | 2027-09-26 → 2027-10-03 (+7d) | -37d → -43d |
| MKH2-02-004-DEM-1030 | Removal of Site Offices and Structures | 2027-09-14 → 2027-09-21 (+7d) | 2027-09-26 → 2027-10-03 (+7d) | -37d → -43d |
| MKH2-02-004-DEM-1040 | Restoration of Ground Surfaces | 2027-09-27 → 2027-10-04 (+7d) | 2027-10-07 → 2027-10-14 (+7d) | -37d → -43d |

## Version 5 (data date 2026-11-03, saved 2026-11-03, file 2. MKH2-02-004-ENJ-WPR-019-03-11-2026 UP 16.xer)

Last finish 2027-10-14 → 2027-10-28 (+14d). Complete tasks 148 → 160.

Changed:

| ID | Task | Start | Finish | Complete | Total float |
| --- | --- | --- | --- | --- | --- |
| 1 | **Key Milestones** |  | 2027-10-14 → 2027-10-28 (+14d) |  |  |
| 1 | **General Milestone** |  | 2027-10-14 → 2027-10-28 (+14d) |  |  |
| MKH2-02-004-KM-1010 | Project Completion Date | 2027-10-14 → 2027-10-28 (+14d) | 2027-10-14 → 2027-10-28 (+14d) |  | -43d → -55d |
| 2 | **Contractual Milestone** |  | 2027-10-14 → 2027-10-28 (+14d) |  |  |
| 2 | **Construction** | 2027-04-10 → 2027-04-24 (+14d) | 2027-10-14 → 2027-10-28 (+14d) |  |  |
| MKH2-02-004-KM-1060 | Completion of Storm Water Drainage | 2027-04-10 → 2027-04-24 (+14d) | 2027-04-10 → 2027-04-24 (+14d) |  | -20d → -32d |
| MKH2-02-004-KM-1050 | Completion of Road Works | 2027-06-15 → 2027-06-29 (+14d) | 2027-06-15 → 2027-06-29 (+14d) |  | -26d → -38d |
| MKH2-02-004-KM-1070 | Completion of Entire Project | 2027-10-14 → 2027-10-28 (+14d) | 2027-10-14 → 2027-10-28 (+14d) |  | -43d → -55d |
| 4 | **Procurement** |  | 2027-01-20 → 2027-02-03 (+14d) |  |  |
| 1 | **Road Works - Civil** |  | 2027-01-20 → 2027-02-03 (+14d) |  |  |
| 4 | **Aggregate Base Course** | 2026-10-20 → 2026-11-03 (+14d) | 2027-01-03 → 2027-01-17 (+14d) |  |  |
| MKH2-02-004-PRC-1000 | PO for Aggregate Base Course | 2026-10-20 → 2026-11-03 (+14d) | 2026-10-25 → 2026-11-08 (+14d) |  | -30d → -42d |
| MKH2-02-004-PRC-1010 | Material Delivery for Aggregate Base Course-Stage 1 | 2026-10-26 → 2026-11-09 (+14d) | 2026-11-29 → 2026-12-13 (+14d) |  | -30d → -42d |
| MKH2-02-004-PRC-1020 | Material Delivery for Aggregate Base Course-Stage 2 | 2026-11-30 → 2026-12-14 (+14d) | 2027-01-03 → 2027-01-17 (+14d) |  | -30d → -42d |
| 5 | **Bituminous Base Course** | 2026-10-26 → 2026-11-09 (+14d) | 2027-01-20 → 2027-02-03 (+14d) |  |  |
| MKH2-02-004-PRC-1030 | PO for Bituminous Base Course | 2026-10-26 → 2026-11-09 (+14d) | 2026-10-31 → 2026-11-14 (+14d) |  | -28d → -37d |
| MKH2-02-004-PRC-1040 | Material Delivery for Bituminous Base Course-Stage 1 | 2026-11-01 → 2026-11-15 (+14d) | 2026-12-10 → 2026-12-24 (+14d) |  | -21d → -33d |
| MKH2-02-004-PRC-1050 | Material Delivery for Bituminous Base Course-Stage 2 | 2026-12-12 → 2026-12-26 (+14d) | 2027-01-20 → 2027-02-03 (+14d) |  | -21d → -33d |
| 7 | **Precast Concrete Curb** | 2026-11-01 → 2026-11-15 (+14d) | 2027-01-14 → 2027-01-28 (+14d) |  |  |
| MKH2-02-004-PRC-1060 | PO for Precast Concrete Curb | 2026-11-01 → 2026-11-15 (+14d) | 2026-11-05 → 2026-11-19 (+14d) |  | -28d → -37d |
| MKH2-02-004-PRC-1070 | Material Fabrication for Precast Concrete Curb | 2026-11-07 → 2026-11-21 (+14d) | 2026-12-10 → 2026-12-24 (+14d) |  | -25d → -37d |
| MKH2-02-004-PRC-1080 | Material Delivery for Precast Concrete Curb | 2026-12-12 → 2026-12-26 (+14d) | 2027-01-14 → 2027-01-28 (+14d) |  | -25d → -37d |
| 8 | **Interlocking Block Pavers** | 2026-11-07 → 2026-10-21 (-17d) | 2027-01-18 → 2027-01-28 (+10d) |  |  |
| MKH2-02-004-PRC-1090 | PO for Interlocking Block Pavers | 2026-11-07 → 2026-10-21 A (-17d) | 2026-11-09 → 2026-10-24 A (-16d) | 0% → 100% | -28d → none |
| MKH2-02-004-PRC-1100 | Material Fabrication for Interlocking Block Pavers | 2026-11-10 → 2026-11-21 (+11d) | 2026-12-14 → 2026-12-24 (+10d) |  | -28d → -37d |
| MKH2-02-004-PRC-1110 | Material Delivery for Interlocking Block Pavers | 2026-12-15 → 2026-12-26 (+11d) | 2027-01-18 → 2027-01-28 (+10d) |  | -28d → -37d |
| 9 | **Pavement Markings** | 2026-11-10 → 2026-11-21 (+11d) | 2027-01-11 → 2027-01-21 (+10d) |  |  |
| MKH2-02-004-PRC-1120 | PO for Pavement Markings | 2026-11-10 → 2026-11-21 (+11d) | 2026-11-14 → 2026-11-24 (+10d) |  | -22d → -31d |
| MKH2-02-004-PRC-1130 | Material Fabrication for Pavement Markings | 2026-11-15 → 2026-11-25 (+10d) | 2026-12-13 → 2026-12-23 (+10d) |  | -22d → -31d |
| MKH2-02-004-PRC-1140 | Material Delivery for Pavement Markings | 2026-12-14 → 2026-12-24 (+10d) | 2027-01-11 → 2027-01-21 (+10d) |  | -22d → -31d |
| 7 | **Stormwater Utilities** |  | 2026-11-21 → 2026-12-05 (+14d) |  |  |
| 7 | **Catch Basins** |  | 2026-11-21 → 2026-12-05 (+14d) |  |  |
| MKH2-02-004-PRC-1300 | Material Delivery for Catch Basins-Stage 2 |  | 2026-10-28 → 2026-11-11 (+14d) |  | 35d → 45d |
| MKH2-02-004-PRC-1310 | Material Delivery for Catch Basins-Stage 3 | 2026-10-29 → 2026-11-12 (+14d) | 2026-11-21 → 2026-12-05 (+14d) |  | 35d → 45d |
| 5 | **Construction** |  | 2027-07-24 → 2027-08-07 (+14d) |  |  |
| 1 | **Roads** |  | 2027-07-24 → 2027-08-07 (+14d) |  |  |
| 3 | **Local 17** |  | 2027-05-09 → 2027-05-27 (+18d) |  |  |
| 1 | **Road Works** |  | 2027-05-09 → 2027-05-27 (+18d) |  |  |
| 1 | **Eartworks & Site grading** |  | 2027-02-04 → 2027-02-18 (+14d) |  |  |
| MKH2-02-004-CNS-1150 | Road backfilling [Local 17 ]-Stage 2 |  | 2026-11-05 → 2026-11-19 (+14d) |  | -31d → -43d |
| MKH2-02-004-CNS-1030 | Road excavation [Local 17 ]-Stage 2 |  | 2026-10-31 → 2026-11-14 (+14d) |  | -31d → -43d |
| MKH2-02-004-CNS-1260 | Subgrade [Local 17 ] | 2027-01-02 → 2027-01-16 (+14d) | 2027-01-18 → 2027-02-01 (+14d) |  | -43d → -55d |
| MKH2-02-004-CNS-1340 | Aggregate base course [Local 17 ] | 2027-01-19 → 2027-02-02 (+14d) | 2027-02-04 → 2027-02-18 (+14d) |  | -43d → -55d |
| 2 | **Asphalt Works** | 2027-02-06 → 2027-02-20 (+14d) | 2027-03-07 → 2027-03-24 (+17d) |  |  |
| MKH2-02-004-CNS-1420 | Prime Coat (MC1) [Local 17 ] | 2027-02-06 → 2027-02-20 (+14d) | 2027-02-16 → 2027-03-03 (+15d) |  | -34d → -46d |
| MKH2-02-004-CNS-1500 | Bituminous base course [Local 17 ] | 2027-02-17 → 2027-03-04 (+15d) | 2027-03-07 → 2027-03-24 (+17d) |  | -34d → -46d |
| 3 | **Finishing Works** | 2027-03-08 → 2027-03-25 (+17d) | 2027-05-09 → 2027-05-27 (+18d) |  |  |
| 1 | **Precast Concrete Curb** | 2027-03-08 → 2027-03-25 (+17d) | 2027-03-24 → 2027-04-07 (+14d) |  |  |
| MKH2-02-004-CNS-1580 | Installation of Precast Concrete curb [Local 17 ] | 2027-03-08 → 2027-03-25 (+17d) | 2027-03-24 → 2027-04-07 (+14d) |  | -34d → -46d |
| 2 | **Precast Interlocking block pavers** | 2027-03-25 → 2027-04-08 (+14d) | 2027-04-06 → 2027-04-20 (+14d) |  |  |
| MKH2-02-004-CNS-1660 | Installation of Interlocking block pavers for sidewalk/footpath [Local 17 ] | 2027-03-25 → 2027-04-08 (+14d) | 2027-04-06 → 2027-04-20 (+14d) |  | -34d → -46d |
| 3 | **Pavement Markings** | 2027-04-07 → 2027-04-21 (+14d) | 2027-04-25 → 2027-05-09 (+14d) |  |  |
| MKH2-02-004-CNS-1740 | Pavement markings [Local 17 ] | 2027-04-07 → 2027-04-21 (+14d) | 2027-04-15 → 2027-04-29 (+14d) |  | -34d → -46d |
| MKH2-02-004-CNS-1820 | (Speed Hump) with retroreflectiveThermoplastic yellow [Local 17 ] | 2027-04-17 → 2027-05-01 (+14d) | 2027-04-25 → 2027-05-09 (+14d) |  | -34d → -46d |
| 4 | **Traffic Signage** | 2027-04-26 → 2027-05-10 (+14d) | 2027-05-09 → 2027-05-27 (+18d) |  |  |
| MKH2-02-004-CNS-1900 | Installation of Traffic Signs [Local 17 ] | 2027-04-26 → 2027-05-10 (+14d) | 2027-05-09 → 2027-05-27 (+18d) |  | -34d → -46d |
| 2 | **Storm Water Drainage** | 2026-10-20 → 2026-10-28 (+8d) | 2027-02-24 → 2027-03-14 (+18d) |  |  |
| 1 | **Pipe Works** | 2026-10-20 → 2026-10-28 (+8d) | 2026-12-31 → 2027-01-14 (+14d) |  |  |
| MKH2-02-004-CNS-1980 | Excavation & Compaction (FDT) [Local 17 ]-Stage 1 | 2026-10-20 → 2026-10-28 A (+8d) | 2026-11-03 → 2026-11-17 (+14d) | 0% → 60% | -43d → -55d |
| MKH2-02-004-CNS-2100 | Sand Bedding [Local 17 ]-Stage 1 | 2026-11-04 → 2026-10-29 A (-6d) | 2026-11-12 → 2026-11-26 (+14d) | 0% → 30% | -43d → -55d |
| MKH2-02-004-CNS-2220 | Installation of GRP Pipe [Local 17 ]-Stage 1 | 2026-11-14 → 2026-10-29 A (-16d) | 2026-11-29 → 2026-12-13 (+14d) | 0% → 30% | -43d → -55d |
| MKH2-02-004-CNS-2340 | Sand Cover & Warning Tape [Local 17 ]-Stage 1 | 2026-11-30 → 2026-10-31 A (-30d) | 2026-12-07 → 2026-12-21 (+14d) | 0% → 30% | -36d → -48d |
| MKH2-02-004-CNS-2460 | Backfilling & Compaction [Local 17 ]-Stage 1 | 2026-12-08 → 2026-11-02 A (-36d) | 2026-12-15 → 2026-12-29 (+14d) | 0% → 30% | -36d → -48d |
| MKH2-02-004-CNS-1990 | Excavation & Compaction (FDT) [Local 17 ]-Stage 2 | 2026-11-04 → 2026-11-18 (+14d) | 2026-11-18 → 2026-12-02 (+14d) |  | -42d → -54d |
| MKH2-02-004-CNS-2110 | Sand Bedding [Local 17 ]-Stage 2 | 2026-11-19 → 2026-12-03 (+14d) | 2026-11-28 → 2026-12-12 (+14d) |  | -42d → -54d |
| MKH2-02-004-CNS-2230 | Installation of GRP Pipe [Local 17 ]-Stage 2 | 2026-11-30 → 2026-12-14 (+14d) | 2026-12-15 → 2026-12-29 (+14d) |  | -43d → -55d |
| MKH2-02-004-CNS-2350 | Sand Cover & Warning Tape [Local 17 ]-Stage 2 | 2026-12-16 → 2026-12-30 (+14d) | 2026-12-23 → 2027-01-06 (+14d) |  | -43d → -55d |
| MKH2-02-004-CNS-2470 | Backfilling & Compaction [Local 17 ]-Stage 2 | 2026-12-24 → 2027-01-07 (+14d) | 2026-12-31 → 2027-01-14 (+14d) |  | -43d → -55d |
| 2 | **Manholes** | 2026-11-30 → 2026-12-14 (+14d) | 2027-01-09 → 2027-01-23 (+14d) |  |  |
| MKH2-02-004-CNS-2600 | Installation of Manholes [Local 17 ]-Stage 1-[MH 01 to MH 07] | 2026-11-30 → 2026-12-14 (+14d) | 2026-12-07 → 2026-12-21 (+14d) |  | -31d → -32d |

| ID | Task | Start | Finish | Complete | Total float |
| --- | --- | --- | --- | --- | --- |
| MKH2-02-004-CNS-2610 | Installation of Manholes [Local 17 ]-Stage 2-[MH 08 to MH 14] | 2026-12-08 → 2026-12-22 (+14d) | 2026-12-15 → 2026-12-29 (+14d) |  | -17d → -7d |
| MKH2-02-004-CNS-2620 | Installation of Manholes [Local 17 ]-Stage 3-[MH 15 to MH 21] | 2026-12-16 → 2026-12-30 (+14d) | 2026-12-23 → 2027-01-06 (+14d) |  | -17d → -7d |
| MKH2-02-004-CNS-2630 | Installation of Manholes [Local 17 ]-Stage 4-[MH 22 to MH 28] | 2026-12-24 → 2027-01-07 (+14d) | 2026-12-31 → 2027-01-14 (+14d) |  | -17d → -7d |
| MKH2-02-004-CNS-2640 | Installation of Manholes [Local 17 ]-Stage 5-[MH 29 to MH 33] | 2027-01-02 → 2027-01-16 (+14d) | 2027-01-09 → 2027-01-23 (+14d) |  | -17d → -7d |
| 3 | **Catch Basins** | 2026-12-08 → 2026-12-22 (+14d) | 2027-02-24 → 2027-03-14 (+18d) |  |  |
| MKH2-02-004-CNS-2800 | Construction of Catch basins [Local 17 ]-Stage 1-[01 to 10] | 2026-12-08 → 2026-12-22 (+14d) | 2026-12-15 → 2026-12-29 (+14d) |  | -31d → -32d |
| MKH2-02-004-CNS-2810 | Construction of Catch basins [Local 17 ]-Stage 2-[11 to 20] | 2026-12-16 → 2026-12-30 (+14d) | 2026-12-23 → 2027-01-06 (+14d) |  | -20d → -32d |
| MKH2-02-004-CNS-2820 | Construction of Catch basins [Local 17 ]-Stage 3-[21 to 30] | 2026-12-24 → 2027-01-07 (+14d) | 2026-12-31 → 2027-01-14 (+14d) |  | -20d → -32d |
| MKH2-02-004-CNS-2830 | Construction of Catch basins [Local 17 ]-Stage 4-[31 to 40] | 2027-01-02 → 2027-01-16 (+14d) | 2027-01-09 → 2027-01-23 (+14d) |  | -20d → -32d |
| MKH2-02-004-CNS-2840 | Construction of Catch basins [Local 17 ]-Stage 5-[41 to 50] | 2027-01-10 → 2027-01-24 (+14d) | 2027-01-17 → 2027-01-31 (+14d) |  | -20d → -32d |
| MKH2-02-004-CNS-2850 | Construction of Catch basins [Local 17 ]-Stage 6-[51 to 60] | 2027-01-18 → 2027-02-01 (+14d) | 2027-01-25 → 2027-02-08 (+14d) |  | -20d → -32d |
| MKH2-02-004-CNS-2860 | Construction of Catch basins [Local 17 ]-Stage 7-[61 to 70] | 2027-01-26 → 2027-02-09 (+14d) | 2027-02-02 → 2027-02-16 (+14d) |  | -20d → -32d |
| MKH2-02-004-CNS-2870 | Construction of Catch basins [Local 17 ]-Stage 8-[71 to 80] | 2027-02-03 → 2027-02-17 (+14d) | 2027-02-10 → 2027-02-25 (+15d) |  | -20d → -32d |
| MKH2-02-004-CNS-2880 | Construction of Catch basins [Local 17 ]-Stage 9-[81 to 90] | 2027-02-11 → 2027-02-27 (+16d) | 2027-02-18 → 2027-03-06 (+16d) |  | -20d → -32d |
| MKH2-02-004-CNS-2890 | Construction of Catch basins [Local 17 ]-Stage 10-[91 to 96] | 2027-02-20 → 2027-03-07 (+15d) | 2027-02-24 → 2027-03-14 (+18d) |  | -20d → -32d |
| 4 | **Concrete chambers Pipes** | 2026-12-16 → 2026-12-30 (+14d) | 2027-02-06 → 2027-02-20 (+14d) |  |  |
| MKH2-02-004-CNS-3140 | Excavation and Compaction (FDT) [Local 17 ]-Stage 1 | 2026-12-16 → 2026-12-30 (+14d) | 2026-12-28 → 2027-01-11 (+14d) |  | -31d → -21d |
| MKH2-02-004-CNS-3150 | Excavation and Compaction (FDT) [Local 17 ]-Stage 2 | 2026-12-29 → 2027-01-12 (+14d) | 2027-01-10 → 2027-01-24 (+14d) |  | -30d → -20d |
| MKH2-02-004-CNS-3230 | Installation of Pipes [Local 17 ]-Stage 1 | 2026-12-29 → 2027-01-12 (+14d) | 2027-01-11 → 2027-01-25 (+14d) |  | -31d → -21d |
| MKH2-02-004-CNS-3240 | Installation of Pipes [Local 17 ]-Stage 2 | 2027-01-12 → 2027-01-26 (+14d) | 2027-01-25 → 2027-02-08 (+14d) |  | -31d → -21d |
| MKH2-02-004-CNS-3320 | Backfilling & Compaction [Local 17 ]-Stage 1 | 2027-01-12 → 2027-01-26 (+14d) | 2027-01-23 → 2027-02-06 (+14d) |  | -29d → -19d |
| MKH2-02-004-CNS-3330 | Backfilling & Compaction [Local 17 ]-Stage 2 | 2027-01-26 → 2027-02-09 (+14d) | 2027-02-06 → 2027-02-20 (+14d) |  | -31d → -21d |
| 5 | **Local 11** |  | 2027-05-06 → 2027-05-25 (+19d) |  |  |
| 1 | **Road Works** |  | 2027-05-06 → 2027-05-25 (+19d) |  |  |
| 1 | **Eartworks & Site grading** |  | 2027-02-15 → 2027-03-02 (+15d) |  |  |
| MKH2-02-004-CNS-1190 | Road backfilling [Local 11 ]-Stage 2 |  | 2026-11-15 → 2026-11-29 (+14d) |  | -13d → -25d |
| MKH2-02-004-CNS-1280 | Subgrade [Local 11 ] | 2027-01-19 → 2026-10-29 A (-82d) | 2027-01-28 → 2027-02-11 (+14d) | 0% → 90% | -42d → -54d |
| MKH2-02-004-CNS-1360 | Aggregate base course [Local 11 ] | 2027-02-06 → 2027-02-20 (+14d) | 2027-02-15 → 2027-03-02 (+15d) |  | -43d → -55d |
| 2 | **Asphalt Works** | 2027-02-17 → 2027-03-04 (+15d) | 2027-03-18 → 2027-04-01 (+14d) |  |  |
| MKH2-02-004-CNS-1440 | Prime Coat (MC1) [Local 11 ] | 2027-02-17 → 2027-03-04 (+15d) | 2027-03-01 → 2027-03-18 (+17d) |  | -32d → -44d |
| MKH2-02-004-CNS-1520 | Bituminous base course [Local 11 ] | 2027-03-02 → 2027-03-20 (+18d) | 2027-03-18 → 2027-04-01 (+14d) |  | -32d → -44d |
| 3 | **Finishing Works** | 2027-03-20 → 2027-04-03 (+14d) | 2027-05-06 → 2027-05-25 (+19d) |  |  |
| 1 | **Precast Concrete Curb** | 2027-03-20 → 2027-04-03 (+14d) | 2027-03-31 → 2027-04-14 (+14d) |  |  |
| MKH2-02-004-CNS-1600 | Installation of Precast Concrete curb [Local 11 ] | 2027-03-20 → 2027-04-03 (+14d) | 2027-03-31 → 2027-04-14 (+14d) |  | -32d → -44d |
| 2 | **Precast Interlocking block pavers** | 2027-04-01 → 2027-04-15 (+14d) | 2027-04-12 → 2027-04-26 (+14d) |  |  |
| MKH2-02-004-CNS-1680 | Installation of Interlocking block pavers for sidewalk/footpath [Local 11 ] | 2027-04-01 → 2027-04-15 (+14d) | 2027-04-12 → 2027-04-26 (+14d) |  | -32d → -44d |
| 3 | **Pavement Markings** | 2027-04-13 → 2027-04-27 (+14d) | 2027-04-28 → 2027-05-12 (+14d) |  |  |
| MKH2-02-004-CNS-1760 | Pavement markings [Local 11 ] | 2027-04-13 → 2027-04-27 (+14d) | 2027-04-20 → 2027-05-04 (+14d) |  | -32d → -44d |
| MKH2-02-004-CNS-1840 | (Speed Hump) with retroreflectiveThermoplastic yellow [Local 11 ] | 2027-04-21 → 2027-05-05 (+14d) | 2027-04-28 → 2027-05-12 (+14d) |  | -32d → -44d |
| 4 | **Traffic Signage** | 2027-04-29 → 2027-05-13 (+14d) | 2027-05-06 → 2027-05-25 (+19d) |  |  |
| MKH2-02-004-CNS-1920 | Installation of Traffic Signs [Local 11 ] | 2027-04-29 → 2027-05-13 (+14d) | 2027-05-06 → 2027-05-25 (+19d) |  | -32d → -44d |
| 2 | **Storm Water Drainage** |  | 2026-12-26 → 2027-01-09 (+14d) |  |  |
| 1 | **Pipe Works** |  | 2026-12-15 → 2026-12-29 (+14d) |  |  |
| MKH2-02-004-CNS-2030 | Excavation & Compaction (FDT) [Local 11 ]-Stage 2 |  | 2026-11-19 → 2026-12-03 (+14d) |  | -13d → -25d |
| MKH2-02-004-CNS-2150 | Sand Bedding [Local 11 ]-Stage 2 |  | 2026-11-23 → 2026-12-07 (+14d) |  | -13d → -25d |
| MKH2-02-004-CNS-2270 | Installation of GRP Pipe [Local 11 ]-Stage 2 |  | 2026-12-06 → 2026-12-20 (+14d) |  | -13d → -25d |
| MKH2-02-004-CNS-2390 | Sand Cover & Warning Tape [Local 11 ]-Stage 2 |  | 2026-12-09 → 2026-12-23 (+14d) |  | -13d → -25d |
| MKH2-02-004-CNS-2510 | Backfilling & Compaction [Local 11 ]-Stage 2 |  | 2026-12-15 → 2026-12-29 (+14d) |  | -13d → -25d |
| 2 | **Manholes** |  | 2026-11-21 → 2026-12-05 (+14d) |  |  |
| MKH2-02-004-CNS-2700 | Installation of Manholes [Local 11 ]-Stage 3-[MH 15 to MH 20] |  | 2026-11-21 → 2026-12-05 (+14d) |  | 36d → 24d |
| 3 | **Catch Basins** | 2026-11-16 → 2026-11-30 (+14d) | 2026-12-26 → 2027-01-09 (+14d) |  |  |
| MKH2-02-004-CNS-2950 | Construction of Catch basins [Local 11 ]-Stage 1-[01 to 10] | 2026-11-16 → 2026-11-30 (+14d) | 2026-11-23 → 2026-12-07 (+14d) |  | 24d → 15d |
| MKH2-02-004-CNS-2960 | Construction of Catch basins [Local 11 ]-Stage 2-[11 to 20] | 2026-11-24 → 2026-12-08 (+14d) | 2026-12-01 → 2026-12-15 (+14d) |  | 27d → 15d |
| MKH2-02-004-CNS-2970 | Construction of Catch basins [Local 11 ]-Stage 3-[21 to 30] | 2026-12-02 → 2026-12-16 (+14d) | 2026-12-09 → 2026-12-23 (+14d) |  | 27d → 15d |
| MKH2-02-004-CNS-2980 | Construction of Catch basins [Local 11 ]-Stage 4-[31 to 40] | 2026-12-10 → 2026-12-24 (+14d) | 2026-12-17 → 2026-12-31 (+14d) |  | 27d → 15d |
| MKH2-02-004-CNS-2990 | Construction of Catch basins [Local 11 ]-Stage 5-[41 to 50] | 2026-12-19 → 2027-01-02 (+14d) | 2026-12-26 → 2027-01-09 (+14d) |  | 27d → 15d |
| 4 | **Concrete chambers Pipes** | 2026-11-24 → 2026-12-08 (+14d) | 2026-12-22 → 2027-01-05 (+14d) |  |  |
| MKH2-02-004-CNS-3170 | Excavation and Compaction (FDT) [Local 11 ] | 2026-11-24 → 2026-12-08 (+14d) | 2026-12-03 → 2026-12-17 (+14d) |  | 24d → 18d |
| MKH2-02-004-CNS-3260 | Installation of Pipes [Local 11 ] | 2026-12-05 → 2026-12-19 (+14d) | 2026-12-12 → 2026-12-26 (+14d) |  | 24d → 18d |
| MKH2-02-004-CNS-3350 | Backfilling & Compaction [Local 11 ] | 2026-12-13 → 2026-12-27 (+14d) | 2026-12-22 → 2027-01-05 (+14d) |  | 24d → 18d |
| 6 | **Local 29** |  | 2027-05-03 → 2027-05-22 (+19d) |  |  |
| 1 | **Road Works** |  | 2027-05-03 → 2027-05-22 (+19d) |  |  |
| 1 | **Eartworks & Site grading** |  | 2027-03-04 → 2027-03-22 (+18d) |  |  |
| MKH2-02-004-CNS-1200 | Road backfilling [Local 29 ] |  | 2026-11-21 → 2026-12-05 (+14d) |  | -12d → -15d |
| MKH2-02-004-CNS-1290 | Subgrade [Local 29 ] | 2027-01-30 → 2027-02-13 (+14d) | 2027-02-14 → 2027-03-01 (+15d) |  | -42d → -54d |
| MKH2-02-004-CNS-1370 | Aggregate base course [Local 29 ] | 2027-02-16 → 2027-03-03 (+15d) | 2027-03-04 → 2027-03-22 (+18d) |  | -43d → -55d |
| 2 | **Asphalt Works** | 2027-03-06 → 2027-03-23 (+17d) | 2027-03-29 → 2027-04-12 (+14d) |  |  |
| MKH2-02-004-CNS-1450 | Prime Coat (MC1) [Local 29 ] | 2027-03-06 → 2027-03-23 (+17d) | 2027-03-17 → 2027-03-31 (+14d) |  | -31d → -43d |
| MKH2-02-004-CNS-1530 | Bituminous base course [Local 29 ] | 2027-03-18 → 2027-04-01 (+14d) | 2027-03-29 → 2027-04-12 (+14d) |  | -29d → -41d |
| 3 | **Finishing Works** | 2027-03-30 → 2027-04-13 (+14d) | 2027-05-03 → 2027-05-22 (+19d) |  |  |

| ID | Task | Start | Finish | Complete | Total float |
| --- | --- | --- | --- | --- | --- |
| 1 | **Precast Concrete Curb** | 2027-03-30 → 2027-04-13 (+14d) | 2027-04-05 → 2027-04-19 (+14d) |  |  |
| MKH2-02-004-CNS-1610 | Installation of Precast Concrete curb [Local 29 ] | 2027-03-30 → 2027-04-13 (+14d) | 2027-04-05 → 2027-04-19 (+14d) |  | -29d → -41d |
| 2 | **Precast Interlocking block pavers** | 2027-04-06 → 2027-04-20 (+14d) | 2027-04-12 → 2027-04-26 (+14d) |  |  |
| MKH2-02-004-CNS-1690 | Installation of Interlocking block pavers for sidewalk/footpath [Local 29 ] | 2027-04-06 → 2027-04-20 (+14d) | 2027-04-12 → 2027-04-26 (+14d) |  | -29d → -41d |
| 3 | **Pavement Markings** | 2027-04-13 → 2027-04-27 (+14d) | 2027-04-26 → 2027-05-10 (+14d) |  |  |
| MKH2-02-004-CNS-1770 | Pavement markings [Local 29 ] | 2027-04-13 → 2027-04-27 (+14d) | 2027-04-19 → 2027-05-03 (+14d) |  | -29d → -41d |
| MKH2-02-004-CNS-1850 | (Speed Hump) with retroreflectiveThermoplastic yellow [Local 29 ] | 2027-04-20 → 2027-05-04 (+14d) | 2027-04-26 → 2027-05-10 (+14d) |  | -29d → -41d |
| 4 | **Traffic Signage** | 2027-04-27 → 2027-05-11 (+14d) | 2027-05-03 → 2027-05-22 (+19d) |  |  |
| MKH2-02-004-CNS-1930 | Installation of Traffic Signs [Local 29 ] | 2027-04-27 → 2027-05-11 (+14d) | 2027-05-03 → 2027-05-22 (+19d) |  | -29d → -41d |
| 2 | **Storm Water Drainage** |  | 2027-01-07 → 2027-01-21 (+14d) |  |  |
| 1 | **Pipe Works** |  | 2026-12-07 → 2026-12-21 (+14d) |  |  |
| MKH2-02-004-CNS-2040 | Excavation & Compaction (FDT) [Local 29 ] |  | 2026-11-28 → 2026-12-12 (+14d) |  | 3d → -9d |
| MKH2-02-004-CNS-2160 | Sand Bedding [Local 29 ] |  | 2026-11-30 → 2026-12-14 (+14d) | 90% → 98% | 3d → -9d |
| MKH2-02-004-CNS-2280 | Installation of GRP Pipe [Local 29 ] |  | 2026-12-02 → 2026-12-16 (+14d) | 90% → 98% | 3d → -9d |
| MKH2-02-004-CNS-2400 | Sand Cover & Warning Tape [Local 29 ] |  | 2026-12-05 → 2026-12-19 (+14d) | 75% → 98% | 3d → -9d |
| MKH2-02-004-CNS-2520 | Backfilling & Compaction [Local 29 ] |  | 2026-12-07 → 2026-12-21 (+14d) | 75% → 98% | 3d → -9d |
| 2 | **Manholes** |  | 2026-12-06 → 2026-10-26 (-41d) |  |  |
| MKH2-02-004-CNS-2720 | Installation of Manholes [Local 29 ]-Stage 2-[MH 08 to MH 15] |  | 2026-12-06 → 2026-10-26 A (-41d) | 70% → 100% | 16d → none |
| 3 | **Catch Basins** | 2026-12-03 → 2026-12-17 (+14d) | 2026-12-31 → 2027-01-14 (+14d) |  |  |
| MKH2-02-004-CNS-3000 | Construction of Catch basins [Local 29 ]-Stage 1-[01 to 10] | 2026-12-03 → 2026-12-17 (+14d) | 2026-12-10 → 2026-12-24 (+14d) |  | 10d → 4d |
| MKH2-02-004-CNS-3010 | Construction of Catch basins [Local 29 ]-Stage 2-[11 to 20] | 2026-12-12 → 2026-12-26 (+14d) | 2026-12-19 → 2027-01-02 (+14d) |  | 10d → 4d |
| MKH2-02-004-CNS-3020 | Construction of Catch basins [Local 29 ]-Stage 3-[21 to 30] | 2026-12-20 → 2027-01-03 (+14d) | 2026-12-27 → 2027-01-10 (+14d) |  | 10d → 4d |
| MKH2-02-004-CNS-3030 | Construction of Catch basins [Local 29 ]-Stage 4-[31 to 35] | 2026-12-28 → 2027-01-11 (+14d) | 2026-12-31 → 2027-01-14 (+14d) |  | 10d → 4d |
| 4 | **Concrete chambers Pipes** | 2026-12-12 → 2026-12-26 (+14d) | 2027-01-07 → 2027-01-21 (+14d) |  |  |
| MKH2-02-004-CNS-3180 | Excavation and Compaction (FDT) [Local 29 ] | 2026-12-12 → 2026-12-26 (+14d) | 2026-12-19 → 2027-01-02 (+14d) |  | 12d → 6d |
| MKH2-02-004-CNS-3270 | Installation of Pipes [Local 29 ] | 2026-12-20 → 2027-01-03 (+14d) | 2026-12-29 → 2027-01-12 (+14d) |  | 12d → 6d |
| MKH2-02-004-CNS-3360 | Backfilling & Compaction [Local 29 ] | 2027-01-02 → 2027-01-16 (+14d) | 2027-01-07 → 2027-01-21 (+14d) |  | 10d → 4d |
| 7 | **Local 30** |  | 2027-05-22 → 2027-06-05 (+14d) |  |  |
| 1 | **Road Works** |  | 2027-05-22 → 2027-06-05 (+14d) |  |  |
| 1 | **Eartworks & Site grading** |  | 2027-03-22 → 2027-04-05 (+14d) |  |  |
| MKH2-02-004-CNS-1210 | Road backfilling [Local 30 ] |  | 2026-11-26 → 2026-12-10 (+14d) |  | -12d → -15d |
| MKH2-02-004-CNS-1380 | Aggregate base course [Local 30 ] | 2027-03-06 → 2027-03-23 (+17d) | 2027-03-22 → 2027-04-05 (+14d) |  | -43d → -55d |
| 2 | **Asphalt Works** | 2027-03-23 → 2027-04-06 (+14d) | 2027-04-12 → 2027-04-26 (+14d) |  |  |
| MKH2-02-004-CNS-1460 | Prime Coat (MC1) [Local 30 ] | 2027-03-23 → 2027-04-06 (+14d) | 2027-03-31 → 2027-04-14 (+14d) |  | -35d → -47d |
| MKH2-02-004-CNS-1540 | Bituminous base course [Local 30 ] | 2027-04-01 → 2027-04-15 (+14d) | 2027-04-12 → 2027-04-26 (+14d) |  | -35d → -47d |
| 3 | **Finishing Works** | 2027-04-13 → 2027-04-27 (+14d) | 2027-05-22 → 2027-06-05 (+14d) |  |  |
| 1 | **Precast Concrete Curb** | 2027-04-13 → 2027-04-27 (+14d) | 2027-04-19 → 2027-05-03 (+14d) |  |  |
| MKH2-02-004-CNS-1620 | Installation of Precast Concrete curb [Local 30 ] | 2027-04-13 → 2027-04-27 (+14d) | 2027-04-19 → 2027-05-03 (+14d) |  | -35d → -47d |
| 2 | **Precast Interlocking block pavers** | 2027-04-20 → 2027-05-04 (+14d) | 2027-04-26 → 2027-05-10 (+14d) |  |  |
| MKH2-02-004-CNS-1700 | Installation of Interlocking block pavers for sidewalk/footpath [Local 30 ] | 2027-04-20 → 2027-05-04 (+14d) | 2027-04-26 → 2027-05-10 (+14d) |  | -35d → -47d |
| 3 | **Pavement Markings** | 2027-04-27 → 2027-05-11 (+14d) | 2027-05-10 → 2027-05-29 (+19d) |  |  |
| MKH2-02-004-CNS-1780 | Pavement markings [Local 30 ] | 2027-04-27 → 2027-05-11 (+14d) | 2027-05-03 → 2027-05-22 (+19d) |  | -35d → -47d |
| MKH2-02-004-CNS-1860 | (Speed Hump) with retroreflectiveThermoplastic yellow [Local 30 ] | 2027-05-04 → 2027-05-23 (+19d) | 2027-05-10 → 2027-05-29 (+19d) |  | -35d → -47d |
| 4 | **Traffic Signage** | 2027-05-11 → 2027-05-30 (+19d) | 2027-05-22 → 2027-06-05 (+14d) |  |  |
| MKH2-02-004-CNS-1940 | Installation of Traffic Signs [Local 30 ] | 2027-05-11 → 2027-05-30 (+19d) | 2027-05-22 → 2027-06-05 (+14d) |  | -35d → -47d |
| 2 | **Storm Water Drainage** |  | 2027-03-04 → 2026-12-19 (-75d) |  |  |
| 1 | **Pipe Works** |  | 2026-09-19 → 2026-12-19 (+91d) |  |  |
| MKH2-02-004-CNS-2050 | Excavation & Compaction (FDT) [Local 30 ] |  | 2026-09-16 A → 2026-12-12 (+87d) | 100% → 98% | none → 15d |
| MKH2-02-004-CNS-2170 | Sand Bedding [Local 30 ] |  | 2026-09-17 A → 2026-12-13 (+87d) | 100% → 98% | none → 15d |
| MKH2-02-004-CNS-2290 | Installation of GRP Pipe [Local 30 ] |  | 2026-09-19 A → 2026-12-15 (+87d) | 100% → 98% | none → 15d |
| MKH2-02-004-CNS-2410 | Sand Cover & Warning Tape [Local 30 ] |  | 2026-09-19 A → 2026-12-16 (+88d) | 100% → 98% | none → 15d |
| MKH2-02-004-CNS-2530 | Backfilling & Compaction [Local 30 ] |  | 2026-09-19 A → 2026-12-19 (+91d) | 100% → 98% | none → 15d |
| 3 | **Catch Basins** |  | 2026-12-19 → 2026-10-26 (-54d) |  |  |
| MKH2-02-004-CNS-3050 | Construction of Catch basins [Local 30 ]-Stage 2-[11 to 20] |  | 2026-12-06 → 2026-10-22 A (-45d) | 20% → 100% | 33d → none |
| MKH2-02-004-CNS-3060 | Construction of Catch basins [Local 30 ]-Stage 3-[21 to 31] | 2026-12-07 → 2026-10-24 A (-44d) | 2026-12-19 → 2026-10-26 A (-54d) | 0% → 100% | 33d → none |
| 4 | **Concrete chambers Pipes** | 2027-02-07 → 2026-10-21 (-109d) | 2027-03-04 → 2026-11-02 (-122d) |  |  |
| MKH2-02-004-CNS-3190 | Excavation and Compaction (FDT) [Local 30 ] | 2027-02-07 → 2026-10-21 A (-109d) | 2027-02-14 → 2026-10-28 A (-109d) | 0% → 100% | -31d → none |
| MKH2-02-004-CNS-3280 | Installation of Pipes [Local 30 ] | 2027-02-15 → 2026-10-24 A (-114d) | 2027-02-25 → 2026-10-29 A (-119d) | 0% → 100% | -31d → none |
| MKH2-02-004-CNS-3370 | Backfilling & Compaction [Local 30 ] | 2027-02-27 → 2026-10-31 A (-119d) | 2027-03-04 → 2026-11-02 A (-122d) | 0% → 100% | -31d → none |
| 8 | **Local 31** |  | 2027-06-30 → 2027-07-14 (+14d) |  |  |
| 1 | **Road Works** |  | 2027-06-30 → 2027-07-14 (+14d) |  |  |
| 1 | **Eartworks & Site grading** |  | 2027-04-12 → 2027-04-26 (+14d) |  |  |
| MKH2-02-004-CNS-1230 | Road backfilling [Local 31 ]-Stage 2 |  | 2026-12-10 → 2026-12-24 (+14d) |  | -6d → -15d |
| MKH2-02-004-CNS-1110 | Road excavation [Local 31 ]-Stage 2 |  | 2026-12-10 → 2026-10-25 A (-46d) | 60% → 100% | -6d → none |
| MKH2-02-004-CNS-1310 | Subgrade [Local 31 ] | 2027-02-15 → 2027-03-02 (+15d) | 2027-03-08 → 2027-03-25 (+17d) |  | -34d → -46d |
| MKH2-02-004-CNS-1390 | Aggregate base course [Local 31 ] | 2027-03-23 → 2027-04-06 (+14d) | 2027-04-12 → 2027-04-26 (+14d) |  | -43d → -55d |
| 2 | **Asphalt Works** | 2027-04-13 → 2027-04-27 (+14d) | 2027-05-04 → 2027-05-23 (+19d) |  |  |
| MKH2-02-004-CNS-1470 | Prime Coat (MC1) [Local 31 ] | 2027-04-13 → 2027-04-27 (+14d) | 2027-04-22 → 2027-05-06 (+14d) |  | -43d → -55d |
| MKH2-02-004-CNS-1550 | Bituminous base course [Local 31 ] | 2027-04-24 → 2027-05-08 (+14d) | 2027-05-04 → 2027-05-23 (+19d) |  | -43d → -55d |
| 3 | **Finishing Works** | 2027-05-05 → 2027-05-24 (+19d) | 2027-06-30 → 2027-07-14 (+14d) |  |  |

| ID | Task | Start | Finish | Complete | Total float |
| --- | --- | --- | --- | --- | --- |
| 1 | **Precast Concrete Curb** | 2027-05-05 → 2027-05-24 (+19d) | 2027-05-20 → 2027-06-03 (+14d) |  |  |
| MKH2-02-004-CNS-1630 | Installation of Precast Concrete curb [Local 31 ] | 2027-05-05 → 2027-05-24 (+19d) | 2027-05-20 → 2027-06-03 (+14d) |  | -43d → -55d |
| 2 | **Precast Interlocking block pavers** | 2027-05-22 → 2027-06-05 (+14d) | 2027-05-31 → 2027-06-14 (+14d) |  |  |
| MKH2-02-004-CNS-1710 | Installation of Interlocking block pavers for sidewalk/footpath [Local 31 ] | 2027-05-22 → 2027-06-05 (+14d) | 2027-05-31 → 2027-06-14 (+14d) |  | -43d → -55d |
| 3 | **Pavement Markings** | 2027-06-01 → 2027-06-15 (+14d) | 2027-06-21 → 2027-07-05 (+14d) |  |  |
| MKH2-02-004-CNS-1790 | Pavement markings [Local 31 ] | 2027-06-01 → 2027-06-15 (+14d) | 2027-06-10 → 2027-06-24 (+14d) |  | -43d → -55d |
| MKH2-02-004-CNS-1870 | (Speed Hump) with retroreflectiveThermoplastic yellow [Local 31 ] | 2027-06-12 → 2027-06-26 (+14d) | 2027-06-21 → 2027-07-05 (+14d) |  | -43d → -55d |
| 4 | **Traffic Signage** | 2027-06-22 → 2027-07-06 (+14d) | 2027-06-30 → 2027-07-14 (+14d) |  |  |
| MKH2-02-004-CNS-1950 | Installation of Traffic Signs [Local 31 ] | 2027-06-22 → 2027-07-06 (+14d) | 2027-06-30 → 2027-07-14 (+14d) |  | -23d → -35d |
| 2 | **Storm Water Drainage** | 2026-11-28 → 2026-10-21 (-38d) | 2027-03-27 → 2027-04-10 (+14d) |  |  |
| 1 | **Pipe Works** | 2026-11-28 → 2026-10-21 (-38d) | 2027-01-19 → 2027-01-23 (+4d) |  |  |
| MKH2-02-004-CNS-2060 | Excavation & Compaction (FDT) [Local 31 ]-Stage 1 | 2026-11-28 → 2026-10-21 A (-38d) | 2026-12-06 → 2026-10-24 A (-43d) | 0% → 100% | -12d → none |
| MKH2-02-004-CNS-2070 | Excavation & Compaction (FDT) [Local 31 ]-Stage 2 | 2026-12-07 → 2026-10-24 A (-44d) | 2026-12-15 → 2026-12-24 (+9d) | 0% → 85% | -10d → -15d |
| MKH2-02-004-CNS-2180 | Sand Bedding [Local 31 ]-Stage 1 | 2026-12-07 → 2026-10-24 A (-44d) | 2026-12-17 → 2026-10-25 A (-53d) | 0% → 100% | -12d → none |
| MKH2-02-004-CNS-2300 | Installation of GRP Pipe [Local 31 ]-Stage 1 | 2026-12-19 → 2026-10-24 A (-56d) | 2026-12-27 → 2026-10-25 A (-63d) | 0% → 100% | -10d → none |
| MKH2-02-004-CNS-2190 | Sand Bedding [Local 31 ]-Stage 2 | 2026-12-19 → 2026-10-25 A (-55d) | 2026-12-29 → 2027-01-05 (+7d) | 0% → 85% | -12d → -15d |
| MKH2-02-004-CNS-2310 | Installation of GRP Pipe [Local 31 ]-Stage 2 | 2026-12-30 → 2026-10-25 A (-66d) | 2027-01-07 → 2027-01-11 (+4d) | 0% → 85% | -12d → -15d |
| MKH2-02-004-CNS-2420 | Sand Cover & Warning Tape [Local 31 ]-Stage 1 | 2026-12-28 → 2026-10-25 A (-64d) | 2027-01-02 → 2026-10-28 A (-66d) | 0% → 100% | -7d → none |
| MKH2-02-004-CNS-2540 | Backfilling & Compaction [Local 31 ]-Stage 1 | 2027-01-03 → 2026-10-26 A (-69d) | 2027-01-07 → 2026-10-31 A (-68d) | 0% → 100% | -7d → none |
| MKH2-02-004-CNS-2430 | Sand Cover & Warning Tape [Local 31 ]-Stage 2 | 2027-01-09 → 2026-10-29 A (-72d) | 2027-01-13 → 2027-01-17 (+4d) | 0% → 85% | -12d → -15d |
| MKH2-02-004-CNS-2550 | Backfilling & Compaction [Local 31 ]-Stage 2 | 2027-01-14 → 2026-11-01 A (-74d) | 2027-01-19 → 2027-01-23 (+4d) | 0% → 85% | -12d → -15d |
| 2 | **Manholes** | 2026-12-28 → 2026-10-27 (-62d) | 2027-02-11 → 2026-12-24 (-49d) |  |  |
| MKH2-02-004-CNS-2750 | Installation of Manholes [Local 31 ]-Stage 1-[MH 01 to MH 07] | 2026-12-28 → 2026-10-27 A (-62d) | 2027-01-12 → 2026-10-28 A (-76d) | 0% → 100% | 17d → none |
| MKH2-02-004-CNS-2760 | Installation of Manholes [Local 31 ]-Stage 2-[MH 08 to MH 14] | 2027-01-13 → 2026-10-29 A (-76d) | 2027-01-28 → 2026-10-31 A (-89d) | 0% → 100% | 17d → none |
| MKH2-02-004-CNS-2770 | Installation of Manholes [Local 31 ]-Stage 3-[MH 15 to MH 20] | 2027-01-30 → 2026-11-01 A (-90d) | 2027-02-11 → 2026-12-24 (-49d) | 0% → 95% | 17d → 59d |
| 3 | **Catch Basins** | 2027-01-13 → 2026-12-12 (-32d) | 2027-03-17 → 2027-03-31 (+14d) |  |  |
| MKH2-02-004-CNS-3070 | Construction of Catch basins [Local 31 ]-Stage 1-[01 to 10] | 2027-01-13 → 2026-12-12 (-32d) | 2027-01-18 → 2026-12-16 (-33d) |  | 17d → 45d |
| MKH2-02-004-CNS-3080 | Construction of Catch basins [Local 31 ]-Stage 2-[11 to 20] | 2027-01-19 → 2027-01-10 (-9d) | 2027-01-24 → 2027-01-14 (-10d) |  | 18d → 26d |
| MKH2-02-004-CNS-3090 | Construction of Catch basins [Local 31 ]-Stage 3-[21 to 31] | 2027-02-25 → 2027-03-15 (+18d) | 2027-03-02 → 2027-03-20 (+18d) |  | -8d → -20d |
| MKH2-02-004-CNS-3100 | Construction of Catch basins [Local 31 ]-Stage 4-[31 to 40] | 2027-03-03 → 2027-03-21 (+18d) | 2027-03-08 → 2027-03-25 (+17d) |  | -8d → -20d |
| MKH2-02-004-CNS-3110 | Construction of Catch basins [Local 31 ]-Stage 5-[41 to 49] | 2027-03-09 → 2027-03-27 (+18d) | 2027-03-17 → 2027-03-31 (+14d) |  | -8d → -20d |
| 4 | **Concrete chambers Pipes** | 2027-01-19 → 2026-12-17 (-33d) | 2027-03-27 → 2027-04-10 (+14d) |  |  |
| MKH2-02-004-CNS-3200 | Excavation and Compaction (FDT) [Local 31 ] | 2027-01-19 → 2026-12-17 (-33d) | 2027-01-28 → 2026-12-27 (-32d) |  | 17d → 45d |
| MKH2-02-004-CNS-3290 | Installation of Pipes [Local 31 ] | 2027-01-30 → 2026-12-28 (-33d) | 2027-02-11 → 2027-01-10 (-32d) |  | 17d → 45d |
| MKH2-02-004-CNS-3380 | Backfilling & Compaction [Local 31 ] | 2027-03-18 → 2027-04-01 (+14d) | 2027-03-27 → 2027-04-10 (+14d) |  | -8d → -20d |
| 4 | **Local 28** |  | 2027-07-24 → 2027-08-07 (+14d) |  |  |
| 1 | **Road Works** |  | 2027-07-24 → 2027-08-07 (+14d) |  |  |
| 1 | **Eartworks & Site grading** |  | 2027-04-28 → 2027-05-12 (+14d) |  |  |
| MKH2-02-004-CNS-1170 | Road backfilling [Local 28 ]-Stage 2 |  | 2026-12-06 → 2026-12-20 (+14d) |  | 24d → 12d |
| MKH2-02-004-CNS-1270 | Subgrade [Local 28 ] |  | 2027-03-30 → 2027-04-13 (+14d) | 55% → 70% | -27d → -39d |
| MKH2-02-004-CNS-1350 | Aggregate base course [Local 28 ] | 2027-04-13 → 2027-04-27 (+14d) | 2027-04-28 → 2027-05-12 (+14d) |  | -38d → -50d |
| 2 | **Asphalt Works** | 2027-04-29 → 2027-05-13 (+14d) | 2027-05-24 → 2027-06-07 (+14d) |  |  |
| MKH2-02-004-CNS-1430 | Prime Coat (MC1) [Local 28 ] | 2027-04-29 → 2027-05-13 (+14d) | 2027-05-08 → 2027-05-26 (+18d) |  | -38d → -50d |
| MKH2-02-004-CNS-1510 | Bituminous base course [Local 28 ] | 2027-05-09 → 2027-05-27 (+18d) | 2027-05-24 → 2027-06-07 (+14d) |  | -38d → -50d |
| 3 | **Finishing Works** | 2027-05-25 → 2027-06-08 (+14d) | 2027-07-24 → 2027-08-07 (+14d) |  |  |
| 1 | **Precast Concrete Curb** | 2027-05-25 → 2027-06-08 (+14d) | 2027-06-05 → 2027-06-19 (+14d) |  |  |
| MKH2-02-004-CNS-1590 | Installation of Precast Concrete curb [Local 28 ] | 2027-05-25 → 2027-06-08 (+14d) | 2027-06-05 → 2027-06-19 (+14d) |  | -38d → -50d |
| 2 | **Precast Interlocking block pavers** | 2027-06-06 → 2027-06-20 (+14d) | 2027-06-15 → 2027-06-29 (+14d) |  |  |
| MKH2-02-004-CNS-1670 | Installation of Interlocking block pavers for sidewalk/footpath [Local 28 ] | 2027-06-06 → 2027-06-20 (+14d) | 2027-06-15 → 2027-06-29 (+14d) |  | -38d → -50d |
| 3 | **Pavement Markings** | 2027-06-22 → 2027-07-06 (+14d) | 2027-07-13 → 2027-07-27 (+14d) |  |  |
| MKH2-02-004-CNS-1750 | Pavement markings [Local 28 ] | 2027-06-22 → 2027-07-06 (+14d) | 2027-07-03 → 2027-07-17 (+14d) |  | -43d → -55d |
| MKH2-02-004-CNS-1830 | (Speed Hump) with retroreflectiveThermoplastic yellow [Local 28 ] | 2027-07-04 → 2027-07-18 (+14d) | 2027-07-13 → 2027-07-27 (+14d) |  | -43d → -55d |
| 4 | **Traffic Signage** | 2027-07-14 → 2027-07-28 (+14d) | 2027-07-24 → 2027-08-07 (+14d) |  |  |
| MKH2-02-004-CNS-1910 | Installation of Traffic Signs [Local 28 ] | 2027-07-14 → 2027-07-28 (+14d) | 2027-07-24 → 2027-08-07 (+14d) |  | -43d → -55d |
| 2 | **Storm Water Drainage** |  | 2027-04-10 → 2027-04-24 (+14d) |  |  |
| 1 | **Pipe Works** |  | 2026-12-26 → 2027-01-09 (+14d) |  |  |
| MKH2-02-004-CNS-2010 | Excavation & Compaction (FDT) [Local 28 ]-Stage 2 |  | 2026-10-07 A → 2026-12-21 (+75d) | 100% → 98% | none → 22d |
| MKH2-02-004-CNS-2130 | Sand Bedding [Local 28 ]-Stage 2 |  | 2026-12-12 → 2026-12-26 (+14d) |  | 34d → 22d |
| MKH2-02-004-CNS-2250 | Installation of GRP Pipe [Local 28 ]-Stage 2 |  | 2026-12-19 → 2027-01-02 (+14d) |  | 34d → 22d |
| MKH2-02-004-CNS-2370 | Sand Cover & Warning Tape [Local 28 ]-Stage 2 |  | 2026-12-22 → 2027-01-05 (+14d) | 60% → 98% | 34d → 22d |
| MKH2-02-004-CNS-2490 | Backfilling & Compaction [Local 28 ]-Stage 2 |  | 2026-12-26 → 2027-01-09 (+14d) | 60% → 98% | 34d → 22d |
| 3 | **Catch Basins** | 2026-12-20 → 2026-10-27 (-54d) | 2027-01-17 → 2027-01-13 (-4d) |  |  |
| MKH2-02-004-CNS-2900 | Construction of Catch basins [Local 28 ]-Stage 1-[01 to 10] | 2026-12-20 → 2026-10-27 A (-54d) | 2026-12-24 → 2026-10-28 A (-57d) | 0% → 100% | 42d → none |
| MKH2-02-004-CNS-2910 | Construction of Catch basins [Local 28 ]-Stage 2-[11 to 20] | 2026-12-26 → 2026-10-28 A (-59d) | 2026-12-30 → 2026-10-29 A (-62d) | 0% → 100% | 47d → none |
| MKH2-02-004-CNS-2920 | Construction of Catch basins [Local 28 ]-Stage 3-[21 to 30] | 2026-12-31 → 2026-10-29 A (-63d) | 2027-01-05 → 2026-10-31 A (-66d) | 0% → 100% | 47d → none |
| MKH2-02-004-CNS-2930 | Construction of Catch basins [Local 28 ]-Stage 4-[31 to 40] | 2027-01-06 → 2026-11-01 A (-66d) | 2027-01-11 → 2027-01-07 (-4d) | 0% → 60% | 47d → 50d |
| MKH2-02-004-CNS-2940 | Construction of Catch basins [Local 28 ]-Stage 5-[41 to 50] | 2027-01-12 → 2027-01-09 (-3d) | 2027-01-17 → 2027-01-13 (-4d) |  | 47d → 50d |
| 4 | **Concrete chambers Pipes** | 2027-03-09 → 2026-10-28 (-132d) | 2027-04-10 → 2027-04-24 (+14d) |  |  |
| MKH2-02-004-CNS-3160 | Excavation and Compaction (FDT) [Local 28 ] | 2027-03-09 → 2026-10-28 A (-132d) | 2027-03-21 → 2027-04-04 (+14d) | 0% → 75% | -20d → -32d |
| MKH2-02-004-CNS-3250 | Installation of Pipes [Local 28 ] | 2027-03-22 → 2026-10-29 A (-144d) | 2027-04-01 → 2027-04-15 (+14d) | 0% → 50% | -20d → -32d |

| ID | Task | Start | Finish | Complete | Total float |
| --- | --- | --- | --- | --- | --- |
| MKH2-02-004-CNS-3340 | Backfilling & Compaction [Local 28 ] | 2027-04-03 → 2026-11-01 A (-153d) | 2027-04-10 → 2027-04-24 (+14d) | 0% → 20% | -20d → -32d |
| 2 | **Local 10** |  | 2027-06-29 → 2027-07-13 (+14d) |  |  |
| 1 | **Road Works** |  | 2027-06-29 → 2027-07-13 (+14d) |  |  |
| 1 | **Eartworks & Site grading** |  | 2027-05-13 → 2027-06-01 (+19d) |  |  |
| MKH2-02-004-CNS-1010 | Road excavation [Local 10 ] |  | 2026-12-09 → 2026-12-23 (+14d) | 90% → 95% | 24d → 12d |
| MKH2-02-004-CNS-1130 | Road backfilling [Local 10 ] |  | 2026-12-09 → 2026-12-23 (+14d) | 90% → 95% | 24d → 12d |
| MKH2-02-004-CNS-1250 | Subgrade [Local 10 ] | 2027-04-29 → 2027-05-22 A (+23d) | 2027-05-06 → 2027-05-25 (+19d) | 0% → 80% | -26d → -38d |
| MKH2-02-004-CNS-1330 | Aggregate base course [Local 10 ] | 2027-05-08 → 2027-05-26 (+18d) | 2027-05-13 → 2027-06-01 (+19d) |  | -26d → -38d |
| 2 | **Asphalt Works** | 2027-05-19 → 2027-06-02 (+14d) | 2027-05-27 → 2027-06-10 (+14d) |  |  |
| MKH2-02-004-CNS-1410 | Prime Coat (MC1) [Local 10 ] | 2027-05-19 → 2027-06-02 (+14d) | 2027-05-23 → 2027-06-06 (+14d) |  | -18d → -30d |
| MKH2-02-004-CNS-1490 | Bituminous base course [Local 10 ] | 2027-05-24 → 2027-06-07 (+14d) | 2027-05-27 → 2027-06-10 (+14d) |  | -16d → -28d |
| 3 | **Finishing Works** | 2027-06-06 → 2027-06-20 (+14d) | 2027-06-29 → 2027-07-13 (+14d) |  |  |
| 1 | **Precast Concrete Curb** | 2027-06-06 → 2027-06-20 (+14d) | 2027-06-12 → 2027-06-26 (+14d) |  |  |
| MKH2-02-004-CNS-1570 | Installation of Precast Concrete curb [Local 10 ] | 2027-06-06 → 2027-06-20 (+14d) | 2027-06-12 → 2027-06-26 (+14d) |  | -23d → -35d |
| 2 | **Precast Interlocking block pavers** | 2027-06-13 → 2027-06-27 (+14d) | 2027-06-17 → 2027-07-01 (+14d) |  |  |
| MKH2-02-004-CNS-1650 | Installation of Interlocking block pavers for sidewalk/footpath [Local 10 ] | 2027-06-13 → 2027-06-27 (+14d) | 2027-06-17 → 2027-07-01 (+14d) |  | -22d → -34d |
| 3 | **Pavement Markings** | 2027-06-19 → 2027-07-03 (+14d) | 2027-06-26 → 2027-07-10 (+14d) |  |  |
| MKH2-02-004-CNS-1730 | Pavement markings [Local 10 ] | 2027-06-19 → 2027-07-03 (+14d) | 2027-06-22 → 2027-07-06 (+14d) |  | -22d → -34d |
| MKH2-02-004-CNS-1810 | (Speed Hump) with retroreflectiveThermoplastic yellow [Local 10 ] | 2027-06-23 → 2027-07-07 (+14d) | 2027-06-26 → 2027-07-10 (+14d) |  | -22d → -34d |
| 4 | **Traffic Signage** | 2027-06-27 → 2027-07-11 (+14d) | 2027-06-29 → 2027-07-13 (+14d) |  |  |
| MKH2-02-004-CNS-1890 | Installation of Traffic Signs [Local 10 ] | 2027-06-27 → 2027-07-11 (+14d) | 2027-06-29 → 2027-07-13 (+14d) |  | -22d → -34d |
| 2 | **Storm Water Drainage** |  | 2027-01-14 → 2027-01-28 (+14d) |  |  |
| 1 | **Pipe Works** |  | 2026-12-29 → 2027-01-12 (+14d) |  |  |
| MKH2-02-004-CNS-1970 | Excavation & Compaction (FDT) [Local 10 ] |  | 2026-12-14 → 2026-12-28 (+14d) |  | 24d → 12d |
| MKH2-02-004-CNS-2090 | Sand Bedding [Local 10 ] |  | 2026-12-17 → 2026-12-31 (+14d) |  | 24d → 12d |
| MKH2-02-004-CNS-2210 | Installation of GRP Pipe [Local 10 ] |  | 2026-12-23 → 2027-01-06 (+14d) |  | 24d → 12d |
| MKH2-02-004-CNS-2330 | Sand Cover & Warning Tape [Local 10 ] | 2026-12-24 → 2027-01-07 (+14d) | 2026-12-26 → 2027-01-09 (+14d) |  | 30d → 18d |
| MKH2-02-004-CNS-2450 | Backfilling & Compaction [Local 10 ] | 2026-12-27 → 2027-01-10 (+14d) | 2026-12-29 → 2027-01-12 (+14d) |  | 30d → 18d |
| 2 | **Manholes** | 2026-12-24 → 2027-01-07 (+14d) | 2027-01-04 → 2027-01-18 (+14d) |  |  |
| MKH2-02-004-CNS-2580 | Installation of Manholes [Local 10 ]-Stage 1-[MH 01 to MH 07] | 2026-12-24 → 2027-01-07 (+14d) | 2026-12-29 → 2027-01-12 (+14d) |  | 24d → 12d |
| MKH2-02-004-CNS-2590 | Installation of Manholes [Local 10 ]-Stage 2-[MH 08 to MH 11] | 2026-12-30 → 2027-01-13 (+14d) | 2027-01-04 → 2027-01-18 (+14d) |  | 30d → 18d |
| 3 | **Catch Basins** | 2026-12-30 → 2027-01-13 (+14d) | 2027-01-03 → 2027-01-17 (+14d) |  |  |
| MKH2-02-004-CNS-2790 | Construction of Catch basins [Local 10 ] | 2026-12-30 → 2027-01-13 (+14d) | 2027-01-03 → 2027-01-17 (+14d) |  | 24d → 12d |
| 4 | **Concrete chambers Pipes** | 2027-01-04 → 2027-01-18 (+14d) | 2027-01-14 → 2027-01-28 (+14d) |  |  |
| MKH2-02-004-CNS-3130 | Excavation and Compaction (FDT) [Local 10 ] | 2027-01-04 → 2027-01-18 (+14d) | 2027-01-06 → 2027-01-20 (+14d) |  | 24d → 12d |
| MKH2-02-004-CNS-3220 | Installation of Pipes [Local 10 ] | 2027-01-07 → 2027-01-21 (+14d) | 2027-01-11 → 2027-01-25 (+14d) |  | 24d → 12d |
| MKH2-02-004-CNS-3310 | Backfilling & Compaction [Local 10 ] | 2027-01-12 → 2027-01-26 (+14d) | 2027-01-14 → 2027-01-28 (+14d) |  | 24d → 12d |
| 1 | **Collector 02** |  | 2027-07-04 → 2027-07-18 (+14d) |  |  |
| 1 | **Road Works** |  | 2027-07-04 → 2027-07-18 (+14d) |  |  |
| 1 | **Eartworks & Site grading** |  | 2027-06-01 → 2027-06-15 (+14d) |  |  |
| MKH2-02-004-CNS-1000 | Road excavation [Collector 02 ] |  | 2026-12-13 → 2026-12-27 (+14d) | 90% → 95% | 24d → 12d |
| MKH2-02-004-CNS-1120 | Road backfilling [Collector 02 ] |  | 2026-12-13 → 2026-12-27 (+14d) | 90% → 95% | 24d → 12d |
| MKH2-02-004-CNS-1240 | Subgrade [Collector 02 ] | 2027-05-19 → 2026-10-22 A (-209d) | 2027-05-25 → 2027-06-08 (+14d) | 0% → 80% | -26d → -38d |
| MKH2-02-004-CNS-1320 | Aggregate base course [Collector 02 ] | 2027-05-26 → 2027-06-09 (+14d) | 2027-06-01 → 2027-06-15 (+14d) |  | -26d → -38d |
| 2 | **Asphalt Works** | 2027-06-02 → 2027-06-16 (+14d) | 2027-06-15 → 2027-06-29 (+14d) |  |  |
| MKH2-02-004-CNS-1400 | Prime Coat (MC1) [Collector 02 ] | 2027-06-02 → 2027-06-16 (+14d) | 2027-06-08 → 2027-06-22 (+14d) |  | -26d → -38d |
| MKH2-02-004-CNS-1480 | Bituminous base course [Collector 02 ] | 2027-06-09 → 2027-06-23 (+14d) | 2027-06-15 → 2027-06-29 (+14d) |  | -26d → -38d |
| 3 | **Finishing Works** | 2027-06-16 → 2027-06-30 (+14d) | 2027-07-04 → 2027-07-18 (+14d) |  |  |
| 1 | **Precast Concrete Curb** | 2027-06-16 → 2027-06-30 (+14d) | 2027-06-20 → 2027-07-04 (+14d) |  |  |
| MKH2-02-004-CNS-1560 | Installation of Precast Concrete curb [Collector 02 ] | 2027-06-16 → 2027-06-30 (+14d) | 2027-06-20 → 2027-07-04 (+14d) |  | -26d → -38d |
| 2 | **Precast Interlocking block pavers** | 2027-06-21 → 2027-07-05 (+14d) | 2027-06-23 → 2027-07-07 (+14d) |  |  |
| MKH2-02-004-CNS-1640 | Installation of Interlocking block pavers for sidewalk/footpath [Collector 02 ] | 2027-06-21 → 2027-07-05 (+14d) | 2027-06-23 → 2027-07-07 (+14d) |  | -26d → -38d |
| 3 | **Pavement Markings** | 2027-06-24 → 2027-07-08 (+14d) | 2027-06-30 → 2027-07-14 (+14d) |  |  |
| MKH2-02-004-CNS-1720 | Pavement markings [Collector 02 ] | 2027-06-24 → 2027-07-08 (+14d) | 2027-06-27 → 2027-07-11 (+14d) |  | -26d → -38d |
| MKH2-02-004-CNS-1800 | (Speed Hump) with retroreflectiveThermoplastic yellow [Collector 02 ] | 2027-06-28 → 2027-07-12 (+14d) | 2027-06-30 → 2027-07-14 (+14d) |  | -26d → -38d |
| 4 | **Traffic Signage** | 2027-07-01 → 2027-07-15 (+14d) | 2027-07-04 → 2027-07-18 (+14d) |  |  |
| MKH2-02-004-CNS-1880 | Installation of Traffic Signs [Collector 02 ] | 2027-07-01 → 2027-07-15 (+14d) | 2027-07-04 → 2027-07-18 (+14d) |  | -26d → -38d |
| 2 | **Storm Water Drainage** | 2026-12-14 → 2026-12-28 (+14d) | 2027-03-08 → 2027-03-25 (+17d) |  |  |
| 1 | **Pipe Works** | 2026-12-14 → 2026-12-28 (+14d) | 2027-01-06 → 2027-01-20 (+14d) |  |  |
| MKH2-02-004-CNS-1960 | Excavation & Compaction (FDT) [Collector 02 ] | 2026-12-14 → 2026-12-28 (+14d) | 2026-12-17 → 2026-12-31 (+14d) |  | 24d → 12d |
| MKH2-02-004-CNS-2080 | Sand Bedding [Collector 02 ] | 2026-12-19 → 2027-01-02 (+14d) | 2026-12-21 → 2027-01-04 (+14d) |  | 24d → 12d |
| MKH2-02-004-CNS-2200 | Installation of GRP Pipe [Collector 02 ] | 2026-12-22 → 2027-01-05 (+14d) | 2026-12-27 → 2027-01-10 (+14d) |  | 24d → 12d |
| MKH2-02-004-CNS-2320 | Sand Cover & Warning Tape [Collector 02 ] | 2026-12-28 → 2027-01-11 (+14d) | 2026-12-30 → 2027-01-13 (+14d) |  | 24d → 12d |
| MKH2-02-004-CNS-2440 | Backfilling & Compaction [Collector 02 ] | 2026-12-31 → 2027-01-14 (+14d) | 2027-01-06 → 2027-01-20 (+14d) |  | 24d → 12d |
| 2 | **Manholes** | 2026-12-28 → 2027-01-11 (+14d) | 2027-01-10 → 2027-01-24 (+14d) |  |  |
| MKH2-02-004-CNS-2560 | Installation of Manholes [Collector 02 ]-Stage 1-[MH 01 to MH 07] | 2026-12-28 → 2027-01-11 (+14d) | 2027-01-03 → 2027-01-17 (+14d) |  | 24d → 12d |
| MKH2-02-004-CNS-2570 | Installation of Manholes [Collector 02 ]-Stage 2-[MH 08 to MH 11] | 2027-01-04 → 2027-01-18 (+14d) | 2027-01-10 → 2027-01-24 (+14d) |  | 26d → 14d |
| 3 | **Catch Basins** | 2027-02-25 → 2027-03-15 (+18d) | 2027-02-28 → 2027-03-17 (+17d) |  |  |
| MKH2-02-004-CNS-2780 | Construction of Catch basins [Collector 02 ] | 2027-02-25 → 2027-03-15 (+18d) | 2027-02-28 → 2027-03-17 (+17d) |  | -20d → -32d |
| 4 | **Concrete chambers Pipes** | 2027-03-01 → 2027-03-18 (+17d) | 2027-03-08 → 2027-03-25 (+17d) |  |  |

| ID | Task | Start | Finish | Complete | Total float |
| --- | --- | --- | --- | --- | --- |
| MKH2-02-004-CNS-3120 | Excavation and Compaction (FDT) [Collector 02 ] | 2027-03-01 → 2027-03-18 (+17d) | 2027-03-02 → 2027-03-20 (+18d) |  | -20d → -32d |
| MKH2-02-004-CNS-3210 | Installation of Pipes [Collector 02 ] | 2027-03-03 → 2027-03-21 (+18d) | 2027-03-06 → 2027-03-23 (+17d) |  | -20d → -32d |
| MKH2-02-004-CNS-3300 | Backfilling & Compaction [Collector 02 ] | 2027-03-07 → 2027-03-24 (+17d) | 2027-03-08 → 2027-03-25 (+17d) |  | -20d → -32d |
| 6 | **Testing and Commissioning** | 2027-04-11 → 2026-10-27 (-166d) | 2027-08-16 → 2027-08-30 (+14d) |  |  |
| MKH2-02-004-T&C-1000 | Test for Stormwater Utilities | 2027-04-11 → 2026-10-27 A (-166d) | 2027-05-03 → 2027-05-22 (+19d) | 0% → 50% | -20d → -32d |
| MKH2-02-004-T&C-1010 | Test for Road Works | 2027-07-25 → 2027-08-08 (+14d) | 2027-08-16 → 2027-08-30 (+14d) |  | -43d → -55d |
| 7 | **Project Hand Over & Close-out** | 2027-05-04 → 2027-05-23 (+19d) | 2027-10-14 → 2027-10-28 (+14d) |  |  |
| 1 | **As-Built DWGs** | 2027-05-04 → 2027-05-23 (+19d) | 2027-09-20 → 2027-10-05 (+15d) |  |  |
| 1 | **As-Built DWGs Submittal** | 2027-05-04 → 2027-05-23 (+19d) | 2027-09-02 → 2027-09-16 (+14d) |  |  |
| MKH2-02-004-ABD-1000 | As-Built DWGs Submittal for Stormwater Utilities | 2027-05-04 → 2027-05-23 (+19d) | 2027-05-25 → 2027-06-08 (+14d) |  | -20d → -32d |
| MKH2-02-004-ABD-1010 | As-Built DWGs Submittal for Road Works | 2027-08-17 → 2027-08-31 (+14d) | 2027-09-02 → 2027-09-16 (+14d) |  | -43d → -55d |
| 2 | **As-Built DWGs Approval** | 2027-05-26 → 2027-06-09 (+14d) | 2027-09-20 → 2027-10-05 (+15d) |  |  |
| MKH2-02-004-ABD-1020 | As- Built DWGs Approval for Stormwater Utilities | 2027-05-26 → 2027-06-09 (+14d) | 2027-06-06 → 2027-06-20 (+14d) |  | -20d → -32d |
| MKH2-02-004-ABD-1030 | As- Built DWGs Approval for Road Works | 2027-09-04 → 2027-09-18 (+14d) | 2027-09-20 → 2027-10-05 (+15d) |  | -43d → -55d |
| 2 | **Demobilization** | 2027-09-21 → 2027-10-06 (+15d) | 2027-10-14 → 2027-10-28 (+14d) |  |  |
| MKH2-02-004-DEM-1000 | Demobilization of Manpower | 2027-09-21 → 2027-10-06 (+15d) | 2027-10-03 → 2027-10-17 (+14d) |  | -43d → -55d |
| MKH2-02-004-DEM-1010 | Removal of Equipment from Site | 2027-09-21 → 2027-10-06 (+15d) | 2027-10-03 → 2027-10-17 (+14d) |  | -43d → -55d |
| MKH2-02-004-DEM-1020 | Site Clean Up | 2027-09-21 → 2027-10-06 (+15d) | 2027-10-03 → 2027-10-17 (+14d) |  | -43d → -55d |
| MKH2-02-004-DEM-1030 | Removal of Site Offices and Structures | 2027-09-21 → 2027-10-06 (+15d) | 2027-10-03 → 2027-10-17 (+14d) |  | -43d → -55d |
| MKH2-02-004-DEM-1040 | Restoration of Ground Surfaces | 2027-10-04 → 2027-10-18 (+14d) | 2027-10-14 → 2027-10-28 (+14d) |  | -43d → -55d |

## Version 6 (data date 2026-11-10, saved 2026-11-08, file 2. MKH2-02-004-ENJ-WPR-020-10-11-2026 UP 17.xer)

Last finish 2027-10-28 → 2027-10-14 (-14d). Complete tasks 160 → 177.

Changed:

| ID | Task | Start | Finish | Complete | Total float |
| --- | --- | --- | --- | --- | --- |
| 1 | **Key Milestones** |  | 2027-10-28 → 2027-10-14 (-14d) |  |  |
| 1 | **General Milestone** |  | 2027-10-28 → 2027-10-14 (-14d) |  |  |
| MKH2-02-004-KM-1010 | Project Completion Date | 2027-10-28 → 2027-10-14 (-14d) | 2027-10-28 → 2027-10-14 (-14d) |  | -55d → -43d |
| 2 | **Contractual Milestone** |  | 2027-10-28 → 2027-10-14 (-14d) |  |  |
| 2 | **Construction** | 2027-04-24 → 2027-03-21 (-34d) | 2027-10-28 → 2027-10-14 (-14d) |  |  |
| MKH2-02-004-KM-1060 | Completion of Storm Water Drainage | 2027-04-24 → 2027-03-21 (-34d) | 2027-04-24 → 2027-03-21 (-34d) |  | -32d → -3d |
| MKH2-02-004-KM-1050 | Completion of Road Works | 2027-06-29 → 2027-06-15 (-14d) | 2027-06-29 → 2027-06-15 (-14d) |  | -38d → -26d |
| MKH2-02-004-KM-1070 | Completion of Entire Project | 2027-10-28 → 2027-10-14 (-14d) | 2027-10-28 → 2027-10-14 (-14d) |  | -55d → -43d |
| 4 | **Procurement** |  | 2027-02-03 → 2027-01-30 (-4d) |  |  |
| 1 | **Road Works - Civil** |  | 2027-02-03 → 2027-01-30 (-4d) |  |  |
| 4 | **Aggregate Base Course** | 2026-11-03 → 2026-11-04 (+1d) | 2027-01-17 → 2027-01-18 (+1d) |  |  |
| MKH2-02-004-PRC-1000 | PO for Aggregate Base Course | 2026-11-03 → 2026-11-04 A (+1d) | 2026-11-08 → 2026-11-05 A (-3d) | 0% → 100% | -42d → none |
| MKH2-02-004-PRC-1010 | Material Delivery for Aggregate Base Course-Stage 1 | 2026-11-09 → 2026-11-10 (+1d) | 2026-12-13 → 2026-12-14 (+1d) |  | -42d → -43d |
| MKH2-02-004-PRC-1020 | Material Delivery for Aggregate Base Course-Stage 2 | 2026-12-14 → 2026-12-15 (+1d) | 2027-01-17 → 2027-01-18 (+1d) |  | -42d → -43d |
| 5 | **Bituminous Base Course** | 2026-11-09 → 2026-11-07 (-2d) | 2027-02-03 → 2027-01-30 (-4d) |  |  |
| MKH2-02-004-PRC-1030 | PO for Bituminous Base Course | 2026-11-09 → 2026-11-07 A (-2d) | 2026-11-14 → 2026-11-08 A (-6d) | 0% → 100% | -37d → none |
| MKH2-02-004-PRC-1040 | Material Delivery for Bituminous Base Course-Stage 1 | 2026-11-15 → 2026-11-10 (-5d) | 2026-12-24 → 2026-12-20 (-4d) |  | -33d → -29d |
| MKH2-02-004-PRC-1050 | Material Delivery for Bituminous Base Course-Stage 2 | 2026-12-26 → 2026-12-21 (-5d) | 2027-02-03 → 2027-01-30 (-4d) |  | -33d → -29d |
| 7 | **Precast Concrete Curb** | 2026-11-15 → 2026-10-20 (-26d) | 2027-01-28 → 2026-12-14 (-45d) |  |  |
| MKH2-02-004-PRC-1060 | PO for Precast Concrete Curb | 2026-11-15 → 2026-10-20 A (-26d) | 2026-11-19 → 2026-10-22 A (-28d) | 0% → 100% | -37d → none |
| MKH2-02-004-PRC-1070 | Material Fabrication for Precast Concrete Curb | 2026-11-21 → 2026-10-24 A (-28d) | 2026-12-24 → 2026-10-29 A (-56d) | 0% → 100% | -37d → none |
| MKH2-02-004-PRC-1080 | Material Delivery for Precast Concrete Curb | 2026-12-26 → 2026-11-02 A (-54d) | 2027-01-28 → 2026-12-14 (-45d) | 0% → 10% | -37d → 2d |
| 8 | **Interlocking Block Pavers** |  | 2027-01-28 → 2026-12-14 (-45d) |  |  |
| MKH2-02-004-PRC-1100 | Material Fabrication for Interlocking Block Pavers | 2026-11-21 → 2026-11-04 A (-17d) | 2026-12-24 → 2026-11-05 A (-49d) | 0% → 100% | -37d → none |
| MKH2-02-004-PRC-1110 | Material Delivery for Interlocking Block Pavers | 2026-12-26 → 2026-11-07 A (-49d) | 2027-01-28 → 2026-12-14 (-45d) | 0% → 10% | -37d → 2d |
| 9 | **Pavement Markings** | 2026-11-21 → 2026-11-10 (-11d) | 2027-01-21 → 2027-01-11 (-10d) |  |  |
| MKH2-02-004-PRC-1120 | PO for Pavement Markings | 2026-11-21 → 2026-11-10 (-11d) | 2026-11-24 → 2026-11-14 (-10d) |  | -31d → -22d |
| MKH2-02-004-PRC-1130 | Material Fabrication for Pavement Markings | 2026-11-25 → 2026-11-15 (-10d) | 2026-12-23 → 2026-12-13 (-10d) |  | -31d → -22d |
| MKH2-02-004-PRC-1140 | Material Delivery for Pavement Markings | 2026-12-24 → 2026-12-14 (-10d) | 2027-01-21 → 2027-01-11 (-10d) |  | -31d → -22d |
| 7 | **Stormwater Utilities** |  | 2026-12-05 → 2026-12-12 (+7d) |  |  |
| 7 | **Catch Basins** |  | 2026-12-05 → 2026-12-12 (+7d) |  |  |
| MKH2-02-004-PRC-1300 | Material Delivery for Catch Basins-Stage 2 |  | 2026-11-11 → 2026-11-18 (+7d) |  | 45d → 39d |
| MKH2-02-004-PRC-1310 | Material Delivery for Catch Basins-Stage 3 | 2026-11-12 → 2026-11-19 (+7d) | 2026-12-05 → 2026-12-12 (+7d) |  | 45d → 39d |
| 5 | **Construction** |  | 2027-08-07 → 2027-07-24 (-14d) |  |  |
| 1 | **Roads** |  | 2027-08-07 → 2027-07-24 (-14d) |  |  |
| 3 | **Local 17** |  | 2027-05-27 → 2027-05-09 (-18d) |  |  |
| 1 | **Road Works** |  | 2027-05-27 → 2027-05-09 (-18d) |  |  |
| 1 | **Eartworks & Site grading** |  | 2027-02-18 → 2027-02-04 (-14d) |  |  |
| MKH2-02-004-CNS-1150 | Road backfilling [Local 17 ]-Stage 2 |  | 2026-11-19 → 2026-11-26 (+7d) |  | -43d → -32d |
| MKH2-02-004-CNS-1030 | Road excavation [Local 17 ]-Stage 2 |  | 2026-11-14 → 2026-11-21 (+7d) | 60% → 75% | -43d → -32d |
| MKH2-02-004-CNS-1260 | Subgrade [Local 17 ] | 2027-01-16 → 2026-12-20 (-27d) | 2027-02-01 → 2027-01-05 (-27d) |  | -55d → -32d |
| MKH2-02-004-CNS-1340 | Aggregate base course [Local 17 ] | 2027-02-02 → 2027-01-19 (-14d) | 2027-02-18 → 2027-02-04 (-14d) |  | -55d → -43d |
| 2 | **Asphalt Works** | 2027-02-20 → 2027-02-06 (-14d) | 2027-03-24 → 2027-03-07 (-17d) |  |  |
| MKH2-02-004-CNS-1420 | Prime Coat (MC1) [Local 17 ] | 2027-02-20 → 2027-02-06 (-14d) | 2027-03-03 → 2027-02-16 (-15d) |  | -46d → -34d |
| MKH2-02-004-CNS-1500 | Bituminous base course [Local 17 ] | 2027-03-04 → 2027-02-17 (-15d) | 2027-03-24 → 2027-03-07 (-17d) |  | -46d → -34d |
| 3 | **Finishing Works** | 2027-03-25 → 2027-03-08 (-17d) | 2027-05-27 → 2027-05-09 (-18d) |  |  |
| 1 | **Precast Concrete Curb** | 2027-03-25 → 2027-03-08 (-17d) | 2027-04-07 → 2027-03-24 (-14d) |  |  |
| MKH2-02-004-CNS-1580 | Installation of Precast Concrete curb [Local 17 ] | 2027-03-25 → 2027-03-08 (-17d) | 2027-04-07 → 2027-03-24 (-14d) |  | -46d → -34d |
| 2 | **Precast Interlocking block pavers** | 2027-04-08 → 2027-03-25 (-14d) | 2027-04-20 → 2027-04-06 (-14d) |  |  |
| MKH2-02-004-CNS-1660 | Installation of Interlocking block pavers for sidewalk/footpath [Local 17 ] | 2027-04-08 → 2027-03-25 (-14d) | 2027-04-20 → 2027-04-06 (-14d) |  | -46d → -34d |
| 3 | **Pavement Markings** | 2027-04-21 → 2027-04-07 (-14d) | 2027-05-09 → 2027-04-25 (-14d) |  |  |
| MKH2-02-004-CNS-1740 | Pavement markings [Local 17 ] | 2027-04-21 → 2027-04-07 (-14d) | 2027-04-29 → 2027-04-15 (-14d) |  | -46d → -34d |
| MKH2-02-004-CNS-1820 | (Speed Hump) with retroreflectiveThermoplastic yellow [Local 17 ] | 2027-05-01 → 2027-04-17 (-14d) | 2027-05-09 → 2027-04-25 (-14d) |  | -46d → -34d |
| 4 | **Traffic Signage** | 2027-05-10 → 2027-04-26 (-14d) | 2027-05-27 → 2027-05-09 (-18d) |  |  |
| MKH2-02-004-CNS-1900 | Installation of Traffic Signs [Local 17 ] | 2027-05-10 → 2027-04-26 (-14d) | 2027-05-27 → 2027-05-09 (-18d) |  | -46d → -34d |
| 2 | **Storm Water Drainage** |  | 2027-03-14 → 2027-02-03 (-39d) |  |  |
| 1 | **Pipe Works** |  | 2027-01-14 → 2026-12-19 (-26d) |  |  |
| MKH2-02-004-CNS-1980 | Excavation & Compaction (FDT) [Local 17 ]-Stage 1 |  | 2026-11-17 → 2026-11-03 A (-14d) | 60% → 100% | -55d → none |
| MKH2-02-004-CNS-2100 | Sand Bedding [Local 17 ]-Stage 1 |  | 2026-11-26 → 2026-11-04 A (-22d) | 30% → 100% | -55d → none |
| MKH2-02-004-CNS-2220 | Installation of GRP Pipe [Local 17 ]-Stage 1 |  | 2026-12-13 → 2026-11-05 A (-38d) | 30% → 100% | -55d → none |
| MKH2-02-004-CNS-2340 | Sand Cover & Warning Tape [Local 17 ]-Stage 1 |  | 2026-12-21 → 2026-11-07 A (-44d) | 30% → 100% | -48d → none |
| MKH2-02-004-CNS-2460 | Backfilling & Compaction [Local 17 ]-Stage 1 |  | 2026-12-29 → 2026-11-08 A (-51d) | 30% → 100% | -48d → none |
| MKH2-02-004-CNS-1990 | Excavation & Compaction (FDT) [Local 17 ]-Stage 2 | 2026-11-18 → 2026-11-03 A (-15d) | 2026-12-02 → 2026-11-26 (-6d) | 0% → 50% | -54d → -32d |
| MKH2-02-004-CNS-2110 | Sand Bedding [Local 17 ]-Stage 2 | 2026-12-03 → 2026-11-04 A (-29d) | 2026-12-12 → 2026-12-01 (-11d) | 0% → 50% | -54d → -32d |
| MKH2-02-004-CNS-2230 | Installation of GRP Pipe [Local 17 ]-Stage 2 | 2026-12-14 → 2026-11-05 A (-39d) | 2026-12-29 → 2026-12-09 (-20d) | 0% → 50% | -55d → -32d |
| MKH2-02-004-CNS-2350 | Sand Cover & Warning Tape [Local 17 ]-Stage 2 | 2026-12-30 → 2026-11-08 A (-52d) | 2027-01-06 → 2026-12-14 (-23d) | 0% → 50% | -55d → -32d |
| MKH2-02-004-CNS-2470 | Backfilling & Compaction [Local 17 ]-Stage 2 | 2027-01-07 → 2026-11-09 A (-59d) | 2027-01-14 → 2026-12-19 (-26d) | 0% → 50% | -55d → -32d |
| 2 | **Manholes** | 2026-12-14 → 2026-11-05 (-39d) | 2027-01-23 → 2026-12-20 (-34d) |  |  |
| MKH2-02-004-CNS-2600 | Installation of Manholes [Local 17 ]-Stage 1-[MH 01 to MH 07] | 2026-12-14 → 2026-11-05 A (-39d) | 2026-12-21 → 2026-11-17 (-34d) | 0% → 70% | -32d → -3d |
| MKH2-02-004-CNS-2610 | Installation of Manholes [Local 17 ]-Stage 2-[MH 08 to MH 14] | 2026-12-22 → 2026-11-18 (-34d) | 2026-12-29 → 2026-11-25 (-34d) |  | -7d → 22d |

| ID | Task | Start | Finish | Complete | Total float |
| --- | --- | --- | --- | --- | --- |
| MKH2-02-004-CNS-2620 | Installation of Manholes [Local 17 ]-Stage 3-[MH 15 to MH 21] | 2026-12-30 → 2026-11-26 (-34d) | 2027-01-06 → 2026-12-03 (-34d) |  | -7d → 22d |
| MKH2-02-004-CNS-2630 | Installation of Manholes [Local 17 ]-Stage 4-[MH 22 to MH 28] | 2027-01-07 → 2026-12-05 (-33d) | 2027-01-14 → 2026-12-12 (-33d) |  | -7d → 22d |
| MKH2-02-004-CNS-2640 | Installation of Manholes [Local 17 ]-Stage 5-[MH 29 to MH 33] | 2027-01-16 → 2026-12-13 (-34d) | 2027-01-23 → 2026-12-20 (-34d) |  | -7d → 22d |
| 3 | **Catch Basins** | 2026-12-22 → 2026-11-18 (-34d) | 2027-03-14 → 2027-02-03 (-39d) |  |  |
| MKH2-02-004-CNS-2800 | Construction of Catch basins [Local 17 ]-Stage 1-[01 to 10] | 2026-12-22 → 2026-11-18 (-34d) | 2026-12-29 → 2026-11-25 (-34d) |  | -32d → -3d |
| MKH2-02-004-CNS-2810 | Construction of Catch basins [Local 17 ]-Stage 2-[11 to 20] | 2026-12-30 → 2026-11-26 (-34d) | 2027-01-06 → 2026-12-03 (-34d) |  | -32d → -3d |
| MKH2-02-004-CNS-2820 | Construction of Catch basins [Local 17 ]-Stage 3-[21 to 30] | 2027-01-07 → 2026-12-05 (-33d) | 2027-01-14 → 2026-12-12 (-33d) |  | -32d → -3d |
| MKH2-02-004-CNS-2830 | Construction of Catch basins [Local 17 ]-Stage 4-[31 to 40] | 2027-01-16 → 2026-12-13 (-34d) | 2027-01-23 → 2026-12-20 (-34d) |  | -32d → -3d |
| MKH2-02-004-CNS-2840 | Construction of Catch basins [Local 17 ]-Stage 5-[41 to 50] | 2027-01-24 → 2026-12-21 (-34d) | 2027-01-31 → 2026-12-28 (-34d) |  | -32d → -3d |
| MKH2-02-004-CNS-2850 | Construction of Catch basins [Local 17 ]-Stage 6-[51 to 60] | 2027-02-01 → 2026-12-29 (-34d) | 2027-02-08 → 2027-01-05 (-34d) |  | -32d → -3d |
| MKH2-02-004-CNS-2860 | Construction of Catch basins [Local 17 ]-Stage 7-[61 to 70] | 2027-02-09 → 2027-01-06 (-34d) | 2027-02-16 → 2027-01-13 (-34d) |  | -32d → -3d |
| MKH2-02-004-CNS-2870 | Construction of Catch basins [Local 17 ]-Stage 8-[71 to 80] | 2027-02-17 → 2027-01-14 (-34d) | 2027-02-25 → 2027-01-21 (-35d) |  | -32d → -3d |
| MKH2-02-004-CNS-2880 | Construction of Catch basins [Local 17 ]-Stage 9-[81 to 90] | 2027-02-27 → 2027-01-23 (-35d) | 2027-03-06 → 2027-01-30 (-35d) |  | -32d → -3d |
| MKH2-02-004-CNS-2890 | Construction of Catch basins [Local 17 ]-Stage 10-[91 to 96] | 2027-03-07 → 2027-01-31 (-35d) | 2027-03-14 → 2027-02-03 (-39d) |  | -32d → -3d |
| 4 | **Concrete chambers Pipes** | 2026-12-30 → 2026-11-26 (-34d) | 2027-02-20 → 2027-01-17 (-34d) |  |  |
| MKH2-02-004-CNS-3140 | Excavation and Compaction (FDT) [Local 17 ]-Stage 1 | 2026-12-30 → 2026-11-26 (-34d) | 2027-01-11 → 2026-12-08 (-34d) |  | -21d → 8d |
| MKH2-02-004-CNS-3150 | Excavation and Compaction (FDT) [Local 17 ]-Stage 2 | 2027-01-12 → 2026-12-09 (-34d) | 2027-01-24 → 2026-12-21 (-34d) |  | -20d → 9d |
| MKH2-02-004-CNS-3230 | Installation of Pipes [Local 17 ]-Stage 1 | 2027-01-12 → 2026-12-09 (-34d) | 2027-01-25 → 2026-12-22 (-34d) |  | -21d → 8d |
| MKH2-02-004-CNS-3240 | Installation of Pipes [Local 17 ]-Stage 2 | 2027-01-26 → 2026-12-23 (-34d) | 2027-02-08 → 2027-01-05 (-34d) |  | -21d → 8d |
| MKH2-02-004-CNS-3320 | Backfilling & Compaction [Local 17 ]-Stage 1 | 2027-01-26 → 2026-12-23 (-34d) | 2027-02-06 → 2027-01-03 (-34d) |  | -19d → 10d |
| MKH2-02-004-CNS-3330 | Backfilling & Compaction [Local 17 ]-Stage 2 | 2027-02-09 → 2027-01-06 (-34d) | 2027-02-20 → 2027-01-17 (-34d) |  | -21d → 8d |
| 5 | **Local 11** |  | 2027-05-25 → 2027-05-06 (-19d) |  |  |
| 1 | **Road Works** |  | 2027-05-25 → 2027-05-06 (-19d) |  |  |
| 1 | **Eartworks & Site grading** |  | 2027-03-02 → 2027-02-15 (-15d) |  |  |
| MKH2-02-004-CNS-1190 | Road backfilling [Local 11 ]-Stage 2 |  | 2026-11-29 → 2026-12-06 (+7d) |  | -25d → -26d |
| MKH2-02-004-CNS-1280 | Subgrade [Local 11 ] |  | 2027-02-11 → 2027-01-16 (-26d) |  | -54d → -26d |
| MKH2-02-004-CNS-1360 | Aggregate base course [Local 11 ] | 2027-02-20 → 2027-02-06 (-14d) | 2027-03-02 → 2027-02-15 (-15d) |  | -55d → -43d |
| 2 | **Asphalt Works** | 2027-03-04 → 2027-02-17 (-15d) | 2027-04-01 → 2027-03-18 (-14d) |  |  |
| MKH2-02-004-CNS-1440 | Prime Coat (MC1) [Local 11 ] | 2027-03-04 → 2027-02-17 (-15d) | 2027-03-18 → 2027-03-01 (-17d) |  | -44d → -32d |
| MKH2-02-004-CNS-1520 | Bituminous base course [Local 11 ] | 2027-03-20 → 2027-03-02 (-18d) | 2027-04-01 → 2027-03-18 (-14d) |  | -44d → -32d |
| 3 | **Finishing Works** | 2027-04-03 → 2027-03-20 (-14d) | 2027-05-25 → 2027-05-06 (-19d) |  |  |
| 1 | **Precast Concrete Curb** | 2027-04-03 → 2027-03-20 (-14d) | 2027-04-14 → 2027-03-31 (-14d) |  |  |
| MKH2-02-004-CNS-1600 | Installation of Precast Concrete curb [Local 11 ] | 2027-04-03 → 2027-03-20 (-14d) | 2027-04-14 → 2027-03-31 (-14d) |  | -44d → -32d |
| 2 | **Precast Interlocking block pavers** | 2027-04-15 → 2027-04-01 (-14d) | 2027-04-26 → 2027-04-12 (-14d) |  |  |
| MKH2-02-004-CNS-1680 | Installation of Interlocking block pavers for sidewalk/footpath [Local 11 ] | 2027-04-15 → 2027-04-01 (-14d) | 2027-04-26 → 2027-04-12 (-14d) |  | -44d → -32d |
| 3 | **Pavement Markings** | 2027-04-27 → 2027-04-13 (-14d) | 2027-05-12 → 2027-04-28 (-14d) |  |  |
| MKH2-02-004-CNS-1760 | Pavement markings [Local 11 ] | 2027-04-27 → 2027-04-13 (-14d) | 2027-05-04 → 2027-04-20 (-14d) |  | -44d → -32d |
| MKH2-02-004-CNS-1840 | (Speed Hump) with retroreflectiveThermoplastic yellow [Local 11 ] | 2027-05-05 → 2027-04-21 (-14d) | 2027-05-12 → 2027-04-28 (-14d) |  | -44d → -32d |
| 4 | **Traffic Signage** | 2027-05-13 → 2027-04-29 (-14d) | 2027-05-25 → 2027-05-06 (-19d) |  |  |
| MKH2-02-004-CNS-1920 | Installation of Traffic Signs [Local 11 ] | 2027-05-13 → 2027-04-29 (-14d) | 2027-05-25 → 2027-05-06 (-19d) |  | -44d → -32d |
| 2 | **Storm Water Drainage** |  | 2027-01-09 → 2027-01-16 (+7d) |  |  |
| 1 | **Pipe Works** |  | 2026-12-29 → 2027-01-05 (+7d) |  |  |
| MKH2-02-004-CNS-2030 | Excavation & Compaction (FDT) [Local 11 ]-Stage 2 |  | 2026-12-03 → 2026-12-10 (+7d) | 80% → 95% | -25d → -26d |
| MKH2-02-004-CNS-2150 | Sand Bedding [Local 11 ]-Stage 2 |  | 2026-12-07 → 2026-12-14 (+7d) | 60% → 85% | -25d → -26d |
| MKH2-02-004-CNS-2270 | Installation of GRP Pipe [Local 11 ]-Stage 2 |  | 2026-12-20 → 2026-12-27 (+7d) | 60% → 85% | -25d → -26d |
| MKH2-02-004-CNS-2390 | Sand Cover & Warning Tape [Local 11 ]-Stage 2 |  | 2026-12-23 → 2026-12-30 (+7d) |  | -25d → -26d |
| MKH2-02-004-CNS-2510 | Backfilling & Compaction [Local 11 ]-Stage 2 |  | 2026-12-29 → 2027-01-05 (+7d) |  | -25d → -26d |
| 2 | **Manholes** |  | 2026-12-05 → 2026-12-12 (+7d) |  |  |
| MKH2-02-004-CNS-2700 | Installation of Manholes [Local 11 ]-Stage 3-[MH 15 to MH 20] |  | 2026-12-05 → 2026-12-12 (+7d) | 20% → 60% | 24d → 18d |
| 3 | **Catch Basins** | 2026-11-30 → 2026-12-07 (+7d) | 2027-01-09 → 2027-01-16 (+7d) |  |  |
| MKH2-02-004-CNS-2950 | Construction of Catch basins [Local 11 ]-Stage 1-[01 to 10] | 2026-11-30 → 2026-12-07 (+7d) | 2026-12-07 → 2026-12-14 (+7d) |  | 15d → 9d |
| MKH2-02-004-CNS-2960 | Construction of Catch basins [Local 11 ]-Stage 2-[11 to 20] | 2026-12-08 → 2026-12-15 (+7d) | 2026-12-15 → 2026-12-22 (+7d) |  | 15d → 9d |
| MKH2-02-004-CNS-2970 | Construction of Catch basins [Local 11 ]-Stage 3-[21 to 30] | 2026-12-16 → 2026-12-23 (+7d) | 2026-12-23 → 2026-12-30 (+7d) |  | 15d → 9d |
| MKH2-02-004-CNS-2980 | Construction of Catch basins [Local 11 ]-Stage 4-[31 to 40] | 2026-12-24 → 2026-12-31 (+7d) | 2026-12-31 → 2027-01-07 (+7d) |  | 15d → 9d |
| MKH2-02-004-CNS-2990 | Construction of Catch basins [Local 11 ]-Stage 5-[41 to 50] | 2027-01-02 → 2027-01-09 (+7d) | 2027-01-09 → 2027-01-16 (+7d) |  | 15d → 9d |
| 4 | **Concrete chambers Pipes** | 2026-12-08 → 2026-12-15 (+7d) | 2027-01-05 → 2027-01-12 (+7d) |  |  |
| MKH2-02-004-CNS-3170 | Excavation and Compaction (FDT) [Local 11 ] | 2026-12-08 → 2026-12-15 (+7d) | 2026-12-17 → 2026-12-24 (+7d) |  | 18d → 12d |
| MKH2-02-004-CNS-3260 | Installation of Pipes [Local 11 ] | 2026-12-19 → 2026-12-26 (+7d) | 2026-12-26 → 2027-01-02 (+7d) |  | 18d → 12d |
| MKH2-02-004-CNS-3350 | Backfilling & Compaction [Local 11 ] | 2026-12-27 → 2027-01-03 (+7d) | 2027-01-05 → 2027-01-12 (+7d) |  | 18d → 12d |
| 6 | **Local 29** |  | 2027-05-22 → 2027-05-03 (-19d) |  |  |
| 1 | **Road Works** |  | 2027-05-22 → 2027-05-03 (-19d) |  |  |
| 1 | **Eartworks & Site grading** |  | 2027-03-22 → 2027-03-04 (-18d) |  |  |
| MKH2-02-004-CNS-1200 | Road backfilling [Local 29 ] |  | 2026-12-05 → 2026-12-12 (+7d) |  | -15d → -21d |
| MKH2-02-004-CNS-1290 | Subgrade [Local 29 ] | 2027-02-13 → 2026-11-05 A (-100d) | 2027-03-01 → 2026-11-09 A (-112d) | 0% → 100% | -54d → none |
| MKH2-02-004-CNS-1370 | Aggregate base course [Local 29 ] | 2027-03-03 → 2027-02-16 (-15d) | 2027-03-22 → 2027-03-04 (-18d) |  | -55d → -43d |
| 2 | **Asphalt Works** | 2027-03-23 → 2027-03-06 (-17d) | 2027-04-12 → 2027-03-29 (-14d) |  |  |
| MKH2-02-004-CNS-1450 | Prime Coat (MC1) [Local 29 ] | 2027-03-23 → 2027-03-06 (-17d) | 2027-03-31 → 2027-03-17 (-14d) |  | -43d → -31d |
| MKH2-02-004-CNS-1530 | Bituminous base course [Local 29 ] | 2027-04-01 → 2027-03-18 (-14d) | 2027-04-12 → 2027-03-29 (-14d) |  | -41d → -29d |
| 3 | **Finishing Works** | 2027-04-13 → 2027-03-30 (-14d) | 2027-05-22 → 2027-05-03 (-19d) |  |  |
| 1 | **Precast Concrete Curb** | 2027-04-13 → 2027-03-30 (-14d) | 2027-04-19 → 2027-04-05 (-14d) |  |  |

| ID | Task | Start | Finish | Complete | Total float |
| --- | --- | --- | --- | --- | --- |
| MKH2-02-004-CNS-1610 | Installation of Precast Concrete curb [Local 29 ] | 2027-04-13 → 2027-03-30 (-14d) | 2027-04-19 → 2027-04-05 (-14d) |  | -41d → -29d |
| 2 | **Precast Interlocking block pavers** | 2027-04-20 → 2027-04-06 (-14d) | 2027-04-26 → 2027-04-12 (-14d) |  |  |
| MKH2-02-004-CNS-1690 | Installation of Interlocking block pavers for sidewalk/footpath [Local 29 ] | 2027-04-20 → 2027-04-06 (-14d) | 2027-04-26 → 2027-04-12 (-14d) |  | -41d → -29d |
| 3 | **Pavement Markings** | 2027-04-27 → 2027-04-13 (-14d) | 2027-05-10 → 2027-04-26 (-14d) |  |  |
| MKH2-02-004-CNS-1770 | Pavement markings [Local 29 ] | 2027-04-27 → 2027-04-13 (-14d) | 2027-05-03 → 2027-04-19 (-14d) |  | -41d → -29d |
| MKH2-02-004-CNS-1850 | (Speed Hump) with retroreflectiveThermoplastic yellow [Local 29 ] | 2027-05-04 → 2027-04-20 (-14d) | 2027-05-10 → 2027-04-26 (-14d) |  | -41d → -29d |
| 4 | **Traffic Signage** | 2027-05-11 → 2027-04-27 (-14d) | 2027-05-22 → 2027-05-03 (-19d) |  |  |
| MKH2-02-004-CNS-1930 | Installation of Traffic Signs [Local 29 ] | 2027-05-11 → 2027-04-27 (-14d) | 2027-05-22 → 2027-05-03 (-19d) |  | -41d → -29d |
| 2 | **Storm Water Drainage** |  | 2027-01-21 → 2027-01-28 (+7d) |  |  |
| 1 | **Pipe Works** |  | 2026-12-21 → 2026-12-28 (+7d) |  |  |
| MKH2-02-004-CNS-2040 | Excavation & Compaction (FDT) [Local 29 ] |  | 2026-12-12 → 2026-12-19 (+7d) |  | -9d → -2d |
| MKH2-02-004-CNS-2160 | Sand Bedding [Local 29 ] |  | 2026-12-14 → 2026-12-21 (+7d) |  | -9d → -2d |
| MKH2-02-004-CNS-2280 | Installation of GRP Pipe [Local 29 ] |  | 2026-12-16 → 2026-12-23 (+7d) |  | -9d → -2d |
| MKH2-02-004-CNS-2400 | Sand Cover & Warning Tape [Local 29 ] |  | 2026-12-19 → 2026-12-26 (+7d) |  | -9d → -1d |
| MKH2-02-004-CNS-2520 | Backfilling & Compaction [Local 29 ] |  | 2026-12-21 → 2026-12-28 (+7d) |  | -9d → -1d |
| 3 | **Catch Basins** | 2026-12-17 → 2026-12-24 (+7d) | 2027-01-14 → 2027-01-21 (+7d) |  |  |
| MKH2-02-004-CNS-3000 | Construction of Catch basins [Local 29 ]-Stage 1-[01 to 10] | 2026-12-17 → 2026-12-24 (+7d) | 2026-12-24 → 2026-12-31 (+7d) |  | 4d → -2d |
| MKH2-02-004-CNS-3010 | Construction of Catch basins [Local 29 ]-Stage 2-[11 to 20] | 2026-12-26 → 2027-01-02 (+7d) | 2027-01-02 → 2027-01-09 (+7d) |  | 4d → -2d |
| MKH2-02-004-CNS-3020 | Construction of Catch basins [Local 29 ]-Stage 3-[21 to 30] | 2027-01-03 → 2027-01-10 (+7d) | 2027-01-10 → 2027-01-17 (+7d) |  | 4d → -2d |
| MKH2-02-004-CNS-3030 | Construction of Catch basins [Local 29 ]-Stage 4-[31 to 35] | 2027-01-11 → 2027-01-18 (+7d) | 2027-01-14 → 2027-01-21 (+7d) |  | 4d → -2d |
| 4 | **Concrete chambers Pipes** | 2026-12-26 → 2027-01-02 (+7d) | 2027-01-21 → 2027-01-28 (+7d) |  |  |
| MKH2-02-004-CNS-3180 | Excavation and Compaction (FDT) [Local 29 ] | 2026-12-26 → 2027-01-02 (+7d) | 2027-01-02 → 2027-01-09 (+7d) |  | 6d → 0d |
| MKH2-02-004-CNS-3270 | Installation of Pipes [Local 29 ] | 2027-01-03 → 2027-01-10 (+7d) | 2027-01-12 → 2027-01-19 (+7d) |  | 6d → 0d |
| MKH2-02-004-CNS-3360 | Backfilling & Compaction [Local 29 ] | 2027-01-16 → 2027-01-23 (+7d) | 2027-01-21 → 2027-01-28 (+7d) |  | 4d → -2d |
| 7 | **Local 30** |  | 2027-06-05 → 2027-05-22 (-14d) |  |  |
| 1 | **Road Works** |  | 2027-06-05 → 2027-05-22 (-14d) |  |  |
| 1 | **Eartworks & Site grading** |  | 2027-04-05 → 2027-03-22 (-14d) |  |  |
| MKH2-02-004-CNS-1210 | Road backfilling [Local 30 ] |  | 2026-12-10 → 2026-12-17 (+7d) |  | -15d → -21d |
| MKH2-02-004-CNS-1380 | Aggregate base course [Local 30 ] | 2027-03-23 → 2027-03-06 (-17d) | 2027-04-05 → 2027-03-22 (-14d) |  | -55d → -43d |
| 2 | **Asphalt Works** | 2027-04-06 → 2027-03-23 (-14d) | 2027-04-26 → 2027-04-12 (-14d) |  |  |
| MKH2-02-004-CNS-1460 | Prime Coat (MC1) [Local 30 ] | 2027-04-06 → 2027-03-23 (-14d) | 2027-04-14 → 2027-03-31 (-14d) |  | -47d → -35d |
| MKH2-02-004-CNS-1540 | Bituminous base course [Local 30 ] | 2027-04-15 → 2027-04-01 (-14d) | 2027-04-26 → 2027-04-12 (-14d) |  | -47d → -35d |
| 3 | **Finishing Works** | 2027-04-27 → 2026-11-02 (-176d) | 2027-06-05 → 2027-05-22 (-14d) |  |  |
| 1 | **Precast Concrete Curb** | 2027-04-27 → 2026-11-02 (-176d) | 2027-05-03 → 2027-04-19 (-14d) |  |  |
| MKH2-02-004-CNS-1620 | Installation of Precast Concrete curb [Local 30 ] | 2027-04-27 → 2026-11-02 A (-176d) | 2027-05-03 → 2027-04-19 (-14d) | 0% → 30% | -47d → -35d |
| 2 | **Precast Interlocking block pavers** | 2027-05-04 → 2027-04-20 (-14d) | 2027-05-10 → 2027-04-26 (-14d) |  |  |
| MKH2-02-004-CNS-1700 | Installation of Interlocking block pavers for sidewalk/footpath [Local 30 ] | 2027-05-04 → 2027-04-20 (-14d) | 2027-05-10 → 2027-04-26 (-14d) |  | -47d → -35d |
| 3 | **Pavement Markings** | 2027-05-11 → 2027-04-27 (-14d) | 2027-05-29 → 2027-05-10 (-19d) |  |  |
| MKH2-02-004-CNS-1780 | Pavement markings [Local 30 ] | 2027-05-11 → 2027-04-27 (-14d) | 2027-05-22 → 2027-05-03 (-19d) |  | -47d → -35d |
| MKH2-02-004-CNS-1860 | (Speed Hump) with retroreflectiveThermoplastic yellow [Local 30 ] | 2027-05-23 → 2027-05-04 (-19d) | 2027-05-29 → 2027-05-10 (-19d) |  | -47d → -35d |
| 4 | **Traffic Signage** | 2027-05-30 → 2027-05-11 (-19d) | 2027-06-05 → 2027-05-22 (-14d) |  |  |
| MKH2-02-004-CNS-1940 | Installation of Traffic Signs [Local 30 ] | 2027-05-30 → 2027-05-11 (-19d) | 2027-06-05 → 2027-05-22 (-14d) |  | -47d → -35d |
| 2 | **Storm Water Drainage** |  | 2026-12-19 → 2026-11-09 (-40d) |  |  |
| 1 | **Pipe Works** |  | 2026-12-19 → 2026-11-09 (-40d) |  |  |
| MKH2-02-004-CNS-2050 | Excavation & Compaction (FDT) [Local 30 ] |  | 2026-12-12 → 2026-11-07 A (-35d) | 98% → 100% | 15d → none |
| MKH2-02-004-CNS-2170 | Sand Bedding [Local 30 ] |  | 2026-12-13 → 2026-11-07 A (-36d) | 98% → 100% | 15d → none |
| MKH2-02-004-CNS-2290 | Installation of GRP Pipe [Local 30 ] |  | 2026-12-15 → 2026-11-08 A (-37d) | 98% → 100% | 15d → none |
| MKH2-02-004-CNS-2410 | Sand Cover & Warning Tape [Local 30 ] |  | 2026-12-16 → 2026-11-09 A (-37d) | 98% → 100% | 15d → none |
| MKH2-02-004-CNS-2530 | Backfilling & Compaction [Local 30 ] |  | 2026-12-19 → 2026-11-09 A (-40d) | 98% → 100% | 15d → none |
| 8 | **Local 31** |  | 2027-07-14 → 2027-06-30 (-14d) |  |  |
| 1 | **Road Works** |  | 2027-07-14 → 2027-06-30 (-14d) |  |  |
| 1 | **Eartworks & Site grading** |  | 2027-04-26 → 2027-04-12 (-14d) |  |  |
| MKH2-02-004-CNS-1230 | Road backfilling [Local 31 ]-Stage 2 |  | 2026-12-24 → 2026-12-31 (+7d) |  | -15d → -21d |
| MKH2-02-004-CNS-1310 | Subgrade [Local 31 ] | 2027-03-02 → 2026-11-08 A (-114d) | 2027-03-25 → 2027-02-20 (-33d) | 0% → 15% | -46d → -21d |
| MKH2-02-004-CNS-1390 | Aggregate base course [Local 31 ] | 2027-04-06 → 2027-03-23 (-14d) | 2027-04-26 → 2027-04-12 (-14d) |  | -55d → -43d |
| 2 | **Asphalt Works** | 2027-04-27 → 2027-04-13 (-14d) | 2027-05-23 → 2027-05-04 (-19d) |  |  |
| MKH2-02-004-CNS-1470 | Prime Coat (MC1) [Local 31 ] | 2027-04-27 → 2027-04-13 (-14d) | 2027-05-06 → 2027-04-22 (-14d) |  | -55d → -43d |
| MKH2-02-004-CNS-1550 | Bituminous base course [Local 31 ] | 2027-05-08 → 2027-04-24 (-14d) | 2027-05-23 → 2027-05-04 (-19d) |  | -55d → -43d |
| 3 | **Finishing Works** | 2027-05-24 → 2027-05-05 (-19d) | 2027-07-14 → 2027-06-30 (-14d) |  |  |
| 1 | **Precast Concrete Curb** | 2027-05-24 → 2027-05-05 (-19d) | 2027-06-03 → 2027-05-20 (-14d) |  |  |
| MKH2-02-004-CNS-1630 | Installation of Precast Concrete curb [Local 31 ] | 2027-05-24 → 2027-05-05 (-19d) | 2027-06-03 → 2027-05-20 (-14d) |  | -55d → -43d |
| 2 | **Precast Interlocking block pavers** | 2027-06-05 → 2027-05-22 (-14d) | 2027-06-14 → 2027-05-31 (-14d) |  |  |
| MKH2-02-004-CNS-1710 | Installation of Interlocking block pavers for sidewalk/footpath [Local 31 ] | 2027-06-05 → 2027-05-22 (-14d) | 2027-06-14 → 2027-05-31 (-14d) |  | -55d → -43d |
| 3 | **Pavement Markings** | 2027-06-15 → 2027-06-01 (-14d) | 2027-07-05 → 2027-06-21 (-14d) |  |  |
| MKH2-02-004-CNS-1790 | Pavement markings [Local 31 ] | 2027-06-15 → 2027-06-01 (-14d) | 2027-06-24 → 2027-06-10 (-14d) |  | -55d → -43d |
| MKH2-02-004-CNS-1870 | (Speed Hump) with retroreflectiveThermoplastic yellow [Local 31 ] | 2027-06-26 → 2027-06-12 (-14d) | 2027-07-05 → 2027-06-21 (-14d) |  | -55d → -43d |
| 4 | **Traffic Signage** | 2027-07-06 → 2027-06-22 (-14d) | 2027-07-14 → 2027-06-30 (-14d) |  |  |
| MKH2-02-004-CNS-1950 | Installation of Traffic Signs [Local 31 ] | 2027-07-06 → 2027-06-22 (-14d) | 2027-07-14 → 2027-06-30 (-14d) |  | -35d → -23d |
| 2 | **Storm Water Drainage** |  | 2027-04-10 → 2027-03-03 (-38d) |  |  |
| 1 | **Pipe Works** |  | 2027-01-23 → 2027-01-30 (+7d) |  |  |

| ID | Task | Start | Finish | Complete | Total float |
| --- | --- | --- | --- | --- | --- |
| MKH2-02-004-CNS-2070 | Excavation & Compaction (FDT) [Local 31 ]-Stage 2 |  | 2026-12-24 → 2026-12-31 (+7d) |  | -15d → -21d |
| MKH2-02-004-CNS-2190 | Sand Bedding [Local 31 ]-Stage 2 |  | 2027-01-05 → 2027-01-12 (+7d) |  | -15d → -21d |
| MKH2-02-004-CNS-2310 | Installation of GRP Pipe [Local 31 ]-Stage 2 |  | 2027-01-11 → 2027-01-18 (+7d) |  | -15d → -21d |
| MKH2-02-004-CNS-2430 | Sand Cover & Warning Tape [Local 31 ]-Stage 2 |  | 2027-01-17 → 2027-01-24 (+7d) |  | -15d → -21d |
| MKH2-02-004-CNS-2550 | Backfilling & Compaction [Local 31 ]-Stage 2 |  | 2027-01-23 → 2027-01-30 (+7d) |  | -15d → -21d |
| 2 | **Manholes** |  | 2026-12-24 → 2026-11-08 (-46d) |  |  |
| MKH2-02-004-CNS-2770 | Installation of Manholes [Local 31 ]-Stage 3-[MH 15 to MH 20] |  | 2026-12-24 → 2026-11-08 A (-46d) | 95% → 100% | 59d → none |
| 3 | **Catch Basins** | 2026-12-12 → 2026-12-19 (+7d) | 2027-03-31 → 2027-02-21 (-38d) |  |  |
| MKH2-02-004-CNS-3070 | Construction of Catch basins [Local 31 ]-Stage 1-[01 to 10] | 2026-12-12 → 2026-12-19 (+7d) | 2026-12-16 → 2026-12-23 (+7d) |  | 45d → 39d |
| MKH2-02-004-CNS-3080 | Construction of Catch basins [Local 31 ]-Stage 2-[11 to 20] | 2027-01-10 → 2027-01-17 (+7d) | 2027-01-14 → 2027-01-21 (+7d) |  | 26d → 20d |
| MKH2-02-004-CNS-3090 | Construction of Catch basins [Local 31 ]-Stage 3-[21 to 31] | 2027-03-15 → 2027-02-04 (-39d) | 2027-03-20 → 2027-02-09 (-39d) |  | -20d → 9d |
| MKH2-02-004-CNS-3100 | Construction of Catch basins [Local 31 ]-Stage 4-[31 to 40] | 2027-03-21 → 2027-02-10 (-39d) | 2027-03-25 → 2027-02-15 (-38d) |  | -20d → 9d |
| MKH2-02-004-CNS-3110 | Construction of Catch basins [Local 31 ]-Stage 5-[41 to 49] | 2027-03-27 → 2027-02-16 (-39d) | 2027-03-31 → 2027-02-21 (-38d) |  | -20d → 9d |
| 4 | **Concrete chambers Pipes** | 2026-12-17 → 2026-12-24 (+7d) | 2027-04-10 → 2027-03-03 (-38d) |  |  |
| MKH2-02-004-CNS-3200 | Excavation and Compaction (FDT) [Local 31 ] | 2026-12-17 → 2026-12-24 (+7d) | 2026-12-27 → 2027-01-03 (+7d) |  | 45d → 39d |
| MKH2-02-004-CNS-3290 | Installation of Pipes [Local 31 ] | 2026-12-28 → 2027-01-04 (+7d) | 2027-01-10 → 2027-01-17 (+7d) |  | 45d → 39d |
| MKH2-02-004-CNS-3380 | Backfilling & Compaction [Local 31 ] | 2027-04-01 → 2027-02-23 (-37d) | 2027-04-10 → 2027-03-03 (-38d) |  | -20d → 9d |
| 4 | **Local 28** |  | 2027-08-07 → 2027-07-24 (-14d) |  |  |
| 1 | **Road Works** |  | 2027-08-07 → 2027-07-24 (-14d) |  |  |
| 1 | **Eartworks & Site grading** |  | 2027-05-12 → 2027-04-28 (-14d) |  |  |
| MKH2-02-004-CNS-1170 | Road backfilling [Local 28 ]-Stage 2 |  | 2026-12-20 → 2026-12-27 (+7d) |  | 12d → 6d |
| MKH2-02-004-CNS-1270 | Subgrade [Local 28 ] |  | 2027-04-13 → 2027-03-15 (-29d) |  | -39d → -14d |
| MKH2-02-004-CNS-1350 | Aggregate base course [Local 28 ] | 2027-04-27 → 2027-04-13 (-14d) | 2027-05-12 → 2027-04-28 (-14d) |  | -50d → -38d |
| 2 | **Asphalt Works** | 2027-05-13 → 2027-04-29 (-14d) | 2027-06-07 → 2027-05-24 (-14d) |  |  |
| MKH2-02-004-CNS-1430 | Prime Coat (MC1) [Local 28 ] | 2027-05-13 → 2027-04-29 (-14d) | 2027-05-26 → 2027-05-08 (-18d) |  | -50d → -38d |
| MKH2-02-004-CNS-1510 | Bituminous base course [Local 28 ] | 2027-05-27 → 2027-05-09 (-18d) | 2027-06-07 → 2027-05-24 (-14d) |  | -50d → -38d |
| 3 | **Finishing Works** | 2027-06-08 → 2027-05-25 (-14d) | 2027-08-07 → 2027-07-24 (-14d) |  |  |
| 1 | **Precast Concrete Curb** | 2027-06-08 → 2027-05-25 (-14d) | 2027-06-19 → 2027-06-05 (-14d) |  |  |
| MKH2-02-004-CNS-1590 | Installation of Precast Concrete curb [Local 28 ] | 2027-06-08 → 2027-05-25 (-14d) | 2027-06-19 → 2027-06-05 (-14d) |  | -50d → -38d |
| 2 | **Precast Interlocking block pavers** | 2027-06-20 → 2027-06-06 (-14d) | 2027-06-29 → 2027-06-15 (-14d) |  |  |
| MKH2-02-004-CNS-1670 | Installation of Interlocking block pavers for sidewalk/footpath [Local 28 ] | 2027-06-20 → 2027-06-06 (-14d) | 2027-06-29 → 2027-06-15 (-14d) |  | -50d → -38d |
| 3 | **Pavement Markings** | 2027-07-06 → 2027-06-22 (-14d) | 2027-07-27 → 2027-07-13 (-14d) |  |  |
| MKH2-02-004-CNS-1750 | Pavement markings [Local 28 ] | 2027-07-06 → 2027-06-22 (-14d) | 2027-07-17 → 2027-07-03 (-14d) |  | -55d → -43d |
| MKH2-02-004-CNS-1830 | (Speed Hump) with retroreflectiveThermoplastic yellow [Local 28 ] | 2027-07-18 → 2027-07-04 (-14d) | 2027-07-27 → 2027-07-13 (-14d) |  | -55d → -43d |
| 4 | **Traffic Signage** | 2027-07-28 → 2027-07-14 (-14d) | 2027-08-07 → 2027-07-24 (-14d) |  |  |
| MKH2-02-004-CNS-1910 | Installation of Traffic Signs [Local 28 ] | 2027-07-28 → 2027-07-14 (-14d) | 2027-08-07 → 2027-07-24 (-14d) |  | -55d → -43d |
| 2 | **Storm Water Drainage** |  | 2027-04-24 → 2027-03-21 (-34d) |  |  |
| 1 | **Pipe Works** |  | 2027-01-09 → 2027-01-16 (+7d) |  |  |
| MKH2-02-004-CNS-2010 | Excavation & Compaction (FDT) [Local 28 ]-Stage 2 |  | 2026-12-21 → 2026-12-28 (+7d) |  | 22d → 16d |
| MKH2-02-004-CNS-2130 | Sand Bedding [Local 28 ]-Stage 2 |  | 2026-12-26 → 2027-01-02 (+7d) |  | 22d → 16d |
| MKH2-02-004-CNS-2250 | Installation of GRP Pipe [Local 28 ]-Stage 2 |  | 2027-01-02 → 2027-01-09 (+7d) |  | 22d → 16d |
| MKH2-02-004-CNS-2370 | Sand Cover & Warning Tape [Local 28 ]-Stage 2 |  | 2027-01-05 → 2027-01-12 (+7d) |  | 22d → 16d |
| MKH2-02-004-CNS-2490 | Backfilling & Compaction [Local 28 ]-Stage 2 |  | 2027-01-09 → 2027-01-16 (+7d) |  | 22d → 16d |
| 3 | **Catch Basins** |  | 2027-01-13 → 2027-01-20 (+7d) |  |  |
| MKH2-02-004-CNS-2930 | Construction of Catch basins [Local 28 ]-Stage 4-[31 to 40] |  | 2027-01-07 → 2027-01-14 (+7d) |  | 50d → 44d |
| MKH2-02-004-CNS-2940 | Construction of Catch basins [Local 28 ]-Stage 5-[41 to 50] | 2027-01-09 → 2027-01-16 (+7d) | 2027-01-13 → 2027-01-20 (+7d) |  | 50d → 44d |
| 4 | **Concrete chambers Pipes** |  | 2027-04-24 → 2027-03-21 (-34d) |  |  |
| MKH2-02-004-CNS-3160 | Excavation and Compaction (FDT) [Local 28 ] |  | 2027-04-04 → 2027-02-25 (-38d) |  | -32d → -3d |
| MKH2-02-004-CNS-3250 | Installation of Pipes [Local 28 ] |  | 2027-04-15 → 2027-03-09 (-37d) |  | -32d → -3d |
| MKH2-02-004-CNS-3340 | Backfilling & Compaction [Local 28 ] |  | 2027-04-24 → 2027-03-21 (-34d) |  | -32d → -3d |
| 2 | **Local 10** |  | 2027-07-13 → 2027-06-29 (-14d) |  |  |
| 1 | **Road Works** |  | 2027-07-13 → 2027-06-29 (-14d) |  |  |
| 1 | **Eartworks & Site grading** |  | 2027-06-01 → 2027-05-13 (-19d) |  |  |
| MKH2-02-004-CNS-1010 | Road excavation [Local 10 ] |  | 2026-12-23 → 2026-12-30 (+7d) |  | 12d → 6d |
| MKH2-02-004-CNS-1130 | Road backfilling [Local 10 ] |  | 2026-12-23 → 2026-12-30 (+7d) |  | 12d → 6d |
| MKH2-02-004-CNS-1250 | Subgrade [Local 10 ] | 2027-05-22 A → 2026-11-05 A (-198d) | 2027-05-25 → 2027-05-06 (-19d) |  | -38d → -26d |
| MKH2-02-004-CNS-1330 | Aggregate base course [Local 10 ] | 2027-05-26 → 2027-05-08 (-18d) | 2027-06-01 → 2027-05-13 (-19d) |  | -38d → -26d |
| 2 | **Asphalt Works** | 2027-06-02 → 2027-05-19 (-14d) | 2027-06-10 → 2027-05-27 (-14d) |  |  |
| MKH2-02-004-CNS-1410 | Prime Coat (MC1) [Local 10 ] | 2027-06-02 → 2027-05-19 (-14d) | 2027-06-06 → 2027-05-23 (-14d) |  | -30d → -18d |
| MKH2-02-004-CNS-1490 | Bituminous base course [Local 10 ] | 2027-06-07 → 2027-05-24 (-14d) | 2027-06-10 → 2027-05-27 (-14d) |  | -28d → -16d |
| 3 | **Finishing Works** | 2027-06-20 → 2027-06-06 (-14d) | 2027-07-13 → 2027-06-29 (-14d) |  |  |
| 1 | **Precast Concrete Curb** | 2027-06-20 → 2027-06-06 (-14d) | 2027-06-26 → 2027-06-12 (-14d) |  |  |
| MKH2-02-004-CNS-1570 | Installation of Precast Concrete curb [Local 10 ] | 2027-06-20 → 2027-06-06 (-14d) | 2027-06-26 → 2027-06-12 (-14d) |  | -35d → -23d |
| 2 | **Precast Interlocking block pavers** | 2027-06-27 → 2027-06-13 (-14d) | 2027-07-01 → 2027-06-17 (-14d) |  |  |
| MKH2-02-004-CNS-1650 | Installation of Interlocking block pavers for sidewalk/footpath [Local 10 ] | 2027-06-27 → 2027-06-13 (-14d) | 2027-07-01 → 2027-06-17 (-14d) |  | -34d → -22d |
| 3 | **Pavement Markings** | 2027-07-03 → 2027-06-19 (-14d) | 2027-07-10 → 2027-06-26 (-14d) |  |  |
| MKH2-02-004-CNS-1730 | Pavement markings [Local 10 ] | 2027-07-03 → 2027-06-19 (-14d) | 2027-07-06 → 2027-06-22 (-14d) |  | -34d → -22d |
| MKH2-02-004-CNS-1810 | (Speed Hump) with retroreflectiveThermoplastic yellow [Local 10 ] | 2027-07-07 → 2027-06-23 (-14d) | 2027-07-10 → 2027-06-26 (-14d) |  | -34d → -22d |
| 4 | **Traffic Signage** | 2027-07-11 → 2027-06-27 (-14d) | 2027-07-13 → 2027-06-29 (-14d) |  |  |
| MKH2-02-004-CNS-1890 | Installation of Traffic Signs [Local 10 ] | 2027-07-11 → 2027-06-27 (-14d) | 2027-07-13 → 2027-06-29 (-14d) |  | -34d → -22d |

| ID | Task | Start | Finish | Complete | Total float |
| --- | --- | --- | --- | --- | --- |
| 2 | **Storm Water Drainage** |  | 2027-01-28 → 2027-02-04 (+7d) |  |  |
| 1 | **Pipe Works** |  | 2027-01-12 → 2027-01-19 (+7d) |  |  |
| MKH2-02-004-CNS-1970 | Excavation & Compaction (FDT) [Local 10 ] |  | 2026-12-28 → 2027-01-04 (+7d) |  | 12d → 6d |
| MKH2-02-004-CNS-2090 | Sand Bedding [Local 10 ] |  | 2026-12-31 → 2027-01-07 (+7d) |  | 12d → 6d |
| MKH2-02-004-CNS-2210 | Installation of GRP Pipe [Local 10 ] |  | 2027-01-06 → 2027-01-13 (+7d) |  | 12d → 6d |
| MKH2-02-004-CNS-2330 | Sand Cover & Warning Tape [Local 10 ] | 2027-01-07 → 2027-01-14 (+7d) | 2027-01-09 → 2027-01-16 (+7d) |  | 18d → 12d |
| MKH2-02-004-CNS-2450 | Backfilling & Compaction [Local 10 ] | 2027-01-10 → 2027-01-17 (+7d) | 2027-01-12 → 2027-01-19 (+7d) |  | 18d → 12d |
| 2 | **Manholes** | 2027-01-07 → 2027-01-14 (+7d) | 2027-01-18 → 2027-01-25 (+7d) |  |  |
| MKH2-02-004-CNS-2580 | Installation of Manholes [Local 10 ]-Stage 1-[MH 01 to MH 07] | 2027-01-07 → 2027-01-14 (+7d) | 2027-01-12 → 2027-01-19 (+7d) |  | 12d → 6d |
| MKH2-02-004-CNS-2590 | Installation of Manholes [Local 10 ]-Stage 2-[MH 08 to MH 11] | 2027-01-13 → 2027-01-20 (+7d) | 2027-01-18 → 2027-01-25 (+7d) |  | 18d → 12d |
| 3 | **Catch Basins** | 2027-01-13 → 2027-01-20 (+7d) | 2027-01-17 → 2027-01-24 (+7d) |  |  |
| MKH2-02-004-CNS-2790 | Construction of Catch basins [Local 10 ] | 2027-01-13 → 2027-01-20 (+7d) | 2027-01-17 → 2027-01-24 (+7d) |  | 12d → 6d |
| 4 | **Concrete chambers Pipes** | 2027-01-18 → 2027-01-25 (+7d) | 2027-01-28 → 2027-02-04 (+7d) |  |  |
| MKH2-02-004-CNS-3130 | Excavation and Compaction (FDT) [Local 10 ] | 2027-01-18 → 2027-01-25 (+7d) | 2027-01-20 → 2027-01-27 (+7d) |  | 12d → 6d |
| MKH2-02-004-CNS-3220 | Installation of Pipes [Local 10 ] | 2027-01-21 → 2027-01-28 (+7d) | 2027-01-25 → 2027-02-01 (+7d) |  | 12d → 6d |
| MKH2-02-004-CNS-3310 | Backfilling & Compaction [Local 10 ] | 2027-01-26 → 2027-02-02 (+7d) | 2027-01-28 → 2027-02-04 (+7d) |  | 12d → 6d |
| 1 | **Collector 02** |  | 2027-07-18 → 2027-07-04 (-14d) |  |  |
| 1 | **Road Works** |  | 2027-07-18 → 2027-07-04 (-14d) |  |  |
| 1 | **Eartworks & Site grading** |  | 2027-06-15 → 2027-06-01 (-14d) |  |  |
| MKH2-02-004-CNS-1000 | Road excavation [Collector 02 ] |  | 2026-12-27 → 2027-01-03 (+7d) |  | 12d → 6d |
| MKH2-02-004-CNS-1120 | Road backfilling [Collector 02 ] |  | 2026-12-27 → 2027-01-03 (+7d) |  | 12d → 6d |
| MKH2-02-004-CNS-1240 | Subgrade [Collector 02 ] |  | 2027-06-08 → 2027-05-25 (-14d) |  | -38d → -26d |
| MKH2-02-004-CNS-1320 | Aggregate base course [Collector 02 ] | 2027-06-09 → 2027-05-26 (-14d) | 2027-06-15 → 2027-06-01 (-14d) |  | -38d → -26d |
| 2 | **Asphalt Works** | 2027-06-16 → 2027-06-02 (-14d) | 2027-06-29 → 2027-06-15 (-14d) |  |  |
| MKH2-02-004-CNS-1400 | Prime Coat (MC1) [Collector 02 ] | 2027-06-16 → 2027-06-02 (-14d) | 2027-06-22 → 2027-06-08 (-14d) |  | -38d → -26d |
| MKH2-02-004-CNS-1480 | Bituminous base course [Collector 02 ] | 2027-06-23 → 2027-06-09 (-14d) | 2027-06-29 → 2027-06-15 (-14d) |  | -38d → -26d |
| 3 | **Finishing Works** | 2027-06-30 → 2027-06-16 (-14d) | 2027-07-18 → 2027-07-04 (-14d) |  |  |
| 1 | **Precast Concrete Curb** | 2027-06-30 → 2027-06-16 (-14d) | 2027-07-04 → 2027-06-20 (-14d) |  |  |
| MKH2-02-004-CNS-1560 | Installation of Precast Concrete curb [Collector 02 ] | 2027-06-30 → 2027-06-16 (-14d) | 2027-07-04 → 2027-06-20 (-14d) |  | -38d → -26d |
| 2 | **Precast Interlocking block pavers** | 2027-07-05 → 2027-06-21 (-14d) | 2027-07-07 → 2027-06-23 (-14d) |  |  |
| MKH2-02-004-CNS-1640 | Installation of Interlocking block pavers for sidewalk/footpath [Collector 02 ] | 2027-07-05 → 2027-06-21 (-14d) | 2027-07-07 → 2027-06-23 (-14d) |  | -38d → -26d |
| 3 | **Pavement Markings** | 2027-07-08 → 2027-06-24 (-14d) | 2027-07-14 → 2027-06-30 (-14d) |  |  |
| MKH2-02-004-CNS-1720 | Pavement markings [Collector 02 ] | 2027-07-08 → 2027-06-24 (-14d) | 2027-07-11 → 2027-06-27 (-14d) |  | -38d → -26d |
| MKH2-02-004-CNS-1800 | (Speed Hump) with retroreflectiveThermoplastic yellow [Collector 02 ] | 2027-07-12 → 2027-06-28 (-14d) | 2027-07-14 → 2027-06-30 (-14d) |  | -38d → -26d |
| 4 | **Traffic Signage** | 2027-07-15 → 2027-07-01 (-14d) | 2027-07-18 → 2027-07-04 (-14d) |  |  |
| MKH2-02-004-CNS-1880 | Installation of Traffic Signs [Collector 02 ] | 2027-07-15 → 2027-07-01 (-14d) | 2027-07-18 → 2027-07-04 (-14d) |  | -38d → -26d |
| 2 | **Storm Water Drainage** | 2026-12-28 → 2027-01-04 (+7d) | 2027-03-25 → 2027-02-15 (-38d) |  |  |
| 1 | **Pipe Works** | 2026-12-28 → 2027-01-04 (+7d) | 2027-01-20 → 2027-01-27 (+7d) |  |  |
| MKH2-02-004-CNS-1960 | Excavation & Compaction (FDT) [Collector 02 ] | 2026-12-28 → 2027-01-04 (+7d) | 2026-12-31 → 2027-01-07 (+7d) |  | 12d → 6d |
| MKH2-02-004-CNS-2080 | Sand Bedding [Collector 02 ] | 2027-01-02 → 2027-01-09 (+7d) | 2027-01-04 → 2027-01-11 (+7d) |  | 12d → 6d |
| MKH2-02-004-CNS-2200 | Installation of GRP Pipe [Collector 02 ] | 2027-01-05 → 2027-01-12 (+7d) | 2027-01-10 → 2027-01-17 (+7d) |  | 12d → 6d |
| MKH2-02-004-CNS-2320 | Sand Cover & Warning Tape [Collector 02 ] | 2027-01-11 → 2027-01-18 (+7d) | 2027-01-13 → 2027-01-20 (+7d) |  | 12d → 6d |
| MKH2-02-004-CNS-2440 | Backfilling & Compaction [Collector 02 ] | 2027-01-14 → 2027-01-21 (+7d) | 2027-01-20 → 2027-01-27 (+7d) |  | 12d → 6d |
| 2 | **Manholes** | 2027-01-11 → 2027-01-18 (+7d) | 2027-01-24 → 2027-01-31 (+7d) |  |  |
| MKH2-02-004-CNS-2560 | Installation of Manholes [Collector 02 ]-Stage 1-[MH 01 to MH 07] | 2027-01-11 → 2027-01-18 (+7d) | 2027-01-17 → 2027-01-24 (+7d) |  | 12d → 6d |
| MKH2-02-004-CNS-2570 | Installation of Manholes [Collector 02 ]-Stage 2-[MH 08 to MH 11] | 2027-01-18 → 2027-01-25 (+7d) | 2027-01-24 → 2027-01-31 (+7d) |  | 14d → 8d |
| 3 | **Catch Basins** | 2027-03-15 → 2027-02-04 (-39d) | 2027-03-17 → 2027-02-07 (-38d) |  |  |
| MKH2-02-004-CNS-2780 | Construction of Catch basins [Collector 02 ] | 2027-03-15 → 2027-02-04 (-39d) | 2027-03-17 → 2027-02-07 (-38d) |  | -32d → -3d |
| 4 | **Concrete chambers Pipes** | 2027-03-18 → 2027-02-08 (-38d) | 2027-03-25 → 2027-02-15 (-38d) |  |  |
| MKH2-02-004-CNS-3120 | Excavation and Compaction (FDT) [Collector 02 ] | 2027-03-18 → 2027-02-08 (-38d) | 2027-03-20 → 2027-02-09 (-39d) |  | -32d → -3d |
| MKH2-02-004-CNS-3210 | Installation of Pipes [Collector 02 ] | 2027-03-21 → 2027-02-10 (-39d) | 2027-03-23 → 2027-02-13 (-38d) |  | -32d → -3d |
| MKH2-02-004-CNS-3300 | Backfilling & Compaction [Collector 02 ] | 2027-03-24 → 2027-02-14 (-38d) | 2027-03-25 → 2027-02-15 (-38d) |  | -32d → -3d |
| 6 | **Testing and Commissioning** |  | 2027-08-30 → 2027-08-16 (-14d) |  |  |
| MKH2-02-004-T&C-1000 | Test for Stormwater Utilities |  | 2027-05-22 → 2027-04-13 (-39d) | 50% → 55% | -32d → -3d |
| MKH2-02-004-T&C-1010 | Test for Road Works | 2027-08-08 → 2027-07-25 (-14d) | 2027-08-30 → 2027-08-16 (-14d) |  | -55d → -43d |
| 7 | **Project Hand Over & Close-out** | 2027-05-23 → 2027-04-14 (-39d) | 2027-10-28 → 2027-10-14 (-14d) |  |  |
| 1 | **As-Built DWGs** | 2027-05-23 → 2027-04-14 (-39d) | 2027-10-05 → 2027-09-20 (-15d) |  |  |
| 1 | **As-Built DWGs Submittal** | 2027-05-23 → 2027-04-14 (-39d) | 2027-09-16 → 2027-09-02 (-14d) |  |  |
| MKH2-02-004-ABD-1000 | As-Built DWGs Submittal for Stormwater Utilities | 2027-05-23 → 2027-04-14 (-39d) | 2027-06-08 → 2027-05-01 (-38d) |  | -32d → -3d |
| MKH2-02-004-ABD-1010 | As-Built DWGs Submittal for Road Works | 2027-08-31 → 2027-08-17 (-14d) | 2027-09-16 → 2027-09-02 (-14d) |  | -55d → -43d |
| 2 | **As-Built DWGs Approval** | 2027-06-09 → 2027-05-02 (-38d) | 2027-10-05 → 2027-09-20 (-15d) |  |  |
| MKH2-02-004-ABD-1020 | As- Built DWGs Approval for Stormwater Utilities | 2027-06-09 → 2027-05-02 (-38d) | 2027-06-20 → 2027-05-12 (-39d) |  | -32d → -3d |
| MKH2-02-004-ABD-1030 | As- Built DWGs Approval for Road Works | 2027-09-18 → 2027-09-04 (-14d) | 2027-10-05 → 2027-09-20 (-15d) |  | -55d → -43d |
| 2 | **Demobilization** | 2027-10-06 → 2027-09-21 (-15d) | 2027-10-28 → 2027-10-14 (-14d) |  |  |
| MKH2-02-004-DEM-1000 | Demobilization of Manpower | 2027-10-06 → 2027-09-21 (-15d) | 2027-10-17 → 2027-10-03 (-14d) |  | -55d → -43d |
| MKH2-02-004-DEM-1010 | Removal of Equipment from Site | 2027-10-06 → 2027-09-21 (-15d) | 2027-10-17 → 2027-10-03 (-14d) |  | -55d → -43d |
| MKH2-02-004-DEM-1020 | Site Clean Up | 2027-10-06 → 2027-09-21 (-15d) | 2027-10-17 → 2027-10-03 (-14d) |  | -55d → -43d |
| MKH2-02-004-DEM-1030 | Removal of Site Offices and Structures | 2027-10-06 → 2027-09-21 (-15d) | 2027-10-17 → 2027-10-03 (-14d) |  | -55d → -43d |
| MKH2-02-004-DEM-1040 | Restoration of Ground Surfaces | 2027-10-18 → 2027-10-04 (-14d) | 2027-10-28 → 2027-10-14 (-14d) |  | -55d → -43d |

## Version 7 (data date 2026-11-17, saved 2026-11-16, file 2. MKH2-02-004-ENJ-WPR-021-17-11-2026 UP 18.xer)

Last finish 2027-10-14 → 2027-10-21 (+7d). Complete tasks 177 → 186.

Changed:

| ID | Task | Start | Finish | Complete | Total float |
| --- | --- | --- | --- | --- | --- |
| 1 | **Key Milestones** |  | 2027-10-14 → 2027-10-21 (+7d) |  |  |
| 1 | **General Milestone** |  | 2027-10-14 → 2027-10-21 (+7d) |  |  |
| MKH2-02-004-KM-1010 | Project Completion Date | 2027-10-14 → 2027-10-21 (+7d) | 2027-10-14 → 2027-10-21 (+7d) |  | -43d → -49d |
| 2 | **Contractual Milestone** |  | 2027-10-14 → 2027-10-21 (+7d) |  |  |
| 2 | **Construction** | 2027-03-21 → 2027-03-03 (-18d) | 2027-10-14 → 2027-10-21 (+7d) |  |  |
| MKH2-02-004-KM-1060 | Completion of Storm Water Drainage | 2027-03-21 → 2027-03-03 (-18d) | 2027-03-21 → 2027-03-03 (-18d) |  | -3d → 9d |
| MKH2-02-004-KM-1050 | Completion of Road Works | 2027-06-15 → 2027-06-22 (+7d) | 2027-06-15 → 2027-06-22 (+7d) |  | -26d → -32d |
| MKH2-02-004-KM-1070 | Completion of Entire Project | 2027-10-14 → 2027-10-21 (+7d) | 2027-10-14 → 2027-10-21 (+7d) |  | -43d → -49d |
| 4 | **Procurement** |  | 2027-01-30 → 2027-02-06 (+7d) |  |  |
| 1 | **Road Works - Civil** |  | 2027-01-30 → 2027-02-06 (+7d) |  |  |
| 4 | **Aggregate Base Course** |  | 2027-01-18 → 2027-01-25 (+7d) |  |  |
| MKH2-02-004-PRC-1010 | Material Delivery for Aggregate Base Course-Stage 1 | 2026-11-10 → 2026-11-17 (+7d) | 2026-12-14 → 2026-12-21 (+7d) |  | -43d → -49d |
| MKH2-02-004-PRC-1020 | Material Delivery for Aggregate Base Course-Stage 2 | 2026-12-15 → 2026-12-22 (+7d) | 2027-01-18 → 2027-01-25 (+7d) |  | -43d → -49d |
| 5 | **Bituminous Base Course** |  | 2027-01-30 → 2027-02-06 (+7d) |  |  |
| MKH2-02-004-PRC-1040 | Material Delivery for Bituminous Base Course-Stage 1 | 2026-11-10 → 2026-11-17 (+7d) | 2026-12-20 → 2026-12-27 (+7d) |  | -29d → -35d |
| MKH2-02-004-PRC-1050 | Material Delivery for Bituminous Base Course-Stage 2 | 2026-12-21 → 2026-12-28 (+7d) | 2027-01-30 → 2027-02-06 (+7d) |  | -29d → -35d |
| 7 | **Precast Concrete Curb** |  | 2026-12-14 → 2026-12-21 (+7d) |  |  |
| MKH2-02-004-PRC-1080 | Material Delivery for Precast Concrete Curb |  | 2026-12-14 → 2026-12-21 (+7d) |  | 2d → -4d |
| 8 | **Interlocking Block Pavers** |  | 2026-12-14 → 2026-12-21 (+7d) |  |  |
| MKH2-02-004-PRC-1110 | Material Delivery for Interlocking Block Pavers |  | 2026-12-14 → 2026-12-21 (+7d) |  | 2d → -4d |
| 9 | **Pavement Markings** | 2026-11-10 → 2026-11-17 (+7d) | 2027-01-11 → 2027-01-18 (+7d) |  |  |
| MKH2-02-004-PRC-1120 | PO for Pavement Markings | 2026-11-10 → 2026-11-17 (+7d) | 2026-11-14 → 2026-11-21 (+7d) |  | -22d → -28d |
| MKH2-02-004-PRC-1130 | Material Fabrication for Pavement Markings | 2026-11-15 → 2026-11-22 (+7d) | 2026-12-13 → 2026-12-20 (+7d) |  | -22d → -28d |
| MKH2-02-004-PRC-1140 | Material Delivery for Pavement Markings | 2026-12-14 → 2026-12-21 (+7d) | 2027-01-11 → 2027-01-18 (+7d) |  | -22d → -28d |
| 7 | **Stormwater Utilities** |  | 2026-12-12 → 2026-12-19 (+7d) |  |  |
| 7 | **Catch Basins** |  | 2026-12-12 → 2026-12-19 (+7d) |  |  |
| MKH2-02-004-PRC-1300 | Material Delivery for Catch Basins-Stage 2 |  | 2026-11-18 → 2026-11-25 (+7d) |  | 39d → 33d |
| MKH2-02-004-PRC-1310 | Material Delivery for Catch Basins-Stage 3 | 2026-11-19 → 2026-11-26 (+7d) | 2026-12-12 → 2026-12-19 (+7d) |  | 39d → 33d |
| 5 | **Construction** |  | 2027-07-24 → 2027-07-31 (+7d) |  |  |
| 1 | **Roads** |  | 2027-07-24 → 2027-07-31 (+7d) |  |  |
| 3 | **Local 17** |  | 2027-05-09 → 2027-05-20 (+11d) |  |  |
| 1 | **Road Works** |  | 2027-05-09 → 2027-05-20 (+11d) |  |  |
| 1 | **Eartworks & Site grading** |  | 2027-02-04 → 2027-02-11 (+7d) |  |  |
| MKH2-02-004-CNS-1150 | Road backfilling [Local 17 ]-Stage 2 |  | 2026-11-26 → 2026-12-03 (+7d) |  | -32d → -38d |
| MKH2-02-004-CNS-1030 | Road excavation [Local 17 ]-Stage 2 |  | 2026-11-21 → 2026-11-28 (+7d) |  | -32d → -38d |
| MKH2-02-004-CNS-1260 | Subgrade [Local 17 ] | 2026-12-20 → 2026-12-27 (+7d) | 2027-01-05 → 2027-01-12 (+7d) |  | -32d → -38d |
| MKH2-02-004-CNS-1340 | Aggregate base course [Local 17 ] | 2027-01-19 → 2027-01-26 (+7d) | 2027-02-04 → 2027-02-11 (+7d) |  | -43d → -49d |
| 2 | **Asphalt Works** | 2027-02-06 → 2027-02-13 (+7d) | 2027-03-07 → 2027-03-17 (+10d) |  |  |
| MKH2-02-004-CNS-1420 | Prime Coat (MC1) [Local 17 ] | 2027-02-06 → 2027-02-13 (+7d) | 2027-02-16 → 2027-02-24 (+8d) |  | -34d → -40d |
| MKH2-02-004-CNS-1500 | Bituminous base course [Local 17 ] | 2027-02-17 → 2027-02-25 (+8d) | 2027-03-07 → 2027-03-17 (+10d) |  | -34d → -40d |
| 3 | **Finishing Works** | 2027-03-08 → 2027-03-18 (+10d) | 2027-05-09 → 2027-05-20 (+11d) |  |  |
| 1 | **Precast Concrete Curb** | 2027-03-08 → 2027-03-18 (+10d) | 2027-03-24 → 2027-03-31 (+7d) |  |  |
| MKH2-02-004-CNS-1580 | Installation of Precast Concrete curb [Local 17 ] | 2027-03-08 → 2027-03-18 (+10d) | 2027-03-24 → 2027-03-31 (+7d) |  | -34d → -40d |
| 2 | **Precast Interlocking block pavers** | 2027-03-25 → 2027-04-01 (+7d) | 2027-04-06 → 2027-04-13 (+7d) |  |  |
| MKH2-02-004-CNS-1660 | Installation of Interlocking block pavers for sidewalk/footpath [Local 17 ] | 2027-03-25 → 2027-04-01 (+7d) | 2027-04-06 → 2027-04-13 (+7d) |  | -34d → -40d |
| 3 | **Pavement Markings** | 2027-04-07 → 2027-04-14 (+7d) | 2027-04-25 → 2027-05-02 (+7d) |  |  |
| MKH2-02-004-CNS-1740 | Pavement markings [Local 17 ] | 2027-04-07 → 2027-04-14 (+7d) | 2027-04-15 → 2027-04-22 (+7d) |  | -34d → -40d |
| MKH2-02-004-CNS-1820 | (Speed Hump) with retroreflectiveThermoplastic yellow [Local 17 ] | 2027-04-17 → 2027-04-24 (+7d) | 2027-04-25 → 2027-05-02 (+7d) |  | -34d → -40d |
| 4 | **Traffic Signage** | 2027-04-26 → 2027-05-03 (+7d) | 2027-05-09 → 2027-05-20 (+11d) |  |  |
| MKH2-02-004-CNS-1900 | Installation of Traffic Signs [Local 17 ] | 2027-04-26 → 2027-05-03 (+7d) | 2027-05-09 → 2027-05-20 (+11d) |  | -34d → -40d |
| 2 | **Storm Water Drainage** |  | 2027-02-03 → 2027-02-10 (+7d) |  |  |
| 1 | **Pipe Works** |  | 2026-12-19 → 2026-12-26 (+7d) |  |  |
| MKH2-02-004-CNS-1990 | Excavation & Compaction (FDT) [Local 17 ]-Stage 2 |  | 2026-11-26 → 2026-12-03 (+7d) |  | -32d → -38d |
| MKH2-02-004-CNS-2110 | Sand Bedding [Local 17 ]-Stage 2 |  | 2026-12-01 → 2026-12-08 (+7d) |  | -32d → -38d |
| MKH2-02-004-CNS-2230 | Installation of GRP Pipe [Local 17 ]-Stage 2 |  | 2026-12-09 → 2026-12-16 (+7d) |  | -32d → -38d |
| MKH2-02-004-CNS-2350 | Sand Cover & Warning Tape [Local 17 ]-Stage 2 |  | 2026-12-14 → 2026-12-21 (+7d) |  | -32d → -38d |
| MKH2-02-004-CNS-2470 | Backfilling & Compaction [Local 17 ]-Stage 2 |  | 2026-12-19 → 2026-12-26 (+7d) |  | -32d → -38d |
| 2 | **Manholes** |  | 2026-12-20 → 2026-12-27 (+7d) |  |  |
| MKH2-02-004-CNS-2600 | Installation of Manholes [Local 17 ]-Stage 1-[MH 01 to MH 07] |  | 2026-11-17 → 2026-11-24 (+7d) | 70% → 90% | -3d → 2d |
| MKH2-02-004-CNS-2610 | Installation of Manholes [Local 17 ]-Stage 2-[MH 08 to MH 14] | 2026-11-18 → 2026-11-25 (+7d) | 2026-11-25 → 2026-12-02 (+7d) |  | 22d → 16d |
| MKH2-02-004-CNS-2620 | Installation of Manholes [Local 17 ]-Stage 3-[MH 15 to MH 21] | 2026-11-26 → 2026-12-03 (+7d) | 2026-12-03 → 2026-12-10 (+7d) |  | 22d → 16d |
| MKH2-02-004-CNS-2630 | Installation of Manholes [Local 17 ]-Stage 4-[MH 22 to MH 28] | 2026-12-05 → 2026-12-12 (+7d) | 2026-12-12 → 2026-12-19 (+7d) |  | 22d → 16d |
| MKH2-02-004-CNS-2640 | Installation of Manholes [Local 17 ]-Stage 5-[MH 29 to MH 33] | 2026-12-13 → 2026-12-20 (+7d) | 2026-12-20 → 2026-12-27 (+7d) |  | 22d → 16d |
| 3 | **Catch Basins** | 2026-11-18 → 2026-11-25 (+7d) | 2027-02-03 → 2027-02-10 (+7d) |  |  |
| MKH2-02-004-CNS-2800 | Construction of Catch basins [Local 17 ]-Stage 1-[01 to 10] | 2026-11-18 → 2026-11-25 (+7d) | 2026-11-25 → 2026-12-02 (+7d) |  | -3d → 2d |
| MKH2-02-004-CNS-2810 | Construction of Catch basins [Local 17 ]-Stage 2-[11 to 20] | 2026-11-26 → 2026-12-03 (+7d) | 2026-12-03 → 2026-12-10 (+7d) |  | -3d → 3d |
| MKH2-02-004-CNS-2820 | Construction of Catch basins [Local 17 ]-Stage 3-[21 to 30] | 2026-12-05 → 2026-12-12 (+7d) | 2026-12-12 → 2026-12-19 (+7d) |  | -3d → 3d |
| MKH2-02-004-CNS-2830 | Construction of Catch basins [Local 17 ]-Stage 4-[31 to 40] | 2026-12-13 → 2026-12-20 (+7d) | 2026-12-20 → 2026-12-27 (+7d) |  | -3d → 3d |
| MKH2-02-004-CNS-2840 | Construction of Catch basins [Local 17 ]-Stage 5-[41 to 50] | 2026-12-21 → 2026-12-28 (+7d) | 2026-12-28 → 2027-01-04 (+7d) |  | -3d → 3d |
| MKH2-02-004-CNS-2850 | Construction of Catch basins [Local 17 ]-Stage 6-[51 to 60] | 2026-12-29 → 2027-01-05 (+7d) | 2027-01-05 → 2027-01-12 (+7d) |  | -3d → 3d |

| ID | Task | Start | Finish | Complete | Total float |
| --- | --- | --- | --- | --- | --- |
| MKH2-02-004-CNS-2860 | Construction of Catch basins [Local 17 ]-Stage 7-[61 to 70] | 2027-01-06 → 2027-01-13 (+7d) | 2027-01-13 → 2027-01-20 (+7d) |  | -3d → 3d |
| MKH2-02-004-CNS-2870 | Construction of Catch basins [Local 17 ]-Stage 8-[71 to 80] | 2027-01-14 → 2027-01-21 (+7d) | 2027-01-21 → 2027-01-28 (+7d) |  | -3d → 3d |
| MKH2-02-004-CNS-2880 | Construction of Catch basins [Local 17 ]-Stage 9-[81 to 90] | 2027-01-23 → 2027-01-30 (+7d) | 2027-01-30 → 2027-02-06 (+7d) |  | -3d → 3d |
| MKH2-02-004-CNS-2890 | Construction of Catch basins [Local 17 ]-Stage 10-[91 to 96] | 2027-01-31 → 2027-02-07 (+7d) | 2027-02-03 → 2027-02-10 (+7d) |  | -3d → 3d |
| 4 | **Concrete chambers Pipes** | 2026-11-26 → 2026-12-03 (+7d) | 2027-01-17 → 2027-01-24 (+7d) |  |  |
| MKH2-02-004-CNS-3140 | Excavation and Compaction (FDT) [Local 17 ]-Stage 1 | 2026-11-26 → 2026-12-03 (+7d) | 2026-12-08 → 2026-12-15 (+7d) |  | 8d → 2d |
| MKH2-02-004-CNS-3150 | Excavation and Compaction (FDT) [Local 17 ]-Stage 2 | 2026-12-09 → 2026-12-16 (+7d) | 2026-12-21 → 2026-12-28 (+7d) |  | 9d → 3d |
| MKH2-02-004-CNS-3230 | Installation of Pipes [Local 17 ]-Stage 1 | 2026-12-09 → 2026-12-16 (+7d) | 2026-12-22 → 2026-12-29 (+7d) |  | 8d → 2d |
| MKH2-02-004-CNS-3240 | Installation of Pipes [Local 17 ]-Stage 2 | 2026-12-23 → 2026-12-30 (+7d) | 2027-01-05 → 2027-01-12 (+7d) |  | 8d → 2d |
| MKH2-02-004-CNS-3320 | Backfilling & Compaction [Local 17 ]-Stage 1 | 2026-12-23 → 2026-12-30 (+7d) | 2027-01-03 → 2027-01-10 (+7d) |  | 10d → 4d |
| MKH2-02-004-CNS-3330 | Backfilling & Compaction [Local 17 ]-Stage 2 | 2027-01-06 → 2027-01-13 (+7d) | 2027-01-17 → 2027-01-24 (+7d) |  | 8d → 2d |
| 5 | **Local 11** |  | 2027-05-06 → 2027-05-13 (+7d) |  |  |
| 1 | **Road Works** |  | 2027-05-06 → 2027-05-13 (+7d) |  |  |
| 1 | **Eartworks & Site grading** |  | 2027-02-15 → 2027-02-23 (+8d) |  |  |
| MKH2-02-004-CNS-1190 | Road backfilling [Local 11 ]-Stage 2 |  | 2026-12-06 → 2026-12-13 (+7d) |  | -26d → -21d |
| MKH2-02-004-CNS-1280 | Subgrade [Local 11 ] |  | 2027-01-16 → 2027-01-23 (+7d) |  | -26d → -32d |
| MKH2-02-004-CNS-1360 | Aggregate base course [Local 11 ] | 2027-02-06 → 2027-02-13 (+7d) | 2027-02-15 → 2027-02-23 (+8d) |  | -43d → -49d |
| 2 | **Asphalt Works** | 2027-02-17 → 2027-02-25 (+8d) | 2027-03-18 → 2027-03-25 (+7d) |  |  |
| MKH2-02-004-CNS-1440 | Prime Coat (MC1) [Local 11 ] | 2027-02-17 → 2027-02-25 (+8d) | 2027-03-01 → 2027-03-08 (+7d) |  | -32d → -38d |
| MKH2-02-004-CNS-1520 | Bituminous base course [Local 11 ] | 2027-03-02 → 2027-03-09 (+7d) | 2027-03-18 → 2027-03-25 (+7d) |  | -32d → -38d |
| 3 | **Finishing Works** | 2027-03-20 → 2026-11-11 (-129d) | 2027-05-06 → 2027-05-13 (+7d) |  |  |
| 1 | **Precast Concrete Curb** | 2027-03-20 → 2026-11-11 (-129d) | 2027-03-31 → 2027-04-07 (+7d) |  |  |
| MKH2-02-004-CNS-1600 | Installation of Precast Concrete curb [Local 11 ] | 2027-03-20 → 2026-11-11 A (-129d) | 2027-03-31 → 2027-04-07 (+7d) | 0% → 12% | -32d → -38d |
| 2 | **Precast Interlocking block pavers** | 2027-04-01 → 2027-04-08 (+7d) | 2027-04-12 → 2027-04-19 (+7d) |  |  |
| MKH2-02-004-CNS-1680 | Installation of Interlocking block pavers for sidewalk/footpath [Local 11 ] | 2027-04-01 → 2027-04-08 (+7d) | 2027-04-12 → 2027-04-19 (+7d) |  | -32d → -38d |
| 3 | **Pavement Markings** | 2027-04-13 → 2027-04-20 (+7d) | 2027-04-28 → 2027-05-05 (+7d) |  |  |
| MKH2-02-004-CNS-1760 | Pavement markings [Local 11 ] | 2027-04-13 → 2027-04-20 (+7d) | 2027-04-20 → 2027-04-27 (+7d) |  | -32d → -38d |
| MKH2-02-004-CNS-1840 | (Speed Hump) with retroreflectiveThermoplastic yellow [Local 11 ] | 2027-04-21 → 2027-04-28 (+7d) | 2027-04-28 → 2027-05-05 (+7d) |  | -32d → -38d |
| 4 | **Traffic Signage** | 2027-04-29 → 2027-05-06 (+7d) | 2027-05-06 → 2027-05-13 (+7d) |  |  |
| MKH2-02-004-CNS-1920 | Installation of Traffic Signs [Local 11 ] | 2027-04-29 → 2027-05-06 (+7d) | 2027-05-06 → 2027-05-13 (+7d) |  | -32d → -38d |
| 2 | **Storm Water Drainage** |  | 2027-01-16 → 2027-01-14 (-2d) |  |  |
| 1 | **Pipe Works** |  | 2027-01-05 → 2026-12-30 (-6d) |  |  |
| MKH2-02-004-CNS-2030 | Excavation & Compaction (FDT) [Local 11 ]-Stage 2 |  | 2026-12-10 → 2026-12-17 (+7d) |  | -26d → -21d |
| MKH2-02-004-CNS-2150 | Sand Bedding [Local 11 ]-Stage 2 |  | 2026-12-14 → 2026-12-21 (+7d) | 85% → 90% | -26d → -21d |
| MKH2-02-004-CNS-2270 | Installation of GRP Pipe [Local 11 ]-Stage 2 |  | 2026-12-27 → 2026-12-24 (-3d) | 85% → 90% | -26d → -21d |
| MKH2-02-004-CNS-2390 | Sand Cover & Warning Tape [Local 11 ]-Stage 2 |  | 2026-12-30 → 2026-12-28 (-2d) | 60% → 90% | -26d → -21d |
| MKH2-02-004-CNS-2510 | Backfilling & Compaction [Local 11 ]-Stage 2 |  | 2027-01-05 → 2026-12-30 (-6d) | 60% → 90% | -26d → -21d |
| 2 | **Manholes** |  | 2026-12-12 → 2026-11-11 (-31d) |  |  |
| MKH2-02-004-CNS-2700 | Installation of Manholes [Local 11 ]-Stage 3-[MH 15 to MH 20] |  | 2026-12-12 → 2026-11-11 A (-31d) | 60% → 100% | 18d → none |
| 3 | **Catch Basins** | 2026-12-07 → 2026-11-11 (-26d) | 2027-01-16 → 2027-01-14 (-2d) |  |  |
| MKH2-02-004-CNS-2950 | Construction of Catch basins [Local 11 ]-Stage 1-[01 to 10] | 2026-12-07 → 2026-11-11 A (-26d) | 2026-12-14 → 2026-11-14 A (-30d) | 0% → 100% | 9d → none |
| MKH2-02-004-CNS-2960 | Construction of Catch basins [Local 11 ]-Stage 2-[11 to 20] | 2026-12-15 → 2026-11-14 A (-31d) | 2026-12-22 → 2026-12-21 (-1d) | 0% → 90% | 9d → 21d |
| MKH2-02-004-CNS-2970 | Construction of Catch basins [Local 11 ]-Stage 3-[21 to 30] | 2026-12-23 → 2026-12-22 (-1d) | 2026-12-30 → 2026-12-29 (-1d) |  | 9d → 21d |
| MKH2-02-004-CNS-2980 | Construction of Catch basins [Local 11 ]-Stage 4-[31 to 40] | 2026-12-31 → 2026-12-30 (-1d) | 2027-01-07 → 2027-01-06 (-1d) |  | 9d → 21d |
| MKH2-02-004-CNS-2990 | Construction of Catch basins [Local 11 ]-Stage 5-[41 to 50] | 2027-01-09 → 2027-01-07 (-2d) | 2027-01-16 → 2027-01-14 (-2d) |  | 9d → 21d |
| 4 | **Concrete chambers Pipes** | 2026-12-15 → 2026-12-14 (-1d) | 2027-01-12 → 2027-01-11 (-1d) |  |  |
| MKH2-02-004-CNS-3170 | Excavation and Compaction (FDT) [Local 11 ] | 2026-12-15 → 2026-12-14 (-1d) | 2026-12-24 → 2026-12-23 (-1d) |  | 12d → 13d |
| MKH2-02-004-CNS-3260 | Installation of Pipes [Local 11 ] | 2026-12-26 → 2026-12-24 (-2d) | 2027-01-02 → 2026-12-31 (-2d) |  | 12d → 13d |
| MKH2-02-004-CNS-3350 | Backfilling & Compaction [Local 11 ] | 2027-01-03 → 2027-01-02 (-1d) | 2027-01-12 → 2027-01-11 (-1d) |  | 12d → 13d |
| 6 | **Local 29** |  | 2027-05-03 → 2027-05-10 (+7d) |  |  |
| 1 | **Road Works** |  | 2027-05-03 → 2027-05-10 (+7d) |  |  |
| 1 | **Eartworks & Site grading** |  | 2027-03-04 → 2027-03-15 (+11d) |  |  |
| MKH2-02-004-CNS-1200 | Road backfilling [Local 29 ] |  | 2026-12-12 → 2026-12-19 (+7d) |  | -21d → -9d |
| MKH2-02-004-CNS-1370 | Aggregate base course [Local 29 ] | 2027-02-16 → 2027-02-24 (+8d) | 2027-03-04 → 2027-03-15 (+11d) |  | -43d → -49d |
| 2 | **Asphalt Works** | 2027-03-06 → 2027-03-16 (+10d) | 2027-03-29 → 2027-04-05 (+7d) |  |  |
| MKH2-02-004-CNS-1450 | Prime Coat (MC1) [Local 29 ] | 2027-03-06 → 2027-03-16 (+10d) | 2027-03-17 → 2027-03-24 (+7d) |  | -31d → -37d |
| MKH2-02-004-CNS-1530 | Bituminous base course [Local 29 ] | 2027-03-18 → 2027-03-25 (+7d) | 2027-03-29 → 2027-04-05 (+7d) |  | -29d → -35d |
| 3 | **Finishing Works** | 2027-03-30 → 2027-04-06 (+7d) | 2027-05-03 → 2027-05-10 (+7d) |  |  |
| 1 | **Precast Concrete Curb** | 2027-03-30 → 2027-04-06 (+7d) | 2027-04-05 → 2027-04-12 (+7d) |  |  |
| MKH2-02-004-CNS-1610 | Installation of Precast Concrete curb [Local 29 ] | 2027-03-30 → 2027-04-06 (+7d) | 2027-04-05 → 2027-04-12 (+7d) |  | -29d → -35d |
| 2 | **Precast Interlocking block pavers** | 2027-04-06 → 2027-04-13 (+7d) | 2027-04-12 → 2027-04-19 (+7d) |  |  |
| MKH2-02-004-CNS-1690 | Installation of Interlocking block pavers for sidewalk/footpath [Local 29 ] | 2027-04-06 → 2027-04-13 (+7d) | 2027-04-12 → 2027-04-19 (+7d) |  | -29d → -35d |
| 3 | **Pavement Markings** | 2027-04-13 → 2027-04-20 (+7d) | 2027-04-26 → 2027-05-03 (+7d) |  |  |
| MKH2-02-004-CNS-1770 | Pavement markings [Local 29 ] | 2027-04-13 → 2027-04-20 (+7d) | 2027-04-19 → 2027-04-26 (+7d) |  | -29d → -35d |
| MKH2-02-004-CNS-1850 | (Speed Hump) with retroreflectiveThermoplastic yellow [Local 29 ] | 2027-04-20 → 2027-04-27 (+7d) | 2027-04-26 → 2027-05-03 (+7d) |  | -29d → -35d |
| 4 | **Traffic Signage** | 2027-04-27 → 2027-05-04 (+7d) | 2027-05-03 → 2027-05-10 (+7d) |  |  |
| MKH2-02-004-CNS-1930 | Installation of Traffic Signs [Local 29 ] | 2027-04-27 → 2027-05-04 (+7d) | 2027-05-03 → 2027-05-10 (+7d) |  | -29d → -35d |
| 2 | **Storm Water Drainage** |  | 2027-01-28 → 2027-02-04 (+7d) |  |  |
| 1 | **Pipe Works** |  | 2026-12-28 → 2027-01-04 (+7d) |  |  |
| MKH2-02-004-CNS-2040 | Excavation & Compaction (FDT) [Local 29 ] |  | 2026-12-19 → 2026-12-26 (+7d) |  | -2d → -8d |

| ID | Task | Start | Finish | Complete | Total float |
| --- | --- | --- | --- | --- | --- |
| MKH2-02-004-CNS-2160 | Sand Bedding [Local 29 ] |  | 2026-12-21 → 2026-12-28 (+7d) |  | -2d → -8d |
| MKH2-02-004-CNS-2280 | Installation of GRP Pipe [Local 29 ] |  | 2026-12-23 → 2026-12-30 (+7d) |  | -2d → -8d |
| MKH2-02-004-CNS-2400 | Sand Cover & Warning Tape [Local 29 ] |  | 2026-12-26 → 2027-01-02 (+7d) |  | -1d → -7d |
| MKH2-02-004-CNS-2520 | Backfilling & Compaction [Local 29 ] |  | 2026-12-28 → 2027-01-04 (+7d) |  | -1d → -7d |
| 3 | **Catch Basins** | 2026-12-24 → 2026-12-31 (+7d) | 2027-01-21 → 2027-01-28 (+7d) |  |  |
| MKH2-02-004-CNS-3000 | Construction of Catch basins [Local 29 ]-Stage 1-[01 to 10] | 2026-12-24 → 2026-12-31 (+7d) | 2026-12-31 → 2027-01-07 (+7d) |  | -2d → -8d |
| MKH2-02-004-CNS-3010 | Construction of Catch basins [Local 29 ]-Stage 2-[11 to 20] | 2027-01-02 → 2027-01-09 (+7d) | 2027-01-09 → 2027-01-16 (+7d) |  | -2d → -8d |
| MKH2-02-004-CNS-3020 | Construction of Catch basins [Local 29 ]-Stage 3-[21 to 30] | 2027-01-10 → 2027-01-17 (+7d) | 2027-01-17 → 2027-01-24 (+7d) |  | -2d → -8d |
| MKH2-02-004-CNS-3030 | Construction of Catch basins [Local 29 ]-Stage 4-[31 to 35] | 2027-01-18 → 2027-01-25 (+7d) | 2027-01-21 → 2027-01-28 (+7d) |  | -2d → -8d |
| 4 | **Concrete chambers Pipes** | 2027-01-02 → 2027-01-09 (+7d) | 2027-01-28 → 2027-02-04 (+7d) |  |  |
| MKH2-02-004-CNS-3180 | Excavation and Compaction (FDT) [Local 29 ] | 2027-01-02 → 2027-01-09 (+7d) | 2027-01-09 → 2027-01-16 (+7d) |  | 0d → -6d |
| MKH2-02-004-CNS-3270 | Installation of Pipes [Local 29 ] | 2027-01-10 → 2027-01-17 (+7d) | 2027-01-19 → 2027-01-26 (+7d) |  | 0d → -6d |
| MKH2-02-004-CNS-3360 | Backfilling & Compaction [Local 29 ] | 2027-01-23 → 2027-01-30 (+7d) | 2027-01-28 → 2027-02-04 (+7d) |  | -2d → -8d |
| 7 | **Local 30** |  | 2027-05-22 → 2027-05-29 (+7d) |  |  |
| 1 | **Road Works** |  | 2027-05-22 → 2027-05-29 (+7d) |  |  |
| 1 | **Eartworks & Site grading** |  | 2027-03-22 → 2027-03-29 (+7d) |  |  |
| MKH2-02-004-CNS-1210 | Road backfilling [Local 30 ] |  | 2026-12-17 → 2026-12-24 (+7d) |  | -21d → -9d |
| MKH2-02-004-CNS-1380 | Aggregate base course [Local 30 ] | 2027-03-06 → 2027-03-16 (+10d) | 2027-03-22 → 2027-03-29 (+7d) |  | -43d → -49d |
| 2 | **Asphalt Works** | 2027-03-23 → 2027-03-30 (+7d) | 2027-04-12 → 2027-04-19 (+7d) |  |  |
| MKH2-02-004-CNS-1460 | Prime Coat (MC1) [Local 30 ] | 2027-03-23 → 2027-03-30 (+7d) | 2027-03-31 → 2027-04-07 (+7d) |  | -35d → -41d |
| MKH2-02-004-CNS-1540 | Bituminous base course [Local 30 ] | 2027-04-01 → 2027-04-08 (+7d) | 2027-04-12 → 2027-04-19 (+7d) |  | -35d → -41d |
| 3 | **Finishing Works** |  | 2027-05-22 → 2027-05-29 (+7d) |  |  |
| 1 | **Precast Concrete Curb** |  | 2027-04-19 → 2027-04-26 (+7d) |  |  |
| MKH2-02-004-CNS-1620 | Installation of Precast Concrete curb [Local 30 ] |  | 2027-04-19 → 2027-04-26 (+7d) |  | -35d → -41d |
| 2 | **Precast Interlocking block pavers** | 2027-04-20 → 2027-04-27 (+7d) | 2027-04-26 → 2027-05-03 (+7d) |  |  |
| MKH2-02-004-CNS-1700 | Installation of Interlocking block pavers for sidewalk/footpath [Local 30 ] | 2027-04-20 → 2027-04-27 (+7d) | 2027-04-26 → 2027-05-03 (+7d) |  | -35d → -41d |
| 3 | **Pavement Markings** | 2027-04-27 → 2027-05-04 (+7d) | 2027-05-10 → 2027-05-22 (+12d) |  |  |
| MKH2-02-004-CNS-1780 | Pavement markings [Local 30 ] | 2027-04-27 → 2027-05-04 (+7d) | 2027-05-03 → 2027-05-10 (+7d) |  | -35d → -41d |
| MKH2-02-004-CNS-1860 | (Speed Hump) with retroreflectiveThermoplastic yellow [Local 30 ] | 2027-05-04 → 2027-05-11 (+7d) | 2027-05-10 → 2027-05-22 (+12d) |  | -35d → -41d |
| 4 | **Traffic Signage** | 2027-05-11 → 2027-05-23 (+12d) | 2027-05-22 → 2027-05-29 (+7d) |  |  |
| MKH2-02-004-CNS-1940 | Installation of Traffic Signs [Local 30 ] | 2027-05-11 → 2027-05-23 (+12d) | 2027-05-22 → 2027-05-29 (+7d) |  | -35d → -41d |
| 8 | **Local 31** |  | 2027-06-30 → 2027-07-07 (+7d) |  |  |
| 1 | **Road Works** |  | 2027-06-30 → 2027-07-07 (+7d) |  |  |
| 1 | **Eartworks & Site grading** |  | 2027-04-12 → 2027-04-19 (+7d) |  |  |
| MKH2-02-004-CNS-1230 | Road backfilling [Local 31 ]-Stage 2 |  | 2026-12-31 → 2027-01-07 (+7d) |  | -21d → -9d |
| MKH2-02-004-CNS-1310 | Subgrade [Local 31 ] |  | 2027-02-20 → 2026-11-16 A (-96d) | 15% → 100% | -21d → none |
| MKH2-02-004-CNS-1390 | Aggregate base course [Local 31 ] | 2027-03-23 → 2027-03-30 (+7d) | 2027-04-12 → 2027-04-19 (+7d) |  | -43d → -49d |
| 2 | **Asphalt Works** | 2027-04-13 → 2027-04-20 (+7d) | 2027-05-04 → 2027-05-11 (+7d) |  |  |
| MKH2-02-004-CNS-1470 | Prime Coat (MC1) [Local 31 ] | 2027-04-13 → 2027-04-20 (+7d) | 2027-04-22 → 2027-04-29 (+7d) |  | -43d → -49d |
| MKH2-02-004-CNS-1550 | Bituminous base course [Local 31 ] | 2027-04-24 → 2027-05-01 (+7d) | 2027-05-04 → 2027-05-11 (+7d) |  | -43d → -49d |
| 3 | **Finishing Works** | 2027-05-05 → 2027-05-12 (+7d) | 2027-06-30 → 2027-07-07 (+7d) |  |  |
| 1 | **Precast Concrete Curb** | 2027-05-05 → 2027-05-12 (+7d) | 2027-05-20 → 2027-05-27 (+7d) |  |  |
| MKH2-02-004-CNS-1630 | Installation of Precast Concrete curb [Local 31 ] | 2027-05-05 → 2027-05-12 (+7d) | 2027-05-20 → 2027-05-27 (+7d) |  | -43d → -49d |
| 2 | **Precast Interlocking block pavers** | 2027-05-22 → 2027-05-29 (+7d) | 2027-05-31 → 2027-06-07 (+7d) |  |  |
| MKH2-02-004-CNS-1710 | Installation of Interlocking block pavers for sidewalk/footpath [Local 31 ] | 2027-05-22 → 2027-05-29 (+7d) | 2027-05-31 → 2027-06-07 (+7d) |  | -43d → -49d |
| 3 | **Pavement Markings** | 2027-06-01 → 2027-06-08 (+7d) | 2027-06-21 → 2027-06-28 (+7d) |  |  |
| MKH2-02-004-CNS-1790 | Pavement markings [Local 31 ] | 2027-06-01 → 2027-06-08 (+7d) | 2027-06-10 → 2027-06-17 (+7d) |  | -43d → -49d |
| MKH2-02-004-CNS-1870 | (Speed Hump) with retroreflectiveThermoplastic yellow [Local 31 ] | 2027-06-12 → 2027-06-19 (+7d) | 2027-06-21 → 2027-06-28 (+7d) |  | -43d → -49d |
| 4 | **Traffic Signage** | 2027-06-22 → 2027-06-29 (+7d) | 2027-06-30 → 2027-07-07 (+7d) |  |  |
| MKH2-02-004-CNS-1950 | Installation of Traffic Signs [Local 31 ] | 2027-06-22 → 2027-06-29 (+7d) | 2027-06-30 → 2027-07-07 (+7d) |  | -23d → -29d |
| 2 | **Storm Water Drainage** |  | 2027-03-03 → 2027-03-14 (+11d) |  |  |
| 1 | **Pipe Works** |  | 2027-01-30 → 2027-02-06 (+7d) |  |  |
| MKH2-02-004-CNS-2070 | Excavation & Compaction (FDT) [Local 31 ]-Stage 2 |  | 2026-12-31 → 2027-01-07 (+7d) | 85% → 88% | -21d → -9d |
| MKH2-02-004-CNS-2190 | Sand Bedding [Local 31 ]-Stage 2 |  | 2027-01-12 → 2027-01-19 (+7d) | 85% → 88% | -21d → -9d |
| MKH2-02-004-CNS-2310 | Installation of GRP Pipe [Local 31 ]-Stage 2 |  | 2027-01-18 → 2027-01-25 (+7d) | 85% → 88% | -21d → -9d |
| MKH2-02-004-CNS-2430 | Sand Cover & Warning Tape [Local 31 ]-Stage 2 |  | 2027-01-24 → 2027-01-31 (+7d) | 85% → 88% | -21d → -9d |
| MKH2-02-004-CNS-2550 | Backfilling & Compaction [Local 31 ]-Stage 2 |  | 2027-01-30 → 2027-02-06 (+7d) | 85% → 88% | -21d → -9d |
| 3 | **Catch Basins** | 2026-12-19 → 2026-12-26 (+7d) | 2027-02-21 → 2027-03-01 (+8d) |  |  |
| MKH2-02-004-CNS-3070 | Construction of Catch basins [Local 31 ]-Stage 1-[01 to 10] | 2026-12-19 → 2026-12-26 (+7d) | 2026-12-23 → 2026-12-30 (+7d) |  | 39d → 33d |
| MKH2-02-004-CNS-3080 | Construction of Catch basins [Local 31 ]-Stage 2-[11 to 20] | 2027-01-17 → 2027-01-16 (-1d) | 2027-01-21 → 2027-01-20 (-1d) |  | 20d → 21d |
| MKH2-02-004-CNS-3090 | Construction of Catch basins [Local 31 ]-Stage 3-[21 to 31] | 2027-02-04 → 2027-02-11 (+7d) | 2027-02-09 → 2027-02-16 (+7d) |  | 9d → 3d |
| MKH2-02-004-CNS-3100 | Construction of Catch basins [Local 31 ]-Stage 4-[31 to 40] | 2027-02-10 → 2027-02-17 (+7d) | 2027-02-15 → 2027-02-23 (+8d) |  | 9d → 3d |
| MKH2-02-004-CNS-3110 | Construction of Catch basins [Local 31 ]-Stage 5-[41 to 49] | 2027-02-16 → 2027-02-24 (+8d) | 2027-02-21 → 2027-03-01 (+8d) |  | 9d → 3d |
| 4 | **Concrete chambers Pipes** | 2026-12-24 → 2026-12-31 (+7d) | 2027-03-03 → 2027-03-14 (+11d) |  |  |
| MKH2-02-004-CNS-3200 | Excavation and Compaction (FDT) [Local 31 ] | 2026-12-24 → 2026-12-31 (+7d) | 2027-01-03 → 2027-01-10 (+7d) |  | 39d → 33d |
| MKH2-02-004-CNS-3290 | Installation of Pipes [Local 31 ] | 2027-01-04 → 2027-01-11 (+7d) | 2027-01-17 → 2027-01-24 (+7d) |  | 39d → 33d |
| MKH2-02-004-CNS-3380 | Backfilling & Compaction [Local 31 ] | 2027-02-23 → 2027-03-02 (+7d) | 2027-03-03 → 2027-03-14 (+11d) |  | 9d → 3d |
| 4 | **Local 28** |  | 2027-07-24 → 2027-07-31 (+7d) |  |  |
| 1 | **Road Works** |  | 2027-07-24 → 2027-07-31 (+7d) |  |  |
| 1 | **Eartworks & Site grading** |  | 2027-04-28 → 2027-05-05 (+7d) |  |  |

| ID | Task | Start | Finish | Complete | Total float |
| --- | --- | --- | --- | --- | --- |
| MKH2-02-004-CNS-1170 | Road backfilling [Local 28 ]-Stage 2 |  | 2026-12-27 → 2027-01-03 (+7d) |  | 6d → 18d |
| MKH2-02-004-CNS-1270 | Subgrade [Local 28 ] |  | 2027-03-15 → 2027-02-25 (-18d) |  | -14d → -2d |
| MKH2-02-004-CNS-1350 | Aggregate base course [Local 28 ] | 2027-04-13 → 2027-04-20 (+7d) | 2027-04-28 → 2027-05-05 (+7d) |  | -38d → -44d |
| 2 | **Asphalt Works** | 2027-04-29 → 2027-05-06 (+7d) | 2027-05-24 → 2027-05-31 (+7d) |  |  |
| MKH2-02-004-CNS-1430 | Prime Coat (MC1) [Local 28 ] | 2027-04-29 → 2027-05-06 (+7d) | 2027-05-08 → 2027-05-19 (+11d) |  | -38d → -44d |
| MKH2-02-004-CNS-1510 | Bituminous base course [Local 28 ] | 2027-05-09 → 2027-05-20 (+11d) | 2027-05-24 → 2027-05-31 (+7d) |  | -38d → -44d |
| 3 | **Finishing Works** | 2027-05-25 → 2026-11-12 (-194d) | 2027-07-24 → 2027-07-31 (+7d) |  |  |
| 1 | **Precast Concrete Curb** | 2027-05-25 → 2026-11-12 (-194d) | 2027-06-05 → 2027-06-12 (+7d) |  |  |
| MKH2-02-004-CNS-1590 | Installation of Precast Concrete curb [Local 28 ] | 2027-05-25 → 2026-11-12 A (-194d) | 2027-06-05 → 2027-06-12 (+7d) | 0% → 12% | -38d → -44d |
| 2 | **Precast Interlocking block pavers** | 2027-06-06 → 2027-06-13 (+7d) | 2027-06-15 → 2027-06-22 (+7d) |  |  |
| MKH2-02-004-CNS-1670 | Installation of Interlocking block pavers for sidewalk/footpath [Local 28 ] | 2027-06-06 → 2027-06-13 (+7d) | 2027-06-15 → 2027-06-22 (+7d) |  | -38d → -44d |
| 3 | **Pavement Markings** | 2027-06-22 → 2027-06-29 (+7d) | 2027-07-13 → 2027-07-20 (+7d) |  |  |
| MKH2-02-004-CNS-1750 | Pavement markings [Local 28 ] | 2027-06-22 → 2027-06-29 (+7d) | 2027-07-03 → 2027-07-10 (+7d) |  | -43d → -49d |
| MKH2-02-004-CNS-1830 | (Speed Hump) with retroreflectiveThermoplastic yellow [Local 28 ] | 2027-07-04 → 2027-07-11 (+7d) | 2027-07-13 → 2027-07-20 (+7d) |  | -43d → -49d |
| 4 | **Traffic Signage** | 2027-07-14 → 2027-07-21 (+7d) | 2027-07-24 → 2027-07-31 (+7d) |  |  |
| MKH2-02-004-CNS-1910 | Installation of Traffic Signs [Local 28 ] | 2027-07-14 → 2027-07-21 (+7d) | 2027-07-24 → 2027-07-31 (+7d) |  | -43d → -49d |
| 2 | **Storm Water Drainage** |  | 2027-03-21 → 2027-03-03 (-18d) |  |  |
| 1 | **Pipe Works** |  | 2027-01-16 → 2027-01-10 (-6d) |  |  |
| MKH2-02-004-CNS-2010 | Excavation & Compaction (FDT) [Local 28 ]-Stage 2 |  | 2026-12-28 → 2026-11-11 A (-47d) | 98% → 100% | 16d → none |
| MKH2-02-004-CNS-2130 | Sand Bedding [Local 28 ]-Stage 2 |  | 2027-01-02 → 2026-11-11 A (-52d) | 98% → 100% | 16d → none |
| MKH2-02-004-CNS-2250 | Installation of GRP Pipe [Local 28 ]-Stage 2 |  | 2027-01-09 → 2026-11-12 A (-58d) | 98% → 100% | 16d → none |
| MKH2-02-004-CNS-2370 | Sand Cover & Warning Tape [Local 28 ]-Stage 2 |  | 2027-01-12 → 2027-01-06 (-6d) |  | 16d → 21d |
| MKH2-02-004-CNS-2490 | Backfilling & Compaction [Local 28 ]-Stage 2 |  | 2027-01-16 → 2027-01-10 (-6d) |  | 16d → 21d |
| 3 | **Catch Basins** |  | 2027-01-20 → 2027-01-09 (-11d) |  |  |
| MKH2-02-004-CNS-2930 | Construction of Catch basins [Local 28 ]-Stage 4-[31 to 40] |  | 2027-01-14 → 2026-11-12 A (-63d) | 60% → 100% | 44d → none |
| MKH2-02-004-CNS-2940 | Construction of Catch basins [Local 28 ]-Stage 5-[41 to 50] | 2027-01-16 → 2026-11-14 A (-63d) | 2027-01-20 → 2027-01-09 (-11d) | 0% → 40% | 44d → 54d |
| 4 | **Concrete chambers Pipes** |  | 2027-03-21 → 2027-03-03 (-18d) |  |  |
| MKH2-02-004-CNS-3160 | Excavation and Compaction (FDT) [Local 28 ] |  | 2027-02-25 → 2026-11-14 A (-103d) | 75% → 100% | -3d → none |
| MKH2-02-004-CNS-3250 | Installation of Pipes [Local 28 ] |  | 2027-03-09 → 2026-11-15 A (-114d) | 50% → 100% | -3d → none |
| MKH2-02-004-CNS-3340 | Backfilling & Compaction [Local 28 ] |  | 2027-03-21 → 2027-03-03 (-18d) | 20% → 80% | -3d → 9d |
| 2 | **Local 10** |  | 2027-06-29 → 2027-07-06 (+7d) |  |  |
| 1 | **Road Works** |  | 2027-06-29 → 2027-07-06 (+7d) |  |  |
| 1 | **Eartworks & Site grading** |  | 2027-05-13 → 2027-05-25 (+12d) |  |  |
| MKH2-02-004-CNS-1010 | Road excavation [Local 10 ] |  | 2026-12-30 → 2027-01-06 (+7d) |  | 6d → 18d |
| MKH2-02-004-CNS-1130 | Road backfilling [Local 10 ] |  | 2026-12-30 → 2027-01-06 (+7d) |  | 6d → 18d |
| MKH2-02-004-CNS-1250 | Subgrade [Local 10 ] |  | 2027-05-06 → 2027-05-13 (+7d) | 80% → 95% | -26d → -32d |
| MKH2-02-004-CNS-1330 | Aggregate base course [Local 10 ] | 2027-05-08 → 2027-05-19 (+11d) | 2027-05-13 → 2027-05-25 (+12d) |  | -26d → -32d |
| 2 | **Asphalt Works** | 2027-05-19 → 2027-05-26 (+7d) | 2027-05-27 → 2027-06-03 (+7d) |  |  |
| MKH2-02-004-CNS-1410 | Prime Coat (MC1) [Local 10 ] | 2027-05-19 → 2027-05-26 (+7d) | 2027-05-23 → 2027-05-30 (+7d) |  | -18d → -24d |
| MKH2-02-004-CNS-1490 | Bituminous base course [Local 10 ] | 2027-05-24 → 2027-05-31 (+7d) | 2027-05-27 → 2027-06-03 (+7d) |  | -16d → -22d |
| 3 | **Finishing Works** | 2027-06-06 → 2027-06-13 (+7d) | 2027-06-29 → 2027-07-06 (+7d) |  |  |
| 1 | **Precast Concrete Curb** | 2027-06-06 → 2027-06-13 (+7d) | 2027-06-12 → 2027-06-19 (+7d) |  |  |
| MKH2-02-004-CNS-1570 | Installation of Precast Concrete curb [Local 10 ] | 2027-06-06 → 2027-06-13 (+7d) | 2027-06-12 → 2027-06-19 (+7d) |  | -23d → -29d |
| 2 | **Precast Interlocking block pavers** | 2027-06-13 → 2027-06-20 (+7d) | 2027-06-17 → 2027-06-24 (+7d) |  |  |
| MKH2-02-004-CNS-1650 | Installation of Interlocking block pavers for sidewalk/footpath [Local 10 ] | 2027-06-13 → 2027-06-20 (+7d) | 2027-06-17 → 2027-06-24 (+7d) |  | -22d → -28d |
| 3 | **Pavement Markings** | 2027-06-19 → 2027-06-26 (+7d) | 2027-06-26 → 2027-07-03 (+7d) |  |  |
| MKH2-02-004-CNS-1730 | Pavement markings [Local 10 ] | 2027-06-19 → 2027-06-26 (+7d) | 2027-06-22 → 2027-06-29 (+7d) |  | -22d → -28d |
| MKH2-02-004-CNS-1810 | (Speed Hump) with retroreflectiveThermoplastic yellow [Local 10 ] | 2027-06-23 → 2027-06-30 (+7d) | 2027-06-26 → 2027-07-03 (+7d) |  | -22d → -28d |
| 4 | **Traffic Signage** | 2027-06-27 → 2027-07-04 (+7d) | 2027-06-29 → 2027-07-06 (+7d) |  |  |
| MKH2-02-004-CNS-1890 | Installation of Traffic Signs [Local 10 ] | 2027-06-27 → 2027-07-04 (+7d) | 2027-06-29 → 2027-07-06 (+7d) |  | -22d → -28d |
| 2 | **Storm Water Drainage** | 2026-09-10 → 2026-11-11 (+62d) | 2027-02-04 → 2027-02-11 (+7d) |  |  |
| 1 | **Pipe Works** | 2026-09-10 → 2026-11-11 (+62d) | 2027-01-19 → 2027-01-26 (+7d) |  |  |
| MKH2-02-004-CNS-1970 | Excavation & Compaction (FDT) [Local 10 ] | 2026-09-10 A → 2026-11-11 A (+62d) | 2027-01-04 → 2027-01-11 (+7d) | 30% → 80% | 6d → 18d |
| MKH2-02-004-CNS-2090 | Sand Bedding [Local 10 ] | 2026-09-12 A → 2026-11-12 A (+61d) | 2027-01-07 → 2027-01-14 (+7d) |  | 6d → 18d |
| MKH2-02-004-CNS-2210 | Installation of GRP Pipe [Local 10 ] | 2026-09-12 A → 2026-11-12 A (+61d) | 2027-01-13 → 2027-01-20 (+7d) |  | 6d → 18d |
| MKH2-02-004-CNS-2330 | Sand Cover & Warning Tape [Local 10 ] | 2027-01-14 → 2027-01-21 (+7d) | 2027-01-16 → 2027-01-23 (+7d) |  | 12d → 24d |
| MKH2-02-004-CNS-2450 | Backfilling & Compaction [Local 10 ] | 2027-01-17 → 2027-01-24 (+7d) | 2027-01-19 → 2027-01-26 (+7d) |  | 12d → 24d |
| 2 | **Manholes** | 2027-01-14 → 2027-01-21 (+7d) | 2027-01-25 → 2027-02-01 (+7d) |  |  |
| MKH2-02-004-CNS-2580 | Installation of Manholes [Local 10 ]-Stage 1-[MH 01 to MH 07] | 2027-01-14 → 2027-01-21 (+7d) | 2027-01-19 → 2027-01-26 (+7d) |  | 6d → 18d |
| MKH2-02-004-CNS-2590 | Installation of Manholes [Local 10 ]-Stage 2-[MH 08 to MH 11] | 2027-01-20 → 2027-01-27 (+7d) | 2027-01-25 → 2027-02-01 (+7d) |  | 12d → 24d |
| 3 | **Catch Basins** | 2027-01-20 → 2027-01-27 (+7d) | 2027-01-24 → 2027-01-31 (+7d) |  |  |
| MKH2-02-004-CNS-2790 | Construction of Catch basins [Local 10 ] | 2027-01-20 → 2027-01-27 (+7d) | 2027-01-24 → 2027-01-31 (+7d) |  | 6d → 18d |
| 4 | **Concrete chambers Pipes** | 2027-01-25 → 2027-02-01 (+7d) | 2027-02-04 → 2027-02-11 (+7d) |  |  |
| MKH2-02-004-CNS-3130 | Excavation and Compaction (FDT) [Local 10 ] | 2027-01-25 → 2027-02-01 (+7d) | 2027-01-27 → 2027-02-03 (+7d) |  | 6d → 18d |
| MKH2-02-004-CNS-3220 | Installation of Pipes [Local 10 ] | 2027-01-28 → 2027-02-04 (+7d) | 2027-02-01 → 2027-02-08 (+7d) |  | 6d → 18d |
| MKH2-02-004-CNS-3310 | Backfilling & Compaction [Local 10 ] | 2027-02-02 → 2027-02-09 (+7d) | 2027-02-04 → 2027-02-11 (+7d) |  | 6d → 18d |
| 1 | **Collector 02** |  | 2027-07-04 → 2027-07-11 (+7d) |  |  |
| 1 | **Road Works** |  | 2027-07-04 → 2027-07-11 (+7d) |  |  |
| 1 | **Eartworks & Site grading** |  | 2027-06-01 → 2027-06-08 (+7d) |  |  |
| MKH2-02-004-CNS-1000 | Road excavation [Collector 02 ] |  | 2027-01-03 → 2027-01-10 (+7d) | 95% → 98% | 6d → 18d |

| ID | Task | Start | Finish | Complete | Total float |
| --- | --- | --- | --- | --- | --- |
| MKH2-02-004-CNS-1120 | Road backfilling [Collector 02 ] |  | 2027-01-03 → 2027-01-10 (+7d) |  | 6d → 18d |
| MKH2-02-004-CNS-1240 | Subgrade [Collector 02 ] |  | 2027-05-25 → 2027-06-01 (+7d) | 80% → 95% | -26d → -32d |
| MKH2-02-004-CNS-1320 | Aggregate base course [Collector 02 ] | 2027-05-26 → 2027-06-02 (+7d) | 2027-06-01 → 2027-06-08 (+7d) |  | -26d → -32d |
| 2 | **Asphalt Works** | 2027-06-02 → 2027-06-09 (+7d) | 2027-06-15 → 2027-06-22 (+7d) |  |  |
| MKH2-02-004-CNS-1400 | Prime Coat (MC1) [Collector 02 ] | 2027-06-02 → 2027-06-09 (+7d) | 2027-06-08 → 2027-06-15 (+7d) |  | -26d → -32d |
| MKH2-02-004-CNS-1480 | Bituminous base course [Collector 02 ] | 2027-06-09 → 2027-06-16 (+7d) | 2027-06-15 → 2027-06-22 (+7d) |  | -26d → -32d |
| 3 | **Finishing Works** | 2027-06-16 → 2027-06-23 (+7d) | 2027-07-04 → 2027-07-11 (+7d) |  |  |
| 1 | **Precast Concrete Curb** | 2027-06-16 → 2027-06-23 (+7d) | 2027-06-20 → 2027-06-27 (+7d) |  |  |
| MKH2-02-004-CNS-1560 | Installation of Precast Concrete curb [Collector 02 ] | 2027-06-16 → 2027-06-23 (+7d) | 2027-06-20 → 2027-06-27 (+7d) |  | -26d → -32d |
| 2 | **Precast Interlocking block pavers** | 2027-06-21 → 2027-06-28 (+7d) | 2027-06-23 → 2027-06-30 (+7d) |  |  |
| MKH2-02-004-CNS-1640 | Installation of Interlocking block pavers for sidewalk/footpath [Collector 02 ] | 2027-06-21 → 2027-06-28 (+7d) | 2027-06-23 → 2027-06-30 (+7d) |  | -26d → -32d |
| 3 | **Pavement Markings** | 2027-06-24 → 2027-07-01 (+7d) | 2027-06-30 → 2027-07-07 (+7d) |  |  |
| MKH2-02-004-CNS-1720 | Pavement markings [Collector 02 ] | 2027-06-24 → 2027-07-01 (+7d) | 2027-06-27 → 2027-07-04 (+7d) |  | -26d → -32d |
| MKH2-02-004-CNS-1800 | (Speed Hump) with retroreflectiveThermoplastic yellow [Collector 02 ] | 2027-06-28 → 2027-07-05 (+7d) | 2027-06-30 → 2027-07-07 (+7d) |  | -26d → -32d |
| 4 | **Traffic Signage** | 2027-07-01 → 2027-07-08 (+7d) | 2027-07-04 → 2027-07-11 (+7d) |  |  |
| MKH2-02-004-CNS-1880 | Installation of Traffic Signs [Collector 02 ] | 2027-07-01 → 2027-07-08 (+7d) | 2027-07-04 → 2027-07-11 (+7d) |  | -26d → -32d |
| 2 | **Storm Water Drainage** | 2027-01-04 → 2027-01-11 (+7d) | 2027-02-15 → 2027-02-23 (+8d) |  |  |
| 1 | **Pipe Works** | 2027-01-04 → 2027-01-11 (+7d) | 2027-01-27 → 2027-02-03 (+7d) |  |  |
| MKH2-02-004-CNS-1960 | Excavation & Compaction (FDT) [Collector 02 ] | 2027-01-04 → 2027-01-11 (+7d) | 2027-01-07 → 2027-01-14 (+7d) |  | 6d → 18d |
| MKH2-02-004-CNS-2080 | Sand Bedding [Collector 02 ] | 2027-01-09 → 2027-01-16 (+7d) | 2027-01-11 → 2027-01-18 (+7d) |  | 6d → 18d |
| MKH2-02-004-CNS-2200 | Installation of GRP Pipe [Collector 02 ] | 2027-01-12 → 2027-01-19 (+7d) | 2027-01-17 → 2027-01-24 (+7d) |  | 6d → 18d |
| MKH2-02-004-CNS-2320 | Sand Cover & Warning Tape [Collector 02 ] | 2027-01-18 → 2027-01-25 (+7d) | 2027-01-20 → 2027-01-27 (+7d) |  | 6d → 18d |
| MKH2-02-004-CNS-2440 | Backfilling & Compaction [Collector 02 ] | 2027-01-21 → 2027-01-28 (+7d) | 2027-01-27 → 2027-02-03 (+7d) |  | 6d → 18d |
| 2 | **Manholes** | 2027-01-18 → 2027-01-25 (+7d) | 2027-01-31 → 2027-02-07 (+7d) |  |  |
| MKH2-02-004-CNS-2560 | Installation of Manholes [Collector 02 ]-Stage 1-[MH 01 to MH 07] | 2027-01-18 → 2027-01-25 (+7d) | 2027-01-24 → 2027-01-31 (+7d) |  | 6d → 18d |
| MKH2-02-004-CNS-2570 | Installation of Manholes [Collector 02 ]-Stage 2-[MH 08 to MH 11] | 2027-01-25 → 2027-02-01 (+7d) | 2027-01-31 → 2027-02-07 (+7d) |  | 8d → 20d |
| 3 | **Catch Basins** | 2027-02-04 → 2027-02-11 (+7d) | 2027-02-07 → 2027-02-14 (+7d) |  |  |
| MKH2-02-004-CNS-2780 | Construction of Catch basins [Collector 02 ] | 2027-02-04 → 2027-02-11 (+7d) | 2027-02-07 → 2027-02-14 (+7d) |  | -3d → 9d |
| 4 | **Concrete chambers Pipes** | 2027-02-08 → 2027-02-15 (+7d) | 2027-02-15 → 2027-02-23 (+8d) |  |  |
| MKH2-02-004-CNS-3120 | Excavation and Compaction (FDT) [Collector 02 ] | 2027-02-08 → 2027-02-15 (+7d) | 2027-02-09 → 2027-02-16 (+7d) |  | -3d → 9d |
| MKH2-02-004-CNS-3210 | Installation of Pipes [Collector 02 ] | 2027-02-10 → 2027-02-17 (+7d) | 2027-02-13 → 2027-02-20 (+7d) |  | -3d → 9d |
| MKH2-02-004-CNS-3300 | Backfilling & Compaction [Collector 02 ] | 2027-02-14 → 2027-02-21 (+7d) | 2027-02-15 → 2027-02-23 (+8d) |  | -3d → 9d |
| 6 | **Testing and Commissioning** |  | 2027-08-16 → 2027-08-23 (+7d) |  |  |
| MKH2-02-004-T&C-1000 | Test for Stormwater Utilities |  | 2027-04-13 → 2027-04-06 (-7d) |  | -3d → 3d |
| MKH2-02-004-T&C-1010 | Test for Road Works | 2027-07-25 → 2027-08-01 (+7d) | 2027-08-16 → 2027-08-23 (+7d) |  | -43d → -49d |
| 7 | **Project Hand Over & Close-out** | 2027-04-14 → 2027-04-07 (-7d) | 2027-10-14 → 2027-10-21 (+7d) |  |  |
| 1 | **As-Built DWGs** | 2027-04-14 → 2027-04-07 (-7d) | 2027-09-20 → 2027-09-28 (+8d) |  |  |
| 1 | **As-Built DWGs Submittal** | 2027-04-14 → 2027-04-07 (-7d) | 2027-09-02 → 2027-09-09 (+7d) |  |  |
| MKH2-02-004-ABD-1000 | As-Built DWGs Submittal for Stormwater Utilities | 2027-04-14 → 2027-04-07 (-7d) | 2027-05-01 → 2027-04-24 (-7d) |  | -3d → 3d |
| MKH2-02-004-ABD-1010 | As-Built DWGs Submittal for Road Works | 2027-08-17 → 2027-08-24 (+7d) | 2027-09-02 → 2027-09-09 (+7d) |  | -43d → -49d |
| 2 | **As-Built DWGs Approval** | 2027-05-02 → 2027-04-25 (-7d) | 2027-09-20 → 2027-09-28 (+8d) |  |  |
| MKH2-02-004-ABD-1020 | As- Built DWGs Approval for Stormwater Utilities | 2027-05-02 → 2027-04-25 (-7d) | 2027-05-12 → 2027-05-05 (-7d) |  | -3d → 3d |
| MKH2-02-004-ABD-1030 | As- Built DWGs Approval for Road Works | 2027-09-04 → 2027-09-11 (+7d) | 2027-09-20 → 2027-09-28 (+8d) |  | -43d → -49d |
| 2 | **Demobilization** | 2027-09-21 → 2027-09-29 (+8d) | 2027-10-14 → 2027-10-21 (+7d) |  |  |
| MKH2-02-004-DEM-1000 | Demobilization of Manpower | 2027-09-21 → 2027-09-29 (+8d) | 2027-10-03 → 2027-10-10 (+7d) |  | -43d → -49d |
| MKH2-02-004-DEM-1010 | Removal of Equipment from Site | 2027-09-21 → 2027-09-29 (+8d) | 2027-10-03 → 2027-10-10 (+7d) |  | -43d → -49d |
| MKH2-02-004-DEM-1020 | Site Clean Up | 2027-09-21 → 2027-09-29 (+8d) | 2027-10-03 → 2027-10-10 (+7d) |  | -43d → -49d |
| MKH2-02-004-DEM-1030 | Removal of Site Offices and Structures | 2027-09-21 → 2027-09-29 (+8d) | 2027-10-03 → 2027-10-10 (+7d) |  | -43d → -49d |
| MKH2-02-004-DEM-1040 | Restoration of Ground Surfaces | 2027-10-04 → 2027-10-11 (+7d) | 2027-10-14 → 2027-10-21 (+7d) |  | -43d → -49d |

## Version 8 (data date 2026-11-24, saved 2026-11-23, file 2. MKH2-02-004-ENJ-WPR-022-24-11-2026 UP 19.xer)

Last finish 2027-10-21 → 2027-10-25 (+4d). Complete tasks 186 → 205.

Changed:

| ID | Task | Start | Finish | Complete | Total float |
| --- | --- | --- | --- | --- | --- |
| 1 | **Key Milestones** |  | 2027-10-21 → 2027-10-25 (+4d) |  |  |
| 1 | **General Milestone** |  | 2027-10-21 → 2027-10-25 (+4d) |  |  |
| MKH2-02-004-KM-1010 | Project Completion Date | 2027-10-21 → 2027-10-25 (+4d) | 2027-10-21 → 2027-10-25 (+4d) |  | -49d → -52d |
| 2 | **Contractual Milestone** |  | 2027-10-21 → 2027-10-25 (+4d) |  |  |
| 2 | **Construction** | 2027-03-03 → 2027-03-02 (-1d) | 2027-10-21 → 2027-10-25 (+4d) |  |  |
| MKH2-02-004-KM-1060 | Completion of Storm Water Drainage | 2027-03-03 → 2027-03-02 (-1d) | 2027-03-03 → 2027-03-02 (-1d) |  | 9d → 10d |
| MKH2-02-004-KM-1050 | Completion of Road Works | 2027-06-22 → 2027-06-10 (-12d) | 2027-06-22 → 2027-06-10 (-12d) |  | -32d → -22d |
| MKH2-02-004-KM-1070 | Completion of Entire Project | 2027-10-21 → 2027-10-25 (+4d) | 2027-10-21 → 2027-10-25 (+4d) |  | -49d → -52d |
| 4 | **Procurement** |  | 2027-02-06 → 2027-02-13 (+7d) |  |  |
| 1 | **Road Works - Civil** |  | 2027-02-06 → 2027-02-13 (+7d) |  |  |
| 4 | **Aggregate Base Course** |  | 2027-01-25 → 2027-01-28 (+3d) |  |  |
| MKH2-02-004-PRC-1010 | Material Delivery for Aggregate Base Course-Stage 1 | 2026-11-17 A | 2026-12-21 → 2026-12-24 (+3d) | 0% → 10% | -49d → -52d |
| MKH2-02-004-PRC-1020 | Material Delivery for Aggregate Base Course-Stage 2 | 2026-12-22 → 2026-12-26 (+4d) | 2027-01-25 → 2027-01-28 (+3d) |  | -49d → -52d |
| 5 | **Bituminous Base Course** |  | 2027-02-06 → 2027-02-13 (+7d) |  |  |
| MKH2-02-004-PRC-1040 | Material Delivery for Bituminous Base Course-Stage 1 | 2026-11-17 → 2026-11-24 (+7d) | 2026-12-27 → 2027-01-03 (+7d) |  | -35d → -41d |
| MKH2-02-004-PRC-1050 | Material Delivery for Bituminous Base Course-Stage 2 | 2026-12-28 → 2027-01-04 (+7d) | 2027-02-06 → 2027-02-13 (+7d) |  | -35d → -41d |
| 7 | **Precast Concrete Curb** |  | 2026-12-21 → 2026-12-28 (+7d) |  |  |
| MKH2-02-004-PRC-1080 | Material Delivery for Precast Concrete Curb |  | 2026-12-21 → 2026-12-28 (+7d) |  | -4d → -10d |
| 8 | **Interlocking Block Pavers** |  | 2026-12-21 → 2026-12-28 (+7d) |  |  |
| MKH2-02-004-PRC-1110 | Material Delivery for Interlocking Block Pavers |  | 2026-12-21 → 2026-12-28 (+7d) |  | -4d → -10d |
| 9 | **Pavement Markings** | 2026-11-17 → 2026-11-24 (+7d) | 2027-01-18 → 2027-01-25 (+7d) |  |  |
| MKH2-02-004-PRC-1120 | PO for Pavement Markings | 2026-11-17 → 2026-11-24 (+7d) | 2026-11-21 → 2026-11-28 (+7d) |  | -28d → -34d |
| MKH2-02-004-PRC-1130 | Material Fabrication for Pavement Markings | 2026-11-22 → 2026-11-29 (+7d) | 2026-12-20 → 2026-12-27 (+7d) |  | -28d → -34d |
| MKH2-02-004-PRC-1140 | Material Delivery for Pavement Markings | 2026-12-21 → 2026-12-28 (+7d) | 2027-01-18 → 2027-01-25 (+7d) |  | -28d → -34d |
| 7 | **Stormwater Utilities** |  | 2026-12-19 → 2026-11-21 (-28d) |  |  |
| 7 | **Catch Basins** |  | 2026-12-19 → 2026-11-21 (-28d) |  |  |
| MKH2-02-004-PRC-1300 | Material Delivery for Catch Basins-Stage 2 |  | 2026-11-25 → 2026-11-18 A (-7d) | 80% → 100% | 33d → none |
| MKH2-02-004-PRC-1310 | Material Delivery for Catch Basins-Stage 3 | 2026-11-26 → 2026-11-19 A (-7d) | 2026-12-19 → 2026-11-21 A (-28d) | 0% → 100% | 33d → none |
| 5 | **Construction** |  | 2027-07-31 → 2027-08-03 (+3d) |  |  |
| 1 | **Roads** |  | 2027-07-31 → 2027-08-03 (+3d) |  |  |
| 3 | **Local 17** |  | 2027-05-20 → 2027-05-24 (+4d) |  |  |
| 1 | **Road Works** |  | 2027-05-20 → 2027-05-24 (+4d) |  |  |
| 1 | **Eartworks & Site grading** |  | 2027-02-11 → 2027-02-15 (+4d) |  |  |
| MKH2-02-004-CNS-1150 | Road backfilling [Local 17 ]-Stage 2 |  | 2026-12-03 → 2026-12-10 (+7d) |  | -38d → -44d |
| MKH2-02-004-CNS-1030 | Road excavation [Local 17 ]-Stage 2 |  | 2026-11-28 → 2026-12-05 (+7d) | 75% → 85% | -38d → -44d |
| MKH2-02-004-CNS-1260 | Subgrade [Local 17 ] | 2026-12-27 → 2027-01-03 (+7d) | 2027-01-12 → 2027-01-19 (+7d) |  | -38d → -44d |
| MKH2-02-004-CNS-1340 | Aggregate base course [Local 17 ] | 2027-01-26 → 2027-01-30 (+4d) | 2027-02-11 → 2027-02-15 (+4d) |  | -49d → -52d |
| 2 | **Asphalt Works** | 2027-02-13 → 2027-02-16 (+3d) | 2027-03-17 → 2027-03-21 (+4d) |  |  |
| MKH2-02-004-CNS-1420 | Prime Coat (MC1) [Local 17 ] | 2027-02-13 → 2027-02-16 (+3d) | 2027-02-24 → 2027-02-28 (+4d) |  | -40d → -43d |
| MKH2-02-004-CNS-1500 | Bituminous base course [Local 17 ] | 2027-02-25 → 2027-03-01 (+4d) | 2027-03-17 → 2027-03-21 (+4d) |  | -40d → -43d |
| 3 | **Finishing Works** | 2027-03-18 → 2027-03-22 (+4d) | 2027-05-20 → 2027-05-24 (+4d) |  |  |
| 1 | **Precast Concrete Curb** | 2027-03-18 → 2027-03-22 (+4d) | 2027-03-31 → 2027-04-04 (+4d) |  |  |
| MKH2-02-004-CNS-1580 | Installation of Precast Concrete curb [Local 17 ] | 2027-03-18 → 2027-03-22 (+4d) | 2027-03-31 → 2027-04-04 (+4d) |  | -40d → -43d |
| 2 | **Precast Interlocking block pavers** | 2027-04-01 → 2027-04-05 (+4d) | 2027-04-13 → 2027-04-17 (+4d) |  |  |
| MKH2-02-004-CNS-1660 | Installation of Interlocking block pavers for sidewalk/footpath [Local 17 ] | 2027-04-01 → 2027-04-05 (+4d) | 2027-04-13 → 2027-04-17 (+4d) |  | -40d → -43d |
| 3 | **Pavement Markings** | 2027-04-14 → 2027-04-18 (+4d) | 2027-05-02 → 2027-05-05 (+3d) |  |  |
| MKH2-02-004-CNS-1740 | Pavement markings [Local 17 ] | 2027-04-14 → 2027-04-18 (+4d) | 2027-04-22 → 2027-04-26 (+4d) |  | -40d → -43d |
| MKH2-02-004-CNS-1820 | (Speed Hump) with retroreflectiveThermoplastic yellow [Local 17 ] | 2027-04-24 → 2027-04-27 (+3d) | 2027-05-02 → 2027-05-05 (+3d) |  | -40d → -43d |
| 4 | **Traffic Signage** | 2027-05-03 → 2027-05-06 (+3d) | 2027-05-20 → 2027-05-24 (+4d) |  |  |
| MKH2-02-004-CNS-1900 | Installation of Traffic Signs [Local 17 ] | 2027-05-03 → 2027-05-06 (+3d) | 2027-05-20 → 2027-05-24 (+4d) |  | -40d → -43d |
| 2 | **Storm Water Drainage** |  | 2027-02-10 → 2027-02-09 (-1d) |  |  |
| 1 | **Pipe Works** |  | 2026-12-26 → 2027-01-02 (+7d) |  |  |
| MKH2-02-004-CNS-1990 | Excavation & Compaction (FDT) [Local 17 ]-Stage 2 |  | 2026-12-03 → 2026-12-10 (+7d) |  | -38d → -44d |
| MKH2-02-004-CNS-2110 | Sand Bedding [Local 17 ]-Stage 2 |  | 2026-12-08 → 2026-12-15 (+7d) |  | -38d → -44d |
| MKH2-02-004-CNS-2230 | Installation of GRP Pipe [Local 17 ]-Stage 2 |  | 2026-12-16 → 2026-12-23 (+7d) |  | -38d → -44d |
| MKH2-02-004-CNS-2350 | Sand Cover & Warning Tape [Local 17 ]-Stage 2 |  | 2026-12-21 → 2026-12-28 (+7d) |  | -38d → -44d |
| MKH2-02-004-CNS-2470 | Backfilling & Compaction [Local 17 ]-Stage 2 |  | 2026-12-26 → 2027-01-02 (+7d) |  | -38d → -44d |
| 2 | **Manholes** |  | 2026-12-27 → 2026-12-26 (-1d) |  |  |
| MKH2-02-004-CNS-2600 | Installation of Manholes [Local 17 ]-Stage 1-[MH 01 to MH 07] |  | 2026-11-24 → 2026-11-18 A (-6d) | 90% → 100% | 2d → none |
| MKH2-02-004-CNS-2610 | Installation of Manholes [Local 17 ]-Stage 2-[MH 08 to MH 14] | 2026-11-25 → 2026-11-19 A (-6d) | 2026-12-02 → 2026-12-01 (-1d) | 0% → 25% | 16d → 17d |
| MKH2-02-004-CNS-2620 | Installation of Manholes [Local 17 ]-Stage 3-[MH 15 to MH 21] | 2026-12-03 → 2026-12-02 (-1d) | 2026-12-10 → 2026-12-09 (-1d) |  | 16d → 17d |
| MKH2-02-004-CNS-2630 | Installation of Manholes [Local 17 ]-Stage 4-[MH 22 to MH 28] | 2026-12-12 → 2026-12-10 (-2d) | 2026-12-19 → 2026-12-17 (-2d) |  | 16d → 17d |
| MKH2-02-004-CNS-2640 | Installation of Manholes [Local 17 ]-Stage 5-[MH 29 to MH 33] | 2026-12-20 → 2026-12-19 (-1d) | 2026-12-27 → 2026-12-26 (-1d) |  | 16d → 17d |
| 3 | **Catch Basins** | 2026-11-25 → 2026-11-24 (-1d) | 2027-02-10 → 2027-02-09 (-1d) |  |  |
| MKH2-02-004-CNS-2800 | Construction of Catch basins [Local 17 ]-Stage 1-[01 to 10] | 2026-11-25 → 2026-11-24 (-1d) | 2026-12-02 → 2026-12-01 (-1d) |  | 2d → 3d |
| MKH2-02-004-CNS-2810 | Construction of Catch basins [Local 17 ]-Stage 2-[11 to 20] | 2026-12-03 → 2026-12-02 (-1d) | 2026-12-10 → 2026-12-09 (-1d) |  | 3d → 4d |
| MKH2-02-004-CNS-2820 | Construction of Catch basins [Local 17 ]-Stage 3-[21 to 30] | 2026-12-12 → 2026-12-10 (-2d) | 2026-12-19 → 2026-12-17 (-2d) |  | 3d → 4d |
| MKH2-02-004-CNS-2830 | Construction of Catch basins [Local 17 ]-Stage 4-[31 to 40] | 2026-12-20 → 2026-12-19 (-1d) | 2026-12-27 → 2026-12-26 (-1d) |  | 3d → 4d |
| MKH2-02-004-CNS-2840 | Construction of Catch basins [Local 17 ]-Stage 5-[41 to 50] | 2026-12-28 → 2026-12-27 (-1d) | 2027-01-04 → 2027-01-03 (-1d) |  | 3d → 4d |
| MKH2-02-004-CNS-2850 | Construction of Catch basins [Local 17 ]-Stage 6-[51 to 60] | 2027-01-05 → 2027-01-04 (-1d) | 2027-01-12 → 2027-01-11 (-1d) |  | 3d → 4d |

| ID | Task | Start | Finish | Complete | Total float |
| --- | --- | --- | --- | --- | --- |
| MKH2-02-004-CNS-2860 | Construction of Catch basins [Local 17 ]-Stage 7-[61 to 70] | 2027-01-13 → 2027-01-12 (-1d) | 2027-01-20 → 2027-01-19 (-1d) |  | 3d → 4d |
| MKH2-02-004-CNS-2870 | Construction of Catch basins [Local 17 ]-Stage 8-[71 to 80] | 2027-01-21 → 2027-01-20 (-1d) | 2027-01-28 → 2027-01-27 (-1d) |  | 3d → 4d |
| MKH2-02-004-CNS-2880 | Construction of Catch basins [Local 17 ]-Stage 9-[81 to 90] | 2027-01-30 → 2027-01-28 (-2d) | 2027-02-06 → 2027-02-04 (-2d) |  | 3d → 4d |
| MKH2-02-004-CNS-2890 | Construction of Catch basins [Local 17 ]-Stage 10-[91 to 96] | 2027-02-07 → 2027-02-06 (-1d) | 2027-02-10 → 2027-02-09 (-1d) |  | 3d → 4d |
| 4 | **Concrete chambers Pipes** | 2026-12-03 → 2026-12-02 (-1d) | 2027-01-24 → 2027-01-23 (-1d) |  |  |
| MKH2-02-004-CNS-3140 | Excavation and Compaction (FDT) [Local 17 ]-Stage 1 | 2026-12-03 → 2026-12-02 (-1d) | 2026-12-15 → 2026-12-14 (-1d) |  | 2d → 3d |
| MKH2-02-004-CNS-3150 | Excavation and Compaction (FDT) [Local 17 ]-Stage 2 | 2026-12-16 → 2026-12-15 (-1d) | 2026-12-28 → 2026-12-27 (-1d) |  | 3d → 4d |
| MKH2-02-004-CNS-3230 | Installation of Pipes [Local 17 ]-Stage 1 | 2026-12-16 → 2026-12-15 (-1d) | 2026-12-29 → 2026-12-28 (-1d) |  | 2d → 3d |
| MKH2-02-004-CNS-3240 | Installation of Pipes [Local 17 ]-Stage 2 | 2026-12-30 → 2026-12-29 (-1d) | 2027-01-12 → 2027-01-11 (-1d) |  | 2d → 3d |
| MKH2-02-004-CNS-3320 | Backfilling & Compaction [Local 17 ]-Stage 1 | 2026-12-30 → 2026-12-29 (-1d) | 2027-01-10 → 2027-01-09 (-1d) |  | 4d → 5d |
| MKH2-02-004-CNS-3330 | Backfilling & Compaction [Local 17 ]-Stage 2 | 2027-01-13 → 2027-01-12 (-1d) | 2027-01-24 → 2027-01-23 (-1d) |  | 2d → 3d |
| 5 | **Local 11** |  | 2027-05-13 → 2027-05-22 (+9d) |  |  |
| 1 | **Road Works** |  | 2027-05-13 → 2027-05-22 (+9d) |  |  |
| 1 | **Eartworks & Site grading** |  | 2027-02-23 → 2027-02-27 (+4d) |  |  |
| MKH2-02-004-CNS-1190 | Road backfilling [Local 11 ]-Stage 2 |  | 2026-12-13 → 2026-12-20 (+7d) |  | -21d → -18d |
| MKH2-02-004-CNS-1280 | Subgrade [Local 11 ] |  | 2027-01-23 → 2026-11-19 A (-65d) | 90% → 100% | -32d → none |
| MKH2-02-004-CNS-1360 | Aggregate base course [Local 11 ] | 2027-02-13 → 2027-02-16 (+3d) | 2027-02-23 → 2027-02-27 (+4d) |  | -49d → -52d |
| 2 | **Asphalt Works** | 2027-02-25 → 2027-03-01 (+4d) | 2027-03-25 → 2027-03-29 (+4d) |  |  |
| MKH2-02-004-CNS-1440 | Prime Coat (MC1) [Local 11 ] | 2027-02-25 → 2027-03-01 (+4d) | 2027-03-08 → 2027-03-15 (+7d) |  | -38d → -41d |
| MKH2-02-004-CNS-1520 | Bituminous base course [Local 11 ] | 2027-03-09 → 2027-03-16 (+7d) | 2027-03-25 → 2027-03-29 (+4d) |  | -38d → -41d |
| 3 | **Finishing Works** |  | 2027-05-13 → 2027-05-22 (+9d) |  |  |
| 1 | **Precast Concrete Curb** |  | 2027-04-07 → 2027-04-11 (+4d) |  |  |
| MKH2-02-004-CNS-1600 | Installation of Precast Concrete curb [Local 11 ] |  | 2027-04-07 → 2027-04-11 (+4d) |  | -38d → -41d |
| 2 | **Precast Interlocking block pavers** | 2027-04-08 → 2027-04-12 (+4d) | 2027-04-19 → 2027-04-22 (+3d) |  |  |
| MKH2-02-004-CNS-1680 | Installation of Interlocking block pavers for sidewalk/footpath [Local 11 ] | 2027-04-08 → 2027-04-12 (+4d) | 2027-04-19 → 2027-04-22 (+3d) |  | -38d → -41d |
| 3 | **Pavement Markings** | 2027-04-20 → 2027-04-24 (+4d) | 2027-05-05 → 2027-05-09 (+4d) |  |  |
| MKH2-02-004-CNS-1760 | Pavement markings [Local 11 ] | 2027-04-20 → 2027-04-24 (+4d) | 2027-04-27 → 2027-05-01 (+4d) |  | -38d → -41d |
| MKH2-02-004-CNS-1840 | (Speed Hump) with retroreflectiveThermoplastic yellow [Local 11 ] | 2027-04-28 → 2027-05-02 (+4d) | 2027-05-05 → 2027-05-09 (+4d) |  | -38d → -41d |
| 4 | **Traffic Signage** | 2027-05-06 → 2027-05-10 (+4d) | 2027-05-13 → 2027-05-22 (+9d) |  |  |
| MKH2-02-004-CNS-1920 | Installation of Traffic Signs [Local 11 ] | 2027-05-06 → 2027-05-10 (+4d) | 2027-05-13 → 2027-05-22 (+9d) |  | -38d → -41d |
| 2 | **Storm Water Drainage** |  | 2027-01-14 → 2027-01-13 (-1d) |  |  |
| 1 | **Pipe Works** |  | 2026-12-30 → 2027-01-06 (+7d) |  |  |
| MKH2-02-004-CNS-2030 | Excavation & Compaction (FDT) [Local 11 ]-Stage 2 |  | 2026-12-17 → 2026-12-24 (+7d) |  | -21d → -18d |
| MKH2-02-004-CNS-2150 | Sand Bedding [Local 11 ]-Stage 2 |  | 2026-12-21 → 2026-12-28 (+7d) |  | -21d → -18d |
| MKH2-02-004-CNS-2270 | Installation of GRP Pipe [Local 11 ]-Stage 2 |  | 2026-12-24 → 2026-12-31 (+7d) |  | -21d → -18d |
| MKH2-02-004-CNS-2390 | Sand Cover & Warning Tape [Local 11 ]-Stage 2 |  | 2026-12-28 → 2027-01-04 (+7d) |  | -21d → -18d |
| MKH2-02-004-CNS-2510 | Backfilling & Compaction [Local 11 ]-Stage 2 |  | 2026-12-30 → 2027-01-06 (+7d) |  | -21d → -18d |
| 3 | **Catch Basins** |  | 2027-01-14 → 2027-01-13 (-1d) |  |  |
| MKH2-02-004-CNS-2960 | Construction of Catch basins [Local 11 ]-Stage 2-[11 to 20] |  | 2026-12-21 → 2026-11-22 A (-29d) | 90% → 100% | 21d → none |
| MKH2-02-004-CNS-2970 | Construction of Catch basins [Local 11 ]-Stage 3-[21 to 30] | 2026-12-22 → 2026-11-22 A (-30d) | 2026-12-29 → 2026-12-28 (-1d) | 0% → 92% | 21d → 22d |
| MKH2-02-004-CNS-2980 | Construction of Catch basins [Local 11 ]-Stage 4-[31 to 40] | 2026-12-30 → 2026-12-29 (-1d) | 2027-01-06 → 2027-01-05 (-1d) |  | 21d → 22d |
| MKH2-02-004-CNS-2990 | Construction of Catch basins [Local 11 ]-Stage 5-[41 to 50] | 2027-01-07 → 2027-01-06 (-1d) | 2027-01-14 → 2027-01-13 (-1d) |  | 21d → 22d |
| 4 | **Concrete chambers Pipes** | 2026-12-14 → 2026-11-17 (-27d) | 2027-01-11 → 2027-01-07 (-4d) |  |  |
| MKH2-02-004-CNS-3170 | Excavation and Compaction (FDT) [Local 11 ] | 2026-12-14 → 2026-11-17 A (-27d) | 2026-12-23 → 2026-11-19 A (-34d) | 0% → 100% | 13d → none |
| MKH2-02-004-CNS-3260 | Installation of Pipes [Local 11 ] | 2026-12-24 → 2026-11-21 A (-33d) | 2026-12-31 → 2026-12-28 (-3d) | 0% → 40% | 13d → 16d |
| MKH2-02-004-CNS-3350 | Backfilling & Compaction [Local 11 ] | 2027-01-02 → 2026-12-29 (-4d) | 2027-01-11 → 2027-01-07 (-4d) |  | 13d → 16d |
| 6 | **Local 29** |  | 2027-05-10 → 2027-05-13 (+3d) |  |  |
| 1 | **Road Works** |  | 2027-05-10 → 2027-05-13 (+3d) |  |  |
| 1 | **Eartworks & Site grading** |  | 2027-03-15 → 2027-03-18 (+3d) |  |  |
| MKH2-02-004-CNS-1200 | Road backfilling [Local 29 ] |  | 2026-12-19 → 2026-12-26 (+7d) |  | -9d → -15d |
| MKH2-02-004-CNS-1370 | Aggregate base course [Local 29 ] | 2027-02-24 → 2027-02-28 (+4d) | 2027-03-15 → 2027-03-18 (+3d) |  | -49d → -52d |
| 2 | **Asphalt Works** | 2027-03-16 → 2027-03-20 (+4d) | 2027-04-05 → 2027-04-08 (+3d) |  |  |
| MKH2-02-004-CNS-1450 | Prime Coat (MC1) [Local 29 ] | 2027-03-16 → 2027-03-20 (+4d) | 2027-03-24 → 2027-03-28 (+4d) |  | -37d → -40d |
| MKH2-02-004-CNS-1530 | Bituminous base course [Local 29 ] | 2027-03-25 → 2027-03-29 (+4d) | 2027-04-05 → 2027-04-08 (+3d) |  | -35d → -38d |
| 3 | **Finishing Works** | 2027-04-06 → 2027-04-10 (+4d) | 2027-05-10 → 2027-05-13 (+3d) |  |  |
| 1 | **Precast Concrete Curb** | 2027-04-06 → 2027-04-10 (+4d) | 2027-04-12 → 2027-04-15 (+3d) |  |  |
| MKH2-02-004-CNS-1610 | Installation of Precast Concrete curb [Local 29 ] | 2027-04-06 → 2027-04-10 (+4d) | 2027-04-12 → 2027-04-15 (+3d) |  | -35d → -38d |
| 2 | **Precast Interlocking block pavers** | 2027-04-13 → 2027-04-17 (+4d) | 2027-04-19 → 2027-04-22 (+3d) |  |  |
| MKH2-02-004-CNS-1690 | Installation of Interlocking block pavers for sidewalk/footpath [Local 29 ] | 2027-04-13 → 2027-04-17 (+4d) | 2027-04-19 → 2027-04-22 (+3d) |  | -35d → -38d |
| 3 | **Pavement Markings** | 2027-04-20 → 2027-04-24 (+4d) | 2027-05-03 → 2027-05-06 (+3d) |  |  |
| MKH2-02-004-CNS-1770 | Pavement markings [Local 29 ] | 2027-04-20 → 2027-04-24 (+4d) | 2027-04-26 → 2027-04-29 (+3d) |  | -35d → -38d |
| MKH2-02-004-CNS-1850 | (Speed Hump) with retroreflectiveThermoplastic yellow [Local 29 ] | 2027-04-27 → 2027-05-01 (+4d) | 2027-05-03 → 2027-05-06 (+3d) |  | -35d → -38d |
| 4 | **Traffic Signage** | 2027-05-04 → 2027-05-08 (+4d) | 2027-05-10 → 2027-05-13 (+3d) |  |  |
| MKH2-02-004-CNS-1930 | Installation of Traffic Signs [Local 29 ] | 2027-05-04 → 2027-05-08 (+4d) | 2027-05-10 → 2027-05-13 (+3d) |  | -35d → -38d |
| 2 | **Storm Water Drainage** |  | 2027-02-04 → 2027-01-31 (-4d) |  |  |
| 1 | **Pipe Works** |  | 2027-01-04 → 2026-11-21 (-44d) |  |  |
| MKH2-02-004-CNS-2040 | Excavation & Compaction (FDT) [Local 29 ] |  | 2026-12-26 → 2026-11-17 A (-39d) | 98% → 100% | -8d → none |
| MKH2-02-004-CNS-2160 | Sand Bedding [Local 29 ] |  | 2026-12-28 → 2026-11-18 A (-40d) | 98% → 100% | -8d → none |
| MKH2-02-004-CNS-2280 | Installation of GRP Pipe [Local 29 ] |  | 2026-12-30 → 2026-11-18 A (-42d) | 98% → 100% | -8d → none |
| MKH2-02-004-CNS-2400 | Sand Cover & Warning Tape [Local 29 ] |  | 2027-01-02 → 2026-11-19 A (-44d) | 98% → 100% | -7d → none |

| ID | Task | Start | Finish | Complete | Total float |
| --- | --- | --- | --- | --- | --- |
| MKH2-02-004-CNS-2520 | Backfilling & Compaction [Local 29 ] |  | 2027-01-04 → 2026-11-21 A (-44d) | 98% → 100% | -7d → none |
| 3 | **Catch Basins** | 2026-12-31 → 2026-12-27 (-4d) | 2027-01-28 → 2027-01-24 (-4d) |  |  |
| MKH2-02-004-CNS-3000 | Construction of Catch basins [Local 29 ]-Stage 1-[01 to 10] | 2026-12-31 → 2026-12-27 (-4d) | 2027-01-07 → 2027-01-03 (-4d) |  | -8d → -4d |
| MKH2-02-004-CNS-3010 | Construction of Catch basins [Local 29 ]-Stage 2-[11 to 20] | 2027-01-09 → 2027-01-04 (-5d) | 2027-01-16 → 2027-01-11 (-5d) |  | -8d → -4d |
| MKH2-02-004-CNS-3020 | Construction of Catch basins [Local 29 ]-Stage 3-[21 to 30] | 2027-01-17 → 2027-01-12 (-5d) | 2027-01-24 → 2027-01-19 (-5d) |  | -8d → -4d |
| MKH2-02-004-CNS-3030 | Construction of Catch basins [Local 29 ]-Stage 4-[31 to 35] | 2027-01-25 → 2027-01-20 (-5d) | 2027-01-28 → 2027-01-24 (-4d) |  | -8d → -4d |
| 4 | **Concrete chambers Pipes** | 2027-01-09 → 2027-01-04 (-5d) | 2027-02-04 → 2027-01-31 (-4d) |  |  |
| MKH2-02-004-CNS-3180 | Excavation and Compaction (FDT) [Local 29 ] | 2027-01-09 → 2027-01-04 (-5d) | 2027-01-16 → 2027-01-11 (-5d) |  | -6d → -2d |
| MKH2-02-004-CNS-3270 | Installation of Pipes [Local 29 ] | 2027-01-17 → 2027-01-12 (-5d) | 2027-01-26 → 2027-01-21 (-5d) |  | -6d → -2d |
| MKH2-02-004-CNS-3360 | Backfilling & Compaction [Local 29 ] | 2027-01-30 → 2027-01-25 (-5d) | 2027-02-04 → 2027-01-31 (-4d) |  | -8d → -4d |
| 7 | **Local 30** |  | 2027-05-29 → 2027-06-01 (+3d) |  |  |
| 1 | **Road Works** |  | 2027-05-29 → 2027-06-01 (+3d) |  |  |
| 1 | **Eartworks & Site grading** |  | 2027-03-29 → 2027-04-01 (+3d) |  |  |
| MKH2-02-004-CNS-1210 | Road backfilling [Local 30 ] |  | 2026-12-24 → 2026-12-31 (+7d) |  | -9d → -15d |
| MKH2-02-004-CNS-1380 | Aggregate base course [Local 30 ] | 2027-03-16 → 2026-11-18 A (-118d) | 2027-03-29 → 2027-04-01 (+3d) | 0% → 60% | -49d → -52d |
| 2 | **Asphalt Works** | 2027-03-30 → 2027-04-03 (+4d) | 2027-04-19 → 2027-04-22 (+3d) |  |  |
| MKH2-02-004-CNS-1460 | Prime Coat (MC1) [Local 30 ] | 2027-03-30 → 2027-04-03 (+4d) | 2027-04-07 → 2027-04-11 (+4d) |  | -41d → -44d |
| MKH2-02-004-CNS-1540 | Bituminous base course [Local 30 ] | 2027-04-08 → 2027-04-12 (+4d) | 2027-04-19 → 2027-04-22 (+3d) |  | -41d → -44d |
| 3 | **Finishing Works** |  | 2027-05-29 → 2027-06-01 (+3d) |  |  |
| 1 | **Precast Concrete Curb** |  | 2027-04-26 → 2027-04-29 (+3d) |  |  |
| MKH2-02-004-CNS-1620 | Installation of Precast Concrete curb [Local 30 ] |  | 2027-04-26 → 2027-04-29 (+3d) |  | -41d → -44d |
| 2 | **Precast Interlocking block pavers** | 2027-04-27 → 2027-05-01 (+4d) | 2027-05-03 → 2027-05-06 (+3d) |  |  |
| MKH2-02-004-CNS-1700 | Installation of Interlocking block pavers for sidewalk/footpath [Local 30 ] | 2027-04-27 → 2027-05-01 (+4d) | 2027-05-03 → 2027-05-06 (+3d) |  | -41d → -44d |
| 3 | **Pavement Markings** | 2027-05-04 → 2027-05-08 (+4d) | 2027-05-22 → 2027-05-25 (+3d) |  |  |
| MKH2-02-004-CNS-1780 | Pavement markings [Local 30 ] | 2027-05-04 → 2027-05-08 (+4d) | 2027-05-10 → 2027-05-13 (+3d) |  | -41d → -44d |
| MKH2-02-004-CNS-1860 | (Speed Hump) with retroreflectiveThermoplastic yellow [Local 30 ] | 2027-05-11 → 2027-05-19 (+8d) | 2027-05-22 → 2027-05-25 (+3d) |  | -41d → -44d |
| 4 | **Traffic Signage** | 2027-05-23 → 2027-05-26 (+3d) | 2027-05-29 → 2027-06-01 (+3d) |  |  |
| MKH2-02-004-CNS-1940 | Installation of Traffic Signs [Local 30 ] | 2027-05-23 → 2027-05-26 (+3d) | 2027-05-29 → 2027-06-01 (+3d) |  | -41d → -44d |
| 8 | **Local 31** |  | 2027-07-07 → 2027-07-11 (+4d) |  |  |
| 1 | **Road Works** |  | 2027-07-07 → 2027-07-11 (+4d) |  |  |
| 1 | **Eartworks & Site grading** |  | 2027-04-19 → 2027-04-22 (+3d) |  |  |
| MKH2-02-004-CNS-1230 | Road backfilling [Local 31 ]-Stage 2 |  | 2027-01-07 → 2027-01-14 (+7d) |  | -9d → -15d |
| MKH2-02-004-CNS-1390 | Aggregate base course [Local 31 ] | 2027-03-30 → 2027-04-03 (+4d) | 2027-04-19 → 2027-04-22 (+3d) |  | -49d → -52d |
| 2 | **Asphalt Works** | 2027-04-20 → 2027-04-24 (+4d) | 2027-05-11 → 2027-05-19 (+8d) |  |  |
| MKH2-02-004-CNS-1470 | Prime Coat (MC1) [Local 31 ] | 2027-04-20 → 2027-04-24 (+4d) | 2027-04-29 → 2027-05-03 (+4d) |  | -49d → -52d |
| MKH2-02-004-CNS-1550 | Bituminous base course [Local 31 ] | 2027-05-01 → 2027-05-04 (+3d) | 2027-05-11 → 2027-05-19 (+8d) |  | -49d → -52d |
| 3 | **Finishing Works** | 2027-05-12 → 2027-05-20 (+8d) | 2027-07-07 → 2027-07-11 (+4d) |  |  |
| 1 | **Precast Concrete Curb** | 2027-05-12 → 2027-05-20 (+8d) | 2027-05-27 → 2027-05-31 (+4d) |  |  |
| MKH2-02-004-CNS-1630 | Installation of Precast Concrete curb [Local 31 ] | 2027-05-12 → 2027-05-20 (+8d) | 2027-05-27 → 2027-05-31 (+4d) |  | -49d → -52d |
| 2 | **Precast Interlocking block pavers** | 2027-05-29 → 2027-06-01 (+3d) | 2027-06-07 → 2027-06-10 (+3d) |  |  |
| MKH2-02-004-CNS-1710 | Installation of Interlocking block pavers for sidewalk/footpath [Local 31 ] | 2027-05-29 → 2027-06-01 (+3d) | 2027-06-07 → 2027-06-10 (+3d) |  | -49d → -52d |
| 3 | **Pavement Markings** | 2027-06-08 → 2027-06-12 (+4d) | 2027-06-28 → 2027-07-01 (+3d) |  |  |
| MKH2-02-004-CNS-1790 | Pavement markings [Local 31 ] | 2027-06-08 → 2027-06-12 (+4d) | 2027-06-17 → 2027-06-21 (+4d) |  | -49d → -52d |
| MKH2-02-004-CNS-1870 | (Speed Hump) with retroreflectiveThermoplastic yellow [Local 31 ] | 2027-06-19 → 2027-06-22 (+3d) | 2027-06-28 → 2027-07-01 (+3d) |  | -49d → -52d |
| 4 | **Traffic Signage** | 2027-06-29 → 2027-07-03 (+4d) | 2027-07-07 → 2027-07-11 (+4d) |  |  |
| MKH2-02-004-CNS-1950 | Installation of Traffic Signs [Local 31 ] | 2027-06-29 → 2027-07-03 (+4d) | 2027-07-07 → 2027-07-11 (+4d) |  | -29d → -32d |
| 2 | **Storm Water Drainage** |  | 2027-03-14 → 2027-03-09 (-5d) |  |  |
| 1 | **Pipe Works** |  | 2027-02-06 → 2027-02-13 (+7d) |  |  |
| MKH2-02-004-CNS-2070 | Excavation & Compaction (FDT) [Local 31 ]-Stage 2 |  | 2027-01-07 → 2027-01-14 (+7d) |  | -9d → -15d |
| MKH2-02-004-CNS-2190 | Sand Bedding [Local 31 ]-Stage 2 |  | 2027-01-19 → 2027-01-26 (+7d) |  | -9d → -15d |
| MKH2-02-004-CNS-2310 | Installation of GRP Pipe [Local 31 ]-Stage 2 |  | 2027-01-25 → 2027-02-01 (+7d) |  | -9d → -15d |
| MKH2-02-004-CNS-2430 | Sand Cover & Warning Tape [Local 31 ]-Stage 2 |  | 2027-01-31 → 2027-02-07 (+7d) |  | -9d → -15d |
| MKH2-02-004-CNS-2550 | Backfilling & Compaction [Local 31 ]-Stage 2 |  | 2027-02-06 → 2027-02-13 (+7d) |  | -9d → -15d |
| 3 | **Catch Basins** | 2026-12-26 → 2027-01-02 (+7d) | 2027-03-01 → 2027-02-28 (-1d) |  |  |
| MKH2-02-004-CNS-3070 | Construction of Catch basins [Local 31 ]-Stage 1-[01 to 10] | 2026-12-26 → 2027-01-02 (+7d) | 2026-12-30 → 2027-01-06 (+7d) |  | 33d → 27d |
| MKH2-02-004-CNS-3080 | Construction of Catch basins [Local 31 ]-Stage 2-[11 to 20] | 2027-01-16 → 2027-01-14 (-2d) | 2027-01-20 → 2027-01-19 (-1d) |  | 21d → 22d |
| MKH2-02-004-CNS-3090 | Construction of Catch basins [Local 31 ]-Stage 3-[21 to 31] | 2027-02-11 → 2027-02-10 (-1d) | 2027-02-16 → 2027-02-15 (-1d) |  | 3d → 4d |
| MKH2-02-004-CNS-3100 | Construction of Catch basins [Local 31 ]-Stage 4-[31 to 40] | 2027-02-17 → 2027-02-16 (-1d) | 2027-02-23 → 2027-02-21 (-2d) |  | 3d → 4d |
| MKH2-02-004-CNS-3110 | Construction of Catch basins [Local 31 ]-Stage 5-[41 to 49] | 2027-02-24 → 2027-02-23 (-1d) | 2027-03-01 → 2027-02-28 (-1d) |  | 3d → 4d |
| 4 | **Concrete chambers Pipes** | 2026-12-31 → 2027-01-07 (+7d) | 2027-03-14 → 2027-03-09 (-5d) |  |  |
| MKH2-02-004-CNS-3200 | Excavation and Compaction (FDT) [Local 31 ] | 2026-12-31 → 2027-01-07 (+7d) | 2027-01-10 → 2027-01-17 (+7d) |  | 33d → 27d |
| MKH2-02-004-CNS-3290 | Installation of Pipes [Local 31 ] | 2027-01-11 → 2027-01-18 (+7d) | 2027-01-24 → 2027-01-31 (+7d) |  | 33d → 27d |
| MKH2-02-004-CNS-3380 | Backfilling & Compaction [Local 31 ] | 2027-03-02 → 2027-03-01 (-1d) | 2027-03-14 → 2027-03-09 (-5d) |  | 3d → 4d |
| 4 | **Local 28** |  | 2027-07-31 → 2027-08-03 (+3d) |  |  |
| 1 | **Road Works** |  | 2027-07-31 → 2027-08-03 (+3d) |  |  |
| 1 | **Eartworks & Site grading** |  | 2027-05-05 → 2027-05-09 (+4d) |  |  |
| MKH2-02-004-CNS-1170 | Road backfilling [Local 28 ]-Stage 2 |  | 2027-01-03 → 2027-01-10 (+7d) |  | 18d → 14d |
| MKH2-02-004-CNS-1270 | Subgrade [Local 28 ] |  | 2027-02-25 → 2026-11-21 A (-96d) | 70% → 100% | -2d → none |
| MKH2-02-004-CNS-1350 | Aggregate base course [Local 28 ] | 2027-04-20 → 2027-04-24 (+4d) | 2027-05-05 → 2027-05-09 (+4d) |  | -44d → -47d |
| 2 | **Asphalt Works** | 2027-05-06 → 2027-05-10 (+4d) | 2027-05-31 → 2027-06-03 (+3d) |  |  |

| ID | Task | Start | Finish | Complete | Total float |
| --- | --- | --- | --- | --- | --- |
| MKH2-02-004-CNS-1430 | Prime Coat (MC1) [Local 28 ] | 2027-05-06 → 2027-05-10 (+4d) | 2027-05-19 → 2027-05-23 (+4d) |  | -44d → -47d |
| MKH2-02-004-CNS-1510 | Bituminous base course [Local 28 ] | 2027-05-20 → 2027-05-24 (+4d) | 2027-05-31 → 2027-06-03 (+3d) |  | -44d → -47d |
| 3 | **Finishing Works** |  | 2027-07-31 → 2027-08-03 (+3d) |  |  |
| 1 | **Precast Concrete Curb** |  | 2027-06-12 → 2027-06-15 (+3d) |  |  |
| MKH2-02-004-CNS-1590 | Installation of Precast Concrete curb [Local 28 ] |  | 2027-06-12 → 2027-06-15 (+3d) | 12% → 30% | -44d → -47d |
| 2 | **Precast Interlocking block pavers** | 2027-06-13 → 2027-06-16 (+3d) | 2027-06-22 → 2027-06-26 (+4d) |  |  |
| MKH2-02-004-CNS-1670 | Installation of Interlocking block pavers for sidewalk/footpath [Local 28 ] | 2027-06-13 → 2027-06-16 (+3d) | 2027-06-22 → 2027-06-26 (+4d) |  | -44d → -47d |
| 3 | **Pavement Markings** | 2027-06-29 → 2027-07-03 (+4d) | 2027-07-20 → 2027-07-24 (+4d) |  |  |
| MKH2-02-004-CNS-1750 | Pavement markings [Local 28 ] | 2027-06-29 → 2027-07-03 (+4d) | 2027-07-10 → 2027-07-13 (+3d) |  | -49d → -52d |
| MKH2-02-004-CNS-1830 | (Speed Hump) with retroreflectiveThermoplastic yellow [Local 28 ] | 2027-07-11 → 2027-07-14 (+3d) | 2027-07-20 → 2027-07-24 (+4d) |  | -49d → -52d |
| 4 | **Traffic Signage** | 2027-07-21 → 2027-07-25 (+4d) | 2027-07-31 → 2027-08-03 (+3d) |  |  |
| MKH2-02-004-CNS-1910 | Installation of Traffic Signs [Local 28 ] | 2027-07-21 → 2027-07-25 (+4d) | 2027-07-31 → 2027-08-03 (+3d) |  | -49d → -52d |
| 2 | **Storm Water Drainage** |  | 2027-03-03 → 2027-03-02 (-1d) |  |  |
| 1 | **Pipe Works** |  | 2027-01-10 → 2026-11-21 (-50d) |  |  |
| MKH2-02-004-CNS-2370 | Sand Cover & Warning Tape [Local 28 ]-Stage 2 |  | 2027-01-06 → 2026-11-19 A (-48d) | 98% → 100% | 21d → none |
| MKH2-02-004-CNS-2490 | Backfilling & Compaction [Local 28 ]-Stage 2 |  | 2027-01-10 → 2026-11-21 A (-50d) | 98% → 100% | 21d → none |
| 3 | **Catch Basins** |  | 2027-01-09 → 2027-01-16 (+7d) |  |  |
| MKH2-02-004-CNS-2940 | Construction of Catch basins [Local 28 ]-Stage 5-[41 to 50] |  | 2027-01-09 → 2027-01-16 (+7d) |  | 54d → 48d |
| 4 | **Concrete chambers Pipes** |  | 2027-03-03 → 2027-03-02 (-1d) |  |  |
| MKH2-02-004-CNS-3340 | Backfilling & Compaction [Local 28 ] |  | 2027-03-03 → 2027-03-02 (-1d) | 80% → 88% | 9d → 10d |
| 2 | **Local 10** |  | 2027-07-06 → 2027-07-10 (+4d) |  |  |
| 1 | **Road Works** |  | 2027-07-06 → 2027-07-10 (+4d) |  |  |
| 1 | **Eartworks & Site grading** |  | 2027-05-25 → 2027-05-20 (-5d) |  |  |
| MKH2-02-004-CNS-1010 | Road excavation [Local 10 ] |  | 2027-01-06 → 2026-11-17 A (-50d) | 95% → 100% | 18d → none |
| MKH2-02-004-CNS-1130 | Road backfilling [Local 10 ] |  | 2027-01-06 → 2027-01-13 (+7d) |  | 18d → 14d |
| MKH2-02-004-CNS-1250 | Subgrade [Local 10 ] |  | 2027-05-13 → 2026-11-21 A (-173d) | 95% → 100% | -32d → none |
| MKH2-02-004-CNS-1330 | Aggregate base course [Local 10 ] | 2027-05-19 → 2026-11-17 A (-183d) | 2027-05-25 → 2027-05-20 (-5d) | 0% → 90% | -32d → -22d |
| 2 | **Asphalt Works** | 2027-05-26 → 2027-05-24 (-2d) | 2027-06-03 → 2027-06-01 (-2d) |  |  |
| MKH2-02-004-CNS-1410 | Prime Coat (MC1) [Local 10 ] | 2027-05-26 → 2027-05-24 (-2d) | 2027-05-30 → 2027-05-27 (-3d) |  | -24d → -22d |
| MKH2-02-004-CNS-1490 | Bituminous base course [Local 10 ] | 2027-05-31 → 2027-05-29 (-2d) | 2027-06-03 → 2027-06-01 (-2d) |  | -22d → -20d |
| 3 | **Finishing Works** | 2027-06-13 → 2027-06-16 (+3d) | 2027-07-06 → 2027-07-10 (+4d) |  |  |
| 1 | **Precast Concrete Curb** | 2027-06-13 → 2027-06-16 (+3d) | 2027-06-19 → 2027-06-22 (+3d) |  |  |
| MKH2-02-004-CNS-1570 | Installation of Precast Concrete curb [Local 10 ] | 2027-06-13 → 2027-06-16 (+3d) | 2027-06-19 → 2027-06-22 (+3d) |  | -29d → -32d |
| 2 | **Precast Interlocking block pavers** | 2027-06-20 → 2027-06-23 (+3d) | 2027-06-24 → 2027-06-28 (+4d) |  |  |
| MKH2-02-004-CNS-1650 | Installation of Interlocking block pavers for sidewalk/footpath [Local 10 ] | 2027-06-20 → 2027-06-23 (+3d) | 2027-06-24 → 2027-06-28 (+4d) |  | -28d → -31d |
| 3 | **Pavement Markings** | 2027-06-26 → 2027-06-29 (+3d) | 2027-07-03 → 2027-07-06 (+3d) |  |  |
| MKH2-02-004-CNS-1730 | Pavement markings [Local 10 ] | 2027-06-26 → 2027-06-29 (+3d) | 2027-06-29 → 2027-07-03 (+4d) |  | -28d → -31d |
| MKH2-02-004-CNS-1810 | (Speed Hump) with retroreflectiveThermoplastic yellow [Local 10 ] | 2027-06-30 → 2027-07-04 (+4d) | 2027-07-03 → 2027-07-06 (+3d) |  | -28d → -31d |
| 4 | **Traffic Signage** | 2027-07-04 → 2027-07-07 (+3d) | 2027-07-06 → 2027-07-10 (+4d) |  |  |
| MKH2-02-004-CNS-1890 | Installation of Traffic Signs [Local 10 ] | 2027-07-04 → 2027-07-07 (+3d) | 2027-07-06 → 2027-07-10 (+4d) |  | -28d → -31d |
| 2 | **Storm Water Drainage** |  | 2027-02-11 → 2027-02-14 (+3d) |  |  |
| 1 | **Pipe Works** |  | 2027-01-26 → 2027-01-28 (+2d) |  |  |
| MKH2-02-004-CNS-1970 | Excavation & Compaction (FDT) [Local 10 ] |  | 2027-01-11 → 2026-11-19 A (-53d) | 80% → 100% | 18d → none |
| MKH2-02-004-CNS-2090 | Sand Bedding [Local 10 ] |  | 2027-01-14 → 2027-01-17 (+3d) |  | 18d → 16d |
| MKH2-02-004-CNS-2210 | Installation of GRP Pipe [Local 10 ] |  | 2027-01-20 → 2027-01-23 (+3d) |  | 18d → 16d |
| MKH2-02-004-CNS-2330 | Sand Cover & Warning Tape [Local 10 ] | 2027-01-21 → 2027-01-24 (+3d) | 2027-01-23 → 2027-01-25 (+2d) |  | 24d → 22d |
| MKH2-02-004-CNS-2450 | Backfilling & Compaction [Local 10 ] | 2027-01-24 → 2027-01-26 (+2d) | 2027-01-26 → 2027-01-28 (+2d) |  | 24d → 22d |
| 2 | **Manholes** | 2027-01-21 → 2027-01-24 (+3d) | 2027-02-01 → 2027-02-03 (+2d) |  |  |
| MKH2-02-004-CNS-2580 | Installation of Manholes [Local 10 ]-Stage 1-[MH 01 to MH 07] | 2027-01-21 → 2027-01-24 (+3d) | 2027-01-26 → 2027-01-28 (+2d) |  | 18d → 16d |
| MKH2-02-004-CNS-2590 | Installation of Manholes [Local 10 ]-Stage 2-[MH 08 to MH 11] | 2027-01-27 → 2027-01-30 (+3d) | 2027-02-01 → 2027-02-03 (+2d) |  | 24d → 22d |
| 3 | **Catch Basins** | 2027-01-27 → 2027-01-30 (+3d) | 2027-01-31 → 2027-02-02 (+2d) |  |  |
| MKH2-02-004-CNS-2790 | Construction of Catch basins [Local 10 ] | 2027-01-27 → 2027-01-30 (+3d) | 2027-01-31 → 2027-02-02 (+2d) |  | 18d → 16d |
| 4 | **Concrete chambers Pipes** | 2027-02-01 → 2027-02-03 (+2d) | 2027-02-11 → 2027-02-14 (+3d) |  |  |
| MKH2-02-004-CNS-3130 | Excavation and Compaction (FDT) [Local 10 ] | 2027-02-01 → 2027-02-03 (+2d) | 2027-02-03 → 2027-02-06 (+3d) |  | 18d → 16d |
| MKH2-02-004-CNS-3220 | Installation of Pipes [Local 10 ] | 2027-02-04 → 2027-02-07 (+3d) | 2027-02-08 → 2027-02-10 (+2d) |  | 18d → 16d |
| MKH2-02-004-CNS-3310 | Backfilling & Compaction [Local 10 ] | 2027-02-09 → 2027-02-11 (+2d) | 2027-02-11 → 2027-02-14 (+3d) |  | 18d → 16d |
| 1 | **Eartworks & Site grading** |  | 2027-06-08 → 2027-05-27 (-12d) |  |  |
| MKH2-02-004-CNS-1000 | Road excavation [Collector 02 ] |  | 2027-01-10 → 2026-11-18 A (-53d) | 98% → 100% | 18d → none |
| MKH2-02-004-CNS-1120 | Road backfilling [Collector 02 ] |  | 2027-01-10 → 2027-01-17 (+7d) |  | 18d → 14d |
| MKH2-02-004-CNS-1240 | Subgrade [Collector 02 ] |  | 2027-06-01 → 2026-11-21 A (-192d) | 95% → 100% | -32d → none |
| MKH2-02-004-CNS-1320 | Aggregate base course [Collector 02 ] | 2027-06-02 → 2026-11-19 A (-195d) | 2027-06-08 → 2027-05-27 (-12d) | 0% → 90% | -32d → -22d |
| 2 | **Asphalt Works** | 2027-06-09 → 2027-05-29 (-11d) | 2027-06-22 → 2027-06-10 (-12d) |  |  |
| MKH2-02-004-CNS-1400 | Prime Coat (MC1) [Collector 02 ] | 2027-06-09 → 2027-05-29 (-11d) | 2027-06-15 → 2027-06-03 (-12d) |  | -32d → -22d |
| MKH2-02-004-CNS-1480 | Bituminous base course [Collector 02 ] | 2027-06-16 → 2027-06-05 (-11d) | 2027-06-22 → 2027-06-10 (-12d) |  | -32d → -22d |
| 2 | **Storm Water Drainage** | 2027-01-11 → 2026-11-17 (-55d) | 2027-02-23 → 2027-02-21 (-2d) |  |  |
| 1 | **Pipe Works** | 2027-01-11 → 2026-11-17 (-55d) | 2027-02-03 → 2027-02-08 (+5d) |  |  |
| MKH2-02-004-CNS-1960 | Excavation & Compaction (FDT) [Collector 02 ] | 2027-01-11 → 2026-11-17 A (-55d) | 2027-01-14 → 2027-01-20 (+6d) | 0% → 30% | 18d → 14d |
| MKH2-02-004-CNS-2080 | Sand Bedding [Collector 02 ] | 2027-01-16 → 2026-11-18 A (-59d) | 2027-01-18 → 2027-01-24 (+6d) | 0% → 30% | 18d → 14d |
| MKH2-02-004-CNS-2200 | Installation of GRP Pipe [Collector 02 ] | 2027-01-19 → 2026-11-19 A (-61d) | 2027-01-24 → 2027-01-28 (+4d) | 0% → 30% | 18d → 14d |
| MKH2-02-004-CNS-2320 | Sand Cover & Warning Tape [Collector 02 ] | 2027-01-25 → 2027-01-30 (+5d) | 2027-01-27 → 2027-02-01 (+5d) |  | 18d → 14d |

| ID | Task | Start | Finish | Total float |
| --- | --- | --- | --- | --- |
| MKH2-02-004-CNS-2440 | Backfilling & Compaction [Collector 02 ] | 2027-01-28 → 2027-02-02 (+5d) | 2027-02-03 → 2027-02-08 (+5d) | 18d → 14d |
| 2 | **Manholes** | 2027-01-25 → 2027-01-30 (+5d) | 2027-02-07 → 2027-02-11 (+4d) |  |
| MKH2-02-004-CNS-2560 | Installation of Manholes [Collector 02 ]-Stage 1-[MH 01 to MH 07] | 2027-01-25 → 2027-01-30 (+5d) | 2027-01-31 → 2027-02-04 (+4d) | 18d → 14d |
| MKH2-02-004-CNS-2570 | Installation of Manholes [Collector 02 ]-Stage 2-[MH 08 to MH 11] | 2027-02-01 → 2027-02-06 (+5d) | 2027-02-07 → 2027-02-11 (+4d) | 20d → 16d |
| 3 | **Catch Basins** | 2027-02-11 → 2027-02-10 (-1d) | 2027-02-14 → 2027-02-13 (-1d) |  |
| MKH2-02-004-CNS-2780 | Construction of Catch basins [Collector 02 ] | 2027-02-11 → 2027-02-10 (-1d) | 2027-02-14 → 2027-02-13 (-1d) | 9d → 10d |
| 4 | **Concrete chambers Pipes** | 2027-02-15 → 2027-02-14 (-1d) | 2027-02-23 → 2027-02-21 (-2d) |  |
| MKH2-02-004-CNS-3120 | Excavation and Compaction (FDT) [Collector 02 ] | 2027-02-15 → 2027-02-14 (-1d) | 2027-02-16 → 2027-02-15 (-1d) | 9d → 10d |
| MKH2-02-004-CNS-3210 | Installation of Pipes [Collector 02 ] | 2027-02-17 → 2027-02-16 (-1d) | 2027-02-20 → 2027-02-18 (-2d) | 9d → 10d |
| MKH2-02-004-CNS-3300 | Backfilling & Compaction [Collector 02 ] | 2027-02-21 → 2027-02-20 (-1d) | 2027-02-23 → 2027-02-21 (-2d) | 9d → 10d |
| 6 | **Testing and Commissioning** |  | 2027-08-23 → 2027-08-26 (+3d) |  |
| MKH2-02-004-T&C-1000 | Test for Stormwater Utilities |  | 2027-04-06 → 2027-04-05 (-1d) | 3d → 4d |
| MKH2-02-004-T&C-1010 | Test for Road Works | 2027-08-01 → 2027-08-04 (+3d) | 2027-08-23 → 2027-08-26 (+3d) | -49d → -52d |
| 7 | **Project Hand Over & Close-out** | 2027-04-07 → 2027-04-06 (-1d) | 2027-10-21 → 2027-10-25 (+4d) |  |
| 1 | **As-Built DWGs** | 2027-04-07 → 2027-04-06 (-1d) | 2027-09-28 → 2027-10-02 (+4d) |  |
| 1 | **As-Built DWGs Submittal** | 2027-04-07 → 2027-04-06 (-1d) | 2027-09-09 → 2027-09-13 (+4d) |  |
| MKH2-02-004-ABD-1000 | As-Built DWGs Submittal for Stormwater Utilities | 2027-04-07 → 2027-04-06 (-1d) | 2027-04-24 → 2027-04-22 (-2d) | 3d → 4d |
| MKH2-02-004-ABD-1010 | As-Built DWGs Submittal for Road Works | 2027-08-24 → 2027-08-28 (+4d) | 2027-09-09 → 2027-09-13 (+4d) | -49d → -52d |
| 2 | **As-Built DWGs Approval** | 2027-04-25 → 2027-04-24 (-1d) | 2027-09-28 → 2027-10-02 (+4d) |  |
| MKH2-02-004-ABD-1020 | As- Built DWGs Approval for Stormwater Utilities | 2027-04-25 → 2027-04-24 (-1d) | 2027-05-05 → 2027-05-04 (-1d) | 3d → 4d |
| MKH2-02-004-ABD-1030 | As- Built DWGs Approval for Road Works | 2027-09-11 → 2027-09-14 (+3d) | 2027-09-28 → 2027-10-02 (+4d) | -49d → -52d |
| 2 | **Demobilization** | 2027-09-29 → 2027-10-03 (+4d) | 2027-10-21 → 2027-10-25 (+4d) |  |
| MKH2-02-004-DEM-1000 | Demobilization of Manpower | 2027-09-29 → 2027-10-03 (+4d) | 2027-10-10 → 2027-10-13 (+3d) | -49d → -52d |
| MKH2-02-004-DEM-1010 | Removal of Equipment from Site | 2027-09-29 → 2027-10-03 (+4d) | 2027-10-10 → 2027-10-13 (+3d) | -49d → -52d |
| MKH2-02-004-DEM-1020 | Site Clean Up | 2027-09-29 → 2027-10-03 (+4d) | 2027-10-10 → 2027-10-13 (+3d) | -49d → -52d |
| MKH2-02-004-DEM-1030 | Removal of Site Offices and Structures | 2027-09-29 → 2027-10-03 (+4d) | 2027-10-10 → 2027-10-13 (+3d) | -49d → -52d |
| MKH2-02-004-DEM-1040 | Restoration of Ground Surfaces | 2027-10-11 → 2027-10-14 (+3d) | 2027-10-21 → 2027-10-25 (+4d) | -49d → -52d |
