# Project:PASSENGER STATION FOR SAR RAILWAY - PACKAGE 1 SUDAIR

How a schedule from Primavera P6 changed from version to version. A marks actual dates.

## Version 1 (data date 2026-04-07, saved 2026-07-26, file SUD1-05-018 - Sudair SAR Railway Baseline 7.26.26.xer)

| ID | WBS | Task | Duration | Start | Finish | Predecessors | Total float |
| --- | --- | --- | --- | --- | --- | --- | --- |
|  | 1 | **Milestone** |  | 2026-04-07 | 2027-08-06 |  |  |
| SDR-ST-MILS-1000 |  | Project Start | 0d | 2026-04-07 | 2026-04-07 |  | 0d |
| SDR-ST-MILS-1070 |  | Completion of road and paving works | 0d | 2026-12-06 | 2026-12-06 | SDR-ST-CON-P1-4770 FF | 10.4d |
| SDR-ST-MILS-1100 |  | Completion of site and platform works | 0d | 2027-02-11 | 2027-02-11 | SDR-ST-CON-P3-1490 FF | 9.1d |
| SDR-ST-MILS-1140 |  | Project Finish | 0d | 2027-08-06 | 2027-08-06 | SDR-ST-CO-1080 FF, SDR-ST-CO-1090 FF, SDR-ST-CON-P1-1050, SDR-ST-CON-P1-1000, SDR-ST-CON-P1-1090, SDR-ST-CON-P1-1150, SDR-ST-CON-P1-1200, SDR-ST-CON-P1-1470, SDR-ST-CON-P1-2140, SDR-ST-CON-P1-2710, SDR-ST-CON-P1-3260, SDR-ST-CON-P1-3850, SDR-ST-CON-P1-4770, SDR-ST-CON-P1-4410, SDR-ST-CON-P1-5110, SDR-ST-CON-P1-3860, SDR-ST-CON-P1-4530, SDR-ST-CON-P1-4620, SDR-ST-CON-P1-4100, SDR-ST-CON-P1-5310, SDR-ST-CON-P1-5210, SDR-ST-CON-P1-5470, SDR-ST-CON-P1-5480, SDR-ST-CON-P1-5320, SDR-ST-CON-P1-5220, SDR-ST-CON-P1-5490, SDR-ST-CON-P1-1010, SDR-ST-CON-P1-1070, SDR-ST-CON-P1-1120, SDR-ST-CON-P1-1190, SDR-ST-CON-P1-2090, SDR-ST-CON-P1-1400, SDR-ST-CON-P1-2570, SDR-ST-CON-P1-3140, SDR-ST-CON-P1-3720, SDR-ST-CON-P1-4730, SDR-ST-CON-P1-4430, SDR-ST-CON-P1-5040, SDR-ST-CON-P1-3730, SDR-ST-CON-P1-4480, SDR-ST-CON-P1-4490, SDR-ST-CON-P1-3890, SDR-ST-CON-P1-5400, SDR-ST-CON-P1-5270, SDR-ST-CON-P1-5150, SDR-ST-CON-P1-5080, SDR-ST-CON-P1-5160, SDR-ST-CON-P1-5090, SDR-ST-CON-P1-5280, SDR-ST-CON-P1-1020, SDR-ST-CON-P1-1080, SDR-ST-CON-P1-1140, SDR-ST-CON-P1-1210 FF, SDR-ST-CON-P1-1580, SDR-ST-CON-P1-2220, SDR-ST-CON-P1-2880, SDR-ST-CON-P1-3600, SDR-ST-CON-P1-4220, SDR-ST-CON-P1-5010, SDR-ST-CON-P1-4750, SDR-ST-CON-P1-5200, SDR-ST-CON-P1-4230, SDR-ST-CON-P1-4950, SDR-ST-CON-P1-4870, SDR-ST-CON-P1-4440, SDR-ST-CON-P1-5690, SDR-ST-CON-P1-5610, SDR-ST-CON-P1-5450, SDR-ST-CON-P1-5300, SDR-ST-CON-P1-5680, SDR-ST-CON-P1-5540, SDR-ST-CON-P1-5460, SDR-ST-CON-P1-1030, SDR-ST-CON-P1-1100, SDR-ST-CON-P1-1160, SDR-ST-CON-P1-2920, SDR-ST-CON-P1-2620, SDR-ST-CON-P1-1910, SDR-ST-CON-P1-1300, SDR-ST-CON-P1-3390, SDR-ST-CON-P1-3960, SDR-ST-CON-P1-4890, SDR-ST-CON-P1-4540, SDR-ST-CON-P1-5130, SDR-ST-CON-P1-3970, SDR-ST-CON-P1-4690, SDR-ST-CON-P1-4780, SDR-ST-CON-P1-4200, SDR-ST-CON-P1-5550, SDR-ST-CON-P1-5370, SDR-ST-CON-P1-5250, SDR-ST-CON-P1-5630, SDR-ST-CON-P1-5560, SDR-ST-CON-P1-5380, SDR-ST-CON-P1-5260, SDR-ST-CON-P1-5390, SDR-ST-CON-P1-1040, SDR-ST-CON-P1-1110, SDR-ST-CON-P1-1170, SDR-ST-CON-P1-2540, SDR-ST-CON-P1-1830, SDR-ST-CON-P1-1250, SDR-ST-CON-P1-3100, SDR-ST-CON-P1-3540, SDR-ST-CON-P1-4130, SDR-ST-CON-P1-4930, SDR-ST-CON-P1-4600, SDR-ST-CON-P1-5180, SDR-ST-CON-P1-4140, SDR-ST-CON-P1-4810, SDR-ST-CON-P1-4920, SDR-ST-CON-P1-4350, SDR-ST-CON-P1-5640, SDR-ST-CON-P1-5580, SDR-ST-CON-P1-5410, SDR-ST-CON-P1-5290, SDR-ST-CON-P1-5590, SDR-ST-CON-P1-5420, SDR-ST-CON-P1-5430, SDR-ST-CON-P1-1060, SDR-ST-CON-P1-1130, SDR-ST-CON-P1-1220, SDR-ST-CON-P1-2730, SDR-ST-CON-P1-1350, SDR-ST-CON-P1-1990, SDR-ST-CON-P1-3320, SDR-ST-CON-P1-3740, SDR-ST-CON-P1-4290, SDR-ST-CON-P1-4980, SDR-ST-CON-P1-4650, SDR-ST-CON-P1-5230, SDR-ST-CON-P1-4300, SDR-ST-CON-P1-4860, SDR-ST-CON-P1-4450, SDR-ST-CON-P1-4940, SDR-ST-CON-P1-5650, SDR-ST-CON-P1-5600, SDR-ST-CON-P1-5510, SDR-ST-CON-P1-5350, SDR-ST-CON-P1-5660, SDR-ST-CON-P1-5520, SDR-ST-CON-P1-5360, SDR-ST-CON-P1-5530, SDR-ST-CON-P1-1570, SDR-ST-CON-P1-2270, SDR-ST-CON-P1-3000, SDR-ST-CON-P1-3900, SDR-ST-CON-P1-1720, SDR-ST-CON-P1-2420, SDR-ST-CON-P1-3150, SDR-ST-CON-P1-4000, SDR-ST-CON-P1-1770, SDR-ST-CON-P1-2500, SDR-ST-CON-P1-3280, SDR-ST-CON-P1-4250, SDR-ST-CON-P1-1730, SDR-ST-CON-P1-2430, SDR-ST-CON-P1-3160, SDR-ST-CON-P1-4010, SDR-ST-CON-P1-1920, SDR-ST-CON-P1-2660, SDR-ST-CON-P1-3430, SDR-ST-CON-P1-4320, SDR-ST-CON-P1-1840, SDR-ST-CON-P1-2590, SDR-ST-CON-P1-3340, SDR-ST-CON-P1-4050, SDR-ST-CON-P1-2000, SDR-ST-CON-P1-2750, SDR-ST-CON-P1-3460, SDR-ST-CON-P1-3980, SDR-ST-CON-P1-4840, SDR-ST-CON-P1-1180, SDR-ST-CON-P1-2250, SDR-ST-CON-P1-1560, SDR-ST-CON-P1-2980, SDR-ST-CON-P1-3870, SDR-ST-CON-P1-5170, SDR-ST-CON-P1-4420, SDR-ST-CON-P1-3120, SDR-ST-CON-P1-1590, SDR-ST-CON-P1-2390, SDR-ST-CON-P1-3990, SDR-ST-CON-P1-4680, SDR-ST-CON-P1-5760, SDR-ST-CON-P1-5050, SDR-ST-CON-P1-3040, SDR-ST-CON-P1-1500, SDR-ST-CON-P1-2320, SDR-ST-CON-P1-3920, SDR-ST-CON-P1-4850, SDR-ST-CON-P1-5780, SDR-ST-CON-P1-5330, SDR-ST-CON-P1-3190, SDR-ST-CON-P1-1700, SDR-ST-CON-P1-2410, SDR-ST-CON-P1-4110, SDR-ST-CON-P1-4960, SDR-ST-CON-P1-5790, SDR-ST-CON-P1-5340, SDR-ST-CON-P1-1450, SDR-ST-CON-P1-2160, SDR-ST-CON-P1-2890, SDR-ST-CON-P1-3530, SDR-ST-CON-P1-3810, SDR-ST-CON-P1-1600, SDR-ST-CON-P1-2280, SDR-ST-CON-P1-2800, SDR-ST-CON-P1-3250, SDR-ST-CON-P1-3670, SDR-ST-CON-P1-1510, SDR-ST-CON-P1-2180, SDR-ST-CON-P1-2930, SDR-ST-CON-P1-3510, SDR-ST-CON-P1-3760, SDR-ST-CON-P1-1710, SDR-ST-CON-P1-2360, SDR-ST-CON-P1-3090, SDR-ST-CON-P1-3520, SDR-ST-CON-P1-3930, SDR-ST-CON-P1-5840, SDR-ST-CON-P1-5890, SDR-ST-CON-P1-5920, SDR-ST-CON-P1-5880, SDR-ST-CON-P1-5930, SDR-ST-CON-P1-6000, SDR-ST-CON-P1-5940, SDR-ST-CON-P1-6010, SDR-ST-CON-P1-6040, SDR-ST-CON-P1-5960, SDR-ST-CON-P1-5950, SDR-ST-CON-P1-6020, SDR-ST-CON-P1-6050, SDR-ST-CON-P1-1310, SDR-ST-CON-P1-2350, SDR-ST-CON-P1-1780, SDR-ST-CON-P1-2860, SDR-ST-CON-P1-3500, SDR-ST-CON-P1-4570, SDR-ST-CON-P1-4260, SDR-ST-CON-P1-1260, SDR-ST-CON-P1-2260, SDR-ST-CON-P1-1760, SDR-ST-CON-P1-2770, SDR-ST-CON-P1-3350, SDR-ST-CON-P1-4400, SDR-ST-CON-P1-3940, SDR-ST-CON-P1-2400, SDR-ST-CON-P1-1360, SDR-ST-CON-P1-1900, SDR-ST-CON-P1-2840, SDR-ST-CON-P1-3470, SDR-ST-CON-P1-4610, SDR-ST-CON-P1-4080, SDR-ST-CON-P1-1320, SDR-ST-CON-P1-1950, SDR-ST-CON-P1-2560, SDR-ST-CON-P1-3200, SDR-ST-CON-P1-3700, SDR-ST-CON-P1-1270, SDR-ST-CON-P1-1870, SDR-ST-CON-P1-2470, SDR-ST-CON-P1-2970, SDR-ST-CON-P1-3360, SDR-ST-CON-P1-1370, SDR-ST-CON-P1-2060, SDR-ST-CON-P1-2600, SDR-ST-CON-P1-3110, SDR-ST-CON-P1-3480, SDR-ST-CON-P1-5810, SDR-ST-CON-P1-5850, SDR-ST-CON-P1-5970, SDR-ST-CON-P1-5820, SDR-ST-CON-P1-5860, SDR-ST-CON-P1-5980, SDR-ST-CON-P1-5830, SDR-ST-CON-P1-5870, SDR-ST-CON-P1-5910, SDR-ST-CON-P1-5900, SDR-ST-CON-P1-5990, SDR-ST-CON-P1-6030, SDR-ST-CON-P1-1690, SDR-ST-CON-P1-2340, SDR-ST-CON-P1-3070, SDR-ST-CON-P1-3680, SDR-ST-CON-P1-4310, SDR-ST-CON-P1-2370, SDR-ST-CON-P1-1680, SDR-ST-CON-P1-3080, SDR-ST-CON-P1-3690, SDR-ST-CON-P1-4360, SDR-ST-CON-P1-4880, SDR-ST-CON-P1-1530, SDR-ST-CON-P1-2190, SDR-ST-CON-P1-2940, SDR-ST-CON-P1-3770, SDR-ST-CON-P1-4370, SDR-ST-CON-P1-2200, SDR-ST-CON-P1-1520, SDR-ST-CON-P1-2950, SDR-ST-CON-P1-3780, SDR-ST-CON-P1-4630, SDR-ST-CON-P1-5140, SDR-ST-CON-P1-1240, SDR-ST-CON-P1-1790, SDR-ST-CON-P1-2510, SDR-ST-CON-P1-3230, SDR-ST-CON-P1-4020, SDR-ST-CON-P1-1230, SDR-ST-CON-P1-1800, SDR-ST-CON-P1-2520, SDR-ST-CON-P1-3240, SDR-ST-CON-P1-4150, SDR-ST-CON-P1-4740, SDR-ST-CON-P1-2290, SDR-ST-CON-P1-1620, SDR-ST-CON-P1-3010, SDR-ST-CON-P1-3630, SDR-ST-CON-P1-4240, SDR-ST-CON-P1-1610, SDR-ST-CON-P1-2300, SDR-ST-CON-P1-3020, SDR-ST-CON-P1-3820, SDR-ST-CON-P1-4720, SDR-ST-CON-P1-5240, SDR-ST-CON-P1-1340, SDR-ST-CON-P1-1960, SDR-ST-CON-P1-2670, SDR-ST-CON-P1-3440, SDR-ST-CON-P1-4270, SDR-ST-CON-P1-1330, SDR-ST-CON-P1-1970, SDR-ST-CON-P1-2680, SDR-ST-CON-P1-3450, SDR-ST-CON-P1-4380, SDR-ST-CON-P1-4900, SDR-ST-CON-P1-1290, SDR-ST-CON-P1-1880, SDR-ST-CON-P1-2640, SDR-ST-CON-P1-3370, SDR-ST-CON-P1-4160, SDR-ST-CON-P1-1280, SDR-ST-CON-P1-1890, SDR-ST-CON-P1-2650, SDR-ST-CON-P1-3380, SDR-ST-CON-P1-4280, SDR-ST-CON-P1-4820, SDR-ST-CON-P1-1390, SDR-ST-CON-P1-2070, SDR-ST-CON-P1-2780, SDR-ST-CON-P1-3580, SDR-ST-CON-P1-4170, SDR-ST-CON-P1-1380, SDR-ST-CON-P1-2080, SDR-ST-CON-P1-2790, SDR-ST-CON-P1-3590, SDR-ST-CON-P1-4500, SDR-ST-CON-P1-5000, SDR-ST-CON-P1-1670, SDR-ST-CON-P1-2330, SDR-ST-CON-P1-2990, SDR-ST-CON-P1-3880, SDR-ST-CON-P1-1740, SDR-ST-CON-P1-2440, SDR-ST-CON-P1-3170, SDR-ST-CON-P1-4040, SDR-ST-CON-P1-1750, SDR-ST-CON-P1-2450, SDR-ST-CON-P1-3180, SDR-ST-CON-P1-4070, SDR-ST-CON-P1-1480, SDR-ST-CON-P1-1980, SDR-ST-CON-P1-2490, SDR-ST-CON-P1-3270, SDR-ST-CON-P1-4190, SDR-ST-CON-P1-4800, SDR-ST-CON-P1-2150, SDR-ST-CON-P1-1490, SDR-ST-CON-P1-2850, SDR-ST-CON-P1-3560, SDR-ST-CON-P1-4470, SDR-ST-CON-P1-5030, SDR-ST-CON-P1-1410, SDR-ST-CON-P1-2050, SDR-ST-CON-P1-2690, SDR-ST-CON-P1-3290, SDR-ST-CON-P1-4030, SDR-ST-CON-P1-4700, SDR-ST-CON-P1-2100, SDR-ST-CON-P1-1420, SDR-ST-CON-P1-2820, SDR-ST-CON-P1-3660, SDR-ST-CON-P1-4550, SDR-ST-CON-P1-5100, SDR-ST-CON-P1-1630, SDR-ST-CON-P1-2130, SDR-ST-CON-P1-2810, SDR-ST-CON-P1-3490, SDR-ST-CON-P1-3950, SDR-ST-CON-P1-4520, SDR-ST-CON-P1-2230, SDR-ST-CON-P1-1640, SDR-ST-CON-P1-2900, SDR-ST-CON-P1-3640, SDR-ST-CON-P1-4510, SDR-ST-CON-P1-5070, SDR-ST-CON-P1-1930, SDR-ST-CON-P1-2480, SDR-ST-CON-P1-3130, SDR-ST-CON-P1-3650, SDR-ST-CON-P1-4340, SDR-ST-CON-P1-4910, SDR-ST-CON-P1-1940, SDR-ST-CON-P1-2630, SDR-ST-CON-P1-3400, SDR-ST-CON-P1-4330, SDR-ST-CON-P1-5060, SDR-ST-CON-P1-5730, SDR-ST-CON-P1-2460, SDR-ST-CON-P1-1850, SDR-ST-CON-P1-3060, SDR-ST-CON-P1-3570, SDR-ST-CON-P1-4060, SDR-ST-CON-P1-4640, SDR-ST-CON-P1-1860, SDR-ST-CON-P1-2550, SDR-ST-CON-P1-3310, SDR-ST-CON-P1-4210, SDR-ST-CON-P1-4990, SDR-ST-CON-P1-5710, SDR-ST-CON-P1-2010, SDR-ST-CON-P1-2610, SDR-ST-CON-P1-3220, SDR-ST-CON-P1-3610, SDR-ST-CON-P1-4090, SDR-ST-CON-P1-4660, SDR-ST-CON-P1-2020, SDR-ST-CON-P1-2740, SDR-ST-CON-P1-3550, SDR-ST-CON-P1-4460, SDR-ST-CON-P1-5190, SDR-ST-CON-P1-5750, SDR-ST-CON-P1-1540, SDR-ST-CON-P1-2380, SDR-ST-CON-P1-3050, SDR-ST-CON-P1-3710, SDR-ST-CON-P1-4590, SDR-ST-CON-P1-5570, SDR-ST-CON-P1-1550, SDR-ST-CON-P1-2210, SDR-ST-CON-P1-2960, SDR-ST-CON-P1-3840, SDR-ST-CON-P1-4790, SDR-ST-CON-P1-5720, SDR-ST-CON-P1-1430, SDR-ST-CON-P1-2110, SDR-ST-CON-P1-2720, SDR-ST-CON-P1-3300, SDR-ST-CON-P1-4120, SDR-ST-CON-P1-4970, SDR-ST-CON-P1-1440, SDR-ST-CON-P1-2120, SDR-ST-CON-P1-2870, SDR-ST-CON-P1-3790, SDR-ST-CON-P1-4710, SDR-ST-CON-P1-5700, SDR-ST-CON-P1-2240, SDR-ST-CON-P1-1650, SDR-ST-CON-P1-2830, SDR-ST-CON-P1-3420, SDR-ST-CON-P1-4180, SDR-ST-CON-P1-5020, SDR-ST-CON-P1-1660, SDR-ST-CON-P1-2310, SDR-ST-CON-P1-3030, SDR-ST-CON-P1-3910, SDR-ST-CON-P1-4830, SDR-ST-CON-P1-5740, SDR-ST-CON-P1-2530, SDR-ST-CON-P1-1810, SDR-ST-CON-P1-3210, SDR-ST-CON-P1-3800, SDR-ST-CON-P1-4580, SDR-ST-CON-P1-5500, SDR-ST-CON-P1-1820, SDR-ST-CON-P1-2580, SDR-ST-CON-P1-3410, SDR-ST-CON-P1-4390, SDR-ST-CON-P1-5120, SDR-ST-CON-P1-5770, SDR-ST-CON-P1-2030, SDR-ST-CON-P1-2700, SDR-ST-CON-P1-3330, SDR-ST-CON-P1-3750, SDR-ST-CON-P1-4670, SDR-ST-CON-P1-5670, SDR-ST-CON-P1-2040, SDR-ST-CON-P1-2760, SDR-ST-CON-P1-3620, SDR-ST-CON-P1-4560, SDR-ST-CON-P1-5440, SDR-ST-CON-P1-5800, SDR-ST-CON-P1-1460, SDR-ST-CON-P1-2170, SDR-ST-CON-P1-2910, SDR-ST-CON-P1-3830, SDR-ST-CON-P1-4760, SDR-ST-CON-P3-1000, SDR-ST-CON-P3-1010, SDR-ST-CON-P3-1020, SDR-ST-CON-P3-1030, SDR-ST-CON-P3-1040 FF, SDR-ST-CON-P3-1060, SDR-ST-CON-P3-1080, SDR-ST-CON-P3-1100, SDR-ST-CON-P3-1180, SDR-ST-CON-P3-1150, SDR-ST-CON-P3-1130, SDR-ST-CON-P3-1220, SDR-ST-CON-P3-1200, SDR-ST-CON-P3-1230, SDR-ST-CON-P3-1210, SDR-ST-CON-P3-1250, SDR-ST-CON-P3-1190, SDR-ST-CON-P3-1300, SDR-ST-CON-P3-1430, SDR-ST-CON-P3-1370, SDR-ST-CON-P3-1290, SDR-ST-CON-P3-1270, SDR-ST-CON-P3-1360, SDR-ST-CON-P3-1320, SDR-ST-CON-P3-1380, SDR-ST-CON-P3-1400, SDR-ST-CON-P3-1500, SDR-ST-CON-P3-1480, SDR-ST-CON-P3-1420, SDR-ST-CON-P3-1490, SDR-ST-CON-P3-1540, SDR-ST-CON-P3-1640, SDR-ST-CON-P3-1590, SDR-ST-CON-P3-1840, SDR-ST-CON-P3-1760, SDR-ST-CON-P3-1710, SDR-ST-CON-P3-1310, SDR-ST-CON-P3-1140, SDR-ST-CON-P3-1110, SDR-ST-CON-P3-1090, SDR-ST-CON-P3-1050, SDR-ST-CON-P3-1460, SDR-ST-CON-P3-1240, SDR-ST-CON-P3-1160, SDR-ST-CON-P3-1410, SDR-ST-CON-P3-1260, SDR-ST-CON-P3-1330, SDR-ST-CON-P3-1470, SDR-ST-CON-P3-1390, SDR-ST-CON-P3-1340, SDR-ST-CON-P3-1450, SDR-ST-CON-P3-1280, SDR-ST-CON-P3-1440, SDR-ST-CON-P3-1350, SDR-ST-CON-P3-1120, SDR-ST-CON-P3-1690, SDR-ST-CON-P3-1880, SDR-ST-CON-P3-1770, SDR-ST-CON-P3-1620, SDR-ST-CON-P3-1830, SDR-ST-CON-P3-1720, SDR-ST-CON-P3-1560, SDR-ST-CON-P3-1530, SDR-ST-CON-P3-1700, SDR-ST-CON-P3-1860, SDR-ST-CON-P3-1820, SDR-ST-CON-P3-1750, SDR-ST-CON-P3-1660, SDR-ST-CON-P3-1890, SDR-ST-CON-P3-1850, SDR-ST-CON-P3-1810, SDR-ST-CON-P3-1730, SDR-ST-CON-P3-1610, SDR-ST-CON-P3-1170, SDR-ST-CON-P3-1070, SDR-ST-CON-P3-1510, SDR-ST-CON-P3-1580, SDR-ST-CON-P3-1630, SDR-ST-CON-P3-1650, SDR-ST-CON-P3-1740, SDR-ST-CON-P3-1570, SDR-ST-CON-P3-1670, SDR-ST-CON-P3-1790, SDR-ST-CON-P3-1600, SDR-ST-CON-P3-1780, SDR-ST-CON-P3-1680, SDR-ST-CON-P3-1550, SDR-ST-CON-P3-1520, SDR-ST-PRO-DL-1260, SDR-ST-PRO-DL-1030, SDR-ST-PRO-DL-1060, SDR-ST-PRO-DL-1040, SDR-ST-PRO-DL-1270, SDR-ST-PRO-DL-1020, SDR-ST-PRO-DL-1010, SDR-ST-PRO-DL-1100, SDR-ST-PRO-DL-1130, SDR-ST-PRO-DL-1050, SDR-ST-PRO-DL-1070, SDR-ST-PRO-DL-1110, SDR-ST-PRO-DL-1200, SDR-ST-PRO-DL-1230, SDR-ST-PRO-DL-1000, SDR-ST-PRO-DL-1080, SDR-ST-PRO-DL-1120, SDR-ST-PRO-DL-1090, SDR-ST-PRO-DL-1140, SDR-ST-CON-P1-6090, SDR-ST-CON-P1-6100, SDR-ST-CON-P1-6110, SDR-ST-CON-P1-6120, SDR-ST-CON-P1-6130, SDR-ST-CON-P1-6140, SDR-ST-CON-P1-6150, SDR-ST-CON-P1-6160, SDR-ST-CON-P1-6170, SDR-ST-CON-P1-6180, SDR-ST-CON-P1-6190, SDR-ST-CON-P1-6200, SDR-ST-CON-P1-6210, SDR-ST-CON-P1-6220, SDR-ST-MILS-1110 FF | 0d |
|  | 1 | **Major Milestone** |  | 2026-04-07 | 2027-08-06 |  |  |
| SDR-ST-MILS-1010 |  | Project Start Milstone | 0d | 2026-04-07 | 2026-04-07 | SDR-ST-MILS-1000 SS | 4d |
| SDR-ST-MILS-1120 |  | Project Finish Milstone | 0d | 2027-08-06 | 2027-08-06 | SDR-ST-MILS-1130 FF, SDR-ST-CO-1060 FF | 0.1d |
|  | 3 | **Contractual Milestone** |  | 2026-05-06 | 2027-07-20 |  |  |
| SDR-ST-MILS-1020 |  | Mobilization Finish Milestone | 0d | 2026-05-06 | 2026-05-06 | SDR-ST-MOBL-1060 FF | 18d |
| SDR-ST-MILS-1030 |  | Execution Plan and Baseline Submission Finish Milestone | 0d | 2026-05-06 | 2026-05-06 | SDR-ST-PREL-1110 FF | 18d |
| SDR-ST-MILS-1040 |  | Submission and approval of plans and materials Finish Milestone | 0d | 2026-05-06 | 2026-05-06 | SDR-ST-ENG-AP-1230 FF | 18d |
| SDR-ST-MILS-1080 |  | Completion of road works | 0d | 2026-12-06 | 2026-12-06 | SDR-ST-CON-P1-4770 FF | 8.8d |
| SDR-ST-MILS-1060 |  | Completion of medium voltage works | 0d | 2027-05-12 | 2027-05-12 | SDR-ST-CON-P1-4320 FF, SDR-ST-CON-P1-3980 FF | 11.9d |
| SDR-ST-MILS-1130 |  | Completion of finishing works in the project | 0d | 2027-07-20 | 2027-07-20 | SDR-ST-CON-P3-1840 FF, SDR-ST-CON-P3-1890 FF | 15d |
|  | 2 | **Phases Milestone** |  | 2026-05-06 | 2027-07-21 |  |  |
| SDR-ST-MILS-1050 |  | Engineering Phase Finish Milestone | 0d | 2026-05-06 | 2026-05-06 | SDR-ST-ENG-AP-1230 FF | 18d |
| SDR-ST-MILS-1090 |  | Procurment Phase Finish Milestone | 0d | 2027-04-15 | 2027-04-15 | SDR-ST-PRO-DL-1250 FF, SDR-ST-PRO-MS-1250 FF | 6.8d |
| SDR-ST-MILS-1110 |  | Construction Phase Finish Milestone | 0d | 2027-07-21 | 2027-07-21 | SDR-ST-CON-P1-6050 FF, SDR-ST-CON-P1-6040 FF, SDR-ST-CON-P3-1890 FF, SDR-ST-CON-P3-1790 FF | 14d |
|  | 9 | **Mobilization** |  | 2026-04-07 | 2026-05-06 |  |  |
|  | 6 | **Office Site Prepare** |  | 2026-04-07 | 2026-04-11 |  |  |
| SDR-ST-MOBL-1000 |  | Office Area Grading and Prepare | 4d | 2026-04-07 | 2026-04-11 | SDR-ST-MILS-1000 SS | 0d |
|  | 3 | **Access Roads** |  | 2026-04-12 | 2026-04-15 |  |  |
| SDR-ST-MOBL-1010 |  | Office Area Access Roads Prepare | 4d | 2026-04-12 | 2026-04-15 | SDR-ST-MOBL-1000, SDR-ST-MILS-1010 SS | 0d |
|  | 5 | **Offices Installation** |  | 2026-04-16 | 2026-04-21 |  |  |
| SDR-ST-MOBL-1020 |  | Offices Cabins Installation | 5d | 2026-04-16 | 2026-04-21 | SDR-ST-MOBL-1010 | 0d |
|  | 10 | **Offices MEP Works** |  | 2026-04-16 | 2026-04-21 |  |  |
| SDR-ST-MOBL-1030 |  | Office Cabins MEP Works | 5d | 2026-04-16 | 2026-04-21 | SDR-ST-MOBL-1020 FF | 0d |
|  | 4 | **Manpower Mobilization** |  | 2026-04-22 | 2026-04-26 |  |  |
| SDR-ST-MOBL-1040 |  | Manpower Arrive | 4d | 2026-04-22 | 2026-04-26 | SDR-ST-MOBL-1030 | 0d |
|  | 7 | **Equipment Mobilization** |  | 2026-04-27 | 2026-04-29 |  |  |
| SDR-ST-MOBL-1050 |  | Equipment Arrive | 3d | 2026-04-27 | 2026-04-29 | SDR-ST-MOBL-1040 | 0d |
|  | 1 | **Project Signage** |  | 2026-04-30 | 2026-05-06 |  |  |
| SDR-ST-MOBL-1060 |  | Project Sign Installation | 6d | 2026-04-30 | 2026-05-06 | SDR-ST-MOBL-1050 | 0d |
|  | 2 | **Preliminary Submittals** |  | 2026-04-30 | 2026-05-06 |  |  |
|  | 1 | **HSSE Plan** |  | 2026-04-30 | 2026-05-05 |  |  |
| SDR-ST-PREL-1000 |  | Project HSSE Plan Submission | 3d | 2026-04-30 | 2026-05-03 | SDR-ST-MOBL-1050, SDR-ST-MOBL-1020 | 17d |
| SDR-ST-PREL-1060 |  | Project HSSE Plan Approval | 2d | 2026-05-04 | 2026-05-05 | SDR-ST-PREL-1000 | 19d |
|  | 2 | **Quality Control Plan** |  | 2026-04-30 | 2026-05-05 |  |  |
| SDR-ST-PREL-1010 |  | Project Quality Plan Submission | 3d | 2026-04-30 | 2026-05-03 | SDR-ST-PREL-1000 SS | 19d |
| SDR-ST-PREL-1070 |  | Project Quality Plan Approval | 2d | 2026-05-04 | 2026-05-05 | SDR-ST-PREL-1010 | 19d |
|  | 3 | **Communications Plan** |  | 2026-04-30 | 2026-05-05 |  |  |
| SDR-ST-PREL-1020 |  | Project Communication Plan Submission | 3d | 2026-04-30 | 2026-05-03 | SDR-ST-PREL-1010 SS | 19d |
| SDR-ST-PREL-1080 |  | Project Communication Plan Approval | 2d | 2026-05-04 | 2026-05-05 | SDR-ST-PREL-1020 | 19d |
|  | 4 | **Risk Managment Plan** |  | 2026-04-30 | 2026-05-05 |  |  |
| SDR-ST-PREL-1030 |  | Project Risk Managment Plan Submission | 3d | 2026-04-30 | 2026-05-03 | SDR-ST-PREL-1020 SS | 19d |
| SDR-ST-PREL-1090 |  | Project Risk Managment Plan Approvals | 2d | 2026-05-04 | 2026-05-05 | SDR-ST-PREL-1030 | 19d |
|  | 5 | **Project Execution Plan** |  | 2026-04-30 | 2026-05-05 |  |  |
| SDR-ST-PREL-1040 |  | Project Execution Plan Submission | 3d | 2026-04-30 | 2026-05-03 | SDR-ST-PREL-1030 SS | 19d |
| SDR-ST-PREL-1100 |  | Project Execution Plan Approvals | 2d | 2026-05-04 | 2026-05-05 | SDR-ST-PREL-1040 | 19d |
|  | 6 | **Project Schedule** |  | 2026-04-30 | 2026-05-06 |  |  |
| SDR-ST-PREL-1050 |  | Project Schedule Submission | 3d | 2026-04-30 | 2026-05-03 | SDR-ST-PREL-1000 SS | 17d |
| SDR-ST-PREL-1110 |  | Project Schedule Approvals | 3d | 2026-05-04 | 2026-05-06 | SDR-ST-PREL-1050 | 17d |
|  | 3 | **Engineering** |  | 2026-04-16 | 2026-05-06 |  |  |
|  | 5 | **Shop Drawings Stage** |  | 2026-04-16 | 2026-05-06 |  |  |
|  | 1 | **Submission** |  | 2026-04-16 | 2026-04-24 |  |  |
|  | 4 | **Civil** |  | 2026-04-16 | 2026-04-24 |  |  |
| SDR-ST-ENG-SUB-1080 |  | STRUCTURAL STEEL GENERAL NOTES Submission | 7d | 2026-04-16 | 2026-04-24 | SDR-ST-MILS-1000 SS+8d | 15d |
| SDR-ST-ENG-SUB-1090 |  | REINFORCED CONCRETE GENERAL NOTES - 01 Submission | 7d | 2026-04-16 | 2026-04-24 | SDR-ST-MILS-1000 SS+8d | 15d |
| SDR-ST-ENG-SUB-1100 |  | EXTERNAL CANOPY PLANS Submission | 7d | 2026-04-16 | 2026-04-24 | SDR-ST-ENG-SUB-1080 SS | 15d |
| SDR-ST-ENG-SUB-1110 |  | CANOPY FRAMING Submission | 7d | 2026-04-16 | 2026-04-24 | SDR-ST-ENG-SUB-1080 SS | 15d |
| SDR-ST-ENG-SUB-1120 |  | RC DETAILS Submission | 7d | 2026-04-16 | 2026-04-24 | SDR-ST-ENG-SUB-1080 SS | 15d |
|  | 6 | **Sewerage Network** |  | 2026-04-16 | 2026-04-24 |  |  |
| SDR-ST-ENG-SUB-1000 |  | Sewage Layout Master Plan Submission | 7d | 2026-04-16 | 2026-04-24 | SDR-ST-MILS-1000 SS+8d | 15d |
| SDR-ST-ENG-SUB-1010 |  | Sewage Network Profile Submission | 7d | 2026-04-16 | 2026-04-24 | SDR-ST-ENG-SUB-1000 SS | 15d |
| SDR-ST-ENG-SUB-1020 |  | Sewage Network Standard Details Submission | 7d | 2026-04-16 | 2026-04-24 | SDR-ST-ENG-SUB-1000 SS | 15d |
| SDR-ST-ENG-SUB-1030 |  | Sewage Network Section Submission | 7d | 2026-04-16 | 2026-04-24 | SDR-ST-ENG-SUB-1000 SS | 15d |
|  | 8 | **Portable Water** |  | 2026-04-16 | 2026-04-24 |  |  |
| SDR-ST-ENG-SUB-1040 |  | Potable Water Piping Layout Master Plan Submission | 7d | 2026-04-16 | 2026-04-24 | SDR-ST-MILS-1000 SS+8d | 15d |
| SDR-ST-ENG-SUB-1050 |  | Potable Water Piping Layout Submission | 7d | 2026-04-16 | 2026-04-24 | SDR-ST-ENG-SUB-1040 SS | 15d |

| ID | WBS | Task | Duration | Start | Finish | Predecessors | Total float |
| --- | --- | --- | --- | --- | --- | --- | --- |
| SDR-ST-ENG-SUB-1060 |  | Potable Water Standard Details Submission | 7d | 2026-04-16 | 2026-04-24 | SDR-ST-ENG-SUB-1040 SS | 15d |
| SDR-ST-ENG-SUB-1070 |  | Potable Water Section Submission | 7d | 2026-04-16 | 2026-04-24 | SDR-ST-ENG-SUB-1040 SS | 15d |
|  | 9 | **Electrical** |  | 2026-04-16 | 2026-04-24 |  |  |
| SDR-ST-ENG-SUB-1130 |  | Medium Voltage Network Submission | 7d | 2026-04-16 | 2026-04-24 | SDR-ST-MILS-1000 SS+8d | 15d |
| SDR-ST-ENG-SUB-1140 |  | Standard Details Medium Voltage Submission | 7d | 2026-04-16 | 2026-04-24 | SDR-ST-ENG-SUB-1130 SS | 15d |
| SDR-ST-ENG-SUB-1150 |  | Low Voltage Network Submission | 7d | 2026-04-16 | 2026-04-24 | SDR-ST-ENG-SUB-1130 SS | 15d |
| SDR-ST-ENG-SUB-1160 |  | Standard Details_Low Voltage Submission | 7d | 2026-04-16 | 2026-04-24 | SDR-ST-ENG-SUB-1130 SS | 15d |
| SDR-ST-ENG-SUB-1170 |  | Street Lighting Network Submission | 7d | 2026-04-16 | 2026-04-24 | SDR-ST-ENG-SUB-1130 SS | 15d |
| SDR-ST-ENG-SUB-1180 |  | Standard Details_Street Lighting Submission | 7d | 2026-04-16 | 2026-04-24 | SDR-ST-ENG-SUB-1130 SS | 15d |
| SDR-ST-ENG-SUB-1190 |  | Telecommunication Network Submission | 7d | 2026-04-16 | 2026-04-24 | SDR-ST-ENG-SUB-1130 SS | 15d |
| SDR-ST-ENG-SUB-1200 |  | Telecommunication Standard Details Submission | 7d | 2026-04-16 | 2026-04-24 | SDR-ST-ENG-SUB-1130 SS | 15d |
| SDR-ST-ENG-SUB-1210 |  | Canopy:Ground Floor Lighting Plan Submission | 7d | 2026-04-16 | 2026-04-24 | SDR-ST-ENG-SUB-1130 SS | 15d |
| SDR-ST-ENG-SUB-1220 |  | Canopy:Ground Floor CCTV Plan Submission | 7d | 2026-04-16 | 2026-04-24 | SDR-ST-ENG-SUB-1130 SS | 15d |
| SDR-ST-ENG-SUB-1230 |  | Canopy:Ground Floor Voice Evacuation Plan Submission | 7d | 2026-04-16 | 2026-04-24 | SDR-ST-ENG-SUB-1130 SS | 15d |
|  | 4 | **Approvals** |  | 2026-04-25 | 2026-05-06 |  |  |
|  | 4 | **Civil** |  | 2026-04-25 | 2026-05-06 |  |  |
| SDR-ST-ENG-AP-1080 |  | STRUCTURAL STEEL GENERAL NOTES Approval | 11d | 2026-04-25 | 2026-05-06 | SDR-ST-ENG-SUB-1080 | 18d |
| SDR-ST-ENG-AP-1090 |  | REINFORCED CONCRETE GENERAL NOTES - 01 Approval | 11d | 2026-04-25 | 2026-05-06 | SDR-ST-ENG-SUB-1090 | 18d |
| SDR-ST-ENG-AP-1100 |  | EXTERNAL CANOPY PLANS Approval | 11d | 2026-04-25 | 2026-05-06 | SDR-ST-ENG-SUB-1100 | 18d |
| SDR-ST-ENG-AP-1110 |  | CANOPY FRAMING Approval | 11d | 2026-04-25 | 2026-05-06 | SDR-ST-ENG-SUB-1110 | 18d |
| SDR-ST-ENG-AP-1120 |  | RC DETAILS Approval | 11d | 2026-04-25 | 2026-05-06 | SDR-ST-ENG-SUB-1120 | 18d |
|  | 6 | **Sewerage Network** |  | 2026-04-25 | 2026-05-06 |  |  |
| SDR-ST-ENG-AP-1000 |  | Sewage Layout Master Plan Approval | 11d | 2026-04-25 | 2026-05-06 | SDR-ST-ENG-SUB-1000 | 18d |
| SDR-ST-ENG-AP-1010 |  | Sewage Network Profile Approval | 11d | 2026-04-25 | 2026-05-06 | SDR-ST-ENG-SUB-1010 | 18d |
| SDR-ST-ENG-AP-1020 |  | Sewage Network Standard Details Approval | 11d | 2026-04-25 | 2026-05-06 | SDR-ST-ENG-SUB-1020 | 18d |
| SDR-ST-ENG-AP-1030 |  | Sewage Network Section Approval | 11d | 2026-04-25 | 2026-05-06 | SDR-ST-ENG-SUB-1030 | 18d |
|  | 8 | **Portable Water** |  | 2026-04-25 | 2026-05-06 |  |  |
| SDR-ST-ENG-AP-1040 |  | Potable Water Piping Layout Master Plan Approval | 11d | 2026-04-25 | 2026-05-06 | SDR-ST-ENG-SUB-1040 | 18d |
| SDR-ST-ENG-AP-1050 |  | Potable Water Piping Layout Approval | 11d | 2026-04-25 | 2026-05-06 | SDR-ST-ENG-SUB-1050 | 18d |
| SDR-ST-ENG-AP-1060 |  | Potable Water Standard Details Approval | 11d | 2026-04-25 | 2026-05-06 | SDR-ST-ENG-SUB-1060 | 18d |
| SDR-ST-ENG-AP-1070 |  | Potable Water Section Approval | 11d | 2026-04-25 | 2026-05-06 | SDR-ST-ENG-SUB-1070 | 18d |
|  | 9 | **Electrical** |  | 2026-04-25 | 2026-05-06 |  |  |
| SDR-ST-ENG-AP-1130 |  | Medium Voltage Network Approval | 11d | 2026-04-25 | 2026-05-06 | SDR-ST-ENG-SUB-1130 | 18d |
| SDR-ST-ENG-AP-1140 |  | Standard Details Medium Voltage Approval | 11d | 2026-04-25 | 2026-05-06 | SDR-ST-ENG-SUB-1140 | 18d |
| SDR-ST-ENG-AP-1150 |  | Low Voltage Network Approval | 11d | 2026-04-25 | 2026-05-06 | SDR-ST-ENG-SUB-1150 | 18d |
| SDR-ST-ENG-AP-1160 |  | Standard Details_Low Voltage Approval | 11d | 2026-04-25 | 2026-05-06 | SDR-ST-ENG-SUB-1160 | 18d |
| SDR-ST-ENG-AP-1170 |  | Street Lighting Network Approval | 11d | 2026-04-25 | 2026-05-06 | SDR-ST-ENG-SUB-1170 | 18d |
| SDR-ST-ENG-AP-1180 |  | Standard Details_Street Lighting Approval | 11d | 2026-04-25 | 2026-05-06 | SDR-ST-ENG-SUB-1180 | 18d |
| SDR-ST-ENG-AP-1190 |  | Telecommunication Network Approval | 11d | 2026-04-25 | 2026-05-06 | SDR-ST-ENG-SUB-1190 | 18d |
| SDR-ST-ENG-AP-1200 |  | Telecommunication Standard Details Approval | 11d | 2026-04-25 | 2026-05-06 | SDR-ST-ENG-SUB-1200 | 18d |
| SDR-ST-ENG-AP-1210 |  | Canopy:Ground Floor Lighting Plan Approval | 11d | 2026-04-25 | 2026-05-06 | SDR-ST-ENG-SUB-1210 | 18d |
| SDR-ST-ENG-AP-1220 |  | Canopy:Ground Floor CCTV Plan Approval | 11d | 2026-04-25 | 2026-05-06 | SDR-ST-ENG-SUB-1220 | 18d |
| SDR-ST-ENG-AP-1230 |  | Canopy:Ground Floor Voice Evacuation Plan Approval | 11d | 2026-04-25 | 2026-05-06 | SDR-ST-ENG-SUB-1230 | 18d |
|  | 6 | **Materials** |  | 2026-04-16 | 2026-05-06 |  |  |
|  | 5 | **Materials Submission** |  | 2026-04-16 | 2026-04-24 |  |  |
|  | 2 | **Short Lead Items** |  | 2026-04-16 | 2026-04-24 |  |  |
|  | 2 | **Civil** |  | 2026-04-16 | 2026-04-24 |  |  |
| SDR-ST-PRO-S-1010 |  | Waterproofing (Thermal & moisture Protection) | 7d | 2026-04-16 | 2026-04-24 | SDR-ST-PRO-S-1270 SS, SDR-ST-MILS-1000 SS | 0d |
| SDR-ST-PRO-S-1030 |  | Interlock | 7d | 2026-04-16 | 2026-04-24 | SDR-ST-MILS-1000 SS+8d, SDR-ST-MILS-1000 | 0d |
| SDR-ST-PRO-S-1060 |  | Kerbstone | 7d | 2026-04-16 | 2026-04-24 | SDR-ST-PRO-S-1030 SS, SDR-ST-MILS-1000 | 13d |
| SDR-ST-PRO-S-1260 |  | Steel Bars | 7d | 2026-04-16 | 2026-04-24 | SDR-ST-PRO-S-1030 SS, SDR-ST-MILS-1000 | 0d |
| SDR-ST-PRO-S-1270 |  | Asphalt | 7d | 2026-04-16 | 2026-04-24 | SDR-ST-PRO-S-1030 SS, SDR-ST-MILS-1000 | 0d |
|  | 4 | **Electrical** |  | 2026-04-16 | 2026-04-24 |  |  |
| SDR-ST-PRO-S-1140 |  | LOW VOLTAGE CABLES | 7d | 2026-04-16 | 2026-04-24 | SDR-ST-MILS-1000 SS+8d, SDR-ST-PRO-S-1010 SS | 13d |
| SDR-ST-PRO-S-1150 |  | LOW VOLTAGE DISTRIBUTION Panel | 7d | 2026-04-16 | 2026-04-24 | SDR-ST-PRO-S-1140 SS, SDR-ST-MILS-1000 | 13d |
| SDR-ST-PRO-S-1160 |  | STREET LIGHTING FEEDER Panel | 7d | 2026-04-16 | 2026-04-24 | SDR-ST-PRO-S-1140 SS, SDR-ST-PRO-S-1150 SS, SDR-ST-MILS-1000 | 13d |
| SDR-ST-PRO-S-1170 |  | STREET LIGHTING CABLES | 7d | 2026-04-16 | 2026-04-24 | SDR-ST-PRO-S-1140 SS, SDR-ST-PRO-S-1160 SS, SDR-ST-MILS-1000 | 13d |
| SDR-ST-PRO-S-1200 |  | ROAD CROSSING DUCTS Ø110mm | 7d | 2026-04-16 | 2026-04-24 | SDR-ST-PRO-S-1140 SS, SDR-ST-PRO-S-1250 SS, SDR-ST-MILS-1000 | 13d |
| SDR-ST-PRO-S-1210 |  | Drawpits | 7d | 2026-04-16 | 2026-04-24 | SDR-ST-PRO-S-1140 SS, SDR-ST-PRO-S-1150 SS, SDR-ST-MILS-1000 | 13d |
| SDR-ST-PRO-S-1230 |  | CCTV :5MP IP PoE Bullet Camera | 7d | 2026-04-16 | 2026-04-24 | SDR-ST-PRO-S-1140 SS, SDR-ST-PRO-S-1170 SS, SDR-ST-MILS-1000 | 13d |
| SDR-ST-PRO-S-1240 |  | CCTV :Pole mounted Filed Equipment cabinet (FE | 7d | 2026-04-16 | 2026-04-24 | SDR-ST-PRO-S-1140 SS, SDR-ST-PRO-S-1250 SS, SDR-ST-MILS-1000 | 13d |
| SDR-ST-PRO-S-1250 |  | VOICE EVACUATION SYSTEM | 7d | 2026-04-16 | 2026-04-24 | SDR-ST-PRO-S-1140 SS, SDR-ST-PRO-S-1230 SS, SDR-ST-MILS-1000 | 13d |
|  | 1 | **Mechanical** |  | 2026-04-16 | 2026-04-24 |  |  |
| SDR-ST-PRO-S-1040 |  | HDPE PIPES & FITTINGS | 7d | 2026-04-16 | 2026-04-24 | SDR-ST-PRO-S-1030 SS, SDR-ST-MILS-1000 | 13d |
| SDR-ST-PRO-S-1050 |  | CONCRETE PIPES AND FITTINGS | 7d | 2026-04-16 | 2026-04-24 | SDR-ST-PRO-S-1030 SS, SDR-ST-MILS-1000 | 13d |
| SDR-ST-PRO-S-1070 |  | GI GOOSENECK & VENT | 7d | 2026-04-16 | 2026-04-24 | SDR-ST-PRO-S-1030 SS, SDR-ST-MILS-1000 | 13d |
| SDR-ST-PRO-S-1080 |  | WARNING TAPE | 7d | 2026-04-16 | 2026-04-24 | SDR-ST-PRO-S-1030 SS, SDR-ST-MILS-1000 | 13d |
| SDR-ST-PRO-S-1090 |  | MANHOLE, CATCH BASIN & VALVE BOX COVER | 7d | 2026-04-16 | 2026-04-24 | SDR-ST-PRO-S-1030 SS, SDR-ST-MILS-1000 | 13d |
|  | 1 | **Long Lead Items** |  | 2026-04-16 | 2026-04-24 |  |  |
|  | 1 | **Civil** |  | 2026-04-16 | 2026-04-24 |  |  |

| ID | WBS | Task | Duration | Start | Finish | Predecessors | Total float |
| --- | --- | --- | --- | --- | --- | --- | --- |
| SDR-ST-PRO-S-1000 |  | Metal railing for platform | 7d | 2026-04-16 | 2026-04-24 | SDR-ST-MILS-1000 SS+8d, SDR-ST-MILS-1000 | 13d |
| SDR-ST-PRO-S-1020 |  | Canopy | 7d | 2026-04-16 | 2026-04-24 | SDR-ST-MILS-1000 SS+8d, SDR-ST-MILS-1000 | 13d |
|  | 3 | **Electrical** |  | 2026-04-16 | 2026-04-24 |  |  |
| SDR-ST-PRO-S-1110 |  | MEDIUM VOLTAGE CABLES DUCT BANKS | 7d | 2026-04-16 | 2026-04-24 | SDR-ST-MILS-1000 SS+8d, SDR-ST-MILS-1000 | 13d |
| SDR-ST-PRO-S-1120 |  | MEDIUM VOLTAGE CABLES | 7d | 2026-04-16 | 2026-04-24 | SDR-ST-PRO-S-1110 SS, SDR-ST-MILS-1000 | 13d |
| SDR-ST-PRO-S-1130 |  | SUB-STATION | 7d | 2026-04-16 | 2026-04-24 | SDR-ST-PRO-S-1110 SS, SDR-ST-MILS-1000 | 13d |
| SDR-ST-PRO-S-1180 |  | LIGHTING POLES | 7d | 2026-04-16 | 2026-04-24 | SDR-ST-PRO-S-1110 SS, SDR-ST-MILS-1000 | 13d |
| SDR-ST-PRO-S-1190 |  | STREET LIGHTING LUMINAIRE | 7d | 2026-04-16 | 2026-04-24 | SDR-ST-PRO-S-1110 SS, SDR-ST-MILS-1000 | 13d |
| SDR-ST-PRO-S-1220 |  | Outdoor Lighting Fixtures | 7d | 2026-04-16 | 2026-04-24 | SDR-ST-PRO-S-1110 SS, SDR-ST-MILS-1000 | 13d |
|  | 2 | **Mechanical** |  | 2026-04-16 | 2026-04-24 |  |  |
| SDR-ST-PRO-S-1100 |  | WASHOUT & AIR VALVE, GATE VALVE, BUTTERFLY VALVE | 7d | 2026-04-16 | 2026-04-24 | SDR-ST-MILS-1000 SS+8d, SDR-ST-PRO-S-1220 SS, SDR-ST-MILS-1000 | 15d |
|  | 6 | **Materials Approval** |  | 2026-04-22 | 2026-05-06 |  |  |
|  | 2 | **Short Lead Items** |  | 2026-04-22 | 2026-05-06 |  |  |
|  | 1 | **Civil** |  | 2026-04-25 | 2026-05-06 |  |  |
| SDR-ST-PRO-A-1010 |  | Waterproofing (Thermal & moisture Protection) | 11d | 2026-04-25 | 2026-05-06 | SDR-ST-PRO-S-1010 | 0d |
| SDR-ST-PRO-A-1030 |  | Interlock | 11d | 2026-04-25 | 2026-05-06 | SDR-ST-PRO-S-1030 | 17d |
| SDR-ST-PRO-A-1060 |  | Kerbstone | 11d | 2026-04-25 | 2026-05-06 | SDR-ST-PRO-S-1060 | 17d |
| SDR-ST-PRO-A-1260 |  | Steel Bars | 11d | 2026-04-25 | 2026-05-06 | SDR-ST-PRO-S-1260 | 0d |
| SDR-ST-PRO-A-1270 |  | Asphalt | 11d | 2026-04-25 | 2026-05-06 | SDR-ST-PRO-S-1270 | 17d |
|  | 3 | **Electrical** |  | 2026-04-22 | 2026-05-06 |  |  |
| SDR-ST-PRO-A-1130 |  | STREET LIGHTING FEEDER Panel | 11d | 2026-04-22 | 2026-05-04 | SDR-ST-PRO-S-1160 SS+4d | 19d |
| SDR-ST-PRO-A-1110 |  | LOW VOLTAGE CABLES | 11d | 2026-04-25 | 2026-05-06 | SDR-ST-PRO-S-1140 | 17d |
| SDR-ST-PRO-A-1120 |  | LOW VOLTAGE DISTRIBUTION Panel | 11d | 2026-04-25 | 2026-05-06 | SDR-ST-PRO-S-1150 | 17d |
| SDR-ST-PRO-A-1140 |  | STREET LIGHTING CABLES | 11d | 2026-04-25 | 2026-05-06 | SDR-ST-PRO-S-1170 | 17d |
| SDR-ST-PRO-A-1150 |  | ROAD CROSSING DUCTS Ø110mm | 11d | 2026-04-25 | 2026-05-06 | SDR-ST-PRO-S-1200 | 17d |
| SDR-ST-PRO-A-1160 |  | Drawpits | 11d | 2026-04-25 | 2026-05-06 | SDR-ST-PRO-S-1210 | 17d |
| SDR-ST-PRO-A-1170 |  | CCTV :5MP IP PoE Bullet Camera | 11d | 2026-04-25 | 2026-05-06 | SDR-ST-PRO-S-1230 | 17d |
| SDR-ST-PRO-A-1180 |  | CCTV :Pole mounted Filed Equipment cabinet (FE | 11d | 2026-04-25 | 2026-05-06 | SDR-ST-PRO-S-1240 | 17d |
| SDR-ST-PRO-A-1190 |  | VOICE EVACUATION SYSTEM | 11d | 2026-04-25 | 2026-05-06 | SDR-ST-PRO-S-1250 | 17d |
|  | 2 | **Mechanical** |  | 2026-04-25 | 2026-05-06 |  |  |
| SDR-ST-PRO-A-1040 |  | HDPE PIPES & FITTINGS | 11d | 2026-04-25 | 2026-05-06 | SDR-ST-PRO-S-1040 | 17d |
| SDR-ST-PRO-A-1050 |  | CONCRETE PIPES AND FITTINGS | 11d | 2026-04-25 | 2026-05-06 | SDR-ST-PRO-S-1050 | 17d |
| SDR-ST-PRO-A-1070 |  | GI GOOSENECK & VENT | 11d | 2026-04-25 | 2026-05-06 | SDR-ST-PRO-S-1070 | 17d |
| SDR-ST-PRO-A-1080 |  | WARNING TAPE | 11d | 2026-04-25 | 2026-05-06 | SDR-ST-PRO-S-1080 | 17d |
| SDR-ST-PRO-A-1090 |  | MANHOLE, CATCH BASIN & VALVE BOX COVER | 11d | 2026-04-25 | 2026-05-06 | SDR-ST-PRO-S-1090 | 17d |
|  | 1 | **Long Lead Items** |  | 2026-04-25 | 2026-05-06 |  |  |
|  | 1 | **Civil** |  | 2026-04-25 | 2026-05-06 |  |  |
| SDR-ST-PRO-A-1000 |  | Metal railing for platform | 11d | 2026-04-25 | 2026-05-06 | SDR-ST-PRO-S-1000 | 17d |
| SDR-ST-PRO-A-1020 |  | Canopy | 11d | 2026-04-25 | 2026-05-06 | SDR-ST-PRO-S-1020 | 17d |
|  | 3 | **Electrical** |  | 2026-04-25 | 2026-05-06 |  |  |
| SDR-ST-PRO-A-1200 |  | MEDIUM VOLTAGE CABLES DUCT BANKS | 11d | 2026-04-25 | 2026-05-06 | SDR-ST-PRO-S-1110 | 17d |
| SDR-ST-PRO-A-1210 |  | MEDIUM VOLTAGE CABLES | 11d | 2026-04-25 | 2026-05-06 | SDR-ST-PRO-S-1120 | 17d |
| SDR-ST-PRO-A-1220 |  | SUB-STATION | 11d | 2026-04-25 | 2026-05-06 | SDR-ST-PRO-S-1130 | 17d |
| SDR-ST-PRO-A-1230 |  | LIGHTING POLES | 11d | 2026-04-25 | 2026-05-06 | SDR-ST-PRO-S-1180 | 17d |
| SDR-ST-PRO-A-1240 |  | STREET LIGHTING LUMINAIRE | 11d | 2026-04-25 | 2026-05-06 | SDR-ST-PRO-S-1190 | 17d |
| SDR-ST-PRO-A-1250 |  | Outdoor Lighting Fixtures | 11d | 2026-04-25 | 2026-05-06 | SDR-ST-PRO-S-1220 | 17d |
|  | 2 | **Mechanical** |  | 2026-04-25 | 2026-05-06 |  |  |
| SDR-ST-PRO-A-1100 |  | WASHOUT & AIR VALVE, GATE VALVE, BUTTERFLY VALVE | 11d | 2026-04-25 | 2026-05-06 | SDR-ST-PRO-S-1100 | 18d |
|  | 4 | **Procurement** |  | 2026-06-01 | 2027-04-15 |  |  |
|  | 5 | **Purchase Order** |  | 2026-06-01 | 2026-12-10 |  |  |
|  | 4 | **Short Lead Items** |  | 2026-06-01 | 2026-11-11 |  |  |
|  | 1 | **Civil** |  | 2026-06-01 | 2026-11-09 |  |  |
| SDR-ST-PRO-PO-1260 |  | Steel Bars | 10d | 2026-06-01 | 2026-06-12 | SDR-ST-PRO-A-1260 FS+17d, SDR-ST-PRO-A-1030, SDR-ST-PRO-A-1060, SDR-ST-PRO-A-1260 FF, SDR-ST-PRO-A-1270, SDR-ST-PRO-A-1130, SDR-ST-PRO-A-1110, SDR-ST-PRO-A-1120, SDR-ST-PRO-A-1140, SDR-ST-PRO-A-1150, SDR-ST-PRO-A-1160, SDR-ST-PRO-A-1170, SDR-ST-PRO-A-1180, SDR-ST-PRO-A-1190, SDR-ST-PRO-A-1040, SDR-ST-PRO-A-1050, SDR-ST-PRO-A-1070, SDR-ST-PRO-A-1080, SDR-ST-PRO-A-1090, SDR-ST-PRO-A-1000, SDR-ST-PRO-A-1020, SDR-ST-PRO-A-1200, SDR-ST-PRO-A-1210, SDR-ST-PRO-A-1220, SDR-ST-PRO-A-1230, SDR-ST-PRO-A-1240, SDR-ST-PRO-A-1250, SDR-ST-PREL-1110, SDR-ST-PRO-S-1160 | 0d |
| SDR-ST-PRO-PO-1030 |  | Waterproofing (Thermal & moisture Protection) | 20d | 2026-08-10 | 2026-09-04 | SDR-ST-PRO-A-1010 FS+77d | 0d |
| SDR-ST-PRO-PO-1040 |  | Interlock | 12d | 2026-09-02 | 2026-09-17 | SDR-ST-PRO-A-1030 FS+60d, SDR-ST-PRO-PO-1030 SS+17d | 0.1d |
| SDR-ST-PRO-PO-1060 |  | Kerbstone | 10d | 2026-09-03 | 2026-09-16 | SDR-ST-PRO-A-1060 FS+61d, SDR-ST-PRO-PO-1040 SS+1d | 1d |
| SDR-ST-PRO-PO-1270 |  | Asphalt | 10d | 2026-10-27 | 2026-11-09 | SDR-ST-PRO-A-1270 FS+100d, SDR-ST-PRO-PO-1060 FS+27d | 9.3d |
|  | 3 | **Electrical** |  | 2026-08-18 | 2026-11-11 |  |  |
| SDR-ST-PRO-PO-1100 |  | LOW VOLTAGE CABLES | 20d | 2026-08-18 | 2026-09-14 | SDR-ST-PRO-A-1110 FS+62d, SDR-ST-PRO-PO-1030 SS+6d | 0d |
| SDR-ST-PRO-PO-1020 |  | Drawpits | 10d | 2026-08-28 | 2026-09-10 | SDR-ST-PRO-A-1160 FS+55d, SDR-ST-PRO-PO-1100 SS+8d | 0d |
| SDR-ST-PRO-PO-1010 |  | ROAD CROSSING DUCTS Ø110mm | 10d | 2026-08-31 | 2026-09-11 | SDR-ST-PRO-A-1150 FS+55d, SDR-ST-PRO-PO-1260 FS+55d, SDR-ST-PRO-PO-1070 SS | 0d |
| SDR-ST-PRO-PO-1070 |  | STREET LIGHTING FEEDER Panel | 10d | 2026-08-31 | 2026-09-11 | SDR-ST-PRO-A-1130 FS+60d, SDR-ST-PRO-PO-1020 SS+1d | 0d |
| SDR-ST-PRO-PO-1130 |  | LOW VOLTAGE DISTRIBUTION Panel | 10d | 2026-09-01 | 2026-09-14 | SDR-ST-PRO-A-1120 FS+68d, SDR-ST-PRO-PO-1010 SS+1d | 0d |
| SDR-ST-PRO-PO-1050 |  | CCTV :Pole mounted Filed Equipment cabinet | 10d | 2026-09-07 | 2026-09-18 | SDR-ST-PRO-A-1180 FS+60d, SDR-ST-PRO-PO-1130 SS+4d | 0d |
| SDR-ST-PRO-PO-1110 |  | STREET LIGHTING CABLES | 11d | 2026-09-08 | 2026-09-22 | SDR-ST-PRO-A-1140 FS+62d, SDR-ST-PRO-PO-1050 SS+1d | 0d |
| SDR-ST-PRO-PO-1220 |  | VOICE EVACUATION SYSTEM | 10d | 2026-10-26 | 2026-11-06 | SDR-ST-PRO-A-1190 FS+100d, SDR-ST-PRO-PO-1110 FS+22d | 0d |
| SDR-ST-PRO-PO-1230 |  | CCTV :5MP IP PoE Bullet Camera | 10d | 2026-10-29 | 2026-11-11 | SDR-ST-PRO-A-1170 FS+105d, SDR-ST-PRO-PO-1220 SS+3d | 1.8d |
|  | 2 | **Mechanical** |  | 2026-08-24 | 2026-09-28 |  |  |
| SDR-ST-PRO-PO-1000 |  | WARNING TAPE | 10d | 2026-08-24 | 2026-09-04 | SDR-ST-PRO-A-1080 FS+50d, SDR-ST-ENG-AP-1230, SDR-ST-ENG-AP-1080, SDR-ST-ENG-AP-1090, SDR-ST-ENG-AP-1100, SDR-ST-ENG-AP-1110, SDR-ST-ENG-AP-1120, SDR-ST-ENG-AP-1000, SDR-ST-ENG-AP-1010, SDR-ST-ENG-AP-1020, SDR-ST-ENG-AP-1030, SDR-ST-ENG-AP-1040, SDR-ST-ENG-AP-1050, SDR-ST-ENG-AP-1060, SDR-ST-ENG-AP-1070, SDR-ST-ENG-AP-1130, SDR-ST-ENG-AP-1140, SDR-ST-ENG-AP-1150, SDR-ST-ENG-AP-1160, SDR-ST-ENG-AP-1170, SDR-ST-ENG-AP-1180, SDR-ST-ENG-AP-1190, SDR-ST-ENG-AP-1200, SDR-ST-ENG-AP-1210, SDR-ST-ENG-AP-1220, SDR-ST-MILS-1050, SDR-ST-MILS-1040, SDR-ST-MILS-1030, SDR-ST-MILS-1020, SDR-ST-PREL-1100, SDR-ST-PREL-1090, SDR-ST-PREL-1080, SDR-ST-PREL-1060, SDR-ST-PREL-1070, SDR-ST-PRO-PO-1100 SS+4d | 4.1d |
| SDR-ST-PRO-PO-1080 |  | HDPE PIPES & FITTINGS | 10d | 2026-09-07 | 2026-09-18 | SDR-ST-PRO-A-1040 FS+62d, SDR-ST-PRO-PO-1030 | 0d |

| ID | WBS | Task | Duration | Start | Finish | Predecessors | Total float |
| --- | --- | --- | --- | --- | --- | --- | --- |
| SDR-ST-PRO-PO-1090 |  | GI GOOSENECK & VENT | 10d | 2026-09-07 | 2026-09-18 | SDR-ST-PRO-A-1070 FS+62d, SDR-ST-PRO-PO-1030 | 1.1d |
| SDR-ST-PRO-PO-1120 |  | CONCRETE PIPES AND FITTINGS | 10d | 2026-09-07 | 2026-09-18 | SDR-ST-PRO-A-1050 FS+63d, SDR-ST-PRO-PO-1030 | 0d |
| SDR-ST-PRO-PO-1140 |  | MANHOLE, CATCH BASIN & VALVE BOX COVER | 10d | 2026-09-14 | 2026-09-28 | SDR-ST-PRO-A-1090 FS+70d, SDR-ST-PRO-PO-1030 FS+5d | 0.2d |
|  | 5 | **Long Lead Items** |  | 2026-08-25 | 2026-12-10 |  |  |
|  | 1 | **Civil** |  | 2026-08-25 | 2026-12-08 |  |  |
| SDR-ST-PRO-PO-1150 |  | Metal railing for platform | 26d | 2026-08-25 | 2026-09-30 | SDR-ST-PRO-A-1000 FS+80d, SDR-ST-PRO-PO-1000 SS+1d | 6.9d |
| SDR-ST-PRO-PO-1240 |  | Canopy | 14d | 2026-11-19 | 2026-12-08 | SDR-ST-PRO-A-1020 FS+120d, SDR-ST-PRO-PO-1230 FS+5d | 1.8d |
|  | 3 | **Electrical** |  | 2026-10-12 | 2026-12-10 |  |  |
| SDR-ST-PRO-PO-1160 |  | MEDIUM VOLTAGE CABLES DUCT BANKS | 14d | 2026-10-12 | 2026-10-29 | SDR-ST-PRO-A-1200 FS+90d, SDR-ST-PRO-PO-1140 FS+9d | 0.2d |
| SDR-ST-PRO-PO-1170 |  | MEDIUM VOLTAGE CABLES | 14.8d | 2026-10-12 | 2026-10-30 | SDR-ST-PRO-A-1210 FS+90d, SDR-ST-PRO-PO-1160 SS | 0.2d |
| SDR-ST-PRO-PO-1180 |  | Outdoor Lighting Fixtures | 14d | 2026-10-19 | 2026-11-05 | SDR-ST-PRO-A-1250 FS+95d, SDR-ST-PRO-PO-1140 FS+14d | 1.2d |
| SDR-ST-PRO-PO-1200 |  | LIGHTING POLES | 14d | 2026-10-19 | 2026-11-05 | SDR-ST-PRO-A-1230 FS+96d, SDR-ST-PRO-PO-1140 FS+14d, SDR-ST-PRO-MS-1000 | 6d |
| SDR-ST-PRO-PO-1210 |  | STREET LIGHTING LUMINAIRE | 14d | 2026-11-10 | 2026-11-27 | SDR-ST-PRO-A-1240 FS+97d, SDR-ST-PRO-PO-1220 FS+1d | 0d |
| SDR-ST-PRO-PO-1250 |  | SUB-STATION | 14d | 2026-11-23 | 2026-12-10 | SDR-ST-PRO-A-1220 FS+125d, SDR-ST-PRO-PO-1230 FS+7d | 6d |
|  | 2 | **Mechanical** |  | 2026-10-26 | 2026-11-12 |  |  |
| SDR-ST-PRO-PO-1190 |  | WASHOUT & AIR VALVE, GATE VALVE, BUTTERFLY VALVE | 14d | 2026-10-26 | 2026-11-12 | SDR-ST-PRO-A-1100 FS+96d, SDR-ST-PRO-PO-1180 SS+5d | 1.2d |
|  | 6 | **Delivery to Site** |  | 2026-07-22 | 2027-04-11 |  |  |
|  | 2 | **Short Lead Items Delivery** |  | 2026-07-22 | 2027-02-09 |  |  |
|  | 1 | **Civil** |  | 2026-07-22 | 2027-02-09 |  |  |
| SDR-ST-PRO-DL-1260 |  | Steel Bars | 60d | 2026-07-22 | 2026-09-20 | SDR-ST-PRO-PO-1260 FS+28d | 7.8d |
| SDR-ST-PRO-DL-1030 |  | Waterproofing (Thermal & moisture Protection) | 60d | 2026-09-04 | 2026-11-04 | SDR-ST-PRO-PO-1030 | 15.4d |
| SDR-ST-PRO-DL-1060 |  | Kerbstone | 60d | 2026-09-17 | 2026-11-17 | SDR-ST-PRO-PO-1060 FS+1d | 2.4d |
| SDR-ST-PRO-DL-1040 |  | Interlock | 52d | 2026-09-28 | 2026-11-19 | SDR-ST-PRO-PO-1040 FS+6d | 0.4d |
| SDR-ST-PRO-DL-1270 |  | Asphalt | 90d | 2026-11-10 | 2027-02-09 | SDR-ST-PRO-PO-1270 FS+1d | 13.6d |
|  | 3 | **Electrical** |  | 2026-09-10 | 2027-01-10 |  |  |
| SDR-ST-PRO-DL-1020 |  | Drawpits | 30d | 2026-09-10 | 2026-10-11 | SDR-ST-PRO-PO-1020 | 3.9d |
| SDR-ST-PRO-DL-1010 |  | ROAD CROSSING DUCTS Ø110mm | 29d | 2026-09-11 | 2026-10-11 | SDR-ST-PRO-PO-1010 | 11.3d |
| SDR-ST-PRO-DL-1100 |  | LOW VOLTAGE CABLES | 60d | 2026-09-14 | 2026-11-14 | SDR-ST-PRO-PO-1100 | 5.4d |
| SDR-ST-PRO-DL-1130 |  | LOW VOLTAGE DISTRIBUTION Panel | 40d | 2026-09-17 | 2026-10-28 | SDR-ST-PRO-PO-1130 FS+3d | 8.4d |
| SDR-ST-PRO-DL-1050 |  | CCTV :Pole mounted Filed Equipment cabinet | 60d | 2026-09-18 | 2026-11-18 | SDR-ST-PRO-PO-1050 | 1.4d |
| SDR-ST-PRO-DL-1070 |  | STREET LIGHTING FEEDER Panel | 40d | 2026-09-21 | 2026-11-01 | SDR-ST-PRO-PO-1070 FS+6d | 4.4d |
| SDR-ST-PRO-DL-1110 |  | STREET LIGHTING CABLES | 35d | 2026-09-28 | 2026-11-02 | SDR-ST-PRO-PO-1110 FS+3d | 3.4d |
| SDR-ST-PRO-DL-1200 |  | VOICE EVACUATION SYSTEM | 60d | 2026-11-06 | 2027-01-05 | SDR-ST-PRO-PO-1220 | 8.4d |
| SDR-ST-PRO-DL-1230 |  | CCTV :5MP IP PoE Bullet Camera | 60d | 2026-11-11 | 2027-01-10 | SDR-ST-PRO-PO-1230 | 3.4d |
|  | 2 | **Mechanical** |  | 2026-09-04 | 2026-12-07 |  |  |
| SDR-ST-PRO-DL-1000 |  | WARNING TAPE | 55d | 2026-09-04 | 2026-10-30 | SDR-ST-PRO-PO-1000 | 6.4d |
| SDR-ST-PRO-DL-1080 |  | HDPE PIPES & FITTINGS | 60d | 2026-09-18 | 2026-11-18 | SDR-ST-PRO-PO-1080 | 1.4d |
| SDR-ST-PRO-DL-1090 |  | GI GOOSENECK & VENT | 58d | 2026-09-18 | 2026-11-16 | SDR-ST-PRO-PO-1090 | 3.4d |
| SDR-ST-PRO-DL-1120 |  | CONCRETE PIPES AND FITTINGS | 79d | 2026-09-18 | 2026-12-07 | SDR-ST-PRO-PO-1120 | 1.4d |
| SDR-ST-PRO-DL-1140 |  | VALVE & BOX COVER | 70d | 2026-09-28 | 2026-12-07 | SDR-ST-PRO-PO-1140 | 1.4d |
|  | 5 | **Long Lead Items Delivery** |  | 2026-10-28 | 2027-04-11 |  |  |
|  | 1 | **Civil** |  | 2026-10-28 | 2027-04-08 |  |  |
| SDR-ST-PRO-DL-1150 |  | Metal railing for platform | 97d | 2026-10-28 | 2027-02-02 | SDR-ST-PRO-PO-1150 FS+20d | 8.9d |
| SDR-ST-PRO-DL-1240 |  | Canopy | 90d | 2026-12-22 | 2027-04-08 | SDR-ST-PRO-PO-1240 FS+10d | 1.8d |
|  | 3 | **Electrical** |  | 2026-10-29 | 2027-04-11 |  |  |
| SDR-ST-PRO-DL-1160 |  | MEDIUM VOLTAGE CABLES DUCT BANKS | 105d | 2026-10-29 | 2027-02-14 | SDR-ST-PRO-PO-1160 | 1.6d |
| SDR-ST-PRO-DL-1170 |  | MEDIUM VOLTAGE CABLES | 105d | 2026-10-30 | 2027-02-15 | SDR-ST-PRO-PO-1170 | 0.8d |
| SDR-ST-PRO-DL-1210 |  | LIGHTING POLES | 105d | 2026-11-05 | 2027-02-27 | SDR-ST-PRO-PO-1200 | 8.9d |
| SDR-ST-PRO-DL-1180 |  | Outdoor Lighting Fixtures | 80d | 2026-12-03 | 2027-03-04 | SDR-ST-PRO-PO-1180 FS+20d | 8.8d |
| SDR-ST-PRO-DL-1250 |  | SUB-STATION | 105d | 2026-12-10 | 2027-04-11 | SDR-ST-PRO-PO-1250 | 8.8d |
| SDR-ST-PRO-DL-1220 |  | STREET LIGHTING LUMINAIRE | 80d | 2026-12-18 | 2027-03-25 | SDR-ST-PRO-PO-1210 FS+15d | 1.5d |
|  | 2 | **Mechanical** |  | 2026-12-08 | 2027-03-25 |  |  |
| SDR-ST-PRO-DL-1190 |  | WASHOUT & AIR VALVE, GATE VALVE, BUTTERFLY VALVE | 90d | 2026-12-08 | 2027-03-25 | SDR-ST-PRO-PO-1190 FS+18d | 1.5d |
|  | 4 | **Materials Staging Time** |  | 2026-09-20 | 2027-04-15 |  |  |
|  | 4 | **Short Lead Items Delivery** |  | 2026-09-20 | 2027-02-16 |  |  |
|  | 1 | **Civil** |  | 2026-09-20 | 2027-02-16 |  |  |
| SDR-ST-PRO-MS-1260 |  | Steel Bars | 4d | 2026-09-20 | 2026-09-25 | SDR-ST-PRO-DL-1260 | 7.8d |
| SDR-ST-PRO-MS-1070 |  | Waterproofing (Thermal & moisture Protection) | 4d | 2026-11-04 | 2026-11-08 | SDR-ST-PRO-DL-1030 | 15.4d |
| SDR-ST-PRO-MS-1100 |  | Kerbstone | 4d | 2026-11-17 | 2026-11-21 | SDR-ST-PRO-DL-1060 | 2.4d |
| SDR-ST-PRO-MS-1080 |  | Interlock | 4d | 2026-11-19 | 2026-11-23 | SDR-ST-PRO-DL-1040 | 0.4d |
| SDR-ST-PRO-MS-1270 |  | Asphalt | 4d | 2027-02-09 | 2027-02-16 | SDR-ST-PRO-DL-1270, SDR-ST-CON-P1-5570 | 13.6d |
|  | 3 | **Electrical** |  | 2026-10-11 | 2027-01-14 |  |  |
| SDR-ST-PRO-MS-1000 |  | ROAD CROSSING DUCTS Ø110mm | 4d | 2026-10-11 | 2026-10-15 | SDR-ST-PRO-DL-1010 | 11.3d |
| SDR-ST-PRO-MS-1010 |  | Drawpits | 4d | 2026-10-11 | 2026-10-15 | SDR-ST-PRO-DL-1020 | 3.9d |
| SDR-ST-PRO-MS-1040 |  | LOW VOLTAGE DISTRIBUTION Panel | 4d | 2026-10-28 | 2026-11-01 | SDR-ST-PRO-DL-1130 | 8.4d |
| SDR-ST-PRO-MS-1020 |  | STREET LIGHTING FEEDER Panel | 4d | 2026-11-01 | 2026-11-05 | SDR-ST-PRO-DL-1070 | 4.4d |
| SDR-ST-PRO-MS-1030 |  | STREET LIGHTING CABLES | 4d | 2026-11-02 | 2026-11-06 | SDR-ST-PRO-DL-1110 | 3.4d |
| SDR-ST-PRO-MS-1120 |  | LOW VOLTAGE CABLES | 4d | 2026-11-14 | 2026-11-18 | SDR-ST-PRO-DL-1100 | 5.4d |
| SDR-ST-PRO-MS-1090 |  | CCTV :Pole mounted Filed Equipment cabinet | 4d | 2026-11-18 | 2026-11-22 | SDR-ST-PRO-DL-1050 | 1.4d |
| SDR-ST-PRO-MS-1150 |  | VOICE EVACUATION SYSTEM | 4d | 2027-01-05 | 2027-01-09 | SDR-ST-PRO-DL-1200 | 8.4d |

| ID | WBS | Task | Duration | Start | Finish | Predecessors | Total float |
| --- | --- | --- | --- | --- | --- | --- | --- |
| SDR-ST-PRO-MS-1160 |  | CCTV :5MP IP PoE Bullet Camera | 4d | 2027-01-10 | 2027-01-14 | SDR-ST-PRO-DL-1230 | 3.4d |
|  | 2 | **Mechanical** |  | 2026-10-30 | 2026-12-11 |  |  |
| SDR-ST-PRO-MS-1050 |  | WARNING TAPE | 4d | 2026-10-30 | 2026-11-03 | SDR-ST-PRO-DL-1000 | 6.4d |
| SDR-ST-PRO-MS-1060 |  | GI GOOSENECK & VENT | 4d | 2026-11-16 | 2026-11-20 | SDR-ST-PRO-DL-1090 | 3.4d |
| SDR-ST-PRO-MS-1110 |  | HDPE PIPES & FITTINGS | 4d | 2026-11-18 | 2026-11-22 | SDR-ST-PRO-DL-1080 | 1.4d |
| SDR-ST-PRO-MS-1130 |  | CONCRETE PIPES AND FITTINGS | 4d | 2026-12-07 | 2026-12-11 | SDR-ST-PRO-DL-1120 | 1.4d |
| SDR-ST-PRO-MS-1140 |  | MANHOLE, CATCH BASIN & VALVE BOX COVER | 4d | 2026-12-07 | 2026-12-11 | SDR-ST-PRO-DL-1140 | 1.4d |
|  | 5 | **Long Lead Items Delivery** |  | 2027-02-02 | 2027-04-15 |  |  |
|  | 1 | **Civil** |  | 2027-04-08 | 2027-04-12 |  |  |
| SDR-ST-PRO-MS-1240 |  | Aluminum Cladding Panels | 4d | 2027-04-08 | 2027-04-12 | SDR-ST-PRO-DL-1240 | 1.8d |
|  | 3 | **Electrical** |  | 2027-02-14 | 2027-04-15 |  |  |
| SDR-ST-PRO-MS-1210 |  | MEDIUM VOLTAGE CABLES DUCT BANKS | 4d | 2027-02-14 | 2027-02-21 | SDR-ST-PRO-DL-1160, SDR-ST-CON-P1-5570 | 1.6d |
| SDR-ST-PRO-MS-1220 |  | MEDIUM VOLTAGE CABLES | 4d | 2027-02-15 | 2027-02-23 | SDR-ST-PRO-DL-1170 | 0.8d |
| SDR-ST-PRO-MS-1230 |  | LIGHTING POLES | 4d | 2027-02-27 | 2027-03-05 | SDR-ST-PRO-DL-1210 | 8.9d |
| SDR-ST-PRO-MS-1170 |  | Outdoor Lighting Fixtures | 4d | 2027-03-18 | 2027-03-22 | SDR-ST-PRO-DL-1180 FS+8d | 8.8d |
| SDR-ST-PRO-MS-1180 |  | STREET LIGHTING LUMINAIRE | 4d | 2027-03-25 | 2027-03-29 | SDR-ST-PRO-DL-1220 | 1.5d |
| SDR-ST-PRO-MS-1250 |  | SUB-STATION | 4d | 2027-04-11 | 2027-04-15 | SDR-ST-PRO-DL-1250 | 8.8d |
|  | 2 | **Mechanical** |  | 2027-02-02 | 2027-03-29 |  |  |
| SDR-ST-PRO-MS-1200 |  | Metal railing for platform | 4d | 2027-02-02 | 2027-02-06 | SDR-ST-PRO-DL-1150 | 8.9d |
| SDR-ST-PRO-MS-1190 |  | WASHOUT & AIR VALVE, GATE VALVE, BUTTERFLY VALVE | 4d | 2027-03-25 | 2027-03-29 | SDR-ST-PRO-DL-1190 | 1.5d |
|  | 5 | **Construction** |  | 2026-05-07 | 2027-07-21 |  |  |
|  | 1 | **Package-1** |  | 2026-05-07 | 2027-07-17 |  |  |
|  | 15 | **ROAD WORKS 1** |  | 2026-05-07 | 2027-05-08 |  |  |
|  | 8 | **ROAD - 01** |  | 2026-05-07 | 2027-04-27 |  |  |
|  | 6 | **ROAD-01 From 0 to 470 m (3)** |  | 2026-05-07 | 2027-04-20 |  |  |
|  | 14 | **GENERAL WORKS** |  | 2026-05-07 | 2026-07-25 |  |  |
|  | 10 | **Cleaning and removal of organic materials in Zone A** |  | 2026-05-07 | 2026-07-08 |  |  |
| SDR-ST-CON-P1-1000 |  | Cleaning and removal of organic materials Part 1 | 18d | 2026-05-07 | 2026-06-01 | SDR-ST-MOBL-1060 | 0d |
| SDR-ST-CON-P1-1050 |  | Cleaning and removal of organic materials Part 2 | 19.9d | 2026-06-02 | 2026-06-24 | SDR-ST-CON-P1-1000, SDR-ST-ENG-AP-1130, SDR-ST-ENG-AP-1140, SDR-ST-ENG-AP-1150, SDR-ST-ENG-AP-1160, SDR-ST-ENG-AP-1170, SDR-ST-ENG-AP-1180, SDR-ST-ENG-AP-1120, SDR-ST-ENG-AP-1110, SDR-ST-ENG-AP-1100, SDR-ST-ENG-AP-1090, SDR-ST-ENG-AP-1080, SDR-ST-ENG-AP-1030, SDR-ST-ENG-AP-1020, SDR-ST-ENG-AP-1010, SDR-ST-ENG-AP-1000, SDR-ST-ENG-AP-1070, SDR-ST-ENG-AP-1060, SDR-ST-ENG-AP-1050, SDR-ST-ENG-AP-1040, SDR-ST-ENG-AP-1230, SDR-ST-ENG-AP-1220, SDR-ST-ENG-AP-1210, SDR-ST-ENG-AP-1200, SDR-ST-ENG-AP-1190, SDR-ST-MILS-1040, SDR-ST-MILS-1030, SDR-ST-MILS-1020, SDR-ST-MILS-1050, SDR-ST-PREL-1060, SDR-ST-PREL-1070, SDR-ST-PREL-1010, SDR-ST-PREL-1080, SDR-ST-PREL-1020, SDR-ST-PREL-1090, SDR-ST-PREL-1030, SDR-ST-PREL-1100, SDR-ST-PREL-1040, SDR-ST-PRO-A-1100 | 0d |
| SDR-ST-CON-P1-6060 |  | Cleaning and removal of organic materials Part 3 | 14d | 2026-06-25 | 2026-07-08 | SDR-ST-CON-P1-1050 | 0d |
|  | 12 | **Surveying works Zone A** |  | 2026-07-08 | 2026-07-25 |  |  |
| SDR-ST-CON-P1-1090 |  | Surveying works Zone A | 13.7d | 2026-07-08 | 2026-07-25 | SDR-ST-CON-P1-1050, SDR-ST-CON-P1-6060 | 0d |
|  | 1 | **Earth Works Road** |  | 2026-07-25 | 2026-08-08 |  |  |
| SDR-ST-CON-P1-1150 |  | Roadway Excavation and cuttings | 12d | 2026-07-25 | 2026-08-08 | SDR-ST-CON-P1-1090 | 0d |
|  | 10 | **Backfilling Works** |  | 2026-08-08 | 2026-10-24 |  |  |
| SDR-ST-CON-P1-1200 |  | Embankments to the Road 1 Layer | 20d | 2026-08-08 | 2026-08-31 | SDR-ST-CON-P1-1150 | 0d |
| SDR-ST-CON-P1-1470 |  | Embankments to the Road 2 Layer | 20d | 2026-08-31 | 2026-09-24 | SDR-ST-CON-P1-1200 | 1d |
| SDR-ST-CON-P1-2140 |  | Embankments to the Road 3 Layer | 13d | 2026-09-24 | 2026-10-10 | SDR-ST-CON-P1-1470 | 1d |
| SDR-ST-CON-P1-2710 |  | Embankments to the Road 4 Layer | 12d | 2026-10-10 | 2026-10-24 | SDR-ST-CON-P1-2140 | 1d |
|  | 11 | **Subgrade** |  | 2026-10-24 | 2026-11-09 |  |  |
| SDR-ST-CON-P1-3260 |  | Subgrade layer works | 14.2d | 2026-10-24 | 2026-11-09 | SDR-ST-CON-P1-2710, SDR-ST-CON-P3-1040, SDR-ST-PRO-MS-1260 | 1d |
|  | 2 | **Base Course** |  | 2026-11-09 | 2026-11-24 |  |  |
| SDR-ST-CON-P1-3850 |  | Aggregate base course layer | 13d | 2026-11-09 | 2026-11-24 | SDR-ST-CON-P1-3260 | 1d |
|  | 3 | **Asphalt Works** |  | 2026-11-24 | 2027-01-02 |  |  |
|  | 1 | **Bituminous base course** |  | 2026-11-24 | 2026-12-06 |  |  |
| SDR-ST-CON-P1-4410 |  | Bituminous base course (Grading I - Class A 1st Layer with RC-01 | 6d | 2026-11-24 | 2026-12-01 | SDR-ST-CON-P1-3850 | 1d |
| SDR-ST-CON-P1-4770 |  | Bituminous base course (Grading I - Class A 2nd layer with RC-02 | 4d | 2026-12-01 | 2026-12-06 | SDR-ST-CON-P1-4410 | 1d |
|  | 2 | **Bituminous concrete wearing course** |  | 2026-12-08 | 2027-01-02 |  |  |
| SDR-ST-CON-P1-5110 |  | Bituminous concrete wearing course, (Grading I - Class A), including tack coat (RC2) | 21d | 2026-12-08 | 2027-01-02 | SDR-ST-CON-P1-4770 FS+2d | 1d |
|  | 4 | **Kerbstone Installation** |  | 2026-11-09 | 2027-01-13 |  |  |
| SDR-ST-CON-P1-3860 |  | Precast Concrete Curbstone, Type A2 | 21d | 2026-11-09 | 2026-12-03 | SDR-ST-CON-P1-3260 | 6d |
| SDR-ST-CON-P1-4530 |  | Precast Concrete Curbstone, Type D | 10d | 2027-01-02 | 2027-01-13 | SDR-ST-CON-P1-3860, SDR-ST-CON-P1-5110, SDR-ST-CON-P3-1230, SDR-ST-CON-P3-1220 | 1d |
|  | 5 | **Interlock Installation** |  | 2027-01-13 | 2027-03-17 |  |  |
| SDR-ST-CON-P1-4100 |  | Interlock Installation Part 1 | 20d | 2027-01-13 | 2027-02-06 | SDR-ST-CON-P1-3860, SDR-ST-CON-P1-2710, SDR-ST-ENG-AP-1080, SDR-ST-CON-P1-4530 | 1d |
| SDR-ST-CON-P1-4620 |  | Interlock Installation Part 2 | 20d | 2027-02-06 | 2027-03-17 | SDR-ST-CON-P1-4100, SDR-ST-CON-P1-4170 | 1d |
|  | 6 | **Road Marking** |  | 2027-03-31 | 2027-04-19 |  |  |
| SDR-ST-CON-P1-5210 |  | Retroreflective Thermoplastic White Traffic lines | 4d | 2027-03-31 | 2027-04-05 | SDR-ST-CON-P1-5110 SS, SDR-ST-CON-P1-2710, SDR-ST-ENG-AP-1080, SDR-ST-CON-P1-4620, SDR-ST-TC-1030, SDR-ST-PRO-MS-1190, SDR-ST-PRO-MS-1180 | 3d |
| SDR-ST-CON-P1-5310 |  | Retroreflective Thermoplastic Yellow, Traffic lines | 4d | 2027-04-05 | 2027-04-10 | SDR-ST-CON-P1-5210, SDR-ST-PRO-MS-1190 | 7.7d |
| SDR-ST-CON-P1-5470 |  | Ceramic raised pavement markers | 4d | 2027-04-10 | 2027-04-14 | SDR-ST-CON-P1-5310 | 7.7d |
| SDR-ST-CON-P1-5620 |  | Rumble strip | 4d | 2027-04-14 | 2027-04-19 | SDR-ST-CON-P1-5470 | 7.7d |
|  | 7 | **Traffic Signage** |  | 2027-03-31 | 2027-04-14 |  |  |
| SDR-ST-CON-P1-5220 |  | Traffic signs, ground mounted, 1 Sheet Alumenium, (breakaway) Single post, with all accessories | 4d | 2027-03-31 | 2027-04-05 | SDR-ST-CON-P1-5210 SS, SDR-ST-ENG-AP-1080 | 3d |
| SDR-ST-CON-P1-5320 |  | Traffic signs, ground mounted, 1 Sheet Aluminum, (breakaway) Double post, with all accessories | 4d | 2027-04-05 | 2027-04-10 | SDR-ST-CON-P1-5220 | 3d |
| SDR-ST-CON-P1-5480 |  | Traffic signs, ground mounted, 2 Sheet Aluminum, (breakaway) Single post, with all accessories | 4d | 2027-04-10 | 2027-04-14 | SDR-ST-CON-P1-5320 | 3d |
|  | 8 | **Speed table** |  | 2027-04-14 | 2027-04-20 |  |  |
| SDR-ST-CON-P1-5490 |  | Interlock speed table including interlock, flush kerb and marking | 5d | 2027-04-14 | 2027-04-20 | SDR-ST-CON-P1-5110, SDR-ST-CON-P1-5480 | 3d |
|  | 7 | **ROAD-01 From 470 to 1125 m (6)** |  | 2026-06-24 | 2027-04-24 |  |  |
|  | 14 | **GENERAL WORKS** |  | 2026-06-24 | 2026-08-11 |  |  |
|  | 10 | **Cleaning and removal of organic materials in Zone A** |  | 2026-06-24 | 2026-07-19 |  |  |
| SDR-ST-CON-P1-1010 |  | Cleaning and removal of organic materials in Zone A | 21d | 2026-06-24 | 2026-07-19 | SDR-ST-ENG-AP-1080, SDR-ST-CON-P1-1050 | 0d |

| ID | WBS | Task | Duration | Start | Finish | Predecessors | Total float |
| --- | --- | --- | --- | --- | --- | --- | --- |
|  | 12 | **Surveying works Zone A** |  | 2026-07-19 | 2026-08-11 |  |  |
| SDR-ST-CON-P1-1070 |  | Surveying works Zone A | 20d | 2026-07-19 | 2026-08-11 | SDR-ST-CON-P1-1010 | 0.9d |
|  | 1 | **Earth Works Road** |  | 2026-08-11 | 2026-08-27 |  |  |
| SDR-ST-CON-P1-1120 |  | Roadway Excavation and cuttings | 14d | 2026-08-11 | 2026-08-27 | SDR-ST-CON-P1-1070 | 0.9d |
|  | 10 | **Backfilling Works** |  | 2026-08-27 | 2026-10-29 |  |  |
| SDR-ST-CON-P1-1190 |  | Embankments to the Road 1 Layer | 20d | 2026-08-27 | 2026-09-20 | SDR-ST-CON-P1-1120 | 0.9d |
| SDR-ST-CON-P1-1400 |  | Embankments to the Road 2 Layer | 13d | 2026-09-20 | 2026-10-06 | SDR-ST-CON-P1-1190 | 0.9d |
| SDR-ST-CON-P1-2090 |  | Embankments to the Road 3 Layer | 10d | 2026-10-06 | 2026-10-18 | SDR-ST-CON-P1-1400 | 0.9d |
| SDR-ST-CON-P1-2570 |  | Embankments to the Road 4 Layer | 10d | 2026-10-18 | 2026-10-29 | SDR-ST-CON-P1-2090 | 0.9d |
|  | 11 | **Subgrade** |  | 2026-10-29 | 2026-11-11 |  |  |
| SDR-ST-CON-P1-3140 |  | Subgrade layer works | 11d | 2026-10-29 | 2026-11-11 | SDR-ST-CON-P1-2570 | 0.9d |
|  | 2 | **Base Course** |  | 2026-11-11 | 2026-11-23 |  |  |
| SDR-ST-CON-P1-3720 |  | Aggregate base course layer | 10d | 2026-11-11 | 2026-11-23 | SDR-ST-CON-P1-3140 | 1.2d |
|  | 3 | **Asphalt Works** |  | 2026-11-23 | 2027-01-03 |  |  |
|  | 1 | **Bituminous base course** |  | 2026-11-23 | 2026-12-06 |  |  |
| SDR-ST-CON-P1-4430 |  | Bituminous base course (Grading I - Class A 1st Layer with RC-01 | 6d | 2026-11-23 | 2026-11-30 | SDR-ST-CON-P1-3720 | 1.2d |
| SDR-ST-CON-P1-4730 |  | Bituminous base course (Grading I - Class A 2nd layer with RC-02 | 5d | 2026-11-30 | 2026-12-06 | SDR-ST-CON-P1-4430 | 1.2d |
|  | 2 | **Bituminous concrete wearing course** |  | 2026-12-09 | 2027-01-03 |  |  |
| SDR-ST-CON-P1-5040 |  | Bituminous concrete wearing course, (Grading I - Class A), including tack coat (RC2) | 21d | 2026-12-09 | 2027-01-03 | SDR-ST-CON-P1-4730 FS+3d | 1.2d |
|  | 4 | **Kerbstone Installation** |  | 2026-11-11 | 2027-01-02 |  |  |
| SDR-ST-CON-P1-3730 |  | Precast Concrete Curbstone, Type A2 | 20d | 2026-11-11 | 2026-12-05 | SDR-ST-CON-P1-3140 | 0.9d |
| SDR-ST-CON-P1-4480 |  | Precast Concrete Curbstone, Type D | 20d | 2026-12-09 | 2027-01-02 | SDR-ST-CON-P1-3730 FS+4d, SDR-ST-CON-P1-3860 | 0.9d |
|  | 5 | **Interlock Installation** |  | 2027-01-02 | 2027-02-25 |  |  |
| SDR-ST-CON-P1-3890 |  | Interlock Installation Part 1 | 20d | 2027-01-02 | 2027-01-25 | SDR-ST-ENG-AP-1080, SDR-ST-CON-P1-4480 | 0.9d |
| SDR-ST-CON-P1-4490 |  | Interlock Installation Part 2 | 20d | 2027-01-25 | 2027-02-25 | SDR-ST-CON-P1-3890, SDR-ST-CON-P1-4170 | 0.9d |
|  | 6 | **Road Marking** |  | 2027-02-25 | 2027-03-30 |  |  |
| SDR-ST-CON-P1-5080 |  | Retroreflective Thermoplastic White Traffic lines | 5d | 2027-02-25 | 2027-03-08 | SDR-ST-CON-P1-5040 SS, SDR-ST-ENG-AP-1080, SDR-ST-CON-P1-4490, SDR-ST-CON-P1-5570 | 0.9d |
| SDR-ST-CON-P1-5150 |  | Retroreflective Thermoplastic Yellow, Traffic lines | 5d | 2027-03-14 | 2027-03-18 | SDR-ST-CON-P1-5080, SDR-ST-CON-P3-1310, SDR-ST-CON-P1-6070, SDR-ST-CON-P1-5030 | 0d |
| SDR-ST-CON-P1-5270 |  | Ceramic raised pavement markers | 5d | 2027-03-20 | 2027-03-24 | SDR-ST-CON-P1-5150, SDR-ST-CON-P1-6070, SDR-ST-CON-P1-4620 | 0d |
| SDR-ST-CON-P1-5400 |  | Rumble strip | 5d | 2027-03-25 | 2027-03-30 | SDR-ST-CON-P1-5270 | 0d |
|  | 7 | **Traffic Signage** |  | 2027-03-31 | 2027-04-13 |  |  |
| SDR-ST-CON-P1-5090 |  | Traffic signs, ground mounted, 1 Sheet Alumenium, (breakaway) Single post, with all accessories | 6d | 2027-03-31 | 2027-04-06 | SDR-ST-ENG-AP-1080, SDR-ST-CON-P1-5400, SDR-ST-PRO-MS-1190, SDR-ST-PRO-MS-1180 | 0d |
| SDR-ST-CON-P1-5160 |  | Traffic signs, ground mounted, 1 Sheet Aluminum, (breakaway) Double post, with all accessories | 6d | 2027-04-07 | 2027-04-13 | SDR-ST-CON-P1-5090, SDR-ST-PRO-MS-1190 | 0d |
|  | 8 | **Speed table** |  | 2027-04-14 | 2027-04-24 |  |  |
| SDR-ST-CON-P1-5280 |  | Interlock speed table including interlock, flush kerb and marking | 8.3d | 2027-04-14 | 2027-04-24 | SDR-ST-CON-P1-5160 | 0d |
|  | 9 | **ROAD-01 From 1125 to 1765 m (7)** |  | 2026-07-02 | 2027-04-27 |  |  |
|  | 14 | **GENERAL WORKS** |  | 2026-07-02 | 2026-08-12 |  |  |
|  | 10 | **Cleaning and removal of organic materials in Zone A** |  | 2026-07-02 | 2026-07-27 |  |  |
| SDR-ST-CON-P1-1020 |  | Cleaning and removal of organic materials in Zone A | 21d | 2026-07-02 | 2026-07-27 | SDR-ST-CON-P1-1010 SS+7d, SDR-ST-ENG-AP-1080 | 0d |
|  | 12 | **Surveying works Zone A** |  | 2026-07-27 | 2026-08-12 |  |  |
| SDR-ST-CON-P1-1080 |  | Surveying works Zone A | 14d | 2026-07-27 | 2026-08-12 | SDR-ST-CON-P1-1020 | 0d |
|  | 1 | **Earth Works Road** |  | 2026-08-12 | 2026-08-29 |  |  |
| SDR-ST-CON-P1-1140 |  | Roadway Excavation and cuttings | 14d | 2026-08-12 | 2026-08-29 | SDR-ST-CON-P1-1080 | 0d |
|  | 10 | **Backfilling Works** |  | 2026-08-29 | 2026-11-01 |  |  |
| SDR-ST-CON-P1-1210 |  | Embankments to the Road 1 Layer | 20d | 2026-08-29 | 2026-09-21 | SDR-ST-CON-P1-1140 | 0d |
| SDR-ST-CON-P1-1580 |  | Embankments to the Road 2 Layer | 13d | 2026-09-21 | 2026-10-07 | SDR-ST-CON-P1-1210 | 0d |
| SDR-ST-CON-P1-2220 |  | Embankments to the Road 3 Layer | 12d | 2026-10-07 | 2026-10-21 | SDR-ST-CON-P1-1580 | 0d |
| SDR-ST-CON-P1-2880 |  | Embankments to the Road 4 Layer | 9d | 2026-10-21 | 2026-11-01 | SDR-ST-CON-P1-2220 | 1.2d |
|  | 11 | **Subgrade** |  | 2026-11-01 | 2026-11-12 |  |  |
| SDR-ST-CON-P1-3600 |  | Subgrade layer works | 10d | 2026-11-01 | 2026-11-12 | SDR-ST-CON-P1-2880 | 1.2d |
|  | 2 | **Base Course** |  | 2026-11-12 | 2026-11-23 |  |  |
| SDR-ST-CON-P1-4220 |  | Aggregate base course layer | 9d | 2026-11-12 | 2026-11-23 | SDR-ST-CON-P1-3600 | 1.2d |
|  | 3 | **Asphalt Works** |  | 2026-11-23 | 2027-01-03 |  |  |
|  | 1 | **Bituminous base course** |  | 2026-11-23 | 2026-12-06 |  |  |
| SDR-ST-CON-P1-4750 |  | Bituminous base course (Grading I - Class A 1st Layer with RC-01 | 6d | 2026-11-23 | 2026-11-30 | SDR-ST-CON-P1-4220 | 1.2d |
| SDR-ST-CON-P1-5010 |  | Bituminous base course (Grading I - Class A 2nd layer with RC-02 | 5d | 2026-11-30 | 2026-12-06 | SDR-ST-CON-P1-4750 | 1.2d |
|  | 2 | **Bituminous concrete wearing course** |  | 2026-12-09 | 2027-01-03 |  |  |
| SDR-ST-CON-P1-5200 |  | Bituminous concrete wearing course, (Grading I - Class A), including tack coat (RC2) | 21d | 2026-12-09 | 2027-01-03 | SDR-ST-CON-P1-5010 FS+3d | 1.2d |
|  | 4 | **Kerbstone Installation** |  | 2026-11-12 | 2027-01-03 |  |  |
| SDR-ST-CON-P1-4230 |  | Precast Concrete Curbstone, Type A2 | 20d | 2026-11-12 | 2026-12-06 | SDR-ST-CON-P1-3600 | 3.9d |
| SDR-ST-CON-P1-4950 |  | Precast Concrete Curbstone, Type D | 20d | 2026-12-10 | 2027-01-03 | SDR-ST-CON-P1-4230 FS+4d | 3.9d |
|  | 5 | **Interlock Installation** |  | 2027-01-03 | 2027-03-02 |  |  |
| SDR-ST-CON-P1-4440 |  | Interlock Installation Part 1 | 21d | 2027-01-03 | 2027-01-27 | SDR-ST-ENG-AP-1080, SDR-ST-CON-P1-4950 | 3.9d |
| SDR-ST-CON-P1-4870 |  | Interlock Installation Part 2 | 20d | 2027-01-27 | 2027-03-02 | SDR-ST-CON-P1-4440 | 3.9d |
|  | 6 | **Road Marking** |  | 2027-03-14 | 2027-04-05 |  |  |
| SDR-ST-CON-P1-5300 |  | Retroreflective Thermoplastic White Traffic lines | 5d | 2027-03-14 | 2027-03-18 | SDR-ST-CON-P1-5200 SS, SDR-ST-ENG-AP-1080, SDR-ST-CON-P1-4870, SDR-ST-CON-P3-1310, SDR-ST-CON-P3-1490, SDR-ST-CON-P1-6070 | 0d |
| SDR-ST-CON-P1-5450 |  | Retroreflective Thermoplastic Yellow, Traffic lines | 5d | 2027-03-20 | 2027-03-24 | SDR-ST-CON-P1-5300 | 0d |
| SDR-ST-CON-P1-5610 |  | Ceramic raised pavement markers | 5d | 2027-03-25 | 2027-03-30 | SDR-ST-CON-P1-5450 | 0d |
| SDR-ST-CON-P1-5690 |  | Rumble strip | 5d | 2027-03-31 | 2027-04-05 | SDR-ST-CON-P1-5610 | 0d |
|  | 7 | **Traffic Signage** |  | 2027-04-06 | 2027-04-18 |  |  |

| ID | WBS | Task | Duration | Start | Finish | Predecessors | Total float |
| --- | --- | --- | --- | --- | --- | --- | --- |
| SDR-ST-CON-P1-5540 |  | Traffic signs, ground mounted, 1 Sheet Alumenium, (breakaway) Single post, with all accessories | 5d | 2027-04-06 | 2027-04-11 | SDR-ST-ENG-AP-1080, SDR-ST-CON-P1-5690, SDR-ST-PRO-MS-1190 | 0d |
| SDR-ST-CON-P1-5680 |  | Traffic signs, ground mounted, 1 Sheet Aluminum, (breakaway) Double post, with all accessories | 6d | 2027-04-12 | 2027-04-18 | SDR-ST-CON-P1-5540 | 0d |
|  | 8 | **Speed table** |  | 2027-04-19 | 2027-04-27 |  |  |
| SDR-ST-CON-P1-5460 |  | Interlock speed table including interlock, flush kerb and marking | 8d | 2027-04-19 | 2027-04-27 | SDR-ST-ENG-AP-1080, SDR-ST-CON-P1-5680 | 0d |
|  | 6 | **ROAD - 02** |  | 2026-07-07 | 2027-05-08 |  |  |
|  | 1 | **ROAD-01 From 0 to 400 m (9)** |  | 2026-07-07 | 2027-05-04 |  |  |
|  | 14 | **GENERAL WORKS** |  | 2026-07-07 | 2026-08-23 |  |  |
|  | 10 | **Cleaning and removal of organic materials in Zone A** |  | 2026-07-07 | 2026-08-01 |  |  |
| SDR-ST-CON-P1-1030 |  | Cleaning and removal of organic materials in Zone A | 21d | 2026-07-07 | 2026-08-01 | SDR-ST-CON-P1-1020 SS+4d, SDR-ST-ENG-AP-1080 | 0d |
|  | 12 | **Surveying works Zone A** |  | 2026-08-01 | 2026-08-23 |  |  |
| SDR-ST-CON-P1-1100 |  | Surveying works Zone A | 19d | 2026-08-01 | 2026-08-23 | SDR-ST-CON-P1-1030 | 0d |
|  | 1 | **Earth Works Road** |  | 2026-08-23 | 2026-09-08 |  |  |
| SDR-ST-CON-P1-1160 |  | Roadway Excavation and cuttings | 14d | 2026-08-23 | 2026-09-08 | SDR-ST-CON-P1-1100 | 0d |
|  | 10 | **Backfilling Works** |  | 2026-09-08 | 2026-11-04 |  |  |
| SDR-ST-CON-P1-1300 |  | Embankments to the Road 1 Layer | 13d | 2026-09-08 | 2026-09-24 | SDR-ST-CON-P1-1160 | 0d |
| SDR-ST-CON-P1-1910 |  | Embankments to the Road 2 Layer | 13d | 2026-09-24 | 2026-10-10 | SDR-ST-CON-P1-1300 | 0d |
| SDR-ST-CON-P1-2620 |  | Embankments to the Road 3 Layer | 12d | 2026-10-10 | 2026-10-24 | SDR-ST-CON-P1-1910 | 0d |
| SDR-ST-CON-P1-2920 |  | Embankments to the Road 4 Layer | 10d | 2026-10-24 | 2026-11-04 | SDR-ST-CON-P1-2620 | 0d |
|  | 11 | **Subgrade** |  | 2026-11-04 | 2026-11-19 |  |  |
| SDR-ST-CON-P1-3390 |  | Subgrade layer works | 13d | 2026-11-04 | 2026-11-19 | SDR-ST-CON-P1-2920 | 0d |
|  | 2 | **Base Course** |  | 2026-11-19 | 2026-11-28 |  |  |
| SDR-ST-CON-P1-3960 |  | Aggregate base course layer | 7d | 2026-11-19 | 2026-11-28 | SDR-ST-CON-P1-3390 | 16.7d |
|  | 3 | **Asphalt Works** |  | 2026-11-28 | 2027-01-02 |  |  |
|  | 1 | **Bituminous base course** |  | 2026-11-28 | 2026-12-06 |  |  |
| SDR-ST-CON-P1-4540 |  | Bituminous base course (Grading I - Class A 1st Layer with RC-01 | 4d | 2026-11-28 | 2026-12-02 | SDR-ST-CON-P1-3960 | 16.7d |
| SDR-ST-CON-P1-4890 |  | Bituminous base course (Grading I - Class A 2nd layer with RC-02 | 3d | 2026-12-02 | 2026-12-06 | SDR-ST-CON-P1-4540 | 16.7d |
|  | 2 | **Bituminous concrete wearing course** |  | 2026-12-08 | 2027-01-02 |  |  |
| SDR-ST-CON-P1-5130 |  | Bituminous concrete wearing course, (Grading I - Class A), including tack coat (RC2) | 21d | 2026-12-08 | 2027-01-02 | SDR-ST-CON-P1-4890 FS+2d | 16.7d |
|  | 4 | **Kerbstone Installation** |  | 2026-11-19 | 2027-01-10 |  |  |
| SDR-ST-CON-P1-3970 |  | Precast Concrete Curbstone, Type A2 | 20d | 2026-11-19 | 2026-12-13 | SDR-ST-CON-P1-3390 | 0d |
| SDR-ST-CON-P1-4690 |  | Precast Concrete Curbstone, Type D | 20d | 2026-12-17 | 2027-01-10 | SDR-ST-CON-P1-3970 FS+4d | 0d |
|  | 5 | **Interlock Installation** |  | 2027-01-10 | 2027-03-15 |  |  |
| SDR-ST-CON-P1-4200 |  | Interlock Installation Part 1 | 20d | 2027-01-10 | 2027-02-02 | SDR-ST-CON-P1-3970 FS+4d, SDR-ST-ENG-AP-1080, SDR-ST-CON-P1-4690 | 0d |
| SDR-ST-CON-P1-4780 |  | Interlock Installation Part 2 | 20d | 2027-02-02 | 2027-03-15 | SDR-ST-CON-P1-4200 | 0d |
|  | 6 | **Road Marking** |  | 2027-03-15 | 2027-04-07 |  |  |
| SDR-ST-CON-P1-5250 |  | Retroreflective Thermoplastic White Traffic lines | 5d | 2027-03-15 | 2027-03-21 | SDR-ST-ENG-AP-1080, SDR-ST-CON-P1-4780, SDR-ST-PRO-MS-1270, SDR-ST-CON-P3-1310, SDR-ST-CON-P1-6070, SDR-ST-CON-P1-6070 FF | 0d |
| SDR-ST-CON-P1-5370 |  | Retroreflective Thermoplastic Yellow, Traffic lines | 5d | 2027-03-21 | 2027-03-27 | SDR-ST-CON-P1-5250, SDR-ST-CON-P1-6070 | 0d |
| SDR-ST-CON-P1-5550 |  | Ceramic raised pavement markers | 5d | 2027-03-27 | 2027-04-01 | SDR-ST-CON-P1-5370 | 0d |
| SDR-ST-CON-P1-5630 |  | Rumble strip | 5d | 2027-04-01 | 2027-04-07 | SDR-ST-CON-P1-5550, SDR-ST-PRO-MS-1180 | 0d |
|  | 7 | **Traffic Signage** |  | 2027-04-07 | 2027-04-25 |  |  |
| SDR-ST-CON-P1-5260 |  | Traffic signs, ground mounted, 1 Sheet Alumenium, (breakaway) Single post, with all accessories | 5d | 2027-04-07 | 2027-04-13 | SDR-ST-CON-P1-5250, SDR-ST-ENG-AP-1080, SDR-ST-CON-P1-5630, SDR-ST-PRO-MS-1190 | 0d |
| SDR-ST-CON-P1-5380 |  | Traffic signs, ground mounted, 1 Sheet Aluminum, (breakaway) Double post, with all accessories | 5d | 2027-04-13 | 2027-04-19 | SDR-ST-CON-P1-5260 | 0d |
| SDR-ST-CON-P1-5560 |  | Traffic signs, ground mounted, 2 Sheet Aluminum, (breakaway) Single post, with all accessories | 5d | 2027-04-19 | 2027-04-25 | SDR-ST-CON-P1-5380 | 0d |
|  | 8 | **Speed table** |  | 2027-04-25 | 2027-05-04 |  |  |
| SDR-ST-CON-P1-5390 |  | Interlock speed table including interlock, flush kerb and marking | 8d | 2027-04-25 | 2027-05-04 | SDR-ST-CON-P1-5380, SDR-ST-ENG-AP-1080, SDR-ST-CON-P1-5560 | 0d |
|  | 2 | **ROAD-01 From 400 to 900 m (10)** |  | 2026-07-12 | 2027-04-29 |  |  |
|  | 14 | **GENERAL WORKS** |  | 2026-07-12 | 2026-08-24 |  |  |
|  | 10 | **Cleaning and removal of organic materials in Zone A** |  | 2026-07-12 | 2026-08-05 |  |  |
| SDR-ST-CON-P1-1040 |  | Cleaning and removal of organic materials in Zone A | 21d | 2026-07-12 | 2026-08-05 | SDR-ST-CON-P1-1030 SS+3.2d, SDR-ST-ENG-AP-1080 | 0d |
|  | 12 | **Surveying works Zone A** |  | 2026-08-05 | 2026-08-24 |  |  |
| SDR-ST-CON-P1-1110 |  | Surveying works Zone A | 16d | 2026-08-05 | 2026-08-24 | SDR-ST-CON-P1-1040 | 0d |
|  | 1 | **Earth Works Road** |  | 2026-08-24 | 2026-09-08 |  |  |
| SDR-ST-CON-P1-1170 |  | Roadway Excavation and cuttings | 13d | 2026-08-24 | 2026-09-08 | SDR-ST-CON-P1-1110 | 0d |
|  | 10 | **Backfilling Works** |  | 2026-09-08 | 2026-11-01 |  |  |
| SDR-ST-CON-P1-1250 |  | Embankments to the Road 1 Layer | 12d | 2026-09-08 | 2026-09-22 | SDR-ST-CON-P1-1170 | 0d |
| SDR-ST-CON-P1-1830 |  | Embankments to the Road 2 Layer | 11d | 2026-09-22 | 2026-10-06 | SDR-ST-CON-P1-1250 | 6.7d |
| SDR-ST-CON-P1-2540 |  | Embankments to the Road 3 Layer | 11d | 2026-10-06 | 2026-10-19 | SDR-ST-CON-P1-1830 | 6.7d |
| SDR-ST-CON-P1-3100 |  | Embankments to the Road 4 Layer | 11d | 2026-10-19 | 2026-11-01 | SDR-ST-CON-P1-2540 | 6.7d |
|  | 11 | **Subgrade** |  | 2026-11-01 | 2026-11-14 |  |  |
| SDR-ST-CON-P1-3540 |  | Subgrade layer works | 11d | 2026-11-01 | 2026-11-14 | SDR-ST-CON-P1-3100 | 6.7d |
|  | 2 | **Base Course** |  | 2026-11-14 | 2026-11-25 |  |  |
| SDR-ST-CON-P1-4130 |  | Aggregate base course layer | 10d | 2026-11-14 | 2026-11-25 | SDR-ST-CON-P1-3540 | 6.7d |
|  | 3 | **Asphalt Works** |  | 2026-11-25 | 2027-01-02 |  |  |
|  | 1 | **Bituminous base course** |  | 2026-11-25 | 2026-12-06 |  |  |
| SDR-ST-CON-P1-4600 |  | Bituminous base course (Grading I - Class A 1st Layer with RC-01 | 5d | 2026-11-25 | 2026-12-01 | SDR-ST-CON-P1-4130 | 6.7d |
| SDR-ST-CON-P1-4930 |  | Bituminous base course (Grading I - Class A 2nd layer with RC-02 | 4d | 2026-12-01 | 2026-12-06 | SDR-ST-CON-P1-4600 | 6.7d |
|  | 2 | **Bituminous concrete wearing course** |  | 2026-12-08 | 2027-01-02 |  |  |
| SDR-ST-CON-P1-5180 |  | Bituminous concrete wearing course, (Grading I - Class A), including tack coat (RC2) | 21d | 2026-12-08 | 2027-01-02 | SDR-ST-CON-P1-4930 FS+2d | 6.7d |
|  | 4 | **Kerbstone Installation** |  | 2026-11-14 | 2027-01-04 |  |  |
| SDR-ST-CON-P1-4140 |  | Precast Concrete Curbstone, Type A2 | 20d | 2026-11-14 | 2026-12-07 | SDR-ST-CON-P1-3540 | 6.7d |

| ID | WBS | Task | Duration | Start | Finish | Predecessors | Total float |
| --- | --- | --- | --- | --- | --- | --- | --- |
| SDR-ST-CON-P1-4810 |  | Precast Concrete Curbstone, Type D | 20d | 2026-12-12 | 2027-01-04 | SDR-ST-CON-P1-4140 FS+4d | 6.7d |
|  | 5 | **Interlock Installation** |  | 2027-01-04 | 2027-02-28 |  |  |
| SDR-ST-CON-P1-4350 |  | Interlock Installation Part 1 | 20d | 2027-01-04 | 2027-01-27 | SDR-ST-CON-P1-4140 SS, SDR-ST-ENG-AP-1080, SDR-ST-CON-P1-4810, SDR-ST-CON-P1-5180 | 6.7d |
| SDR-ST-CON-P1-4920 |  | Interlock Installation Part 2 | 20d | 2027-01-27 | 2027-02-28 | SDR-ST-CON-P1-4350 | 6.7d |
|  | 6 | **Road Marking** |  | 2027-02-28 | 2027-04-05 |  |  |
| SDR-ST-CON-P1-5290 |  | Retroreflective Thermoplastic White Traffic lines | 6d | 2027-02-28 | 2027-03-15 | SDR-ST-CON-P1-5180 SS, SDR-ST-ENG-AP-1080, SDR-ST-CON-P1-4920, SDR-ST-CON-P3-1310, SDR-ST-CON-P3-1490 | 6.7d |
| SDR-ST-CON-P1-5410 |  | Retroreflective Thermoplastic Yellow, Traffic lines | 6d | 2027-03-15 | 2027-03-22 | SDR-ST-CON-P1-5290 | 6.7d |
| SDR-ST-CON-P1-5580 |  | Ceramic raised pavement markers | 6d | 2027-03-22 | 2027-03-29 | SDR-ST-CON-P1-5410 | 6.7d |
| SDR-ST-CON-P1-5640 |  | Rumble strip | 6d | 2027-03-29 | 2027-04-05 | SDR-ST-CON-P1-5580 | 6.7d |
|  | 7 | **Traffic Signage** |  | 2027-04-05 | 2027-04-19 |  |  |
| SDR-ST-CON-P1-5420 |  | Traffic signs, ground mounted, 1 Sheet Alumenium, (breakaway) Single post, with all accessories | 6d | 2027-04-05 | 2027-04-12 | SDR-ST-CON-P1-5290 SS, SDR-ST-ENG-AP-1080, SDR-ST-CON-P1-5640 | 6.7d |
| SDR-ST-CON-P1-5590 |  | Traffic signs, ground mounted, 1 Sheet Aluminum, (breakaway) Double post, with all accessories | 6d | 2027-04-12 | 2027-04-19 | SDR-ST-CON-P1-5420 | 6.7d |
|  | 8 | **Speed table** |  | 2027-04-19 | 2027-04-29 |  |  |
| SDR-ST-CON-P1-5430 |  | Interlock speed table including interlock, flush kerb and marking | 9d | 2027-04-19 | 2027-04-29 | SDR-ST-CON-P1-5410 SS, SDR-ST-ENG-AP-1080, SDR-ST-CON-P1-5590 | 6.7d |
|  | 3 | **ROAD-01 From 900 to 1239 m (11)** |  | 2026-07-19 | 2027-05-08 |  |  |
|  | 14 | **GENERAL WORKS** |  | 2026-07-19 | 2026-09-02 |  |  |
|  | 10 | **Cleaning and removal of organic materials in Zone A** |  | 2026-07-19 | 2026-08-12 |  |  |
| SDR-ST-CON-P1-1060 |  | Cleaning and removal of organic materials in Zone A | 21d | 2026-07-19 | 2026-08-12 | SDR-ST-CON-P1-1040 SS+6d, SDR-ST-ENG-AP-1080 | 1d |
|  | 12 | **Surveying works Zone A** |  | 2026-08-12 | 2026-09-02 |  |  |
| SDR-ST-CON-P1-1130 |  | Surveying works Zone A | 18d | 2026-08-12 | 2026-09-02 | SDR-ST-CON-P1-1060 | 1d |
|  | 1 | **Earth Works Road** |  | 2026-09-02 | 2026-09-17 |  |  |
| SDR-ST-CON-P1-1220 |  | Roadway Excavation and cuttings | 13d | 2026-09-02 | 2026-09-17 | SDR-ST-CON-P1-1130 | 1d |
|  | 10 | **Backfilling Works** |  | 2026-09-17 | 2026-11-08 |  |  |
| SDR-ST-CON-P1-1350 |  | Embankments to the Road 1 Layer | 11d | 2026-09-17 | 2026-10-01 | SDR-ST-CON-P1-1220 | 1d |
| SDR-ST-CON-P1-1990 |  | Embankments to the Road 2 Layer | 11d | 2026-10-01 | 2026-10-14 | SDR-ST-CON-P1-1350, SDR-ST-PRO-MS-1260 | 1.7d |
| SDR-ST-CON-P1-2730 |  | Embankments to the Road 3 Layer | 11d | 2026-10-14 | 2026-10-27 | SDR-ST-CON-P1-1990 | 1.7d |
| SDR-ST-CON-P1-3320 |  | Embankments to the Road 4 Layer | 10d | 2026-10-27 | 2026-11-08 | SDR-ST-CON-P1-2730 | 1.7d |
|  | 11 | **Subgrade** |  | 2026-11-08 | 2026-11-17 |  |  |
| SDR-ST-CON-P1-3740 |  | Subgrade layer works | 8d | 2026-11-08 | 2026-11-17 | SDR-ST-CON-P1-3320 | 1.7d |
|  | 2 | **Base Course** |  | 2026-11-17 | 2026-11-25 |  |  |
| SDR-ST-CON-P1-4290 |  | Aggregate base course layer | 7d | 2026-11-17 | 2026-11-25 | SDR-ST-CON-P1-3740 | 17.5d |
|  | 3 | **Asphalt Works** |  | 2026-11-25 | 2027-01-02 |  |  |
|  | 1 | **Bituminous base course** |  | 2026-11-25 | 2026-12-06 |  |  |
| SDR-ST-CON-P1-4650 |  | Bituminous base course (Grading I - Class A 1st Layer with RC-01 | 5d | 2026-11-25 | 2026-12-01 | SDR-ST-CON-P1-4290 | 17.5d |
| SDR-ST-CON-P1-4980 |  | Bituminous base course (Grading I - Class A 2nd layer with RC-02 | 4d | 2026-12-01 | 2026-12-06 | SDR-ST-CON-P1-4650 | 17.5d |
|  | 2 | **Bituminous concrete wearing course** |  | 2026-12-08 | 2027-01-02 |  |  |
| SDR-ST-CON-P1-5230 |  | Bituminous concrete wearing course, (Grading I - Class A), including tack coat (RC2) | 21d | 2026-12-08 | 2027-01-02 | SDR-ST-CON-P1-4980 FS+2d | 17.5d |
|  | 4 | **Kerbstone Installation** |  | 2026-11-17 | 2027-01-07 |  |  |
| SDR-ST-CON-P1-4300 |  | Precast Concrete Curbstone, Type A2 | 20d | 2026-11-17 | 2026-12-10 | SDR-ST-CON-P1-3740 | 1.7d |
| SDR-ST-CON-P1-4860 |  | Precast Concrete Curbstone, Type D | 20d | 2026-12-15 | 2027-01-07 | SDR-ST-CON-P1-4300 FS+4d | 1.7d |
|  | 5 | **Interlock Installation** |  | 2027-01-07 | 2027-03-06 |  |  |
| SDR-ST-CON-P1-4450 |  | Interlock Installation Part 1 | 20d | 2027-01-07 | 2027-01-31 | SDR-ST-CON-P1-4300 SS, SDR-ST-ENG-AP-1080, SDR-ST-CON-P1-4860, SDR-ST-CON-P1-5180 | 1.7d |
| SDR-ST-CON-P1-4940 |  | Interlock Installation Part 2 | 20d | 2027-01-31 | 2027-03-06 | SDR-ST-CON-P1-4450 | 1.7d |
|  | 6 | **Road Marking** |  | 2027-03-14 | 2027-04-10 |  |  |
| SDR-ST-CON-P1-5350 |  | Retroreflective Thermoplastic White Traffic lines | 6d | 2027-03-14 | 2027-03-20 | SDR-ST-CON-P1-5230 SS, SDR-ST-ENG-AP-1080, SDR-ST-CON-P1-4940, SDR-ST-CON-P1-5750, SDR-ST-CON-P1-6070 | 0d |
| SDR-ST-CON-P1-5510 |  | Retroreflective Thermoplastic Yellow, Traffic lines | 6d | 2027-03-21 | 2027-03-27 | SDR-ST-CON-P1-5350 | 0d |
| SDR-ST-CON-P1-5600 |  | Ceramic raised pavement markers | 6d | 2027-03-28 | 2027-04-03 | SDR-ST-CON-P1-5510 | 0d |
| SDR-ST-CON-P1-5650 |  | Rumble strip | 6d | 2027-04-04 | 2027-04-10 | SDR-ST-CON-P1-5600, SDR-ST-PRO-MS-1190 | 0d |
|  | 7 | **Traffic Signage** |  | 2027-04-11 | 2027-04-27 |  |  |
| SDR-ST-CON-P1-5360 |  | Traffic signs, ground mounted, 1 Sheet Alumenium, (breakaway) Single post, with all accessories | 5d | 2027-04-11 | 2027-04-15 | SDR-ST-CON-P1-5350 SS, SDR-ST-ENG-AP-1080, SDR-ST-CON-P1-5650 | 0d |
| SDR-ST-CON-P1-5520 |  | Traffic signs, ground mounted, 1 Sheet Aluminum, (breakaway) Double post, with all accessories | 5d | 2027-04-17 | 2027-04-21 | SDR-ST-CON-P1-5360 | 0d |
| SDR-ST-CON-P1-5660 |  | Traffic signs, ground mounted, 2 Sheet Aluminum, (breakaway) Single post, with all accessories | 5d | 2027-04-22 | 2027-04-27 | SDR-ST-CON-P1-5520 | 0d |
|  | 8 | **Speed table** |  | 2027-04-28 | 2027-05-08 |  |  |
| SDR-ST-CON-P1-5530 |  | Interlock speed table including interlock, flush kerb and marking | 9d | 2027-04-28 | 2027-05-08 | SDR-ST-CON-P1-5350, SDR-ST-CON-P1-5660, SDR-ST-CON-P1-5620, SDR-ST-CON-P1-5460 | 0d |
|  | 12 | **ELECTRICAL WORKS** |  | 2026-08-27 | 2027-07-17 |  |  |
|  | 2 | **MV Network** |  | 2026-10-21 | 2027-05-12 |  |  |
|  | 5 | **ROAD - 01** |  | 2026-10-21 | 2027-04-18 |  |  |
|  | 4 | **ROAD-01 From 1125 to 1765 m (7)** |  | 2026-10-21 | 2027-04-03 |  |  |
|  | 6 | **Excavation** |  | 2026-10-21 | 2027-01-03 |  |  |
| SDR-ST-CON-P1-1570 |  | Excavation Works Part 1 | 21d | 2026-10-21 | 2026-11-15 | SDR-ST-CON-P1-1210, SDR-ST-CON-P1-2220 | 0d |
| SDR-ST-CON-P1-6090 |  | Excavation Works Part 2 | 21d | 2026-11-15 | 2026-12-09 | SDR-ST-CON-P1-1570 | 0d |
| SDR-ST-CON-P1-6100 |  | Excavation Works Part 3 | 21d | 2026-12-09 | 2027-01-03 | SDR-ST-CON-P1-6090 | 0d |
|  | 7 | **Pipe laying** |  | 2027-01-03 | 2027-01-27 |  |  |
| SDR-ST-CON-P1-2270 |  | Pipe Laying | 21d | 2027-01-03 | 2027-01-27 | SDR-ST-CON-P1-6100 | 0d |
|  | 8 | **Backfilling** |  | 2027-01-27 | 2027-03-02 |  |  |
| SDR-ST-CON-P1-3000 |  | Backfilling Works | 20d | 2027-01-27 | 2027-03-02 | SDR-ST-CON-P1-2270, SDR-ST-CON-P1-4660 | 0d |
|  | 9 | **Pulling Cable** |  | 2027-03-02 | 2027-04-03 |  |  |
| SDR-ST-CON-P1-3900 |  | Pulling Cable | 21.3d | 2027-03-02 | 2027-04-03 | SDR-ST-CON-P1-2270, SDR-ST-CON-P1-3000 | 0d |
|  | 3 | **ROAD-01 From 470 to 1125 m (6)** |  | 2026-10-29 | 2027-04-06 |  |  |
|  | 6 | **Excavation** |  | 2026-10-29 | 2027-01-07 |  |  |

| ID | WBS | Task | Duration | Start | Finish | Predecessors | Total float |
| --- | --- | --- | --- | --- | --- | --- | --- |
| SDR-ST-CON-P1-1720 |  | Excavation Works Part 1 | 21d | 2026-10-29 | 2026-11-23 | SDR-ST-CON-P1-1190, SDR-ST-CON-P1-1570 SS+7d | 0.1d |
| SDR-ST-CON-P1-6110 |  | Excavation Works Part2 | 21d | 2026-11-23 | 2026-12-17 | SDR-ST-CON-P1-1720 | 4d |
| SDR-ST-CON-P1-6120 |  | Excavation Works Part 3 | 18d | 2026-12-17 | 2027-01-07 | SDR-ST-CON-P1-6110 | 4d |
|  | 7 | **Pipe laying** |  | 2027-01-07 | 2027-02-01 |  |  |
| SDR-ST-CON-P1-2420 |  | Pipe Laying | 21d | 2027-01-07 | 2027-02-01 | SDR-ST-CON-P1-6120 | 4d |
|  | 8 | **Backfilling** |  | 2027-02-01 | 2027-03-14 |  |  |
| SDR-ST-CON-P1-3150 |  | Backfilling Works | 20d | 2027-02-01 | 2027-03-14 | SDR-ST-CON-P1-2420, SDR-ST-CON-P1-4660 | 4d |
|  | 9 | **Pulling Cable** |  | 2027-03-14 | 2027-04-06 |  |  |
| SDR-ST-CON-P1-4000 |  | Pulling Cable | 20d | 2027-03-14 | 2027-04-06 | SDR-ST-CON-P1-2420, SDR-ST-CON-P1-3150 | 4d |
|  | 2 | **ROAD-01 N 03** |  | 2026-11-07 | 2027-04-14 |  |  |
|  | 6 | **Excavation** |  | 2026-11-07 | 2027-01-16 |  |  |
| SDR-ST-CON-P1-1770 |  | Excavation Works Part 1 | 21d | 2026-11-07 | 2026-12-01 | SDR-ST-CON-P1-1200, SDR-ST-CON-P1-1720 SS+7d | 0.1d |
| SDR-ST-CON-P1-6130 |  | Excavation Works Part 2 | 21d | 2026-12-01 | 2026-12-26 | SDR-ST-CON-P1-1770 | 0.1d |
| SDR-ST-CON-P1-6140 |  | Excavation Works Part 3 | 18d | 2026-12-26 | 2027-01-16 | SDR-ST-CON-P1-6130 | 0.1d |
|  | 7 | **Pipe laying** |  | 2027-01-16 | 2027-02-11 |  |  |
| SDR-ST-CON-P1-2500 |  | Pipe Laying | 21d | 2027-01-16 | 2027-02-11 | SDR-ST-CON-P1-6140 | 0.1d |
|  | 8 | **Backfilling** |  | 2027-02-11 | 2027-03-22 |  |  |
| SDR-ST-CON-P1-3280 |  | Backfilling Works | 20d | 2027-02-11 | 2027-03-22 | SDR-ST-CON-P1-2500, SDR-ST-CON-P3-1490 | 0d |
|  | 9 | **Pulling Cable** |  | 2027-03-22 | 2027-04-14 |  |  |
| SDR-ST-CON-P1-4250 |  | Pulling Cable | 20.1d | 2027-03-22 | 2027-04-14 | SDR-ST-CON-P1-2500, SDR-ST-CON-P1-3280 | 0d |
|  | 1 | **ROAD-01 N 01** |  | 2026-11-15 | 2027-04-18 |  |  |
|  | 6 | **Excavation** |  | 2026-11-15 | 2027-01-24 |  |  |
| SDR-ST-CON-P1-1730 |  | Excavation Works Part 1 | 21d | 2026-11-15 | 2026-12-09 | SDR-ST-ENG-AP-1080, SDR-ST-CON-P1-1770 SS+7d | 0.3d |
| SDR-ST-CON-P1-6150 |  | Excavation Works Part 2 | 20d | 2026-12-09 | 2027-01-02 | SDR-ST-CON-P1-1730, SDR-ST-MILS-1070 | 7.3d |
| SDR-ST-CON-P1-6160 |  | Excavation Works Part 3 | 19d | 2027-01-02 | 2027-01-24 | SDR-ST-CON-P1-6150 | 7.3d |
|  | 7 | **Pipe laying** |  | 2027-01-24 | 2027-02-24 |  |  |
| SDR-ST-CON-P1-2430 |  | Pipe Laying | 20d | 2027-01-24 | 2027-02-24 | SDR-ST-CON-P1-6160, SDR-ST-CON-P1-4640 | 7.3d |
|  | 8 | **Backfilling** |  | 2027-02-24 | 2027-03-28 |  |  |
| SDR-ST-CON-P1-3160 |  | Backfilling Works | 19d | 2027-02-24 | 2027-03-28 | SDR-ST-CON-P1-2430, SDR-ST-CON-P1-5720, SDR-ST-CON-P1-5570, SDR-ST-CON-P1-5710, SDR-ST-CON-P1-5730 | 7.3d |
|  | 9 | **Pulling Cable** |  | 2027-03-28 | 2027-04-18 |  |  |
| SDR-ST-CON-P1-4010 |  | Pulling Cable | 18d | 2027-03-28 | 2027-04-18 | SDR-ST-CON-P1-2430, SDR-ST-CON-P1-3160, SDR-ST-CON-P1-4910, SDR-ST-CON-P1-4520 | 7.3d |
|  | 6 | **ROAD - 02** |  | 2026-11-23 | 2027-05-12 |  |  |
|  | 3 | **ROAD-01 From 0 to 400 m (9) 2 Way 150 mm** |  | 2026-11-23 | 2027-04-26 |  |  |
|  | 6 | **Excavation** |  | 2026-11-23 | 2027-02-01 |  |  |
| SDR-ST-CON-P1-1920 |  | Excavation Works Part 1 | 21d | 2026-11-23 | 2026-12-17 | SDR-ST-CON-P1-1300, SDR-ST-CON-P1-1730 SS+7d | 0.3d |
| SDR-ST-CON-P1-6170 |  | Excavation Works Part 2 | 20d | 2026-12-17 | 2027-01-10 | SDR-ST-CON-P1-1920 | 0.3d |
| SDR-ST-CON-P1-6180 |  | Excavation Works Part 3 | 19d | 2027-01-10 | 2027-02-01 | SDR-ST-CON-P1-6170, SDR-ST-CON-P1-4020, SDR-ST-CON-P1-4310 | 0.3d |
|  | 7 | **Pipe laying** |  | 2027-02-01 | 2027-03-14 |  |  |
| SDR-ST-CON-P1-2660 |  | Pipe Laying | 20d | 2027-02-01 | 2027-03-14 | SDR-ST-CON-P1-6180, SDR-ST-CON-P1-4740, SDR-ST-CON-P1-4880 | 0.3d |
|  | 8 | **Backfilling** |  | 2027-03-14 | 2027-04-05 |  |  |
| SDR-ST-CON-P1-3430 |  | Backfilling Works | 19d | 2027-03-14 | 2027-04-05 | SDR-ST-CON-P1-2660 | 0.3d |
|  | 9 | **Pulling Cable** |  | 2027-04-05 | 2027-04-26 |  |  |
| SDR-ST-CON-P1-4320 |  | Pulling Cable | 18d | 2027-04-05 | 2027-04-26 | SDR-ST-CON-P1-2660, SDR-ST-CON-P1-3430 | 0.3d |
|  | 2 | **ROAD-01 From 400 to 900 m (10) 2 Way 150 mm** |  | 2026-12-01 | 2027-05-05 |  |  |
|  | 6 | **Excavation** |  | 2026-12-01 | 2027-02-13 |  |  |
| SDR-ST-CON-P1-1840 |  | Excavation Works Part 1 | 21d | 2026-12-01 | 2026-12-26 | SDR-ST-CON-P1-1250, SDR-ST-CON-P1-1920 SS+7d | 0.7d |
| SDR-ST-CON-P1-6190 |  | Excavation Works Part 2 | 20d | 2026-12-26 | 2027-01-18 | SDR-ST-CON-P1-1840, SDR-ST-MILS-1070 | 8.2d |
| SDR-ST-CON-P1-6200 |  | Excavation Works Part 3 | 20d | 2027-01-18 | 2027-02-13 | SDR-ST-CON-P1-6190 | 8.2d |
|  | 7 | **Pipe laying** |  | 2027-02-13 | 2027-03-23 |  |  |
| SDR-ST-CON-P1-2590 |  | Pipe Laying | 20d | 2027-02-13 | 2027-03-23 | SDR-ST-CON-P1-1840, SDR-ST-CON-P1-6200, SDR-ST-MILS-1100 | 8.2d |
|  | 8 | **Backfilling** |  | 2027-03-23 | 2027-04-14 |  |  |
| SDR-ST-CON-P1-3340 |  | Backfilling Works | 19d | 2027-03-23 | 2027-04-14 | SDR-ST-CON-P1-2590 | 8.2d |
|  | 9 | **Pulling Cable** |  | 2027-04-14 | 2027-05-05 |  |  |
| SDR-ST-CON-P1-4050 |  | Pulling Cable | 18d | 2027-04-14 | 2027-05-05 | SDR-ST-CON-P1-2590, SDR-ST-CON-P1-3340 | 8.2d |
|  | 1 | **ROAD-01 From 900 to 1239 m (11) 2 Way 150 mm** |  | 2026-12-09 | 2027-05-12 |  |  |
|  | 6 | **Excavation** |  | 2026-12-09 | 2027-02-25 |  |  |
| SDR-ST-CON-P1-2000 |  | Excavation Works Part 1 | 21d | 2026-12-09 | 2027-01-03 | SDR-ST-CON-P1-1350, SDR-ST-CON-P1-1840 SS+7d | 0.7d |
| SDR-ST-CON-P1-6210 |  | Excavation Works Part 2 | 20d | 2027-01-03 | 2027-01-26 | SDR-ST-CON-P1-2000 | 0.7d |
| SDR-ST-CON-P1-6220 |  | Excavation Works Part 3 | 19d | 2027-01-26 | 2027-02-25 | SDR-ST-CON-P1-6210 | 2.2d |
|  | 7 | **Pipe laying** |  | 2027-02-25 | 2027-03-30 |  |  |
| SDR-ST-CON-P1-2750 |  | Pipe Laying | 20d | 2027-02-25 | 2027-03-30 | SDR-ST-CON-P1-6220, SDR-ST-CON-P1-4660 | 2.2d |
|  | 8 | **Backfilling** |  | 2027-03-30 | 2027-04-21 |  |  |
| SDR-ST-CON-P1-3460 |  | Backfilling Works | 19d | 2027-03-30 | 2027-04-21 | SDR-ST-CON-P1-2750 | 2.2d |
|  | 9 | **Pulling Cable** |  | 2027-04-21 | 2027-05-12 |  |  |
| SDR-ST-CON-P1-3980 |  | Pulling Cable | 18d | 2027-04-21 | 2027-05-12 | SDR-ST-CON-P1-2750, SDR-ST-CON-P1-3460 | 2.2d |
|  | 1 | **Earthing System** |  | 2027-01-26 | 2027-02-18 |  |  |
| SDR-ST-CON-P1-4840 |  | Installation of Earthing System Including lighting poles circuits | 16d | 2027-01-26 | 2027-02-18 | SDR-ST-CON-P1-6210 | 0.7d |
|  | 16 | **Street Lighting Network** |  | 2026-08-27 | 2027-07-17 |  |  |
|  | 7 | **ROAD - 01** |  | 2026-08-27 | 2027-07-17 |  |  |
|  | 2 | **ROAD-01 From 470 to 1125 m (6)** |  | 2026-08-27 | 2027-02-06 |  |  |

| ID | WBS | Task | Duration | Start | Finish | Predecessors | Total float |
| --- | --- | --- | --- | --- | --- | --- | --- |
|  | 10 | **Excavation** |  | 2026-08-27 | 2026-11-12 |  |  |
| SDR-ST-CON-P1-1180 |  | Excavation for LV Cable trench Section 1 | 21d | 2026-08-27 | 2026-09-21 | SDR-ST-CON-P1-1190 SS, SDR-ST-ENG-AP-1080 | 1.3d |
| SDR-ST-CON-P1-1560 |  | Excavation for LV Cable trench Section 2 | 21d | 2026-09-24 | 2026-10-19 | SDR-ST-CON-P1-1180 FS+2d | 7.7d |
| SDR-ST-CON-P1-2250 |  | Excavation for LV Cable trench Section 3 | 21d | 2026-10-19 | 2026-11-12 | SDR-ST-CON-P1-1560 | 7.7d |
|  | 11 | **Install Footings** |  | 2026-11-12 | 2026-12-07 |  |  |
| SDR-ST-CON-P1-2980 |  | Install Footings | 21d | 2026-11-12 | 2026-12-07 | SDR-ST-CON-P1-2250 | 7.7d |
|  | 12 | **Backfilling** |  | 2026-12-07 | 2026-12-19 |  |  |
| SDR-ST-CON-P1-3870 |  | Backfilling over LV Cables of Street lighting | 10d | 2026-12-07 | 2026-12-19 | SDR-ST-CON-P1-2980 | 7.7d |
|  | 13 | **Install pole** |  | 2026-12-19 | 2027-02-06 |  |  |
| SDR-ST-CON-P1-4420 |  | Install Pole Part 1 | 21d | 2026-12-19 | 2027-01-12 | SDR-ST-CON-P1-3870 | 7.7d |
| SDR-ST-CON-P1-5170 |  | Install Pole Part 2 | 21d | 2027-01-12 | 2027-02-06 | SDR-ST-CON-P1-4420 | 7.7d |
|  | 3 | **ROAD-01 From 1125 to 1765 m (7)** |  | 2026-09-21 | 2027-03-08 |  |  |
|  | 10 | **Excavation** |  | 2026-09-21 | 2026-12-07 |  |  |
| SDR-ST-CON-P1-1590 |  | Excavation for LV Cable trench Section 1 | 21d | 2026-09-21 | 2026-10-17 | SDR-ST-CON-P1-1210 | 0d |
| SDR-ST-CON-P1-2390 |  | Excavation for LV Cable trench Section 2 | 21d | 2026-10-19 | 2026-11-12 | SDR-ST-CON-P1-1590 FS+2d | 0d |
| SDR-ST-CON-P1-3120 |  | Excavation for LV Cable trench Section 3 | 21d | 2026-11-12 | 2026-12-07 | SDR-ST-CON-P1-2390 | 0d |
|  | 11 | **Install Footings** |  | 2026-12-07 | 2026-12-24 |  |  |
| SDR-ST-CON-P1-3990 |  | Install Footings | 15d | 2026-12-07 | 2026-12-24 | SDR-ST-CON-P1-3120 | 0d |
|  | 12 | **Backfilling** |  | 2026-12-24 | 2027-01-05 |  |  |
| SDR-ST-CON-P1-4680 |  | Backfilling over LV Cables of Street lighting | 10d | 2026-12-24 | 2027-01-05 | SDR-ST-CON-P1-3990 | 0d |
|  | 13 | **Install pole** |  | 2027-01-05 | 2027-03-08 |  |  |
| SDR-ST-CON-P1-5050 |  | Install Pole Part 1 | 21d | 2027-01-05 | 2027-01-30 | SDR-ST-CON-P1-4680 | 0d |
| SDR-ST-CON-P1-5760 |  | Install Pole Part 2 | 21d | 2027-01-30 | 2027-03-08 | SDR-ST-CON-P1-5050 | 0d |
|  | 1 | **ROAD-01 From 0 to 470 m (3)** |  | 2026-08-31 | 2027-03-20 |  |  |
|  | 10 | **Excavation** |  | 2026-08-31 | 2026-11-14 |  |  |
| SDR-ST-CON-P1-1500 |  | Excavation for LV Cable trench Section 1 | 21d | 2026-08-31 | 2026-09-26 | SDR-ST-CON-P1-1200 | 0.6d |
| SDR-ST-CON-P1-2320 |  | Excavation for LV Cable trench Section 2 | 21d | 2026-09-26 | 2026-10-20 | SDR-ST-CON-P1-1500 | 4.7d |
| SDR-ST-CON-P1-3040 |  | Excavation for LV Cable trench Section 3 | 21d | 2026-10-20 | 2026-11-14 | SDR-ST-CON-P1-2320 | 4.7d |
|  | 11 | **Install Footings** |  | 2026-11-14 | 2026-12-08 |  |  |
| SDR-ST-CON-P1-3920 |  | Install Footings | 21d | 2026-11-14 | 2026-12-08 | SDR-ST-CON-P1-3040 | 4.7d |
|  | 12 | **Backfilling** |  | 2026-12-08 | 2026-12-22 |  |  |
| SDR-ST-CON-P1-4850 |  | Backfilling over LV Cables of Street lighting | 12.3d | 2026-12-08 | 2026-12-22 | SDR-ST-CON-P1-3920 | 4.7d |
|  | 13 | **Install pole** |  | 2026-12-22 | 2027-03-20 |  |  |
| SDR-ST-CON-P1-5330 |  | Install Pole Part 1 | 21d | 2026-12-22 | 2027-01-16 | SDR-ST-CON-P1-4850 | 4.7d |
| SDR-ST-CON-P1-5780 |  | Install Pole Part 2 | 21d | 2027-01-16 | 2027-02-11 | SDR-ST-CON-P1-5330, SDR-ST-CON-P1-4660, SDR-ST-CON-P1-5230, SDR-ST-CON-P1-5180, SDR-ST-CON-P1-4160, SDR-ST-CON-P1-4270 | 4.7d |
| SDR-ST-CON-P1-6070 |  | Install Pole Part 3 | 21d | 2027-02-20 | 2027-03-13 | SDR-ST-CON-P1-5780, SDR-ST-PRO-MS-1200, SDR-ST-CON-P1-5790, SDR-ST-CON-P1-5170, SDR-ST-CON-P1-4840, SDR-ST-CON-P1-4800 FS+2d, SDR-ST-CON-P1-5000, SDR-ST-CON-P1-4820, SDR-ST-CON-P1-4900, SDR-ST-CON-P1-5240 | 0.1d |
| SDR-ST-CON-P1-6080 |  | Install Pole Part 4 | 7d | 2027-03-13 | 2027-03-20 | SDR-ST-CON-P1-6070, SDR-ST-CON-P3-1490, SDR-ST-CON-P1-5750 | 13.5d |
|  | 4 | **ROAD-01 N (1)** |  | 2026-08-31 | 2027-02-08 |  |  |
|  | 10 | **Excavation** |  | 2026-08-31 | 2026-11-16 |  |  |
| SDR-ST-CON-P1-1700 |  | Excavation for LV Cable trench Section 1 | 21d | 2026-08-31 | 2026-09-26 | SDR-ST-CON-P1-1500 SS, SDR-ST-ENG-AP-1080 | 1.5d |
| SDR-ST-CON-P1-2410 |  | Excavation for LV Cable trench Section 2 | 21d | 2026-09-28 | 2026-10-22 | SDR-ST-CON-P1-1700 FS+2d | 6d |
| SDR-ST-CON-P1-3190 |  | Excavation for LV Cable trench Section 3 | 21d | 2026-10-22 | 2026-11-16 | SDR-ST-CON-P1-2410 | 6d |
|  | 11 | **Install Footings** |  | 2026-11-16 | 2026-12-10 |  |  |
| SDR-ST-CON-P1-4110 |  | Install Footings | 21d | 2026-11-16 | 2026-12-10 | SDR-ST-CON-P1-3190 | 6d |
|  | 12 | **Backfilling** |  | 2026-12-10 | 2026-12-21 |  |  |
| SDR-ST-CON-P1-4960 |  | Backfilling over LV Cables of Street lighting | 9d | 2026-12-10 | 2026-12-21 | SDR-ST-CON-P1-4110 | 6d |
|  | 13 | **Install pole** |  | 2026-12-21 | 2027-02-08 |  |  |
| SDR-ST-CON-P1-5340 |  | Install Pole Part 1 | 21d | 2026-12-21 | 2027-01-14 | SDR-ST-CON-P1-4960 | 6d |
| SDR-ST-CON-P1-5790 |  | Install Pole Part 2 | 21d | 2027-01-14 | 2027-02-08 | SDR-ST-CON-P1-5340, SDR-ST-CON-P1-5130 | 6d |
|  | 5 | **Road Crossing & Drawpits** |  | 2026-08-31 | 2026-12-12 |  |  |
|  | 1 | **ROAD - 01** |  | 2026-08-31 | 2026-12-12 |  |  |
|  | 1 | **ROAD-01 From 470 to 1125 m (6)** |  | 2026-09-21 | 2026-12-12 |  |  |
|  | 1 | **Road crossing Ducts & Drawpits** |  | 2026-09-21 | 2026-12-12 |  |  |
|  | 1 | **Excavation** |  | 2026-09-21 | 2026-10-17 |  |  |
| SDR-ST-CON-P1-1450 |  | Excavation for GRP Pipes Section 1 | 21d | 2026-09-21 | 2026-10-17 | SDR-ST-CON-P1-1180 | 7.2d |
|  | 7 | **bedding Works** |  | 2026-10-17 | 2026-11-10 |  |  |
| SDR-ST-CON-P1-2160 |  | Sand bedding for GRP Pipes | 21d | 2026-10-17 | 2026-11-10 | SDR-ST-CON-P1-1450 | 7.2d |
|  | 2 | **Pipes Laying** |  | 2026-11-10 | 2026-11-26 |  |  |
| SDR-ST-CON-P1-2890 |  | Install ST GRP Pipes | 14d | 2026-11-10 | 2026-11-26 | SDR-ST-CON-P1-2160 | 7.2d |
|  | 6 | **Testing** |  | 2026-11-26 | 2026-12-05 |  |  |
| SDR-ST-CON-P1-3530 |  | Testing ST GRP Pipes | 7d | 2026-11-26 | 2026-12-05 | SDR-ST-CON-P1-2890 | 7.2d |
|  | 3 | **Backfilling** |  | 2026-12-05 | 2026-12-12 |  |  |
| SDR-ST-CON-P1-3810 |  | Backfilling ST GRP Pipes | 6d | 2026-12-05 | 2026-12-12 | SDR-ST-CON-P1-3530 | 7.2d |
|  | 2 | **ROAD-01 From 1125 to 1765 m (7)** |  | 2026-09-21 | 2026-12-10 |  |  |
|  | 1 | **Road crossing Ducts & Drawpits** |  | 2026-09-21 | 2026-12-10 |  |  |
|  | 1 | **Excavation** |  | 2026-09-21 | 2026-10-17 |  |  |
| SDR-ST-CON-P1-1600 |  | Excavation for GRP Pipes Section 1 | 21d | 2026-09-21 | 2026-10-17 | SDR-ST-CON-P1-1590 SS, SDR-ST-ENG-AP-1080 | 0.1d |
|  | 7 | **bedding Works** |  | 2026-10-17 | 2026-11-03 |  |  |
| SDR-ST-CON-P1-2280 |  | Sand bedding for GRP Pipes | 15d | 2026-10-17 | 2026-11-03 | SDR-ST-CON-P1-1600 | 0.1d |
|  | 2 | **Pipes Laying** |  | 2026-11-03 | 2026-11-17 |  |  |

| ID | WBS | Task | Duration | Start | Finish | Predecessors | Total float |
| --- | --- | --- | --- | --- | --- | --- | --- |
| SDR-ST-CON-P1-2800 |  | Install ST GRP Pipes | 12d | 2026-11-03 | 2026-11-17 | SDR-ST-CON-P1-2280 | 0.1d |
|  | 6 | **Testing** |  | 2026-11-17 | 2026-11-28 |  |  |
| SDR-ST-CON-P1-3250 |  | Testing ST GRP Pipes | 9d | 2026-11-17 | 2026-11-28 | SDR-ST-CON-P1-2800 | 0.1d |
|  | 3 | **Backfilling** |  | 2026-11-28 | 2026-12-10 |  |  |
| SDR-ST-CON-P1-3670 |  | Backfilling ST GRP Pipes | 11.1d | 2026-11-28 | 2026-12-10 | SDR-ST-CON-P1-3250 | 0.1d |
|  | 3 | **ROAD-01 From 0 to 470 m (3)** |  | 2026-08-31 | 2026-11-23 |  |  |
|  | 1 | **Road crossing Ducts & Drawpits** |  | 2026-08-31 | 2026-11-23 |  |  |
|  | 1 | **Excavation** |  | 2026-08-31 | 2026-09-26 |  |  |
| SDR-ST-CON-P1-1510 |  | Excavation for GRP Pipes Section 1 | 21d | 2026-08-31 | 2026-09-26 | SDR-ST-CON-P1-1500 SS, SDR-ST-ENG-AP-1080 | 7d |
|  | 7 | **bedding Works** |  | 2026-09-26 | 2026-10-20 |  |  |
| SDR-ST-CON-P1-2180 |  | Sand bedding for GRP Pipes | 21d | 2026-09-26 | 2026-10-20 | SDR-ST-CON-P1-1510 | 7d |
|  | 2 | **Pipes Laying** |  | 2026-10-20 | 2026-11-04 |  |  |
| SDR-ST-CON-P1-2930 |  | Install ST GRP Pipes | 13d | 2026-10-20 | 2026-11-04 | SDR-ST-CON-P1-2180 | 7d |
|  | 6 | **Testing** |  | 2026-11-04 | 2026-11-11 |  |  |
| SDR-ST-CON-P1-3510 |  | Testing ST GRP Pipes | 6d | 2026-11-04 | 2026-11-11 | SDR-ST-CON-P1-2930 | 7d |
|  | 3 | **Backfilling** |  | 2026-11-11 | 2026-11-23 |  |  |
| SDR-ST-CON-P1-3760 |  | Backfilling ST GRP Pipes | 10d | 2026-11-11 | 2026-11-23 | SDR-ST-CON-P1-3510 | 7d |
|  | 4 | **ROAD-01 N (1)** |  | 2026-08-31 | 2026-11-21 |  |  |
|  | 1 | **Road crossing Ducts & Drawpits** |  | 2026-08-31 | 2026-11-21 |  |  |
|  | 1 | **Excavation** |  | 2026-08-31 | 2026-09-26 |  |  |
| SDR-ST-CON-P1-1710 |  | Excavation for GRP Pipes Section 1 | 21d | 2026-08-31 | 2026-09-26 | SDR-ST-CON-P1-1700 SS, SDR-ST-ENG-AP-1080 | 9d |
|  | 7 | **bedding Works** |  | 2026-09-26 | 2026-10-20 |  |  |
| SDR-ST-CON-P1-2360 |  | Sand bedding for GRP Pipes | 21d | 2026-09-26 | 2026-10-20 | SDR-ST-CON-P1-1710 | 9d |
|  | 2 | **Pipes Laying** |  | 2026-10-20 | 2026-11-01 |  |  |
| SDR-ST-CON-P1-3090 |  | Install ST GRP Pipes | 10d | 2026-10-20 | 2026-11-01 | SDR-ST-CON-P1-2360 | 9d |
|  | 6 | **Testing** |  | 2026-11-01 | 2026-11-12 |  |  |
| SDR-ST-CON-P1-3520 |  | Testing ST GRP Pipes | 10d | 2026-11-01 | 2026-11-12 | SDR-ST-CON-P1-3090 | 9d |
|  | 3 | **Backfilling** |  | 2026-11-12 | 2026-11-21 |  |  |
| SDR-ST-CON-P1-3930 |  | Backfilling ST GRP Pipes | 7d | 2026-11-12 | 2026-11-21 | SDR-ST-CON-P1-3520 | 9d |
|  | 11 | **Ring Main Unit** |  | 2027-04-03 | 2027-06-17 |  |  |
|  | 1 | **Leveling** |  | 2027-04-03 | 2027-04-26 |  |  |
| SDR-ST-CON-P1-5840 |  | Ring Main Unit leveling | 20d | 2027-04-03 | 2027-04-26 | SDR-ST-CON-P1-5780, SDR-ST-CON-P3-1460, SDR-ST-CON-P1-6080, SDR-ST-CON-P1-3900 | 0d |
|  | 2 | **Lean Concrete** |  | 2027-04-26 | 2027-05-25 |  |  |
| SDR-ST-CON-P1-5890 |  | Ring Main Unit Lean Concrete | 20d | 2027-04-26 | 2027-05-25 | SDR-ST-CON-P1-5840, SDR-ST-CON-P1-4070 | 5.6d |
|  | 3 | **Installation** |  | 2027-05-25 | 2027-06-17 |  |  |
| SDR-ST-CON-P1-5920 |  | Ring Main Unit installation for Street Lighting | 20d | 2027-05-25 | 2027-06-17 | SDR-ST-CON-P1-5890, SDR-ST-MILS-1080, SDR-ST-MILS-1060, SDR-ST-CON-P1-5800 | 5.6d |
|  | 12 | **Feeder Pillars** |  | 2027-04-26 | 2027-07-12 |  |  |
|  | 1 | **Leveling** |  | 2027-04-26 | 2027-05-26 |  |  |
| SDR-ST-CON-P1-5880 |  | Feeder Pillars Leveling | 21d | 2027-04-26 | 2027-05-26 | SDR-ST-CON-P1-5840, SDR-ST-CON-P1-4320, SDR-ST-CON-P1-4010, SDR-ST-CON-P1-4250, SDR-ST-CON-P1-4000 | 0d |
|  | 2 | **Lean Concrete** |  | 2027-05-26 | 2027-06-19 |  |  |
| SDR-ST-CON-P1-5930 |  | Feeder Pillars Lean Concrete | 20d | 2027-05-26 | 2027-06-19 | SDR-ST-CON-P1-5880, SDR-ST-MILS-1070, SDR-ST-MILS-1080, SDR-ST-CON-P3-1500 | 0d |
|  | 3 | **Installation** |  | 2027-06-19 | 2027-07-12 |  |  |
| SDR-ST-CON-P1-6000 |  | Feeder Pillars Installation | 20d | 2027-06-19 | 2027-07-12 | SDR-ST-CON-P1-5930 | 0d |
|  | 13 | **KWH Frame** |  | 2027-05-29 | 2027-07-17 |  |  |
|  | 1 | **Leveling** |  | 2027-05-29 | 2027-06-20 |  |  |
| SDR-ST-CON-P1-5940 |  | KWH meter mounting frame Leveling | 20d | 2027-05-29 | 2027-06-20 | SDR-ST-CON-P1-5880, SDR-ST-CO-1010 | 3d |
|  | 2 | **Lean Concrete** |  | 2027-06-21 | 2027-07-07 |  |  |
| SDR-ST-CON-P1-6010 |  | KWH meter mounting frame Lean Concrete | 15d | 2027-06-21 | 2027-07-07 | SDR-ST-CON-P1-5940 | 3d |
|  | 3 | **Installation** |  | 2027-07-08 | 2027-07-17 |  |  |
| SDR-ST-CON-P1-6040 |  | KWH meter mounting frame installation | 8d | 2027-07-08 | 2027-07-17 | SDR-ST-CON-P1-6010 | 3d |
|  | 14 | **Street Lighting Sub-station** |  | 2027-06-05 | 2027-07-17 |  |  |
|  | 1 | **Leveling** |  | 2027-06-05 | 2027-06-27 |  |  |
| SDR-ST-CON-P1-5950 |  | Unit Substation Leveling Part 1 | 20d | 2027-06-05 | 2027-06-27 | SDR-ST-CON-P1-5940 SS+6d | 3d |
| SDR-ST-CON-P1-5960 |  | Unit Substation Leveling Part 2 | 20d | 2027-06-05 | 2027-06-27 | SDR-ST-CON-P1-5950 SS, SDR-ST-ENG-AP-1080 | 3d |
|  | 2 | **Lean Concrete** |  | 2027-06-28 | 2027-07-11 |  |  |
| SDR-ST-CON-P1-6020 |  | Unit Substation Lean Concrete | 12d | 2027-06-28 | 2027-07-11 | SDR-ST-CON-P1-5950, SDR-ST-CON-P1-5960 | 3d |
|  | 3 | **Installation** |  | 2027-07-12 | 2027-07-17 |  |  |
| SDR-ST-CON-P1-6050 |  | Unit Substation Install for Street Lighting | 5d | 2027-07-12 | 2027-07-17 | SDR-ST-CON-P1-6020 | 3d |
|  | 8 | **ROAD - 02** |  | 2026-09-08 | 2027-07-17 |  |  |
|  | 6 | **ROAD-01 From 0 to 400 m (9) 2 Way 110 mm** |  | 2026-09-08 | 2026-12-29 |  |  |
|  | 10 | **Excavation** |  | 2026-09-08 | 2026-11-04 |  |  |
| SDR-ST-CON-P1-1310 |  | Excavation for LV Cable trench Section 1 | 15d | 2026-09-08 | 2026-09-27 | SDR-ST-CON-P1-1300 SS, SDR-ST-ENG-AP-1090 | 0d |
| SDR-ST-CON-P1-1780 |  | Excavation for LV Cable trench Section 2 | 15d | 2026-09-29 | 2026-10-17 | SDR-ST-CON-P1-1310 FS+2d | 6.9d |
| SDR-ST-CON-P1-2350 |  | Excavation for LV Cable trench Section 3 | 16d | 2026-10-17 | 2026-11-04 | SDR-ST-CON-P1-1780 | 6.9d |
|  | 11 | **Install Footings** |  | 2026-11-04 | 2026-11-22 |  |  |
| SDR-ST-CON-P1-2860 |  | Install Footings | 15d | 2026-11-04 | 2026-11-22 | SDR-ST-CON-P1-2350 | 6.9d |
|  | 12 | **Backfilling** |  | 2026-11-22 | 2026-12-10 |  |  |
| SDR-ST-CON-P1-3500 |  | Backfilling over LV Cables of Street lighting | 16d | 2026-11-22 | 2026-12-10 | SDR-ST-CON-P1-2860 | 6.9d |
|  | 13 | **Install pole** |  | 2026-12-10 | 2026-12-29 |  |  |
| SDR-ST-CON-P1-4260 |  | Install Pole Part 1 | 8d | 2026-12-10 | 2026-12-20 | SDR-ST-CON-P1-3500 | 6.9d |

| ID | WBS | Task | Duration | Start | Finish | Predecessors | Total float |
| --- | --- | --- | --- | --- | --- | --- | --- |
| SDR-ST-CON-P1-4570 |  | Install Pole Part 2 | 8d | 2026-12-20 | 2026-12-29 | SDR-ST-CON-P1-4260 | 6.9d |
|  | 5 | **ROAD-01 From 400 to 900 m (10) 4 Way 110 mm** |  | 2026-09-08 | 2026-12-24 |  |  |
|  | 10 | **Excavation** |  | 2026-09-08 | 2026-11-03 |  |  |
| SDR-ST-CON-P1-1260 |  | Excavation for LV Cable trench Section 1 | 15d | 2026-09-08 | 2026-09-27 | SDR-ST-CON-P1-1250 SS, SDR-ST-ENG-AP-1090 | 0d |
| SDR-ST-CON-P1-1760 |  | Excavation for LV Cable trench Section 2 | 15d | 2026-09-29 | 2026-10-17 | SDR-ST-CON-P1-1260 FS+2d | 1.5d |
| SDR-ST-CON-P1-2260 |  | Excavation for LV Cable trench Section 3 | 15d | 2026-10-17 | 2026-11-03 | SDR-ST-CON-P1-1760 | 1.5d |
|  | 11 | **Install Footings** |  | 2026-11-03 | 2026-11-19 |  |  |
| SDR-ST-CON-P1-2770 |  | Install Footings | 14d | 2026-11-03 | 2026-11-19 | SDR-ST-CON-P1-2260 | 1.5d |
|  | 12 | **Backfilling** |  | 2026-11-19 | 2026-12-06 |  |  |
| SDR-ST-CON-P1-3350 |  | Backfilling over LV Cables of Street lighting | 14d | 2026-11-19 | 2026-12-06 | SDR-ST-CON-P1-2770 | 1.5d |
|  | 13 | **Install pole** |  | 2026-12-06 | 2026-12-24 |  |  |
| SDR-ST-CON-P1-3940 |  | Install Pole Part 1 | 8d | 2026-12-06 | 2026-12-15 | SDR-ST-CON-P1-3350 | 1.5d |
| SDR-ST-CON-P1-4400 |  | Install Pole Part 2 | 8d | 2026-12-15 | 2026-12-24 | SDR-ST-CON-P1-3940, SDR-ST-MILS-1080 | 1.5d |
|  | 4 | **ROAD-01 From 900 to 1239 m (11) 2 Way 110 mm** |  | 2026-09-17 | 2027-01-12 |  |  |
|  | 10 | **Excavation** |  | 2026-09-17 | 2026-11-09 |  |  |
| SDR-ST-CON-P1-1360 |  | Excavation for LV Cable trench Section 1 | 14d | 2026-09-17 | 2026-10-05 | SDR-ST-CON-P1-1350 SS, SDR-ST-ENG-AP-1090 | 4d |
| SDR-ST-CON-P1-1900 |  | Excavation for LV Cable trench Section 2 | 14d | 2026-10-07 | 2026-10-24 | SDR-ST-CON-P1-1360 FS+2d | 4d |
| SDR-ST-CON-P1-2400 |  | Excavation for LV Cable trench Section 3 | 14d | 2026-10-24 | 2026-11-09 | SDR-ST-CON-P1-1900 | 4d |
|  | 11 | **Install Footings** |  | 2026-11-09 | 2026-11-25 |  |  |
| SDR-ST-CON-P1-2840 |  | Install Footings | 14d | 2026-11-09 | 2026-11-25 | SDR-ST-CON-P1-2400 | 4d |
|  | 12 | **Backfilling** |  | 2026-11-25 | 2026-12-12 |  |  |
| SDR-ST-CON-P1-3470 |  | Backfilling over LV Cables of Street lighting | 14d | 2026-11-25 | 2026-12-12 | SDR-ST-CON-P1-2840 | 4d |
|  | 13 | **Install pole** |  | 2026-12-12 | 2027-01-12 |  |  |
| SDR-ST-CON-P1-4080 |  | Install Pole Part 1 | 13d | 2026-12-12 | 2026-12-27 | SDR-ST-CON-P1-3470 | 4d |
| SDR-ST-CON-P1-4610 |  | Install Pole Part 2 | 14d | 2026-12-27 | 2027-01-12 | SDR-ST-CON-P1-4080 | 4d |
|  | 1 | **Road Crossing & Drawpits** |  | 2026-09-08 | 2026-12-09 |  |  |
|  | 2 | **ROAD - 02** |  | 2026-09-08 | 2026-12-09 |  |  |
|  | 1 | **ROAD-01 From 0 to 400 m (9) 2 Way 110 mm** |  | 2026-09-08 | 2026-12-09 |  |  |
|  | 1 | **Road crossing Ducts & Drawpits** |  | 2026-09-08 | 2026-12-09 |  |  |
|  | 1 | **Excavation** |  | 2026-09-08 | 2026-10-04 |  |  |
| SDR-ST-CON-P1-1320 |  | Excavation for GRP Pipes Section 1 | 21d | 2026-09-08 | 2026-10-04 | SDR-ST-CON-P1-1310 SS, SDR-ST-ENG-AP-1090 | 9.2d |
|  | 7 | **bedding Works** |  | 2026-10-04 | 2026-10-25 |  |  |
| SDR-ST-CON-P1-1950 |  | Sand bedding for GRP Pipes | 18d | 2026-10-04 | 2026-10-25 | SDR-ST-CON-P1-1320 | 9.2d |
|  | 2 | **Pipes Laying** |  | 2026-10-25 | 2026-11-12 |  |  |
| SDR-ST-CON-P1-2560 |  | Install ST GRP Pipes | 16d | 2026-10-25 | 2026-11-12 | SDR-ST-CON-P1-1950 | 9.2d |
|  | 6 | **Testing** |  | 2026-11-12 | 2026-11-26 |  |  |
| SDR-ST-CON-P1-3200 |  | Testing ST GRP Pipes | 12d | 2026-11-12 | 2026-11-26 | SDR-ST-CON-P1-2560 | 9.2d |
|  | 3 | **Backfilling** |  | 2026-11-26 | 2026-12-09 |  |  |
| SDR-ST-CON-P1-3700 |  | Backfilling ST GRP Pipes | 11d | 2026-11-26 | 2026-12-09 | SDR-ST-CON-P1-3200 | 9.2d |
|  | 2 | **ROAD-01 From 400 to 900 m (10) 4 Way 110 mm** |  | 2026-09-08 | 2026-12-06 |  |  |
|  | 1 | **Road crossing Ducts & Drawpits** |  | 2026-09-08 | 2026-12-06 |  |  |
|  | 1 | **Excavation** |  | 2026-09-08 | 2026-10-04 |  |  |
| SDR-ST-CON-P1-1270 |  | Excavation for GRP Pipes Section 1 | 21d | 2026-09-08 | 2026-10-04 | SDR-ST-CON-P1-1260 SS, SDR-ST-ENG-AP-1090 | 13d |
|  | 7 | **bedding Works** |  | 2026-10-04 | 2026-10-24 |  |  |
| SDR-ST-CON-P1-1870 |  | Sand bedding for GRP Pipes | 17d | 2026-10-04 | 2026-10-24 | SDR-ST-CON-P1-1270 | 13d |
|  | 2 | **Pipes Laying** |  | 2026-10-24 | 2026-11-09 |  |  |
| SDR-ST-CON-P1-2470 |  | Install ST GRP Pipes | 14d | 2026-10-24 | 2026-11-09 | SDR-ST-CON-P1-1870 | 13d |
|  | 6 | **Testing** |  | 2026-11-09 | 2026-11-19 |  |  |
| SDR-ST-CON-P1-2970 |  | Testing ST GRP Pipes | 9d | 2026-11-09 | 2026-11-19 | SDR-ST-CON-P1-2470 | 13d |
|  | 3 | **Backfilling** |  | 2026-11-19 | 2026-12-06 |  |  |
| SDR-ST-CON-P1-3360 |  | Backfilling ST GRP Pipes | 14d | 2026-11-19 | 2026-12-06 | SDR-ST-CON-P1-2970 | 13d |
|  | 3 | **ROAD-01 From 900 to 1239 m (11) 2 Way 110 mm** |  | 2026-09-17 | 2026-12-09 |  |  |
|  | 1 | **Road crossing Ducts & Drawpits** |  | 2026-09-17 | 2026-12-09 |  |  |
|  | 1 | **Excavation** |  | 2026-09-17 | 2026-10-13 |  |  |
| SDR-ST-CON-P1-1370 |  | Excavation for GRP Pipes Section 1 | 21d | 2026-09-17 | 2026-10-13 | SDR-ST-CON-P1-1360 SS, SDR-ST-ENG-AP-1090 | 10d |
|  | 7 | **bedding Works** |  | 2026-10-13 | 2026-10-31 |  |  |
| SDR-ST-CON-P1-2060 |  | Sand bedding for GRP Pipes | 15d | 2026-10-13 | 2026-10-31 | SDR-ST-CON-P1-1370 | 10d |
|  | 2 | **Pipes Laying** |  | 2026-10-31 | 2026-11-16 |  |  |
| SDR-ST-CON-P1-2600 |  | Install ST GRP Pipes | 14d | 2026-10-31 | 2026-11-16 | SDR-ST-CON-P1-2060 | 10d |
|  | 6 | **Testing** |  | 2026-11-16 | 2026-11-25 |  |  |
| SDR-ST-CON-P1-3110 |  | Testing ST GRP Pipes | 8d | 2026-11-16 | 2026-11-25 | SDR-ST-CON-P1-2600 | 10d |
|  | 3 | **Backfilling** |  | 2026-11-25 | 2026-12-09 |  |  |
| SDR-ST-CON-P1-3480 |  | Backfilling ST GRP Pipes | 12d | 2026-11-25 | 2026-12-09 | SDR-ST-CON-P1-3110 | 10d |
|  | 11 | **Ring Main Unit** |  | 2027-04-11 | 2027-07-07 |  |  |
|  | 1 | **Leveling** |  | 2027-04-11 | 2027-05-04 |  |  |
| SDR-ST-CON-P1-5810 |  | Ring Main Unit leveling | 20d | 2027-04-11 | 2027-05-04 | SDR-ST-CON-P1-5760 FS+25d, SDR-ST-CON-P1-4000 | 0d |
|  | 2 | **Lean Concrete** |  | 2027-05-04 | 2027-06-02 |  |  |
| SDR-ST-CON-P1-5850 |  | Ring Main Unit Lean Concrete | 20d | 2027-05-04 | 2027-06-02 | SDR-ST-CON-P1-5810, SDR-ST-CON-P1-5390 | 0d |
|  | 3 | **Installation** |  | 2027-06-14 | 2027-07-07 |  |  |
| SDR-ST-CON-P1-5970 |  | Ring Main Unit installation for Street Lighting | 20d | 2027-06-14 | 2027-07-07 | SDR-ST-CON-P1-5850 FS+10d | 0d |

| ID | WBS | Task | Duration | Start | Finish | Predecessors | Total float |
| --- | --- | --- | --- | --- | --- | --- | --- |
|  | 12 | **Feeder Pillars** |  | 2027-04-11 | 2027-07-13 |  |  |
|  | 1 | **Leveling** |  | 2027-04-11 | 2027-05-04 |  |  |
| SDR-ST-CON-P1-5820 |  | Feeder Pillars Leveling | 20d | 2027-04-11 | 2027-05-04 | SDR-ST-CON-P1-5810 SS, SDR-ST-ENG-AP-1090 | 3.9d |
|  | 2 | **Lean Concrete** |  | 2027-05-04 | 2027-06-02 |  |  |
| SDR-ST-CON-P1-5860 |  | Feeder Pillars Lean Concrete | 20d | 2027-05-04 | 2027-06-02 | SDR-ST-CON-P1-5820 | 6.9d |
|  | 3 | **Installation** |  | 2027-06-20 | 2027-07-13 |  |  |
| SDR-ST-CON-P1-5980 |  | Feeder Pillars Installation | 20d | 2027-06-20 | 2027-07-13 | SDR-ST-CON-P1-5860 FS+15d | 6.9d |
|  | 13 | **KWH Frame** |  | 2027-04-12 | 2027-06-27 |  |  |
|  | 1 | **Leveling** |  | 2027-04-12 | 2027-05-05 |  |  |
| SDR-ST-CON-P1-5830 |  | KWH meter mounting frame Leveling | 20d | 2027-04-12 | 2027-05-05 | SDR-ST-CON-P1-5820 SS+1d, SDR-ST-ENG-AP-1090 | 3.9d |
|  | 2 | **Lean Concrete** |  | 2027-05-05 | 2027-06-03 |  |  |
| SDR-ST-CON-P1-5870 |  | KWH meter mounting frame Lean Concrete | 20d | 2027-05-05 | 2027-06-03 | SDR-ST-CON-P1-5830, SDR-ST-CON-P1-5460 | 9d |
|  | 3 | **Installation** |  | 2027-06-03 | 2027-06-27 |  |  |
| SDR-ST-CON-P1-5910 |  | KWH meter mounting frame installation | 20d | 2027-06-03 | 2027-06-27 | SDR-ST-CON-P1-5870 | 9d |
|  | 14 | **Street Lighting Sub-station** |  | 2027-05-05 | 2027-07-17 |  |  |
|  | 1 | **Leveling** |  | 2027-05-05 | 2027-06-03 |  |  |
| SDR-ST-CON-P1-5900 |  | Unit Substation Leveling | 20d | 2027-05-05 | 2027-06-03 | SDR-ST-CON-P1-5830, SDR-ST-PRO-MS-1250 | 3.9d |
|  | 2 | **Lean Concrete** |  | 2027-06-03 | 2027-06-27 |  |  |
| SDR-ST-CON-P1-5990 |  | Unit Substation Lean Concrete | 20d | 2027-06-03 | 2027-06-27 | SDR-ST-CON-P1-5900, SDR-ST-CO-1010 | 3.9d |
|  | 3 | **Installation** |  | 2027-06-27 | 2027-07-17 |  |  |
| SDR-ST-CON-P1-6030 |  | Unit Substation Install for Street Lighting | 17d | 2027-06-27 | 2027-07-17 | SDR-ST-CON-P1-5990 | 3.9d |
|  | 5 | **TELECOMMUNICATIONS WORKS** |  | 2026-08-31 | 2027-02-07 |  |  |
|  | 3 | **ROAD - 01** |  | 2026-08-31 | 2027-02-07 |  |  |
|  | 4 | **ROAD-01 N 1 (2X3)X50 mm MH-15 to MH-16** |  | 2026-08-31 | 2027-01-20 |  |  |
|  | 3 | **Ducts** |  | 2026-08-31 | 2026-12-30 |  |  |
|  | 2 | **Excavation** |  | 2026-08-31 | 2026-10-20 |  |  |
| SDR-ST-CON-P1-1690 |  | Excavation for telecom trench Section 1 | 21d | 2026-08-31 | 2026-09-26 | SDR-ST-CON-P1-1700 SS, SDR-ST-ENG-AP-1090 | 1.5d |
| SDR-ST-CON-P1-2340 |  | Excavation for telecom trench Section 2 | 21d | 2026-09-26 | 2026-10-20 | SDR-ST-CON-P1-1690 | 1.5d |
|  | 5 | **Pipe laying** |  | 2026-10-20 | 2026-11-12 |  |  |
| SDR-ST-CON-P1-3070 |  | HDPE Pipes for Telecom Installation | 20d | 2026-10-20 | 2026-11-12 | SDR-ST-CON-P1-2340 | 1.5d |
|  | 6 | **Backfilling** |  | 2026-11-12 | 2026-12-06 |  |  |
| SDR-ST-CON-P1-3680 |  | Backfilling over HDPE Telecom Pipes | 20d | 2026-11-12 | 2026-12-06 | SDR-ST-CON-P1-3070 | 1.5d |
|  | 7 | **Pulling Cable** |  | 2026-12-06 | 2026-12-30 |  |  |
| SDR-ST-CON-P1-4310 |  | Pulling Cable | 21d | 2026-12-06 | 2026-12-30 | SDR-ST-CON-P1-3680 | 1.5d |
|  | 4 | **Manholes** |  | 2026-08-31 | 2027-01-20 |  |  |
|  | 1 | **Excavation** |  | 2026-08-31 | 2026-10-20 |  |  |
| SDR-ST-CON-P1-1680 |  | Excavation for Telecom Manhole Section 1 | 21d | 2026-08-31 | 2026-09-26 | SDR-ST-CON-P1-1690 SS, SDR-ST-ENG-AP-1090 | 2.6d |
| SDR-ST-CON-P1-2370 |  | Excavation for Telecom Manhole Section 2 | 21d | 2026-09-26 | 2026-10-20 | SDR-ST-CON-P1-1680 | 2.6d |
|  | 2 | **Bedding Work** |  | 2026-10-20 | 2026-11-12 |  |  |
| SDR-ST-CON-P1-3080 |  | Sand bedding for Telecom Manhole | 20d | 2026-10-20 | 2026-11-12 | SDR-ST-CON-P1-2370 | 2.6d |
|  | 3 | **Install Manholes** |  | 2026-11-12 | 2026-12-06 |  |  |
| SDR-ST-CON-P1-3690 |  | Installation of Telecom Manhole | 20d | 2026-11-12 | 2026-12-06 | SDR-ST-CON-P1-1680, SDR-ST-CON-P1-3080 | 2.6d |
|  | 4 | **Testting** |  | 2026-12-06 | 2026-12-29 |  |  |
| SDR-ST-CON-P1-4360 |  | Telecom Manhole finishing works | 20d | 2026-12-06 | 2026-12-29 | SDR-ST-CON-P1-3690 | 2.6d |
|  | 5 | **Backfilling** |  | 2026-12-29 | 2027-01-20 |  |  |
| SDR-ST-CON-P1-4880 |  | Backfilling over Telecom Manhole | 19d | 2026-12-29 | 2027-01-20 | SDR-ST-CON-P1-4360 | 2.6d |
|  | 2 | **ROAD-01 From 0 to 470 m (3) (2X3)X50 mm MH-12 to MH-14** |  | 2026-08-31 | 2027-01-23 |  |  |
|  | 3 | **Ducts** |  | 2026-08-31 | 2027-01-02 |  |  |
|  | 2 | **Excavation** |  | 2026-08-31 | 2026-10-20 |  |  |
| SDR-ST-CON-P1-1530 |  | Excavation for telecom trench Section 1 | 21d | 2026-08-31 | 2026-09-26 | SDR-ST-CON-P1-1500 SS, SDR-ST-ENG-AP-1090 | 0.6d |
| SDR-ST-CON-P1-2190 |  | Excavation for telecom trench Section 2 | 21d | 2026-09-26 | 2026-10-20 | SDR-ST-CON-P1-1530 | 10.5d |
|  | 5 | **Pipe laying** |  | 2026-10-20 | 2026-11-14 |  |  |
| SDR-ST-CON-P1-2940 |  | HDPE Pipes for Telecom Installation | 21d | 2026-10-20 | 2026-11-14 | SDR-ST-CON-P1-2190 | 10.5d |
|  | 6 | **Backfilling** |  | 2026-11-14 | 2026-12-08 |  |  |
| SDR-ST-CON-P1-3770 |  | Backfilling over HDPE Telecom Pipes | 21d | 2026-11-14 | 2026-12-08 | SDR-ST-CON-P1-2940 | 10.5d |
|  | 7 | **Pulling Cable** |  | 2026-12-08 | 2027-01-02 |  |  |
| SDR-ST-CON-P1-4370 |  | Pulling Cable | 21d | 2026-12-08 | 2027-01-02 | SDR-ST-CON-P1-3770 | 10.5d |
|  | 4 | **Manholes** |  | 2026-08-31 | 2027-01-23 |  |  |
|  | 1 | **Excavation** |  | 2026-08-31 | 2026-10-20 |  |  |
| SDR-ST-CON-P1-1520 |  | Excavation for Telecom Manhole Section 1 | 21d | 2026-08-31 | 2026-09-26 | SDR-ST-CON-P1-1530 SS, SDR-ST-ENG-AP-1090 | 0.6d |
| SDR-ST-CON-P1-2200 |  | Excavation for Telecom Manhole Section 2 | 21d | 2026-09-26 | 2026-10-20 | SDR-ST-CON-P1-1520 | 0.6d |
|  | 2 | **Bedding Work** |  | 2026-10-20 | 2026-11-11 |  |  |
| SDR-ST-CON-P1-2950 |  | Sand bedding for Telecom Manhole | 19d | 2026-10-20 | 2026-11-11 | SDR-ST-CON-P1-2200, SDR-ST-PRO-MS-1010 | 0.6d |
|  | 3 | **Install Manholes** |  | 2026-11-11 | 2026-12-05 |  |  |
| SDR-ST-CON-P1-3780 |  | Installation of Telecom Manhole | 20d | 2026-11-11 | 2026-12-05 | SDR-ST-CON-P1-1520, SDR-ST-CON-P1-2950 | 0.6d |
|  | 4 | **Testting** |  | 2026-12-05 | 2026-12-29 |  |  |
| SDR-ST-CON-P1-4630 |  | Telecom Manhole finishing works | 21d | 2026-12-05 | 2026-12-29 | SDR-ST-CON-P1-3780 | 0.6d |
|  | 5 | **Backfilling** |  | 2026-12-29 | 2027-01-23 |  |  |
| SDR-ST-CON-P1-5140 |  | Backfilling over Telecom Manhole | 21d | 2026-12-29 | 2027-01-23 | SDR-ST-CON-P1-4630 | 0.6d |
|  | 1 | **ROAD-01 From 470 to 1125 m (6) (2X3)X50 mm MH-10 to MH-11** |  | 2026-09-08 | 2027-01-31 |  |  |

| ID | WBS | Task | Duration | Start | Finish | Predecessors | Total float |
| --- | --- | --- | --- | --- | --- | --- | --- |
|  | 3 | **Ducts** |  | 2026-09-08 | 2027-01-06 |  |  |
|  | 2 | **Excavation** |  | 2026-09-08 | 2026-10-28 |  |  |
| SDR-ST-CON-P1-1240 |  | Excavation for telecom trench Section 1 | 21d | 2026-09-08 | 2026-10-04 | SDR-ST-CON-P1-1180 SS+10d, SDR-ST-ENG-AP-1090 | 1.3d |
| SDR-ST-CON-P1-1790 |  | Excavation for telecom trench Section 2 | 21d | 2026-10-04 | 2026-10-28 | SDR-ST-CON-P1-1240 | 3.3d |
|  | 5 | **Pipe laying** |  | 2026-10-28 | 2026-11-22 |  |  |
| SDR-ST-CON-P1-2510 |  | HDPE Pipes for Telecom Installation | 21d | 2026-10-28 | 2026-11-22 | SDR-ST-CON-P1-1790 | 3.3d |
|  | 6 | **Backfilling** |  | 2026-11-22 | 2026-12-13 |  |  |
| SDR-ST-CON-P1-3230 |  | Backfilling over HDPE Telecom Pipes | 18d | 2026-11-22 | 2026-12-13 | SDR-ST-CON-P1-2510 | 3.3d |
|  | 7 | **Pulling Cable** |  | 2026-12-13 | 2027-01-06 |  |  |
| SDR-ST-CON-P1-4020 |  | Pulling Cable | 21d | 2026-12-13 | 2027-01-06 | SDR-ST-CON-P1-3230 | 3.3d |
|  | 4 | **Manholes** |  | 2026-09-08 | 2027-01-31 |  |  |
|  | 1 | **Excavation** |  | 2026-09-08 | 2026-10-28 |  |  |
| SDR-ST-CON-P1-1230 |  | Excavation for Telecom Manhole Section 1 | 21d | 2026-09-08 | 2026-10-04 | SDR-ST-CON-P1-1240 SS, SDR-ST-ENG-AP-1090 | 1.3d |
| SDR-ST-CON-P1-1800 |  | Excavation for Telecom Manhole Section 2 | 21d | 2026-10-04 | 2026-10-28 | SDR-ST-CON-P1-1230 | 1.3d |
|  | 2 | **Bedding Work** |  | 2026-10-28 | 2026-11-19 |  |  |
| SDR-ST-CON-P1-2520 |  | Sand bedding for Telecom Manhole | 19d | 2026-10-28 | 2026-11-19 | SDR-ST-CON-P1-1800, SDR-ST-PRO-MS-1010 | 1.3d |
|  | 3 | **Install Manholes** |  | 2026-11-19 | 2026-12-13 |  |  |
| SDR-ST-CON-P1-3240 |  | Installation of Telecom Manhole | 20d | 2026-11-19 | 2026-12-13 | SDR-ST-CON-P1-1230, SDR-ST-CON-P1-2520 | 1.3d |
|  | 4 | **Testting** |  | 2026-12-13 | 2027-01-06 |  |  |
| SDR-ST-CON-P1-4150 |  | Telecom Manhole finishing works | 21d | 2026-12-13 | 2027-01-06 | SDR-ST-CON-P1-3240 | 1.3d |
|  | 5 | **Backfilling** |  | 2027-01-06 | 2027-01-31 |  |  |
| SDR-ST-CON-P1-4740 |  | Backfilling over Telecom Manhole | 21d | 2027-01-06 | 2027-01-31 | SDR-ST-CON-P1-4150 | 1.3d |
|  | 3 | **ROAD-01 From 1125 to 1765 m (7) (2X3)X50 mm MH-8 to MH-9** |  | 2026-09-21 | 2027-02-07 |  |  |
|  | 3 | **Ducts** |  | 2026-09-21 | 2027-01-23 |  |  |
|  | 2 | **Excavation** |  | 2026-09-21 | 2026-11-10 |  |  |
| SDR-ST-CON-P1-1620 |  | Excavation for telecom trench Section 1 | 21d | 2026-09-21 | 2026-10-17 | SDR-ST-CON-P1-1590 SS, SDR-ST-ENG-AP-1090 | 2.2d |
| SDR-ST-CON-P1-2290 |  | Excavation for telecom trench Section 2 | 21d | 2026-10-17 | 2026-11-10 | SDR-ST-CON-P1-1620 | 2.2d |
|  | 5 | **Pipe laying** |  | 2026-11-10 | 2026-12-05 |  |  |
| SDR-ST-CON-P1-3010 |  | HDPE Pipes for Telecom Installation | 21d | 2026-11-10 | 2026-12-05 | SDR-ST-CON-P1-2290 | 2.2d |
|  | 6 | **Backfilling** |  | 2026-12-05 | 2026-12-29 |  |  |
| SDR-ST-CON-P1-3630 |  | Backfilling over HDPE Telecom Pipes | 21d | 2026-12-05 | 2026-12-29 | SDR-ST-CON-P1-3010 | 2.2d |
|  | 7 | **Pulling Cable** |  | 2026-12-29 | 2027-01-23 |  |  |
| SDR-ST-CON-P1-4240 |  | Pulling Cable | 21d | 2026-12-29 | 2027-01-23 | SDR-ST-CON-P1-3630 | 2.2d |
|  | 4 | **Manholes** |  | 2026-09-21 | 2027-02-07 |  |  |
|  | 1 | **Excavation** |  | 2026-09-21 | 2026-11-10 |  |  |
| SDR-ST-CON-P1-1610 |  | Excavation for Telecom Manhole Section 1 | 21d | 2026-09-21 | 2026-10-17 | SDR-ST-CON-P1-1620 SS, SDR-ST-ENG-AP-1090 | 6.7d |
| SDR-ST-CON-P1-2300 |  | Excavation for Telecom Manhole Section 2 | 21d | 2026-10-17 | 2026-11-10 | SDR-ST-CON-P1-1610 | 6.7d |
|  | 2 | **Bedding Work** |  | 2026-11-10 | 2026-12-02 |  |  |
| SDR-ST-CON-P1-3020 |  | Sand bedding for Telecom Manhole | 19d | 2026-11-10 | 2026-12-02 | SDR-ST-CON-P1-2300 | 6.7d |
|  | 3 | **Install Manholes** |  | 2026-12-02 | 2026-12-26 |  |  |
| SDR-ST-CON-P1-3820 |  | Installation of Telecom Manhole | 20d | 2026-12-02 | 2026-12-26 | SDR-ST-CON-P1-1610, SDR-ST-CON-P1-3020 | 6.7d |
|  | 4 | **Testting** |  | 2026-12-26 | 2027-01-16 |  |  |
| SDR-ST-CON-P1-4720 |  | Telecom Manhole finishing works | 18d | 2026-12-26 | 2027-01-16 | SDR-ST-CON-P1-3820 | 6.7d |
|  | 5 | **Backfilling** |  | 2027-01-16 | 2027-02-07 |  |  |
| SDR-ST-CON-P1-5240 |  | Backfilling over Telecom Manhole | 19d | 2027-01-16 | 2027-02-07 | SDR-ST-CON-P1-4720 | 6.7d |
|  | 4 | **ROAD - 02** |  | 2026-09-08 | 2027-02-07 |  |  |
|  | 3 | **ROAD-01 From 0 to 400 m (9) (2X3)X50 mm MH-5 to MH-7** |  | 2026-09-08 | 2027-02-02 |  |  |
|  | 3 | **Ducts** |  | 2026-09-08 | 2027-01-11 |  |  |
|  | 2 | **Excavation** |  | 2026-09-08 | 2026-10-28 |  |  |
| SDR-ST-CON-P1-1340 |  | Excavation for telecom trench Section 1 | 21d | 2026-09-08 | 2026-10-04 | SDR-ST-CON-P1-1310 SS, SDR-ST-ENG-AP-1090 | 0d |
| SDR-ST-CON-P1-1960 |  | Excavation for telecom trench Section 2 | 21d | 2026-10-04 | 2026-10-28 | SDR-ST-CON-P1-1340 | 0d |
|  | 5 | **Pipe laying** |  | 2026-10-28 | 2026-11-22 |  |  |
| SDR-ST-CON-P1-2670 |  | HDPE Pipes for Telecom Installation | 21d | 2026-10-28 | 2026-11-22 | SDR-ST-CON-P1-1960 | 0d |
|  | 6 | **Backfilling** |  | 2026-11-22 | 2026-12-16 |  |  |
| SDR-ST-CON-P1-3440 |  | Backfilling over HDPE Telecom Pipes | 21d | 2026-11-22 | 2026-12-16 | SDR-ST-CON-P1-2670 | 0d |
|  | 7 | **Pulling Cable** |  | 2026-12-16 | 2027-01-11 |  |  |
| SDR-ST-CON-P1-4270 |  | Pulling Cable | 21.2d | 2026-12-16 | 2027-01-11 | SDR-ST-CON-P1-3440 | 0d |
|  | 4 | **Manholes** |  | 2026-09-08 | 2027-02-02 |  |  |
|  | 1 | **Excavation** |  | 2026-09-08 | 2026-10-28 |  |  |
| SDR-ST-CON-P1-1330 |  | Excavation for Telecom Manhole Section 1 | 21d | 2026-09-08 | 2026-10-04 | SDR-ST-CON-P1-1340 SS, SDR-ST-ENG-AP-1090 | 10.7d |
| SDR-ST-CON-P1-1970 |  | Excavation for Telecom Manhole Section 2 | 21d | 2026-10-04 | 2026-10-28 | SDR-ST-CON-P1-1330 | 10.7d |
|  | 2 | **Bedding Work** |  | 2026-10-28 | 2026-11-22 |  |  |
| SDR-ST-CON-P1-2680 |  | Sand bedding for Telecom Manhole | 21d | 2026-10-28 | 2026-11-22 | SDR-ST-CON-P1-1970 | 10.7d |
|  | 3 | **Install Manholes** |  | 2026-11-22 | 2026-12-15 |  |  |
| SDR-ST-CON-P1-3450 |  | Installation of Telecom Manhole | 20d | 2026-11-22 | 2026-12-15 | SDR-ST-CON-P1-1330, SDR-ST-CON-P1-2680 | 10.7d |
|  | 4 | **Testting** |  | 2026-12-15 | 2027-01-09 |  |  |
| SDR-ST-CON-P1-4380 |  | Telecom Manhole finishing works | 21d | 2026-12-15 | 2027-01-09 | SDR-ST-CON-P1-3450 | 10.7d |
|  | 5 | **Backfilling** |  | 2027-01-09 | 2027-02-02 |  |  |
| SDR-ST-CON-P1-4900 |  | Backfilling over Telecom Manhole | 21d | 2027-01-09 | 2027-02-02 | SDR-ST-CON-P1-4380 | 10.7d |
|  | 1 | **ROAD-01 From 400 to 900 m (10) (2X3)X50 mm MH-1 to MH-4** |  | 2026-09-08 | 2027-01-31 |  |  |

| ID | WBS | Task | Duration | Start | Finish | Predecessors | Total float |
| --- | --- | --- | --- | --- | --- | --- | --- |
|  | 3 | **Ducts** |  | 2026-09-08 | 2027-01-10 |  |  |
|  | 2 | **Excavation** |  | 2026-09-08 | 2026-10-28 |  |  |
| SDR-ST-CON-P1-1290 |  | Excavation for telecom trench Section 1 | 21d | 2026-09-08 | 2026-10-04 | SDR-ST-CON-P1-1260 SS, SDR-ST-ENG-AP-1090 | 0d |
| SDR-ST-CON-P1-1880 |  | Excavation for telecom trench Section 2 | 21d | 2026-10-04 | 2026-10-28 | SDR-ST-CON-P1-1290 | 10.5d |
|  | 5 | **Pipe laying** |  | 2026-10-28 | 2026-11-22 |  |  |
| SDR-ST-CON-P1-2640 |  | HDPE Pipes for Telecom Installation | 21d | 2026-10-28 | 2026-11-22 | SDR-ST-CON-P1-1880 | 10.5d |
|  | 6 | **Backfilling** |  | 2026-11-22 | 2026-12-16 |  |  |
| SDR-ST-CON-P1-3370 |  | Backfilling over HDPE Telecom Pipes | 21d | 2026-11-22 | 2026-12-16 | SDR-ST-CON-P1-2640 | 10.5d |
|  | 7 | **Pulling Cable** |  | 2026-12-16 | 2027-01-10 |  |  |
| SDR-ST-CON-P1-4160 |  | Pulling Cable | 21d | 2026-12-16 | 2027-01-10 | SDR-ST-CON-P1-3370 | 10.5d |
|  | 4 | **Manholes** |  | 2026-09-08 | 2027-01-31 |  |  |
|  | 1 | **Excavation** |  | 2026-09-08 | 2026-10-28 |  |  |
| SDR-ST-CON-P1-1280 |  | Excavation for Telecom Manhole Section 1 | 21d | 2026-09-08 | 2026-10-04 | SDR-ST-CON-P1-1290 SS, SDR-ST-ENG-AP-1090 | 0d |
| SDR-ST-CON-P1-1890 |  | Excavation for Telecom Manhole Section 2 | 21d | 2026-10-04 | 2026-10-28 | SDR-ST-CON-P1-1280 | 0d |
|  | 2 | **Bedding Work** |  | 2026-10-28 | 2026-11-19 |  |  |
| SDR-ST-CON-P1-2650 |  | Sand bedding for Telecom Manhole | 19d | 2026-10-28 | 2026-11-19 | SDR-ST-CON-P1-1890 | 0d |
|  | 3 | **Install Manholes** |  | 2026-11-19 | 2026-12-13 |  |  |
| SDR-ST-CON-P1-3380 |  | Installation of Telecom Manhole | 20d | 2026-11-19 | 2026-12-13 | SDR-ST-CON-P1-1280, SDR-ST-CON-P1-2650 | 0d |
|  | 4 | **Testting** |  | 2026-12-13 | 2027-01-06 |  |  |
| SDR-ST-CON-P1-4280 |  | Telecom Manhole finishing works | 21d | 2026-12-13 | 2027-01-06 | SDR-ST-CON-P1-3380 | 0d |
|  | 5 | **Backfilling** |  | 2027-01-06 | 2027-01-31 |  |  |
| SDR-ST-CON-P1-4820 |  | Backfilling over Telecom Manhole | 21d | 2027-01-06 | 2027-01-31 | SDR-ST-CON-P1-4280 | 0d |
|  | 2 | **ROAD-01 From 900 to 1239 m (11) (2)X32 mm MH-1** |  | 2026-09-17 | 2027-02-07 |  |  |
|  | 3 | **Ducts** |  | 2026-09-17 | 2027-01-19 |  |  |
|  | 2 | **Excavation** |  | 2026-09-17 | 2026-11-07 |  |  |
| SDR-ST-CON-P1-1390 |  | Excavation for telecom trench Section 1 | 21d | 2026-09-17 | 2026-10-13 | SDR-ST-CON-P1-1360 SS, SDR-ST-ENG-AP-1090 | 6.7d |
| SDR-ST-CON-P1-2070 |  | Excavation for telecom trench Section 2 | 21d | 2026-10-13 | 2026-11-07 | SDR-ST-CON-P1-1390 | 6.7d |
|  | 5 | **Pipe laying** |  | 2026-11-07 | 2026-12-01 |  |  |
| SDR-ST-CON-P1-2780 |  | HDPE Pipes for Telecom Installation | 21d | 2026-11-07 | 2026-12-01 | SDR-ST-CON-P1-2070 | 6.7d |
|  | 6 | **Backfilling** |  | 2026-12-01 | 2026-12-26 |  |  |
| SDR-ST-CON-P1-3580 |  | Backfilling over HDPE Telecom Pipes | 21d | 2026-12-01 | 2026-12-26 | SDR-ST-CON-P1-2780 | 6.7d |
|  | 7 | **Pulling Cable** |  | 2026-12-26 | 2027-01-19 |  |  |
| SDR-ST-CON-P1-4170 |  | Pulling Cable | 21d | 2026-12-26 | 2027-01-19 | SDR-ST-CON-P1-3580 | 6.7d |
|  | 4 | **Manholes** |  | 2026-09-17 | 2027-02-07 |  |  |
|  | 1 | **Excavation** |  | 2026-09-17 | 2026-11-07 |  |  |
| SDR-ST-CON-P1-1380 |  | Excavation for Telecom Manhole Section 1 | 21d | 2026-09-17 | 2026-10-13 | SDR-ST-CON-P1-1390 SS, SDR-ST-ENG-AP-1090 | 7.5d |
| SDR-ST-CON-P1-2080 |  | Excavation for Telecom Manhole Section 2 | 21d | 2026-10-13 | 2026-11-07 | SDR-ST-CON-P1-1380 | 7.5d |
|  | 2 | **Bedding Work** |  | 2026-11-07 | 2026-11-29 |  |  |
| SDR-ST-CON-P1-2790 |  | Sand bedding for Telecom Manhole | 19d | 2026-11-07 | 2026-11-29 | SDR-ST-CON-P1-2080 | 7.5d |
|  | 3 | **Install Manholes** |  | 2026-11-29 | 2026-12-23 |  |  |
| SDR-ST-CON-P1-3590 |  | Installation of Telecom Manhole | 21d | 2026-11-29 | 2026-12-23 | SDR-ST-CON-P1-1380, SDR-ST-CON-P1-2790 | 7.5d |
|  | 4 | **Testting** |  | 2026-12-23 | 2027-01-17 |  |  |
| SDR-ST-CON-P1-4500 |  | Telecom Manhole finishing works | 21d | 2026-12-23 | 2027-01-17 | SDR-ST-CON-P1-3590 | 7.5d |
|  | 5 | **Backfilling** |  | 2027-01-17 | 2027-02-07 |  |  |
| SDR-ST-CON-P1-5000 |  | Backfilling over Telecom Manhole | 18d | 2027-01-17 | 2027-02-07 | SDR-ST-CON-P1-4500 | 7.5d |
|  | 13 | **LOW VOLTAGE** |  | 2026-11-15 | 2027-04-19 |  |  |
|  | 1 | **ROAD - 01** |  | 2026-11-15 | 2027-04-03 |  |  |
|  | 1 | **ROAD-01 From 470 to 1125 m (6)** |  | 2026-11-15 | 2027-04-03 |  |  |
|  | 6 | **Excavation** |  | 2026-11-15 | 2027-01-03 |  |  |
| SDR-ST-CON-P1-1670 |  | Excavation Works Part 1 | 21d | 2026-11-15 | 2026-12-09 | SDR-ST-CON-P1-1180, SDR-ST-ENG-AP-1090, SDR-ST-CON-P1-1570 | 3.2d |
| SDR-ST-CON-P1-6230 |  | Excavation Works Part 2 | 21d | 2026-12-09 | 2027-01-03 | SDR-ST-CON-P1-1670 | 10.2d |
|  | 7 | **Pipe laying** |  | 2027-01-03 | 2027-01-26 |  |  |
| SDR-ST-CON-P1-2330 |  | Pipe Laying | 20d | 2027-01-03 | 2027-01-26 | SDR-ST-CON-P1-1670, SDR-ST-CON-P1-6230 | 10.2d |
|  | 8 | **Backfilling** |  | 2027-01-26 | 2027-03-02 |  |  |
| SDR-ST-CON-P1-2990 |  | Backfilling Works | 21d | 2027-01-26 | 2027-03-02 | SDR-ST-CON-P1-2330, SDR-ST-CON-P1-4880 | 10.2d |
|  | 9 | **Pulling Cable** |  | 2027-03-02 | 2027-04-03 |  |  |
| SDR-ST-CON-P1-3880 |  | Pulling Cable | 21d | 2027-03-02 | 2027-04-03 | SDR-ST-CON-P1-2330, SDR-ST-CON-P1-2990, SDR-ST-CON-P1-5750 | 10.2d |
|  | 2 | **ROAD - 02** |  | 2026-11-23 | 2027-04-19 |  |  |
|  | 1 | **ROAD-01 From 400 to 900 m (10)** |  | 2026-11-23 | 2027-04-11 |  |  |
|  | 6 | **Excavation** |  | 2026-11-23 | 2027-01-11 |  |  |
| SDR-ST-CON-P1-1740 |  | Excavation Works Part 1 | 21d | 2026-11-23 | 2026-12-17 | SDR-ST-CON-P1-1260, SDR-ST-CON-P1-1670 SS+7d | 3.2d |
| SDR-ST-CON-P1-6240 |  | Excavation Works Part 2 | 21d | 2026-12-17 | 2027-01-11 | SDR-ST-CON-P1-1740 | 3.2d |
|  | 7 | **Pipe laying** |  | 2027-01-11 | 2027-02-03 |  |  |
| SDR-ST-CON-P1-2440 |  | Pipe Laying | 20d | 2027-01-11 | 2027-02-03 | SDR-ST-CON-P1-1740, SDR-ST-CON-P1-6240 | 3.2d |
|  | 8 | **Backfilling** |  | 2027-02-03 | 2027-03-17 |  |  |
| SDR-ST-CON-P1-3170 |  | Backfilling Works | 21d | 2027-02-03 | 2027-03-17 | SDR-ST-CON-P1-2440 | 3.2d |
|  | 9 | **Pulling Cable** |  | 2027-03-17 | 2027-04-11 |  |  |
| SDR-ST-CON-P1-4040 |  | Pulling Cable | 21d | 2027-03-17 | 2027-04-11 | SDR-ST-CON-P1-2440, SDR-ST-CON-P1-3170, SDR-ST-CON-P1-4520, SDR-ST-CON-P1-4700, SDR-ST-CON-P1-4910 | 3.2d |
|  | 4 | **ROAD-01 From 900 to 1239 m (11)** |  | 2026-12-01 | 2027-04-19 |  |  |
|  | 6 | **Excavation** |  | 2026-12-01 | 2027-01-19 |  |  |

| ID | WBS | Task | Duration | Start | Finish | Predecessors | Total float |
| --- | --- | --- | --- | --- | --- | --- | --- |
| SDR-ST-CON-P1-1750 |  | Excavation Works Part 1 | 21d | 2026-12-01 | 2026-12-26 | SDR-ST-CON-P1-1360 SS, SDR-ST-ENG-AP-1090, SDR-ST-CON-P1-1740 SS+7d | 4.2d |
| SDR-ST-CON-P1-6250 |  | Excavation Works Part 2 | 21d | 2026-12-26 | 2027-01-19 | SDR-ST-CON-P1-1750 | 4.2d |
|  | 7 | **Pipe laying** |  | 2027-01-19 | 2027-02-15 |  |  |
| SDR-ST-CON-P1-2450 |  | Pipe Laying | 20d | 2027-01-19 | 2027-02-15 | SDR-ST-CON-P1-1750, SDR-ST-CON-P1-6250 | 4.2d |
|  | 8 | **Backfilling** |  | 2027-02-15 | 2027-03-25 |  |  |
| SDR-ST-CON-P1-3180 |  | Backfilling Works | 21d | 2027-02-15 | 2027-03-25 | SDR-ST-CON-P1-2450 | 4.2d |
|  | 9 | **Pulling Cable** |  | 2027-03-25 | 2027-04-19 |  |  |
| SDR-ST-CON-P1-4070 |  | Pulling Cable | 21d | 2027-03-25 | 2027-04-19 | SDR-ST-CON-P1-2450, SDR-ST-CON-P1-3180, SDR-ST-CON-P1-6070, SDR-ST-CON-P1-5100, SDR-ST-CON-P1-5070 | 4.2d |
|  | 10 | **PORTABLE WATER** |  | 2026-09-17 | 2027-03-22 |  |  |
|  | 2 | **ROAD - 01** |  | 2026-09-17 | 2027-03-22 |  |  |
|  | 2 | **ROAD-01 From 0 to 470 m (3)** |  | 2026-09-17 | 2027-03-03 |  |  |
|  | 7 | **Pipes Work** |  | 2026-09-17 | 2027-02-16 |  |  |
|  | 1 | **Excavation** |  | 2026-09-17 | 2026-11-07 |  |  |
| SDR-ST-CON-P1-1480 |  | Excavation for PW HDPE Pipes 315 mm Section 1 | 21d | 2026-09-17 | 2026-10-13 | SDR-ST-CON-P1-1200 FS+15d | 0d |
| SDR-ST-CON-P1-1980 |  | Excavation for PW HDPE Pipes 315 mm Section 2 | 21d | 2026-10-13 | 2026-11-07 | SDR-ST-CON-P1-1480 | 0d |
|  | 8 | **bedding Works** |  | 2026-11-07 | 2026-12-01 |  |  |
| SDR-ST-CON-P1-2490 |  | Sand bedding for PW HDPE Pipes 315 mm | 21d | 2026-11-07 | 2026-12-01 | SDR-ST-CON-P1-1980 | 0d |
|  | 2 | **Pipes Laying** |  | 2026-12-01 | 2026-12-26 |  |  |
| SDR-ST-CON-P1-3270 |  | Install PW 315 mm HDPE Pipe | 21d | 2026-12-01 | 2026-12-26 | SDR-ST-CON-P1-2490, SDR-ST-CON-P1-3930, SDR-ST-CON-P1-3760 | 0d |
|  | 5 | **Testing** |  | 2026-12-26 | 2027-01-19 |  |  |
| SDR-ST-CON-P1-4190 |  | Testing of PW HDPE Pipe 315 mm. | 21d | 2026-12-26 | 2027-01-19 | SDR-ST-CON-P1-3270, SDR-ST-CON-P1-4400 | 0d |
|  | 9 | **Backfilling** |  | 2027-01-19 | 2027-02-16 |  |  |
| SDR-ST-CON-P1-4800 |  | Backfilling of PW HDPE Pipe 315 mm. | 21d | 2027-01-19 | 2027-02-16 | SDR-ST-CON-P1-4190 | 0d |
|  | 3 | **Valve Chambers & Valves & Fire Hydrant** |  | 2026-09-27 | 2027-03-03 |  |  |
|  | 3 | **Excavation** |  | 2026-09-27 | 2026-11-15 |  |  |
| SDR-ST-CON-P1-1490 |  | Excavation for Valve Chambers Section 1 | 21d | 2026-09-27 | 2026-10-21 | SDR-ST-CON-P1-1480 SS+7d | 3.2d |
| SDR-ST-CON-P1-2150 |  | Excavation for Valve Chambers Section 2 | 21d | 2026-10-21 | 2026-11-15 | SDR-ST-CON-P1-1490, SDR-ST-PRO-MS-1010 | 3.2d |
|  | 1 | **bedding Works** |  | 2026-11-15 | 2026-12-09 |  |  |
| SDR-ST-CON-P1-2850 |  | Sand bedding for Valve Chambers | 21d | 2026-11-15 | 2026-12-09 | SDR-ST-CON-P1-2150 | 3.2d |
|  | 4 | **Install Chambers & Valves & Fire Hydrant** |  | 2026-12-09 | 2027-01-03 |  |  |
| SDR-ST-CON-P1-3560 |  | Install Chambers & Valves | 21d | 2026-12-09 | 2027-01-03 | SDR-ST-CON-P1-2850 | 3.2d |
|  | 2 | **Testing** |  | 2027-01-03 | 2027-01-27 |  |  |
| SDR-ST-CON-P1-4470 |  | Testing for Chambers & Valves | 21d | 2027-01-03 | 2027-01-27 | SDR-ST-CON-P1-3560, SDR-ST-CON-P1-4570, SDR-ST-CON-P1-4310 | 3.2d |
|  | 6 | **Backfilling** |  | 2027-01-27 | 2027-03-03 |  |  |
| SDR-ST-CON-P1-5030 |  | Backfilling for Chambers & Valves | 21d | 2027-01-27 | 2027-03-03 | SDR-ST-CON-P1-4470 | 3.2d |
|  | 1 | **ROAD-01 From 470 to 1125 m (6)** |  | 2026-09-29 | 2027-03-21 |  |  |
|  | 7 | **Pipes Work** |  | 2026-09-29 | 2027-03-08 |  |  |
|  | 1 | **Excavation** |  | 2026-09-29 | 2026-11-17 |  |  |
| SDR-ST-CON-P1-1410 |  | Excavation for PW HDPE Pipes 315 mm Section 1 | 21d | 2026-09-29 | 2026-10-24 | SDR-ST-CON-P1-1190 FS+7d | 7.2d |
| SDR-ST-CON-P1-2050 |  | Excavation for PW HDPE Pipes 315 mm Section 2 | 21d | 2026-10-24 | 2026-11-17 | SDR-ST-CON-P1-1410 | 7.2d |
|  | 8 | **bedding Works** |  | 2026-11-17 | 2026-12-12 |  |  |
| SDR-ST-CON-P1-2690 |  | Sand bedding for PW HDPE Pipes 315 mm | 21d | 2026-11-17 | 2026-12-12 | SDR-ST-CON-P1-2050 | 7.2d |
|  | 2 | **Pipes Laying** |  | 2026-12-12 | 2027-01-05 |  |  |
| SDR-ST-CON-P1-3290 |  | Install PW 315 mm HDPE Pipe | 21d | 2026-12-12 | 2027-01-05 | SDR-ST-CON-P1-2690 | 7.2d |
|  | 5 | **Testing** |  | 2027-01-05 | 2027-01-30 |  |  |
| SDR-ST-CON-P1-4030 |  | Testing of PW HDPE Pipe 315 mm. | 21d | 2027-01-05 | 2027-01-30 | SDR-ST-CON-P1-3290, SDR-ST-CON-P1-4570 | 7.2d |
|  | 9 | **Backfilling** |  | 2027-01-30 | 2027-03-08 |  |  |
| SDR-ST-CON-P1-4700 |  | Backfilling of PW HDPE Pipe 315 mm. | 21d | 2027-01-30 | 2027-03-08 | SDR-ST-CON-P1-4030 | 7.2d |
|  | 3 | **Valve Chambers & Valves & Fire Hydrant** |  | 2026-10-07 | 2027-03-21 |  |  |
|  | 3 | **Excavation** |  | 2026-10-07 | 2026-11-25 |  |  |
| SDR-ST-CON-P1-1420 |  | Excavation for Valve Chambers Section 1 | 21d | 2026-10-07 | 2026-11-01 | SDR-ST-CON-P1-1410 SS+7d, SDR-ST-ENG-AP-1090 | 8.2d |
| SDR-ST-CON-P1-2100 |  | Excavation for Valve Chambers Section 2 | 21d | 2026-11-01 | 2026-11-25 | SDR-ST-CON-P1-1420 | 8.2d |
|  | 1 | **bedding Works** |  | 2026-11-25 | 2026-12-20 |  |  |
| SDR-ST-CON-P1-2820 |  | Sand bedding for Valve Chambers | 21d | 2026-11-25 | 2026-12-20 | SDR-ST-CON-P1-2100 | 8.2d |
|  | 4 | **Install Chambers & Valves & Fire Hydrant** |  | 2026-12-20 | 2027-01-13 |  |  |
| SDR-ST-CON-P1-3660 |  | Install Chambers & Valves | 21d | 2026-12-20 | 2027-01-13 | SDR-ST-CON-P1-2820 | 8.2d |
|  | 2 | **Testing** |  | 2027-01-13 | 2027-02-07 |  |  |
| SDR-ST-CON-P1-4550 |  | Testing for Chambers & Valves | 21d | 2027-01-13 | 2027-02-07 | SDR-ST-CON-P1-3660 | 8.2d |
|  | 6 | **Backfilling** |  | 2027-02-07 | 2027-03-21 |  |  |
| SDR-ST-CON-P1-5100 |  | Backfilling for Chambers & Valves | 21d | 2027-02-07 | 2027-03-21 | SDR-ST-CON-P1-4550 | 8.2d |
|  | 3 | **ROAD-01 From 1125 to 1765 m (7)** |  | 2026-09-30 | 2027-03-22 |  |  |
|  | 7 | **Pipes Work** |  | 2026-09-30 | 2027-03-14 |  |  |
|  | 1 | **Excavation** |  | 2026-09-30 | 2026-11-18 |  |  |
| SDR-ST-CON-P1-1630 |  | Excavation for PW HDPE Pipes 315 mm Section 1 | 21d | 2026-09-30 | 2026-10-25 | SDR-ST-CON-P1-1210 FS+7d | 1d |
| SDR-ST-CON-P1-2130 |  | Excavation for PW HDPE Pipes 315 mm Section 2 | 21d | 2026-10-25 | 2026-11-18 | SDR-ST-CON-P1-1630, SDR-ST-PRO-MS-1010 | 6.2d |
|  | 8 | **bedding Works** |  | 2026-11-18 | 2026-12-13 |  |  |
| SDR-ST-CON-P1-2810 |  | Sand bedding for PW HDPE Pipes 315 mm | 21d | 2026-11-18 | 2026-12-13 | SDR-ST-CON-P1-2130 | 6.2d |
|  | 2 | **Pipes Laying** |  | 2026-12-13 | 2027-01-06 |  |  |
| SDR-ST-CON-P1-3490 |  | Install PW 315 mm HDPE Pipe | 21d | 2026-12-13 | 2027-01-06 | SDR-ST-CON-P1-2810 | 6.2d |
|  | 5 | **Testing** |  | 2027-01-06 | 2027-01-31 |  |  |

| ID | WBS | Task | Duration | Start | Finish | Predecessors | Total float |
| --- | --- | --- | --- | --- | --- | --- | --- |
| SDR-ST-CON-P1-3950 |  | Testing of PW HDPE Pipe 315 mm. | 21d | 2027-01-06 | 2027-01-31 | SDR-ST-CON-P1-3490, SDR-ST-CON-P1-4370 | 6.2d |
|  | 9 | **Backfilling** |  | 2027-01-31 | 2027-03-14 |  |  |
| SDR-ST-CON-P1-4520 |  | Backfilling of PW HDPE Pipe 315 mm. | 21d | 2027-01-31 | 2027-03-14 | SDR-ST-CON-P1-3950 | 6.2d |
|  | 3 | **Valve Chambers & Valves & Fire Hydrant** |  | 2026-10-08 | 2027-03-22 |  |  |
|  | 3 | **Excavation** |  | 2026-10-08 | 2026-11-26 |  |  |
| SDR-ST-CON-P1-1640 |  | Excavation for Valve Chambers Section 1 | 21d | 2026-10-08 | 2026-11-02 | SDR-ST-CON-P1-1630 SS+7d, SDR-ST-ENG-AP-1090 | 1d |
| SDR-ST-CON-P1-2230 |  | Excavation for Valve Chambers Section 2 | 21d | 2026-11-02 | 2026-11-26 | SDR-ST-CON-P1-1640 | 1d |
|  | 1 | **bedding Works** |  | 2026-11-26 | 2026-12-21 |  |  |
| SDR-ST-CON-P1-2900 |  | Sand bedding for Valve Chambers | 21d | 2026-11-26 | 2026-12-21 | SDR-ST-CON-P1-2230 | 1d |
|  | 4 | **Install Chambers & Valves & Fire Hydrant** |  | 2026-12-21 | 2027-01-14 |  |  |
| SDR-ST-CON-P1-3640 |  | Install Chambers & Valves | 21d | 2026-12-21 | 2027-01-14 | SDR-ST-CON-P1-2900 | 1d |
|  | 2 | **Testing** |  | 2027-01-14 | 2027-02-09 |  |  |
| SDR-ST-CON-P1-4510 |  | Testing for Chambers & Valves | 21d | 2027-01-14 | 2027-02-09 | SDR-ST-CON-P1-3640, SDR-ST-CON-P1-4370 | 1d |
|  | 6 | **Backfilling** |  | 2027-02-09 | 2027-03-22 |  |  |
| SDR-ST-CON-P1-5070 |  | Backfilling for Chambers & Valves | 21d | 2027-02-09 | 2027-03-22 | SDR-ST-CON-P1-4510, SDR-ST-CON-P1-5020, SDR-ST-CON-P1-4970, SDR-ST-CON-P1-5140 | 1d |
|  | 3 | **ROAD - 02** |  | 2026-10-01 | 2027-03-16 |  |  |
|  | 3 | **ROAD-01 From 0 to 400 m (9)** |  | 2026-10-03 | 2027-03-16 |  |  |
|  | 7 | **Pipes Work** |  | 2026-10-03 | 2027-03-16 |  |  |
|  | 1 | **Excavation** |  | 2026-10-03 | 2026-11-21 |  |  |
| SDR-ST-CON-P1-1930 |  | Excavation for PW HDPE Pipes 315 mm Section 1 | 21d | 2026-10-03 | 2026-10-27 | SDR-ST-CON-P1-1300 FS+7d | 4.2d |
| SDR-ST-CON-P1-2480 |  | Excavation for PW HDPE Pipes 315 mm Section 2 | 21d | 2026-10-27 | 2026-11-21 | SDR-ST-CON-P1-1930 | 4.2d |
|  | 8 | **bedding Works** |  | 2026-11-21 | 2026-12-15 |  |  |
| SDR-ST-CON-P1-3130 |  | Sand bedding for PW HDPE Pipes 315 mm | 21d | 2026-11-21 | 2026-12-15 | SDR-ST-CON-P1-2480 | 4.2d |
|  | 2 | **Pipes Laying** |  | 2026-12-15 | 2027-01-09 |  |  |
| SDR-ST-CON-P1-3650 |  | Install PW 315 mm HDPE Pipe | 21d | 2026-12-15 | 2027-01-09 | SDR-ST-CON-P1-3130 | 4.2d |
|  | 5 | **Testing** |  | 2027-01-09 | 2027-02-02 |  |  |
| SDR-ST-CON-P1-4340 |  | Testing of PW HDPE Pipe 315 mm. | 21d | 2027-01-09 | 2027-02-02 | SDR-ST-CON-P1-3650 | 4.2d |
|  | 9 | **Backfilling** |  | 2027-02-02 | 2027-03-16 |  |  |
| SDR-ST-CON-P1-4910 |  | Backfilling of PW HDPE Pipe 315 mm. | 21d | 2027-02-02 | 2027-03-16 | SDR-ST-CON-P1-4340, SDR-ST-CON-P1-5020, SDR-ST-CON-P1-4740, SDR-ST-CON-P1-4880 | 4.2d |
|  | 3 | **Valve Chambers & Valves & Fire Hydrant** |  | 2026-10-03 | 2027-02-18 |  |  |
|  | 3 | **Excavation** |  | 2026-10-03 | 2026-11-18 |  |  |
| SDR-ST-CON-P1-1940 |  | Excavation for Valve Chambers Section 1 | 20d | 2026-10-03 | 2026-10-26 | SDR-ST-CON-P1-1930 SS, SDR-ST-ENG-AP-1090 | 9.3d |
| SDR-ST-CON-P1-2630 |  | Excavation for Valve Chambers Section 2 | 20d | 2026-10-26 | 2026-11-18 | SDR-ST-CON-P1-1940 | 9.3d |
|  | 1 | **bedding Works** |  | 2026-11-18 | 2026-12-12 |  |  |
| SDR-ST-CON-P1-3400 |  | Sand bedding for Valve Chambers | 20d | 2026-11-18 | 2026-12-12 | SDR-ST-CON-P1-2630 | 9.3d |
|  | 4 | **Install Chambers & Valves & Fire Hydrant** |  | 2026-12-12 | 2027-01-04 |  |  |
| SDR-ST-CON-P1-4330 |  | Install Chambers & Valves | 20d | 2026-12-12 | 2027-01-04 | SDR-ST-CON-P1-3400 | 9.3d |
|  | 2 | **Testing** |  | 2027-01-04 | 2027-01-20 |  |  |
| SDR-ST-CON-P1-5060 |  | Testing for Chambers & Valves | 14d | 2027-01-04 | 2027-01-20 | SDR-ST-CON-P1-4330, SDR-ST-CON-P1-4370 | 9.3d |
|  | 6 | **Backfilling** |  | 2027-01-20 | 2027-02-18 |  |  |
| SDR-ST-CON-P1-5730 |  | Backfilling for Chambers & Valves | 21d | 2027-01-20 | 2027-02-18 | SDR-ST-CON-P1-5060, SDR-ST-CON-P1-4020, SDR-ST-CON-P1-4610 | 9.3d |
|  | 2 | **ROAD-01 From 400 to 900 m (10)** |  | 2026-10-03 | 2027-02-18 |  |  |
|  | 7 | **Pipes Work** |  | 2026-10-03 | 2027-01-18 |  |  |
|  | 1 | **Excavation** |  | 2026-10-03 | 2026-11-11 |  |  |
| SDR-ST-CON-P1-1850 |  | Excavation for PW HDPE Pipes 315 mm Section 1 | 17d | 2026-10-03 | 2026-10-22 | SDR-ST-CON-P1-1250 FS+8d | 10.1d |
| SDR-ST-CON-P1-2460 |  | Excavation for PW HDPE Pipes 315 mm Section 2 | 17d | 2026-10-22 | 2026-11-11 | SDR-ST-CON-P1-1850 | 13.1d |
|  | 8 | **bedding Works** |  | 2026-11-11 | 2026-11-25 |  |  |
| SDR-ST-CON-P1-3060 |  | Sand bedding for PW HDPE Pipes 315 mm | 12d | 2026-11-11 | 2026-11-25 | SDR-ST-CON-P1-2460 | 13.1d |
|  | 2 | **Pipes Laying** |  | 2026-11-25 | 2026-12-08 |  |  |
| SDR-ST-CON-P1-3570 |  | Install PW 315 mm HDPE Pipe | 11d | 2026-11-25 | 2026-12-08 | SDR-ST-CON-P1-3060 | 13.1d |
|  | 5 | **Testing** |  | 2026-12-08 | 2026-12-24 |  |  |
| SDR-ST-CON-P1-4060 |  | Testing of PW HDPE Pipe 315 mm. | 14d | 2026-12-08 | 2026-12-24 | SDR-ST-CON-P1-3570 | 13.1d |
|  | 9 | **Backfilling** |  | 2026-12-24 | 2027-01-18 |  |  |
| SDR-ST-CON-P1-4640 |  | Backfilling of PW HDPE Pipe 315 mm. | 21d | 2026-12-24 | 2027-01-18 | SDR-ST-CON-P1-4060 | 13.1d |
|  | 3 | **Valve Chambers & Valves & Fire Hydrant** |  | 2026-10-03 | 2027-02-18 |  |  |
|  | 3 | **Excavation** |  | 2026-10-03 | 2026-11-18 |  |  |
| SDR-ST-CON-P1-1860 |  | Excavation for Valve Chambers Section 1 | 20d | 2026-10-03 | 2026-10-26 | SDR-ST-CON-P1-1850 SS | 10.1d |
| SDR-ST-CON-P1-2550 |  | Excavation for Valve Chambers Section 2 | 20d | 2026-10-26 | 2026-11-18 | SDR-ST-CON-P1-1860, SDR-ST-PRO-MS-1010 | 10.1d |
|  | 1 | **bedding Works** |  | 2026-11-18 | 2026-12-12 |  |  |
| SDR-ST-CON-P1-3310 |  | Sand bedding for Valve Chambers | 20d | 2026-11-18 | 2026-12-12 | SDR-ST-CON-P1-2550 | 10.1d |
|  | 4 | **Install Chambers & Valves & Fire Hydrant** |  | 2026-12-12 | 2027-01-04 |  |  |
| SDR-ST-CON-P1-4210 |  | Install Chambers & Valves | 20d | 2026-12-12 | 2027-01-04 | SDR-ST-CON-P1-3310 | 10.1d |
|  | 2 | **Testing** |  | 2027-01-04 | 2027-01-20 |  |  |
| SDR-ST-CON-P1-4990 |  | Testing for Chambers & Valves | 14d | 2027-01-04 | 2027-01-20 | SDR-ST-CON-P1-4210, SDR-ST-CON-P1-4370 | 10.1d |
|  | 6 | **Backfilling** |  | 2027-01-20 | 2027-02-18 |  |  |
| SDR-ST-CON-P1-5710 |  | Backfilling for Chambers & Valves | 21d | 2027-01-20 | 2027-02-18 | SDR-ST-CON-P1-4990, SDR-ST-CON-P1-4880 | 9.6d |
|  | 1 | **ROAD-01 From 900 to 1239 m (11)** |  | 2026-10-01 | 2027-02-15 |  |  |
|  | 7 | **Pipes Work** |  | 2026-10-01 | 2027-01-10 |  |  |
|  | 1 | **Excavation** |  | 2026-10-01 | 2026-11-08 |  |  |
| SDR-ST-CON-P1-2010 |  | Excavation for PW HDPE Pipes 315 mm Section 1 | 16d | 2026-10-01 | 2026-10-20 | SDR-ST-CON-P1-1350 | 1d |

| ID | WBS | Task | Duration | Start | Finish | Predecessors | Total float |
| --- | --- | --- | --- | --- | --- | --- | --- |
| SDR-ST-CON-P1-2610 |  | Excavation for PW HDPE Pipes 315 mm Section 2 | 16d | 2026-10-20 | 2026-11-08 | SDR-ST-CON-P1-2010, SDR-ST-PRO-MS-1010 | 1d |
|  | 8 | **bedding Works** |  | 2026-11-08 | 2026-11-19 |  |  |
| SDR-ST-CON-P1-3220 |  | Sand bedding for PW HDPE Pipes 315 mm | 10d | 2026-11-08 | 2026-11-19 | SDR-ST-CON-P1-2610 | 1d |
|  | 2 | **Pipes Laying** |  | 2026-11-19 | 2026-12-01 |  |  |
| SDR-ST-CON-P1-3610 |  | Install PW 315 mm HDPE Pipe | 10d | 2026-11-19 | 2026-12-01 | SDR-ST-CON-P1-3220 | 1d |
|  | 5 | **Testing** |  | 2026-12-01 | 2026-12-17 |  |  |
| SDR-ST-CON-P1-4090 |  | Testing of PW HDPE Pipe 315 mm. | 14d | 2026-12-01 | 2026-12-17 | SDR-ST-CON-P1-3610 | 1d |
|  | 9 | **Backfilling** |  | 2026-12-17 | 2027-01-10 |  |  |
| SDR-ST-CON-P1-4660 |  | Backfilling of PW HDPE Pipe 315 mm. | 20d | 2026-12-17 | 2027-01-10 | SDR-ST-CON-P1-4090 | 1d |
|  | 3 | **Valve Chambers & Valves & Fire Hydrant** |  | 2026-10-01 | 2027-02-15 |  |  |
|  | 3 | **Excavation** |  | 2026-10-01 | 2026-11-17 |  |  |
| SDR-ST-CON-P1-2020 |  | Excavation for Valve Chambers Section 1 | 20d | 2026-10-01 | 2026-10-25 | SDR-ST-CON-P1-2010 SS, SDR-ST-ENG-AP-1090 | 10.7d |
| SDR-ST-CON-P1-2740 |  | Excavation for Valve Chambers Section 2 | 20d | 2026-10-25 | 2026-11-17 | SDR-ST-CON-P1-2020 | 10.7d |
|  | 1 | **bedding Works** |  | 2026-11-17 | 2026-12-10 |  |  |
| SDR-ST-CON-P1-3550 |  | Sand bedding for Valve Chambers | 20d | 2026-11-17 | 2026-12-10 | SDR-ST-CON-P1-2740 | 10.7d |
|  | 4 | **Install Chambers & Valves & Fire Hydrant** |  | 2026-12-10 | 2027-01-03 |  |  |
| SDR-ST-CON-P1-4460 |  | Install Chambers & Valves | 20d | 2026-12-10 | 2027-01-03 | SDR-ST-CON-P1-3550 | 10.7d |
|  | 2 | **Testing** |  | 2027-01-03 | 2027-01-19 |  |  |
| SDR-ST-CON-P1-5190 |  | Testing for Chambers & Valves | 14d | 2027-01-03 | 2027-01-19 | SDR-ST-CON-P1-4460, SDR-ST-CON-P1-4370 | 10.7d |
|  | 6 | **Backfilling** |  | 2027-01-19 | 2027-02-15 |  |  |
| SDR-ST-CON-P1-5750 |  | Backfilling for Chambers & Valves | 21d | 2027-01-19 | 2027-02-15 | SDR-ST-CON-P1-5190, SDR-ST-CON-P1-4610 | 10.7d |
|  | 7 | **SEWARAGE NETWORK** |  | 2026-09-17 | 2027-03-14 |  |  |
|  | 6 | **ROAD - 01** |  | 2026-09-17 | 2027-02-24 |  |  |
|  | 2 | **ROAD-01 From 0 to 470 m (3) 110 mm HDPE** |  | 2026-09-17 | 2027-02-16 |  |  |
|  | 7 | **Pipes Work** |  | 2026-09-17 | 2027-02-08 |  |  |
|  | 1 | **Excavation** |  | 2026-09-17 | 2026-11-09 |  |  |
| SDR-ST-CON-P1-1540 |  | Excavation for GRP Pipe 200mm Diameter Section 1 | 21d | 2026-09-17 | 2026-10-13 | SDR-ST-CON-P1-1200 FS+15d | 4.2d |
| SDR-ST-CON-P1-2380 |  | Excavation for GRP Pipe 200mm Diameter Section 2 | 20d | 2026-10-17 | 2026-11-09 | SDR-ST-CON-P1-1540 FS+3d | 4.2d |
|  | 5 | **bedding Works** |  | 2026-11-09 | 2026-11-26 |  |  |
| SDR-ST-CON-P1-3050 |  | Sand bedding for GRP Pipe 200mm Diameter | 15d | 2026-11-09 | 2026-11-26 | SDR-ST-CON-P1-2380 | 4.2d |
|  | 2 | **Pipes Laying** |  | 2026-11-26 | 2026-12-21 |  |  |
| SDR-ST-CON-P1-3710 |  | 200 mm GRP Pipe Laying | 21d | 2026-11-26 | 2026-12-21 | SDR-ST-CON-P1-3050 | 4.2d |
|  | 3 | **Testing** |  | 2026-12-21 | 2027-01-14 |  |  |
| SDR-ST-CON-P1-4590 |  | Testing of 200 mm GRP Pipe. | 21d | 2026-12-21 | 2027-01-14 | SDR-ST-CON-P1-3710 | 4.2d |
|  | 6 | **Backfilling** |  | 2027-01-14 | 2027-02-08 |  |  |
| SDR-ST-CON-P1-5570 |  | Backfilling of 200 mm GRP Pipe. | 21d | 2027-01-14 | 2027-02-08 | SDR-ST-CON-P1-4590 | 4.2d |
|  | 4 | **Manholes** |  | 2026-09-17 | 2027-02-16 |  |  |
|  | 1 | **Excavation** |  | 2026-09-17 | 2026-11-07 |  |  |
| SDR-ST-CON-P1-1550 |  | Excavation for manhole. Section 1 | 21d | 2026-09-17 | 2026-10-13 | SDR-ST-CON-P1-1540 SS | 10.6d |
| SDR-ST-CON-P1-2210 |  | Excavation for manhole. Section 2 | 21d | 2026-10-13 | 2026-11-07 | SDR-ST-CON-P1-1550 | 10.6d |
|  | 2 | **bedding Works** |  | 2026-11-07 | 2026-12-01 |  |  |
| SDR-ST-CON-P1-2960 |  | Sand bedding for manhole. | 21d | 2026-11-07 | 2026-12-01 | SDR-ST-CON-P1-2210 | 10.6d |
|  | 3 | **Install Manholes** |  | 2026-12-01 | 2026-12-26 |  |  |
| SDR-ST-CON-P1-3840 |  | Manhole Installation | 21d | 2026-12-01 | 2026-12-26 | SDR-ST-CON-P1-2210, SDR-ST-CON-P1-2960 | 10.6d |
|  | 4 | **Testing** |  | 2026-12-26 | 2027-01-19 |  |  |
| SDR-ST-CON-P1-4790 |  | Testing | 21d | 2026-12-26 | 2027-01-19 | SDR-ST-CON-P1-3840, SDR-ST-CON-P1-3840 FF | 10.6d |
|  | 5 | **Backfilling** |  | 2027-01-19 | 2027-02-16 |  |  |
| SDR-ST-CON-P1-5720 |  | Backfilling | 21d | 2027-01-19 | 2027-02-16 | SDR-ST-CON-P1-4790 | 10.6d |
|  | 1 | **ROAD-01 From 470 to 1125 m (6) 110 mm HDPE** |  | 2026-09-20 | 2027-02-21 |  |  |
|  | 7 | **Pipes Work** |  | 2026-09-20 | 2027-01-30 |  |  |
|  | 1 | **Excavation** |  | 2026-09-20 | 2026-11-03 |  |  |
| SDR-ST-CON-P1-1430 |  | Excavation for GRP Pipe 200mm Diameter Section 1 | 17d | 2026-09-20 | 2026-10-11 | SDR-ST-CON-P1-1190 | 1.3d |
| SDR-ST-CON-P1-2110 |  | Excavation for GRP Pipe 200mm Diameter Section 2 | 17d | 2026-10-14 | 2026-11-03 | SDR-ST-CON-P1-1430 FS+3d | 9d |
|  | 5 | **bedding Works** |  | 2026-11-03 | 2026-11-21 |  |  |
| SDR-ST-CON-P1-2720 |  | Sand bedding for GRP Pipe 200mm Diameter | 15d | 2026-11-03 | 2026-11-21 | SDR-ST-CON-P1-2110 | 9d |
|  | 2 | **Pipes Laying** |  | 2026-11-21 | 2026-12-12 |  |  |
| SDR-ST-CON-P1-3300 |  | 200 mm GRP Pipe Laying | 18d | 2026-11-21 | 2026-12-12 | SDR-ST-CON-P1-2110, SDR-ST-CON-P1-2720 | 9d |
|  | 3 | **Testing** |  | 2026-12-12 | 2027-01-05 |  |  |
| SDR-ST-CON-P1-4120 |  | Testing of 200 mm GRP Pipe. | 21d | 2026-12-12 | 2027-01-05 | SDR-ST-CON-P1-3300 | 9d |
|  | 6 | **Backfilling** |  | 2027-01-05 | 2027-01-30 |  |  |
| SDR-ST-CON-P1-4970 |  | Backfilling of 200 mm GRP Pipe. | 21d | 2027-01-05 | 2027-01-30 | SDR-ST-CON-P1-4120 | 9d |
|  | 4 | **Manholes** |  | 2026-09-20 | 2027-02-21 |  |  |
|  | 1 | **Excavation** |  | 2026-09-20 | 2026-11-09 |  |  |
| SDR-ST-CON-P1-1440 |  | Excavation for manhole. Section 1 | 21d | 2026-09-20 | 2026-10-15 | SDR-ST-CON-P1-1430 SS, SDR-ST-ENG-AP-1090 | 1.3d |
| SDR-ST-CON-P1-2120 |  | Excavation for manhole. Section 2 | 21d | 2026-10-15 | 2026-11-09 | SDR-ST-CON-P1-1440 | 1.3d |
|  | 2 | **bedding Works** |  | 2026-11-09 | 2026-12-03 |  |  |
| SDR-ST-CON-P1-2870 |  | Sand bedding for manhole. | 21d | 2026-11-09 | 2026-12-03 | SDR-ST-CON-P1-2120 | 1.3d |
|  | 3 | **Install Manholes** |  | 2026-12-03 | 2026-12-28 |  |  |
| SDR-ST-CON-P1-3790 |  | Manhole Installation | 21d | 2026-12-03 | 2026-12-28 | SDR-ST-CON-P1-2120, SDR-ST-CON-P1-2870 | 1.3d |
|  | 4 | **Testing** |  | 2026-12-28 | 2027-01-21 |  |  |

| ID | WBS | Task | Duration | Start | Finish | Predecessors | Total float |
| --- | --- | --- | --- | --- | --- | --- | --- |
| SDR-ST-CON-P1-4710 |  | Testing | 21d | 2026-12-28 | 2027-01-21 | SDR-ST-CON-P1-3790, SDR-ST-CON-P1-3790 FF | 1.3d |
|  | 5 | **Backfilling** |  | 2027-01-21 | 2027-02-21 |  |  |
| SDR-ST-CON-P1-5700 |  | Backfilling | 21d | 2027-01-21 | 2027-02-21 | SDR-ST-CON-P1-4710, SDR-ST-CON-P1-4880 | 1.3d |
|  | 3 | **ROAD-01 From 1125 to 1765 m (7) 110 mm HDPE** |  | 2026-09-21 | 2027-02-24 |  |  |
|  | 7 | **Pipes Work** |  | 2026-09-21 | 2027-01-28 |  |  |
|  | 1 | **Excavation** |  | 2026-09-21 | 2026-11-04 |  |  |
| SDR-ST-CON-P1-1650 |  | Excavation for GRP Pipe 200mm Diameter Section 1 | 17d | 2026-09-21 | 2026-10-12 | SDR-ST-CON-P1-1210 | 0d |
| SDR-ST-CON-P1-2240 |  | Excavation for GRP Pipe 200mm Diameter Section 2 | 17d | 2026-10-15 | 2026-11-04 | SDR-ST-CON-P1-1650 FS+3d | 4.2d |
|  | 5 | **bedding Works** |  | 2026-11-04 | 2026-11-21 |  |  |
| SDR-ST-CON-P1-2830 |  | Sand bedding for GRP Pipe 200mm Diameter | 14d | 2026-11-04 | 2026-11-21 | SDR-ST-CON-P1-2240 | 4.2d |
|  | 2 | **Pipes Laying** |  | 2026-11-21 | 2026-12-10 |  |  |
| SDR-ST-CON-P1-3420 |  | 200 mm GRP Pipe Laying | 17d | 2026-11-21 | 2026-12-10 | SDR-ST-CON-P1-2830 | 4.2d |
|  | 3 | **Testing** |  | 2026-12-10 | 2027-01-04 |  |  |
| SDR-ST-CON-P1-4180 |  | Testing of 200 mm GRP Pipe. | 21d | 2026-12-10 | 2027-01-04 | SDR-ST-CON-P1-3420 | 4.2d |
|  | 6 | **Backfilling** |  | 2027-01-04 | 2027-01-28 |  |  |
| SDR-ST-CON-P1-5020 |  | Backfilling of 200 mm GRP Pipe. | 21d | 2027-01-04 | 2027-01-28 | SDR-ST-CON-P1-4180 | 4.2d |
|  | 4 | **Manholes** |  | 2026-09-21 | 2027-02-24 |  |  |
|  | 1 | **Excavation** |  | 2026-09-21 | 2026-11-10 |  |  |
| SDR-ST-CON-P1-1660 |  | Excavation for manhole. Section 1 | 21d | 2026-09-21 | 2026-10-17 | SDR-ST-CON-P1-1650 SS, SDR-ST-ENG-AP-1090 | 0d |
| SDR-ST-CON-P1-2310 |  | Excavation for manhole. Section 2 | 21d | 2026-10-17 | 2026-11-10 | SDR-ST-CON-P1-1660 | 0d |
|  | 2 | **bedding Works** |  | 2026-11-10 | 2026-12-05 |  |  |
| SDR-ST-CON-P1-3030 |  | Sand bedding for manhole. | 21d | 2026-11-10 | 2026-12-05 | SDR-ST-CON-P1-2310 | 0d |
|  | 3 | **Install Manholes** |  | 2026-12-05 | 2026-12-29 |  |  |
| SDR-ST-CON-P1-3910 |  | Manhole Installation | 21d | 2026-12-05 | 2026-12-29 | SDR-ST-CON-P1-2310, SDR-ST-CON-P1-3030 | 0d |
|  | 4 | **Testing** |  | 2026-12-29 | 2027-01-23 |  |  |
| SDR-ST-CON-P1-4830 |  | Testing | 21d | 2026-12-29 | 2027-01-23 | SDR-ST-CON-P1-3910 | 0d |
|  | 5 | **Backfilling** |  | 2027-01-23 | 2027-02-24 |  |  |
| SDR-ST-CON-P1-5740 |  | Backfilling | 21.3d | 2027-01-23 | 2027-02-24 | SDR-ST-CON-P1-4830 | 0d |
|  | 1 | **ROAD - 02** |  | 2026-09-22 | 2027-03-14 |  |  |
|  | 1 | **ROAD-01 From 400 to 900 m (10) 110 mm HDPE** |  | 2026-09-22 | 2027-02-24 |  |  |
|  | 7 | **Pipes Work** |  | 2026-09-22 | 2027-01-31 |  |  |
|  | 1 | **Excavation** |  | 2026-09-22 | 2026-11-05 |  |  |
| SDR-ST-CON-P1-1810 |  | Excavation for GRP Pipe 200mm Diameter Section 1 | 17d | 2026-09-22 | 2026-10-13 | SDR-ST-CON-P1-1250 | 0.1d |
| SDR-ST-CON-P1-2530 |  | Excavation for GRP Pipe 200mm Diameter Section 2 | 17d | 2026-10-17 | 2026-11-05 | SDR-ST-CON-P1-1810 FS+3d | 3d |
|  | 5 | **bedding Works** |  | 2026-11-05 | 2026-11-22 |  |  |
| SDR-ST-CON-P1-3210 |  | Sand bedding for GRP Pipe 200mm Diameter | 14d | 2026-11-05 | 2026-11-22 | SDR-ST-CON-P1-2530 | 3d |
|  | 2 | **Pipes Laying** |  | 2026-11-22 | 2026-12-13 |  |  |
| SDR-ST-CON-P1-3800 |  | 200 mm GRP Pipe Laying | 18d | 2026-11-22 | 2026-12-13 | SDR-ST-CON-P1-3210 | 3d |
|  | 3 | **Testing** |  | 2026-12-13 | 2027-01-06 |  |  |
| SDR-ST-CON-P1-4580 |  | Testing of 200 mm GRP Pipe. | 21d | 2026-12-13 | 2027-01-06 | SDR-ST-CON-P1-3800 | 3d |
|  | 6 | **Backfilling** |  | 2027-01-06 | 2027-01-31 |  |  |
| SDR-ST-CON-P1-5500 |  | Backfilling of 200 mm GRP Pipe. | 21d | 2027-01-06 | 2027-01-31 | SDR-ST-CON-P1-4580 | 3d |
|  | 4 | **Manholes** |  | 2026-09-22 | 2027-02-24 |  |  |
|  | 1 | **Excavation** |  | 2026-09-22 | 2026-11-11 |  |  |
| SDR-ST-CON-P1-1820 |  | Excavation for manhole. Section 1 | 21d | 2026-09-22 | 2026-10-18 | SDR-ST-CON-P1-1810 SS, SDR-ST-ENG-AP-1090 | 0.1d |
| SDR-ST-CON-P1-2580 |  | Excavation for manhole. Section 2 | 21d | 2026-10-18 | 2026-11-11 | SDR-ST-CON-P1-1820 | 0.1d |
|  | 2 | **bedding Works** |  | 2026-11-11 | 2026-12-06 |  |  |
| SDR-ST-CON-P1-3410 |  | Sand bedding for manhole. | 21d | 2026-11-11 | 2026-12-06 | SDR-ST-CON-P1-2580 | 0.1d |
|  | 3 | **Install Manholes** |  | 2026-12-06 | 2026-12-30 |  |  |
| SDR-ST-CON-P1-4390 |  | Manhole Installation | 21d | 2026-12-06 | 2026-12-30 | SDR-ST-CON-P1-2580, SDR-ST-CON-P1-3410 | 0.1d |
|  | 4 | **Testing** |  | 2026-12-30 | 2027-01-24 |  |  |
| SDR-ST-CON-P1-5120 |  | Testing | 21d | 2026-12-30 | 2027-01-24 | SDR-ST-CON-P1-4390, SDR-ST-CON-P1-4390 FF | 0.1d |
|  | 5 | **Backfilling** |  | 2027-01-24 | 2027-02-24 |  |  |
| SDR-ST-CON-P1-5770 |  | Backfilling | 21d | 2027-01-24 | 2027-02-24 | SDR-ST-CON-P1-5120, SDR-ST-CON-P1-5140 | 0.1d |
|  | 3 | **ROAD-01 From 900 to 1239 m (11) 110 mm HDPE** |  | 2026-10-01 | 2027-03-14 |  |  |
|  | 7 | **Pipes Work** |  | 2026-10-01 | 2027-02-04 |  |  |
|  | 1 | **Excavation** |  | 2026-10-01 | 2026-11-11 |  |  |
| SDR-ST-CON-P1-2030 |  | Excavation for GRP Pipe 200mm Diameter Section 1 | 16d | 2026-10-01 | 2026-10-20 | SDR-ST-CON-P1-1350 | 3d |
| SDR-ST-CON-P1-2700 |  | Excavation for GRP Pipe 200mm Diameter Section 2 | 16d | 2026-10-24 | 2026-11-11 | SDR-ST-CON-P1-2030 FS+3d | 14d |
|  | 5 | **bedding Works** |  | 2026-11-11 | 2026-11-23 |  |  |
| SDR-ST-CON-P1-3330 |  | Sand bedding for GRP Pipe 200mm Diameter | 10d | 2026-11-11 | 2026-11-23 | SDR-ST-CON-P1-2700 | 14d |
|  | 2 | **Pipes Laying** |  | 2026-11-23 | 2026-12-17 |  |  |
| SDR-ST-CON-P1-3750 |  | 200 mm GRP Pipe Laying | 21d | 2026-11-23 | 2026-12-17 | SDR-ST-CON-P1-2700, SDR-ST-CON-P1-3330 | 14d |
|  | 3 | **Testing** |  | 2026-12-17 | 2027-01-11 |  |  |
| SDR-ST-CON-P1-4670 |  | Testing of 200 mm GRP Pipe. | 21d | 2026-12-17 | 2027-01-11 | SDR-ST-CON-P1-3750 | 14d |
|  | 6 | **Backfilling** |  | 2027-01-11 | 2027-02-04 |  |  |
| SDR-ST-CON-P1-5670 |  | Backfilling of 200 mm GRP Pipe. | 21d | 2027-01-11 | 2027-02-04 | SDR-ST-CON-P1-4670 | 14d |
|  | 4 | **Manholes** |  | 2026-10-01 | 2027-03-14 |  |  |
|  | 1 | **Excavation** |  | 2026-10-01 | 2026-11-19 |  |  |
| SDR-ST-CON-P1-2040 |  | Excavation for manhole. Section 1 | 21d | 2026-10-01 | 2026-10-26 | SDR-ST-CON-P1-2030 SS, SDR-ST-ENG-AP-1090 | 3d |

| ID | WBS | Task | Duration | Start | Finish | Predecessors | Total float |
| --- | --- | --- | --- | --- | --- | --- | --- |
| SDR-ST-CON-P1-2760 |  | Excavation for manhole. Section 2 | 21d | 2026-10-26 | 2026-11-19 | SDR-ST-CON-P1-2040 | 3d |
|  | 2 | **bedding Works** |  | 2026-11-19 | 2026-12-14 |  |  |
| SDR-ST-CON-P1-3620 |  | Sand bedding for manhole. | 21d | 2026-11-19 | 2026-12-14 | SDR-ST-CON-P1-2760 | 3d |
|  | 3 | **Install Manholes** |  | 2026-12-14 | 2027-01-07 |  |  |
| SDR-ST-CON-P1-4560 |  | Manhole Installation | 21d | 2026-12-14 | 2027-01-07 | SDR-ST-CON-P1-2760, SDR-ST-CON-P1-3620 | 3d |
|  | 4 | **Testing** |  | 2027-01-07 | 2027-02-01 |  |  |
| SDR-ST-CON-P1-5440 |  | Testing | 21d | 2027-01-07 | 2027-02-01 | SDR-ST-CON-P1-4560, SDR-ST-CON-P1-4560 FF | 3d |
|  | 5 | **Backfilling** |  | 2027-02-01 | 2027-03-14 |  |  |
| SDR-ST-CON-P1-5800 |  | Backfilling | 21d | 2027-02-01 | 2027-03-14 | SDR-ST-CON-P1-5440, SDR-ST-CON-P1-4240 | 3d |
|  | 11 | **STORM WATER** |  | 2026-08-31 | 2027-01-19 |  |  |
|  | 2 | **ROAD N...** |  | 2026-08-31 | 2027-01-19 |  |  |
|  | 8 | **Pipes Works** |  | 2026-08-31 | 2027-01-19 |  |  |
|  | 1 | **Excavation** |  | 2026-08-31 | 2026-09-26 |  |  |
| SDR-ST-CON-P1-1460 |  | Excavation for GRP Pipes Section 1 | 21d | 2026-08-31 | 2026-09-26 | SDR-ST-CON-P1-1200 | 3.5d |
|  | 7 | **bedding Works** |  | 2026-09-26 | 2026-10-20 |  |  |
| SDR-ST-CON-P1-2170 |  | Sand bedding for GRP Pipes | 21d | 2026-09-26 | 2026-10-20 | SDR-ST-CON-P1-1460 | 3.5d |
|  | 2 | **Pipes Laying** |  | 2026-10-20 | 2026-11-14 |  |  |
| SDR-ST-CON-P1-2910 |  | Install ST GRP Pipes | 21d | 2026-10-20 | 2026-11-14 | SDR-ST-CON-P1-2170, SDR-ST-PRO-MS-1010 | 3.5d |
|  | 6 | **Testing** |  | 2026-11-14 | 2026-12-08 |  |  |
| SDR-ST-CON-P1-3830 |  | Testing ST GRP Pipes | 21d | 2026-11-14 | 2026-12-08 | SDR-ST-CON-P1-2910 | 3.5d |
|  | 3 | **Backfilling** |  | 2026-12-27 | 2027-01-19 |  |  |
| SDR-ST-CON-P1-4760 |  | Backfilling ST GRP Pipes | 20d | 2026-12-27 | 2027-01-19 | SDR-ST-CON-P1-3830, SDR-ST-CON-P3-1170 | 0d |
|  | 3 | **Package-3** |  | 2026-07-08 | 2027-07-21 |  |  |
|  | 1 | **Site Works** |  | 2026-07-08 | 2026-08-18 |  |  |
|  | 1 | **Earthworks** |  | 2026-07-08 | 2026-08-18 |  |  |
|  | 2 | **Excavation** |  | 2026-07-08 | 2026-08-01 |  |  |
| SDR-ST-CON-P3-1000 |  | Excavation in all types of soil to the required depth includes removal of waste material | 20d | 2026-07-08 | 2026-08-01 | SDR-ST-MILS-1000, SDR-ST-CON-P1-6060 | 0d |
|  | 1 | **Fill** |  | 2026-08-01 | 2026-08-18 |  |  |
| SDR-ST-CON-P3-1010 |  | Backfilling with improved and select fill material from the site or imported | 15d | 2026-08-01 | 2026-08-18 | SDR-ST-CON-P3-1000, SDR-ST-MILS-1000 | 0d |
|  | 2 | **Platform Works** |  | 2026-08-18 | 2027-06-30 |  |  |
|  | 1 | **Platform** |  | 2026-08-18 | 2027-02-11 |  |  |
|  | 1 | **Earthworks** |  | 2026-08-18 | 2026-09-28 |  |  |
|  | 1 | **Excavation** |  | 2026-08-18 | 2026-09-06 |  |  |
| SDR-ST-CON-P3-1020 |  | Excavation in all types of soil to the required depth includes removal of waste material | 16d | 2026-08-18 | 2026-09-06 | SDR-ST-CON-P3-1010, SDR-ST-MILS-1000 | 0d |
|  | 2 | **Fill** |  | 2026-09-06 | 2026-09-28 |  |  |
| SDR-ST-CON-P3-1030 |  | Backfilling with improved and select fill material from the site or imported Part 1 | 18d | 2026-09-06 | 2026-09-28 | SDR-ST-CON-P3-1020, SDR-ST-ENG-AP-1090, SDR-ST-MILS-1000 | 0d |
| SDR-ST-CON-P3-1040 |  | Backfilling with improved and select fill material from the site or imported Part 2 | 16d | 2026-09-06 | 2026-09-26 | SDR-ST-CON-P3-1020, SDR-ST-MILS-1000 | 2d |
|  | 3 | **Concrete Works** |  | 2026-09-28 | 2027-02-11 |  |  |
|  | 1 | **Foundations** |  | 2026-09-28 | 2026-12-01 |  |  |
| SDR-ST-CON-P3-1060 |  | Pouring Concrete under Foundation 100 mm thickness lean | 10d | 2026-09-28 | 2026-10-10 | SDR-ST-CON-P3-1030, SDR-ST-MILS-1000, SDR-ST-CON-P3-1030 FF, SDR-ST-CON-P3-1040 | 0d |
| SDR-ST-CON-P3-1080 |  | Provide and lay 2 layers of waterproofing bitumenous membrane 4mm below footings | 8d | 2026-10-10 | 2026-10-19 | SDR-ST-CON-P3-1060, SDR-ST-MILS-1000 | 0d |
| SDR-ST-CON-P3-1100 |  | Pouring Concrete for protecting waterproofing under the foundation 50 mm thickness | 10d | 2026-10-19 | 2026-10-31 | SDR-ST-CON-P3-1080, SDR-ST-MILS-1000, SDR-ST-PRO-MS-1260, SDR-ST-PRO-MS-1010, SDR-ST-PRO-MS-1010 FF | 0d |
|  | 1 | **Footings** |  | 2026-10-31 | 2026-12-01 |  |  |
| SDR-ST-CON-P3-1130 |  | Pouring concrete for footings Part 1 | 10d | 2026-10-31 | 2026-11-11 | SDR-ST-CON-P3-1100, SDR-ST-MILS-1000 | 0d |
| SDR-ST-CON-P3-1150 |  | Pouring concrete for footings Part 2 | 10d | 2026-11-11 | 2026-11-23 | SDR-ST-CON-P3-1130, SDR-ST-MILS-1000 | 0d |
| SDR-ST-CON-P3-1180 |  | Pouring concrete for footings Part 3 | 16.2d | 2026-11-11 | 2026-12-01 | SDR-ST-CON-P3-1150 SS, SDR-ST-ENG-AP-1090, SDR-ST-MILS-1000 | 0d |
|  | 2 | **Substructure** |  | 2026-12-01 | 2026-12-28 |  |  |
|  | 1 | **Basement** |  | 2026-12-01 | 2026-12-16 |  |  |
| SDR-ST-CON-P3-1200 |  | Pouring concrete for Basement Part 1 | 10d | 2026-12-01 | 2026-12-13 | SDR-ST-CON-P3-1180, SDR-ST-MILS-1000 | 0d |
| SDR-ST-CON-P3-1220 |  | Pouring concrete for Basement Part 2 | 8d | 2026-12-07 | 2026-12-16 | SDR-ST-CON-P3-1200 SS+5d, SDR-ST-ENG-AP-1090, SDR-ST-MILS-1000 | 4d |
|  | 2 | **Tank** |  | 2026-12-01 | 2026-12-15 |  |  |
| SDR-ST-CON-P3-1210 |  | Pouring concrete for Tank Part 1 | 6d | 2026-12-01 | 2026-12-08 | SDR-ST-CON-P3-1180, SDR-ST-MILS-1000 | 5d |
| SDR-ST-CON-P3-1230 |  | Pouring concrete for Tank Part 2 | 6d | 2026-12-08 | 2026-12-15 | SDR-ST-CON-P3-1210, SDR-ST-MILS-1000, SDR-ST-CON-P1-3830 | 4.5d |
|  | 3 | **Retaining Walls** |  | 2026-12-13 | 2026-12-28 |  |  |
| SDR-ST-CON-P3-1190 |  | Pouring concrete for Retaining Walls Part 1 | 7d | 2026-12-13 | 2026-12-21 | SDR-ST-CON-P3-1180, SDR-ST-MILS-1000, SDR-ST-CON-P3-1200, SDR-ST-CON-P1-3830 | 0d |
| SDR-ST-CON-P3-1250 |  | Pouring concrete for Retaining Walls Part 2 | 6d | 2026-12-21 | 2026-12-28 | SDR-ST-CON-P3-1190, SDR-ST-MILS-1000 | 0d |
|  | 3 | **Waterproofing Vertical** |  | 2026-12-28 | 2027-01-11 |  |  |
| SDR-ST-CON-P3-1300 |  | lay 2 layers of waterproofing bitumenous membrane 4mm including protection board for substructure vertical Part 1 | 4d | 2026-12-28 | 2027-01-02 | SDR-ST-CON-P3-1250, SDR-ST-MILS-1000 | 0d |
| SDR-ST-CON-P3-1370 |  | lay 2 layers of waterproofing bitumenous membrane 4mm including protection board for substructure vertical Part 2 | 4d | 2027-01-02 | 2027-01-06 | SDR-ST-CON-P3-1300, SDR-ST-MILS-1000, SDR-ST-CON-P1-4310 | 0d |
| SDR-ST-CON-P3-1430 |  | lay 2 layers of waterproofing bitumenous membrane 4mm including protection board for substructure vertical Part 3 | 4d | 2027-01-06 | 2027-01-11 | SDR-ST-CON-P3-1370, SDR-ST-MILS-1000 | 0d |
|  | 4 | **Neck Walls** |  | 2027-01-11 | 2027-01-17 |  |  |
| SDR-ST-CON-P3-1270 |  | Pouring concrete for Neck Walls Part 1 | 5d | 2027-01-11 | 2027-01-17 | SDR-ST-CON-P3-1230, SDR-ST-CON-P3-1220, SDR-ST-CON-P1-4950, SDR-ST-MILS-1000, SDR-ST-CON-P3-1430, SDR-ST-CON-P1-4270 | 0d |
| SDR-ST-CON-P3-1290 |  | Pouring concrete for Neck Walls Part 2 | 5d | 2027-01-11 | 2027-01-17 | SDR-ST-CON-P3-1270 SS, SDR-ST-CON-P1-4660, SDR-ST-MILS-1000 SS | 0d |
|  | 5 | **Preparation for Slab** |  | 2027-01-17 | 2027-01-26 |  |  |
| SDR-ST-CON-P3-1320 |  | Pouring Concrete under slab on grade and gound beams 50 mm thickness lean | 4d | 2027-01-17 | 2027-01-21 | SDR-ST-CON-P3-1290, SDR-ST-MILS-1000, SDR-ST-CON-P1-4610 | 0d |
| SDR-ST-CON-P3-1360 |  | Supply and lay 250 micron thk polyethylene sheet below slab on grade and ground beams | 4d | 2027-01-21 | 2027-01-26 | SDR-ST-CON-P3-1320, SDR-ST-MILS-1000 | 0d |
|  | 6 | **Slab on Grade** |  | 2027-01-26 | 2027-01-31 |  |  |
| SDR-ST-CON-P3-1380 |  | Pouring Concrete for Slab on grade | 4d | 2027-01-26 | 2027-01-31 | SDR-ST-CON-P3-1360, SDR-ST-MILS-1000, SDR-ST-CON-P1-4240 | 0d |
|  | 7 | **Finishes** |  | 2027-01-31 | 2027-02-11 |  |  |
|  | 9 | **Troweled Finish** |  | 2027-01-31 | 2027-02-03 |  |  |

| ID | WBS | Task | Duration | Start | Finish | Predecessors | Total float |
| --- | --- | --- | --- | --- | --- | --- | --- |
| SDR-ST-CON-P3-1400 |  | Pouring Concrete for Slab on grade with troweled finish Part 1 | 3d | 2027-01-31 | 2027-02-03 | SDR-ST-CON-P3-1380, SDR-ST-MILS-1000 | 0d |
| SDR-ST-CON-P3-1500 |  | Pouring Concrete for Slab on grade with troweled finish Part 2 | 3d | 2027-01-31 | 2027-02-03 | SDR-ST-CON-P3-1400 SS, SDR-ST-MILS-1000, SDR-ST-CON-P1-4820 | 0d |
|  | 8 | **Exposed Aggregate Finish** |  | 2027-02-03 | 2027-02-11 |  |  |
| SDR-ST-CON-P3-1420 |  | Pouring Concrete for Slab on grade with exposed aggregate finish Part 1 | 3d | 2027-02-03 | 2027-02-07 | SDR-ST-CON-P3-1380, SDR-ST-CON-P1-5500, SDR-ST-MILS-1000, SDR-ST-CON-P3-1500, SDR-ST-CON-P1-5020 | 0d |
| SDR-ST-CON-P3-1480 |  | Pouring Concrete for Slab on grade with exposed aggregate finish Part 2 | 3d | 2027-02-03 | 2027-02-07 | SDR-ST-CON-P3-1420 SS, SDR-ST-ENG-AP-1090, SDR-ST-MILS-1000 | 0d |
| SDR-ST-CON-P3-1490 |  | Pouring Concrete for Slab on grade with exposed aggregate finish Part 3 | 5.9d | 2027-02-03 | 2027-02-11 | SDR-ST-CON-P3-1480 SS, SDR-ST-MILS-1000 | 0d |
|  | 3 | **Finishes & Architectural Works** |  | 2027-04-29 | 2027-06-30 |  |  |
| SDR-ST-CON-P3-1540 |  | Installation of metal steel 1200mm railing including all accessories Part 1 | 15d | 2027-04-29 | 2027-05-23 | SDR-ST-CON-P3-1400, SDR-ST-CON-P3-1490, SDR-ST-MILS-1000, SDR-ST-CON-P1-5430, SDR-ST-CON-P1-4070, SDR-ST-CON-P1-4320, SDR-ST-CON-P1-5460 | 17.7d |
| SDR-ST-CON-P3-1590 |  | Installation of metal steel 1200mm railing including all accessories Part 2 | 15d | 2027-05-23 | 2027-06-09 | SDR-ST-CON-P3-1540, SDR-ST-MILS-1000, SDR-ST-CON-P1-5460, SDR-ST-CON-P1-3980 | 17.7d |
| SDR-ST-CON-P3-1640 |  | Installation of metal steel 1200mm railing including all accessories Part3 | 8d | 2027-06-09 | 2027-06-19 | SDR-ST-CON-P3-1590, SDR-ST-MILS-1000 | 17.7d |
| SDR-ST-CON-P3-1710 |  | Platform Paving & warning tiles | 4d | 2027-06-19 | 2027-06-23 | SDR-ST-CON-P3-1590, SDR-ST-CON-P3-1640, SDR-ST-MILS-1000, SDR-ST-CON-P1-5920 | 17.7d |
| SDR-ST-CON-P3-1760 |  | Painting Part 1 | 6d | 2027-06-23 | 2027-06-30 | SDR-ST-CON-P3-1710, SDR-ST-MILS-1000 | 17.7d |
| SDR-ST-CON-P3-1840 |  | Painting Part 2 | 6d | 2027-06-23 | 2027-06-30 | SDR-ST-CON-P3-1760 SS, SDR-ST-MILS-1000 | 17.7d |
|  | 5 | **Platform Electrical Works** |  | 2027-01-17 | 2027-02-09 |  |  |
| SDR-ST-CON-P3-1310 |  | cable conduits | 20d | 2027-01-17 | 2027-02-09 | SDR-ST-CON-P3-1290, SDR-ST-MILS-1000 | 13.7d |
|  | 3 | **Canopy works** |  | 2026-10-01 | 2027-07-20 |  |  |
|  | 1 | **Civil and Architectural Works** |  | 2026-10-01 | 2026-12-20 |  |  |
|  | 1 | **Concrete** |  | 2026-10-01 | 2026-12-20 |  |  |
| SDR-ST-CON-P3-1050 |  | Pouring Concrete under the foundation 100 mm thickness lean | 13d | 2026-10-01 | 2026-10-17 | SDR-ST-CON-P3-1060 SS+3d, SDR-ST-ENG-AP-1090, SDR-ST-MILS-1000 | 15.2d |
| SDR-ST-CON-P3-1090 |  | Pouring Concrete for protecting waterproofing under the foundation 50 mm thickness | 12d | 2026-11-07 | 2026-11-19 | SDR-ST-CON-P3-1050, SDR-ST-CON-P3-1070, SDR-ST-PRO-MS-1050, SDR-ST-MILS-1000, SDR-ST-PRO-MS-1030, SDR-ST-PRO-MS-1020, SDR-ST-PRO-MS-1040 | 3.1d |
| SDR-ST-CON-P3-1110 |  | Pouring Concrete for Footings | 12d | 2026-11-24 | 2026-12-07 | SDR-ST-CON-P3-1090, SDR-ST-PRO-MS-1110, SDR-ST-PRO-MS-1100, SDR-ST-PRO-MS-1080, SDR-ST-PRO-MS-1060, SDR-ST-PRO-MS-1120, SDR-ST-PRO-MS-1090, SDR-ST-PRO-MS-1070, SDR-ST-MILS-1000 | 0.1d |
| SDR-ST-CON-P3-1140 |  | Pouring Concrete for Coulumns necks | 8d | 2026-12-12 | 2026-12-20 | SDR-ST-CON-P3-1110, SDR-ST-PRO-MS-1110, SDR-ST-PRO-MS-1120, SDR-ST-MILS-1000, SDR-ST-CON-P1-3670 | 0.1d |
|  | 4 | **Metals** |  | 2026-10-17 | 2027-07-20 |  |  |
|  | 2 | **Structural Steel Framing** |  | 2026-11-24 | 2027-04-14 |  |  |
| SDR-ST-CON-P3-1120 |  | Anchor Bolt Verification | 16d | 2026-11-24 | 2026-12-12 | SDR-ST-CON-P3-1110 SS, SDR-ST-ENG-AP-1090, SDR-ST-MILS-1000 | 0.1d |
| SDR-ST-CON-P3-1160 |  | Erection of Columns Part 1 | 20d | 2026-12-13 | 2027-01-04 | SDR-ST-CON-P3-1120, SDR-ST-PRO-MS-1140, SDR-ST-PRO-MS-1130, SDR-ST-PRO-MS-1110, SDR-ST-MILS-1000, SDR-ST-CON-P1-3670 | 0.1d |
| SDR-ST-CON-P3-1240 |  | Erection of Columns Part 2 | 11d | 2027-01-05 | 2027-01-17 | SDR-ST-CON-P3-1160, SDR-ST-MILS-1000, SDR-ST-CON-P1-5200, SDR-ST-CON-P1-5040 | 0.1d |
| SDR-ST-CON-P3-1260 |  | Erection of Rafters Part 1 | 16d | 2027-01-18 | 2027-02-04 | SDR-ST-CON-P3-1240, SDR-ST-MILS-1000, SDR-ST-PRO-MS-1160, SDR-ST-PRO-MS-1150 | 0.1d |
| SDR-ST-CON-P3-1280 |  | Erection of Rafters Part 2 | 16d | 2027-01-18 | 2027-02-04 | SDR-ST-CON-P3-1260 SS, SDR-ST-MILS-1000 | 0.1d |
| SDR-ST-CON-P3-1330 |  | Installation of Bracing System Part 1 | 15d | 2027-02-06 | 2027-03-06 | SDR-ST-CON-P3-1280, SDR-ST-MILS-1000, SDR-ST-CON-P1-5670, SDR-ST-CON-P1-5500, SDR-ST-CON-P1-5020, SDR-ST-CON-P1-4240 | 13.1d |
| SDR-ST-CON-P3-1340 |  | Installation of Beams Part 1 | 10d | 2027-02-06 | 2027-02-24 | SDR-ST-CON-P3-1280, SDR-ST-MILS-1000 | 0.2d |
| SDR-ST-CON-P3-1350 |  | Installation of Girders Part 1 | 20d | 2027-02-06 | 2027-03-17 | SDR-ST-CON-P3-1280, SDR-ST-MILS-1000, SDR-ST-TC-1010 | 0d |
| SDR-ST-CON-P3-1390 |  | Installation of Beams Part 2 | 12d | 2027-02-24 | 2027-03-20 | SDR-ST-CON-P3-1340, SDR-ST-PRO-MS-1220, SDR-ST-PRO-MS-1210, SDR-ST-MILS-1000, SDR-ST-CON-P1-5770, SDR-ST-CON-P1-5740, SDR-ST-CON-P1-5700 | 0d |
| SDR-ST-CON-P3-1410 |  | Installation of Bracing System Part 2 | 16d | 2027-03-06 | 2027-03-30 | SDR-ST-CON-P3-1330, SDR-ST-PRO-MS-1230, SDR-ST-MILS-1000 | 13.1d |
| SDR-ST-CON-P3-1440 |  | Installation of Girders Part 2 | 12d | 2027-03-17 | 2027-03-31 | SDR-ST-CON-P3-1350, SDR-ST-MILS-1000, SDR-ST-CON-P1-5800 | 0d |
| SDR-ST-CON-P3-1460 |  | Installation of Connections (Bolting) | 12d | 2027-03-20 | 2027-04-03 | SDR-ST-CON-P3-1390, SDR-ST-PRO-MS-1230, SDR-ST-MILS-1000 | 0d |
| SDR-ST-CON-P3-1450 |  | Installation of Joists Part 1 | 12d | 2027-03-31 | 2027-04-14 | SDR-ST-CON-P3-1390, SDR-ST-MILS-1000, SDR-ST-CON-P3-1440, SDR-ST-PRO-MS-1180, SDR-ST-PRO-MS-1170, SDR-ST-CON-P1-5070 | 0d |
| SDR-ST-CON-P3-1470 |  | Installation of Joists Part 2 | 12d | 2027-03-31 | 2027-04-14 | SDR-ST-CON-P3-1450 SS, SDR-ST-ENG-AP-1090, SDR-ST-MILS-1000 | 0d |
|  | 3 | **Aluminum Cladding Panels** |  | 2027-04-14 | 2027-07-20 |  |  |
|  | 1 | **Steel Subframe Installation** |  | 2027-04-14 | 2027-07-20 |  |  |
| SDR-ST-CON-P3-1530 |  | Survey & Setting Out for Cladding | 8d | 2027-04-14 | 2027-04-24 | SDR-ST-CON-P3-1470, SDR-ST-CON-P3-1410, SDR-ST-CON-P3-1430, SDR-ST-PRO-MS-1240, SDR-ST-MILS-1000, SDR-ST-TC-1020, SDR-ST-CON-P1-4040, SDR-ST-CON-P1-3880, SDR-ST-CON-P1-4250 | 0d |
| SDR-ST-CON-P3-1560 |  | Install Steel Subframe Supports Part 1 | 18d | 2027-04-24 | 2027-05-15 | SDR-ST-CON-P3-1530, SDR-ST-MILS-1090, SDR-ST-MILS-1000, SDR-ST-PRO-MS-1250, SDR-ST-CON-P1-4070, SDR-ST-CON-P1-5280, SDR-ST-CON-P1-5490 | 0d |
| SDR-ST-CON-P3-1620 |  | Install Steel Subframe Supports Part 2 | 18d | 2027-05-15 | 2027-06-10 | SDR-ST-CON-P3-1560, SDR-ST-MILS-1000, SDR-ST-CON-P1-5460, SDR-ST-CON-P1-3980, SDR-ST-CON-P1-4050 | 0d |
| SDR-ST-CON-P3-1690 |  | Install Steel Subframe Supports Part 3 | 13d | 2027-06-10 | 2027-06-26 | SDR-ST-CON-P3-1620, SDR-ST-MILS-1000 | 0.7d |
| SDR-ST-CON-P3-1720 |  | Alignment & Leveling of Subframe Part 1 | 11d | 2027-06-10 | 2027-06-23 | SDR-ST-CON-P3-1690 SS, SDR-ST-MILS-1000 | 0.7d |
| SDR-ST-CON-P3-1770 |  | Alignment & Leveling of Subframe Part 2 | 8d | 2027-06-23 | 2027-07-03 | SDR-ST-CON-P3-1720, SDR-ST-MILS-1000 | 0.7d |
| SDR-ST-CON-P3-1830 |  | Fixing & Tightening of Subframe Connections Part 1 | 8d | 2027-07-03 | 2027-07-12 | SDR-ST-CON-P3-1770, SDR-ST-MILS-1000 | 0.7d |
| SDR-ST-CON-P3-1880 |  | Fixing & Tightening of Subframe Connections Part 2 | 7d | 2027-07-12 | 2027-07-20 | SDR-ST-CON-P3-1830, SDR-ST-MILS-1000 | 0.7d |
|  | 2 | **Aluminum Cladding Installation** |  | 2027-05-15 | 2027-07-20 |  |  |
| SDR-ST-CON-P3-1610 |  | Install Aluminum Panels (4mm Thick Part 1 | 17d | 2027-05-15 | 2027-06-09 | SDR-ST-CON-P3-1620 SS, SDR-ST-ENG-AP-1090, SDR-ST-MILS-1000, SDR-ST-CON-P1-4320, SDR-ST-CON-P1-4010 | 0d |
| SDR-ST-CON-P3-1660 |  | Install Aluminum Panels (4mm Thick Part 2 | 12d | 2027-06-09 | 2027-06-23 | SDR-ST-CON-P3-1610, SDR-ST-MILS-1000 | 0d |
| SDR-ST-CON-P3-1700 |  | Install Aluminum Panels (4mm Thick Part 3 | 7d | 2027-06-23 | 2027-07-01 | SDR-ST-CON-P3-1660, SDR-ST-MILS-1000 | 0d |
| SDR-ST-CON-P3-1730 |  | Fix Panels with Snap Hooks & Fasteners Part 1 | 6d | 2027-07-01 | 2027-07-08 | SDR-ST-CON-P3-1700, SDR-ST-MILS-1000 | 0d |
| SDR-ST-CON-P3-1750 |  | Fix Panels with Snap Hooks & Fasteners Part 2 | 5d | 2027-07-01 | 2027-07-07 | SDR-ST-CON-P3-1730 SS, SDR-ST-CON-P1-5920, SDR-ST-MILS-1000 | 0d |
| SDR-ST-CON-P3-1810 |  | Install Drainage System Part 1 | 4d | 2027-07-07 | 2027-07-12 | SDR-ST-CON-P3-1750, SDR-ST-MILS-1000 | 0d |
| SDR-ST-CON-P3-1820 |  | Install Drainage System Part 2 | 4.1d | 2027-07-07 | 2027-07-12 | SDR-ST-CON-P3-1810 SS, SDR-ST-ENG-AP-1090, SDR-ST-MILS-1000 | 0d |
| SDR-ST-CON-P3-1850 |  | Adjustment & Alignment of Panels Part 1 | 3d | 2027-07-12 | 2027-07-15 | SDR-ST-CON-P3-1820, SDR-ST-CON-P1-6000, SDR-ST-MILS-1000 | 0d |
| SDR-ST-CON-P3-1860 |  | Adjustment & Alignment of Panels Part 2 | 3d | 2027-07-12 | 2027-07-15 | SDR-ST-CON-P3-1850 SS, SDR-ST-MILS-1000 | 0d |
| SDR-ST-CON-P3-1890 |  | Sealant & Finishing Works | 4.6d | 2027-07-15 | 2027-07-20 | SDR-ST-CON-P3-1860, SDR-ST-MILS-1000 | 0d |
|  | 1 | **THERMAL & MOISTURE PROTECTION** |  | 2026-10-17 | 2026-12-27 |  |  |
|  | 1 | **Bituminous Sheet Waterproofing** |  | 2026-10-17 | 2026-12-27 |  |  |
| SDR-ST-CON-P3-1070 |  | Provide and lay 2 layers of waterproofing bitumenous membrane 4mm below footings | 5d | 2026-10-17 | 2026-10-22 | SDR-ST-CON-P3-1050, SDR-ST-MILS-1000 | 15.2d |
| SDR-ST-CON-P3-1170 |  | Provide and lay 2 layers of waterproofing bitumenous membrane 4mm in contact with soil | 5d | 2026-12-21 | 2026-12-27 | SDR-ST-CON-P3-1140, SDR-ST-CON-P1-3480, SDR-ST-CON-P1-3360, SDR-ST-CON-P1-3700, SDR-ST-CON-P1-3930, SDR-ST-CON-P1-3760, SDR-ST-CON-P1-3670, SDR-ST-CON-P1-3810, SDR-ST-MILS-1000, SDR-ST-CON-P3-1190, SDR-ST-CON-P3-1230, SDR-ST-CON-P3-1220 | 0d |
|  | 4 | **Electrical Works** |  | 2027-03-31 | 2027-07-21 |  |  |
|  | 1 | **Low-Voltage Electrical Power Conductors and Cables** |  | 2027-03-31 | 2027-04-24 |  |  |
| SDR-ST-CON-P3-1510 |  | Installtion and test low voltage cable including pulling of cable 600/1000V . | 20d | 2027-03-31 | 2027-04-24 | SDR-ST-CON-P3-1440, SDR-ST-MILS-1000 | 0.7d |
|  | 2 | **Ondoor Lighting Points** |  | 2027-04-24 | 2027-05-24 |  |  |
| SDR-ST-CON-P3-1580 |  | Install, test, and commission all necessary components for outdoor lighting points. | 21d | 2027-04-24 | 2027-05-24 | SDR-ST-CON-P3-1510, SDR-ST-PRO-MS-1250, SDR-ST-MILS-1000 | 0.7d |
|  | 3 | **Outdoor Lighting Fixtures** |  | 2027-05-24 | 2027-06-23 |  |  |
| SDR-ST-CON-P3-1630 |  | Install of L10 recessed in ceiling light, lenght1535mmxwidth75mmxhieght105mm, LED 53.2w Part 1 | 20d | 2027-05-24 | 2027-06-16 | SDR-ST-CON-P3-1580, SDR-ST-MILS-1000, SDR-ST-CON-P1-4050 | 0.7d |

| ID | WBS | Task | Duration | Start | Finish | Predecessors | Total float |
| --- | --- | --- | --- | --- | --- | --- | --- |
| SDR-ST-CON-P3-1650 |  | Install of L10 recessed in ceiling light, lenght1535mmxwidth75mmxhieght105mm, LED 53.2w Part 2 | 20d | 2027-06-01 | 2027-06-23 | SDR-ST-CON-P3-1630 SS+6d, SDR-ST-ENG-AP-1090, SDR-ST-MILS-1000, SDR-ST-TC-1000 | 0d |
|  | 4 | **CCTV** |  | 2027-03-31 | 2027-07-21 |  |  |
| SDR-ST-CON-P3-1520 |  | Install of Handhole (600x600x730mm) | 8d | 2027-03-31 | 2027-04-10 | SDR-ST-CON-P3-1440, SDR-ST-CON-P1-5790, SDR-ST-MILS-1000 | 0.7d |
| SDR-ST-CON-P3-1550 |  | Install of 2 core 9/125um indoor -outdoor central tube | 11d | 2027-04-10 | 2027-04-22 | SDR-ST-CON-P3-1520, SDR-ST-CO-1030, SDR-ST-MILS-1000 | 0.7d |
| SDR-ST-CON-P3-1570 |  | Install of 4 Port (2 duplex) LC/UPC OS2 fiber patch panel | 12d | 2027-04-22 | 2027-05-06 | SDR-ST-CON-P3-1550, SDR-ST-MILS-1000 | 0.7d |
| SDR-ST-CON-P3-1600 |  | Install of Pole mounted Filed Equipment cabinet (FEC) , with fan and ventilation | 20d | 2027-05-06 | 2027-06-05 | SDR-ST-CON-P3-1570, SDR-ST-MILS-1000, SDR-ST-CON-P1-5430 | 0.7d |
| SDR-ST-CON-P3-1670 |  | Install of 8 Port Industrial PoE Switch 10/1000BaseT | 16d | 2027-06-05 | 2027-06-23 | SDR-ST-CON-P3-1600, SDR-ST-CON-P1-5850, SDR-ST-MILS-1000 | 0.7d |
| SDR-ST-CON-P3-1680 |  | Install of 1.2KVA Industrial type UPS located at FEC | 16d | 2027-06-05 | 2027-06-23 | SDR-ST-CON-P3-1600, SDR-ST-MILS-1000, SDR-ST-CO-1010 | 0.7d |
| SDR-ST-CON-P3-1740 |  | Install of UTP CAT6 Patch Cord , connect the industrial switch with the cameras | 10d | 2027-06-24 | 2027-07-05 | SDR-ST-CON-P3-1680, SDR-ST-CON-P3-1670, SDR-ST-CON-P3-1650, SDR-ST-MILS-1000, SDR-ST-CON-P1-5920 | 0d |
| SDR-ST-CON-P3-1780 |  | Install of 5MP IP PoE Bullet Camera, outdoor mounted on canopy ceiling Part 1. | 12d | 2027-07-06 | 2027-07-19 | SDR-ST-CON-P3-1740, SDR-ST-MILS-1000 | 1.1d |
| SDR-ST-CON-P3-1790 |  | Install of 5MP IP PoE Bullet Camera, outdoor mounted on canopy ceiling Part 2. | 14d | 2027-07-06 | 2027-07-21 | SDR-ST-CON-P3-1740, SDR-ST-MILS-1000 | 0d |
|  | 5 | **Voice Evacuation System** |  | 2027-07-07 | 2027-07-17 |  |  |
| SDR-ST-CON-P3-1800 |  | install, test of Suspended ceiling outdoor projector speaker, bi-directional, 20w Part 1 | 8d | 2027-07-07 | 2027-07-17 | SDR-ST-CON-P3-1740, SDR-ST-CON-P1-5910, SDR-ST-CON-P1-5980 SS, SDR-ST-CON-P1-5970, SDR-ST-MILS-1000 | 0d |
| SDR-ST-CON-P3-1870 |  | install, test of Suspended ceiling outdoor projector speaker, bi-directional, 20w Part 2 | 8d | 2027-07-07 | 2027-07-17 | SDR-ST-CON-P3-1800 SS, SDR-ST-CON-P3-1780 SS, SDR-ST-CON-P3-1650, SDR-ST-MILS-1000 | 0d |
|  | 6 | **Testing and Comissioning** |  | 2027-01-19 | 2027-08-06 |  |  |
|  | 1 | **Civil Works** |  | 2027-05-09 | 2027-05-31 |  |  |
| SDR-ST-TC-1000 |  | Testing & Commissioning of road works | 15d | 2027-05-09 | 2027-05-31 | SDR-ST-CON-P1-5530 | 0d |
|  | 2 | **Storm Water Drainage Network** |  | 2027-01-19 | 2027-02-06 |  |  |
| SDR-ST-TC-1010 |  | Testing & Commissioning of network work | 15d | 2027-01-19 | 2027-02-06 | SDR-ST-CON-P1-4760, SDR-ST-CON-P1-4760 FF | 0d |
|  | 3 | **Sewerage Network** |  | 2027-03-14 | 2027-03-31 |  |  |
| SDR-ST-TC-1030 |  | Testing & Commissioning of Sewage Network | 15d | 2027-03-14 | 2027-03-31 | SDR-ST-CON-P1-5700, SDR-ST-CON-P1-5800 | 3d |
|  | 5 | **Portable Water** |  | 2027-03-22 | 2027-04-08 |  |  |
| SDR-ST-TC-1020 |  | Testing & Commissioning of Potable Network | 15d | 2027-03-22 | 2027-04-08 | SDR-ST-CON-P1-5030, SDR-ST-CON-P1-5070 | 5.2d |
|  | 6 | **Electrical Works** |  | 2027-07-18 | 2027-08-03 |  |  |
| SDR-ST-TC-1050 |  | Testing & Commissioning of Electrical Network | 15d | 2027-07-18 | 2027-08-03 | SDR-ST-CON-P1-6050 | 3d |
|  | 8 | **CCTV Works** |  | 2027-07-22 | 2027-08-06 |  |  |
| SDR-ST-TC-1040 |  | Testing & Commissioning of medium voltage works | 14d | 2027-07-22 | 2027-08-06 | SDR-ST-CON-P3-1790 | 0d |
|  | 7 | **Close Out** |  | 2027-03-22 | 2027-08-06 |  |  |
|  | 1 | **As Built Drawings** |  | 2027-03-22 | 2027-08-03 |  |  |
|  | 1 | **Civil** |  | 2027-05-09 | 2027-05-27 |  |  |
| SDR-ST-CO-1000 |  | Civil As-Built Drawing Submission | 7d | 2027-05-09 | 2027-05-22 | SDR-ST-CON-P1-5530 | 3d |
| SDR-ST-CO-1010 |  | Civil As-Built Drawing Approvals | 5d | 2027-05-23 | 2027-05-27 | SDR-ST-CO-1000 | 3d |
|  | 2 | **Mechanical** |  | 2027-03-22 | 2027-04-08 |  |  |
| SDR-ST-CO-1020 |  | Mechanical As-Built Drawing Submission | 7.9d | 2027-03-22 | 2027-03-30 | SDR-ST-CON-P1-5800, SDR-ST-CON-P1-5070 | 1d |
| SDR-ST-CO-1030 |  | Mechanical As-Built Drawing Approvals | 8d | 2027-03-31 | 2027-04-08 | SDR-ST-CO-1020 | 1d |
|  | 3 | **Electrical** |  | 2027-07-12 | 2027-08-03 |  |  |
| SDR-ST-CO-1040 |  | Electrical As-Built Drawing Submission | 10d | 2027-07-12 | 2027-07-22 | SDR-ST-CON-P1-6050 SS, SDR-ST-CO-1010 | 3d |
| SDR-ST-CO-1100 |  | Electrical As-Built Drawing Approvals | 10d | 2027-07-24 | 2027-08-03 | SDR-ST-CO-1040 | 3d |
|  | 2 | **Training and Manuals** |  | 2027-07-07 | 2027-08-06 |  |  |
| SDR-ST-CO-1050 |  | Training and Manuals | 26.8d | 2027-07-07 | 2027-08-06 | SDR-ST-CON-P3-1870 SS, SDR-ST-CON-P3-1630 | 0d |
|  | 3 | **Demobilize Manpower** |  | 2027-07-07 | 2027-08-06 |  |  |
| SDR-ST-CO-1060 |  | Manpower Demobilize | 26.8d | 2027-07-07 | 2027-08-06 | SDR-ST-CO-1050 SS, SDR-ST-CO-1020 | 0d |
|  | 4 | **Demobilize Equipment** |  | 2027-07-07 | 2027-08-06 |  |  |
| SDR-ST-CO-1070 |  | Equipments Demobilize | 26.8d | 2027-07-07 | 2027-08-06 | SDR-ST-CO-1060 SS, SDR-ST-CO-1020 | 0d |
|  | 5 | **Removal of Site Offices and Structures** |  | 2027-07-07 | 2027-08-06 |  |  |
| SDR-ST-CO-1090 |  | Site Office Removal | 26.8d | 2027-07-07 | 2027-08-06 | SDR-ST-CO-1070 SS+0.1d, SDR-ST-CO-1020 | 0d |
|  | 6 | **Handover** |  | 2027-07-21 | 2027-08-06 |  |  |
| SDR-ST-CO-1080 |  | Project Handover | 15d | 2027-07-21 | 2027-08-06 | SDR-ST-CO-1070 SS, SDR-ST-CO-1090 FF, SDR-ST-CON-P3-1890, SDR-ST-CON-P3-1880, SDR-ST-CON-P3-1840, SDR-ST-CON-P1-6030, SDR-ST-CON-P1-6040 SS, SDR-ST-CON-P1-6000, SDR-ST-CO-1100 FF, SDR-ST-TC-1050 FF, SDR-ST-MILS-1100, SDR-ST-MILS-1120 FF, SDR-ST-TC-1000 FF, SDR-ST-TC-1040 FF, SDR-ST-CON-P1-5980, SDR-ST-CON-P1-6040 | 0d |

## Version 2 (data date 2026-09-28, saved 2026-09-28, file SUD0518 28 Sep 26.xer)

Last finish stays 2027-08-06. Complete tasks 0 → 183.

Added:

| ID | Task | Start | Finish |
| --- | --- | --- | --- |
| 15 | **ROAD WORKS** | 2026-04-23 | 2027-07-14 |
| 1 | **ROAD-02 From 0 to 400 m (9)** | 2026-05-02 | 2027-07-14 |
| 2 | **ROAD-02 From 400 to 900 m (10)** | 2026-05-02 | 2027-06-05 |
| 3 | **ROAD-02 From 900 to 1239 m (11)** | 2026-05-03 | 2027-06-27 |
| 3 | **ROAD-02 From 0 to 400 m (9) 2 Way 150 mm** | 2026-10-31 | 2027-05-24 |
| 2 | **ROAD-02 From 400 to 900 m (10) 2 Way 150 mm** | 2026-11-08 | 2027-06-06 |
| 1 | **ROAD-02 From 900 to 1239 m (11) 2 Way 150 mm** | 2026-11-16 | 2027-04-27 |
| 6 | **ROAD-02 From 0 to 400 m (9) 2 Way 110 mm** | 2026-09-28 | 2027-01-16 |
| 5 | **ROAD-02 From 400 to 900 m (10) 4 Way 110 mm** | 2026-09-28 | 2027-01-31 |
| 4 | **ROAD-02 From 900 to 1239 m (11) 2 Way 110 mm** | 2026-09-28 | 2027-01-20 |
| 1 | **ROAD-02 From 0 to 400 m (9) 2 Way 110 mm** | 2026-09-28 | 2026-12-27 |
| 2 | **ROAD-02 From 400 to 900 m (10) 4 Way 110 mm** | 2026-09-28 | 2026-12-23 |
| 3 | **ROAD-02 From 900 to 1239 m (11) 2 Way 110 mm** | 2026-09-28 | 2026-12-17 |
| 3 | **ROAD-02 From 0 to 400 m (9) (2X3)X50 mm MH-5 to MH-7** | 2026-09-28 | 2027-03-02 |
| 1 | **ROAD-02 From 400 to 900 m (10) (2X3)X50 mm MH-1 to MH-4** | 2026-09-28 | 2027-02-25 |
| 2 | **ROAD-02 From 900 to 1239 m (11) (2)X32 mm MH-1** | 2026-09-28 | 2027-02-21 |
| 1 | **ROAD-02 From 400 to 900 m (10)** | 2026-08-24 | 2027-05-01 |
| 4 | **ROAD-02 From 900 to 1239 m (11)** | 2026-08-24 | 2027-05-30 |
| 3 | **ROAD-02 From 0 to 400 m (9)** | 2026-08-27 | 2027-04-06 |
| 2 | **ROAD-02 From 400 to 900 m (10)** | 2026-08-27 | 2027-03-29 |
| 1 | **ROAD-02 From 900 to 1239 m (11)** | 2026-08-27 | 2027-02-18 |
| 1 | **ROAD-02 From 400 to 900 m (10) 110 mm HDPE** | 2026-09-07 | 2027-03-31 |
| 3 | **ROAD-02 From 900 to 1239 m (11) 110 mm HDPE** | 2026-09-07 | 2027-03-03 |

Removed: ROAD WORKS 1; ROAD-01 From 0 to 400 m (9); ROAD-01 From 400 to 900 m (10); ROAD-01 From 900 to 1239 m (11); ROAD-01 From 0 to 400 m (9) 2 Way 150 mm; ROAD-01 From 400 to 900 m (10) 2 Way 150 mm; ROAD-01 From 900 to 1239 m (11) 2 Way 150 mm; ROAD-01 From 0 to 400 m (9) 2 Way 110 mm; ROAD-01 From 400 to 900 m (10) 4 Way 110 mm; ROAD-01 From 900 to 1239 m (11) 2 Way 110 mm; ROAD-01 From 0 to 400 m (9) 2 Way 110 mm; ROAD-01 From 400 to 900 m (10) 4 Way 110 mm; ROAD-01 From 900 to 1239 m (11) 2 Way 110 mm; ROAD-01 From 0 to 400 m (9) (2X3)X50 mm MH-5 to MH-7; ROAD-01 From 400 to 900 m (10) (2X3)X50 mm MH-1 to MH-4; ROAD-01 From 900 to 1239 m (11) (2)X32 mm MH-1; ROAD-01 From 400 to 900 m (10); ROAD-01 From 900 to 1239 m (11); ROAD-01 From 0 to 400 m (9); ROAD-01 From 400 to 900 m (10); ROAD-01 From 900 to 1239 m (11); ROAD-01 From 400 to 900 m (10) 110 mm HDPE; ROAD-01 From 900 to 1239 m (11) 110 mm HDPE

Changed:

| ID | Task | Start | Finish | Complete | Total float | Predecessors | Other |
| --- | --- | --- | --- | --- | --- | --- | --- |
| SDR-ST-MILS-1000 | Project Start | 2026-04-07 A | 2026-04-07 A | 0% → 100% | 0d → none |  |  |
| SDR-ST-MILS-1070 | Completion of road and paving works | 2026-12-06 → 2027-01-21 (+46d) | 2026-12-06 → 2027-01-21 (+46d) |  | 10.4d → 20.6d |  |  |
| SDR-ST-MILS-1100 | Completion of site and platform works | 2027-02-11 → 2027-04-07 (+55d) | 2027-02-11 → 2027-04-07 (+55d) |  | 9.1d → 33.9d |  |  |
| SDR-ST-MILS-1140 | Project Finish |  |  |  | 0d → 0.5d | SDR-ST-CO-1080 FF, SDR-ST-CO-1090 FF, SDR-ST-CON-P1-1050, SDR-ST-CON-P1-1000, SDR-ST-CON-P1-1090, SDR-ST-CON-P1-1150, SDR-ST-CON-P1-1200, SDR-ST-CON-P1-1470, SDR-ST-CON-P1-2140, SDR-ST-CON-P1-2710, SDR-ST-CON-P1-3260, SDR-ST-CON-P1-3850, SDR-ST-CON-P1-4770, SDR-ST-CON-P1-4410, SDR-ST-CON-P1-5110, SDR-ST-CON-P1-3860, SDR-ST-CON-P1-4530, SDR-ST-CON-P1-4620, SDR-ST-CON-P1-4100, SDR-ST-CON-P1-5310, SDR-ST-CON-P1-5210, SDR-ST-CON-P1-5470, SDR-ST-CON-P1-5480, SDR-ST-CON-P1-5320, SDR-ST-CON-P1-5220, SDR-ST-CON-P1-5490, SDR-ST-CON-P1-1010, SDR-ST-CON-P1-1070, SDR-ST-CON-P1-1120, SDR-ST-CON-P1-1190, SDR-ST-CON-P1-2090, SDR-ST-CON-P1-1400, SDR-ST-CON-P1-2570, SDR-ST-CON-P1-3140, SDR-ST-CON-P1-3720, SDR-ST-CON-P1-4730, SDR-ST-CON-P1-4430, SDR-ST-CON-P1-5040, SDR-ST-CON-P1-3730, SDR-ST-CON-P1-4480, SDR-ST-CON-P1-4490, SDR-ST-CON-P1-3890, SDR-ST-CON-P1-5400, SDR-ST-CON-P1-5270, SDR-ST-CON-P1-5150, SDR-ST-CON-P1-5080, SDR-ST-CON-P1-5160, SDR-ST-CON-P1-5090, SDR-ST-CON-P1-5280, SDR-ST-CON-P1-1020, SDR-ST-CON-P1-1080, SDR-ST-CON-P1-1140, SDR-ST-CON-P1-1210 FF, SDR-ST-CON-P1-1580, SDR-ST-CON-P1-2220, SDR-ST-CON-P1-2880, SDR-ST-CON-P1-3600, SDR-ST-CON-P1-4220, SDR-ST-CON-P1-5010, SDR-ST-CON-P1-4750, SDR-ST-CON-P1-5200, SDR-ST-CON-P1-4230, SDR-ST-CON-P1-4950, SDR-ST-CON-P1-4870, SDR-ST-CON-P1-4440, SDR-ST-CON-P1-5690, SDR-ST-CON-P1-5610, SDR-ST-CON-P1-5450, SDR-ST-CON-P1-5300, SDR-ST-CON-P1-5680, SDR-ST-CON-P1-5540, SDR-ST-CON-P1-5460, SDR-ST-CON-P1-1030, SDR-ST-CON-P1-1100, SDR-ST-CON-P1-1160, SDR-ST-CON-P1-2920, SDR-ST-CON-P1-2620, SDR-ST-CON-P1-1910, SDR-ST-CON-P1-1300, SDR-ST-CON-P1-3390, SDR-ST-CON-P1-3960, SDR-ST-CON-P1-4890, SDR-ST-CON-P1-4540, SDR-ST-CON-P1-5130, SDR-ST-CON-P1-3970, SDR-ST-CON-P1-4690, SDR-ST-CON-P1-4780, SDR-ST-CON-P1-4200, SDR-ST-CON-P1-5550, SDR-ST-CON-P1-5370, SDR-ST-CON-P1-5250, SDR-ST-CON-P1-5630, SDR-ST-CON-P1-5560, SDR-ST-CON-P1-5380, SDR-ST-CON-P1-5260, SDR-ST-CON-P1-5390, SDR-ST-CON-P1-1040, SDR-ST-CON-P1-1110, SDR-ST-CON-P1-1170, SDR-ST-CON-P1-2540, SDR-ST-CON-P1-1830, SDR-ST-CON-P1-1250, SDR-ST-CON-P1-3100, SDR-ST-CON-P1-3540, SDR-ST-CON-P1-4130, SDR-ST-CON-P1-4930, SDR-ST-CON-P1-4600, SDR-ST-CON-P1-5180, SDR-ST-CON-P1-4140, SDR-ST-CON-P1-4810, SDR-ST-CON-P1-4920, SDR-ST-CON-P1-4350, SDR-ST-CON-P1-5640, SDR-ST-CON-P1-5580, SDR-ST-CON-P1-5410, SDR-ST-CON-P1-5290, SDR-ST-CON-P1-5590, SDR-ST-CON-P1-5420, SDR-ST-CON-P1-5430, SDR-ST-CON-P1-1060, SDR-ST-CON-P1-1130, SDR-ST-CON-P1-1220, SDR-ST-CON-P1-2730, SDR-ST-CON-P1-1350, SDR-ST-CON-P1-1990, SDR-ST-CON-P1-3320, SDR-ST-CON-P1-3740, SDR-ST-CON-P1-4290, SDR-ST-CON-P1-4980, SDR-ST-CON-P1-4650, SDR-ST-CON-P1-5230, SDR-ST-CON-P1-4300, SDR-ST-CON-P1-4860, SDR-ST-CON-P1-4450, SDR-ST-CON-P1-4940, SDR-ST-CON-P1-5650, SDR-ST-CON-P1-5600, SDR-ST-CON-P1-5510, SDR-ST-CON-P1-5350, SDR-ST-CON-P1-5660, SDR-ST-CON-P1-5520, SDR-ST-CON-P1-5360, SDR-ST-CON-P1-5530, SDR-ST-CON-P1-1570, SDR-ST-CON-P1-2270, SDR-ST-CON-P1-3000, SDR-ST-CON-P1-3900, SDR-ST-CON-P1-1720, SDR-ST-CON-P1-2420, SDR-ST-CON-P1-3150, SDR-ST-CON-P1-4000, SDR-ST-CON-P1-1770, SDR-ST-CON-P1-2500, SDR-ST-CON-P1-3280, SDR-ST-CON-P1-4250, SDR-ST-CON-P1-1730, SDR-ST-CON-P1-2430, SDR-ST-CON-P1-3160, SDR-ST-CON-P1-4010, SDR-ST-CON-P1-1920, SDR-ST-CON-P1-2660, SDR-ST-CON-P1-3430, SDR-ST-CON-P1-4320, SDR-ST-CON-P1-1840, SDR-ST-CON-P1-2590, SDR-ST-CON-P1-3340, SDR-ST-CON-P1-4050, SDR-ST-CON-P1-2000, SDR-ST-CON-P1-2750, SDR-ST-CON-P1-3460, SDR-ST-CON-P1-3980, SDR-ST-CON-P1-4840, SDR-ST-CON-P1-1180, SDR-ST-CON-P1-2250, SDR-ST-CON-P1-1560, SDR-ST-CON-P1-2980, SDR-ST-CON-P1-3870, SDR-ST-CON-P1-5170, SDR-ST-CON-P1-4420, SDR-ST-CON-P1-3120, SDR-ST-CON-P1-1590, SDR-ST-CON-P1-2390, SDR-ST-CON-P1-3990, SDR-ST-CON-P1-4680, SDR-ST-CON-P1-5760, SDR-ST-CON-P1-5050, SDR-ST-CON-P1-3040, SDR-ST-CON-P1-1500, SDR-ST-CON-P1-2320, SDR-ST-CON-P1-3920, SDR-ST-CON-P1-4850, SDR-ST-CON-P1-5780, SDR-ST-CON-P1-5330, SDR-ST-CON-P1-3190, SDR-ST-CON-P1-1700, SDR-ST-CON-P1-2410, SDR-ST-CON-P1-4110, SDR-ST-CON-P1-4960, SDR-ST-CON-P1-5790, SDR-ST-CON-P1-5340, SDR-ST-CON-P1-1450, SDR-ST-CON-P1-2160, SDR-ST-CON-P1-2890, SDR-ST-CON-P1-3530, SDR-ST-CON-P1-3810, SDR-ST-CON-P1-1600, SDR-ST-CON-P1-2280, SDR-ST-CON-P1-2800, SDR-ST-CON-P1-3250, SDR-ST-CON-P1-3670, SDR-ST-CON-P1-1510, SDR-ST-CON-P1-2180, SDR-ST-CON-P1-2930, SDR-ST-CON-P1-3510, SDR-ST-CON-P1-3760, SDR-ST-CON-P1-1710, SDR-ST-CON-P1-2360, SDR-ST-CON-P1-3090, SDR-ST-CON-P1-3520, SDR-ST-CON-P1-3930, SDR-ST-CON-P1-5840, SDR-ST-CON-P1-5890, SDR-ST-CON-P1-5920, SDR-ST-CON-P1-5880, SDR-ST-CON-P1-5930, SDR-ST-CON-P1-6000, SDR-ST-CON-P1-5940, SDR-ST-CON-P1-6010, SDR-ST-CON-P1-6040, SDR-ST-CON-P1-5960, SDR-ST-CON-P1-5950, SDR-ST-CON-P1-6020, SDR-ST-CON-P1-6050, SDR-ST-CON-P1-1310, SDR-ST-CON-P1-2350, SDR-ST-CON-P1-1780, SDR-ST-CON-P1-2860, SDR-ST-CON-P1-3500, SDR-ST-CON-P1-4570, SDR-ST-CON-P1-4260, SDR-ST-CON-P1-1260, SDR-ST-CON-P1-2260, SDR-ST-CON-P1-1760, SDR-ST-CON-P1-2770, SDR-ST-CON-P1-3350, SDR-ST-CON-P1-4400, SDR-ST-CON-P1-3940, SDR-ST-CON-P1-2400, SDR-ST-CON-P1-1360, SDR-ST-CON-P1-1900, SDR-ST-CON-P1-2840, SDR-ST-CON-P1-3470, SDR-ST-CON-P1-4610, SDR-ST-CON-P1-4080, SDR-ST-CON-P1-1320, SDR-ST-CON-P1-1950, SDR-ST-CON-P1-2560, SDR-ST-CON-P1-3200, SDR-ST-CON-P1-3700, SDR-ST-CON-P1-1270, SDR-ST-CON-P1-1870, SDR-ST-CON-P1-2470, SDR-ST-CON-P1-2970, SDR-ST-CON-P1-3360, SDR-ST-CON-P1-1370, SDR-ST-CON-P1-2060, SDR-ST-CON-P1-2600, SDR-ST-CON-P1-3110, SDR-ST-CON-P1-3480, SDR-ST-CON-P1-5810, SDR-ST-CON-P1-5850, SDR-ST-CON-P1-5970, SDR-ST-CON-P1-5820, SDR-ST-CON-P1-5860, SDR-ST-CON-P1-5980, SDR-ST-CON-P1-5830, SDR-ST-CON-P1-5870, SDR-ST-CON-P1-5910, SDR-ST-CON-P1-5900, SDR-ST-CON-P1-5990, SDR-ST-CON-P1-6030, SDR-ST-CON-P1-1690, SDR-ST-CON-P1-2340, SDR-ST-CON-P1-3070, SDR-ST-CON-P1-3680, SDR-ST-CON-P1-4310, SDR-ST-CON-P1-2370, SDR-ST-CON-P1-1680, SDR-ST-CON-P1-3080, SDR-ST-CON-P1-3690, SDR-ST-CON-P1-4360, SDR-ST-CON-P1-4880, SDR-ST-CON-P1-1530, SDR-ST-CON-P1-2190, SDR-ST-CON-P1-2940, SDR-ST-CON-P1-3770, SDR-ST-CON-P1-4370, SDR-ST-CON-P1-2200, SDR-ST-CON-P1-1520, SDR-ST-CON-P1-2950, SDR-ST-CON-P1-3780, SDR-ST-CON-P1-4630, SDR-ST-CON-P1-5140, SDR-ST-CON-P1-1240, SDR-ST-CON-P1-1790, SDR-ST-CON-P1-2510, SDR-ST-CON-P1-3230, SDR-ST-CON-P1-4020, SDR-ST-CON-P1-1230, SDR-ST-CON-P1-1800, SDR-ST-CON-P1-2520, SDR-ST-CON-P1-3240, SDR-ST-CON-P1-4150, SDR-ST-CON-P1-4740, SDR-ST-CON-P1-2290, SDR-ST-CON-P1-1620, SDR-ST-CON-P1-3010, SDR-ST-CON-P1-3630, SDR-ST-CON-P1-4240, SDR-ST-CON-P1-1610, SDR-ST-CON-P1-2300, SDR-ST-CON-P1-3020, SDR-ST-CON-P1-3820, SDR-ST-CON-P1-4720, SDR-ST-CON-P1-5240, SDR-ST-CON-P1-1340, SDR-ST-CON-P1-1960, SDR-ST-CON-P1-2670, SDR-ST-CON-P1-3440, SDR-ST-CON-P1-4270, SDR-ST-CON-P1-1330, SDR-ST-CON-P1-1970, SDR-ST-CON-P1-2680, SDR-ST-CON-P1-3450, SDR-ST-CON-P1-4380, SDR-ST-CON-P1-4900, SDR-ST-CON-P1-1290, SDR-ST-CON-P1-1880, SDR-ST-CON-P1-2640, SDR-ST-CON-P1-3370, SDR-ST-CON-P1-4160, SDR-ST-CON-P1-1280, SDR-ST-CON-P1-1890, SDR-ST-CON-P1-2650, SDR-ST-CON-P1-3380, SDR-ST-CON-P1-4280, SDR-ST-CON-P1-4820, SDR-ST-CON-P1-1390, SDR-ST-CON-P1-2070, SDR-ST-CON-P1-2780, SDR-ST-CON-P1-3580, SDR-ST-CON-P1-4170, SDR-ST-CON-P1-1380, SDR-ST-CON-P1-2080, SDR-ST-CON-P1-2790, SDR-ST-CON-P1-3590, SDR-ST-CON-P1-4500, SDR-ST-CON-P1-5000, SDR-ST-CON-P1-1670, SDR-ST-CON-P1-2330, SDR-ST-CON-P1-2990, SDR-ST-CON-P1-3880, SDR-ST-CON-P1-1740, SDR-ST-CON-P1-2440, SDR-ST-CON-P1-3170, SDR-ST-CON-P1-4040, SDR-ST-CON-P1-1750, SDR-ST-CON-P1-2450, SDR-ST-CON-P1-3180, SDR-ST-CON-P1-4070, SDR-ST-CON-P1-1480, SDR-ST-CON-P1-1980, SDR-ST-CON-P1-2490, SDR-ST-CON-P1-3270, SDR-ST-CON-P1-4190, SDR-ST-CON-P1-4800, SDR-ST-CON-P1-2150, SDR-ST-CON-P1-1490, SDR-ST-CON-P1-2850, SDR-ST-CON-P1-3560, SDR-ST-CON-P1-4470, SDR-ST-CON-P1-5030, SDR-ST-CON-P1-1410, SDR-ST-CON-P1-2050, SDR-ST-CON-P1-2690, SDR-ST-CON-P1-3290, SDR-ST-CON-P1-4030, SDR-ST-CON-P1-4700, SDR-ST-CON-P1-2100, SDR-ST-CON-P1-1420, SDR-ST-CON-P1-2820, SDR-ST-CON-P1-3660, SDR-ST-CON-P1-4550, SDR-ST-CON-P1-5100, SDR-ST-CON-P1-1630, SDR-ST-CON-P1-2130, SDR-ST-CON-P1-2810, SDR-ST-CON-P1-3490, SDR-ST-CON-P1-3950, SDR-ST-CON-P1-4520, SDR-ST-CON-P1-2230, SDR-ST-CON-P1-1640, SDR-ST-CON-P1-2900, SDR-ST-CON-P1-3640, SDR-ST-CON-P1-4510, SDR-ST-CON-P1-5070, SDR-ST-CON-P1-1930, SDR-ST-CON-P1-2480, SDR-ST-CON-P1-3130, SDR-ST-CON-P1-3650, SDR-ST-CON-P1-4340, SDR-ST-CON-P1-4910, SDR-ST-CON-P1-1940, SDR-ST-CON-P1-2630, SDR-ST-CON-P1-3400, SDR-ST-CON-P1-4330, SDR-ST-CON-P1-5060, SDR-ST-CON-P1-5730, SDR-ST-CON-P1-2460, SDR-ST-CON-P1-1850, SDR-ST-CON-P1-3060, SDR-ST-CON-P1-3570, SDR-ST-CON-P1-4060, SDR-ST-CON-P1-4640, SDR-ST-CON-P1-1860, SDR-ST-CON-P1-2550, SDR-ST-CON-P1-3310, SDR-ST-CON-P1-4210, SDR-ST-CON-P1-4990, SDR-ST-CON-P1-5710, SDR-ST-CON-P1-2010, SDR-ST-CON-P1-2610, SDR-ST-CON-P1-3220, SDR-ST-CON-P1-3610, SDR-ST-CON-P1-4090, SDR-ST-CON-P1-4660, SDR-ST-CON-P1-2020, SDR-ST-CON-P1-2740, SDR-ST-CON-P1-3550, SDR-ST-CON-P1-4460, SDR-ST-CON-P1-5190, SDR-ST-CON-P1-5750, SDR-ST-CON-P1-1540, SDR-ST-CON-P1-2380, SDR-ST-CON-P1-3050, SDR-ST-CON-P1-3710, SDR-ST-CON-P1-4590, SDR-ST-CON-P1-5570, SDR-ST-CON-P1-1550, SDR-ST-CON-P1-2210, SDR-ST-CON-P1-2960, SDR-ST-CON-P1-3840, SDR-ST-CON-P1-4790, SDR-ST-CON-P1-5720, SDR-ST-CON-P1-1430, SDR-ST-CON-P1-2110, SDR-ST-CON-P1-2720, SDR-ST-CON-P1-3300, SDR-ST-CON-P1-4120, SDR-ST-CON-P1-4970, SDR-ST-CON-P1-1440, SDR-ST-CON-P1-2120, SDR-ST-CON-P1-2870, SDR-ST-CON-P1-3790, SDR-ST-CON-P1-4710, SDR-ST-CON-P1-5700, SDR-ST-CON-P1-2240, SDR-ST-CON-P1-1650, SDR-ST-CON-P1-2830, SDR-ST-CON-P1-3420, SDR-ST-CON-P1-4180, SDR-ST-CON-P1-5020, SDR-ST-CON-P1-1660, SDR-ST-CON-P1-2310, SDR-ST-CON-P1-3030, SDR-ST-CON-P1-3910, SDR-ST-CON-P1-4830, SDR-ST-CON-P1-5740, SDR-ST-CON-P1-2530, SDR-ST-CON-P1-1810, SDR-ST-CON-P1-3210, SDR-ST-CON-P1-3800, SDR-ST-CON-P1-4580, SDR-ST-CON-P1-5500, SDR-ST-CON-P1-1820, SDR-ST-CON-P1-2580, SDR-ST-CON-P1-3410, SDR-ST-CON-P1-4390, SDR-ST-CON-P1-5120, SDR-ST-CON-P1-5770, SDR-ST-CON-P1-2030, SDR-ST-CON-P1-2700, SDR-ST-CON-P1-3330, SDR-ST-CON-P1-3750, SDR-ST-CON-P1-4670, SDR-ST-CON-P1-5670, SDR-ST-CON-P1-2040, SDR-ST-CON-P1-2760, SDR-ST-CON-P1-3620, SDR-ST-CON-P1-4560, SDR-ST-CON-P1-5440, SDR-ST-CON-P1-5800, SDR-ST-CON-P1-1460, SDR-ST-CON-P1-2170, SDR-ST-CON-P1-2910, SDR-ST-CON-P1-3830, SDR-ST-CON-P1-4760, SDR-ST-CON-P3-1000, SDR-ST-CON-P3-1010, SDR-ST-CON-P3-1020, SDR-ST-CON-P3-1030, SDR-ST-CON-P3-1040 FF, SDR-ST-CON-P3-1060, SDR-ST-CON-P3-1080, SDR-ST-CON-P3-1100, SDR-ST-CON-P3-1180, SDR-ST-CON-P3-1150, SDR-ST-CON-P3-1130, SDR-ST-CON-P3-1220, SDR-ST-CON-P3-1200, SDR-ST-CON-P3-1230, SDR-ST-CON-P3-1210, SDR-ST-CON-P3-1250, SDR-ST-CON-P3-1190, SDR-ST-CON-P3-1300, SDR-ST-CON-P3-1430, SDR-ST-CON-P3-1370, SDR-ST-CON-P3-1290, SDR-ST-CON-P3-1270, SDR-ST-CON-P3-1360, SDR-ST-CON-P3-1320, SDR-ST-CON-P3-1380, SDR-ST-CON-P3-1400, SDR-ST-CON-P3-1500, SDR-ST-CON-P3-1480, SDR-ST-CON-P3-1420, SDR-ST-CON-P3-1490, SDR-ST-CON-P3-1540, SDR-ST-CON-P3-1640, SDR-ST-CON-P3-1590, SDR-ST-CON-P3-1840, SDR-ST-CON-P3-1760, SDR-ST-CON-P3-1710, SDR-ST-CON-P3-1310, SDR-ST-CON-P3-1140, SDR-ST-CON-P3-1110, SDR-ST-CON-P3-1090, SDR-ST-CON-P3-1050, SDR-ST-CON-P3-1460, SDR-ST-CON-P3-1240, SDR-ST-CON-P3-1160, SDR-ST-CON-P3-1410, SDR-ST-CON-P3-1260, SDR-ST-CON-P3-1330, SDR-ST-CON-P3-1470, SDR-ST-CON-P3-1390, SDR-ST-CON-P3-1340, SDR-ST-CON-P3-1450, SDR-ST-CON-P3-1280, SDR-ST-CON-P3-1440, SDR-ST-CON-P3-1350, SDR-ST-CON-P3-1120, SDR-ST-CON-P3-1690, SDR-ST-CON-P3-1880, SDR-ST-CON-P3-1770, SDR-ST-CON-P3-1620, SDR-ST-CON-P3-1830, SDR-ST-CON-P3-1720, SDR-ST-CON-P3-1560, SDR-ST-CON-P3-1530, SDR-ST-CON-P3-1700, SDR-ST-CON-P3-1860, SDR-ST-CON-P3-1820, SDR-ST-CON-P3-1750, SDR-ST-CON-P3-1660, SDR-ST-CON-P3-1890, SDR-ST-CON-P3-1850, SDR-ST-CON-P3-1810, SDR-ST-CON-P3-1730, SDR-ST-CON-P3-1610, SDR-ST-CON-P3-1170, SDR-ST-CON-P3-1070, SDR-ST-CON-P3-1510, SDR-ST-CON-P3-1580, SDR-ST-CON-P3-1630, SDR-ST-CON-P3-1650, SDR-ST-CON-P3-1740, SDR-ST-CON-P3-1570, SDR-ST-CON-P3-1670, SDR-ST-CON-P3-1790, SDR-ST-CON-P3-1600, SDR-ST-CON-P3-1780, SDR-ST-CON-P3-1680, SDR-ST-CON-P3-1550, SDR-ST-CON-P3-1520, SDR-ST-PRO-DL-1260, SDR-ST-PRO-DL-1030, SDR-ST-PRO-DL-1060, SDR-ST-PRO-DL-1040, SDR-ST-PRO-DL-1270, SDR-ST-PRO-DL-1020, SDR-ST-PRO-DL-1010, SDR-ST-PRO-DL-1100, SDR-ST-PRO-DL-1130, SDR-ST-PRO-DL-1050, SDR-ST-PRO-DL-1070, SDR-ST-PRO-DL-1110, SDR-ST-PRO-DL-1200, SDR-ST-PRO-DL-1230, SDR-ST-PRO-DL-1000, SDR-ST-PRO-DL-1080, SDR-ST-PRO-DL-1120, SDR-ST-PRO-DL-1090, SDR-ST-PRO-DL-1140, SDR-ST-CON-P1-6090, SDR-ST-CON-P1-6100, SDR-ST-CON-P1-6110, SDR-ST-CON-P1-6120, SDR-ST-CON-P1-6130, SDR-ST-CON-P1-6140, SDR-ST-CON-P1-6150, SDR-ST-CON-P1-6160, SDR-ST-CON-P1-6170, SDR-ST-CON-P1-6180, SDR-ST-CON-P1-6190, SDR-ST-CON-P1-6200, SDR-ST-CON-P1-6210, SDR-ST-CON-P1-6220, SDR-ST-MILS-1110 FF → SDR-ST-CO-1080 FF, SDR-ST-CO-1090 FF, SDR-ST-CON-P1-1050, SDR-ST-CON-P1-1000, SDR-ST-CON-P1-1090, SDR-ST-CON-P1-1150, SDR-ST-CON-P1-1200, SDR-ST-CON-P1-1470, SDR-ST-CON-P1-2140, SDR-ST-CON-P1-2710, SDR-ST-CON-P1-3260, SDR-ST-CON-P1-3850, SDR-ST-CON-P1-4770, SDR-ST-CON-P1-4410, SDR-ST-CON-P1-5110, SDR-ST-CON-P1-3860, SDR-ST-CON-P1-4530, SDR-ST-CON-P1-4620, SDR-ST-CON-P1-4100, SDR-ST-CON-P1-5310, SDR-ST-CON-P1-5210, SDR-ST-CON-P1-5470, SDR-ST-CON-P1-5480, SDR-ST-CON-P1-5320, SDR-ST-CON-P1-5220, SDR-ST-CON-P1-5490, SDR-ST-CON-P1-1010, SDR-ST-CON-P1-1070, SDR-ST-CON-P1-1120, SDR-ST-CON-P1-1190, SDR-ST-CON-P1-2090, SDR-ST-CON-P1-1400, SDR-ST-CON-P1-2570, SDR-ST-CON-P1-3140, SDR-ST-CON-P1-3720, SDR-ST-CON-P1-4730, SDR-ST-CON-P1-4430, SDR-ST-CON-P1-5040, SDR-ST-CON-P1-3730, SDR-ST-CON-P1-4480, SDR-ST-CON-P1-4490, SDR-ST-CON-P1-3890, SDR-ST-CON-P1-5400, SDR-ST-CON-P1-5270, SDR-ST-CON-P1-5150, SDR-ST-CON-P1-5080, SDR-ST-CON-P1-5160, SDR-ST-CON-P1-5090, SDR-ST-CON-P1-5280, SDR-ST-CON-P1-1020, SDR-ST-CON-P1-1080, SDR-ST-CON-P1-1140, SDR-ST-CON-P1-1210 FF, SDR-ST-CON-P1-1580, SDR-ST-CON-P1-2220, SDR-ST-CON-P1-2880, SDR-ST-CON-P1-3600, SDR-ST-CON-P1-4220, SDR-ST-CON-P1-5010, SDR-ST-CON-P1-4750, SDR-ST-CON-P1-5200, SDR-ST-CON-P1-4230, SDR-ST-CON-P1-4950, SDR-ST-CON-P1-4870, SDR-ST-CON-P1-4440, SDR-ST-CON-P1-5690, SDR-ST-CON-P1-5610, SDR-ST-CON-P1-5450, SDR-ST-CON-P1-5300, SDR-ST-CON-P1-5680, SDR-ST-CON-P1-5540, SDR-ST-CON-P1-5460, SDR-ST-CON-P1-1030, SDR-ST-CON-P1-1100, SDR-ST-CON-P1-1160, SDR-ST-CON-P1-2920, SDR-ST-CON-P1-2620, SDR-ST-CON-P1-1910, SDR-ST-CON-P1-1300, SDR-ST-CON-P1-3390, SDR-ST-CON-P1-3960, SDR-ST-CON-P1-4890, SDR-ST-CON-P1-4540, SDR-ST-CON-P1-5130, SDR-ST-CON-P1-3970, SDR-ST-CON-P1-4690, SDR-ST-CON-P1-4780, SDR-ST-CON-P1-4200, SDR-ST-CON-P1-5550, SDR-ST-CON-P1-5370, SDR-ST-CON-P1-5250, SDR-ST-CON-P1-5630, SDR-ST-CON-P1-5560, SDR-ST-CON-P1-5380, SDR-ST-CON-P1-5260, SDR-ST-CON-P1-5390, SDR-ST-CON-P1-1040, SDR-ST-CON-P1-1110, SDR-ST-CON-P1-1170, SDR-ST-CON-P1-2540, SDR-ST-CON-P1-1830, SDR-ST-CON-P1-1250, SDR-ST-CON-P1-3100, SDR-ST-CON-P1-3540, SDR-ST-CON-P1-4130, SDR-ST-CON-P1-4930, SDR-ST-CON-P1-4600, SDR-ST-CON-P1-5180, SDR-ST-CON-P1-4140, SDR-ST-CON-P1-4810, SDR-ST-CON-P1-4920, SDR-ST-CON-P1-4350, SDR-ST-CON-P1-5640, SDR-ST-CON-P1-5580, SDR-ST-CON-P1-5410, SDR-ST-CON-P1-5290, SDR-ST-CON-P1-5590, SDR-ST-CON-P1-5420, SDR-ST-CON-P1-5430, SDR-ST-CON-P1-1060, SDR-ST-CON-P1-1130, SDR-ST-CON-P1-1220, SDR-ST-CON-P1-2730, SDR-ST-CON-P1-1350, SDR-ST-CON-P1-1990, SDR-ST-CON-P1-3320, SDR-ST-CON-P1-3740, SDR-ST-CON-P1-4290, SDR-ST-CON-P1-4980, SDR-ST-CON-P1-4650, SDR-ST-CON-P1-5230, SDR-ST-CON-P1-4300, SDR-ST-CON-P1-4860, SDR-ST-CON-P1-4450, SDR-ST-CON-P1-4940, SDR-ST-CON-P1-5650, SDR-ST-CON-P1-5600, SDR-ST-CON-P1-5510, SDR-ST-CON-P1-5350, SDR-ST-CON-P1-5660, SDR-ST-CON-P1-5520, SDR-ST-CON-P1-5360, SDR-ST-CON-P1-5530, SDR-ST-CON-P1-1570, SDR-ST-CON-P1-2270, SDR-ST-CON-P1-3000, SDR-ST-CON-P1-3900, SDR-ST-CON-P1-1720, SDR-ST-CON-P1-2420, SDR-ST-CON-P1-3150, SDR-ST-CON-P1-4000, SDR-ST-CON-P1-1770, SDR-ST-CON-P1-2500, SDR-ST-CON-P1-3280, SDR-ST-CON-P1-4250, SDR-ST-CON-P1-1730, SDR-ST-CON-P1-2430, SDR-ST-CON-P1-3160, SDR-ST-CON-P1-4010, SDR-ST-CON-P1-1920, SDR-ST-CON-P1-2660, SDR-ST-CON-P1-3430, SDR-ST-CON-P1-4320, SDR-ST-CON-P1-1840, SDR-ST-CON-P1-2590, SDR-ST-CON-P1-3340, SDR-ST-CON-P1-4050, SDR-ST-CON-P1-2000, SDR-ST-CON-P1-2750, SDR-ST-CON-P1-3460, SDR-ST-CON-P1-3980, SDR-ST-CON-P1-4840, SDR-ST-CON-P1-1180, SDR-ST-CON-P1-2250, SDR-ST-CON-P1-1560, SDR-ST-CON-P1-2980, SDR-ST-CON-P1-3870, SDR-ST-CON-P1-5170, SDR-ST-CON-P1-4420, SDR-ST-CON-P1-3120, SDR-ST-CON-P1-1590, SDR-ST-CON-P1-2390, SDR-ST-CON-P1-3990, SDR-ST-CON-P1-4680, SDR-ST-CON-P1-5760, SDR-ST-CON-P1-5050, SDR-ST-CON-P1-3040, SDR-ST-CON-P1-1500, SDR-ST-CON-P1-2320, SDR-ST-CON-P1-3920, SDR-ST-CON-P1-4850, SDR-ST-CON-P1-5780, SDR-ST-CON-P1-5330, SDR-ST-CON-P1-3190, SDR-ST-CON-P1-1700, SDR-ST-CON-P1-2410, SDR-ST-CON-P1-4110, SDR-ST-CON-P1-4960, SDR-ST-CON-P1-5790, SDR-ST-CON-P1-5340, SDR-ST-CON-P1-1450, SDR-ST-CON-P1-2160, SDR-ST-CON-P1-2890, SDR-ST-CON-P1-3530, SDR-ST-CON-P1-3810, SDR-ST-CON-P1-1600, SDR-ST-CON-P1-2280, SDR-ST-CON-P1-2800, SDR-ST-CON-P1-3250, SDR-ST-CON-P1-3670, SDR-ST-CON-P1-1510, SDR-ST-CON-P1-2180, SDR-ST-CON-P1-2930, SDR-ST-CON-P1-3510, SDR-ST-CON-P1-3760, SDR-ST-CON-P1-1710, SDR-ST-CON-P1-2360, SDR-ST-CON-P1-3090, SDR-ST-CON-P1-3520, SDR-ST-CON-P1-3930, SDR-ST-CON-P1-5840, SDR-ST-CON-P1-5890, SDR-ST-CON-P1-5920, SDR-ST-CON-P1-5880, SDR-ST-CON-P1-5930, SDR-ST-CON-P1-6000, SDR-ST-CON-P1-5940, SDR-ST-CON-P1-6010, SDR-ST-CON-P1-6040, SDR-ST-CON-P1-5960, SDR-ST-CON-P1-5950, SDR-ST-CON-P1-6020, SDR-ST-CON-P1-6050, SDR-ST-CON-P1-1310, SDR-ST-CON-P1-2350, SDR-ST-CON-P1-1780, SDR-ST-CON-P1-2860, SDR-ST-CON-P1-3500, SDR-ST-CON-P1-4570, SDR-ST-CON-P1-4260, SDR-ST-CON-P1-1260, SDR-ST-CON-P1-2260, SDR-ST-CON-P1-1760, SDR-ST-CON-P1-2770, SDR-ST-CON-P1-3350, SDR-ST-CON-P1-4400, SDR-ST-CON-P1-3940, SDR-ST-CON-P1-2400, SDR-ST-CON-P1-1360, SDR-ST-CON-P1-1900, SDR-ST-CON-P1-2840, SDR-ST-CON-P1-3470, SDR-ST-CON-P1-4610, SDR-ST-CON-P1-4080, SDR-ST-CON-P1-1320, SDR-ST-CON-P1-1950, SDR-ST-CON-P1-2560, SDR-ST-CON-P1-3200, SDR-ST-CON-P1-3700, SDR-ST-CON-P1-1270, SDR-ST-CON-P1-1870, SDR-ST-CON-P1-2470, SDR-ST-CON-P1-2970, SDR-ST-CON-P1-3360, SDR-ST-CON-P1-1370, SDR-ST-CON-P1-2060, SDR-ST-CON-P1-2600, SDR-ST-CON-P1-3110, SDR-ST-CON-P1-3480, SDR-ST-CON-P1-5810, SDR-ST-CON-P1-5850, SDR-ST-CON-P1-5970, SDR-ST-CON-P1-5820, SDR-ST-CON-P1-5860, SDR-ST-CON-P1-5980, SDR-ST-CON-P1-5830, SDR-ST-CON-P1-5870, SDR-ST-CON-P1-5910, SDR-ST-CON-P1-5900, SDR-ST-CON-P1-5990, SDR-ST-CON-P1-6030, SDR-ST-CON-P1-1690, SDR-ST-CON-P1-2340, SDR-ST-CON-P1-3070, SDR-ST-CON-P1-3680, SDR-ST-CON-P1-4310, SDR-ST-CON-P1-2370, SDR-ST-CON-P1-1680, SDR-ST-CON-P1-3080, SDR-ST-CON-P1-3690, SDR-ST-CON-P1-4360, SDR-ST-CON-P1-4880, SDR-ST-CON-P1-1530, SDR-ST-CON-P1-2190, SDR-ST-CON-P1-2940, SDR-ST-CON-P1-3770, SDR-ST-CON-P1-4370, SDR-ST-CON-P1-2200, SDR-ST-CON-P1-1520, SDR-ST-CON-P1-2950, SDR-ST-CON-P1-3780, SDR-ST-CON-P1-4630, SDR-ST-CON-P1-5140, SDR-ST-CON-P1-1240, SDR-ST-CON-P1-1790, SDR-ST-CON-P1-2510, SDR-ST-CON-P1-3230, SDR-ST-CON-P1-4020, SDR-ST-CON-P1-1230, SDR-ST-CON-P1-1800, SDR-ST-CON-P1-2520, SDR-ST-CON-P1-3240, SDR-ST-CON-P1-4150, SDR-ST-CON-P1-4740, SDR-ST-CON-P1-2290, SDR-ST-CON-P1-1620, SDR-ST-CON-P1-3010, SDR-ST-CON-P1-3630, SDR-ST-CON-P1-4240, SDR-ST-CON-P1-1610, SDR-ST-CON-P1-2300, SDR-ST-CON-P1-3020, SDR-ST-CON-P1-3820, SDR-ST-CON-P1-4720, SDR-ST-CON-P1-5240, SDR-ST-CON-P1-1340, SDR-ST-CON-P1-1960, SDR-ST-CON-P1-2670, SDR-ST-CON-P1-3440, SDR-ST-CON-P1-4270, SDR-ST-CON-P1-1330, SDR-ST-CON-P1-1970, SDR-ST-CON-P1-2680, SDR-ST-CON-P1-3450, SDR-ST-CON-P1-4380, SDR-ST-CON-P1-4900, SDR-ST-CON-P1-1290, SDR-ST-CON-P1-1880, SDR-ST-CON-P1-2640, SDR-ST-CON-P1-3370, SDR-ST-CON-P1-4160, SDR-ST-CON-P1-1280, SDR-ST-CON-P1-1890, SDR-ST-CON-P1-2650, SDR-ST-CON-P1-3380, SDR-ST-CON-P1-4280, SDR-ST-CON-P1-4820, SDR-ST-CON-P1-1390, SDR-ST-CON-P1-2070, SDR-ST-CON-P1-2780, SDR-ST-CON-P1-3580, SDR-ST-CON-P1-4170, SDR-ST-CON-P1-1380, SDR-ST-CON-P1-2080, SDR-ST-CON-P1-2790, SDR-ST-CON-P1-3590, SDR-ST-CON-P1-4500, SDR-ST-CON-P1-5000, SDR-ST-CON-P1-1670, SDR-ST-CON-P1-2330, SDR-ST-CON-P1-2990, SDR-ST-CON-P1-3880, SDR-ST-CON-P1-1740, SDR-ST-CON-P1-2440, SDR-ST-CON-P1-3170, SDR-ST-CON-P1-4040, SDR-ST-CON-P1-1750, SDR-ST-CON-P1-2450, SDR-ST-CON-P1-3180, SDR-ST-CON-P1-4070, SDR-ST-CON-P1-1480, SDR-ST-CON-P1-1980, SDR-ST-CON-P1-2490, SDR-ST-CON-P1-3270, SDR-ST-CON-P1-4190, SDR-ST-CON-P1-4800, SDR-ST-CON-P1-2150, SDR-ST-CON-P1-1490, SDR-ST-CON-P1-2850, SDR-ST-CON-P1-3560, SDR-ST-CON-P1-4470, SDR-ST-CON-P1-5030, SDR-ST-CON-P1-1410, SDR-ST-CON-P1-2050, SDR-ST-CON-P1-2690, SDR-ST-CON-P1-3290, SDR-ST-CON-P1-4030, SDR-ST-CON-P1-4700, SDR-ST-CON-P1-2100, SDR-ST-CON-P1-1420, SDR-ST-CON-P1-2820, SDR-ST-CON-P1-3660, SDR-ST-CON-P1-4550, SDR-ST-CON-P1-5100, SDR-ST-CON-P1-1630, SDR-ST-CON-P1-2130, SDR-ST-CON-P1-2810, SDR-ST-CON-P1-3490, SDR-ST-CON-P1-3950, SDR-ST-CON-P1-4520, SDR-ST-CON-P1-2230, SDR-ST-CON-P1-1640, SDR-ST-CON-P1-2900, SDR-ST-CON-P1-3640, SDR-ST-CON-P1-4510, SDR-ST-CON-P1-5070, SDR-ST-CON-P1-1930, SDR-ST-CON-P1-2480, SDR-ST-CON-P1-3130, SDR-ST-CON-P1-3650, SDR-ST-CON-P1-4340, SDR-ST-CON-P1-4910, SDR-ST-CON-P1-1940, SDR-ST-CON-P1-2630, SDR-ST-CON-P1-3400, SDR-ST-CON-P1-4330, SDR-ST-CON-P1-5060, SDR-ST-CON-P1-5730, SDR-ST-CON-P1-2460, SDR-ST-CON-P1-1850, SDR-ST-CON-P1-3060, SDR-ST-CON-P1-3570, SDR-ST-CON-P1-4060, SDR-ST-CON-P1-4640, SDR-ST-CON-P1-1860, SDR-ST-CON-P1-2550, SDR-ST-CON-P1-3310, SDR-ST-CON-P1-4210, SDR-ST-CON-P1-4990, SDR-ST-CON-P1-5710, SDR-ST-CON-P1-2010, SDR-ST-CON-P1-2610, SDR-ST-CON-P1-3220, SDR-ST-CON-P1-3610, SDR-ST-CON-P1-4090, SDR-ST-CON-P1-4660, SDR-ST-CON-P1-2020, SDR-ST-CON-P1-2740, SDR-ST-CON-P1-3550, SDR-ST-CON-P1-4460, SDR-ST-CON-P1-5190, SDR-ST-CON-P1-5750, SDR-ST-CON-P1-1540, SDR-ST-CON-P1-2380, SDR-ST-CON-P1-3050, SDR-ST-CON-P1-3710, SDR-ST-CON-P1-4590, SDR-ST-CON-P1-5570, SDR-ST-CON-P1-1550, SDR-ST-CON-P1-2210, SDR-ST-CON-P1-2960, SDR-ST-CON-P1-3840, SDR-ST-CON-P1-4790, SDR-ST-CON-P1-5720, SDR-ST-CON-P1-1430, SDR-ST-CON-P1-2110, SDR-ST-CON-P1-2720, SDR-ST-CON-P1-3300, SDR-ST-CON-P1-4120, SDR-ST-CON-P1-4970, SDR-ST-CON-P1-1440, SDR-ST-CON-P1-2120, SDR-ST-CON-P1-2870, SDR-ST-CON-P1-3790, SDR-ST-CON-P1-4710, SDR-ST-CON-P1-5700, SDR-ST-CON-P1-2240, SDR-ST-CON-P1-1650, SDR-ST-CON-P1-2830, SDR-ST-CON-P1-3420, SDR-ST-CON-P1-4180, SDR-ST-CON-P1-5020, SDR-ST-CON-P1-1660, SDR-ST-CON-P1-2310, SDR-ST-CON-P1-3030, SDR-ST-CON-P1-3910, SDR-ST-CON-P1-4830, SDR-ST-CON-P1-5740, SDR-ST-CON-P1-2530, SDR-ST-CON-P1-1810, SDR-ST-CON-P1-3210, SDR-ST-CON-P1-3800, SDR-ST-CON-P1-4580, SDR-ST-CON-P1-5500, SDR-ST-CON-P1-1820, SDR-ST-CON-P1-2580, SDR-ST-CON-P1-3410, SDR-ST-CON-P1-4390, SDR-ST-CON-P1-5120, SDR-ST-CON-P1-5770, SDR-ST-CON-P1-2030, SDR-ST-CON-P1-2700, SDR-ST-CON-P1-3330, SDR-ST-CON-P1-3750, SDR-ST-CON-P1-4670, SDR-ST-CON-P1-5670, SDR-ST-CON-P1-2040, SDR-ST-CON-P1-2760, SDR-ST-CON-P1-3620, SDR-ST-CON-P1-4560, SDR-ST-CON-P1-5440, SDR-ST-CON-P1-5800, SDR-ST-CON-P1-1460, SDR-ST-CON-P1-2170, SDR-ST-CON-P1-2910, SDR-ST-CON-P1-3830, SDR-ST-CON-P1-4760, SDR-ST-CON-P3-1000, SDR-ST-CON-P3-1010, SDR-ST-CON-P3-1020, SDR-ST-CON-P3-1030, SDR-ST-CON-P3-1040 FF, SDR-ST-CON-P3-1060, SDR-ST-CON-P3-1080, SDR-ST-CON-P3-1100, SDR-ST-CON-P3-1180, SDR-ST-CON-P3-1150, SDR-ST-CON-P3-1130, SDR-ST-CON-P3-1220, SDR-ST-CON-P3-1200, SDR-ST-CON-P3-1230, SDR-ST-CON-P3-1210, SDR-ST-CON-P3-1430, SDR-ST-CON-P3-1370, SDR-ST-CON-P3-1290, SDR-ST-CON-P3-1270, SDR-ST-CON-P3-1360, SDR-ST-CON-P3-1320, SDR-ST-CON-P3-1380, SDR-ST-CON-P3-1400, SDR-ST-CON-P3-1500, SDR-ST-CON-P3-1480, SDR-ST-CON-P3-1420, SDR-ST-CON-P3-1490, SDR-ST-CON-P3-1540, SDR-ST-CON-P3-1640, SDR-ST-CON-P3-1590, SDR-ST-CON-P3-1840, SDR-ST-CON-P3-1760, SDR-ST-CON-P3-1710, SDR-ST-CON-P3-1310, SDR-ST-CON-P3-1140, SDR-ST-CON-P3-1110, SDR-ST-CON-P3-1090, SDR-ST-CON-P3-1050, SDR-ST-CON-P3-1460, SDR-ST-CON-P3-1240, SDR-ST-CON-P3-1160, SDR-ST-CON-P3-1410, SDR-ST-CON-P3-1260, SDR-ST-CON-P3-1330, SDR-ST-CON-P3-1470, SDR-ST-CON-P3-1390, SDR-ST-CON-P3-1340, SDR-ST-CON-P3-1450, SDR-ST-CON-P3-1280, SDR-ST-CON-P3-1440, SDR-ST-CON-P3-1350, SDR-ST-CON-P3-1120, SDR-ST-CON-P3-1690, SDR-ST-CON-P3-1880, SDR-ST-CON-P3-1770, SDR-ST-CON-P3-1620, SDR-ST-CON-P3-1830, SDR-ST-CON-P3-1720, SDR-ST-CON-P3-1560, SDR-ST-CON-P3-1530, SDR-ST-CON-P3-1700, SDR-ST-CON-P3-1860, SDR-ST-CON-P3-1820, SDR-ST-CON-P3-1750, SDR-ST-CON-P3-1660, SDR-ST-CON-P3-1890, SDR-ST-CON-P3-1850, SDR-ST-CON-P3-1810, SDR-ST-CON-P3-1730, SDR-ST-CON-P3-1610, SDR-ST-CON-P3-1170, SDR-ST-CON-P3-1070, SDR-ST-CON-P3-1510, SDR-ST-CON-P3-1580, SDR-ST-CON-P3-1630, SDR-ST-CON-P3-1740, SDR-ST-CON-P3-1570, SDR-ST-CON-P3-1670, SDR-ST-CON-P3-1790, SDR-ST-CON-P3-1600, SDR-ST-CON-P3-1780, SDR-ST-CON-P3-1680, SDR-ST-CON-P3-1550, SDR-ST-CON-P3-1520, SDR-ST-PRO-DL-1260, SDR-ST-PRO-DL-1030, SDR-ST-PRO-DL-1060, SDR-ST-PRO-DL-1040, SDR-ST-PRO-DL-1270, SDR-ST-PRO-DL-1020, SDR-ST-PRO-DL-1010, SDR-ST-PRO-DL-1100, SDR-ST-PRO-DL-1130, SDR-ST-PRO-DL-1050, SDR-ST-PRO-DL-1070, SDR-ST-PRO-DL-1110, SDR-ST-PRO-DL-1200, SDR-ST-PRO-DL-1230, SDR-ST-PRO-DL-1000, SDR-ST-PRO-DL-1080, SDR-ST-PRO-DL-1120, SDR-ST-PRO-DL-1090, SDR-ST-PRO-DL-1140, SDR-ST-CON-P1-6090, SDR-ST-CON-P1-6100, SDR-ST-CON-P1-6110, SDR-ST-CON-P1-6120, SDR-ST-CON-P1-6130, SDR-ST-CON-P1-6140, SDR-ST-CON-P1-6150, SDR-ST-CON-P1-6160, SDR-ST-CON-P1-6170, SDR-ST-CON-P1-6180, SDR-ST-CON-P1-6190, SDR-ST-CON-P1-6200, SDR-ST-CON-P1-6210, SDR-ST-CON-P1-6220, SDR-ST-MILS-1110 FF |  |
| SDR-ST-MILS-1010 | Project Start Milstone | 2026-04-07 A | 2026-04-07 A | 0% → 100% | 4d → none |  |  |
| 3 | **Contractual Milestone** |  | 2027-07-20 → 2027-08-06 (+17d) |  |  |  |  |
| SDR-ST-MILS-1020 | Mobilization Finish Milestone | 2026-05-06 A | 2026-05-06 A | 0% → 100% | 18d → none |  |  |
| SDR-ST-MILS-1030 | Execution Plan and Baseline Submission Finish Milestone | 2026-05-06 → 2026-09-28 (+145d) | 2026-05-06 → 2026-09-28 (+145d) |  | 18d → 6d | SDR-ST-PREL-1110 FF → SDR-ST-PREL-1110 FF, SDR-ST-PREL-1100 FF |  |
| SDR-ST-MILS-1040 | Submission and approval of plans and materials Finish Milestone | 2026-05-06 → 2026-09-28 (+145d) | 2026-05-06 → 2026-09-28 (+145d) |  | 18d → 0d |  |  |
| SDR-ST-MILS-1080 | Completion of road works/ Paving Work | 2026-12-06 → 2027-01-21 (+46d) | 2026-12-06 → 2027-01-21 (+46d) |  | 8.8d → 0.6d |  | was named Completion of road works |
| SDR-ST-MILS-1060 | Completion of medium voltage works | 2027-05-12 → 2027-05-24 (+12d) | 2027-05-12 → 2027-05-24 (+12d) |  | 11.9d → 44.8d |  |  |
| SDR-ST-MILS-1130 | Completion of finishing works in the project | 2027-07-20 → 2027-08-06 (+17d) | 2027-07-20 → 2027-08-06 (+17d) |  | 15d → 0.6d |  |  |
| 2 | **Phases Milestone** | 2026-05-06 → 2026-10-04 (+151d) | 2027-07-21 → 2027-08-06 (+16d) |  |  |  |  |
| SDR-ST-MILS-1050 | Engineering Phase Finish Milestone | 2026-05-06 → 2026-10-04 (+151d) | 2026-05-06 → 2026-10-04 (+151d) |  | 18d → 0d | SDR-ST-ENG-AP-1230 FF → SDR-ST-ENG-AP-1230 FF, SDR-ST-PRO-A-1180 FF |  |
| SDR-ST-MILS-1090 | Procurment Phase Finish Milestone | 2027-04-15 → 2027-06-09 (+55d) | 2027-04-15 → 2027-06-09 (+55d) |  | 6.8d → 21.5d | SDR-ST-PRO-DL-1250 FF, SDR-ST-PRO-MS-1250 FF → SDR-ST-PRO-DL-1250 FF, SDR-ST-PRO-MS-1250 FF, SDR-ST-PRO-MS-1240 FF |  |
| SDR-ST-MILS-1110 | Construction Phase Finish Milestone | 2027-07-21 → 2027-08-06 (+16d) | 2027-07-21 → 2027-08-06 (+16d) |  | 14d → 0.5d |  |  |
| 9 | **Mobilization** |  | 2026-05-06 → 2026-08-17 (+103d) |  |  |  |  |
| 6 | **Office Site Prepare** |  | 2026-04-11 → 2026-04-12 (+1d) |  |  |  |  |
| SDR-ST-MOBL-1000 | Office Area Grading and Prepare | 2026-04-07 A | 2026-04-11 → 2026-04-12 A (+1d) | 0% → 100% | 0d → none |  |  |
| 3 | **Access Roads** |  | 2026-04-15 → 2026-04-16 (+1d) |  |  |  |  |
| SDR-ST-MOBL-1010 | Office Area Access Roads Prepare | 2026-04-12 A | 2026-04-15 → 2026-04-16 A (+1d) | 0% → 100% | 0d → none |  |  |
| 5 | **Offices Installation** |  | 2026-04-21 → 2026-04-22 (+1d) |  |  |  |  |
| SDR-ST-MOBL-1020 | Offices Cabins Installation | 2026-04-16 A | 2026-04-21 → 2026-04-22 A (+1d) | 0% → 100% | 0d → none |  |  |
| 10 | **Offices MEP Works** |  | 2026-04-21 → 2026-04-22 (+1d) |  |  |  |  |
| SDR-ST-MOBL-1030 | Office Cabins MEP Works | 2026-04-16 A | 2026-04-21 → 2026-04-22 A (+1d) | 0% → 100% | 0d → none |  |  |
| 4 | **Manpower Mobilization** |  | 2026-04-26 → 2026-04-30 (+4d) |  |  |  |  |
| SDR-ST-MOBL-1040 | Manpower Arrive | 2026-04-22 A | 2026-04-26 → 2026-04-30 A (+4d) | 0% → 100% | 0d → none |  |  |
| 7 | **Equipment Mobilization** | 2026-04-27 → 2026-04-13 (-14d) | 2026-04-29 → 2026-05-04 (+5d) |  |  |  |  |
| SDR-ST-MOBL-1050 | Equipment Arrive | 2026-04-27 → 2026-04-13 A (-14d) | 2026-04-29 → 2026-05-04 A (+5d) | 0% → 100% | 0d → none |  |  |
| SDR-ST-MOBL-1060 | Project Sign Installation | 2026-04-30 A | 2026-05-06 A | 0% → 100% | 0d → none |  |  |
| 2 | **Preliminary Submittals** |  | 2026-05-06 → 2026-08-17 (+103d) |  |  |  |  |
| 1 | **HSSE Plan** |  | 2026-05-05 → 2026-05-06 (+1d) |  |  |  |  |
| SDR-ST-PREL-1000 | Project HSSE Plan Submission | 2026-04-30 A | 2026-05-03 → 2026-05-04 A (+1d) | 0% → 100% | 17d → none |  |  |
| SDR-ST-PREL-1060 | Project HSSE Plan Approval | 2026-05-04 A | 2026-05-05 → 2026-05-06 A (+1d) | 0% → 100% | 19d → none |  |  |
| 2 | **Quality Control Plan** |  | 2026-05-05 → 2026-05-06 (+1d) |  |  |  |  |
| SDR-ST-PREL-1010 | Project Quality Plan Submission | 2026-04-30 A | 2026-05-03 → 2026-05-04 A (+1d) | 0% → 100% | 19d → none |  |  |
| SDR-ST-PREL-1070 | Project Quality Plan Approval | 2026-05-04 A | 2026-05-05 → 2026-05-06 A (+1d) | 0% → 100% | 19d → none |  |  |
| 3 | **Communications Plan** |  | 2026-05-05 → 2026-06-22 (+48d) |  |  |  |  |
| SDR-ST-PREL-1020 | Project Communication Plan Submission | 2026-04-30 A | 2026-05-03 → 2026-05-04 A (+1d) | 0% → 100% | 19d → none |  |  |
| SDR-ST-PREL-1080 | Project Communication Plan Approval | 2026-05-04 A | 2026-05-05 → 2026-06-22 A (+48d) | 0% → 100% | 19d → none |  |  |
| 4 | **Risk Managment Plan** |  | 2026-05-05 → 2026-05-06 (+1d) |  |  |  |  |
| SDR-ST-PREL-1030 | Project Risk Managment Plan Submission | 2026-04-30 A | 2026-05-03 → 2026-05-04 A (+1d) | 0% → 100% | 19d → none |  |  |
| SDR-ST-PREL-1090 | Project Risk Managment Plan Approvals | 2026-05-04 A | 2026-05-05 → 2026-05-06 A (+1d) | 0% → 100% | 19d → none |  |  |
| 5 | **Project Execution Plan** | 2026-04-30 → 2026-08-12 (+104d) | 2026-05-05 → 2026-08-17 (+104d) |  |  |  |  |
| SDR-ST-PREL-1040 | Project Execution Plan Submission | 2026-04-30 → 2026-08-12 A (+104d) | 2026-05-03 → 2026-08-15 A (+104d) | 0% → 100% | 19d → none |  |  |
| SDR-ST-PREL-1100 | Project Execution Plan Approvals | 2026-05-04 → 2026-08-16 A (+104d) | 2026-05-05 → 2026-08-17 A (+104d) | 0% → 100% | 19d → none |  |  |
| 6 | **Project Schedule** |  | 2026-05-06 → 2026-08-02 (+88d) |  |  |  |  |
| SDR-ST-PREL-1050 | Project Schedule Submission | 2026-04-30 A | 2026-05-03 → 2026-05-04 A (+1d) | 0% → 100% | 17d → none |  |  |
| SDR-ST-PREL-1110 | Project Schedule Approvals | 2026-05-04 A | 2026-05-06 → 2026-08-02 A (+88d) | 0% → 100% | 17d → none |  |  |
| 3 | **Engineering** |  | 2026-05-06 → 2026-10-13 (+160d) |  |  |  |  |
| 5 | **Shop Drawings Stage** |  | 2026-05-06 → 2026-10-12 (+159d) |  |  |  |  |
| 1 | **Submission** |  | 2026-04-24 → 2026-07-08 (+75d) |  |  |  |  |
| 4 | **Civil** |  | 2026-04-24 → 2026-06-29 (+66d) |  |  |  |  |
| SDR-ST-ENG-SUB-1080 | STRUCTURAL STEEL GENERAL NOTES Submission | 2026-04-16 A | 2026-04-24 → 2026-05-31 A (+37d) | 0% → 100% | 15d → none |  |  |
| SDR-ST-ENG-SUB-1090 | REINFORCED CONCRETE GENERAL NOTES - 01 Submission | 2026-04-16 A | 2026-04-24 → 2026-05-31 A (+37d) | 0% → 100% | 15d → none |  |  |
| SDR-ST-ENG-SUB-1120 | RC DETAILS Submission | 2026-04-16 A | 2026-04-24 → 2026-05-31 A (+37d) | 0% → 100% | 15d → none |  |  |
| SDR-ST-ENG-SUB-1100 | EXTERNAL CANOPY PLANS Submission | 2026-04-16 → 2026-05-19 A (+33d) | 2026-04-24 → 2026-05-24 A (+30d) | 0% → 100% | 15d → none |  |  |
| SDR-ST-ENG-SUB-1110 | CANOPY FRAMING Submission | 2026-04-16 → 2026-06-22 A (+67d) | 2026-04-24 → 2026-06-29 A (+66d) | 0% → 100% | 15d → none |  |  |
| 6 | **Sewerage Network** |  | 2026-04-24 → 2026-05-31 (+37d) |  |  |  |  |
| SDR-ST-ENG-SUB-1000 | Sewage Layout Master Plan Submission | 2026-04-16 A | 2026-04-24 → 2026-05-01 A (+7d) | 0% → 100% | 15d → none |  |  |
| SDR-ST-ENG-SUB-1010 | Sewage Network Profile Submission | 2026-04-16 A | 2026-04-24 → 2026-05-01 A (+7d) | 0% → 100% | 15d → none |  |  |
| SDR-ST-ENG-SUB-1020 | Sewage Network Standard Details Submission | 2026-04-16 A | 2026-04-24 → 2026-05-31 A (+37d) | 0% → 100% | 15d → none |  |  |
| SDR-ST-ENG-SUB-1030 | Sewage Network Section Submission | 2026-04-16 A | 2026-04-24 → 2026-05-31 A (+37d) | 0% → 100% | 15d → none |  |  |
| 8 | **Portable Water** |  | 2026-04-24 → 2026-05-31 (+37d) |  |  |  |  |
| SDR-ST-ENG-SUB-1040 | Potable Water Piping Layout Master Plan Submission | 2026-04-16 A | 2026-04-24 → 2026-05-01 A (+7d) | 0% → 100% | 15d → none |  |  |
| SDR-ST-ENG-SUB-1050 | Potable Water Piping Layout Submission | 2026-04-16 A | 2026-04-24 → 2026-05-01 A (+7d) | 0% → 100% | 15d → none |  |  |
| SDR-ST-ENG-SUB-1060 | Potable Water Standard Details Submission | 2026-04-16 A | 2026-04-24 → 2026-05-31 A (+37d) | 0% → 100% | 15d → none |  |  |
| SDR-ST-ENG-SUB-1070 | Potable Water Section Submission | 2026-04-16 A | 2026-04-24 → 2026-05-31 A (+37d) | 0% → 100% | 15d → none |  |  |
| 9 | **Electrical** |  | 2026-04-24 → 2026-07-08 (+75d) |  |  |  |  |
| SDR-ST-ENG-SUB-1150 | Low Voltage Network Submission | 2026-04-16 A | 2026-04-24 → 2026-05-01 A (+7d) | 0% → 100% | 15d → none | SDR-ST-ENG-SUB-1130 SS → SDR-ST-ENG-SUB-1070 SS |  |

| ID | Task | Start | Finish | Duration | Complete | Total float | Predecessors |
| --- | --- | --- | --- | --- | --- | --- | --- |
| SDR-ST-ENG-SUB-1160 | Standard Details_Low Voltage Submission | 2026-04-16 A | 2026-04-24 → 2026-05-01 A (+7d) |  | 0% → 100% | 15d → none | SDR-ST-ENG-SUB-1130 SS → SDR-ST-ENG-SUB-1070 SS |
| SDR-ST-ENG-SUB-1170 | Street Lighting Network Submission | 2026-04-16 A | 2026-04-24 → 2026-05-01 A (+7d) |  | 0% → 100% | 15d → none | SDR-ST-ENG-SUB-1130 SS → SDR-ST-ENG-SUB-1070 SS |
| SDR-ST-ENG-SUB-1180 | Standard Details_Street Lighting Submission | 2026-04-16 A | 2026-04-24 → 2026-05-01 A (+7d) |  | 0% → 100% | 15d → none | SDR-ST-ENG-SUB-1130 SS → SDR-ST-ENG-SUB-1070 SS |
| SDR-ST-ENG-SUB-1190 | Telecommunication Network Submission | 2026-04-16 A | 2026-04-24 → 2026-05-01 A (+7d) |  | 0% → 100% | 15d → none | SDR-ST-ENG-SUB-1130 SS → SDR-ST-ENG-SUB-1070 |
| SDR-ST-ENG-SUB-1200 | Telecommunication Standard Details Submission | 2026-04-16 A | 2026-04-24 → 2026-05-01 A (+7d) |  | 0% → 100% | 15d → none | SDR-ST-ENG-SUB-1130 SS → SDR-ST-ENG-SUB-1070 SS |
| SDR-ST-ENG-SUB-1210 | Canopy:Ground Floor Lighting Plan Submission | 2026-04-16 A | 2026-04-24 → 2026-05-01 A (+7d) |  | 0% → 100% | 15d → none | SDR-ST-ENG-SUB-1130 SS → SDR-ST-ENG-SUB-1070 SS |
| SDR-ST-ENG-SUB-1220 | Canopy:Ground Floor CCTV Plan Submission | 2026-04-16 A | 2026-04-24 → 2026-05-01 A (+7d) |  | 0% → 100% | 15d → none | SDR-ST-ENG-SUB-1130 SS → SDR-ST-ENG-SUB-1070 SS |
| SDR-ST-ENG-SUB-1230 | Canopy:Ground Floor Voice Evacuation Plan Submission | 2026-04-16 A | 2026-04-24 → 2026-05-01 A (+7d) |  | 0% → 100% | 15d → none | SDR-ST-ENG-SUB-1130 SS → SDR-ST-ENG-SUB-1070 SS |
| SDR-ST-ENG-SUB-1130 | Medium Voltage Network Submission | 2026-04-16 → 2026-06-21 A (+66d) | 2026-04-24 → 2026-07-08 A (+75d) |  | 0% → 100% | 15d → none | SDR-ST-MILS-1000 SS+8d → SDR-ST-MILS-1000 SS+8d, SDR-ST-PREL-1100, SDR-ST-MILS-1030, SDR-ST-MILS-1050 |
| SDR-ST-ENG-SUB-1140 | Standard Details Medium Voltage Submission | 2026-04-16 → 2026-06-21 A (+66d) | 2026-04-24 → 2026-07-08 A (+75d) |  | 0% → 100% | 15d → none |  |
| 4 | **Approvals** |  | 2026-05-06 → 2026-10-12 (+159d) |  |  |  |  |
| 4 | **Civil** |  | 2026-05-06 → 2026-07-12 (+67d) |  |  |  |  |
| SDR-ST-ENG-AP-1080 | STRUCTURAL STEEL GENERAL NOTES Approval | 2026-04-25 A | 2026-05-06 → 2026-06-08 A (+33d) |  | 0% → 100% | 18d → none |  |
| SDR-ST-ENG-AP-1090 | REINFORCED CONCRETE GENERAL NOTES - 01 Approval | 2026-04-25 A | 2026-05-06 → 2026-06-08 A (+33d) |  | 0% → 100% | 18d → none |  |
| SDR-ST-ENG-AP-1120 | RC DETAILS Approval | 2026-04-25 A | 2026-05-06 → 2026-06-08 A (+33d) |  | 0% → 100% | 18d → none |  |
| SDR-ST-ENG-AP-1100 | EXTERNAL CANOPY PLANS Approval | 2026-04-25 → 2026-06-03 A (+39d) | 2026-05-06 → 2026-06-15 A (+40d) |  | 0% → 100% | 18d → none | SDR-ST-ENG-SUB-1100 → SDR-ST-ENG-SUB-1100 FF+2d |
| SDR-ST-ENG-AP-1110 | CANOPY FRAMING Approval | 2026-04-25 → 2026-07-01 A (+67d) | 2026-05-06 → 2026-07-12 A (+67d) |  | 0% → 100% | 18d → none |  |
| 6 | **Sewerage Network** |  | 2026-05-06 → 2026-06-10 (+35d) |  |  |  |  |
| SDR-ST-ENG-AP-1010 | Sewage Network Profile Approval | 2026-04-25 A | 2026-05-06 → 2026-06-10 A (+35d) |  | 0% → 100% | 18d → none |  |
| SDR-ST-ENG-AP-1020 | Sewage Network Standard Details Approval | 2026-04-25 A | 2026-05-06 → 2026-06-08 A (+33d) |  | 0% → 100% | 18d → none |  |
| SDR-ST-ENG-AP-1030 | Sewage Network Section Approval | 2026-04-25 A | 2026-05-06 → 2026-06-08 A (+33d) |  | 0% → 100% | 18d → none |  |
| SDR-ST-ENG-AP-1000 | Sewage Layout Master Plan Approval | 2026-04-25 → 2026-05-02 A (+7d) | 2026-05-06 A |  | 0% → 100% | 18d → none |  |
| 8 | **Portable Water** |  | 2026-05-06 → 2026-06-08 (+33d) |  |  |  |  |
| SDR-ST-ENG-AP-1060 | Potable Water Standard Details Approval | 2026-04-25 A | 2026-05-06 → 2026-06-08 A (+33d) |  | 0% → 100% | 18d → none |  |
| SDR-ST-ENG-AP-1070 | Potable Water Section Approval | 2026-04-25 A | 2026-05-06 → 2026-06-08 A (+33d) |  | 0% → 100% | 18d → none |  |
| SDR-ST-ENG-AP-1040 | Potable Water Piping Layout Master Plan Approval | 2026-04-25 → 2026-05-02 A (+7d) | 2026-05-06 A |  | 0% → 100% | 18d → none |  |
| SDR-ST-ENG-AP-1050 | Potable Water Piping Layout Approval | 2026-04-25 → 2026-05-02 A (+7d) | 2026-05-06 A |  | 0% → 100% | 18d → none |  |
| 9 | **Electrical** |  | 2026-05-06 → 2026-10-12 (+159d) |  |  |  |  |
| SDR-ST-ENG-AP-1160 | Standard Details_Low Voltage Approval | 2026-04-25 A | 2026-05-06 → 2026-06-10 A (+35d) |  | 0% → 100% | 18d → none |  |
| SDR-ST-ENG-AP-1150 | Low Voltage Network Approval | 2026-04-25 → 2026-05-02 A (+7d) | 2026-05-06 A |  | 0% → 100% | 18d → none |  |
| SDR-ST-ENG-AP-1170 | Street Lighting Network Approval | 2026-04-25 → 2026-05-02 A (+7d) | 2026-05-06 A |  | 0% → 100% | 18d → none |  |
| SDR-ST-ENG-AP-1180 | Standard Details_Street Lighting Approval | 2026-04-25 → 2026-05-02 A (+7d) | 2026-05-06 A |  | 0% → 100% | 18d → none |  |
| SDR-ST-ENG-AP-1190 | Telecommunication Network Approval | 2026-04-25 → 2026-05-02 A (+7d) | 2026-05-06 A |  | 0% → 100% | 18d → none |  |
| SDR-ST-ENG-AP-1200 | Telecommunication Standard Details Approval | 2026-04-25 → 2026-05-02 A (+7d) | 2026-05-06 A |  | 0% → 100% | 18d → none |  |
| SDR-ST-ENG-AP-1210 | Canopy:Ground Floor Lighting Plan Approval | 2026-04-25 → 2026-05-02 A (+7d) | 2026-05-06 A |  | 0% → 100% | 18d → none |  |
| SDR-ST-ENG-AP-1220 | Canopy:Ground Floor CCTV Plan Approval | 2026-04-25 → 2026-05-02 A (+7d) | 2026-05-06 A |  | 0% → 100% | 18d → none |  |
| SDR-ST-ENG-AP-1230 | Canopy:Ground Floor Voice Evacuation Plan Approval | 2026-04-25 → 2026-05-02 A (+7d) | 2026-05-06 A |  | 0% → 100% | 18d → none |  |
| SDR-ST-ENG-AP-1130 | Medium Voltage Network Approval | 2026-04-25 → 2026-10-05 (+163d) | 2026-05-06 → 2026-10-11 (+158d) | 11d → 6d |  | 18d → 0d | SDR-ST-ENG-SUB-1130 → SDR-ST-ENG-SUB-1130 SS+2d |
| SDR-ST-ENG-AP-1140 | Standard Details Medium Voltage Approval | 2026-04-25 → 2026-10-05 (+163d) | 2026-05-06 → 2026-10-12 (+159d) | 11d → 7d |  | 18d → 0d | SDR-ST-ENG-SUB-1140 → SDR-ST-ENG-SUB-1140 SS+2d |
| 6 | **Materials** |  | 2026-05-06 → 2026-10-13 (+160d) |  |  |  |  |
| 5 | **Materials Submission** |  | 2026-04-24 → 2026-10-06 (+165d) |  |  |  |  |
| 2 | **Short Lead Items** |  | 2026-04-24 → 2026-06-30 (+67d) |  |  |  |  |
| 2 | **Civil** |  | 2026-04-24 → 2026-06-07 (+44d) |  |  |  |  |
| SDR-ST-PRO-S-1010 | Waterproofing (Thermal & moisture Protection) | 2026-04-16 A | 2026-04-24 → 2026-06-07 A (+44d) |  | 0% → 100% | 0d → none |  |
| SDR-ST-PRO-S-1030 | Interlock | 2026-04-16 A | 2026-04-24 → 2026-05-01 A (+7d) |  | 0% → 100% | 0d → none |  |
| SDR-ST-PRO-S-1060 | Kerbstone | 2026-04-16 A | 2026-04-24 → 2026-05-01 A (+7d) |  | 0% → 100% | 13d → none |  |
| SDR-ST-PRO-S-1260 | Steel Bars | 2026-04-16 A | 2026-04-24 → 2026-05-01 A (+7d) |  | 0% → 100% | 0d → none |  |
| SDR-ST-PRO-S-1270 | Asphalt | 2026-04-16 A | 2026-04-24 → 2026-06-03 A (+40d) |  | 0% → 100% | 0d → none |  |
| 4 | **Electrical** |  | 2026-04-24 → 2026-06-30 (+67d) |  |  |  |  |
| SDR-ST-PRO-S-1140 | LOW VOLTAGE CABLES | 2026-04-16 A | 2026-04-24 → 2026-05-01 A (+7d) |  | 0% → 100% | 13d → none |  |
| SDR-ST-PRO-S-1150 | LOW VOLTAGE DISTRIBUTION Panel | 2026-04-16 A | 2026-04-24 → 2026-06-23 A (+60d) |  | 0% → 100% | 13d → none |  |
| SDR-ST-PRO-S-1160 | STREET LIGHTING FEEDER Panel | 2026-04-16 A | 2026-04-24 → 2026-06-22 A (+59d) |  | 0% → 100% | 13d → none |  |
| SDR-ST-PRO-S-1170 | STREET LIGHTING CABLES | 2026-04-16 A | 2026-04-24 → 2026-06-04 A (+41d) |  | 0% → 100% | 13d → none |  |
| SDR-ST-PRO-S-1200 | ROAD CROSSING DUCTS Ø110mm | 2026-04-16 A | 2026-04-24 → 2026-06-15 A (+52d) |  | 0% → 100% | 13d → none |  |
| SDR-ST-PRO-S-1210 | Drawpits | 2026-04-16 A | 2026-04-24 → 2026-06-24 A (+61d) |  | 0% → 100% | 13d → none |  |
| SDR-ST-PRO-S-1240 | CCTV :Pole mounted Filed Equipment cabinet (FE | 2026-04-16 A | 2026-04-24 → 2026-06-22 A (+59d) |  | 0% → 100% | 13d → none |  |
| SDR-ST-PRO-S-1250 | VOICE EVACUATION SYSTEM | 2026-04-16 A | 2026-04-24 → 2026-06-23 A (+60d) |  | 0% → 100% | 13d → none |  |
| SDR-ST-PRO-S-1230 | CCTV :5MP IP PoE Bullet Camera | 2026-04-16 → 2026-06-14 A (+59d) | 2026-04-24 → 2026-06-30 A (+67d) |  | 0% → 100% | 13d → none |  |
| 1 | **Mechanical** |  | 2026-04-24 → 2026-06-08 (+45d) |  |  |  |  |
| SDR-ST-PRO-S-1040 | HDPE PIPES & FITTINGS | 2026-04-16 A | 2026-04-24 → 2026-05-01 A (+7d) |  | 0% → 100% | 13d → none |  |
| SDR-ST-PRO-S-1050 | CONCRETE PIPES AND FITTINGS | 2026-04-16 A | 2026-04-24 → 2026-05-21 A (+27d) |  | 0% → 100% | 13d → none |  |
| SDR-ST-PRO-S-1070 | GI GOOSENECK & VENT | 2026-04-16 A | 2026-04-24 → 2026-06-08 A (+45d) |  | 0% → 100% | 13d → none |  |
| SDR-ST-PRO-S-1080 | WARNING TAPE | 2026-04-16 A | 2026-04-24 → 2026-05-01 A (+7d) |  | 0% → 100% | 13d → none |  |
| SDR-ST-PRO-S-1090 | MANHOLE, CATCH BASIN & VALVE BOX COVER | 2026-04-16 A | 2026-04-24 → 2026-05-02 A (+8d) |  | 0% → 100% | 13d → none |  |
| 1 | **Long Lead Items** |  | 2026-04-24 → 2026-10-06 (+165d) |  |  |  |  |
| 1 | **Civil** |  | 2026-04-24 → 2026-06-21 (+58d) |  |  |  |  |
| SDR-ST-PRO-S-1000 | Metal railing for platform | 2026-04-16 A | 2026-04-24 → 2026-06-21 A (+58d) |  | 0% → 100% | 13d → none |  |
| SDR-ST-PRO-S-1020 | Canopy | 2026-04-16 A | 2026-04-24 → 2026-05-01 A (+7d) |  | 0% → 100% | 13d → none |  |
| 3 | **Electrical** |  | 2026-04-24 → 2026-10-06 (+165d) |  |  |  |  |
| SDR-ST-PRO-S-1180 | LIGHTING POLES | 2026-04-16 A | 2026-04-24 → 2026-05-01 A (+7d) |  | 0% → 100% | 13d → none | SDR-ST-PRO-S-1110 SS, SDR-ST-MILS-1000 → SDR-ST-MILS-1000 |

| ID | Task | Start | Finish | Duration | Complete | Total float | Predecessors |
| --- | --- | --- | --- | --- | --- | --- | --- |
| SDR-ST-PRO-S-1190 | STREET LIGHTING LUMINAIRE | 2026-04-16 A | 2026-04-24 → 2026-06-01 A (+38d) |  | 0% → 100% | 13d → none | SDR-ST-PRO-S-1110 SS, SDR-ST-MILS-1000 → SDR-ST-MILS-1000 |
| SDR-ST-PRO-S-1220 | Outdoor Lighting Fixtures | 2026-04-16 → 2026-06-04 A (+49d) | 2026-04-24 → 2026-06-08 A (+45d) |  | 0% → 100% | 13d → none | SDR-ST-PRO-S-1110 SS, SDR-ST-MILS-1000 → SDR-ST-MILS-1000 |
| SDR-ST-PRO-S-1110 | MEDIUM VOLTAGE CABLES DUCT BANKS | 2026-04-16 → 2026-09-14 A (+151d) | 2026-04-24 → 2026-10-06 (+165d) |  |  | 13d → 0d | SDR-ST-MILS-1000 SS+8d, SDR-ST-MILS-1000 → SDR-ST-MILS-1000 SS+8d, SDR-ST-MILS-1000, SDR-ST-MILS-1040 |
| SDR-ST-PRO-S-1120 | MEDIUM VOLTAGE CABLES | 2026-04-16 → 2026-09-14 A (+151d) | 2026-04-24 → 2026-10-06 (+165d) |  |  | 13d → 4d |  |
| SDR-ST-PRO-S-1130 | SUB-STATION | 2026-04-16 → 2026-09-14 A (+151d) | 2026-04-24 → 2026-10-06 (+165d) |  |  | 13d → 0d |  |
| 2 | **Mechanical** |  | 2026-04-24 → 2026-05-01 (+7d) |  |  |  |  |
| SDR-ST-PRO-S-1100 | WASHOUT & AIR VALVE, GATE VALVE, BUTTERFLY VALVE | 2026-04-16 A | 2026-04-24 → 2026-05-01 A (+7d) |  | 0% → 100% | 15d → none | SDR-ST-MILS-1000 SS+8d, SDR-ST-PRO-S-1220 SS, SDR-ST-MILS-1000 → SDR-ST-MILS-1000 SS+8d, SDR-ST-MILS-1000 |
| 6 | **Materials Approval** |  | 2026-05-06 → 2026-10-13 (+160d) |  |  |  |  |
| 2 | **Short Lead Items** |  | 2026-05-06 → 2026-10-04 (+151d) |  |  |  |  |
| 1 | **Civil** |  | 2026-05-06 → 2026-07-07 (+62d) |  |  |  |  |
| SDR-ST-PRO-A-1010 | Waterproofing (Thermal & moisture Protection) | 2026-04-25 A | 2026-05-06 → 2026-06-15 A (+40d) |  | 0% → 100% | 0d → none |  |
| SDR-ST-PRO-A-1270 | Asphalt | 2026-04-25 A | 2026-05-06 → 2026-07-07 A (+62d) |  | 0% → 100% | 17d → none |  |
| SDR-ST-PRO-A-1030 | Interlock | 2026-04-25 → 2026-05-02 A (+7d) | 2026-05-06 A |  | 0% → 100% | 17d → none |  |
| SDR-ST-PRO-A-1060 | Kerbstone | 2026-04-25 → 2026-05-02 A (+7d) | 2026-05-06 A |  | 0% → 100% | 17d → none |  |
| SDR-ST-PRO-A-1260 | Steel Bars | 2026-04-25 → 2026-05-02 A (+7d) | 2026-05-06 A |  | 0% → 100% | 0d → none |  |
| 3 | **Electrical** |  | 2026-05-06 → 2026-10-04 (+151d) |  |  |  |  |
| SDR-ST-PRO-A-1130 | STREET LIGHTING FEEDER Panel | 2026-04-22 A | 2026-05-04 → 2026-07-12 A (+69d) |  | 0% → 100% | 19d → none |  |
| SDR-ST-PRO-A-1120 | LOW VOLTAGE DISTRIBUTION Panel | 2026-04-25 A | 2026-05-06 → 2026-07-12 A (+67d) |  | 0% → 100% | 17d → none |  |
| SDR-ST-PRO-A-1140 | STREET LIGHTING CABLES | 2026-04-25 A | 2026-05-06 → 2026-06-20 A (+45d) |  | 0% → 100% | 17d → none |  |
| SDR-ST-PRO-A-1150 | ROAD CROSSING DUCTS Ø110mm | 2026-04-25 A | 2026-05-06 → 2026-06-20 A (+45d) |  | 0% → 100% | 17d → none |  |
| SDR-ST-PRO-A-1160 | Drawpits | 2026-04-25 A | 2026-05-06 → 2026-07-19 A (+74d) |  | 0% → 100% | 17d → none |  |
| SDR-ST-PRO-A-1110 | LOW VOLTAGE CABLES | 2026-04-25 → 2026-05-02 A (+7d) | 2026-05-06 A |  | 0% → 100% | 17d → none |  |
| SDR-ST-PRO-A-1190 | VOICE EVACUATION SYSTEM | 2026-04-25 → 2026-06-14 A (+50d) | 2026-05-06 → 2026-07-21 A (+76d) |  | 0% → 100% | 17d → none |  |
| SDR-ST-PRO-A-1170 | CCTV :5MP IP PoE Bullet Camera | 2026-04-25 → 2026-07-26 A (+92d) | 2026-05-06 → 2026-10-04 (+151d) |  | 0% → 60% | 17d → 1d |  |
| SDR-ST-PRO-A-1180 | CCTV :Pole mounted Filed Equipment cabinet (FE | 2026-04-25 → 2026-07-26 A (+92d) | 2026-05-06 → 2026-10-04 (+151d) |  | 0% → 60% | 17d → 0d | SDR-ST-PRO-S-1240 → SDR-ST-PRO-S-1240 SS |
| 2 | **Mechanical** |  | 2026-05-06 → 2026-07-01 (+56d) |  |  |  |  |
| SDR-ST-PRO-A-1050 | CONCRETE PIPES AND FITTINGS | 2026-04-25 A | 2026-05-06 → 2026-05-31 A (+25d) |  | 0% → 100% | 17d → none |  |
| SDR-ST-PRO-A-1070 | GI GOOSENECK & VENT | 2026-04-25 A | 2026-05-06 → 2026-07-01 A (+56d) |  | 0% → 100% | 17d → none |  |
| SDR-ST-PRO-A-1080 | WARNING TAPE | 2026-04-25 A | 2026-05-06 → 2026-05-24 A (+18d) |  | 0% → 100% | 17d → none |  |
| SDR-ST-PRO-A-1040 | HDPE PIPES & FITTINGS | 2026-04-25 → 2026-05-02 A (+7d) | 2026-05-06 A |  | 0% → 100% | 17d → none |  |
| SDR-ST-PRO-A-1090 | MANHOLE, CATCH BASIN & VALVE BOX COVER | 2026-04-25 → 2026-05-02 A (+7d) | 2026-05-06 → 2026-06-24 A (+49d) |  | 0% → 100% | 17d → none |  |
| 1 | **Long Lead Items** |  | 2026-05-06 → 2026-10-13 (+160d) |  |  |  |  |
| 1 | **Civil** | 2026-04-25 → 2026-05-02 (+7d) | 2026-05-06 → 2026-07-13 (+68d) |  |  |  |  |
| SDR-ST-PRO-A-1020 | Canopy | 2026-04-25 → 2026-05-02 A (+7d) | 2026-05-06 A |  | 0% → 100% | 17d → none |  |
| SDR-ST-PRO-A-1000 | Metal railing for platform | 2026-04-25 → 2026-06-21 A (+57d) | 2026-05-06 → 2026-07-13 A (+68d) |  | 0% → 100% | 17d → none |  |
| 3 | **Electrical** |  | 2026-05-06 → 2026-10-13 (+160d) |  |  |  |  |
| SDR-ST-PRO-A-1240 | STREET LIGHTING LUMINAIRE | 2026-04-25 A | 2026-05-06 → 2026-06-09 A (+34d) |  | 0% → 100% | 17d → none |  |
| SDR-ST-PRO-A-1230 | LIGHTING POLES | 2026-04-25 → 2026-05-02 A (+7d) | 2026-05-06 A |  | 0% → 100% | 17d → none |  |
| SDR-ST-PRO-A-1250 | Outdoor Lighting Fixtures | 2026-04-25 → 2026-06-08 A (+44d) | 2026-05-06 → 2026-06-15 A (+40d) |  | 0% → 100% | 17d → none | SDR-ST-PRO-S-1220 → SDR-ST-PRO-S-1220, SDR-ST-ENG-AP-1100 |
| SDR-ST-PRO-A-1220 | SUB-STATION | 2026-04-25 → 2026-10-07 (+165d) | 2026-05-06 → 2026-10-13 (+160d) | 11d → 6d |  | 17d → 0d | SDR-ST-PRO-S-1130 → SDR-ST-PRO-S-1130, SDR-ST-ENG-AP-1110 FF |
| SDR-ST-PRO-A-1200 | MEDIUM VOLTAGE CABLES DUCT BANKS | 2026-04-25 → 2026-10-12 (+170d) | 2026-05-06 → 2026-10-13 (+160d) | 11d → 2d |  | 17d → 0d | SDR-ST-PRO-S-1110 → SDR-ST-PRO-S-1110, SDR-ST-ENG-AP-1130 |
| SDR-ST-PRO-A-1210 | MEDIUM VOLTAGE CABLES | 2026-04-25 → 2026-10-13 (+171d) | 2026-05-06 → 2026-10-13 (+160d) | 11d → 1d |  | 17d → 0d | SDR-ST-PRO-S-1120 → SDR-ST-PRO-S-1120, SDR-ST-ENG-AP-1140 |
| 2 | **Mechanical** | 2026-04-25 → 2026-05-02 (+7d) |  |  |  |  |  |
| SDR-ST-PRO-A-1100 | WASHOUT & AIR VALVE, GATE VALVE, BUTTERFLY VALVE | 2026-04-25 → 2026-05-02 A (+7d) | 2026-05-06 A |  | 0% → 100% | 18d → none |  |
| 4 | **Procurement** | 2026-06-01 → 2026-06-09 (+8d) | 2027-04-15 → 2027-06-12 (+58d) |  |  |  |  |
| 5 | **Purchase Order** | 2026-06-01 → 2026-06-09 (+8d) | 2026-12-10 → 2027-04-14 (+125d) |  |  |  |  |
| 4 | **Short Lead Items** | 2026-06-01 → 2026-06-09 (+8d) | 2026-11-11 → 2027-02-11 (+92d) |  |  |  |  |
| 1 | **Civil** | 2026-06-01 → 2026-09-28 (+119d) | 2026-11-09 → 2026-12-25 (+46d) |  |  |  |  |
| SDR-ST-PRO-PO-1030 | Waterproofing (Thermal & moisture Protection) | 2026-08-10 → 2026-09-28 (+49d) | 2026-09-04 → 2026-10-23 (+49d) |  |  | 0d → 9d |  |
| SDR-ST-PRO-PO-1260 | Steel Bars | 2026-06-01 → 2026-10-14 (+135d) | 2026-06-12 → 2026-10-27 (+137d) |  |  |  |  |
| SDR-ST-PRO-PO-1040 | Interlock | 2026-09-02 → 2026-10-21 (+49d) | 2026-09-17 → 2026-11-05 (+49d) |  |  | 0.1d → 21.8d |  |
| SDR-ST-PRO-PO-1060 | Kerbstone | 2026-09-03 → 2026-10-22 (+49d) | 2026-09-16 → 2026-11-04 (+49d) |  |  | 1d → 21.8d |  |
| SDR-ST-PRO-PO-1270 | Asphalt | 2026-10-27 → 2026-12-14 (+48d) | 2026-11-09 → 2026-12-25 (+46d) |  |  | 9.3d → 25.2d |  |
| 3 | **Electrical** | 2026-08-18 → 2026-06-18 (-61d) | 2026-11-11 → 2027-02-11 (+92d) |  |  |  |  |
| SDR-ST-PRO-PO-1100 | LOW VOLTAGE CABLES | 2026-08-18 → 2026-06-18 A (-61d) | 2026-09-14 → 2026-07-13 A (-63d) |  | 0% → 100% | 0d → none | SDR-ST-PRO-A-1110 FS+62d, SDR-ST-PRO-PO-1030 SS+6d → SDR-ST-PRO-A-1110 FS+62d |
| SDR-ST-PRO-PO-1010 | ROAD CROSSING DUCTS Ø110mm | 2026-08-31 → 2026-07-01 A (-61d) | 2026-09-11 → 2026-07-21 A (-52d) |  | 0% → 100% | 0d → none | SDR-ST-PRO-A-1150 FS+55d, SDR-ST-PRO-PO-1260 FS+55d, SDR-ST-PRO-PO-1070 SS → SDR-ST-PRO-A-1150 FS+55d, SDR-ST-PRO-PO-1070 FF |
| SDR-ST-PRO-PO-1070 | STREET LIGHTING FEEDER Panel | 2026-08-31 → 2026-07-01 A (-61d) | 2026-09-11 → 2026-09-28 (+17d) |  | 0% → 50% | 0d → 9.8d | SDR-ST-PRO-A-1130 FS+60d, SDR-ST-PRO-PO-1020 SS+1d → SDR-ST-PRO-A-1130 FS+60d |
| SDR-ST-PRO-PO-1130 | LOW VOLTAGE DISTRIBUTION Panel | 2026-09-01 → 2026-07-01 A (-62d) | 2026-09-14 → 2026-09-30 (+16d) |  | 0% → 50% | 0d → 49.8d |  |
| SDR-ST-PRO-PO-1110 | STREET LIGHTING CABLES | 2026-09-08 → 2026-08-25 A (-14d) | 2026-09-22 → 2026-12-15 (+84d) |  | 0% → 50% | 0d → 0.4d |  |
| SDR-ST-PRO-PO-1020 | Drawpits | 2026-08-28 → 2026-09-28 (+31d) | 2026-09-10 → 2026-10-09 (+29d) |  |  | 0d → 9.8d |  |
| SDR-ST-PRO-PO-1050 | CCTV :Pole mounted Filed Equipment cabinet | 2026-09-07 → 2026-12-14 (+98d) | 2026-09-18 → 2026-12-25 (+98d) |  |  | 0d → 0.4d |  |
| SDR-ST-PRO-PO-1220 | VOICE EVACUATION SYSTEM | 2026-10-26 → 2026-12-31 (+66d) | 2026-11-06 → 2027-01-13 (+68d) |  |  | 0d → 0.4d | SDR-ST-PRO-A-1190 FS+100d, SDR-ST-PRO-PO-1110 FS+22d → SDR-ST-PRO-A-1190 FS+100d, SDR-ST-PRO-PO-1110 FF+22d |
| SDR-ST-PRO-PO-1230 | CCTV :5MP IP PoE Bullet Camera | 2026-10-29 → 2027-01-27 (+90d) | 2026-11-11 → 2027-02-11 (+92d) |  |  | 1.8d → 1d | SDR-ST-PRO-A-1170 FS+105d, SDR-ST-PRO-PO-1220 SS+3d → SDR-ST-PRO-A-1170 FS+98d, SDR-ST-PRO-PO-1220 SS+3d |
| 2 | **Mechanical** | 2026-08-24 → 2026-06-09 (-76d) | 2026-09-28 → 2026-11-13 (+46d) |  |  |  |  |
| SDR-ST-PRO-PO-1000 | WARNING TAPE | 2026-08-24 → 2026-06-09 A (-76d) | 2026-09-04 → 2026-07-06 A (-60d) |  | 0% → 100% | 4.1d → none | SDR-ST-PRO-A-1080 FS+50d, SDR-ST-ENG-AP-1230, SDR-ST-ENG-AP-1080, SDR-ST-ENG-AP-1090, SDR-ST-ENG-AP-1100, SDR-ST-ENG-AP-1110, SDR-ST-ENG-AP-1120, SDR-ST-ENG-AP-1000, SDR-ST-ENG-AP-1010, SDR-ST-ENG-AP-1020, SDR-ST-ENG-AP-1030, SDR-ST-ENG-AP-1040, SDR-ST-ENG-AP-1050, SDR-ST-ENG-AP-1060, SDR-ST-ENG-AP-1070, SDR-ST-ENG-AP-1130, SDR-ST-ENG-AP-1140, SDR-ST-ENG-AP-1150, SDR-ST-ENG-AP-1160, SDR-ST-ENG-AP-1170, SDR-ST-ENG-AP-1180, SDR-ST-ENG-AP-1190, SDR-ST-ENG-AP-1200, SDR-ST-ENG-AP-1210, SDR-ST-ENG-AP-1220, SDR-ST-MILS-1050, SDR-ST-MILS-1040, SDR-ST-MILS-1030, SDR-ST-MILS-1020, SDR-ST-PREL-1100, SDR-ST-PREL-1090, SDR-ST-PREL-1080, SDR-ST-PREL-1060, SDR-ST-PREL-1070, SDR-ST-PRO-PO-1100 SS+4d → SDR-ST-PRO-A-1080 FS+50d, SDR-ST-ENG-AP-1230, SDR-ST-ENG-AP-1080, SDR-ST-ENG-AP-1090, SDR-ST-ENG-AP-1120, SDR-ST-ENG-AP-1000, SDR-ST-ENG-AP-1010, SDR-ST-ENG-AP-1020, SDR-ST-ENG-AP-1030, SDR-ST-ENG-AP-1040, SDR-ST-ENG-AP-1050, SDR-ST-ENG-AP-1060, SDR-ST-ENG-AP-1070, SDR-ST-ENG-AP-1150, SDR-ST-ENG-AP-1160, SDR-ST-ENG-AP-1170, SDR-ST-ENG-AP-1180, SDR-ST-ENG-AP-1190, SDR-ST-ENG-AP-1200, SDR-ST-ENG-AP-1210, SDR-ST-ENG-AP-1220, SDR-ST-MILS-1020, SDR-ST-PREL-1090, SDR-ST-PREL-1080, SDR-ST-PREL-1060, SDR-ST-PREL-1070, SDR-ST-PRO-PO-1100 SS+4d |
| SDR-ST-PRO-PO-1080 | HDPE PIPES & FITTINGS | 2026-09-07 → 2026-06-09 A (-90d) | 2026-09-18 → 2026-06-23 A (-87d) |  | 0% → 100% | 0d → none | SDR-ST-PRO-A-1040 FS+62d, SDR-ST-PRO-PO-1030 → SDR-ST-PRO-A-1040 FS+62d |
| SDR-ST-PRO-PO-1120 | CONCRETE PIPES AND FITTINGS | 2026-09-07 → 2026-06-09 A (-90d) | 2026-09-18 → 2026-06-22 A (-88d) |  | 0% → 100% | 0d → none | SDR-ST-PRO-A-1050 FS+63d, SDR-ST-PRO-PO-1030 → SDR-ST-PRO-A-1050 FS+63d |
| SDR-ST-PRO-PO-1090 | GI GOOSENECK & VENT | 2026-09-07 → 2026-10-26 (+49d) | 2026-09-18 → 2026-11-06 (+49d) |  |  | 1.1d → 22.8d |  |
| SDR-ST-PRO-PO-1140 | MANHOLE, CATCH BASIN & VALVE BOX COVER | 2026-09-14 → 2026-11-02 (+49d) | 2026-09-28 → 2026-11-13 (+46d) |  |  | 0.2d → 9d |  |
| 5 | **Long Lead Items** | 2026-08-25 → 2026-07-01 (-55d) | 2026-12-10 → 2027-04-14 (+125d) |  |  |  |  |

| ID | Task | Start | Finish | Duration | Complete | Total float | Predecessors |
| --- | --- | --- | --- | --- | --- | --- | --- |
| 1 | **Civil** | 2026-08-25 → 2026-10-16 (+52d) | 2026-12-08 → 2027-03-25 (+107d) |  |  |  |  |
| SDR-ST-PRO-PO-1150 | Metal railing for platform | 2026-08-25 → 2026-10-16 (+52d) | 2026-09-30 → 2026-11-20 (+51d) |  |  | 6.9d → 10d |  |
| SDR-ST-PRO-PO-1240 | Canopy | 2026-11-19 → 2027-02-24 (+97d) | 2026-12-08 → 2027-03-25 (+107d) |  |  | 1.8d → 17.4d |  |
| 3 | **Electrical** | 2026-10-12 → 2026-07-01 (-103d) | 2026-12-10 → 2027-04-14 (+125d) |  |  |  |  |
| SDR-ST-PRO-PO-1200 | LIGHTING POLES | 2026-10-19 → 2026-07-01 A (-110d) | 2026-11-05 → 2026-09-28 (-38d) |  | 0% → 50% | 6d → 101d | SDR-ST-PRO-A-1230 FS+96d, SDR-ST-PRO-PO-1140 FS+14d, SDR-ST-PRO-MS-1000 → SDR-ST-PRO-A-1230 FS+96d |
| SDR-ST-PRO-PO-1180 | Outdoor Lighting Fixtures | 2026-10-19 → 2026-12-04 (+46d) | 2026-11-05 → 2026-12-23 (+48d) |  |  | 1.2d → 9d | SDR-ST-PRO-A-1250 FS+95d, SDR-ST-PRO-PO-1140 FS+14d → SDR-ST-PRO-A-1250 FF+90d, SDR-ST-PRO-PO-1140 FS+14d |
| SDR-ST-PRO-PO-1160 | MEDIUM VOLTAGE CABLES DUCT BANKS | 2026-10-12 → 2026-12-28 (+77d) | 2026-10-29 → 2027-01-14 (+77d) |  |  | 0.2d → 15.2d | SDR-ST-PRO-A-1200 FS+90d, SDR-ST-PRO-PO-1140 FS+9d → SDR-ST-PRO-A-1200 FF+80d, SDR-ST-PRO-PO-1140 FS+9d |
| SDR-ST-PRO-PO-1210 | STREET LIGHTING LUMINAIRE | 2026-11-10 → 2027-01-15 (+66d) | 2026-11-27 → 2027-02-03 (+68d) |  |  | 0d → 0.4d |  |
| SDR-ST-PRO-PO-1170 | MEDIUM VOLTAGE CABLES | 2026-10-12 → 2027-01-27 (+107d) | 2026-10-30 → 2027-02-24 (+117d) |  |  | 0.2d → 75.6d |  |
| SDR-ST-PRO-PO-1250 | SUB-STATION | 2026-11-23 → 2027-03-25 (+122d) | 2026-12-10 → 2027-04-14 (+125d) |  |  | 6d → 38.8d |  |
| 2 | **Mechanical** | 2026-10-26 → 2026-12-11 (+46d) | 2026-11-12 → 2026-12-30 (+48d) |  |  |  |  |
| SDR-ST-PRO-PO-1190 | WASHOUT & AIR VALVE, GATE VALVE, BUTTERFLY VALVE | 2026-10-26 → 2026-12-11 (+46d) | 2026-11-12 → 2026-12-30 (+48d) |  |  | 1.2d → 9d |  |
| 6 | **Delivery to Site** | 2026-07-22 → 2026-07-13 (-9d) | 2027-04-11 → 2027-06-08 (+58d) |  |  |  |  |
| 2 | **Short Lead Items Delivery** | 2026-07-22 → 2026-07-13 (-9d) | 2027-02-09 → 2027-04-14 (+64d) |  |  |  |  |
| 1 | **Civil** | 2026-07-22 → 2026-10-05 (+75d) | 2027-02-09 → 2027-04-14 (+64d) |  |  |  |  |
| SDR-ST-PRO-DL-1260 | Steel Bars | 2026-07-22 → 2026-10-05 (+75d) | 2026-09-20 → 2026-12-04 (+75d) |  |  | 7.8d → 0.8d | SDR-ST-PRO-PO-1260 FS+28d → SDR-ST-PRO-PO-1260 FF+28d |
| SDR-ST-PRO-DL-1030 | Waterproofing (Thermal & moisture Protection) | 2026-09-04 → 2026-10-23 (+49d) | 2026-11-04 → 2026-12-22 (+48d) |  |  | 15.4d → 44.8d |  |
| SDR-ST-PRO-DL-1060 | Kerbstone | 2026-09-17 → 2026-11-05 (+49d) | 2026-11-17 → 2027-01-04 (+48d) |  |  | 2.4d → 31.8d |  |
| SDR-ST-PRO-DL-1040 | Interlock | 2026-09-28 → 2026-11-13 (+46d) | 2026-11-19 → 2027-01-04 (+46d) |  |  | 0.4d → 31.8d |  |
| SDR-ST-PRO-DL-1270 | Asphalt | 2026-11-10 → 2026-12-28 (+48d) | 2027-02-09 → 2027-04-14 (+64d) |  |  | 13.6d → 35.5d |  |
| 3 | **Electrical** | 2026-09-10 → 2026-08-02 (-39d) | 2027-01-10 → 2027-04-13 (+93d) |  |  |  |  |
| SDR-ST-PRO-DL-1100 | LOW VOLTAGE CABLES | 2026-09-14 → 2026-08-02 A (-43d) | 2026-11-14 → 2026-11-17 (+3d) |  | 0% → 25% | 5.4d → 79.7d |  |
| SDR-ST-PRO-DL-1010 | ROAD CROSSING DUCTS Ø110mm | 2026-09-11 → 2026-09-28 (+17d) | 2026-10-11 → 2026-10-27 (+16d) |  |  | 11.3d → 11.5d |  |
| SDR-ST-PRO-DL-1130 | LOW VOLTAGE DISTRIBUTION Panel | 2026-09-17 → 2026-10-05 (+18d) | 2026-10-28 → 2026-11-14 (+17d) |  |  | 8.4d → 69.3d |  |
| SDR-ST-PRO-DL-1070 | STREET LIGHTING FEEDER Panel | 2026-09-21 → 2026-10-05 (+14d) | 2026-11-01 → 2026-11-14 (+13d) |  |  | 4.4d → 68.8d |  |
| SDR-ST-PRO-DL-1020 | Drawpits | 2026-09-10 → 2026-10-09 (+29d) | 2026-10-11 → 2026-11-08 (+28d) |  |  | 3.9d → 13.8d |  |
| SDR-ST-PRO-DL-1050 | CCTV :Pole mounted Filed Equipment cabinet | 2026-09-18 → 2026-10-26 (+38d) | 2026-11-18 → 2026-12-25 (+37d) |  |  | 1.4d → 41.8d | SDR-ST-PRO-PO-1050 → SDR-ST-PRO-PO-1050 FF |
| SDR-ST-PRO-DL-1110 | STREET LIGHTING CABLES | 2026-09-28 → 2026-12-16 (+79d) | 2026-11-02 → 2027-01-20 (+79d) |  |  | 3.4d → 3.01d | SDR-ST-PRO-PO-1110 FS+3d → SDR-ST-PRO-PO-1110 FS+2d |
| SDR-ST-PRO-DL-1200 | VOICE EVACUATION SYSTEM | 2026-11-06 → 2027-01-13 (+68d) | 2027-01-05 → 2027-03-31 (+85d) |  |  | 8.4d → 10d |  |
| SDR-ST-PRO-DL-1230 | CCTV :5MP IP PoE Bullet Camera | 2026-11-11 → 2027-01-27 (+77d) | 2027-01-10 → 2027-04-13 (+93d) |  |  | 3.4d → 0.7d | SDR-ST-PRO-PO-1230 → SDR-ST-PRO-PO-1230 SS |
| 2 | **Mechanical** | 2026-09-04 → 2026-07-13 (-53d) | 2026-12-07 → 2027-01-22 (+46d) |  |  |  |  |
| SDR-ST-PRO-DL-1080 | HDPE PIPES & FITTINGS | 2026-09-18 → 2026-07-13 A (-67d) | 2026-11-18 → 2026-07-20 A (-121d) |  | 0% → 100% | 1.4d → none |  |
| SDR-ST-PRO-DL-1000 | WARNING TAPE | 2026-09-04 → 2026-08-11 A (-24d) | 2026-10-30 → 2026-08-25 A (-66d) |  | 0% → 100% | 6.4d → none |  |
| SDR-ST-PRO-DL-1120 | CONCRETE PIPES AND FITTINGS | 2026-09-18 → 2026-08-18 A (-31d) | 2026-12-07 → 2026-08-31 A (-98d) |  | 0% → 100% | 1.4d → none |  |
| SDR-ST-PRO-DL-1090 | GI GOOSENECK & VENT | 2026-09-18 → 2026-11-06 (+49d) | 2026-11-16 → 2027-01-03 (+48d) |  |  | 3.4d → 32.8d |  |
| SDR-ST-PRO-DL-1140 | VALVE & BOX COVER | 2026-09-28 → 2026-11-13 (+46d) | 2026-12-07 → 2027-01-22 (+46d) |  |  | 1.4d → 25.6d |  |
| 5 | **Long Lead Items Delivery** | 2026-10-28 → 2026-09-28 (-30d) | 2027-04-11 → 2027-06-08 (+58d) |  |  |  |  |
| 1 | **Civil** | 2026-10-28 → 2026-12-18 (+51d) | 2027-04-08 → 2027-06-05 (+58d) |  |  |  |  |
| SDR-ST-PRO-DL-1150 | Metal railing for platform | 2026-10-28 → 2026-12-18 (+51d) | 2027-02-02 → 2027-04-11 (+68d) |  |  | 8.9d → 15.1d |  |
| SDR-ST-PRO-DL-1240 | Canopy | 2026-12-22 → 2027-04-01 (+100d) | 2027-04-08 → 2027-06-05 (+58d) | 90d → 60d |  | 1.8d → 25.2d | SDR-ST-PRO-PO-1240 FS+10d → SDR-ST-PRO-PO-1240 FS+5d |
| 3 | **Electrical** | 2026-10-29 → 2026-09-28 (-31d) | 2027-04-11 → 2027-06-08 (+58d) |  |  |  |  |
| SDR-ST-PRO-DL-1210 | LIGHTING POLES | 2026-11-05 → 2026-09-28 (-38d) | 2027-02-27 → 2027-01-11 (-47d) |  |  | 8.9d → 141.2d |  |
| SDR-ST-PRO-DL-1170 | MEDIUM VOLTAGE CABLES | 2026-10-30 → 2026-11-04 (+5d) | 2027-02-15 → 2027-02-24 (+9d) |  |  | 0.8d → 105.7d | SDR-ST-PRO-PO-1170 → SDR-ST-PRO-PO-1170 FF |
| SDR-ST-PRO-DL-1250 | SUB-STATION | 2026-12-10 → 2026-12-13 (+3d) | 2027-04-11 → 2027-04-14 (+3d) |  |  | 8.8d → 55.8d | SDR-ST-PRO-PO-1250 → SDR-ST-PRO-PO-1250 FF |
| SDR-ST-PRO-DL-1160 | MEDIUM VOLTAGE CABLES DUCT BANKS | 2026-10-29 → 2027-01-14 (+77d) | 2027-02-14 → 2027-05-21 (+96d) |  |  | 1.6d → 21.5d |  |
| SDR-ST-PRO-DL-1180 | Outdoor Lighting Fixtures | 2026-12-03 → 2027-01-20 (+48d) | 2027-03-04 → 2027-04-27 (+54d) |  |  | 8.8d → 49.5d |  |
| SDR-ST-PRO-DL-1220 | STREET LIGHTING LUMINAIRE | 2026-12-18 → 2027-03-15 (+87d) | 2027-03-25 → 2027-06-08 (+75d) |  |  | 1.5d → 0.5d |  |
| 2 | **Mechanical** | 2026-12-08 → 2027-01-25 (+48d) | 2027-03-25 → 2027-05-12 (+48d) |  |  |  |  |
| SDR-ST-PRO-DL-1190 | WASHOUT & AIR VALVE, GATE VALVE, BUTTERFLY VALVE | 2026-12-08 → 2027-01-25 (+48d) | 2027-03-25 → 2027-05-12 (+48d) |  |  | 1.5d → 12.5d |  |
| 4 | **Materials Staging Time** | 2026-09-20 → 2026-09-28 (+8d) | 2027-04-15 → 2027-06-12 (+58d) |  |  |  |  |
| 4 | **Short Lead Items Delivery** | 2026-09-20 → 2026-09-28 (+8d) | 2027-02-16 → 2027-04-18 (+61d) |  |  |  |  |
| 1 | **Civil** | 2026-09-20 → 2026-12-04 (+75d) | 2027-02-16 → 2027-04-18 (+61d) |  |  |  |  |
| SDR-ST-PRO-MS-1260 | Steel Bars | 2026-09-20 → 2026-12-04 (+75d) | 2026-09-25 → 2026-12-08 (+74d) |  |  | 7.8d → 0.8d |  |
| SDR-ST-PRO-MS-1070 | Waterproofing (Thermal & moisture Protection) | 2026-11-04 → 2026-12-22 (+48d) | 2026-11-08 → 2026-12-26 (+48d) |  |  | 15.4d → 44.8d |  |
| SDR-ST-PRO-MS-1080 | Interlock | 2026-11-19 → 2027-01-04 (+46d) | 2026-11-23 → 2027-01-08 (+46d) |  |  | 0.4d → 31.8d |  |
| SDR-ST-PRO-MS-1100 | Kerbstone | 2026-11-17 → 2027-01-04 (+48d) | 2026-11-21 → 2027-01-08 (+48d) |  |  | 2.4d → 31.8d |  |
| SDR-ST-PRO-MS-1270 | Asphalt | 2027-02-09 → 2027-04-14 (+64d) | 2027-02-16 → 2027-04-18 (+61d) |  |  | 13.6d → 35.5d |  |
| 3 | **Electrical** | 2026-10-11 → 2026-10-23 (+12d) | 2027-01-14 → 2027-04-13 (+89d) |  |  |  |  |
| SDR-ST-PRO-MS-1000 | ROAD CROSSING DUCTS Ø110mm | 2026-10-11 → 2026-10-23 (+12d) | 2026-10-15 → 2026-10-27 (+12d) |  |  | 11.3d → 11.5d | SDR-ST-PRO-DL-1010 → SDR-ST-PRO-DL-1010 FF |
| SDR-ST-PRO-MS-1010 | Drawpits | 2026-10-11 → 2026-11-08 (+28d) | 2026-10-15 → 2026-11-12 (+28d) |  |  | 3.9d → 13.8d |  |
| SDR-ST-PRO-MS-1040 | LOW VOLTAGE DISTRIBUTION Panel | 2026-10-28 → 2026-11-14 (+17d) | 2026-11-01 → 2026-11-18 (+17d) |  |  | 8.4d → 69.3d |  |
| SDR-ST-PRO-MS-1020 | STREET LIGHTING FEEDER Panel | 2026-11-01 → 2026-11-14 (+13d) | 2026-11-05 → 2026-11-18 (+13d) |  |  | 4.4d → 68.8d |  |
| SDR-ST-PRO-MS-1120 | LOW VOLTAGE CABLES | 2026-11-14 → 2026-11-18 (+4d) | 2026-11-18 → 2026-11-21 (+3d) |  |  | 5.4d → 79.7d |  |
| SDR-ST-PRO-MS-1090 | CCTV :Pole mounted Filed Equipment cabinet | 2026-11-18 → 2026-12-25 (+37d) | 2026-11-22 → 2026-12-29 (+37d) |  |  | 1.4d → 41.8d |  |
| SDR-ST-PRO-MS-1030 | STREET LIGHTING CABLES | 2026-11-02 → 2027-01-19 (+78d) | 2026-11-06 → 2027-01-23 (+78d) |  |  | 3.4d → 3.01d | SDR-ST-PRO-DL-1110 → SDR-ST-PRO-DL-1110 FF+2.79d |
| SDR-ST-PRO-MS-1150 | VOICE EVACUATION SYSTEM | 2027-01-05 → 2027-03-31 (+85d) | 2027-01-09 → 2027-04-04 (+85d) |  |  | 8.4d → 10d |  |
| SDR-ST-PRO-MS-1160 | CCTV :5MP IP PoE Bullet Camera | 2027-01-10 → 2027-04-10 (+90d) | 2027-01-14 → 2027-04-13 (+89d) |  |  | 3.4d → 0.7d | SDR-ST-PRO-DL-1230 → SDR-ST-PRO-DL-1230 FF |
| 2 | **Mechanical** | 2026-10-30 → 2026-09-28 (-32d) | 2026-12-11 → 2027-01-26 (+46d) |  |  |  |  |
| SDR-ST-PRO-MS-1050 | WARNING TAPE | 2026-10-30 → 2026-09-28 (-32d) | 2026-11-03 → 2026-10-01 (-33d) |  |  | 6.4d → 116.7d |  |
| SDR-ST-PRO-MS-1110 | HDPE PIPES & FITTINGS | 2026-11-18 → 2026-09-28 (-51d) | 2026-11-22 → 2026-10-01 (-52d) |  |  | 1.4d → 130.7d |  |

| ID | Task | Start | Finish | Complete | Total float | Predecessors | Other |
| --- | --- | --- | --- | --- | --- | --- | --- |
| SDR-ST-PRO-MS-1130 | CONCRETE PIPES AND FITTINGS | 2026-12-07 → 2026-09-28 (-70d) | 2026-12-11 → 2026-10-01 (-71d) |  | 1.4d → 142.5d |  |  |
| SDR-ST-PRO-MS-1060 | GI GOOSENECK & VENT | 2026-11-16 → 2027-01-03 (+48d) | 2026-11-20 → 2027-01-07 (+48d) |  | 3.4d → 32.8d |  |  |
| SDR-ST-PRO-MS-1140 | MANHOLE, CATCH BASIN & VALVE BOX COVER | 2026-12-07 → 2027-01-22 (+46d) | 2026-12-11 → 2027-01-26 (+46d) |  | 1.4d → 25.6d |  |  |
| 5 | **Long Lead Items Delivery** | 2027-02-02 → 2027-01-11 (-22d) | 2027-04-15 → 2027-06-12 (+58d) |  |  |  |  |
| 1 | **Civil** | 2027-04-08 → 2027-06-05 (+58d) | 2027-04-12 → 2027-06-09 (+58d) |  |  |  |  |
| SDR-ST-PRO-MS-1240 | Aluminum Cladding Panels | 2027-04-08 → 2027-06-05 (+58d) | 2027-04-12 → 2027-06-09 (+58d) |  | 1.8d → 25.2d |  |  |
| 3 | **Electrical** | 2027-02-14 → 2027-01-11 (-34d) | 2027-04-15 → 2027-06-12 (+58d) |  |  |  |  |
| SDR-ST-PRO-MS-1230 | LIGHTING POLES | 2027-02-27 → 2027-01-11 (-47d) | 2027-03-05 → 2027-01-15 (-49d) |  | 8.9d → 141.2d |  |  |
| SDR-ST-PRO-MS-1220 | MEDIUM VOLTAGE CABLES | 2027-02-15 → 2027-02-17 (+2d) | 2027-02-23 → 2027-02-24 (+1d) |  | 0.8d → 105.7d | SDR-ST-PRO-DL-1170 → SDR-ST-PRO-DL-1170 FF |  |
| SDR-ST-PRO-MS-1250 | SUB-STATION | 2027-04-11 → 2027-04-10 (-1d) | 2027-04-15 → 2027-04-14 (-1d) |  | 8.8d → 55.8d | SDR-ST-PRO-DL-1250 → SDR-ST-PRO-DL-1250 FF |  |
| SDR-ST-PRO-MS-1170 | Outdoor Lighting Fixtures | 2027-03-18 → 2027-05-05 (+48d) | 2027-03-22 → 2027-05-09 (+48d) |  | 8.8d → 49.5d |  |  |
| SDR-ST-PRO-MS-1210 | MEDIUM VOLTAGE CABLES DUCT BANKS | 2027-02-14 → 2027-05-12 (+87d) | 2027-02-21 → 2027-05-21 (+89d) |  | 1.6d → 21.5d | SDR-ST-PRO-DL-1160, SDR-ST-CON-P1-5570 → SDR-ST-PRO-DL-1160 FF, SDR-ST-CON-P1-5570 |  |
| SDR-ST-PRO-MS-1180 | STREET LIGHTING LUMINAIRE | 2027-03-25 → 2027-06-08 (+75d) | 2027-03-29 → 2027-06-12 (+75d) |  | 1.5d → 0.5d |  |  |
| 2 | **Mechanical** | 2027-02-02 → 2027-04-11 (+68d) | 2027-03-29 → 2027-05-12 (+44d) |  |  |  |  |
| SDR-ST-PRO-MS-1200 | Metal railing for platform | 2027-02-02 → 2027-04-11 (+68d) | 2027-02-06 → 2027-04-15 (+68d) |  | 8.9d → 15.1d |  |  |
| SDR-ST-PRO-MS-1190 | WASHOUT & AIR VALVE, GATE VALVE, BUTTERFLY VALVE | 2027-03-25 → 2027-05-08 (+44d) | 2027-03-29 → 2027-05-12 (+44d) |  | 1.5d → 12.5d | SDR-ST-PRO-DL-1190 → SDR-ST-PRO-DL-1190 FF |  |
| 5 | **Construction** | 2026-05-07 → 2026-04-23 (-14d) | 2027-07-21 → 2027-08-06 (+16d) |  |  |  |  |
| 1 | **Package-1** | 2026-05-07 → 2026-04-23 (-14d) | 2027-07-17 → 2027-08-02 (+16d) |  |  |  |  |
| 8 | **ROAD - 01** | 2026-05-07 → 2026-04-23 (-14d) | 2027-04-27 → 2027-07-05 (+69d) |  |  |  |  |
| 6 | **ROAD-01 From 0 to 470 m (3)** | 2026-05-07 → 2026-04-23 (-14d) | 2027-04-20 → 2027-07-01 (+72d) |  |  |  |  |
| 14 | **GENERAL WORKS** | 2026-05-07 → 2026-04-23 (-14d) | 2026-07-25 → 2026-05-22 (-64d) |  |  |  |  |
| 10 | **Cleaning and removal of organic materials in Zone A** | 2026-05-07 → 2026-04-23 (-14d) | 2026-07-08 → 2026-05-21 (-48d) |  |  |  |  |
| SDR-ST-CON-P1-1000 | Cleaning and removal of organic materials Part 1 | 2026-05-07 → 2026-04-23 A (-14d) | 2026-06-01 → 2026-04-30 A (-32d) | 0% → 100% | 0d → none |  |  |
| SDR-ST-CON-P1-1050 | Cleaning and removal of organic materials Part 2 | 2026-06-02 → 2026-04-30 A (-33d) | 2026-06-24 → 2026-05-09 A (-46d) | 0% → 100% | 0d → none | SDR-ST-CON-P1-1000, SDR-ST-ENG-AP-1130, SDR-ST-ENG-AP-1140, SDR-ST-ENG-AP-1150, SDR-ST-ENG-AP-1160, SDR-ST-ENG-AP-1170, SDR-ST-ENG-AP-1180, SDR-ST-ENG-AP-1120, SDR-ST-ENG-AP-1110, SDR-ST-ENG-AP-1100, SDR-ST-ENG-AP-1090, SDR-ST-ENG-AP-1080, SDR-ST-ENG-AP-1030, SDR-ST-ENG-AP-1020, SDR-ST-ENG-AP-1010, SDR-ST-ENG-AP-1000, SDR-ST-ENG-AP-1070, SDR-ST-ENG-AP-1060, SDR-ST-ENG-AP-1050, SDR-ST-ENG-AP-1040, SDR-ST-ENG-AP-1230, SDR-ST-ENG-AP-1220, SDR-ST-ENG-AP-1210, SDR-ST-ENG-AP-1200, SDR-ST-ENG-AP-1190, SDR-ST-MILS-1040, SDR-ST-MILS-1030, SDR-ST-MILS-1020, SDR-ST-MILS-1050, SDR-ST-PREL-1060, SDR-ST-PREL-1070, SDR-ST-PREL-1010, SDR-ST-PREL-1080, SDR-ST-PREL-1020, SDR-ST-PREL-1090, SDR-ST-PREL-1030, SDR-ST-PREL-1100, SDR-ST-PREL-1040, SDR-ST-PRO-A-1100 → SDR-ST-CON-P1-1000, SDR-ST-ENG-AP-1150, SDR-ST-ENG-AP-1160, SDR-ST-ENG-AP-1170, SDR-ST-ENG-AP-1180, SDR-ST-ENG-AP-1120, SDR-ST-ENG-AP-1090, SDR-ST-ENG-AP-1080, SDR-ST-ENG-AP-1030, SDR-ST-ENG-AP-1020, SDR-ST-ENG-AP-1010, SDR-ST-ENG-AP-1000, SDR-ST-ENG-AP-1070, SDR-ST-ENG-AP-1060, SDR-ST-ENG-AP-1050, SDR-ST-ENG-AP-1040, SDR-ST-ENG-AP-1230, SDR-ST-ENG-AP-1220, SDR-ST-ENG-AP-1210, SDR-ST-ENG-AP-1200, SDR-ST-ENG-AP-1190, SDR-ST-MILS-1020, SDR-ST-PREL-1060, SDR-ST-PREL-1070, SDR-ST-PREL-1010, SDR-ST-PREL-1080, SDR-ST-PREL-1020, SDR-ST-PREL-1090, SDR-ST-PREL-1030, SDR-ST-PRO-A-1100 |  |
| SDR-ST-CON-P1-6060 | Cleaning and removal of organic materials Part 3 | 2026-06-25 → 2026-05-09 A (-47d) | 2026-07-08 → 2026-05-21 A (-48d) | 0% → 100% | 0d → none |  |  |
| 12 | **Surveying works Zone A** | 2026-07-08 → 2026-05-12 (-57d) | 2026-07-25 → 2026-05-22 (-64d) |  |  |  |  |
| SDR-ST-CON-P1-1090 | Surveying works Zone A | 2026-07-08 → 2026-05-12 A (-57d) | 2026-07-25 → 2026-05-22 A (-64d) | 0% → 100% | 0d → none |  |  |
| 1 | **Earth Works Road** | 2026-07-25 → 2026-06-18 (-37d) | 2026-08-08 → 2026-06-25 (-44d) |  |  |  |  |
| SDR-ST-CON-P1-1150 | Roadway Excavation and cuttings | 2026-07-25 → 2026-06-18 A (-37d) | 2026-08-08 → 2026-06-25 A (-44d) | 0% → 100% | 0d → none |  |  |
| 10 | **Backfilling Works** | 2026-08-08 → 2026-05-23 (-77d) | 2026-10-24 → 2026-08-16 (-69d) |  |  |  |  |
| SDR-ST-CON-P1-1200 | Embankments to the Road 1 Layer | 2026-08-08 → 2026-05-23 A (-77d) | 2026-08-31 → 2026-06-06 A (-86d) | 0% → 100% | 0d → none |  |  |
| SDR-ST-CON-P1-1470 | Embankments to the Road 2 Layer | 2026-08-31 → 2026-06-09 A (-83d) | 2026-09-24 → 2026-06-15 A (-101d) | 0% → 100% | 1d → none |  |  |
| SDR-ST-CON-P1-2140 | Embankments to the Road 3 Layer | 2026-09-24 → 2026-06-15 A (-101d) | 2026-10-10 → 2026-06-27 A (-105d) | 0% → 100% | 1d → none |  |  |
| SDR-ST-CON-P1-2710 | Embankments to the Road 4 Layer | 2026-10-10 → 2026-08-11 A (-60d) | 2026-10-24 → 2026-08-16 A (-69d) | 0% → 100% | 1d → none |  |  |
| 11 | **Subgrade** | 2026-10-24 → 2026-09-10 (-44d) | 2026-11-09 → 2026-12-26 (+47d) |  |  |  |  |
| SDR-ST-CON-P1-3260 | Subgrade layer works | 2026-10-24 → 2026-09-10 A (-44d) | 2026-11-09 → 2026-12-26 (+47d) | 0% → 50% | 1d → 0.6d |  |  |
| 2 | **Base Course** | 2026-11-09 → 2026-12-26 (+47d) | 2026-11-24 → 2027-01-10 (+47d) |  |  |  |  |
| SDR-ST-CON-P1-3850 | Aggregate base course layer | 2026-11-09 → 2026-12-26 (+47d) | 2026-11-24 → 2027-01-10 (+47d) |  | 1d → 0.6d |  |  |
| 3 | **Asphalt Works** | 2026-11-24 → 2027-01-10 (+47d) | 2027-01-02 → 2027-02-24 (+53d) |  |  |  |  |
| 1 | **Bituminous base course** | 2026-11-24 → 2027-01-10 (+47d) | 2026-12-06 → 2027-01-21 (+46d) |  |  |  |  |
| SDR-ST-CON-P1-4410 | Bituminous base course (Grading I - Class A 1st Layer with RC-01 | 2026-11-24 → 2027-01-10 (+47d) | 2026-12-01 → 2027-01-17 (+47d) |  | 1d → 0.6d |  |  |
| SDR-ST-CON-P1-4770 | Bituminous base course (Grading I - Class A 2nd layer with RC-02 | 2026-12-01 → 2027-01-17 (+47d) | 2026-12-06 → 2027-01-21 (+46d) |  | 1d → 0.6d |  |  |
| 2 | **Bituminous concrete wearing course** | 2026-12-08 → 2027-01-24 (+47d) | 2027-01-02 → 2027-02-24 (+53d) |  |  |  |  |
| SDR-ST-CON-P1-5110 | Bituminous concrete wearing course, (Grading I - Class A), including tack coat (RC2) | 2026-12-08 → 2027-01-24 (+47d) | 2027-01-02 → 2027-02-24 (+53d) |  | 1d → 24.6d |  |  |
| 4 | **Kerbstone Installation** | 2026-11-09 → 2026-12-26 (+47d) | 2027-01-13 → 2027-03-17 (+63d) |  |  |  |  |
| SDR-ST-CON-P1-3860 | Precast Concrete Curbstone, Type A2 | 2026-11-09 → 2026-12-26 (+47d) | 2026-12-03 → 2027-01-19 (+47d) |  | 6d → 29.6d |  |  |
| SDR-ST-CON-P1-4530 | Precast Concrete Curbstone, Type D | 2027-01-02 → 2027-02-24 (+53d) | 2027-01-13 → 2027-03-17 (+63d) |  | 1d → 24.6d |  |  |
| 5 | **Interlock Installation** | 2027-01-13 → 2027-03-17 (+63d) | 2027-03-17 → 2027-05-03 (+47d) |  |  |  |  |
| SDR-ST-CON-P1-4100 | Interlock Installation Part 1 | 2027-01-13 → 2027-03-17 (+63d) | 2027-02-06 → 2027-04-10 (+63d) |  | 1d → 24.6d |  |  |
| SDR-ST-CON-P1-4620 | Interlock Installation Part 2 | 2027-02-06 → 2027-04-10 (+63d) | 2027-03-17 → 2027-05-03 (+47d) |  | 1d → 24.6d |  |  |
| 6 | **Road Marking** | 2027-03-31 → 2027-06-12 (+73d) | 2027-04-19 → 2027-06-27 (+69d) |  |  |  |  |
| SDR-ST-CON-P1-5210 | Retroreflective Thermoplastic White Traffic lines | 2027-03-31 → 2027-06-12 (+73d) | 2027-04-05 → 2027-06-16 (+72d) |  | 3d → 0.5d |  | resources SIC- Cost [19365.7]; Painter [28.79 h]; Supervisor [7.2 h]; Painter Helper [28.79 h] → SIC- Cost [19365.7]; Supervisor [7.2 h]; Painter [28.79 h]; Painter Helper [28.79 h] |
| SDR-ST-CON-P1-5310 | Retroreflective Thermoplastic Yellow, Traffic lines | 2027-04-05 → 2027-06-16 (+72d) | 2027-04-10 → 2027-06-21 (+72d) |  | 7.7d → 0.5d |  | resources SIC- Cost [13725.2]; Painter [28.79 h]; Supervisor [7.2 h]; Painter Helper [28.79 h] → SIC- Cost [13725.2]; Supervisor [7.2 h]; Painter [28.79 h]; Painter Helper [28.79 h] |
| SDR-ST-CON-P1-5470 | Ceramic raised pavement markers | 2027-04-10 → 2027-06-21 (+72d) | 2027-04-14 → 2027-06-26 (+73d) |  | 7.7d → 0.5d |  |  |
| SDR-ST-CON-P1-5620 | Rumble strip | 2027-04-14 → 2027-06-22 (+69d) | 2027-04-19 → 2027-06-27 (+69d) |  | 7.7d → 0.5d | SDR-ST-CON-P1-5470 → SDR-ST-CON-P1-5470 SS+1d |  |
| 7 | **Traffic Signage** | 2027-03-31 → 2027-06-12 (+73d) | 2027-04-14 → 2027-06-26 (+73d) |  |  |  |  |
| SDR-ST-CON-P1-5220 | Traffic signs, ground mounted, 1 Sheet Alumenium, (breakaway) Single post, with all accessories | 2027-03-31 → 2027-06-12 (+73d) | 2027-04-05 → 2027-06-16 (+72d) |  | 3d → 5.5d |  |  |
| SDR-ST-CON-P1-5320 | Traffic signs, ground mounted, 1 Sheet Aluminum, (breakaway) Double post, with all accessories | 2027-04-05 → 2027-06-16 (+72d) | 2027-04-10 → 2027-06-21 (+72d) |  | 3d → 5.5d |  |  |
| SDR-ST-CON-P1-5480 | Traffic signs, ground mounted, 2 Sheet Aluminum, (breakaway) Single post, with all accessories | 2027-04-10 → 2027-06-21 (+72d) | 2027-04-14 → 2027-06-26 (+73d) |  | 3d → 5.5d |  |  |
| 8 | **Speed table** | 2027-04-14 → 2027-06-26 (+73d) | 2027-04-20 → 2027-07-01 (+72d) |  |  |  |  |
| SDR-ST-CON-P1-5490 | Interlock speed table including interlock, flush kerb and marking | 2027-04-14 → 2027-06-26 (+73d) | 2027-04-20 → 2027-07-01 (+72d) |  | 3d → 5.5d |  |  |
| 7 | **ROAD-01 From 470 to 1125 m (6)** | 2026-06-24 → 2026-04-30 (-55d) | 2027-04-24 → 2027-07-05 (+72d) |  |  |  |  |
| 14 | **GENERAL WORKS** | 2026-06-24 → 2026-04-30 (-55d) | 2026-08-11 → 2026-05-20 (-83d) |  |  |  |  |
| 10 | **Cleaning and removal of organic materials in Zone A** | 2026-06-24 → 2026-04-30 (-55d) | 2026-07-19 → 2026-05-10 (-70d) |  |  |  |  |
| SDR-ST-CON-P1-1010 | Cleaning and removal of organic materials in Zone A | 2026-06-24 → 2026-04-30 A (-55d) | 2026-07-19 → 2026-05-10 A (-70d) | 0% → 100% | 0d → none |  |  |
| 12 | **Surveying works Zone A** | 2026-07-19 → 2026-05-10 (-70d) | 2026-08-11 → 2026-05-20 (-83d) |  |  |  |  |
| SDR-ST-CON-P1-1070 | Surveying works Zone A | 2026-07-19 → 2026-05-10 A (-70d) | 2026-08-11 → 2026-05-20 A (-83d) | 0% → 100% | 0.9d → none |  |  |
| 1 | **Earth Works Road** | 2026-08-11 → 2026-06-25 (-47d) | 2026-08-27 → 2026-07-05 (-53d) |  |  |  |  |
| SDR-ST-CON-P1-1120 | Roadway Excavation and cuttings | 2026-08-11 → 2026-06-25 A (-47d) | 2026-08-27 → 2026-07-05 A (-53d) | 0% → 100% | 0.9d → none |  |  |
| 10 | **Backfilling Works** | 2026-08-27 → 2026-05-23 (-96d) | 2026-10-29 → 2026-08-16 (-74d) |  |  |  |  |

| ID | Task | Start | Finish | Complete | Total float | Predecessors |
| --- | --- | --- | --- | --- | --- | --- |
| SDR-ST-CON-P1-1190 | Embankments to the Road 1 Layer | 2026-08-27 → 2026-05-23 A (-96d) | 2026-09-20 → 2026-06-08 A (-104d) | 0% → 100% | 0.9d → none |  |
| SDR-ST-CON-P1-1400 | Embankments to the Road 2 Layer | 2026-09-20 → 2026-06-09 A (-103d) | 2026-10-06 → 2026-06-15 A (-113d) | 0% → 100% | 0.9d → none |  |
| SDR-ST-CON-P1-2090 | Embankments to the Road 3 Layer | 2026-10-06 → 2026-06-16 A (-112d) | 2026-10-18 → 2026-06-27 A (-113d) | 0% → 100% | 0.9d → none |  |
| SDR-ST-CON-P1-2570 | Embankments to the Road 4 Layer | 2026-10-18 → 2026-08-11 A (-68d) | 2026-10-29 → 2026-08-16 A (-74d) | 0% → 100% | 0.9d → none |  |
| 11 | **Subgrade** | 2026-10-29 → 2026-09-10 (-49d) | 2026-11-11 → 2026-10-10 (-32d) |  |  |  |
| SDR-ST-CON-P1-3140 | Subgrade layer works | 2026-10-29 → 2026-09-10 A (-49d) | 2026-11-11 → 2026-10-10 (-32d) | 0% → 50% | 0.9d → 89.5d |  |
| 2 | **Base Course** | 2026-11-11 → 2026-10-11 (-31d) | 2026-11-23 → 2026-10-21 (-33d) |  |  |  |
| SDR-ST-CON-P1-3720 | Aggregate base course layer | 2026-11-11 → 2026-10-11 (-31d) | 2026-11-23 → 2026-10-21 (-33d) |  | 1.2d → 89.5d |  |
| 3 | **Asphalt Works** | 2026-11-23 → 2026-10-22 (-32d) | 2027-01-03 → 2026-12-01 (-33d) |  |  |  |
| 1 | **Bituminous base course** | 2026-11-23 → 2026-10-22 (-32d) | 2026-12-06 → 2026-11-03 (-33d) |  |  |  |
| SDR-ST-CON-P1-4430 | Bituminous base course (Grading I - Class A 1st Layer with RC-01 | 2026-11-23 → 2026-10-22 (-32d) | 2026-11-30 → 2026-10-28 (-33d) |  | 1.2d → 89.5d |  |
| SDR-ST-CON-P1-4730 | Bituminous base course (Grading I - Class A 2nd layer with RC-02 | 2026-11-30 → 2026-10-29 (-32d) | 2026-12-06 → 2026-11-03 (-33d) |  | 1.2d → 89.5d |  |
| 2 | **Bituminous concrete wearing course** | 2026-12-09 → 2026-11-08 (-31d) | 2027-01-03 → 2026-12-01 (-33d) |  |  |  |
| SDR-ST-CON-P1-5040 | Bituminous concrete wearing course, (Grading I - Class A), including tack coat (RC2) | 2026-12-09 → 2026-11-08 (-31d) | 2027-01-03 → 2026-12-01 (-33d) |  | 1.2d → 89.5d |  |
| 4 | **Kerbstone Installation** | 2026-11-11 → 2026-10-11 (-31d) | 2027-01-02 → 2027-02-14 (+43d) |  |  |  |
| SDR-ST-CON-P1-3730 | Precast Concrete Curbstone, Type A2 | 2026-11-11 → 2026-10-11 (-31d) | 2026-12-05 → 2026-11-02 (-33d) |  | 0.9d → 91.8d |  |
| SDR-ST-CON-P1-4480 | Precast Concrete Curbstone, Type D | 2026-12-09 → 2027-01-19 (+41d) | 2027-01-02 → 2027-02-14 (+43d) |  | 0.9d → 29.6d |  |
| 5 | **Interlock Installation** | 2027-01-02 → 2027-02-14 (+43d) | 2027-02-25 → 2027-04-15 (+49d) |  |  |  |
| SDR-ST-CON-P1-3890 | Interlock Installation Part 1 | 2027-01-02 → 2027-02-14 (+43d) | 2027-01-25 → 2027-03-23 (+57d) |  | 0.9d → 29.6d |  |
| SDR-ST-CON-P1-4490 | Interlock Installation Part 2 | 2027-01-25 → 2027-03-23 (+57d) | 2027-02-25 → 2027-04-15 (+49d) |  | 0.9d → 29.6d |  |
| 6 | **Road Marking** | 2027-02-25 → 2027-04-15 (+49d) | 2027-03-30 → 2027-05-23 (+54d) |  |  |  |
| SDR-ST-CON-P1-5080 | Retroreflective Thermoplastic White Traffic lines | 2027-02-25 → 2027-04-15 (+49d) | 2027-03-08 → 2027-04-21 (+44d) |  | 0.9d → 29.6d |  |
| SDR-ST-CON-P1-5150 | Retroreflective Thermoplastic Yellow, Traffic lines | 2027-03-14 → 2027-04-29 (+46d) | 2027-03-18 → 2027-05-05 (+48d) |  | 0d → 22.6d |  |
| SDR-ST-CON-P1-5270 | Ceramic raised pavement markers | 2027-03-20 → 2027-05-05 (+46d) | 2027-03-24 → 2027-05-11 (+48d) |  | 0d → 22.6d |  |
| SDR-ST-CON-P1-5400 | Rumble strip | 2027-03-25 → 2027-05-11 (+47d) | 2027-03-30 → 2027-05-23 (+54d) |  | 0d → 22.6d |  |
| 7 | **Traffic Signage** | 2027-03-31 → 2027-06-12 (+73d) | 2027-04-13 → 2027-06-26 (+74d) |  |  |  |
| SDR-ST-CON-P1-5090 | Traffic signs, ground mounted, 1 Sheet Alumenium, (breakaway) Single post, with all accessories | 2027-03-31 → 2027-06-12 (+73d) | 2027-04-06 → 2027-06-19 (+74d) |  | 0d → 5.5d |  |
| SDR-ST-CON-P1-5160 | Traffic signs, ground mounted, 1 Sheet Aluminum, (breakaway) Double post, with all accessories | 2027-04-07 → 2027-06-19 (+73d) | 2027-04-13 → 2027-06-26 (+74d) |  | 0d → 5.5d |  |
| 8 | **Speed table** | 2027-04-14 → 2027-06-26 (+73d) | 2027-04-24 → 2027-07-05 (+72d) |  |  |  |
| SDR-ST-CON-P1-5280 | Interlock speed table including interlock, flush kerb and marking | 2027-04-14 → 2027-06-26 (+73d) | 2027-04-24 → 2027-07-05 (+72d) |  | 0d → 5.5d |  |
| 9 | **ROAD-01 From 1125 to 1765 m (7)** | 2026-07-02 → 2026-05-02 (-61d) | 2027-04-27 → 2027-06-20 (+54d) |  |  |  |
| 14 | **GENERAL WORKS** | 2026-07-02 → 2026-05-02 (-61d) | 2026-08-12 → 2026-05-24 (-80d) |  |  |  |
| 10 | **Cleaning and removal of organic materials in Zone A** | 2026-07-02 → 2026-05-02 (-61d) | 2026-07-27 → 2026-05-14 (-74d) |  |  |  |
| SDR-ST-CON-P1-1020 | Cleaning and removal of organic materials in Zone A | 2026-07-02 → 2026-05-02 A (-61d) | 2026-07-27 → 2026-05-14 A (-74d) | 0% → 100% | 0d → none |  |
| 12 | **Surveying works Zone A** | 2026-07-27 → 2026-05-16 (-72d) | 2026-08-12 → 2026-05-24 (-80d) |  |  |  |
| SDR-ST-CON-P1-1080 | Surveying works Zone A | 2026-07-27 → 2026-05-16 A (-72d) | 2026-08-12 → 2026-05-24 A (-80d) | 0% → 100% | 0d → none |  |
| 1 | **Earth Works Road** | 2026-08-12 → 2026-07-30 (-13d) | 2026-08-29 → 2026-08-09 (-20d) |  |  |  |
| SDR-ST-CON-P1-1140 | Roadway Excavation and cuttings | 2026-08-12 → 2026-07-30 A (-13d) | 2026-08-29 → 2026-08-09 A (-20d) | 0% → 100% | 0d → none |  |
| 10 | **Backfilling Works** | 2026-08-29 → 2026-05-24 (-97d) | 2026-11-01 → 2026-08-17 (-76d) |  |  |  |
| SDR-ST-CON-P1-1210 | Embankments to the Road 1 Layer | 2026-08-29 → 2026-05-24 A (-97d) | 2026-09-21 → 2026-06-08 A (-105d) | 0% → 100% | 0d → none | SDR-ST-CON-P1-1140 → SDR-ST-CON-P1-1140 SS |
| SDR-ST-CON-P1-1580 | Embankments to the Road 2 Layer | 2026-09-21 → 2026-06-09 A (-104d) | 2026-10-07 → 2026-06-15 A (-114d) | 0% → 100% | 0d → none |  |
| SDR-ST-CON-P1-2220 | Embankments to the Road 3 Layer | 2026-10-07 → 2026-06-15 A (-114d) | 2026-10-21 → 2026-06-30 A (-113d) | 0% → 100% | 0d → none |  |
| SDR-ST-CON-P1-2880 | Embankments to the Road 4 Layer | 2026-10-21 → 2026-08-11 A (-71d) | 2026-11-01 → 2026-08-17 A (-76d) | 0% → 100% | 1.2d → none |  |
| 11 | **Subgrade** | 2026-11-01 → 2026-09-10 (-52d) | 2026-11-12 → 2026-10-08 (-35d) |  |  |  |
| SDR-ST-CON-P1-3600 | Subgrade layer works | 2026-11-01 → 2026-09-10 A (-52d) | 2026-11-12 → 2026-10-08 (-35d) | 0% → 25% | 1.2d → 74.8d |  |
| 2 | **Base Course** | 2026-11-12 → 2026-10-10 (-33d) | 2026-11-23 → 2026-10-19 (-35d) |  |  |  |
| SDR-ST-CON-P1-4220 | Aggregate base course layer | 2026-11-12 → 2026-10-10 (-33d) | 2026-11-23 → 2026-10-19 (-35d) |  | 1.2d → 91.5d |  |
| 3 | **Asphalt Works** | 2026-11-23 → 2026-10-20 (-34d) | 2027-01-03 → 2026-11-29 (-35d) |  |  |  |
| 1 | **Bituminous base course** | 2026-11-23 → 2026-10-20 (-34d) | 2026-12-06 → 2026-11-01 (-35d) |  |  |  |
| SDR-ST-CON-P1-4750 | Bituminous base course (Grading I - Class A 1st Layer with RC-01 | 2026-11-23 → 2026-10-20 (-34d) | 2026-11-30 → 2026-10-26 (-35d) |  | 1.2d → 91.5d |  |
| SDR-ST-CON-P1-5010 | Bituminous base course (Grading I - Class A 2nd layer with RC-02 | 2026-11-30 → 2026-10-27 (-34d) | 2026-12-06 → 2026-11-01 (-35d) |  | 1.2d → 91.5d |  |
| 2 | **Bituminous concrete wearing course** | 2026-12-09 → 2026-11-05 (-34d) | 2027-01-03 → 2026-11-29 (-35d) |  |  |  |
| SDR-ST-CON-P1-5200 | Bituminous concrete wearing course, (Grading I - Class A), including tack coat (RC2) | 2026-12-09 → 2026-11-05 (-34d) | 2027-01-03 → 2026-11-29 (-35d) |  | 1.2d → 91.5d |  |
| 4 | **Kerbstone Installation** | 2026-11-12 → 2026-10-10 (-33d) | 2027-01-03 → 2026-11-29 (-35d) |  |  |  |
| SDR-ST-CON-P1-4230 | Precast Concrete Curbstone, Type A2 | 2026-11-12 → 2026-10-10 (-33d) | 2026-12-06 → 2026-11-01 (-35d) |  | 3.9d → 74.8d |  |
| SDR-ST-CON-P1-4950 | Precast Concrete Curbstone, Type D | 2026-12-10 → 2026-11-07 (-33d) | 2027-01-03 → 2026-11-29 (-35d) |  | 3.9d → 74.8d |  |
| 5 | **Interlock Installation** | 2027-01-03 → 2026-11-30 (-34d) | 2027-03-02 → 2027-01-16 (-45d) |  |  |  |
| SDR-ST-CON-P1-4440 | Interlock Installation Part 1 | 2027-01-03 → 2026-11-30 (-34d) | 2027-01-27 → 2026-12-23 (-35d) |  | 3.9d → 74.8d |  |
| SDR-ST-CON-P1-4870 | Interlock Installation Part 2 | 2027-01-27 → 2026-12-24 (-34d) | 2027-03-02 → 2027-01-16 (-45d) |  | 3.9d → 74.8d |  |
| 6 | **Road Marking** | 2027-03-14 → 2027-04-29 (+46d) | 2027-04-05 → 2027-05-29 (+54d) |  |  |  |
| SDR-ST-CON-P1-5300 | Retroreflective Thermoplastic White Traffic lines | 2027-03-14 → 2027-04-29 (+46d) | 2027-03-18 → 2027-05-05 (+48d) |  | 0d → 0.6d |  |
| SDR-ST-CON-P1-5450 | Retroreflective Thermoplastic Yellow, Traffic lines | 2027-03-20 → 2027-05-05 (+46d) | 2027-03-24 → 2027-05-11 (+48d) |  | 0d → 0.6d |  |
| SDR-ST-CON-P1-5610 | Ceramic raised pavement markers | 2027-03-25 → 2027-05-11 (+47d) | 2027-03-30 → 2027-05-23 (+54d) |  | 0d → 0.6d |  |
| SDR-ST-CON-P1-5690 | Rumble strip | 2027-03-31 → 2027-05-23 (+53d) | 2027-04-05 → 2027-05-29 (+54d) |  | 0d → 0.6d |  |
| 7 | **Traffic Signage** | 2027-04-06 → 2027-05-29 (+53d) | 2027-04-18 → 2027-06-10 (+53d) |  |  |  |
| SDR-ST-CON-P1-5540 | Traffic signs, ground mounted, 1 Sheet Alumenium, (breakaway) Single post, with all accessories | 2027-04-06 → 2027-05-29 (+53d) | 2027-04-11 → 2027-06-03 (+53d) |  | 0d → 0.6d |  |
| SDR-ST-CON-P1-5680 | Traffic signs, ground mounted, 1 Sheet Aluminum, (breakaway) Double post, with all accessories | 2027-04-12 → 2027-06-03 (+52d) | 2027-04-18 → 2027-06-10 (+53d) |  | 0d → 0.6d |  |
| 8 | **Speed table** | 2027-04-19 → 2027-06-10 (+52d) | 2027-04-27 → 2027-06-20 (+54d) |  |  |  |
| SDR-ST-CON-P1-5460 | Interlock speed table including interlock, flush kerb and marking | 2027-04-19 → 2027-06-10 (+52d) | 2027-04-27 → 2027-06-20 (+54d) |  | 0d → 0.6d |  |
| 6 | **ROAD - 02** | 2026-07-07 → 2026-05-02 (-66d) | 2027-05-08 → 2027-07-14 (+67d) |  |  |  |

| ID | Task | Start | Finish | Complete | Total float | Predecessors |
| --- | --- | --- | --- | --- | --- | --- |
| 14 | **GENERAL WORKS** | 2026-07-07 → 2026-05-02 (-66d) | 2026-08-23 → 2026-05-24 (-91d) |  |  |  |
| 10 | **Cleaning and removal of organic materials in Zone A** | 2026-07-07 → 2026-05-02 (-66d) | 2026-08-01 → 2026-05-10 (-83d) |  |  |  |
| SDR-ST-CON-P1-1030 | Cleaning and removal of organic materials in Zone A | 2026-07-07 → 2026-05-02 A (-66d) | 2026-08-01 → 2026-05-10 A (-83d) | 0% → 100% | 0d → none |  |
| 12 | **Surveying works Zone A** | 2026-08-01 → 2026-05-11 (-82d) | 2026-08-23 → 2026-05-24 (-91d) |  |  |  |
| SDR-ST-CON-P1-1100 | Surveying works Zone A | 2026-08-01 → 2026-05-11 A (-82d) | 2026-08-23 → 2026-05-24 A (-91d) | 0% → 100% | 0d → none |  |
| 1 | **Earth Works Road** | 2026-08-23 → 2026-07-08 (-46d) | 2026-09-08 → 2026-08-08 (-31d) |  |  |  |
| SDR-ST-CON-P1-1160 | Roadway Excavation and cuttings | 2026-08-23 → 2026-07-08 A (-46d) | 2026-09-08 → 2026-08-08 A (-31d) | 0% → 100% | 0d → none |  |
| 10 | **Backfilling Works** | 2026-09-08 → 2026-05-31 (-100d) | 2026-11-04 → 2026-08-20 (-76d) |  |  |  |
| SDR-ST-CON-P1-1300 | Embankments to the Road 1 Layer | 2026-09-08 → 2026-05-31 A (-100d) | 2026-09-24 → 2026-06-09 A (-107d) | 0% → 100% | 0d → none | SDR-ST-CON-P1-1160 → SDR-ST-CON-P1-1160 SS |
| SDR-ST-CON-P1-1910 | Embankments to the Road 2 Layer | 2026-09-24 → 2026-06-16 A (-100d) | 2026-10-10 → 2026-06-30 A (-102d) | 0% → 100% | 0d → none |  |
| SDR-ST-CON-P1-2620 | Embankments to the Road 3 Layer | 2026-10-10 → 2026-08-11 A (-60d) | 2026-10-24 → 2026-08-16 A (-69d) | 0% → 100% | 0d → none |  |
| SDR-ST-CON-P1-2920 | Embankments to the Road 4 Layer | 2026-10-24 → 2026-08-16 A (-69d) | 2026-11-04 → 2026-08-20 A (-76d) | 0% → 100% | 0d → none |  |
| 11 | **Subgrade** | 2026-11-04 → 2026-09-07 (-58d) | 2026-11-19 → 2026-10-12 (-38d) |  |  |  |
| SDR-ST-CON-P1-3390 | Subgrade layer works | 2026-11-04 → 2026-09-07 A (-58d) | 2026-11-19 → 2026-10-12 (-38d) | 0% → 20% | 0d → 80.8d |  |
| 2 | **Base Course** | 2026-11-19 → 2026-10-13 (-37d) | 2026-11-28 → 2026-10-20 (-39d) |  |  |  |
| SDR-ST-CON-P1-3960 | Aggregate base course layer | 2026-11-19 → 2026-10-13 (-37d) | 2026-11-28 → 2026-10-20 (-39d) |  | 16.7d → 80.8d |  |
| 3 | **Asphalt Works** | 2026-11-28 → 2026-10-21 (-38d) | 2027-01-02 → 2026-11-24 (-39d) |  |  |  |
| 1 | **Bituminous base course** | 2026-11-28 → 2026-10-21 (-38d) | 2026-12-06 → 2026-10-28 (-39d) |  |  |  |
| SDR-ST-CON-P1-4540 | Bituminous base course (Grading I - Class A 1st Layer with RC-01 | 2026-11-28 → 2026-10-21 (-38d) | 2026-12-02 → 2026-10-25 (-38d) |  | 16.7d → 80.8d |  |
| SDR-ST-CON-P1-4890 | Bituminous base course (Grading I - Class A 2nd layer with RC-02 | 2026-12-02 → 2026-10-26 (-37d) | 2026-12-06 → 2026-10-28 (-39d) |  | 16.7d → 80.8d |  |
| 2 | **Bituminous concrete wearing course** | 2026-12-08 → 2026-11-01 (-37d) | 2027-01-02 → 2026-11-24 (-39d) |  |  |  |
| SDR-ST-CON-P1-5130 | Bituminous concrete wearing course, (Grading I - Class A), including tack coat (RC2) | 2026-12-08 → 2026-11-01 (-37d) | 2027-01-02 → 2026-11-24 (-39d) |  | 16.7d → 80.8d |  |
| 4 | **Kerbstone Installation** | 2026-11-19 → 2026-10-13 (-37d) | 2027-01-10 → 2026-12-02 (-39d) |  |  |  |
| SDR-ST-CON-P1-3970 | Precast Concrete Curbstone, Type A2 | 2026-11-19 → 2026-10-13 (-37d) | 2026-12-13 → 2026-11-04 (-39d) |  | 0d → 91.8d |  |
| SDR-ST-CON-P1-4690 | Precast Concrete Curbstone, Type D | 2026-12-17 → 2026-11-10 (-37d) | 2027-01-10 → 2026-12-02 (-39d) |  | 0d → 91.8d |  |
| 5 | **Interlock Installation** | 2027-01-10 → 2026-12-03 (-38d) | 2027-03-15 → 2027-01-18 (-56d) |  |  |  |
| SDR-ST-CON-P1-4200 | Interlock Installation Part 1 | 2027-01-10 → 2026-12-03 (-38d) | 2027-02-02 → 2026-12-26 (-38d) |  | 0d → 91.8d |  |
| SDR-ST-CON-P1-4780 | Interlock Installation Part 2 | 2027-02-02 → 2026-12-27 (-37d) | 2027-03-15 → 2027-01-18 (-56d) |  | 0d → 91.8d |  |
| 6 | **Road Marking** | 2027-03-15 → 2027-04-29 (+45d) | 2027-04-07 → 2027-06-17 (+71d) |  |  |  |
| SDR-ST-CON-P1-5250 | Retroreflective Thermoplastic White Traffic lines | 2027-03-15 → 2027-04-29 (+45d) | 2027-03-21 → 2027-05-05 (+45d) |  | 0d → 19.6d |  |
| SDR-ST-CON-P1-5370 | Retroreflective Thermoplastic Yellow, Traffic lines | 2027-03-21 → 2027-05-05 (+45d) | 2027-03-27 → 2027-05-11 (+45d) |  | 0d → 19.6d |  |
| SDR-ST-CON-P1-5550 | Ceramic raised pavement markers | 2027-03-27 → 2027-05-11 (+45d) | 2027-04-01 → 2027-05-23 (+52d) |  | 0d → 19.6d |  |
| SDR-ST-CON-P1-5630 | Rumble strip | 2027-04-01 → 2027-06-12 (+72d) | 2027-04-07 → 2027-06-17 (+71d) |  | 0d → 2.5d |  |
| 7 | **Traffic Signage** | 2027-04-07 → 2027-06-17 (+71d) | 2027-04-25 → 2027-07-05 (+71d) |  |  |  |
| SDR-ST-CON-P1-5260 | Traffic signs, ground mounted, 1 Sheet Alumenium, (breakaway) Single post, with all accessories | 2027-04-07 → 2027-06-17 (+71d) | 2027-04-13 → 2027-06-23 (+71d) |  | 0d → 2.5d |  |
| SDR-ST-CON-P1-5380 | Traffic signs, ground mounted, 1 Sheet Aluminum, (breakaway) Double post, with all accessories | 2027-04-13 → 2027-06-23 (+71d) | 2027-04-19 → 2027-06-29 (+71d) |  | 0d → 2.5d |  |
| SDR-ST-CON-P1-5560 | Traffic signs, ground mounted, 2 Sheet Aluminum, (breakaway) Single post, with all accessories | 2027-04-19 → 2027-06-29 (+71d) | 2027-04-25 → 2027-07-05 (+71d) |  | 0d → 2.5d |  |
| 8 | **Speed table** | 2027-04-25 → 2027-07-05 (+71d) | 2027-05-04 → 2027-07-14 (+71d) |  |  |  |
| SDR-ST-CON-P1-5390 | Interlock speed table including interlock, flush kerb and marking | 2027-04-25 → 2027-07-05 (+71d) | 2027-05-04 → 2027-07-14 (+71d) |  | 0d → 2.5d |  |
| 14 | **GENERAL WORKS** | 2026-07-12 → 2026-05-02 (-71d) | 2026-08-24 → 2026-05-24 (-92d) |  |  |  |
| 10 | **Cleaning and removal of organic materials in Zone A** | 2026-07-12 → 2026-05-02 (-71d) | 2026-08-05 → 2026-05-14 (-83d) |  |  |  |
| SDR-ST-CON-P1-1040 | Cleaning and removal of organic materials in Zone A | 2026-07-12 → 2026-05-02 A (-71d) | 2026-08-05 → 2026-05-14 A (-83d) | 0% → 100% | 0d → none |  |
| 12 | **Surveying works Zone A** | 2026-08-05 → 2026-05-16 (-81d) | 2026-08-24 → 2026-05-24 (-92d) |  |  |  |
| SDR-ST-CON-P1-1110 | Surveying works Zone A | 2026-08-05 → 2026-05-16 A (-81d) | 2026-08-24 → 2026-05-24 A (-92d) | 0% → 100% | 0d → none |  |
| 1 | **Earth Works Road** | 2026-08-24 → 2026-07-30 (-25d) | 2026-09-08 → 2026-08-10 (-29d) |  |  |  |
| SDR-ST-CON-P1-1170 | Roadway Excavation and cuttings | 2026-08-24 → 2026-07-30 A (-25d) | 2026-09-08 → 2026-08-10 A (-29d) | 0% → 100% | 0d → none |  |
| 10 | **Backfilling Works** | 2026-09-08 → 2026-06-01 (-99d) | 2026-11-01 → 2026-08-16 (-77d) |  |  |  |
| SDR-ST-CON-P1-1250 | Embankments to the Road 1 Layer | 2026-09-08 → 2026-06-01 A (-99d) | 2026-09-22 → 2026-06-09 A (-105d) | 0% → 100% | 0d → none | SDR-ST-CON-P1-1170 → SDR-ST-CON-P1-1170 SF |
| SDR-ST-CON-P1-1830 | Embankments to the Road 2 Layer | 2026-09-22 → 2026-06-18 A (-96d) | 2026-10-06 → 2026-06-30 A (-98d) | 0% → 100% | 6.7d → none |  |
| SDR-ST-CON-P1-2540 | Embankments to the Road 3 Layer | 2026-10-06 → 2026-08-11 A (-56d) | 2026-10-19 → 2026-08-16 A (-64d) | 0% → 100% | 6.7d → none |  |
| SDR-ST-CON-P1-3100 | Embankments to the Road 4 Layer | 2026-10-19 → 2026-08-11 A (-69d) | 2026-11-01 → 2026-08-16 A (-77d) | 0% → 100% | 6.7d → none |  |
| 11 | **Subgrade** | 2026-11-01 → 2026-09-07 (-55d) | 2026-11-14 → 2026-10-10 (-35d) |  |  |  |
| SDR-ST-CON-P1-3540 | Subgrade layer works | 2026-11-01 → 2026-09-07 A (-55d) | 2026-11-14 → 2026-10-10 (-35d) | 0% → 10% | 6.7d → 63.8d |  |
| 2 | **Base Course** | 2026-11-14 → 2026-10-11 (-34d) | 2026-11-25 → 2026-10-21 (-35d) |  |  |  |
| SDR-ST-CON-P1-4130 | Aggregate base course layer | 2026-11-14 → 2026-10-11 (-34d) | 2026-11-25 → 2026-10-21 (-35d) |  | 6.7d → 65.8d |  |
| 3 | **Asphalt Works** | 2026-11-25 → 2026-10-22 (-34d) | 2027-01-02 → 2026-11-28 (-35d) |  |  |  |
| 1 | **Bituminous base course** | 2026-11-25 → 2026-10-22 (-34d) | 2026-12-06 → 2026-11-01 (-35d) |  |  |  |
| SDR-ST-CON-P1-4600 | Bituminous base course (Grading I - Class A 1st Layer with RC-01 | 2026-11-25 → 2026-10-22 (-34d) | 2026-12-01 → 2026-10-27 (-35d) |  | 6.7d → 65.8d |  |
| SDR-ST-CON-P1-4930 | Bituminous base course (Grading I - Class A 2nd layer with RC-02 | 2026-12-01 → 2026-10-28 (-34d) | 2026-12-06 → 2026-11-01 (-35d) |  | 6.7d → 65.8d |  |
| 2 | **Bituminous concrete wearing course** | 2026-12-08 → 2026-11-04 (-34d) | 2027-01-02 → 2026-11-28 (-35d) |  |  |  |
| SDR-ST-CON-P1-5180 | Bituminous concrete wearing course, (Grading I - Class A), including tack coat (RC2) | 2026-12-08 → 2026-11-04 (-34d) | 2027-01-02 → 2026-11-28 (-35d) |  | 6.7d → 65.8d |  |
| 4 | **Kerbstone Installation** | 2026-11-14 → 2026-10-11 (-34d) | 2027-01-04 → 2026-11-30 (-35d) |  |  |  |
| SDR-ST-CON-P1-4140 | Precast Concrete Curbstone, Type A2 | 2026-11-14 → 2026-10-11 (-34d) | 2026-12-07 → 2026-11-02 (-35d) |  | 6.7d → 63.8d |  |
| SDR-ST-CON-P1-4810 | Precast Concrete Curbstone, Type D | 2026-12-12 → 2026-11-08 (-34d) | 2027-01-04 → 2026-11-30 (-35d) |  | 6.7d → 63.8d |  |
| 5 | **Interlock Installation** | 2027-01-04 → 2026-12-01 (-34d) | 2027-02-28 → 2027-01-16 (-43d) |  |  |  |
| SDR-ST-CON-P1-4350 | Interlock Installation Part 1 | 2027-01-04 → 2026-12-01 (-34d) | 2027-01-27 → 2026-12-23 (-35d) |  | 6.7d → 63.8d |  |
| SDR-ST-CON-P1-4920 | Interlock Installation Part 2 | 2027-01-27 → 2026-12-24 (-34d) | 2027-02-28 → 2027-01-16 (-43d) |  | 6.7d → 63.8d |  |
| 6 | **Road Marking** | 2027-02-28 → 2027-04-07 (+38d) | 2027-04-05 → 2027-05-05 (+30d) |  |  |  |
| SDR-ST-CON-P1-5290 | Retroreflective Thermoplastic White Traffic lines | 2027-02-28 → 2027-04-07 (+38d) | 2027-03-15 → 2027-04-14 (+30d) |  | 6.7d → 8.9d |  |
| SDR-ST-CON-P1-5410 | Retroreflective Thermoplastic Yellow, Traffic lines | 2027-03-15 → 2027-04-14 (+30d) | 2027-03-22 → 2027-04-21 (+30d) |  | 6.7d → 8.9d |  |

| ID | Task | Start | Finish | Complete | Total float | Predecessors |
| --- | --- | --- | --- | --- | --- | --- |
| SDR-ST-CON-P1-5580 | Ceramic raised pavement markers | 2027-03-22 → 2027-04-21 (+30d) | 2027-03-29 → 2027-04-28 (+30d) |  | 6.7d → 8.9d |  |
| SDR-ST-CON-P1-5640 | Rumble strip | 2027-03-29 → 2027-04-28 (+30d) | 2027-04-05 → 2027-05-05 (+30d) |  | 6.7d → 8.9d |  |
| 7 | **Traffic Signage** | 2027-04-05 → 2027-05-05 (+30d) | 2027-04-19 → 2027-05-25 (+36d) |  |  |  |
| SDR-ST-CON-P1-5420 | Traffic signs, ground mounted, 1 Sheet Alumenium, (breakaway) Single post, with all accessories | 2027-04-05 → 2027-05-05 (+30d) | 2027-04-12 → 2027-05-12 (+30d) |  | 6.7d → 8.9d |  |
| SDR-ST-CON-P1-5590 | Traffic signs, ground mounted, 1 Sheet Aluminum, (breakaway) Double post, with all accessories | 2027-04-12 → 2027-05-12 (+30d) | 2027-04-19 → 2027-05-25 (+36d) |  | 6.7d → 8.9d |  |
| 8 | **Speed table** | 2027-04-19 → 2027-05-25 (+36d) | 2027-04-29 → 2027-06-05 (+37d) |  |  |  |
| SDR-ST-CON-P1-5430 | Interlock speed table including interlock, flush kerb and marking | 2027-04-19 → 2027-05-25 (+36d) | 2027-04-29 → 2027-06-05 (+37d) |  | 6.7d → 8.9d |  |
| 14 | **GENERAL WORKS** | 2026-07-19 → 2026-05-03 (-77d) | 2026-09-02 → 2026-05-30 (-95d) |  |  |  |
| 10 | **Cleaning and removal of organic materials in Zone A** | 2026-07-19 → 2026-05-03 (-77d) | 2026-08-12 → 2026-05-16 (-88d) |  |  |  |
| SDR-ST-CON-P1-1060 | Cleaning and removal of organic materials in Zone A | 2026-07-19 → 2026-05-03 A (-77d) | 2026-08-12 → 2026-05-16 A (-88d) | 0% → 100% | 1d → none |  |
| 12 | **Surveying works Zone A** | 2026-08-12 → 2026-05-16 (-88d) | 2026-09-02 → 2026-05-30 (-95d) |  |  |  |
| SDR-ST-CON-P1-1130 | Surveying works Zone A | 2026-08-12 → 2026-05-16 A (-88d) | 2026-09-02 → 2026-05-30 A (-95d) | 0% → 100% | 1d → none |  |
| 1 | **Earth Works Road** | 2026-09-02 → 2026-07-30 (-34d) | 2026-09-17 → 2026-08-16 (-32d) |  |  |  |
| SDR-ST-CON-P1-1220 | Roadway Excavation and cuttings | 2026-09-02 → 2026-07-30 A (-34d) | 2026-09-17 → 2026-08-16 A (-32d) | 0% → 100% | 1d → none |  |
| 10 | **Backfilling Works** | 2026-09-17 → 2026-06-02 (-107d) | 2026-11-08 → 2026-08-20 (-80d) |  |  |  |
| SDR-ST-CON-P1-1350 | Embankments to the Road 1 Layer | 2026-09-17 → 2026-06-02 A (-107d) | 2026-10-01 → 2026-08-16 A (-46d) | 0% → 100% | 1d → none | SDR-ST-CON-P1-1220 → SDR-ST-CON-P1-1220 FF |
| SDR-ST-CON-P1-1990 | Embankments to the Road 2 Layer | 2026-10-01 → 2026-06-22 A (-101d) | 2026-10-14 → 2026-07-02 A (-104d) | 0% → 100% | 1.7d → none | SDR-ST-CON-P1-1350, SDR-ST-PRO-MS-1260 → SDR-ST-CON-P1-1350 SS |
| SDR-ST-CON-P1-2730 | Embankments to the Road 3 Layer | 2026-10-14 → 2026-08-12 A (-63d) | 2026-10-27 → 2026-08-17 A (-71d) | 0% → 100% | 1.7d → none |  |
| SDR-ST-CON-P1-3320 | Embankments to the Road 4 Layer | 2026-10-27 → 2026-08-16 A (-72d) | 2026-11-08 → 2026-08-20 A (-80d) | 0% → 100% | 1.7d → none |  |
| 11 | **Subgrade** | 2026-11-08 → 2026-09-07 (-62d) | 2026-11-17 → 2026-10-06 (-42d) |  |  |  |
| SDR-ST-CON-P1-3740 | Subgrade layer works | 2026-11-08 → 2026-09-07 A (-62d) | 2026-11-17 → 2026-10-06 (-42d) | 0% → 10% | 1.7d → 83.8d |  |
| 2 | **Base Course** | 2026-11-17 → 2026-10-07 (-41d) | 2026-11-25 → 2026-10-14 (-42d) |  |  |  |
| SDR-ST-CON-P1-4290 | Aggregate base course layer | 2026-11-17 → 2026-10-07 (-41d) | 2026-11-25 → 2026-10-14 (-42d) |  | 17.5d → 83.8d |  |
| 3 | **Asphalt Works** | 2026-11-25 → 2026-10-15 (-41d) | 2027-01-02 → 2026-11-21 (-42d) |  |  |  |
| 1 | **Bituminous base course** | 2026-11-25 → 2026-10-15 (-41d) | 2026-12-06 → 2026-10-25 (-42d) |  |  |  |
| SDR-ST-CON-P1-4650 | Bituminous base course (Grading I - Class A 1st Layer with RC-01 | 2026-11-25 → 2026-10-15 (-41d) | 2026-12-01 → 2026-10-20 (-42d) |  | 17.5d → 83.8d |  |
| SDR-ST-CON-P1-4980 | Bituminous base course (Grading I - Class A 2nd layer with RC-02 | 2026-12-01 → 2026-10-21 (-41d) | 2026-12-06 → 2026-10-25 (-42d) |  | 17.5d → 83.8d |  |
| 2 | **Bituminous concrete wearing course** | 2026-12-08 → 2026-10-28 (-41d) | 2027-01-02 → 2026-11-21 (-42d) |  |  |  |
| SDR-ST-CON-P1-5230 | Bituminous concrete wearing course, (Grading I - Class A), including tack coat (RC2) | 2026-12-08 → 2026-10-28 (-41d) | 2027-01-02 → 2026-11-21 (-42d) |  | 17.5d → 83.8d |  |
| 4 | **Kerbstone Installation** | 2026-11-17 → 2026-10-07 (-41d) | 2027-01-07 → 2026-11-26 (-42d) |  |  |  |
| SDR-ST-CON-P1-4300 | Precast Concrete Curbstone, Type A2 | 2026-11-17 → 2026-10-07 (-41d) | 2026-12-10 → 2026-10-29 (-42d) |  | 1.7d → 83.8d |  |
| SDR-ST-CON-P1-4860 | Precast Concrete Curbstone, Type D | 2026-12-15 → 2026-11-04 (-41d) | 2027-01-07 → 2026-11-26 (-42d) |  | 1.7d → 83.8d |  |
| 5 | **Interlock Installation** | 2027-01-07 → 2026-11-29 (-39d) | 2027-03-06 → 2027-01-13 (-52d) |  |  |  |
| SDR-ST-CON-P1-4450 | Interlock Installation Part 1 | 2027-01-07 → 2026-11-29 (-39d) | 2027-01-31 → 2026-12-21 (-41d) |  | 1.7d → 82.8d |  |
| SDR-ST-CON-P1-4940 | Interlock Installation Part 2 | 2027-01-31 → 2026-12-22 (-40d) | 2027-03-06 → 2027-01-13 (-52d) |  | 1.7d → 82.8d |  |
| 6 | **Road Marking** | 2027-03-14 → 2027-04-29 (+46d) | 2027-04-10 → 2027-06-02 (+53d) |  |  |  |
| SDR-ST-CON-P1-5350 | Retroreflective Thermoplastic White Traffic lines | 2027-03-14 → 2027-04-29 (+46d) | 2027-03-20 → 2027-05-06 (+47d) |  | 0d → 6.6d |  |
| SDR-ST-CON-P1-5510 | Retroreflective Thermoplastic Yellow, Traffic lines | 2027-03-21 → 2027-05-06 (+46d) | 2027-03-27 → 2027-05-13 (+47d) |  | 0d → 6.6d |  |
| SDR-ST-CON-P1-5600 | Ceramic raised pavement markers | 2027-03-28 → 2027-05-13 (+46d) | 2027-04-03 → 2027-05-26 (+53d) |  | 0d → 6.6d |  |
| SDR-ST-CON-P1-5650 | Rumble strip | 2027-04-04 → 2027-05-26 (+52d) | 2027-04-10 → 2027-06-02 (+53d) |  | 0d → 6.6d | SDR-ST-CON-P1-5600, SDR-ST-PRO-MS-1190 → SDR-ST-CON-P1-5600, SDR-ST-PRO-MS-1190 FF |
| 7 | **Traffic Signage** | 2027-04-11 → 2027-06-02 (+52d) | 2027-04-27 → 2027-06-20 (+54d) |  |  |  |
| SDR-ST-CON-P1-5360 | Traffic signs, ground mounted, 1 Sheet Alumenium, (breakaway) Single post, with all accessories | 2027-04-11 → 2027-06-02 (+52d) | 2027-04-15 → 2027-06-08 (+54d) |  | 0d → 6.6d |  |
| SDR-ST-CON-P1-5520 | Traffic signs, ground mounted, 1 Sheet Aluminum, (breakaway) Double post, with all accessories | 2027-04-17 → 2027-06-08 (+52d) | 2027-04-21 → 2027-06-14 (+54d) |  | 0d → 6.6d |  |
| SDR-ST-CON-P1-5660 | Traffic signs, ground mounted, 2 Sheet Aluminum, (breakaway) Single post, with all accessories | 2027-04-22 → 2027-06-14 (+53d) | 2027-04-27 → 2027-06-20 (+54d) |  | 0d → 6.6d |  |
| 8 | **Speed table** | 2027-04-28 → 2027-06-16 (+49d) | 2027-05-08 → 2027-06-27 (+50d) |  |  |  |
| SDR-ST-CON-P1-5530 | Interlock speed table including interlock, flush kerb and marking | 2027-04-28 → 2027-06-16 (+49d) | 2027-05-08 → 2027-06-27 (+50d) |  | 0d → 0.5d | SDR-ST-CON-P1-5350, SDR-ST-CON-P1-5660, SDR-ST-CON-P1-5620, SDR-ST-CON-P1-5460 → SDR-ST-CON-P1-5350, SDR-ST-CON-P1-5660 FF, SDR-ST-CON-P1-5620 FF, SDR-ST-CON-P1-5460 FF |
| 12 | **ELECTRICAL WORKS** | 2026-08-27 → 2026-08-03 (-24d) | 2027-07-17 → 2027-08-02 (+16d) |  |  |  |
| 2 | **MV Network** | 2026-10-21 → 2026-09-28 (-23d) | 2027-05-12 → 2027-06-06 (+25d) |  |  |  |
| 5 | **ROAD - 01** | 2026-10-21 → 2026-09-28 (-23d) | 2027-04-18 → 2027-06-05 (+48d) |  |  |  |
| 4 | **ROAD-01 From 1125 to 1765 m (7)** | 2026-10-21 → 2026-09-28 (-23d) | 2027-04-03 → 2027-04-08 (+5d) |  |  |  |
| 6 | **Excavation** | 2026-10-21 → 2026-09-28 (-23d) | 2027-01-03 → 2026-12-09 (-25d) |  |  |  |
| SDR-ST-CON-P1-1570 | Excavation Works Part 1 | 2026-10-21 → 2026-09-28 (-23d) | 2026-11-15 → 2026-10-21 (-25d) |  | 0d → 33.8d |  |
| SDR-ST-CON-P1-6090 | Excavation Works Part 2 | 2026-11-15 → 2026-10-22 (-24d) | 2026-12-09 → 2026-11-15 (-24d) |  | 0d → 88.5d |  |
| SDR-ST-CON-P1-6100 | Excavation Works Part 3 | 2026-12-09 → 2026-11-16 (-23d) | 2027-01-03 → 2026-12-09 (-25d) |  | 0d → 88.5d |  |
| 7 | **Pipe laying** | 2027-01-03 → 2026-12-10 (-24d) | 2027-01-27 → 2027-01-03 (-24d) |  |  |  |
| SDR-ST-CON-P1-2270 | Pipe Laying | 2027-01-03 → 2026-12-10 (-24d) | 2027-01-27 → 2027-01-03 (-24d) |  | 0d → 88.5d |  |
| 8 | **Backfilling** | 2027-01-27 → 2027-02-03 (+7d) | 2027-03-02 → 2027-03-15 (+13d) |  |  |  |
| SDR-ST-CON-P1-3000 | Backfilling Works | 2027-01-27 → 2027-02-03 (+7d) | 2027-03-02 → 2027-03-15 (+13d) |  | 0d → 62.5d |  |
| 9 | **Pulling Cable** | 2027-03-02 → 2027-03-15 (+13d) | 2027-04-03 → 2027-04-08 (+5d) |  |  |  |
| SDR-ST-CON-P1-3900 | Pulling Cable | 2027-03-02 → 2027-03-15 (+13d) | 2027-04-03 → 2027-04-08 (+5d) |  | 0d → 62.5d |  |
| 3 | **ROAD-01 From 470 to 1125 m (6)** | 2026-10-29 → 2026-10-06 (-23d) | 2027-04-06 → 2027-04-07 (+1d) |  |  |  |
| 6 | **Excavation** | 2026-10-29 → 2026-10-06 (-23d) | 2027-01-07 → 2026-12-14 (-24d) |  |  |  |
| SDR-ST-CON-P1-1720 | Excavation Works Part 1 | 2026-10-29 → 2026-10-06 (-23d) | 2026-11-23 → 2026-10-29 (-25d) |  | 0.1d → 33.8d |  |
| SDR-ST-CON-P1-6110 | Excavation Works Part2 | 2026-11-23 → 2026-10-31 (-23d) | 2026-12-17 → 2026-11-23 (-24d) |  | 4d → 33.8d |  |
| SDR-ST-CON-P1-6120 | Excavation Works Part 3 | 2026-12-17 → 2026-11-24 (-23d) | 2027-01-07 → 2026-12-14 (-24d) |  | 4d → 33.8d |  |
| 7 | **Pipe laying** | 2027-01-07 → 2026-12-15 (-23d) | 2027-02-01 → 2027-01-07 (-25d) |  |  |  |
| SDR-ST-CON-P1-2420 | Pipe Laying | 2027-01-07 → 2026-12-15 (-23d) | 2027-02-01 → 2027-01-07 (-25d) |  | 4d → 33.8d |  |
| 8 | **Backfilling** | 2027-02-01 → 2027-02-03 (+2d) | 2027-03-14 → 2027-03-15 (+1d) |  |  |  |
| SDR-ST-CON-P1-3150 | Backfilling Works | 2027-02-01 → 2027-02-03 (+2d) | 2027-03-14 → 2027-03-15 (+1d) |  | 4d → 11.8d |  |
| 9 | **Pulling Cable** | 2027-03-14 → 2027-03-15 (+1d) | 2027-04-06 → 2027-04-07 (+1d) |  |  |  |

| ID | Task | Start | Finish | Complete | Total float | Predecessors |
| --- | --- | --- | --- | --- | --- | --- |
| SDR-ST-CON-P1-4000 | Pulling Cable | 2027-03-14 → 2027-03-15 (+1d) | 2027-04-06 → 2027-04-07 (+1d) |  | 4d → 11.8d |  |
| 2 | **ROAD-01 N 03** | 2026-11-07 → 2026-10-14 (-24d) | 2027-04-14 → 2027-05-30 (+46d) |  |  |  |
| 6 | **Excavation** | 2026-11-07 → 2026-10-14 (-24d) | 2027-01-16 → 2026-12-22 (-25d) |  |  |  |
| SDR-ST-CON-P1-1770 | Excavation Works Part 1 | 2026-11-07 → 2026-10-14 (-24d) | 2026-12-01 → 2026-11-07 (-24d) |  | 0.1d → 52.8d |  |
| SDR-ST-CON-P1-6130 | Excavation Works Part 2 | 2026-12-01 → 2026-11-08 (-23d) | 2026-12-26 → 2026-12-01 (-25d) |  | 0.1d → 95.7d |  |
| SDR-ST-CON-P1-6140 | Excavation Works Part 3 | 2026-12-26 → 2026-12-02 (-24d) | 2027-01-16 → 2026-12-22 (-25d) |  | 0.1d → 95.7d |  |
| 7 | **Pipe laying** | 2027-01-16 → 2026-12-23 (-24d) | 2027-02-11 → 2027-01-16 (-26d) |  |  |  |
| SDR-ST-CON-P1-2500 | Pipe Laying | 2027-01-16 → 2026-12-23 (-24d) | 2027-02-11 → 2027-01-16 (-26d) |  | 0.1d → 95.7d |  |
| 8 | **Backfilling** | 2027-02-11 → 2027-04-07 (+55d) | 2027-03-22 → 2027-05-01 (+40d) |  |  |  |
| SDR-ST-CON-P1-3280 | Backfilling Works | 2027-02-11 → 2027-04-07 (+55d) | 2027-03-22 → 2027-05-01 (+40d) |  | 0d → 40.8d |  |
| 9 | **Pulling Cable** | 2027-03-22 → 2027-05-01 (+40d) | 2027-04-14 → 2027-05-30 (+46d) |  |  |  |
| SDR-ST-CON-P1-4250 | Pulling Cable | 2027-03-22 → 2027-05-01 (+40d) | 2027-04-14 → 2027-05-30 (+46d) |  | 0d → 40.8d |  |
| 1 | **ROAD-01 N 01** | 2026-11-15 → 2026-10-22 (-24d) | 2027-04-18 → 2027-06-05 (+48d) |  |  |  |
| 6 | **Excavation** | 2026-11-15 → 2026-10-22 (-24d) | 2027-01-24 → 2027-03-24 (+59d) |  |  |  |
| SDR-ST-CON-P1-1730 | Excavation Works Part 1 | 2026-11-15 → 2026-10-22 (-24d) | 2026-12-09 → 2026-11-15 (-24d) |  | 0.3d → 52.8d |  |
| SDR-ST-CON-P1-6150 | Excavation Works Part 2 | 2026-12-09 → 2027-01-21 (+43d) | 2027-01-02 → 2027-02-17 (+46d) |  | 7.3d → 20.6d |  |
| SDR-ST-CON-P1-6160 | Excavation Works Part 3 | 2027-01-02 → 2027-02-17 (+46d) | 2027-01-24 → 2027-03-24 (+59d) |  | 7.3d → 20.6d |  |
| 7 | **Pipe laying** | 2027-01-24 → 2027-03-24 (+59d) | 2027-02-24 → 2027-04-17 (+52d) |  |  |  |
| SDR-ST-CON-P1-2430 | Pipe Laying | 2027-01-24 → 2027-03-24 (+59d) | 2027-02-24 → 2027-04-17 (+52d) |  | 7.3d → 20.6d |  |
| 8 | **Backfilling** | 2027-02-24 → 2027-04-17 (+52d) | 2027-03-28 → 2027-05-09 (+42d) |  |  |  |
| SDR-ST-CON-P1-3160 | Backfilling Works | 2027-02-24 → 2027-04-17 (+52d) | 2027-03-28 → 2027-05-09 (+42d) |  | 7.3d → 20.6d |  |
| 9 | **Pulling Cable** | 2027-03-28 → 2027-05-09 (+42d) | 2027-04-18 → 2027-06-05 (+48d) |  |  |  |
| SDR-ST-CON-P1-4010 | Pulling Cable | 2027-03-28 → 2027-05-09 (+42d) | 2027-04-18 → 2027-06-05 (+48d) |  | 7.3d → 20.6d |  |
| 6 | **ROAD - 02** | 2026-11-23 → 2026-10-31 (-23d) | 2027-05-12 → 2027-06-06 (+25d) |  |  |  |
| 6 | **Excavation** | 2026-11-23 → 2026-10-31 (-23d) | 2027-02-01 → 2027-01-27 (-5d) |  |  |  |
| SDR-ST-CON-P1-1920 | Excavation Works Part 1 | 2026-11-23 → 2026-10-31 (-23d) | 2026-12-17 → 2026-11-23 (-24d) |  | 0.3d → 52.8d |  |
| SDR-ST-CON-P1-6170 | Excavation Works Part 2 | 2026-12-17 → 2026-11-24 (-23d) | 2027-01-10 → 2026-12-16 (-25d) |  | 0.3d → 58.8d |  |
| SDR-ST-CON-P1-6180 | Excavation Works Part 3 | 2027-01-10 → 2027-01-06 (-4d) | 2027-02-01 → 2027-01-27 (-5d) |  | 0.3d → 41.8d |  |
| 7 | **Pipe laying** | 2027-02-01 → 2027-03-08 (+35d) | 2027-03-14 → 2027-04-05 (+22d) |  |  |  |
| SDR-ST-CON-P1-2660 | Pipe Laying | 2027-02-01 → 2027-03-08 (+35d) | 2027-03-14 → 2027-04-05 (+22d) |  | 0.3d → 18.8d |  |
| 8 | **Backfilling** | 2027-03-14 → 2027-04-05 (+22d) | 2027-04-05 → 2027-04-27 (+22d) |  |  |  |
| SDR-ST-CON-P1-3430 | Backfilling Works | 2027-03-14 → 2027-04-05 (+22d) | 2027-04-05 → 2027-04-27 (+22d) |  | 0.3d → 18.8d |  |
| 9 | **Pulling Cable** | 2027-04-05 → 2027-04-27 (+22d) | 2027-04-26 → 2027-05-24 (+28d) |  |  |  |
| SDR-ST-CON-P1-4320 | Pulling Cable | 2027-04-05 → 2027-04-27 (+22d) | 2027-04-26 → 2027-05-24 (+28d) |  | 0.3d → 18.8d |  |
| 6 | **Excavation** | 2026-12-01 → 2026-11-08 (-23d) | 2027-02-13 → 2027-03-25 (+40d) |  |  |  |
| SDR-ST-CON-P1-1840 | Excavation Works Part 1 | 2026-12-01 → 2026-11-08 (-23d) | 2026-12-26 → 2026-12-01 (-25d) |  | 0.7d → 52.8d |  |
| SDR-ST-CON-P1-6190 | Excavation Works Part 2 | 2026-12-26 → 2027-01-21 (+26d) | 2027-01-18 → 2027-02-17 (+30d) |  | 8.2d → 24.6d |  |
| SDR-ST-CON-P1-6200 | Excavation Works Part 3 | 2027-01-18 → 2027-02-17 (+30d) | 2027-02-13 → 2027-03-25 (+40d) |  | 8.2d → 24.6d |  |
| 7 | **Pipe laying** | 2027-02-13 → 2027-03-25 (+40d) | 2027-03-23 → 2027-04-18 (+26d) |  |  |  |
| SDR-ST-CON-P1-2590 | Pipe Laying | 2027-02-13 → 2027-03-25 (+40d) | 2027-03-23 → 2027-04-18 (+26d) |  | 8.2d → 24.6d | SDR-ST-CON-P1-1840, SDR-ST-CON-P1-6200, SDR-ST-MILS-1100 → SDR-ST-CON-P1-1840, SDR-ST-CON-P1-6200, SDR-ST-MILS-1100 FF |
| 8 | **Backfilling** | 2027-03-23 → 2027-04-18 (+26d) | 2027-04-14 → 2027-05-10 (+26d) |  |  |  |
| SDR-ST-CON-P1-3340 | Backfilling Works | 2027-03-23 → 2027-04-18 (+26d) | 2027-04-14 → 2027-05-10 (+26d) |  | 8.2d → 24.6d |  |
| 9 | **Pulling Cable** | 2027-04-14 → 2027-05-10 (+26d) | 2027-05-05 → 2027-06-06 (+32d) |  |  |  |
| SDR-ST-CON-P1-4050 | Pulling Cable | 2027-04-14 → 2027-05-10 (+26d) | 2027-05-05 → 2027-06-06 (+32d) |  | 8.2d → 24.6d |  |
| 6 | **Excavation** | 2026-12-09 → 2026-11-16 (-23d) | 2027-02-25 → 2027-01-24 (-32d) |  |  |  |
| SDR-ST-CON-P1-2000 | Excavation Works Part 1 | 2026-12-09 → 2026-11-16 (-23d) | 2027-01-03 → 2026-12-09 (-25d) |  | 0.7d → 52.8d |  |
| SDR-ST-CON-P1-6210 | Excavation Works Part 2 | 2027-01-03 → 2026-12-10 (-24d) | 2027-01-26 → 2027-01-02 (-24d) |  | 0.7d → 52.8d |  |
| SDR-ST-CON-P1-6220 | Excavation Works Part 3 | 2027-01-26 → 2027-01-03 (-23d) | 2027-02-25 → 2027-01-24 (-32d) |  | 2.2d → 59.8d |  |
| 7 | **Pipe laying** | 2027-02-25 → 2027-02-03 (-22d) | 2027-03-30 → 2027-03-15 (-15d) |  |  |  |
| SDR-ST-CON-P1-2750 | Pipe Laying | 2027-02-25 → 2027-02-03 (-22d) | 2027-03-30 → 2027-03-15 (-15d) |  | 2.2d → 51.8d |  |
| 8 | **Backfilling** | 2027-03-30 → 2027-03-15 (-15d) | 2027-04-21 → 2027-04-06 (-15d) |  |  |  |
| SDR-ST-CON-P1-3460 | Backfilling Works | 2027-03-30 → 2027-03-15 (-15d) | 2027-04-21 → 2027-04-06 (-15d) |  | 2.2d → 51.8d |  |
| 9 | **Pulling Cable** | 2027-04-21 → 2027-04-06 (-15d) | 2027-05-12 → 2027-04-27 (-15d) |  |  |  |
| SDR-ST-CON-P1-3980 | Pulling Cable | 2027-04-21 → 2027-04-06 (-15d) | 2027-05-12 → 2027-04-27 (-15d) |  | 2.2d → 51.8d |  |
| 1 | **Earthing System** | 2027-01-26 → 2027-01-03 (-23d) | 2027-02-18 → 2027-01-20 (-29d) |  |  |  |
| SDR-ST-CON-P1-4840 | Installation of Earthing System Including lighting poles circuits | 2027-01-26 → 2027-01-03 (-23d) | 2027-02-18 → 2027-01-20 (-29d) |  | 0.7d → 52.8d |  |
| 16 | **Street Lighting Network** | 2026-08-27 → 2026-08-03 (-24d) | 2027-07-17 → 2027-08-02 (+16d) |  |  |  |
| 7 | **ROAD - 01** | 2026-08-27 → 2026-08-03 (-24d) | 2027-07-17 → 2027-08-02 (+16d) |  |  |  |
| 2 | **ROAD-01 From 470 to 1125 m (6)** | 2026-08-27 → 2026-08-03 (-24d) | 2027-02-06 → 2027-03-29 (+51d) |  |  |  |
| 10 | **Excavation** | 2026-08-27 → 2026-08-03 (-24d) | 2026-11-12 → 2026-12-16 (+34d) |  |  |  |
| SDR-ST-CON-P1-1180 | Excavation for LV Cable trench Section 1 | 2026-08-27 → 2026-08-03 A (-24d) | 2026-09-21 → 2026-10-27 (+36d) | 0% → 25% | 1.3d → 9.8d | SDR-ST-CON-P1-1190 SS, SDR-ST-ENG-AP-1080 → SDR-ST-CON-P1-1190 SS, SDR-ST-ENG-AP-1080, SDR-ST-PRO-MS-1000 FF |
| SDR-ST-CON-P1-1560 | Excavation for LV Cable trench Section 2 | 2026-09-24 → 2026-10-29 (+35d) | 2026-10-19 → 2026-11-22 (+34d) |  | 7.7d → 9.8d |  |
| SDR-ST-CON-P1-2250 | Excavation for LV Cable trench Section 3 | 2026-10-19 → 2026-11-23 (+35d) | 2026-11-12 → 2026-12-16 (+34d) |  | 7.7d → 9.8d |  |
| 11 | **Install Footings** | 2026-11-12 → 2026-12-17 (+35d) | 2026-12-07 → 2027-01-10 (+34d) |  |  |  |
| SDR-ST-CON-P1-2980 | Install Footings | 2026-11-12 → 2026-12-17 (+35d) | 2026-12-07 → 2027-01-10 (+34d) |  | 7.7d → 9.8d |  |
| 12 | **Backfilling** | 2026-12-07 → 2027-01-11 (+35d) | 2026-12-19 → 2027-01-21 (+33d) |  |  |  |
| SDR-ST-CON-P1-3870 | Backfilling over LV Cables of Street lighting | 2026-12-07 → 2027-01-11 (+35d) | 2026-12-19 → 2027-01-21 (+33d) |  | 7.7d → 9.8d |  |
| 13 | **Install pole** | 2026-12-19 → 2027-01-23 (+35d) | 2027-02-06 → 2027-03-29 (+51d) |  |  |  |
| SDR-ST-CON-P1-4420 | Install Pole Part 1 | 2026-12-19 → 2027-01-23 (+35d) | 2027-01-12 → 2027-02-21 (+40d) |  | 7.7d → 9.8d |  |
| SDR-ST-CON-P1-5170 | Install Pole Part 2 | 2027-01-12 → 2027-02-21 (+40d) | 2027-02-06 → 2027-03-29 (+51d) |  | 7.7d → 9.8d |  |

| ID | Task | Start | Finish | Complete | Total float | Predecessors |
| --- | --- | --- | --- | --- | --- | --- |
| 3 | **ROAD-01 From 1125 to 1765 m (7)** | 2026-09-21 → 2026-08-03 (-49d) | 2027-03-08 → 2027-03-16 (+8d) |  |  |  |
| 10 | **Excavation** | 2026-09-21 → 2026-08-03 (-49d) | 2026-12-07 → 2026-12-10 (+3d) |  |  |  |
| SDR-ST-CON-P1-1590 | Excavation for LV Cable trench Section 1 | 2026-09-21 → 2026-08-03 A (-49d) | 2026-10-17 → 2026-10-20 (+3d) | 0% → 25% | 0d → 5.8d |  |
| SDR-ST-CON-P1-2390 | Excavation for LV Cable trench Section 2 | 2026-10-19 → 2026-10-24 (+5d) | 2026-11-12 → 2026-11-16 (+4d) |  | 0d → 5.8d |  |
| SDR-ST-CON-P1-3120 | Excavation for LV Cable trench Section 3 | 2026-11-12 → 2026-11-17 (+5d) | 2026-12-07 → 2026-12-10 (+3d) |  | 0d → 5.8d |  |
| 11 | **Install Footings** | 2026-12-07 → 2026-12-12 (+5d) | 2026-12-24 → 2026-12-28 (+4d) |  |  |  |
| SDR-ST-CON-P1-3990 | Install Footings | 2026-12-07 → 2026-12-12 (+5d) | 2026-12-24 → 2026-12-28 (+4d) |  | 0d → 5.8d |  |
| 12 | **Backfilling** | 2026-12-24 → 2026-12-29 (+5d) | 2027-01-05 → 2027-01-09 (+4d) |  |  |  |
| SDR-ST-CON-P1-4680 | Backfilling over LV Cables of Street lighting | 2026-12-24 → 2026-12-29 (+5d) | 2027-01-05 → 2027-01-09 (+4d) |  | 0d → 5.8d |  |
| 13 | **Install pole** | 2027-01-05 → 2027-01-10 (+5d) | 2027-03-08 → 2027-03-16 (+8d) |  |  |  |
| SDR-ST-CON-P1-5050 | Install Pole Part 1 | 2027-01-05 → 2027-01-10 (+5d) | 2027-01-30 → 2027-02-02 (+3d) |  | 0d → 5.8d |  |
| SDR-ST-CON-P1-5760 | Install Pole Part 2 | 2027-01-30 → 2027-02-03 (+4d) | 2027-03-08 → 2027-03-16 (+8d) |  | 0d → 5.8d |  |
| 1 | **ROAD-01 From 0 to 470 m (3)** | 2026-08-31 → 2026-09-28 (+28d) | 2027-03-20 → 2027-05-06 (+47d) |  |  |  |
| 10 | **Excavation** | 2026-08-31 → 2026-09-28 (+28d) | 2026-11-14 → 2026-12-09 (+25d) |  |  |  |
| SDR-ST-CON-P1-1500 | Excavation for LV Cable trench Section 1 | 2026-08-31 → 2026-09-28 (+28d) | 2026-09-26 → 2026-10-21 (+25d) |  | 0.6d → 13.5d |  |
| SDR-ST-CON-P1-2320 | Excavation for LV Cable trench Section 2 | 2026-09-26 → 2026-10-22 (+26d) | 2026-10-20 → 2026-11-15 (+26d) |  | 4.7d → 13.5d |  |
| SDR-ST-CON-P1-3040 | Excavation for LV Cable trench Section 3 | 2026-10-20 → 2026-11-16 (+27d) | 2026-11-14 → 2026-12-09 (+25d) |  | 4.7d → 13.5d |  |
| 11 | **Install Footings** | 2026-11-14 → 2026-12-10 (+26d) | 2026-12-08 → 2027-01-03 (+26d) |  |  |  |
| SDR-ST-CON-P1-3920 | Install Footings | 2026-11-14 → 2026-12-10 (+26d) | 2026-12-08 → 2027-01-03 (+26d) |  | 4.7d → 13.5d |  |
| 12 | **Backfilling** | 2026-12-08 → 2027-01-04 (+27d) | 2026-12-22 → 2027-01-18 (+27d) |  |  |  |
| SDR-ST-CON-P1-4850 | Backfilling over LV Cables of Street lighting | 2026-12-08 → 2027-01-04 (+27d) | 2026-12-22 → 2027-01-18 (+27d) |  | 4.7d → 13.5d |  |
| 13 | **Install pole** | 2026-12-22 → 2027-01-18 (+27d) | 2027-03-20 → 2027-05-06 (+47d) |  |  |  |
| SDR-ST-CON-P1-5330 | Install Pole Part 1 | 2026-12-22 → 2027-01-18 (+27d) | 2027-01-16 → 2027-02-14 (+29d) |  | 4.7d → 13.5d |  |
| SDR-ST-CON-P1-5780 | Install Pole Part 2 | 2027-01-16 → 2027-02-14 (+29d) | 2027-02-11 → 2027-03-24 (+41d) |  | 4.7d → 13.5d |  |
| SDR-ST-CON-P1-6070 | Install Pole Part 3 | 2027-02-20 → 2027-04-08 (+47d) | 2027-03-13 → 2027-04-29 (+47d) |  | 0.1d → 1.6d | SDR-ST-CON-P1-5780, SDR-ST-PRO-MS-1200, SDR-ST-CON-P1-5790, SDR-ST-CON-P1-5170, SDR-ST-CON-P1-4840, SDR-ST-CON-P1-4800 FS+2d, SDR-ST-CON-P1-5000, SDR-ST-CON-P1-4820, SDR-ST-CON-P1-4900, SDR-ST-CON-P1-5240 → SDR-ST-CON-P1-5780, SDR-ST-PRO-MS-1200 FF, SDR-ST-CON-P1-5790, SDR-ST-CON-P1-5170, SDR-ST-CON-P1-4840, SDR-ST-CON-P1-4800 FS+2d, SDR-ST-CON-P1-5000, SDR-ST-CON-P1-4820, SDR-ST-CON-P1-4900, SDR-ST-CON-P1-5240 |
| SDR-ST-CON-P1-6080 | Install Pole Part 4 | 2027-03-13 → 2027-04-29 (+47d) | 2027-03-20 → 2027-05-06 (+47d) |  | 13.5d → 51.6d |  |
| 4 | **ROAD-01 N (1)** | 2026-08-31 → 2026-09-28 (+28d) | 2027-02-08 → 2027-03-23 (+43d) |  |  |  |
| 10 | **Excavation** | 2026-08-31 → 2026-09-28 (+28d) | 2026-11-16 → 2026-12-12 (+26d) |  |  |  |
| SDR-ST-CON-P1-1700 | Excavation for LV Cable trench Section 1 | 2026-08-31 → 2026-09-28 (+28d) | 2026-09-26 → 2026-10-21 (+25d) |  | 1.5d → 14.8d |  |
| SDR-ST-CON-P1-2410 | Excavation for LV Cable trench Section 2 | 2026-09-28 → 2026-10-25 (+27d) | 2026-10-22 → 2026-11-17 (+26d) |  | 6d → 14.8d |  |
| SDR-ST-CON-P1-3190 | Excavation for LV Cable trench Section 3 | 2026-10-22 → 2026-11-18 (+27d) | 2026-11-16 → 2026-12-12 (+26d) |  | 6d → 14.8d |  |
| 11 | **Install Footings** | 2026-11-16 → 2026-12-13 (+27d) | 2026-12-10 → 2027-01-05 (+26d) |  |  |  |
| SDR-ST-CON-P1-4110 | Install Footings | 2026-11-16 → 2026-12-13 (+27d) | 2026-12-10 → 2027-01-05 (+26d) |  | 6d → 14.8d |  |
| 12 | **Backfilling** | 2026-12-10 → 2027-01-06 (+27d) | 2026-12-21 → 2027-01-16 (+26d) |  |  |  |
| SDR-ST-CON-P1-4960 | Backfilling over LV Cables of Street lighting | 2026-12-10 → 2027-01-06 (+27d) | 2026-12-21 → 2027-01-16 (+26d) |  | 6d → 14.8d |  |
| 13 | **Install pole** | 2026-12-21 → 2027-01-17 (+27d) | 2027-02-08 → 2027-03-23 (+43d) |  |  |  |
| SDR-ST-CON-P1-5340 | Install Pole Part 1 | 2026-12-21 → 2027-01-17 (+27d) | 2027-01-14 → 2027-02-11 (+28d) |  | 6d → 14.8d |  |
| SDR-ST-CON-P1-5790 | Install Pole Part 2 | 2027-01-14 → 2027-02-11 (+28d) | 2027-02-08 → 2027-03-23 (+43d) |  | 6d → 14.8d |  |
| 5 | **Road Crossing & Drawpits** | 2026-08-31 → 2026-09-28 (+28d) | 2026-12-12 → 2027-01-14 (+33d) |  |  |  |
| 1 | **ROAD - 01** | 2026-08-31 → 2026-09-28 (+28d) | 2026-12-12 → 2027-01-14 (+33d) |  |  |  |
| 1 | **ROAD-01 From 470 to 1125 m (6)** | 2026-09-21 → 2026-10-27 (+36d) | 2026-12-12 → 2027-01-14 (+33d) |  |  |  |
| 1 | **Road crossing Ducts & Drawpits** | 2026-09-21 → 2026-10-27 (+36d) | 2026-12-12 → 2027-01-14 (+33d) |  |  |  |
| 1 | **Excavation** | 2026-09-21 → 2026-10-27 (+36d) | 2026-10-17 → 2026-11-19 (+33d) |  |  |  |
| SDR-ST-CON-P1-1450 | Excavation for GRP Pipes Section 1 | 2026-09-21 → 2026-10-27 (+36d) | 2026-10-17 → 2026-11-19 (+33d) |  | 7.2d → 41.5d |  |
| 7 | **bedding Works** | 2026-10-17 → 2026-11-21 (+35d) | 2026-11-10 → 2026-12-14 (+34d) |  |  |  |
| SDR-ST-CON-P1-2160 | Sand bedding for GRP Pipes | 2026-10-17 → 2026-11-21 (+35d) | 2026-11-10 → 2026-12-14 (+34d) |  | 7.2d → 41.5d |  |
| 2 | **Pipes Laying** | 2026-11-10 → 2026-12-15 (+35d) | 2026-11-26 → 2026-12-30 (+34d) |  |  |  |
| SDR-ST-CON-P1-2890 | Install ST GRP Pipes | 2026-11-10 → 2026-12-15 (+35d) | 2026-11-26 → 2026-12-30 (+34d) |  | 7.2d → 41.5d |  |
| 6 | **Testing** | 2026-11-26 → 2026-12-31 (+35d) | 2026-12-05 → 2027-01-07 (+33d) |  |  |  |
| SDR-ST-CON-P1-3530 | Testing ST GRP Pipes | 2026-11-26 → 2026-12-31 (+35d) | 2026-12-05 → 2027-01-07 (+33d) |  | 7.2d → 41.5d |  |
| 3 | **Backfilling** | 2026-12-05 → 2027-01-09 (+35d) | 2026-12-12 → 2027-01-14 (+33d) |  |  |  |
| SDR-ST-CON-P1-3810 | Backfilling ST GRP Pipes | 2026-12-05 → 2027-01-09 (+35d) | 2026-12-12 → 2027-01-14 (+33d) |  | 7.2d → 41.5d |  |
| 2 | **ROAD-01 From 1125 to 1765 m (7)** | 2026-09-21 → 2026-09-28 (+7d) | 2026-12-10 → 2026-12-16 (+6d) |  |  |  |
| 1 | **Road crossing Ducts & Drawpits** | 2026-09-21 → 2026-09-28 (+7d) | 2026-12-10 → 2026-12-16 (+6d) |  |  |  |
| 1 | **Excavation** | 2026-09-21 → 2026-09-28 (+7d) | 2026-10-17 → 2026-10-21 (+4d) |  |  |  |
| SDR-ST-CON-P1-1600 | Excavation for GRP Pipes Section 1 | 2026-09-21 → 2026-09-28 (+7d) | 2026-10-17 → 2026-10-21 (+4d) |  | 0.1d → 57.4d |  |
| 7 | **bedding Works** | 2026-10-17 → 2026-10-22 (+5d) | 2026-11-03 → 2026-11-08 (+5d) |  |  |  |
| SDR-ST-CON-P1-2280 | Sand bedding for GRP Pipes | 2026-10-17 → 2026-10-22 (+5d) | 2026-11-03 → 2026-11-08 (+5d) |  | 0.1d → 57.4d |  |
| 2 | **Pipes Laying** | 2026-11-03 → 2026-11-09 (+6d) | 2026-11-17 → 2026-11-22 (+5d) |  |  |  |
| SDR-ST-CON-P1-2800 | Install ST GRP Pipes | 2026-11-03 → 2026-11-09 (+6d) | 2026-11-17 → 2026-11-22 (+5d) |  | 0.1d → 57.4d |  |
| 6 | **Testing** | 2026-11-17 → 2026-11-23 (+6d) | 2026-11-28 → 2026-12-02 (+4d) |  |  |  |
| SDR-ST-CON-P1-3250 | Testing ST GRP Pipes | 2026-11-17 → 2026-11-23 (+6d) | 2026-11-28 → 2026-12-02 (+4d) |  | 0.1d → 57.4d |  |
| 3 | **Backfilling** | 2026-11-28 → 2026-12-03 (+5d) | 2026-12-10 → 2026-12-16 (+6d) |  |  |  |
| SDR-ST-CON-P1-3670 | Backfilling ST GRP Pipes | 2026-11-28 → 2026-12-03 (+5d) | 2026-12-10 → 2026-12-16 (+6d) |  | 0.1d → 57.4d |  |
| 3 | **ROAD-01 From 0 to 470 m (3)** | 2026-08-31 → 2026-09-28 (+28d) | 2026-11-23 → 2026-12-19 (+26d) |  |  |  |
| 1 | **Road crossing Ducts & Drawpits** | 2026-08-31 → 2026-09-28 (+28d) | 2026-11-23 → 2026-12-19 (+26d) |  |  |  |
| 1 | **Excavation** | 2026-08-31 → 2026-09-28 (+28d) | 2026-09-26 → 2026-10-21 (+25d) |  |  |  |
| SDR-ST-CON-P1-1510 | Excavation for GRP Pipes Section 1 | 2026-08-31 → 2026-09-28 (+28d) | 2026-09-26 → 2026-10-21 (+25d) |  | 7d → 15.8d |  |
| 7 | **bedding Works** | 2026-09-26 → 2026-10-22 (+26d) | 2026-10-20 → 2026-11-15 (+26d) |  |  |  |
| SDR-ST-CON-P1-2180 | Sand bedding for GRP Pipes | 2026-09-26 → 2026-10-22 (+26d) | 2026-10-20 → 2026-11-15 (+26d) |  | 7d → 15.8d |  |

| ID | Task | Start | Finish | Total float | Predecessors |
| --- | --- | --- | --- | --- | --- |
| 2 | **Pipes Laying** | 2026-10-20 → 2026-11-16 (+27d) | 2026-11-04 → 2026-11-30 (+26d) |  |  |
| SDR-ST-CON-P1-2930 | Install ST GRP Pipes | 2026-10-20 → 2026-11-16 (+27d) | 2026-11-04 → 2026-11-30 (+26d) | 7d → 15.8d |  |
| 6 | **Testing** | 2026-11-04 → 2026-12-01 (+27d) | 2026-11-11 → 2026-12-07 (+26d) |  |  |
| SDR-ST-CON-P1-3510 | Testing ST GRP Pipes | 2026-11-04 → 2026-12-01 (+27d) | 2026-11-11 → 2026-12-07 (+26d) | 7d → 15.8d |  |
| 3 | **Backfilling** | 2026-11-11 → 2026-12-08 (+27d) | 2026-11-23 → 2026-12-19 (+26d) |  |  |
| SDR-ST-CON-P1-3760 | Backfilling ST GRP Pipes | 2026-11-11 → 2026-12-08 (+27d) | 2026-11-23 → 2026-12-19 (+26d) | 7d → 15.8d |  |
| 4 | **ROAD-01 N (1)** | 2026-08-31 → 2026-09-28 (+28d) | 2026-11-21 → 2026-12-16 (+25d) |  |  |
| 1 | **Road crossing Ducts & Drawpits** | 2026-08-31 → 2026-09-28 (+28d) | 2026-11-21 → 2026-12-16 (+25d) |  |  |
| 1 | **Excavation** | 2026-08-31 → 2026-09-28 (+28d) | 2026-09-26 → 2026-10-21 (+25d) |  |  |
| SDR-ST-CON-P1-1710 | Excavation for GRP Pipes Section 1 | 2026-08-31 → 2026-09-28 (+28d) | 2026-09-26 → 2026-10-21 (+25d) | 9d → 17.8d |  |
| 7 | **bedding Works** | 2026-09-26 → 2026-10-22 (+26d) | 2026-10-20 → 2026-11-15 (+26d) |  |  |
| SDR-ST-CON-P1-2360 | Sand bedding for GRP Pipes | 2026-09-26 → 2026-10-22 (+26d) | 2026-10-20 → 2026-11-15 (+26d) | 9d → 17.8d |  |
| 2 | **Pipes Laying** | 2026-10-20 → 2026-11-16 (+27d) | 2026-11-01 → 2026-11-26 (+25d) |  |  |
| SDR-ST-CON-P1-3090 | Install ST GRP Pipes | 2026-10-20 → 2026-11-16 (+27d) | 2026-11-01 → 2026-11-26 (+25d) | 9d → 17.8d |  |
| 6 | **Testing** | 2026-11-01 → 2026-11-28 (+27d) | 2026-11-12 → 2026-12-08 (+26d) |  |  |
| SDR-ST-CON-P1-3520 | Testing ST GRP Pipes | 2026-11-01 → 2026-11-28 (+27d) | 2026-11-12 → 2026-12-08 (+26d) | 9d → 17.8d |  |
| 3 | **Backfilling** | 2026-11-12 → 2026-12-09 (+27d) | 2026-11-21 → 2026-12-16 (+25d) |  |  |
| SDR-ST-CON-P1-3930 | Backfilling ST GRP Pipes | 2026-11-12 → 2026-12-09 (+27d) | 2026-11-21 → 2026-12-16 (+25d) | 9d → 17.8d |  |
| 11 | **Ring Main Unit** | 2027-04-03 → 2027-06-06 (+64d) | 2027-06-17 → 2027-07-17 (+30d) |  |  |
| 1 | **Leveling** | 2027-04-03 → 2027-06-06 (+64d) | 2027-04-26 → 2027-06-28 (+63d) |  |  |
| SDR-ST-CON-P1-5840 | Ring Main Unit leveling | 2027-04-03 → 2027-06-06 (+64d) | 2027-04-26 → 2027-06-28 (+63d) | 0d → 18d | SDR-ST-CON-P1-5780, SDR-ST-CON-P3-1460, SDR-ST-CON-P1-6080, SDR-ST-CON-P1-3900 → SDR-ST-CON-P1-5780, SDR-ST-CON-P3-1460 SS, SDR-ST-CON-P1-6080, SDR-ST-CON-P1-3900 |
| 2 | **Lean Concrete** | 2027-04-26 → 2027-06-24 (+59d) | 2027-05-25 → 2027-07-17 (+53d) |  |  |
| SDR-ST-CON-P1-5890 | Ring Main Unit Lean Concrete | 2027-04-26 → 2027-06-24 (+59d) | 2027-05-25 → 2027-07-17 (+53d) | 5.6d → 18d | SDR-ST-CON-P1-5840, SDR-ST-CON-P1-4070 → SDR-ST-CON-P1-5840 SS+16d, SDR-ST-CON-P1-4070 |
| 3 | **Installation** | 2027-05-25 → 2027-06-24 (+30d) | 2027-06-17 → 2027-07-17 (+30d) |  |  |
| SDR-ST-CON-P1-5920 | Ring Main Unit installation for Street Lighting | 2027-05-25 → 2027-06-24 (+30d) | 2027-06-17 → 2027-07-17 (+30d) | 5.6d → 18d | SDR-ST-CON-P1-5890, SDR-ST-MILS-1080, SDR-ST-MILS-1060, SDR-ST-CON-P1-5800 → SDR-ST-CON-P1-5890 FF, SDR-ST-MILS-1080, SDR-ST-MILS-1060, SDR-ST-CON-P1-5800 |
| 12 | **Feeder Pillars** | 2027-04-26 → 2027-06-05 (+40d) | 2027-07-12 → 2027-06-29 (-13d) |  |  |
| 1 | **Leveling** | 2027-04-26 → 2027-06-05 (+40d) | 2027-05-26 → 2027-06-29 (+34d) |  |  |
| SDR-ST-CON-P1-5880 | Feeder Pillars Leveling | 2027-04-26 → 2027-06-05 (+40d) | 2027-05-26 → 2027-06-29 (+34d) | 0d → 20.6d | SDR-ST-CON-P1-5840, SDR-ST-CON-P1-4320, SDR-ST-CON-P1-4010, SDR-ST-CON-P1-4250, SDR-ST-CON-P1-4000 → SDR-ST-CON-P1-5840 FF, SDR-ST-CON-P1-4320, SDR-ST-CON-P1-4010, SDR-ST-CON-P1-4250 FF, SDR-ST-CON-P1-4000 |
| 2 | **Lean Concrete** | 2027-05-26 → 2027-06-06 (+11d) | 2027-06-19 → 2027-06-29 (+10d) |  |  |
| SDR-ST-CON-P1-5930 | Feeder Pillars Lean Concrete | 2027-05-26 → 2027-06-06 (+11d) | 2027-06-19 → 2027-06-29 (+10d) | 0d → 20.6d | SDR-ST-CON-P1-5880, SDR-ST-MILS-1070, SDR-ST-MILS-1080, SDR-ST-CON-P3-1500 → SDR-ST-CON-P1-5880 FF, SDR-ST-MILS-1070, SDR-ST-MILS-1080, SDR-ST-CON-P3-1500 |
| 3 | **Installation** | 2027-06-19 → 2027-06-06 (-13d) | 2027-07-12 → 2027-06-29 (-13d) |  |  |
| SDR-ST-CON-P1-6000 | Feeder Pillars Installation | 2027-06-19 → 2027-06-06 (-13d) | 2027-07-12 → 2027-06-29 (-13d) | 0d → 20.6d | SDR-ST-CON-P1-5930 → SDR-ST-CON-P1-5930 FF |
| 13 | **KWH Frame** | 2027-05-29 → 2027-06-27 (+29d) | 2027-07-17 → 2027-08-02 (+16d) |  |  |
| 1 | **Leveling** | 2027-05-29 → 2027-06-27 (+29d) | 2027-06-20 → 2027-07-20 (+30d) |  |  |
| SDR-ST-CON-P1-5940 | KWH meter mounting frame Leveling | 2027-05-29 → 2027-06-27 (+29d) | 2027-06-20 → 2027-07-20 (+30d) | 3d → 3.5d | SDR-ST-CON-P1-5880, SDR-ST-CO-1010 → SDR-ST-CON-P1-5880 FF, SDR-ST-CO-1010 SS |
| 2 | **Lean Concrete** | 2027-06-21 → 2027-07-06 (+15d) | 2027-07-07 → 2027-07-24 (+17d) |  |  |
| SDR-ST-CON-P1-6010 | KWH meter mounting frame Lean Concrete | 2027-06-21 → 2027-07-06 (+15d) | 2027-07-07 → 2027-07-24 (+17d) | 3d → 4.5d | SDR-ST-CON-P1-5940 → SDR-ST-CON-P1-5940 SS+8d |
| 3 | **Installation** | 2027-07-08 → 2027-07-24 (+16d) | 2027-07-17 → 2027-08-02 (+16d) |  |  |
| SDR-ST-CON-P1-6040 | KWH meter mounting frame installation | 2027-07-08 → 2027-07-24 (+16d) | 2027-07-17 → 2027-08-02 (+16d) | 3d → 4.5d |  |
| 14 | **Street Lighting Sub-station** | 2027-06-05 → 2027-06-27 (+22d) | 2027-07-17 → 2027-07-29 (+12d) |  |  |
| 1 | **Leveling** | 2027-06-05 → 2027-06-27 (+22d) | 2027-06-27 → 2027-07-20 (+23d) |  |  |
| SDR-ST-CON-P1-5950 | Unit Substation Leveling Part 1 | 2027-06-05 → 2027-06-27 (+22d) | 2027-06-27 → 2027-07-20 (+23d) | 3d → 3.5d | SDR-ST-CON-P1-5940 SS+6d → SDR-ST-CON-P1-5940 SS |
| SDR-ST-CON-P1-5960 | Unit Substation Leveling Part 2 | 2027-06-05 → 2027-06-27 (+22d) | 2027-06-27 → 2027-07-20 (+23d) | 3d → 3.5d |  |
| 2 | **Lean Concrete** | 2027-06-28 → 2027-07-15 (+17d) | 2027-07-11 → 2027-07-29 (+18d) |  |  |
| SDR-ST-CON-P1-6020 | Unit Substation Lean Concrete | 2027-06-28 → 2027-07-15 (+17d) | 2027-07-11 → 2027-07-29 (+18d) | 3d → 3.5d | SDR-ST-CON-P1-5950, SDR-ST-CON-P1-5960 → SDR-ST-CON-P1-5950 SS, SDR-ST-CON-P1-5960 SS+16d |
| 3 | **Installation** | 2027-07-12 → 2027-07-24 (+12d) | 2027-07-17 → 2027-07-29 (+12d) |  |  |
| SDR-ST-CON-P1-6050 | Unit Substation Install for Street Lighting | 2027-07-12 → 2027-07-24 (+12d) | 2027-07-17 → 2027-07-29 (+12d) | 3d → 3.5d | SDR-ST-CON-P1-6020 → SDR-ST-CON-P1-6020 FF |
| 8 | **ROAD - 02** | 2026-09-08 → 2026-09-28 (+20d) | 2027-07-17 → 2027-07-28 (+11d) |  |  |
| 10 | **Excavation** | 2026-09-08 → 2026-09-28 (+20d) | 2026-11-04 → 2026-11-22 (+18d) |  |  |
| SDR-ST-CON-P1-1310 | Excavation for LV Cable trench Section 1 | 2026-09-08 → 2026-09-28 (+20d) | 2026-09-27 → 2026-10-14 (+17d) | 0d → 25.6d |  |
| SDR-ST-CON-P1-1780 | Excavation for LV Cable trench Section 2 | 2026-09-29 → 2026-10-18 (+19d) | 2026-10-17 → 2026-11-03 (+17d) | 6.9d → 54.8d |  |
| SDR-ST-CON-P1-2350 | Excavation for LV Cable trench Section 3 | 2026-10-17 → 2026-11-04 (+18d) | 2026-11-04 → 2026-11-22 (+18d) | 6.9d → 54.8d |  |
| 11 | **Install Footings** | 2026-11-04 → 2026-11-23 (+19d) | 2026-11-22 → 2026-12-09 (+17d) |  |  |
| SDR-ST-CON-P1-2860 | Install Footings | 2026-11-04 → 2026-11-23 (+19d) | 2026-11-22 → 2026-12-09 (+17d) | 6.9d → 54.8d |  |
| 12 | **Backfilling** | 2026-11-22 → 2026-12-10 (+18d) | 2026-12-10 → 2026-12-28 (+18d) |  |  |
| SDR-ST-CON-P1-3500 | Backfilling over LV Cables of Street lighting | 2026-11-22 → 2026-12-10 (+18d) | 2026-12-10 → 2026-12-28 (+18d) | 6.9d → 54.8d |  |
| 13 | **Install pole** | 2026-12-10 → 2026-12-29 (+19d) | 2026-12-29 → 2027-01-16 (+18d) |  |  |
| SDR-ST-CON-P1-4260 | Install Pole Part 1 | 2026-12-10 → 2026-12-29 (+19d) | 2026-12-20 → 2027-01-06 (+17d) | 6.9d → 54.8d |  |
| SDR-ST-CON-P1-4570 | Install Pole Part 2 | 2026-12-20 → 2027-01-07 (+18d) | 2026-12-29 → 2027-01-16 (+18d) | 6.9d → 54.8d |  |
| 10 | **Excavation** | 2026-09-08 → 2026-09-28 (+20d) | 2026-11-03 → 2026-11-21 (+18d) |  |  |
| SDR-ST-CON-P1-1260 | Excavation for LV Cable trench Section 1 | 2026-09-08 → 2026-09-28 (+20d) | 2026-09-27 → 2026-10-14 (+17d) | 0d → 16.8d |  |
| SDR-ST-CON-P1-1760 | Excavation for LV Cable trench Section 2 | 2026-09-29 → 2026-10-18 (+19d) | 2026-10-17 → 2026-11-03 (+17d) | 1.5d → 16.8d |  |
| SDR-ST-CON-P1-2260 | Excavation for LV Cable trench Section 3 | 2026-10-17 → 2026-11-04 (+18d) | 2026-11-03 → 2026-11-21 (+18d) | 1.5d → 16.8d |  |
| 11 | **Install Footings** | 2026-11-03 → 2026-11-22 (+19d) | 2026-11-19 → 2026-12-07 (+18d) |  |  |
| SDR-ST-CON-P1-2770 | Install Footings | 2026-11-03 → 2026-11-22 (+19d) | 2026-11-19 → 2026-12-07 (+18d) | 1.5d → 16.8d |  |
| 12 | **Backfilling** | 2026-11-19 → 2026-12-08 (+19d) | 2026-12-06 → 2026-12-23 (+17d) |  |  |
| SDR-ST-CON-P1-3350 | Backfilling over LV Cables of Street lighting | 2026-11-19 → 2026-12-08 (+19d) | 2026-12-06 → 2026-12-23 (+17d) | 1.5d → 16.8d |  |
| 13 | **Install pole** | 2026-12-06 → 2026-12-24 (+18d) | 2026-12-24 → 2027-01-31 (+38d) |  |  |
| SDR-ST-CON-P1-3940 | Install Pole Part 1 | 2026-12-06 → 2026-12-24 (+18d) | 2026-12-15 → 2027-01-02 (+18d) | 1.5d → 16.8d |  |
| SDR-ST-CON-P1-4400 | Install Pole Part 2 | 2026-12-15 → 2027-01-21 (+37d) | 2026-12-24 → 2027-01-31 (+38d) | 1.5d → 0.6d |  |

| ID | Task | Start | Finish | Total float | Predecessors |
| --- | --- | --- | --- | --- | --- |
| 10 | **Excavation** | 2026-09-17 → 2026-09-28 (+11d) | 2026-11-09 → 2026-11-17 (+8d) |  |  |
| SDR-ST-CON-P1-1360 | Excavation for LV Cable trench Section 1 | 2026-09-17 → 2026-09-28 (+11d) | 2026-10-05 → 2026-10-13 (+8d) | 4d → 30.8d |  |
| SDR-ST-CON-P1-1900 | Excavation for LV Cable trench Section 2 | 2026-10-07 → 2026-10-17 (+10d) | 2026-10-24 → 2026-11-01 (+8d) | 4d → 38.9d |  |
| SDR-ST-CON-P1-2400 | Excavation for LV Cable trench Section 3 | 2026-10-24 → 2026-11-02 (+9d) | 2026-11-09 → 2026-11-17 (+8d) | 4d → 38.9d |  |
| 11 | **Install Footings** | 2026-11-09 → 2026-11-18 (+9d) | 2026-11-25 → 2026-12-03 (+8d) |  |  |
| SDR-ST-CON-P1-2840 | Install Footings | 2026-11-09 → 2026-11-18 (+9d) | 2026-11-25 → 2026-12-03 (+8d) | 4d → 38.9d |  |
| 12 | **Backfilling** | 2026-11-25 → 2026-12-05 (+10d) | 2026-12-12 → 2026-12-20 (+8d) |  |  |
| SDR-ST-CON-P1-3470 | Backfilling over LV Cables of Street lighting | 2026-11-25 → 2026-12-05 (+10d) | 2026-12-12 → 2026-12-20 (+8d) | 4d → 38.9d |  |
| 13 | **Install pole** | 2026-12-12 → 2026-12-21 (+9d) | 2027-01-12 → 2027-01-20 (+8d) |  |  |
| SDR-ST-CON-P1-4080 | Install Pole Part 1 | 2026-12-12 → 2026-12-21 (+9d) | 2026-12-27 → 2027-01-04 (+8d) | 4d → 38.9d |  |
| SDR-ST-CON-P1-4610 | Install Pole Part 2 | 2026-12-27 → 2027-01-05 (+9d) | 2027-01-12 → 2027-01-20 (+8d) | 4d → 38.9d |  |
| 1 | **Road Crossing & Drawpits** | 2026-09-08 → 2026-09-28 (+20d) | 2026-12-09 → 2026-12-27 (+18d) |  |  |
| 2 | **ROAD - 02** | 2026-09-08 → 2026-09-28 (+20d) | 2026-12-09 → 2026-12-27 (+18d) |  |  |
| 1 | **Road crossing Ducts & Drawpits** | 2026-09-08 → 2026-09-28 (+20d) | 2026-12-09 → 2026-12-27 (+18d) |  |  |
| 1 | **Excavation** | 2026-09-08 → 2026-09-28 (+20d) | 2026-10-04 → 2026-10-21 (+17d) |  |  |
| SDR-ST-CON-P1-1320 | Excavation for GRP Pipes Section 1 | 2026-09-08 → 2026-09-28 (+20d) | 2026-10-04 → 2026-10-21 (+17d) | 9.2d → 57.5d |  |
| 7 | **bedding Works** | 2026-10-04 → 2026-10-22 (+18d) | 2026-10-25 → 2026-11-11 (+17d) |  |  |
| SDR-ST-CON-P1-1950 | Sand bedding for GRP Pipes | 2026-10-04 → 2026-10-22 (+18d) | 2026-10-25 → 2026-11-11 (+17d) | 9.2d → 57.5d |  |
| 2 | **Pipes Laying** | 2026-10-25 → 2026-11-12 (+18d) | 2026-11-12 → 2026-11-30 (+18d) |  |  |
| SDR-ST-CON-P1-2560 | Install ST GRP Pipes | 2026-10-25 → 2026-11-12 (+18d) | 2026-11-12 → 2026-11-30 (+18d) | 9.2d → 57.5d |  |
| 6 | **Testing** | 2026-11-12 → 2026-12-01 (+19d) | 2026-11-26 → 2026-12-14 (+18d) |  |  |
| SDR-ST-CON-P1-3200 | Testing ST GRP Pipes | 2026-11-12 → 2026-12-01 (+19d) | 2026-11-26 → 2026-12-14 (+18d) | 9.2d → 57.5d |  |
| 3 | **Backfilling** | 2026-11-26 → 2026-12-15 (+19d) | 2026-12-09 → 2026-12-27 (+18d) |  |  |
| SDR-ST-CON-P1-3700 | Backfilling ST GRP Pipes | 2026-11-26 → 2026-12-15 (+19d) | 2026-12-09 → 2026-12-27 (+18d) | 9.2d → 57.5d |  |
| 1 | **Road crossing Ducts & Drawpits** | 2026-09-08 → 2026-09-28 (+20d) | 2026-12-06 → 2026-12-23 (+17d) |  |  |
| 1 | **Excavation** | 2026-09-08 → 2026-09-28 (+20d) | 2026-10-04 → 2026-10-21 (+17d) |  |  |
| SDR-ST-CON-P1-1270 | Excavation for GRP Pipes Section 1 | 2026-09-08 → 2026-09-28 (+20d) | 2026-10-04 → 2026-10-21 (+17d) | 13d → 60.5d |  |
| 7 | **bedding Works** | 2026-10-04 → 2026-10-22 (+18d) | 2026-10-24 → 2026-11-10 (+17d) |  |  |
| SDR-ST-CON-P1-1870 | Sand bedding for GRP Pipes | 2026-10-04 → 2026-10-22 (+18d) | 2026-10-24 → 2026-11-10 (+17d) | 13d → 60.5d |  |
| 2 | **Pipes Laying** | 2026-10-24 → 2026-11-11 (+18d) | 2026-11-09 → 2026-11-26 (+17d) |  |  |
| SDR-ST-CON-P1-2470 | Install ST GRP Pipes | 2026-10-24 → 2026-11-11 (+18d) | 2026-11-09 → 2026-11-26 (+17d) | 13d → 60.5d |  |
| 6 | **Testing** | 2026-11-09 → 2026-11-28 (+19d) | 2026-11-19 → 2026-12-07 (+18d) |  |  |
| SDR-ST-CON-P1-2970 | Testing ST GRP Pipes | 2026-11-09 → 2026-11-28 (+19d) | 2026-11-19 → 2026-12-07 (+18d) | 13d → 60.5d |  |
| 3 | **Backfilling** | 2026-11-19 → 2026-12-08 (+19d) | 2026-12-06 → 2026-12-23 (+17d) |  |  |
| SDR-ST-CON-P1-3360 | Backfilling ST GRP Pipes | 2026-11-19 → 2026-12-08 (+19d) | 2026-12-06 → 2026-12-23 (+17d) | 13d → 60.5d |  |
| 1 | **Road crossing Ducts & Drawpits** | 2026-09-17 → 2026-09-28 (+11d) | 2026-12-09 → 2026-12-17 (+8d) |  |  |
| 1 | **Excavation** | 2026-09-17 → 2026-09-28 (+11d) | 2026-10-13 → 2026-10-21 (+8d) |  |  |
| SDR-ST-CON-P1-1370 | Excavation for GRP Pipes Section 1 | 2026-09-17 → 2026-09-28 (+11d) | 2026-10-13 → 2026-10-21 (+8d) | 10d → 65.5d |  |
| 7 | **bedding Works** | 2026-10-13 → 2026-10-22 (+9d) | 2026-10-31 → 2026-11-08 (+8d) |  |  |
| SDR-ST-CON-P1-2060 | Sand bedding for GRP Pipes | 2026-10-13 → 2026-10-22 (+9d) | 2026-10-31 → 2026-11-08 (+8d) | 10d → 65.5d |  |
| 2 | **Pipes Laying** | 2026-10-31 → 2026-11-09 (+9d) | 2026-11-16 → 2026-11-24 (+8d) |  |  |
| SDR-ST-CON-P1-2600 | Install ST GRP Pipes | 2026-10-31 → 2026-11-09 (+9d) | 2026-11-16 → 2026-11-24 (+8d) | 10d → 65.5d |  |
| 6 | **Testing** | 2026-11-16 → 2026-11-25 (+9d) | 2026-11-25 → 2026-12-03 (+8d) |  |  |
| SDR-ST-CON-P1-3110 | Testing ST GRP Pipes | 2026-11-16 → 2026-11-25 (+9d) | 2026-11-25 → 2026-12-03 (+8d) | 10d → 65.5d |  |
| 3 | **Backfilling** | 2026-11-25 → 2026-12-05 (+10d) | 2026-12-09 → 2026-12-17 (+8d) |  |  |
| SDR-ST-CON-P1-3480 | Backfilling ST GRP Pipes | 2026-11-25 → 2026-12-05 (+10d) | 2026-12-09 → 2026-12-17 (+8d) | 10d → 65.5d |  |
| 11 | **Ring Main Unit** | 2027-04-11 → 2027-04-14 (+3d) | 2027-07-07 → 2027-07-26 (+19d) |  |  |
| 1 | **Leveling** | 2027-04-11 → 2027-04-14 (+3d) | 2027-05-04 → 2027-05-08 (+4d) |  |  |
| SDR-ST-CON-P1-5810 | Ring Main Unit leveling | 2027-04-11 → 2027-04-14 (+3d) | 2027-05-04 → 2027-05-08 (+4d) | 0d → 5.8d |  |
| 2 | **Lean Concrete** | 2027-05-04 → 2027-06-21 (+48d) | 2027-06-02 → 2027-07-14 (+42d) |  |  |
| SDR-ST-CON-P1-5850 | Ring Main Unit Lean Concrete | 2027-05-04 → 2027-06-21 (+48d) | 2027-06-02 → 2027-07-14 (+42d) | 0d → 2.5d | SDR-ST-CON-P1-5810, SDR-ST-CON-P1-5390 → SDR-ST-CON-P1-5810, SDR-ST-CON-P1-5390 FF |
| 3 | **Installation** | 2027-06-14 → 2027-07-03 (+19d) | 2027-07-07 → 2027-07-26 (+19d) |  |  |
| SDR-ST-CON-P1-5970 | Ring Main Unit installation for Street Lighting | 2027-06-14 → 2027-07-03 (+19d) | 2027-07-07 → 2027-07-26 (+19d) | 0d → 2.5d | SDR-ST-CON-P1-5850 FS+10d → SDR-ST-CON-P1-5850 SS+10d |
| 12 | **Feeder Pillars** | 2027-04-11 → 2027-04-14 (+3d) | 2027-07-13 → 2027-07-17 (+4d) |  |  |
| 1 | **Leveling** | 2027-04-11 → 2027-04-14 (+3d) | 2027-05-04 → 2027-05-08 (+4d) |  |  |
| SDR-ST-CON-P1-5820 | Feeder Pillars Leveling | 2027-04-11 → 2027-04-14 (+3d) | 2027-05-04 → 2027-05-08 (+4d) | 3.9d → 5.8d |  |
| 2 | **Lean Concrete** | 2027-05-04 → 2027-05-08 (+4d) | 2027-06-02 → 2027-06-06 (+4d) |  |  |
| SDR-ST-CON-P1-5860 | Feeder Pillars Lean Concrete | 2027-05-04 → 2027-05-08 (+4d) | 2027-06-02 → 2027-06-06 (+4d) | 6.9d → 5.8d |  |
| 3 | **Installation** | 2027-06-20 → 2027-06-23 (+3d) | 2027-07-13 → 2027-07-17 (+4d) |  |  |
| SDR-ST-CON-P1-5980 | Feeder Pillars Installation | 2027-06-20 → 2027-06-23 (+3d) | 2027-07-13 → 2027-07-17 (+4d) | 6.9d → 5.8d |  |
| 13 | **KWH Frame** | 2027-04-12 → 2027-04-15 (+3d) | 2027-06-27 → 2027-07-13 (+16d) |  |  |
| 1 | **Leveling** | 2027-04-12 → 2027-04-15 (+3d) | 2027-05-05 → 2027-05-09 (+4d) |  |  |
| SDR-ST-CON-P1-5830 | KWH meter mounting frame Leveling | 2027-04-12 → 2027-04-15 (+3d) | 2027-05-05 → 2027-05-09 (+4d) | 3.9d → 25.8d |  |
| 2 | **Lean Concrete** | 2027-05-05 → 2027-06-20 (+46d) | 2027-06-03 → 2027-07-13 (+40d) |  |  |
| SDR-ST-CON-P1-5870 | KWH meter mounting frame Lean Concrete | 2027-05-05 → 2027-06-20 (+46d) | 2027-06-03 → 2027-07-13 (+40d) | 9d → 13.6d |  |
| 3 | **Installation** | 2027-06-03 → 2027-06-20 (+17d) | 2027-06-27 → 2027-07-13 (+16d) |  |  |
| SDR-ST-CON-P1-5910 | KWH meter mounting frame installation | 2027-06-03 → 2027-06-20 (+17d) | 2027-06-27 → 2027-07-13 (+16d) | 9d → 13.6d | SDR-ST-CON-P1-5870 → SDR-ST-CON-P1-5870 FF |
| 14 | **Street Lighting Sub-station** | 2027-05-05 → 2027-05-09 (+4d) | 2027-07-17 → 2027-07-28 (+11d) |  |  |
| 1 | **Leveling** | 2027-05-05 → 2027-05-09 (+4d) | 2027-06-03 → 2027-06-07 (+4d) |  |  |
| SDR-ST-CON-P1-5900 | Unit Substation Leveling | 2027-05-05 → 2027-05-09 (+4d) | 2027-06-03 → 2027-06-07 (+4d) | 3.9d → 25.8d |  |

| ID | Task | Start | Finish | Complete | Total float | Predecessors |
| --- | --- | --- | --- | --- | --- | --- |
| 2 | **Lean Concrete** | 2027-06-03 → 2027-06-27 (+24d) | 2027-06-27 → 2027-07-20 (+23d) |  |  |  |
| SDR-ST-CON-P1-5990 | Unit Substation Lean Concrete | 2027-06-03 → 2027-06-27 (+24d) | 2027-06-27 → 2027-07-20 (+23d) |  | 3.9d → 8.5d | SDR-ST-CON-P1-5900, SDR-ST-CO-1010 → SDR-ST-CON-P1-5900, SDR-ST-CO-1010 SS |
| 3 | **Installation** | 2027-06-27 → 2027-07-08 (+11d) | 2027-07-17 → 2027-07-28 (+11d) |  |  |  |
| SDR-ST-CON-P1-6030 | Unit Substation Install for Street Lighting | 2027-06-27 → 2027-07-08 (+11d) | 2027-07-17 → 2027-07-28 (+11d) |  | 3.9d → 8.5d | SDR-ST-CON-P1-5990 → SDR-ST-CON-P1-5990 SS+10d |
| 5 | **TELECOMMUNICATIONS WORKS** | 2026-08-31 → 2026-08-20 (-11d) | 2027-02-07 → 2027-03-08 (+29d) |  |  |  |
| 3 | **ROAD - 01** | 2026-08-31 → 2026-08-20 (-11d) | 2027-02-07 → 2027-03-08 (+29d) |  |  |  |
| 4 | **ROAD-01 N 1 (2X3)X50 mm MH-15 to MH-16** | 2026-08-31 → 2026-08-20 (-11d) | 2027-01-20 → 2027-02-21 (+32d) |  |  |  |
| 3 | **Ducts** | 2026-08-31 → 2026-08-20 (-11d) | 2026-12-30 → 2026-12-31 (+1d) |  |  |  |
| 2 | **Excavation** | 2026-08-31 → 2026-08-20 (-11d) | 2026-10-20 → 2026-10-21 (+1d) |  |  |  |
| SDR-ST-CON-P1-1690 | Excavation for telecom trench Section 1 | 2026-08-31 → 2026-08-20 A (-11d) | 2026-09-26 → 2026-08-31 A (-26d) | 0% → 100% | 1.5d → none |  |
| SDR-ST-CON-P1-2340 | Excavation for telecom trench Section 2 | 2026-09-26 → 2026-09-28 (+2d) | 2026-10-20 → 2026-10-21 (+1d) |  | 1.5d → 42.9d |  |
| 5 | **Pipe laying** | 2026-10-20 → 2026-10-22 (+2d) | 2026-11-12 → 2026-11-14 (+2d) |  |  |  |
| SDR-ST-CON-P1-3070 | HDPE Pipes for Telecom Installation | 2026-10-20 → 2026-10-22 (+2d) | 2026-11-12 → 2026-11-14 (+2d) |  | 1.5d → 42.9d |  |
| 6 | **Backfilling** | 2026-11-12 → 2026-11-15 (+3d) | 2026-12-06 → 2026-12-07 (+1d) |  |  |  |
| SDR-ST-CON-P1-3680 | Backfilling over HDPE Telecom Pipes | 2026-11-12 → 2026-11-15 (+3d) | 2026-12-06 → 2026-12-07 (+1d) |  | 1.5d → 42.9d |  |
| 7 | **Pulling Cable** | 2026-12-06 → 2026-12-08 (+2d) | 2026-12-30 → 2026-12-31 (+1d) |  |  |  |
| SDR-ST-CON-P1-4310 | Pulling Cable | 2026-12-06 → 2026-12-08 (+2d) | 2026-12-30 → 2026-12-31 (+1d) |  | 1.5d → 42.9d |  |
| 4 | **Manholes** | 2026-08-31 → 2026-09-28 (+28d) | 2027-01-20 → 2027-02-21 (+32d) |  |  |  |
| 1 | **Excavation** | 2026-08-31 → 2026-09-28 (+28d) | 2026-10-20 → 2026-11-15 (+26d) |  |  |  |
| SDR-ST-CON-P1-1680 | Excavation for Telecom Manhole Section 1 | 2026-08-31 → 2026-09-28 (+28d) | 2026-09-26 → 2026-10-21 (+25d) |  | 2.6d → 25.8d |  |
| SDR-ST-CON-P1-2370 | Excavation for Telecom Manhole Section 2 | 2026-09-26 → 2026-10-22 (+26d) | 2026-10-20 → 2026-11-15 (+26d) |  | 2.6d → 25.8d |  |
| 2 | **Bedding Work** | 2026-10-20 → 2026-11-16 (+27d) | 2026-11-12 → 2026-12-08 (+26d) |  |  |  |
| SDR-ST-CON-P1-3080 | Sand bedding for Telecom Manhole | 2026-10-20 → 2026-11-16 (+27d) | 2026-11-12 → 2026-12-08 (+26d) |  | 2.6d → 25.8d |  |
| 3 | **Install Manholes** | 2026-11-12 → 2026-12-09 (+27d) | 2026-12-06 → 2026-12-31 (+25d) |  |  |  |
| SDR-ST-CON-P1-3690 | Installation of Telecom Manhole | 2026-11-12 → 2026-12-09 (+27d) | 2026-12-06 → 2026-12-31 (+25d) |  | 2.6d → 25.8d |  |
| 4 | **Testting** | 2026-12-06 → 2027-01-02 (+27d) | 2026-12-29 → 2027-01-24 (+26d) |  |  |  |
| SDR-ST-CON-P1-4360 | Telecom Manhole finishing works | 2026-12-06 → 2027-01-02 (+27d) | 2026-12-29 → 2027-01-24 (+26d) |  | 2.6d → 25.8d |  |
| 5 | **Backfilling** | 2026-12-29 → 2027-01-25 (+27d) | 2027-01-20 → 2027-02-21 (+32d) |  |  |  |
| SDR-ST-CON-P1-4880 | Backfilling over Telecom Manhole | 2026-12-29 → 2027-01-25 (+27d) | 2027-01-20 → 2027-02-21 (+32d) |  | 2.6d → 25.8d |  |
| 2 | **ROAD-01 From 0 to 470 m (3) (2X3)X50 mm MH-12 to MH-14** | 2026-08-31 → 2026-08-20 (-11d) | 2027-01-23 → 2027-02-25 (+33d) |  |  |  |
| 3 | **Ducts** | 2026-08-31 → 2026-08-20 (-11d) | 2027-01-02 → 2027-01-03 (+1d) |  |  |  |
| 2 | **Excavation** | 2026-08-31 → 2026-08-20 (-11d) | 2026-10-20 → 2026-10-21 (+1d) |  |  |  |
| SDR-ST-CON-P1-1530 | Excavation for telecom trench Section 1 | 2026-08-31 → 2026-08-20 A (-11d) | 2026-09-26 → 2026-08-31 A (-26d) | 0% → 100% | 0.6d → none |  |
| SDR-ST-CON-P1-2190 | Excavation for telecom trench Section 2 | 2026-09-26 → 2026-09-28 (+2d) | 2026-10-20 → 2026-10-21 (+1d) |  | 10.5d → 56.8d |  |
| 5 | **Pipe laying** | 2026-10-20 → 2026-10-22 (+2d) | 2026-11-14 → 2026-11-15 (+1d) |  |  |  |
| SDR-ST-CON-P1-2940 | HDPE Pipes for Telecom Installation | 2026-10-20 → 2026-10-22 (+2d) | 2026-11-14 → 2026-11-15 (+1d) |  | 10.5d → 56.8d |  |
| 6 | **Backfilling** | 2026-11-14 → 2026-11-16 (+2d) | 2026-12-08 → 2026-12-09 (+1d) |  |  |  |
| SDR-ST-CON-P1-3770 | Backfilling over HDPE Telecom Pipes | 2026-11-14 → 2026-11-16 (+2d) | 2026-12-08 → 2026-12-09 (+1d) |  | 10.5d → 56.8d |  |
| 7 | **Pulling Cable** | 2026-12-08 → 2026-12-10 (+2d) | 2027-01-02 → 2027-01-03 (+1d) |  |  |  |
| SDR-ST-CON-P1-4370 | Pulling Cable | 2026-12-08 → 2026-12-10 (+2d) | 2027-01-02 → 2027-01-03 (+1d) |  | 10.5d → 56.8d |  |
| 4 | **Manholes** | 2026-08-31 → 2026-09-28 (+28d) | 2027-01-23 → 2027-02-25 (+33d) |  |  |  |
| 1 | **Excavation** | 2026-08-31 → 2026-09-28 (+28d) | 2026-10-20 → 2026-11-15 (+26d) |  |  |  |
| SDR-ST-CON-P1-1520 | Excavation for Telecom Manhole Section 1 | 2026-08-31 → 2026-09-28 (+28d) | 2026-09-26 → 2026-10-21 (+25d) |  | 0.6d → 38.8d |  |
| SDR-ST-CON-P1-2200 | Excavation for Telecom Manhole Section 2 | 2026-09-26 → 2026-10-22 (+26d) | 2026-10-20 → 2026-11-15 (+26d) |  | 0.6d → 38.8d |  |
| 2 | **Bedding Work** | 2026-10-20 → 2026-11-16 (+27d) | 2026-11-11 → 2026-12-07 (+26d) |  |  |  |
| SDR-ST-CON-P1-2950 | Sand bedding for Telecom Manhole | 2026-10-20 → 2026-11-16 (+27d) | 2026-11-11 → 2026-12-07 (+26d) |  | 0.6d → 38.8d |  |
| 3 | **Install Manholes** | 2026-11-11 → 2026-12-08 (+27d) | 2026-12-05 → 2026-12-30 (+25d) |  |  |  |
| SDR-ST-CON-P1-3780 | Installation of Telecom Manhole | 2026-11-11 → 2026-12-08 (+27d) | 2026-12-05 → 2026-12-30 (+25d) |  | 0.6d → 38.8d |  |
| 4 | **Testting** | 2026-12-05 → 2026-12-31 (+26d) | 2026-12-29 → 2027-01-24 (+26d) |  |  |  |
| SDR-ST-CON-P1-4630 | Telecom Manhole finishing works | 2026-12-05 → 2026-12-31 (+26d) | 2026-12-29 → 2027-01-24 (+26d) |  | 0.6d → 38.8d |  |
| 5 | **Backfilling** | 2026-12-29 → 2027-01-25 (+27d) | 2027-01-23 → 2027-02-25 (+33d) |  |  |  |
| SDR-ST-CON-P1-5140 | Backfilling over Telecom Manhole | 2026-12-29 → 2027-01-25 (+27d) | 2027-01-23 → 2027-02-25 (+33d) |  | 0.6d → 38.8d |  |
| 1 | **ROAD-01 From 470 to 1125 m (6) (2X3)X50 mm MH-10 to MH-11** | 2026-09-08 → 2026-08-20 (-19d) | 2027-01-31 → 2027-03-08 (+36d) |  |  |  |
| 3 | **Ducts** | 2026-09-08 → 2026-08-20 (-19d) | 2027-01-06 → 2027-01-05 (-1d) |  |  |  |
| 2 | **Excavation** | 2026-09-08 → 2026-08-20 (-19d) | 2026-10-28 → 2026-10-27 (-1d) |  |  |  |
| SDR-ST-CON-P1-1240 | Excavation for telecom trench Section 1 | 2026-09-08 → 2026-08-20 A (-19d) | 2026-10-04 → 2026-08-31 A (-34d) | 0% → 100% | 1.3d → none |  |
| SDR-ST-CON-P1-1790 | Excavation for telecom trench Section 2 |  | 2026-10-28 → 2026-10-27 (-1d) |  | 3.3d → 41.8d |  |
| 5 | **Pipe laying** |  | 2026-11-22 → 2026-11-21 (-1d) |  |  |  |
| SDR-ST-CON-P1-2510 | HDPE Pipes for Telecom Installation |  | 2026-11-22 → 2026-11-21 (-1d) |  | 3.3d → 41.8d |  |
| 6 | **Backfilling** |  | 2026-12-13 → 2026-12-12 (-1d) |  |  |  |
| SDR-ST-CON-P1-3230 | Backfilling over HDPE Telecom Pipes |  | 2026-12-13 → 2026-12-12 (-1d) |  | 3.3d → 41.8d |  |
| 7 | **Pulling Cable** |  | 2027-01-06 → 2027-01-05 (-1d) |  |  |  |
| SDR-ST-CON-P1-4020 | Pulling Cable |  | 2027-01-06 → 2027-01-05 (-1d) |  | 3.3d → 41.8d |  |
| 4 | **Manholes** | 2026-09-08 → 2026-10-04 (+26d) | 2027-01-31 → 2027-03-08 (+36d) |  |  |  |
| 1 | **Excavation** | 2026-09-08 → 2026-10-04 (+26d) | 2026-10-28 → 2026-11-21 (+24d) |  |  |  |
| SDR-ST-CON-P1-1230 | Excavation for Telecom Manhole Section 1 | 2026-09-08 → 2026-10-04 (+26d) | 2026-10-04 → 2026-10-27 (+23d) |  | 1.3d → 18.8d |  |
| SDR-ST-CON-P1-1800 | Excavation for Telecom Manhole Section 2 | 2026-10-04 → 2026-10-28 (+24d) | 2026-10-28 → 2026-11-21 (+24d) |  | 1.3d → 18.8d |  |
| 2 | **Bedding Work** | 2026-10-28 → 2026-11-22 (+25d) | 2026-11-19 → 2026-12-13 (+24d) |  |  |  |
| SDR-ST-CON-P1-2520 | Sand bedding for Telecom Manhole | 2026-10-28 → 2026-11-22 (+25d) | 2026-11-19 → 2026-12-13 (+24d) |  | 1.3d → 18.8d |  |
| 3 | **Install Manholes** | 2026-11-19 → 2026-12-14 (+25d) | 2026-12-13 → 2027-01-05 (+23d) |  |  |  |

| ID | Task | Start | Finish | Complete | Total float |
| --- | --- | --- | --- | --- | --- |
| SDR-ST-CON-P1-3240 | Installation of Telecom Manhole | 2026-11-19 → 2026-12-14 (+25d) | 2026-12-13 → 2027-01-05 (+23d) |  | 1.3d → 18.8d |
| 4 | **Testting** | 2026-12-13 → 2027-01-06 (+24d) | 2027-01-06 → 2027-01-30 (+24d) |  |  |
| SDR-ST-CON-P1-4150 | Telecom Manhole finishing works | 2026-12-13 → 2027-01-06 (+24d) | 2027-01-06 → 2027-01-30 (+24d) |  | 1.3d → 18.8d |
| 5 | **Backfilling** | 2027-01-06 → 2027-01-31 (+25d) | 2027-01-31 → 2027-03-08 (+36d) |  |  |
| SDR-ST-CON-P1-4740 | Backfilling over Telecom Manhole | 2027-01-06 → 2027-01-31 (+25d) | 2027-01-31 → 2027-03-08 (+36d) |  | 1.3d → 18.8d |
| 3 | **ROAD-01 From 1125 to 1765 m (7) (2X3)X50 mm MH-8 to MH-9** | 2026-09-21 → 2026-08-20 (-32d) | 2027-02-07 → 2027-02-15 (+8d) |  |  |
| 3 | **Ducts** | 2026-09-21 → 2026-08-20 (-32d) | 2027-01-23 → 2027-01-03 (-20d) |  |  |
| 2 | **Excavation** | 2026-09-21 → 2026-08-20 (-32d) | 2026-11-10 → 2026-10-21 (-20d) |  |  |
| SDR-ST-CON-P1-1620 | Excavation for telecom trench Section 1 | 2026-09-21 → 2026-08-20 A (-32d) | 2026-10-17 → 2026-08-31 A (-47d) | 0% → 100% | 2.2d → none |
| SDR-ST-CON-P1-2290 | Excavation for telecom trench Section 2 | 2026-10-17 → 2026-09-28 (-19d) | 2026-11-10 → 2026-10-21 (-20d) |  | 2.2d → 61.9d |
| 5 | **Pipe laying** | 2026-11-10 → 2026-10-22 (-19d) | 2026-12-05 → 2026-11-15 (-20d) |  |  |
| SDR-ST-CON-P1-3010 | HDPE Pipes for Telecom Installation | 2026-11-10 → 2026-10-22 (-19d) | 2026-12-05 → 2026-11-15 (-20d) |  | 2.2d → 61.9d |
| 6 | **Backfilling** | 2026-12-05 → 2026-11-16 (-19d) | 2026-12-29 → 2026-12-09 (-20d) |  |  |
| SDR-ST-CON-P1-3630 | Backfilling over HDPE Telecom Pipes | 2026-12-05 → 2026-11-16 (-19d) | 2026-12-29 → 2026-12-09 (-20d) |  | 2.2d → 61.9d |
| 7 | **Pulling Cable** | 2026-12-29 → 2026-12-10 (-19d) | 2027-01-23 → 2027-01-03 (-20d) |  |  |
| SDR-ST-CON-P1-4240 | Pulling Cable | 2026-12-29 → 2026-12-10 (-19d) | 2027-01-23 → 2027-01-03 (-20d) |  | 2.2d → 61.9d |
| 4 | **Manholes** | 2026-09-21 → 2026-09-28 (+7d) | 2027-02-07 → 2027-02-15 (+8d) |  |  |
| 1 | **Excavation** | 2026-09-21 → 2026-09-28 (+7d) | 2026-11-10 → 2026-11-15 (+5d) |  |  |
| SDR-ST-CON-P1-1610 | Excavation for Telecom Manhole Section 1 | 2026-09-21 → 2026-09-28 (+7d) | 2026-10-17 → 2026-10-21 (+4d) |  | 6.7d → 33.8d |
| SDR-ST-CON-P1-2300 | Excavation for Telecom Manhole Section 2 | 2026-10-17 → 2026-10-22 (+5d) | 2026-11-10 → 2026-11-15 (+5d) |  | 6.7d → 33.8d |
| 2 | **Bedding Work** | 2026-11-10 → 2026-11-16 (+6d) | 2026-12-02 → 2026-12-07 (+5d) |  |  |
| SDR-ST-CON-P1-3020 | Sand bedding for Telecom Manhole | 2026-11-10 → 2026-11-16 (+6d) | 2026-12-02 → 2026-12-07 (+5d) |  | 6.7d → 33.8d |
| 3 | **Install Manholes** | 2026-12-02 → 2026-12-08 (+6d) | 2026-12-26 → 2026-12-30 (+4d) |  |  |
| SDR-ST-CON-P1-3820 | Installation of Telecom Manhole | 2026-12-02 → 2026-12-08 (+6d) | 2026-12-26 → 2026-12-30 (+4d) |  | 6.7d → 33.8d |
| 4 | **Testting** | 2026-12-26 → 2026-12-31 (+5d) | 2027-01-16 → 2027-01-20 (+4d) |  |  |
| SDR-ST-CON-P1-4720 | Telecom Manhole finishing works | 2026-12-26 → 2026-12-31 (+5d) | 2027-01-16 → 2027-01-20 (+4d) |  | 6.7d → 33.8d |
| 5 | **Backfilling** | 2027-01-16 → 2027-01-21 (+5d) | 2027-02-07 → 2027-02-15 (+8d) |  |  |
| SDR-ST-CON-P1-5240 | Backfilling over Telecom Manhole | 2027-01-16 → 2027-01-21 (+5d) | 2027-02-07 → 2027-02-15 (+8d) |  | 6.7d → 33.8d |
| 4 | **ROAD - 02** | 2026-09-08 → 2026-09-28 (+20d) | 2027-02-07 → 2027-03-02 (+23d) |  |  |
| 3 | **Ducts** | 2026-09-08 → 2026-09-28 (+20d) | 2027-01-11 → 2027-01-28 (+17d) |  |  |
| 2 | **Excavation** | 2026-09-08 → 2026-09-28 (+20d) | 2026-10-28 → 2026-11-15 (+18d) |  |  |
| SDR-ST-CON-P1-1340 | Excavation for telecom trench Section 1 | 2026-09-08 → 2026-09-28 (+20d) | 2026-10-04 → 2026-10-21 (+17d) |  | 0d → 25.6d |
| SDR-ST-CON-P1-1960 | Excavation for telecom trench Section 2 | 2026-10-04 → 2026-10-22 (+18d) | 2026-10-28 → 2026-11-15 (+18d) |  | 0d → 25.6d |
| 5 | **Pipe laying** | 2026-10-28 → 2026-11-16 (+19d) | 2026-11-22 → 2026-12-09 (+17d) |  |  |
| SDR-ST-CON-P1-2670 | HDPE Pipes for Telecom Installation | 2026-10-28 → 2026-11-16 (+19d) | 2026-11-22 → 2026-12-09 (+17d) |  | 0d → 25.6d |
| 6 | **Backfilling** | 2026-11-22 → 2026-12-10 (+18d) | 2026-12-16 → 2027-01-03 (+18d) |  |  |
| SDR-ST-CON-P1-3440 | Backfilling over HDPE Telecom Pipes | 2026-11-22 → 2026-12-10 (+18d) | 2026-12-16 → 2027-01-03 (+18d) |  | 0d → 25.6d |
| 7 | **Pulling Cable** | 2026-12-16 → 2027-01-04 (+19d) | 2027-01-11 → 2027-01-28 (+17d) |  |  |
| SDR-ST-CON-P1-4270 | Pulling Cable | 2026-12-16 → 2027-01-04 (+19d) | 2027-01-11 → 2027-01-28 (+17d) |  | 0d → 25.6d |
| 4 | **Manholes** | 2026-09-08 → 2026-09-28 (+20d) | 2027-02-02 → 2027-03-02 (+28d) |  |  |
| 1 | **Excavation** | 2026-09-08 → 2026-09-28 (+20d) | 2026-10-28 → 2026-11-15 (+18d) |  |  |
| SDR-ST-CON-P1-1330 | Excavation for Telecom Manhole Section 1 | 2026-09-08 → 2026-09-28 (+20d) | 2026-10-04 → 2026-10-21 (+17d) |  | 10.7d → 26.8d |
| SDR-ST-CON-P1-1970 | Excavation for Telecom Manhole Section 2 | 2026-10-04 → 2026-10-22 (+18d) | 2026-10-28 → 2026-11-15 (+18d) |  | 10.7d → 26.8d |
| 2 | **Bedding Work** | 2026-10-28 → 2026-11-16 (+19d) | 2026-11-22 → 2026-12-09 (+17d) |  |  |
| SDR-ST-CON-P1-2680 | Sand bedding for Telecom Manhole | 2026-10-28 → 2026-11-16 (+19d) | 2026-11-22 → 2026-12-09 (+17d) |  | 10.7d → 26.8d |
| 3 | **Install Manholes** | 2026-11-22 → 2026-12-10 (+18d) | 2026-12-15 → 2027-01-02 (+18d) |  |  |
| SDR-ST-CON-P1-3450 | Installation of Telecom Manhole | 2026-11-22 → 2026-12-10 (+18d) | 2026-12-15 → 2027-01-02 (+18d) |  | 10.7d → 26.8d |
| 4 | **Testting** | 2026-12-15 → 2027-01-03 (+19d) | 2027-01-09 → 2027-01-26 (+17d) |  |  |
| SDR-ST-CON-P1-4380 | Telecom Manhole finishing works | 2026-12-15 → 2027-01-03 (+19d) | 2027-01-09 → 2027-01-26 (+17d) |  | 10.7d → 26.8d |
| 5 | **Backfilling** | 2027-01-09 → 2027-01-27 (+18d) | 2027-02-02 → 2027-03-02 (+28d) |  |  |
| SDR-ST-CON-P1-4900 | Backfilling over Telecom Manhole | 2027-01-09 → 2027-01-27 (+18d) | 2027-02-02 → 2027-03-02 (+28d) |  | 10.7d → 26.8d |
| 3 | **Ducts** | 2026-09-08 → 2026-09-28 (+20d) | 2027-01-10 → 2027-01-27 (+17d) |  |  |
| 2 | **Excavation** | 2026-09-08 → 2026-09-28 (+20d) | 2026-10-28 → 2026-11-15 (+18d) |  |  |
| SDR-ST-CON-P1-1290 | Excavation for telecom trench Section 1 | 2026-09-08 → 2026-09-28 (+20d) | 2026-10-04 → 2026-10-21 (+17d) |  | 0d → 25.8d |
| SDR-ST-CON-P1-1880 | Excavation for telecom trench Section 2 | 2026-10-04 → 2026-10-22 (+18d) | 2026-10-28 → 2026-11-15 (+18d) |  | 10.5d → 25.8d |
| 5 | **Pipe laying** | 2026-10-28 → 2026-11-16 (+19d) | 2026-11-22 → 2026-12-09 (+17d) |  |  |
| SDR-ST-CON-P1-2640 | HDPE Pipes for Telecom Installation | 2026-10-28 → 2026-11-16 (+19d) | 2026-11-22 → 2026-12-09 (+17d) |  | 10.5d → 25.8d |
| 6 | **Backfilling** | 2026-11-22 → 2026-12-10 (+18d) | 2026-12-16 → 2027-01-03 (+18d) |  |  |
| SDR-ST-CON-P1-3370 | Backfilling over HDPE Telecom Pipes | 2026-11-22 → 2026-12-10 (+18d) | 2026-12-16 → 2027-01-03 (+18d) |  | 10.5d → 25.8d |
| 7 | **Pulling Cable** | 2026-12-16 → 2027-01-04 (+19d) | 2027-01-10 → 2027-01-27 (+17d) |  |  |
| SDR-ST-CON-P1-4160 | Pulling Cable | 2026-12-16 → 2027-01-04 (+19d) | 2027-01-10 → 2027-01-27 (+17d) |  | 10.5d → 25.8d |
| 4 | **Manholes** | 2026-09-08 → 2026-09-28 (+20d) | 2027-01-31 → 2027-02-25 (+25d) |  |  |
| 1 | **Excavation** | 2026-09-08 → 2026-09-28 (+20d) | 2026-10-28 → 2026-11-15 (+18d) |  |  |
| SDR-ST-CON-P1-1280 | Excavation for Telecom Manhole Section 1 | 2026-09-08 → 2026-09-28 (+20d) | 2026-10-04 → 2026-10-21 (+17d) |  | 0d → 26.9d |
| SDR-ST-CON-P1-1890 | Excavation for Telecom Manhole Section 2 | 2026-10-04 → 2026-10-22 (+18d) | 2026-10-28 → 2026-11-15 (+18d) |  | 0d → 26.9d |
| 2 | **Bedding Work** | 2026-10-28 → 2026-11-16 (+19d) | 2026-11-19 → 2026-12-07 (+18d) |  |  |
| SDR-ST-CON-P1-2650 | Sand bedding for Telecom Manhole | 2026-10-28 → 2026-11-16 (+19d) | 2026-11-19 → 2026-12-07 (+18d) |  | 0d → 26.9d |
| 3 | **Install Manholes** | 2026-11-19 → 2026-12-08 (+19d) | 2026-12-13 → 2026-12-30 (+17d) |  |  |
| SDR-ST-CON-P1-3380 | Installation of Telecom Manhole | 2026-11-19 → 2026-12-08 (+19d) | 2026-12-13 → 2026-12-30 (+17d) |  | 0d → 26.9d |
| 4 | **Testting** | 2026-12-13 → 2026-12-31 (+18d) | 2027-01-06 → 2027-01-24 (+18d) |  |  |

| ID | Task | Start | Finish | Complete | Total float |
| --- | --- | --- | --- | --- | --- |
| SDR-ST-CON-P1-4280 | Telecom Manhole finishing works | 2026-12-13 → 2026-12-31 (+18d) | 2027-01-06 → 2027-01-24 (+18d) |  | 0d → 26.9d |
| 5 | **Backfilling** | 2027-01-06 → 2027-01-25 (+19d) | 2027-01-31 → 2027-02-25 (+25d) |  |  |
| SDR-ST-CON-P1-4820 | Backfilling over Telecom Manhole | 2027-01-06 → 2027-01-25 (+19d) | 2027-01-31 → 2027-02-25 (+25d) |  | 0d → 26.9d |
| 3 | **Ducts** | 2026-09-17 → 2026-09-28 (+11d) | 2027-01-19 → 2027-01-27 (+8d) |  |  |
| 2 | **Excavation** | 2026-09-17 → 2026-09-28 (+11d) | 2026-11-07 → 2026-11-15 (+8d) |  |  |
| SDR-ST-CON-P1-1390 | Excavation for telecom trench Section 1 | 2026-09-17 → 2026-09-28 (+11d) | 2026-10-13 → 2026-10-21 (+8d) |  | 6.7d → 30.8d |
| SDR-ST-CON-P1-2070 | Excavation for telecom trench Section 2 | 2026-10-13 → 2026-10-22 (+9d) | 2026-11-07 → 2026-11-15 (+8d) |  | 6.7d → 61.8d |
| 5 | **Pipe laying** | 2026-11-07 → 2026-11-16 (+9d) | 2026-12-01 → 2026-12-09 (+8d) |  |  |
| SDR-ST-CON-P1-2780 | HDPE Pipes for Telecom Installation | 2026-11-07 → 2026-11-16 (+9d) | 2026-12-01 → 2026-12-09 (+8d) |  | 6.7d → 61.8d |
| 6 | **Backfilling** | 2026-12-01 → 2026-12-10 (+9d) | 2026-12-26 → 2027-01-03 (+8d) |  |  |
| SDR-ST-CON-P1-3580 | Backfilling over HDPE Telecom Pipes | 2026-12-01 → 2026-12-10 (+9d) | 2026-12-26 → 2027-01-03 (+8d) |  | 6.7d → 61.8d |
| 7 | **Pulling Cable** | 2026-12-26 → 2027-01-04 (+9d) | 2027-01-19 → 2027-01-27 (+8d) |  |  |
| SDR-ST-CON-P1-4170 | Pulling Cable | 2026-12-26 → 2027-01-04 (+9d) | 2027-01-19 → 2027-01-27 (+8d) |  | 6.7d → 61.8d |
| 4 | **Manholes** | 2026-09-17 → 2026-09-28 (+11d) | 2027-02-07 → 2027-02-21 (+14d) |  |  |
| 1 | **Excavation** | 2026-09-17 → 2026-09-28 (+11d) | 2026-11-07 → 2026-11-15 (+8d) |  |  |
| SDR-ST-CON-P1-1380 | Excavation for Telecom Manhole Section 1 | 2026-09-17 → 2026-09-28 (+11d) | 2026-10-13 → 2026-10-21 (+8d) |  | 7.5d → 30.8d |
| SDR-ST-CON-P1-2080 | Excavation for Telecom Manhole Section 2 | 2026-10-13 → 2026-10-22 (+9d) | 2026-11-07 → 2026-11-15 (+8d) |  | 7.5d → 30.8d |
| 2 | **Bedding Work** | 2026-11-07 → 2026-11-16 (+9d) | 2026-11-29 → 2026-12-07 (+8d) |  |  |
| SDR-ST-CON-P1-2790 | Sand bedding for Telecom Manhole | 2026-11-07 → 2026-11-16 (+9d) | 2026-11-29 → 2026-12-07 (+8d) |  | 7.5d → 30.8d |
| 3 | **Install Manholes** | 2026-11-29 → 2026-12-08 (+9d) | 2026-12-23 → 2026-12-31 (+8d) |  |  |
| SDR-ST-CON-P1-3590 | Installation of Telecom Manhole | 2026-11-29 → 2026-12-08 (+9d) | 2026-12-23 → 2026-12-31 (+8d) |  | 7.5d → 30.8d |
| 4 | **Testting** | 2026-12-23 → 2027-01-02 (+10d) | 2027-01-17 → 2027-01-25 (+8d) |  |  |
| SDR-ST-CON-P1-4500 | Telecom Manhole finishing works | 2026-12-23 → 2027-01-02 (+10d) | 2027-01-17 → 2027-01-25 (+8d) |  | 7.5d → 30.8d |
| 5 | **Backfilling** | 2027-01-17 → 2027-01-26 (+9d) | 2027-02-07 → 2027-02-21 (+14d) |  |  |
| SDR-ST-CON-P1-5000 | Backfilling over Telecom Manhole | 2027-01-17 → 2027-01-26 (+9d) | 2027-02-07 → 2027-02-21 (+14d) |  | 7.5d → 30.8d |
| 13 | **LOW VOLTAGE** | 2026-11-15 → 2026-08-20 (-87d) | 2027-04-19 → 2027-05-30 (+41d) |  |  |
| 1 | **ROAD - 01** | 2026-11-15 → 2026-08-20 (-87d) | 2027-04-03 → 2027-04-22 (+19d) |  |  |
| 1 | **ROAD-01 From 470 to 1125 m (6)** | 2026-11-15 → 2026-08-20 (-87d) | 2027-04-03 → 2027-04-22 (+19d) |  |  |
| 6 | **Excavation** | 2026-11-15 → 2026-08-20 (-87d) | 2027-01-03 → 2026-12-14 (-20d) |  |  |
| SDR-ST-CON-P1-1670 | Excavation Works Part 1 | 2026-11-15 → 2026-08-20 A (-87d) | 2026-12-09 → 2026-11-19 (-20d) | 0% → 70% | 3.2d → 74.8d |
| SDR-ST-CON-P1-6230 | Excavation Works Part 2 | 2026-12-09 → 2026-11-21 (-18d) | 2027-01-03 → 2026-12-14 (-20d) |  | 10.2d → 101.8d |
| 7 | **Pipe laying** | 2027-01-03 → 2026-12-15 (-19d) | 2027-01-26 → 2027-01-06 (-20d) |  |  |
| SDR-ST-CON-P1-2330 | Pipe Laying | 2027-01-03 → 2026-12-15 (-19d) | 2027-01-26 → 2027-01-06 (-20d) |  | 10.2d → 101.8d |
| 8 | **Backfilling** | 2027-01-26 → 2027-02-21 (+26d) | 2027-03-02 → 2027-03-29 (+27d) |  |  |
| SDR-ST-CON-P1-2990 | Backfilling Works | 2027-01-26 → 2027-02-21 (+26d) | 2027-03-02 → 2027-03-29 (+27d) |  | 10.2d → 67.8d |
| 9 | **Pulling Cable** | 2027-03-02 → 2027-03-29 (+27d) | 2027-04-03 → 2027-04-22 (+19d) |  |  |
| SDR-ST-CON-P1-3880 | Pulling Cable | 2027-03-02 → 2027-03-29 (+27d) | 2027-04-03 → 2027-04-22 (+19d) |  | 10.2d → 67.8d |
| 2 | **ROAD - 02** | 2026-11-23 → 2026-08-24 (-91d) | 2027-04-19 → 2027-05-30 (+41d) |  |  |
| 6 | **Excavation** | 2026-11-23 → 2026-08-24 (-91d) | 2027-01-11 → 2026-12-14 (-28d) |  |  |
| SDR-ST-CON-P1-1740 | Excavation Works Part 1 | 2026-11-23 → 2026-08-24 A (-91d) | 2026-12-17 → 2026-11-19 (-28d) | 0% → 50% | 3.2d → 74.8d |
| SDR-ST-CON-P1-6240 | Excavation Works Part 2 | 2026-12-17 → 2026-11-21 (-26d) | 2027-01-11 → 2026-12-14 (-28d) |  | 3.2d → 101.8d |
| 7 | **Pipe laying** | 2027-01-11 → 2026-12-15 (-27d) | 2027-02-03 → 2027-01-06 (-28d) |  |  |
| SDR-ST-CON-P1-2440 | Pipe Laying | 2027-01-11 → 2026-12-15 (-27d) | 2027-02-03 → 2027-01-06 (-28d) |  | 3.2d → 101.8d |
| 8 | **Backfilling** | 2027-02-03 → 2027-01-07 (-27d) | 2027-03-17 → 2027-01-31 (-45d) |  |  |
| SDR-ST-CON-P1-3170 | Backfilling Works | 2027-02-03 → 2027-01-07 (-27d) | 2027-03-17 → 2027-01-31 (-45d) |  | 3.2d → 101.8d |
| 9 | **Pulling Cable** | 2027-03-17 → 2027-04-06 (+20d) | 2027-04-11 → 2027-05-01 (+20d) |  |  |
| SDR-ST-CON-P1-4040 | Pulling Cable | 2027-03-17 → 2027-04-06 (+20d) | 2027-04-11 → 2027-05-01 (+20d) |  | 3.2d → 60.8d |
| 6 | **Excavation** | 2026-12-01 → 2026-08-24 (-99d) | 2027-01-19 → 2026-12-14 (-36d) |  |  |
| SDR-ST-CON-P1-1750 | Excavation Works Part 1 | 2026-12-01 → 2026-08-24 A (-99d) | 2026-12-26 → 2026-11-19 (-37d) | 0% → 50% | 4.2d → 74.8d |
| SDR-ST-CON-P1-6250 | Excavation Works Part 2 | 2026-12-26 → 2026-11-21 (-35d) | 2027-01-19 → 2026-12-14 (-36d) |  | 4.2d → 74.8d |
| 7 | **Pipe laying** | 2027-01-19 → 2026-12-15 (-35d) | 2027-02-15 → 2027-01-06 (-40d) |  |  |
| SDR-ST-CON-P1-2450 | Pipe Laying | 2027-01-19 → 2026-12-15 (-35d) | 2027-02-15 → 2027-01-06 (-40d) |  | 4.2d → 74.8d |
| 8 | **Backfilling** | 2027-02-15 → 2027-01-07 (-39d) | 2027-03-25 → 2027-01-31 (-53d) |  |  |
| SDR-ST-CON-P1-3180 | Backfilling Works | 2027-02-15 → 2027-01-07 (-39d) | 2027-03-25 → 2027-01-31 (-53d) |  | 4.2d → 74.8d |
| 9 | **Pulling Cable** | 2027-03-25 → 2027-04-29 (+35d) | 2027-04-19 → 2027-05-30 (+41d) |  |  |
| SDR-ST-CON-P1-4070 | Pulling Cable | 2027-03-25 → 2027-04-29 (+35d) | 2027-04-19 → 2027-05-30 (+41d) |  | 4.2d → 13.6d |
| 10 | **PORTABLE WATER** | 2026-09-17 → 2026-08-09 (-39d) | 2027-03-22 → 2027-04-06 (+15d) |  |  |
| 2 | **ROAD - 01** | 2026-09-17 → 2026-08-09 (-39d) | 2027-03-22 → 2027-04-06 (+15d) |  |  |
| 2 | **ROAD-01 From 0 to 470 m (3)** | 2026-09-17 → 2026-08-09 (-39d) | 2027-03-03 → 2027-04-06 (+34d) |  |  |
| 7 | **Pipes Work** | 2026-09-17 → 2026-08-09 (-39d) | 2027-02-16 → 2027-04-06 (+49d) |  |  |
| 1 | **Excavation** | 2026-09-17 → 2026-08-09 (-39d) | 2026-11-07 → 2026-09-14 (-54d) |  |  |
| SDR-ST-CON-P1-1480 | Excavation for PW HDPE Pipes 315 mm Section 1 | 2026-09-17 → 2026-08-09 A (-39d) | 2026-10-13 → 2026-08-31 A (-43d) | 0% → 100% | 0d → none |
| SDR-ST-CON-P1-1980 | Excavation for PW HDPE Pipes 315 mm Section 2 | 2026-10-13 → 2026-08-09 A (-65d) | 2026-11-07 → 2026-09-14 A (-54d) | 0% → 100% | 0d → none |
| 8 | **bedding Works** | 2026-11-07 → 2026-08-26 (-73d) | 2026-12-01 → 2026-09-28 (-64d) |  |  |
| SDR-ST-CON-P1-2490 | Sand bedding for PW HDPE Pipes 315 mm | 2026-11-07 → 2026-08-26 A (-73d) | 2026-12-01 → 2026-09-28 (-64d) | 0% → 75% | 0d → 86.8d |
| 2 | **Pipes Laying** | 2026-12-01 → 2026-08-29 (-94d) | 2026-12-26 → 2027-01-12 (+17d) |  |  |
| SDR-ST-CON-P1-3270 | Install PW 315 mm HDPE Pipe | 2026-12-01 → 2026-08-29 A (-94d) | 2026-12-26 → 2027-01-12 (+17d) | 0% → 75% | 0d → 15.8d |
| 5 | **Testing** | 2026-12-26 → 2027-01-31 (+36d) | 2027-01-19 → 2027-03-08 (+48d) |  |  |
| SDR-ST-CON-P1-4190 | Testing of PW HDPE Pipe 315 mm. | 2026-12-26 → 2027-01-31 (+36d) | 2027-01-19 → 2027-03-08 (+48d) |  | 0d → 0.6d |
| 9 | **Backfilling** | 2027-01-19 → 2027-03-08 (+48d) | 2027-02-16 → 2027-04-06 (+49d) |  |  |

| ID | Task | Start | Finish | Complete | Total float |
| --- | --- | --- | --- | --- | --- |
| SDR-ST-CON-P1-4800 | Backfilling of PW HDPE Pipe 315 mm. | 2027-01-19 → 2027-03-08 (+48d) | 2027-02-16 → 2027-04-06 (+49d) |  | 0d → 0.6d |
| 3 | **Valve Chambers & Valves & Fire Hydrant** | 2026-09-27 → 2026-09-28 (+1d) | 2027-03-03 → 2027-04-01 (+29d) |  |  |
| 3 | **Excavation** | 2026-09-27 → 2026-09-28 (+1d) | 2026-11-15 → 2026-12-07 (+22d) |  |  |
| SDR-ST-CON-P1-1490 | Excavation for Valve Chambers Section 1 | 2026-09-27 → 2026-09-28 (+1d) |  |  | 3.2d → 65.8d |
| SDR-ST-CON-P1-2150 | Excavation for Valve Chambers Section 2 | 2026-10-21 → 2026-11-14 (+24d) | 2026-11-15 → 2026-12-07 (+22d) |  | 3.2d → 46.8d |
| 1 | **bedding Works** | 2026-11-15 → 2026-12-08 (+23d) | 2026-12-09 → 2026-12-31 (+22d) |  |  |
| SDR-ST-CON-P1-2850 | Sand bedding for Valve Chambers | 2026-11-15 → 2026-12-08 (+23d) | 2026-12-09 → 2026-12-31 (+22d) |  | 3.2d → 46.8d |
| 4 | **Install Chambers & Valves & Fire Hydrant** | 2026-12-09 → 2027-01-02 (+24d) | 2027-01-03 → 2027-01-25 (+22d) |  |  |
| SDR-ST-CON-P1-3560 | Install Chambers & Valves | 2026-12-09 → 2027-01-02 (+24d) | 2027-01-03 → 2027-01-25 (+22d) |  | 3.2d → 46.8d |
| 2 | **Testing** | 2027-01-03 → 2027-01-26 (+23d) | 2027-01-27 → 2027-02-28 (+32d) |  |  |
| SDR-ST-CON-P1-4470 | Testing for Chambers & Valves | 2027-01-03 → 2027-01-26 (+23d) | 2027-01-27 → 2027-02-28 (+32d) |  | 3.2d → 46.8d |
| 6 | **Backfilling** | 2027-01-27 → 2027-02-28 (+32d) | 2027-03-03 → 2027-04-01 (+29d) |  |  |
| SDR-ST-CON-P1-5030 | Backfilling for Chambers & Valves | 2027-01-27 → 2027-02-28 (+32d) | 2027-03-03 → 2027-04-01 (+29d) |  | 3.2d → 46.8d |
| 1 | **ROAD-01 From 470 to 1125 m (6)** | 2026-09-29 → 2026-08-09 (-51d) | 2027-03-21 → 2027-03-23 (+2d) |  |  |
| 7 | **Pipes Work** | 2026-09-29 → 2026-08-09 (-51d) | 2027-03-08 → 2027-03-23 (+15d) |  |  |
| 1 | **Excavation** | 2026-09-29 → 2026-08-09 (-51d) | 2026-11-17 → 2026-10-21 (-27d) |  |  |
| SDR-ST-CON-P1-1410 | Excavation for PW HDPE Pipes 315 mm Section 1 | 2026-09-29 → 2026-08-09 A (-51d) | 2026-10-24 → 2026-08-31 A (-54d) | 0% → 100% | 7.2d → none |
| SDR-ST-CON-P1-2050 | Excavation for PW HDPE Pipes 315 mm Section 2 | 2026-10-24 → 2026-08-09 A (-76d) | 2026-11-17 → 2026-10-21 (-27d) | 0% → 60% | 7.2d → 104.8d |
| 8 | **bedding Works** | 2026-11-17 → 2026-08-24 (-85d) | 2026-12-12 → 2026-11-15 (-27d) |  |  |
| SDR-ST-CON-P1-2690 | Sand bedding for PW HDPE Pipes 315 mm | 2026-11-17 → 2026-08-24 A (-85d) | 2026-12-12 → 2026-11-15 (-27d) | 0% → 75% | 7.2d → 104.8d |
| 2 | **Pipes Laying** | 2026-12-12 → 2026-08-29 (-105d) | 2027-01-05 → 2026-12-09 (-27d) |  |  |
| SDR-ST-CON-P1-3290 | Install PW 315 mm HDPE Pipe | 2026-12-12 → 2026-08-29 A (-105d) | 2027-01-05 → 2026-12-09 (-27d) | 0% → 75% | 7.2d → 104.8d |
| 5 | **Testing** | 2027-01-05 → 2027-01-17 (+12d) | 2027-01-30 → 2027-02-11 (+12d) |  |  |
| SDR-ST-CON-P1-4030 | Testing of PW HDPE Pipe 315 mm. | 2027-01-05 → 2027-01-17 (+12d) | 2027-01-30 → 2027-02-11 (+12d) |  | 7.2d → 72.8d |
| 9 | **Backfilling** | 2027-01-30 → 2027-02-11 (+12d) | 2027-03-08 → 2027-03-23 (+15d) |  |  |
| SDR-ST-CON-P1-4700 | Backfilling of PW HDPE Pipe 315 mm. | 2027-01-30 → 2027-02-11 (+12d) | 2027-03-08 → 2027-03-23 (+15d) |  | 7.2d → 72.8d |
| 3 | **Valve Chambers & Valves & Fire Hydrant** | 2026-10-07 → 2026-09-28 (-9d) | 2027-03-21 → 2027-03-03 (-18d) |  |  |
| 3 | **Excavation** | 2026-10-07 → 2026-09-28 (-9d) | 2026-11-25 → 2026-11-15 (-10d) |  |  |
| SDR-ST-CON-P1-1420 | Excavation for Valve Chambers Section 1 | 2026-10-07 → 2026-09-28 (-9d) | 2026-11-01 → 2026-10-21 (-11d) |  | 8.2d → 56.8d |
| SDR-ST-CON-P1-2100 | Excavation for Valve Chambers Section 2 | 2026-11-01 → 2026-10-22 (-10d) | 2026-11-25 → 2026-11-15 (-10d) |  | 8.2d → 56.8d |
| 1 | **bedding Works** | 2026-11-25 → 2026-11-16 (-9d) | 2026-12-20 → 2026-12-09 (-11d) |  |  |
| SDR-ST-CON-P1-2820 | Sand bedding for Valve Chambers | 2026-11-25 → 2026-11-16 (-9d) | 2026-12-20 → 2026-12-09 (-11d) |  | 8.2d → 56.8d |
| 4 | **Install Chambers & Valves & Fire Hydrant** | 2026-12-20 → 2026-12-10 (-10d) | 2027-01-13 → 2027-01-03 (-10d) |  |  |
| SDR-ST-CON-P1-3660 | Install Chambers & Valves | 2026-12-20 → 2026-12-10 (-10d) | 2027-01-13 → 2027-01-03 (-10d) |  | 8.2d → 56.8d |
| 2 | **Testing** | 2027-01-13 → 2027-01-04 (-9d) | 2027-02-07 → 2027-01-27 (-11d) |  |  |
| SDR-ST-CON-P1-4550 | Testing for Chambers & Valves | 2027-01-13 → 2027-01-04 (-9d) | 2027-02-07 → 2027-01-27 (-11d) |  | 8.2d → 56.8d |
| 6 | **Backfilling** | 2027-02-07 → 2027-01-28 (-10d) | 2027-03-21 → 2027-03-03 (-18d) |  |  |
| SDR-ST-CON-P1-5100 | Backfilling for Chambers & Valves | 2027-02-07 → 2027-01-28 (-10d) | 2027-03-21 → 2027-03-03 (-18d) |  | 8.2d → 56.8d |
| 3 | **ROAD-01 From 1125 to 1765 m (7)** | 2026-09-30 → 2026-08-09 (-52d) | 2027-03-22 → 2027-03-31 (+9d) |  |  |
| 7 | **Pipes Work** | 2026-09-30 → 2026-08-09 (-52d) | 2027-03-14 → 2027-03-03 (-11d) |  |  |
| 1 | **Excavation** | 2026-09-30 → 2026-08-09 (-52d) | 2026-11-18 → 2026-11-14 (-4d) |  |  |
| SDR-ST-CON-P1-1630 | Excavation for PW HDPE Pipes 315 mm Section 1 | 2026-09-30 → 2026-08-09 A (-52d) | 2026-10-25 → 2026-08-31 A (-55d) | 0% → 100% | 1d → none |
| SDR-ST-CON-P1-2130 | Excavation for PW HDPE Pipes 315 mm Section 2 | 2026-10-25 → 2026-08-09 A (-77d) | 2026-11-18 → 2026-11-14 (-4d) | 0% → 50% | 6.2d → 73.8d |
| 8 | **bedding Works** | 2026-11-18 → 2026-08-26 (-84d) | 2026-12-13 → 2026-12-07 (-6d) |  |  |
| SDR-ST-CON-P1-2810 | Sand bedding for PW HDPE Pipes 315 mm | 2026-11-18 → 2026-08-26 A (-84d) | 2026-12-13 → 2026-12-07 (-6d) | 0% → 75% | 6.2d → 73.8d |
| 2 | **Pipes Laying** | 2026-12-13 → 2026-08-29 (-106d) | 2027-01-06 → 2026-12-31 (-6d) |  |  |
| SDR-ST-CON-P1-3490 | Install PW 315 mm HDPE Pipe | 2026-12-13 → 2026-08-29 A (-106d) | 2027-01-06 → 2026-12-31 (-6d) | 0% → 75% | 6.2d → 73.8d |
| 5 | **Testing** | 2027-01-06 → 2027-01-04 (-2d) | 2027-01-31 → 2027-01-27 (-4d) |  |  |
| SDR-ST-CON-P1-3950 | Testing of PW HDPE Pipe 315 mm. | 2027-01-06 → 2027-01-04 (-2d) | 2027-01-31 → 2027-01-27 (-4d) |  | 6.2d → 71.8d |
| 9 | **Backfilling** | 2027-01-31 → 2027-01-28 (-3d) | 2027-03-14 → 2027-03-03 (-11d) |  |  |
| SDR-ST-CON-P1-4520 | Backfilling of PW HDPE Pipe 315 mm. | 2027-01-31 → 2027-01-28 (-3d) | 2027-03-14 → 2027-03-03 (-11d) |  | 6.2d → 71.8d |
| 3 | **Valve Chambers & Valves & Fire Hydrant** | 2026-10-08 → 2026-09-28 (-10d) | 2027-03-22 → 2027-03-31 (+9d) |  |  |
| 3 | **Excavation** | 2026-10-08 → 2026-09-28 (-10d) | 2026-11-26 → 2026-11-15 (-11d) |  |  |
| SDR-ST-CON-P1-1640 | Excavation for Valve Chambers Section 1 | 2026-10-08 → 2026-09-28 (-10d) | 2026-11-02 → 2026-10-21 (-12d) |  | 1d → 56.8d |
| SDR-ST-CON-P1-2230 | Excavation for Valve Chambers Section 2 | 2026-11-02 → 2026-10-22 (-11d) | 2026-11-26 → 2026-11-15 (-11d) |  | 1d → 56.8d |
| 1 | **bedding Works** | 2026-11-26 → 2026-11-16 (-10d) | 2026-12-21 → 2026-12-09 (-12d) |  |  |
| SDR-ST-CON-P1-2900 | Sand bedding for Valve Chambers | 2026-11-26 → 2026-11-16 (-10d) | 2026-12-21 → 2026-12-09 (-12d) |  | 1d → 56.8d |
| 4 | **Install Chambers & Valves & Fire Hydrant** | 2026-12-21 → 2026-12-10 (-11d) | 2027-01-14 → 2027-01-03 (-11d) |  |  |
| SDR-ST-CON-P1-3640 | Install Chambers & Valves | 2026-12-21 → 2026-12-10 (-11d) | 2027-01-14 → 2027-01-03 (-11d) |  | 1d → 56.8d |
| 2 | **Testing** | 2027-01-14 → 2027-01-04 (-10d) | 2027-02-09 → 2027-01-27 (-13d) |  |  |
| SDR-ST-CON-P1-4510 | Testing for Chambers & Valves | 2027-01-14 → 2027-01-04 (-10d) | 2027-02-09 → 2027-01-27 (-13d) |  | 1d → 56.8d |
| 6 | **Backfilling** | 2027-02-09 → 2027-02-27 (+18d) | 2027-03-22 → 2027-03-31 (+9d) |  |  |
| SDR-ST-CON-P1-5070 | Backfilling for Chambers & Valves | 2027-02-09 → 2027-02-27 (+18d) | 2027-03-22 → 2027-03-31 (+9d) |  | 1d → 38.8d |
| 3 | **ROAD - 02** | 2026-10-01 → 2026-08-27 (-35d) | 2027-03-16 → 2027-04-06 (+21d) |  |  |
| 7 | **Pipes Work** | 2026-10-03 → 2026-08-27 (-37d) | 2027-03-16 → 2027-04-06 (+21d) |  |  |
| 1 | **Excavation** | 2026-10-03 → 2026-08-27 (-37d) | 2026-11-21 → 2026-10-21 (-31d) |  |  |
| SDR-ST-CON-P1-1930 | Excavation for PW HDPE Pipes 315 mm Section 1 | 2026-10-03 → 2026-08-27 A (-37d) | 2026-10-27 → 2026-09-14 A (-43d) | 0% → 100% | 4.2d → none |
| SDR-ST-CON-P1-2480 | Excavation for PW HDPE Pipes 315 mm Section 2 | 2026-10-27 → 2026-09-28 (-29d) | 2026-11-21 → 2026-10-21 (-31d) |  | 4.2d → 92.8d |
| 8 | **bedding Works** | 2026-11-21 → 2026-09-22 (-60d) | 2026-12-15 → 2026-11-15 (-30d) |  |  |
| SDR-ST-CON-P1-3130 | Sand bedding for PW HDPE Pipes 315 mm | 2026-11-21 → 2026-09-22 A (-60d) | 2026-12-15 → 2026-11-15 (-30d) | 0% → 50% | 4.2d → 92.8d |

| ID | Task | Start | Finish | Complete | Total float |
| --- | --- | --- | --- | --- | --- |
| 2 | **Pipes Laying** | 2026-12-15 → 2026-09-24 (-82d) | 2027-01-09 → 2026-12-09 (-31d) |  |  |
| SDR-ST-CON-P1-3650 | Install PW 315 mm HDPE Pipe | 2026-12-15 → 2026-09-24 A (-82d) | 2027-01-09 → 2026-12-09 (-31d) | 0% → 50% | 4.2d → 92.8d |
| 5 | **Testing** | 2027-01-09 → 2026-12-10 (-30d) | 2027-02-02 → 2027-01-03 (-30d) |  |  |
| SDR-ST-CON-P1-4340 | Testing of PW HDPE Pipe 315 mm. | 2027-01-09 → 2026-12-10 (-30d) | 2027-02-02 → 2027-01-03 (-30d) |  | 4.2d → 92.8d |
| 9 | **Backfilling** | 2027-02-02 → 2027-03-08 (+34d) | 2027-03-16 → 2027-04-06 (+21d) |  |  |
| SDR-ST-CON-P1-4910 | Backfilling of PW HDPE Pipe 315 mm. | 2027-02-02 → 2027-03-08 (+34d) | 2027-03-16 → 2027-04-06 (+21d) |  | 4.2d → 48.8d |
| 3 | **Valve Chambers & Valves & Fire Hydrant** | 2026-10-03 → 2026-09-28 (-5d) |  |  |  |
| 3 | **Excavation** | 2026-10-03 → 2026-09-28 (-5d) | 2026-11-18 → 2026-11-12 (-6d) |  |  |
| SDR-ST-CON-P1-1940 | Excavation for Valve Chambers Section 1 | 2026-10-03 → 2026-09-28 (-5d) | 2026-10-26 → 2026-10-20 (-6d) |  | 9.3d → 63.8d |
| SDR-ST-CON-P1-2630 | Excavation for Valve Chambers Section 2 | 2026-10-26 → 2026-10-21 (-5d) | 2026-11-18 → 2026-11-12 (-6d) |  | 9.3d → 63.8d |
| 1 | **bedding Works** | 2026-11-18 → 2026-11-14 (-4d) | 2026-12-12 → 2026-12-06 (-6d) |  |  |
| SDR-ST-CON-P1-3400 | Sand bedding for Valve Chambers | 2026-11-18 → 2026-11-14 (-4d) | 2026-12-12 → 2026-12-06 (-6d) |  | 9.3d → 63.8d |
| 4 | **Install Chambers & Valves & Fire Hydrant** | 2026-12-12 → 2026-12-07 (-5d) | 2027-01-04 → 2026-12-29 (-6d) |  |  |
| SDR-ST-CON-P1-4330 | Install Chambers & Valves | 2026-12-12 → 2026-12-07 (-5d) | 2027-01-04 → 2026-12-29 (-6d) |  | 9.3d → 63.8d |
| 2 | **Testing** |  | 2027-01-20 → 2027-01-19 (-1d) |  |  |
| SDR-ST-CON-P1-5060 | Testing for Chambers & Valves |  | 2027-01-20 → 2027-01-19 (-1d) |  | 9.3d → 59.8d |
| 6 | **Backfilling** | 2027-01-20 → 2027-01-21 (+1d) |  |  |  |
| SDR-ST-CON-P1-5730 | Backfilling for Chambers & Valves | 2027-01-20 → 2027-01-21 (+1d) |  |  | 9.3d → 58.8d |
| 7 | **Pipes Work** | 2026-10-03 → 2026-08-27 (-37d) | 2027-01-18 → 2026-12-23 (-26d) |  |  |
| 1 | **Excavation** | 2026-10-03 → 2026-08-27 (-37d) | 2026-11-11 → 2026-10-17 (-25d) |  |  |
| SDR-ST-CON-P1-1850 | Excavation for PW HDPE Pipes 315 mm Section 1 | 2026-10-03 → 2026-08-27 A (-37d) | 2026-10-22 → 2026-09-14 A (-38d) | 0% → 100% | 10.1d → none |
| SDR-ST-CON-P1-2460 | Excavation for PW HDPE Pipes 315 mm Section 2 | 2026-10-22 → 2026-09-28 (-24d) | 2026-11-11 → 2026-10-17 (-25d) |  | 13.1d → 83.8d |
| 8 | **bedding Works** | 2026-11-11 → 2026-09-22 (-50d) | 2026-11-25 → 2026-10-31 (-25d) |  |  |
| SDR-ST-CON-P1-3060 | Sand bedding for PW HDPE Pipes 315 mm | 2026-11-11 → 2026-09-22 A (-50d) | 2026-11-25 → 2026-10-31 (-25d) | 0% → 50% | 13.1d → 83.8d |
| 2 | **Pipes Laying** | 2026-11-25 → 2026-09-24 (-62d) | 2026-12-08 → 2026-11-12 (-26d) |  |  |
| SDR-ST-CON-P1-3570 | Install PW 315 mm HDPE Pipe | 2026-11-25 → 2026-09-24 A (-62d) | 2026-12-08 → 2026-11-12 (-26d) | 0% → 50% | 13.1d → 83.8d |
| 5 | **Testing** | 2026-12-08 → 2026-11-14 (-24d) | 2026-12-24 → 2026-11-29 (-25d) |  |  |
| SDR-ST-CON-P1-4060 | Testing of PW HDPE Pipe 315 mm. | 2026-12-08 → 2026-11-14 (-24d) | 2026-12-24 → 2026-11-29 (-25d) |  | 13.1d → 83.8d |
| 9 | **Backfilling** | 2026-12-24 → 2026-11-30 (-24d) | 2027-01-18 → 2026-12-23 (-26d) |  |  |
| SDR-ST-CON-P1-4640 | Backfilling of PW HDPE Pipe 315 mm. | 2026-12-24 → 2026-11-30 (-24d) | 2027-01-18 → 2026-12-23 (-26d) |  | 13.1d → 83.8d |
| 3 | **Valve Chambers & Valves & Fire Hydrant** | 2026-10-03 → 2026-09-28 (-5d) | 2027-02-18 → 2027-03-29 (+39d) |  |  |
| 3 | **Excavation** | 2026-10-03 → 2026-09-28 (-5d) | 2026-11-18 → 2026-12-06 (+18d) |  |  |
| SDR-ST-CON-P1-1860 | Excavation for Valve Chambers Section 1 | 2026-10-03 → 2026-09-28 (-5d) | 2026-10-26 → 2026-10-20 (-6d) |  | 10.1d → 63.8d |
| SDR-ST-CON-P1-2550 | Excavation for Valve Chambers Section 2 | 2026-10-26 → 2026-11-14 (+19d) | 2026-11-18 → 2026-12-06 (+18d) |  | 10.1d → 43.8d |
| 1 | **bedding Works** | 2026-11-18 → 2026-12-07 (+19d) | 2026-12-12 → 2026-12-29 (+17d) |  |  |
| SDR-ST-CON-P1-3310 | Sand bedding for Valve Chambers | 2026-11-18 → 2026-12-07 (+19d) | 2026-12-12 → 2026-12-29 (+17d) |  | 10.1d → 43.8d |
| 4 | **Install Chambers & Valves & Fire Hydrant** | 2026-12-12 → 2026-12-30 (+18d) | 2027-01-04 → 2027-01-21 (+17d) |  |  |
| SDR-ST-CON-P1-4210 | Install Chambers & Valves | 2026-12-12 → 2026-12-30 (+18d) | 2027-01-04 → 2027-01-21 (+17d) |  | 10.1d → 43.8d |
| 2 | **Testing** | 2027-01-04 → 2027-01-23 (+19d) | 2027-01-20 → 2027-02-07 (+18d) |  |  |
| SDR-ST-CON-P1-4990 | Testing for Chambers & Valves | 2027-01-04 → 2027-01-23 (+19d) | 2027-01-20 → 2027-02-07 (+18d) |  | 10.1d → 43.8d |
| 6 | **Backfilling** | 2027-01-20 → 2027-02-21 (+32d) | 2027-02-18 → 2027-03-29 (+39d) |  |  |
| SDR-ST-CON-P1-5710 | Backfilling for Chambers & Valves | 2027-01-20 → 2027-02-21 (+32d) | 2027-02-18 → 2027-03-29 (+39d) |  | 9.6d → 36.8d |
| 7 | **Pipes Work** | 2026-10-01 → 2026-08-27 (-35d) | 2027-01-10 → 2027-02-02 (+23d) |  |  |
| 1 | **Excavation** | 2026-10-01 → 2026-08-27 (-35d) | 2026-11-08 → 2026-12-01 (+23d) |  |  |
| SDR-ST-CON-P1-2010 | Excavation for PW HDPE Pipes 315 mm Section 1 | 2026-10-01 → 2026-08-27 A (-35d) | 2026-10-20 → 2026-09-14 A (-36d) | 0% → 100% | 1d → none |
| SDR-ST-CON-P1-2610 | Excavation for PW HDPE Pipes 315 mm Section 2 | 2026-10-20 → 2026-11-14 (+25d) | 2026-11-08 → 2026-12-01 (+23d) |  | 1d → 11.8d |
| 8 | **bedding Works** | 2026-11-08 → 2026-09-22 (-47d) | 2026-11-19 → 2026-12-13 (+24d) |  |  |
| SDR-ST-CON-P1-3220 | Sand bedding for PW HDPE Pipes 315 mm | 2026-11-08 → 2026-09-22 A (-47d) | 2026-11-19 → 2026-12-13 (+24d) | 0% → 50% | 1d → 11.8d |
| 2 | **Pipes Laying** | 2026-11-19 → 2026-09-24 (-56d) | 2026-12-01 → 2026-12-24 (+23d) |  |  |
| SDR-ST-CON-P1-3610 | Install PW 315 mm HDPE Pipe | 2026-11-19 → 2026-09-24 A (-56d) | 2026-12-01 → 2026-12-24 (+23d) | 0% → 50% | 1d → 11.8d |
| 5 | **Testing** | 2026-12-01 → 2026-12-26 (+25d) | 2026-12-17 → 2027-01-10 (+24d) |  |  |
| SDR-ST-CON-P1-4090 | Testing of PW HDPE Pipe 315 mm. | 2026-12-01 → 2026-12-26 (+25d) | 2026-12-17 → 2027-01-10 (+24d) |  | 1d → 11.8d |
| 9 | **Backfilling** | 2026-12-17 → 2027-01-11 (+25d) | 2027-01-10 → 2027-02-02 (+23d) |  |  |
| SDR-ST-CON-P1-4660 | Backfilling of PW HDPE Pipe 315 mm. | 2026-12-17 → 2027-01-11 (+25d) | 2027-01-10 → 2027-02-02 (+23d) |  | 1d → 11.8d |
| 3 | **Valve Chambers & Valves & Fire Hydrant** | 2026-10-01 → 2026-09-28 (-3d) | 2027-02-15 → 2027-02-18 (+3d) |  |  |
| 3 | **Excavation** | 2026-10-01 → 2026-09-28 (-3d) | 2026-11-17 → 2026-11-12 (-5d) |  |  |
| SDR-ST-CON-P1-2020 | Excavation for Valve Chambers Section 1 | 2026-10-01 → 2026-09-28 (-3d) | 2026-10-25 → 2026-10-20 (-5d) |  | 10.7d → 60.8d |
| SDR-ST-CON-P1-2740 | Excavation for Valve Chambers Section 2 | 2026-10-25 → 2026-10-21 (-4d) | 2026-11-17 → 2026-11-12 (-5d) |  | 10.7d → 60.8d |
| 1 | **bedding Works** | 2026-11-17 → 2026-11-14 (-3d) | 2026-12-10 → 2026-12-06 (-4d) |  |  |
| SDR-ST-CON-P1-3550 | Sand bedding for Valve Chambers | 2026-11-17 → 2026-11-14 (-3d) | 2026-12-10 → 2026-12-06 (-4d) |  | 10.7d → 60.8d |
| 4 | **Install Chambers & Valves & Fire Hydrant** | 2026-12-10 → 2026-12-07 (-3d) | 2027-01-03 → 2026-12-29 (-5d) |  |  |
| SDR-ST-CON-P1-4460 | Install Chambers & Valves | 2026-12-10 → 2026-12-07 (-3d) | 2027-01-03 → 2026-12-29 (-5d) |  | 10.7d → 60.8d |
| 2 | **Testing** | 2027-01-03 → 2027-01-04 (+1d) |  |  |  |
| SDR-ST-CON-P1-5190 | Testing for Chambers & Valves | 2027-01-03 → 2027-01-04 (+1d) |  |  | 10.7d → 56.8d |
| 6 | **Backfilling** | 2027-01-19 → 2027-01-21 (+2d) | 2027-02-15 → 2027-02-18 (+3d) |  |  |
| SDR-ST-CON-P1-5750 | Backfilling for Chambers & Valves | 2027-01-19 → 2027-01-21 (+2d) | 2027-02-15 → 2027-02-18 (+3d) |  | 10.7d → 55.8d |
| 7 | **SEWARAGE NETWORK** | 2026-09-17 → 2026-08-09 (-39d) | 2027-03-14 → 2027-03-31 (+17d) |  |  |
| 6 | **ROAD - 01** | 2026-09-17 → 2026-08-09 (-39d) | 2027-02-24 → 2027-03-29 (+33d) |  |  |
| 2 | **ROAD-01 From 0 to 470 m (3) 110 mm HDPE** | 2026-09-17 → 2026-08-09 (-39d) | 2027-02-16 → 2027-03-03 (+15d) |  |  |
| 7 | **Pipes Work** | 2026-09-17 → 2026-08-09 (-39d) | 2027-02-08 → 2027-01-16 (-23d) |  |  |

| ID | Task | Start | Finish | Complete | Total float |
| --- | --- | --- | --- | --- | --- |
| 1 | **Excavation** | 2026-09-17 → 2026-08-09 (-39d) | 2026-11-09 → 2026-10-20 (-20d) |  |  |
| SDR-ST-CON-P1-1540 | Excavation for GRP Pipe 200mm Diameter Section 1 | 2026-09-17 → 2026-08-09 A (-39d) | 2026-10-13 → 2026-08-31 A (-43d) | 0% → 100% | 4.2d → none |
| SDR-ST-CON-P1-2380 | Excavation for GRP Pipe 200mm Diameter Section 2 | 2026-10-17 → 2026-09-07 A (-40d) | 2026-11-09 → 2026-10-20 (-20d) | 0% → 50% | 4.2d → 83.8d |
| 5 | **bedding Works** | 2026-11-09 → 2026-09-22 (-48d) | 2026-11-26 → 2026-11-07 (-19d) |  |  |
| SDR-ST-CON-P1-3050 | Sand bedding for GRP Pipe 200mm Diameter | 2026-11-09 → 2026-09-22 A (-48d) | 2026-11-26 → 2026-11-07 (-19d) | 0% → 25% | 4.2d → 83.8d |
| 2 | **Pipes Laying** | 2026-11-26 → 2026-09-24 (-63d) | 2026-12-21 → 2026-11-28 (-23d) |  |  |
| SDR-ST-CON-P1-3710 | 200 mm GRP Pipe Laying | 2026-11-26 → 2026-09-24 A (-63d) | 2026-12-21 → 2026-11-28 (-23d) | 0% → 25% | 4.2d → 83.8d |
| 3 | **Testing** | 2026-12-21 → 2026-11-29 (-22d) | 2027-01-14 → 2026-12-22 (-23d) |  |  |
| SDR-ST-CON-P1-4590 | Testing of 200 mm GRP Pipe. | 2026-12-21 → 2026-11-29 (-22d) | 2027-01-14 → 2026-12-22 (-23d) |  | 4.2d → 83.8d |
| 6 | **Backfilling** | 2027-01-14 → 2026-12-23 (-22d) | 2027-02-08 → 2027-01-16 (-23d) |  |  |
| SDR-ST-CON-P1-5570 | Backfilling of 200 mm GRP Pipe. | 2027-01-14 → 2026-12-23 (-22d) | 2027-02-08 → 2027-01-16 (-23d) |  | 4.2d → 83.8d |
| 4 | **Manholes** | 2026-09-17 → 2026-09-28 (+11d) | 2027-02-16 → 2027-03-03 (+15d) |  |  |
| 1 | **Excavation** | 2026-09-17 → 2026-09-28 (+11d) | 2026-11-07 → 2026-11-15 (+8d) |  |  |
| SDR-ST-CON-P1-1550 | Excavation for manhole. Section 1 | 2026-09-17 → 2026-09-28 (+11d) | 2026-10-13 → 2026-10-21 (+8d) |  | 10.6d → 52.8d |
| SDR-ST-CON-P1-2210 | Excavation for manhole. Section 2 | 2026-10-13 → 2026-10-22 (+9d) | 2026-11-07 → 2026-11-15 (+8d) |  | 10.6d → 52.8d |
| 2 | **bedding Works** | 2026-11-07 → 2026-11-16 (+9d) | 2026-12-01 → 2026-12-09 (+8d) |  |  |
| SDR-ST-CON-P1-2960 | Sand bedding for manhole. | 2026-11-07 → 2026-11-16 (+9d) | 2026-12-01 → 2026-12-09 (+8d) |  | 10.6d → 52.8d |
| 3 | **Install Manholes** | 2026-12-01 → 2026-12-10 (+9d) | 2026-12-26 → 2027-01-03 (+8d) |  |  |
| SDR-ST-CON-P1-3840 | Manhole Installation | 2026-12-01 → 2026-12-10 (+9d) | 2026-12-26 → 2027-01-03 (+8d) |  | 10.6d → 52.8d |
| 4 | **Testing** | 2026-12-26 → 2027-01-04 (+9d) | 2027-01-19 → 2027-01-27 (+8d) |  |  |
| SDR-ST-CON-P1-4790 | Testing | 2026-12-26 → 2027-01-04 (+9d) | 2027-01-19 → 2027-01-27 (+8d) |  | 10.6d → 52.8d |
| 5 | **Backfilling** | 2027-01-19 → 2027-01-28 (+9d) | 2027-02-16 → 2027-03-03 (+15d) |  |  |
| SDR-ST-CON-P1-5720 | Backfilling | 2027-01-19 → 2027-01-28 (+9d) | 2027-02-16 → 2027-03-03 (+15d) |  | 10.6d → 52.8d |
| 1 | **ROAD-01 From 470 to 1125 m (6) 110 mm HDPE** | 2026-09-20 → 2026-08-13 (-38d) | 2027-02-21 → 2027-03-29 (+36d) |  |  |
| 7 | **Pipes Work** | 2026-09-20 → 2026-08-13 (-38d) | 2027-01-30 → 2027-01-12 (-18d) |  |  |
| 1 | **Excavation** | 2026-09-20 → 2026-08-13 (-38d) | 2026-11-03 → 2026-10-17 (-17d) |  |  |
| SDR-ST-CON-P1-1430 | Excavation for GRP Pipe 200mm Diameter Section 1 | 2026-09-20 → 2026-08-13 A (-38d) | 2026-10-11 → 2026-08-31 A (-41d) | 0% → 100% | 1.3d → none |
| SDR-ST-CON-P1-2110 | Excavation for GRP Pipe 200mm Diameter Section 2 | 2026-10-14 → 2026-09-07 A (-37d) | 2026-11-03 → 2026-10-17 (-17d) | 0% → 50% | 9d → 69.8d |
| 5 | **bedding Works** | 2026-11-03 → 2026-10-18 (-16d) | 2026-11-21 → 2026-11-03 (-18d) |  |  |
| SDR-ST-CON-P1-2720 | Sand bedding for GRP Pipe 200mm Diameter | 2026-11-03 → 2026-10-18 (-16d) | 2026-11-21 → 2026-11-03 (-18d) |  | 9d → 69.8d |
| 2 | **Pipes Laying** | 2026-11-21 → 2026-11-04 (-17d) | 2026-12-12 → 2026-11-24 (-18d) |  |  |
| SDR-ST-CON-P1-3300 | 200 mm GRP Pipe Laying | 2026-11-21 → 2026-11-04 (-17d) | 2026-12-12 → 2026-11-24 (-18d) |  | 9d → 69.8d |
| 3 | **Testing** | 2026-12-12 → 2026-11-25 (-17d) | 2027-01-05 → 2026-12-19 (-17d) |  |  |
| SDR-ST-CON-P1-4120 | Testing of 200 mm GRP Pipe. | 2026-12-12 → 2026-11-25 (-17d) | 2027-01-05 → 2026-12-19 (-17d) |  | 9d → 69.8d |
| 6 | **Backfilling** | 2027-01-05 → 2026-12-20 (-16d) | 2027-01-30 → 2027-01-12 (-18d) |  |  |
| SDR-ST-CON-P1-4970 | Backfilling of 200 mm GRP Pipe. | 2027-01-05 → 2026-12-20 (-16d) | 2027-01-30 → 2027-01-12 (-18d) |  | 9d → 69.8d |
| 4 | **Manholes** | 2026-09-20 → 2026-09-28 (+8d) | 2027-02-21 → 2027-03-29 (+36d) |  |  |
| 1 | **Excavation** | 2026-09-20 → 2026-09-28 (+8d) | 2026-11-09 → 2026-11-15 (+6d) |  |  |
| SDR-ST-CON-P1-1440 | Excavation for manhole. Section 1 | 2026-09-20 → 2026-09-28 (+8d) | 2026-10-15 → 2026-10-21 (+6d) |  | 1.3d → 60.8d |
| SDR-ST-CON-P1-2120 | Excavation for manhole. Section 2 | 2026-10-15 → 2026-10-22 (+7d) | 2026-11-09 → 2026-11-15 (+6d) |  | 1.3d → 60.8d |
| 2 | **bedding Works** | 2026-11-09 → 2026-11-16 (+7d) | 2026-12-03 → 2026-12-09 (+6d) |  |  |
| SDR-ST-CON-P1-2870 | Sand bedding for manhole. | 2026-11-09 → 2026-11-16 (+7d) | 2026-12-03 → 2026-12-09 (+6d) |  | 1.3d → 60.8d |
| 3 | **Install Manholes** | 2026-12-03 → 2026-12-10 (+7d) | 2026-12-28 → 2027-01-03 (+6d) |  |  |
| SDR-ST-CON-P1-3790 | Manhole Installation | 2026-12-03 → 2026-12-10 (+7d) | 2026-12-28 → 2027-01-03 (+6d) |  | 1.3d → 60.8d |
| 4 | **Testing** | 2026-12-28 → 2027-01-04 (+7d) | 2027-01-21 → 2027-01-27 (+6d) |  |  |
| SDR-ST-CON-P1-4710 | Testing | 2026-12-28 → 2027-01-04 (+7d) | 2027-01-21 → 2027-01-27 (+6d) |  | 1.3d → 60.8d |
| 5 | **Backfilling** | 2027-01-21 → 2027-02-21 (+31d) | 2027-02-21 → 2027-03-29 (+36d) |  |  |
| SDR-ST-CON-P1-5700 | Backfilling | 2027-01-21 → 2027-02-21 (+31d) | 2027-02-21 → 2027-03-29 (+36d) |  | 1.3d → 44.8d |
| 3 | **ROAD-01 From 1125 to 1765 m (7) 110 mm HDPE** | 2026-09-21 → 2026-08-13 (-39d) | 2027-02-24 → 2027-03-04 (+8d) |  |  |
| 7 | **Pipes Work** | 2026-09-21 → 2026-08-13 (-39d) | 2027-01-28 → 2027-01-10 (-18d) |  |  |
| 1 | **Excavation** | 2026-09-21 → 2026-08-13 (-39d) | 2026-11-04 → 2026-10-17 (-18d) |  |  |
| SDR-ST-CON-P1-1650 | Excavation for GRP Pipe 200mm Diameter Section 1 | 2026-09-21 → 2026-08-13 A (-39d) | 2026-10-12 → 2026-08-31 A (-42d) | 0% → 100% | 0d → none |
| SDR-ST-CON-P1-2240 | Excavation for GRP Pipe 200mm Diameter Section 2 | 2026-10-15 → 2026-09-07 A (-38d) | 2026-11-04 → 2026-10-17 (-18d) | 0% → 50% | 4.2d → 62.9d |
| 5 | **bedding Works** | 2026-11-04 → 2026-10-18 (-17d) | 2026-11-21 → 2026-11-02 (-19d) |  |  |
| SDR-ST-CON-P1-2830 | Sand bedding for GRP Pipe 200mm Diameter | 2026-11-04 → 2026-10-18 (-17d) | 2026-11-21 → 2026-11-02 (-19d) |  | 4.2d → 62.9d |
| 2 | **Pipes Laying** | 2026-11-21 → 2026-11-03 (-18d) | 2026-12-10 → 2026-11-23 (-17d) |  |  |
| SDR-ST-CON-P1-3420 | 200 mm GRP Pipe Laying | 2026-11-21 → 2026-11-03 (-18d) | 2026-12-10 → 2026-11-23 (-17d) |  | 4.2d → 62.9d |
| 3 | **Testing** | 2026-12-10 → 2026-11-23 (-17d) | 2027-01-04 → 2026-12-16 (-19d) |  |  |
| SDR-ST-CON-P1-4180 | Testing of 200 mm GRP Pipe. | 2026-12-10 → 2026-11-23 (-17d) | 2027-01-04 → 2026-12-16 (-19d) |  | 4.2d → 62.9d |
| 6 | **Backfilling** | 2027-01-04 → 2026-12-17 (-18d) | 2027-01-28 → 2027-01-10 (-18d) |  |  |
| SDR-ST-CON-P1-5020 | Backfilling of 200 mm GRP Pipe. | 2027-01-04 → 2026-12-17 (-18d) | 2027-01-28 → 2027-01-10 (-18d) |  | 4.2d → 62.9d |
| 4 | **Manholes** | 2026-09-21 → 2026-09-28 (+7d) | 2027-02-24 → 2027-03-04 (+8d) |  |  |
| 1 | **Excavation** | 2026-09-21 → 2026-09-28 (+7d) | 2026-11-10 → 2026-11-15 (+5d) |  |  |
| SDR-ST-CON-P1-1660 | Excavation for manhole. Section 1 | 2026-09-21 → 2026-09-28 (+7d) | 2026-10-17 → 2026-10-21 (+4d) |  | 0d → 74.5d |
| SDR-ST-CON-P1-2310 | Excavation for manhole. Section 2 | 2026-10-17 → 2026-10-22 (+5d) | 2026-11-10 → 2026-11-15 (+5d) |  | 0d → 74.5d |
| 2 | **bedding Works** | 2026-11-10 → 2026-11-16 (+6d) | 2026-12-05 → 2026-12-09 (+4d) |  |  |
| SDR-ST-CON-P1-3030 | Sand bedding for manhole. | 2026-11-10 → 2026-11-16 (+6d) | 2026-12-05 → 2026-12-09 (+4d) |  | 0d → 74.5d |
| 3 | **Install Manholes** | 2026-12-05 → 2026-12-10 (+5d) | 2026-12-29 → 2027-01-03 (+5d) |  |  |
| SDR-ST-CON-P1-3910 | Manhole Installation | 2026-12-05 → 2026-12-10 (+5d) | 2026-12-29 → 2027-01-03 (+5d) |  | 0d → 74.5d |
| 4 | **Testing** | 2026-12-29 → 2027-01-04 (+6d) | 2027-01-23 → 2027-01-27 (+4d) |  |  |

| ID | Task | Start | Finish | Complete | Total float |
| --- | --- | --- | --- | --- | --- |
| SDR-ST-CON-P1-4830 | Testing | 2026-12-29 → 2027-01-04 (+6d) | 2027-01-23 → 2027-01-27 (+4d) |  | 0d → 74.5d |
| 5 | **Backfilling** | 2027-01-23 → 2027-01-28 (+5d) | 2027-02-24 → 2027-03-04 (+8d) |  |  |
| SDR-ST-CON-P1-5740 | Backfilling | 2027-01-23 → 2027-01-28 (+5d) | 2027-02-24 → 2027-03-04 (+8d) |  | 0d → 74.5d |
| 1 | **ROAD - 02** | 2026-09-22 → 2026-09-07 (-15d) | 2027-03-14 → 2027-03-31 (+17d) |  |  |
| 7 | **Pipes Work** | 2026-09-22 → 2026-09-07 (-15d) | 2027-01-31 → 2027-02-03 (+3d) |  |  |
| 1 | **Excavation** | 2026-09-22 → 2026-09-07 (-15d) | 2026-11-05 → 2026-11-09 (+4d) |  |  |
| SDR-ST-CON-P1-1810 | Excavation for GRP Pipe 200mm Diameter Section 1 | 2026-09-22 → 2026-09-07 A (-15d) | 2026-10-13 → 2026-10-17 (+4d) | 0% → 75% | 0.1d → 41.9d |
| SDR-ST-CON-P1-2530 | Excavation for GRP Pipe 200mm Diameter Section 2 | 2026-10-17 → 2026-10-21 (+4d) | 2026-11-05 → 2026-11-09 (+4d) |  | 3d → 41.9d |
| 5 | **bedding Works** | 2026-11-05 → 2026-11-10 (+5d) | 2026-11-22 → 2026-11-25 (+3d) |  |  |
| SDR-ST-CON-P1-3210 | Sand bedding for GRP Pipe 200mm Diameter | 2026-11-05 → 2026-11-10 (+5d) | 2026-11-22 → 2026-11-25 (+3d) |  | 3d → 41.9d |
| 2 | **Pipes Laying** | 2026-11-22 → 2026-11-26 (+4d) | 2026-12-13 → 2026-12-16 (+3d) |  |  |
| SDR-ST-CON-P1-3800 | 200 mm GRP Pipe Laying | 2026-11-22 → 2026-11-26 (+4d) | 2026-12-13 → 2026-12-16 (+3d) |  | 3d → 41.9d |
| 3 | **Testing** | 2026-12-13 → 2026-12-17 (+4d) | 2027-01-06 → 2027-01-10 (+4d) |  |  |
| SDR-ST-CON-P1-4580 | Testing of 200 mm GRP Pipe. | 2026-12-13 → 2026-12-17 (+4d) | 2027-01-06 → 2027-01-10 (+4d) |  | 3d → 41.9d |
| 6 | **Backfilling** | 2027-01-06 → 2027-01-11 (+5d) | 2027-01-31 → 2027-02-03 (+3d) |  |  |
| SDR-ST-CON-P1-5500 | Backfilling of 200 mm GRP Pipe. | 2027-01-06 → 2027-01-11 (+5d) | 2027-01-31 → 2027-02-03 (+3d) |  | 3d → 41.9d |
| 4 | **Manholes** | 2026-09-22 → 2026-09-28 (+6d) | 2027-02-24 → 2027-03-31 (+35d) |  |  |
| 1 | **Excavation** | 2026-09-22 → 2026-09-28 (+6d) | 2026-11-11 → 2026-11-15 (+4d) |  |  |
| SDR-ST-CON-P1-1820 | Excavation for manhole. Section 1 | 2026-09-22 → 2026-09-28 (+6d) | 2026-10-18 → 2026-10-21 (+3d) |  | 0.1d → 74.8d |
| SDR-ST-CON-P1-2580 | Excavation for manhole. Section 2 | 2026-10-18 → 2026-10-22 (+4d) | 2026-11-11 → 2026-11-15 (+4d) |  | 0.1d → 74.8d |
| 2 | **bedding Works** | 2026-11-11 → 2026-11-16 (+5d) | 2026-12-06 → 2026-12-09 (+3d) |  |  |
| SDR-ST-CON-P1-3410 | Sand bedding for manhole. | 2026-11-11 → 2026-11-16 (+5d) | 2026-12-06 → 2026-12-09 (+3d) |  | 0.1d → 74.8d |
| 3 | **Install Manholes** | 2026-12-06 → 2026-12-10 (+4d) | 2026-12-30 → 2027-01-03 (+4d) |  |  |
| SDR-ST-CON-P1-4390 | Manhole Installation | 2026-12-06 → 2026-12-10 (+4d) | 2026-12-30 → 2027-01-03 (+4d) |  | 0.1d → 74.8d |
| 4 | **Testing** | 2026-12-30 → 2027-01-04 (+5d) | 2027-01-24 → 2027-01-27 (+3d) |  |  |
| SDR-ST-CON-P1-5120 | Testing | 2026-12-30 → 2027-01-04 (+5d) | 2027-01-24 → 2027-01-27 (+3d) |  | 0.1d → 74.8d |
| 5 | **Backfilling** | 2027-01-24 → 2027-02-27 (+34d) | 2027-02-24 → 2027-03-31 (+35d) |  |  |
| SDR-ST-CON-P1-5770 | Backfilling | 2027-01-24 → 2027-02-27 (+34d) | 2027-02-24 → 2027-03-31 (+35d) |  | 0.1d → 56.8d |
| 7 | **Pipes Work** | 2026-10-01 → 2026-09-07 (-24d) | 2027-02-04 → 2027-01-31 (-4d) |  |  |
| 1 | **Excavation** | 2026-10-01 → 2026-09-07 (-24d) | 2026-11-11 → 2026-11-07 (-4d) |  |  |
| SDR-ST-CON-P1-2030 | Excavation for GRP Pipe 200mm Diameter Section 1 | 2026-10-01 → 2026-09-07 A (-24d) | 2026-10-20 → 2026-10-15 (-5d) | 0% → 75% | 3d → 60.8d |
| SDR-ST-CON-P1-2700 | Excavation for GRP Pipe 200mm Diameter Section 2 | 2026-10-24 → 2026-10-20 (-4d) | 2026-11-11 → 2026-11-07 (-4d) |  | 14d → 91.8d |
| 5 | **bedding Works** | 2026-11-11 → 2026-11-08 (-3d) | 2026-11-23 → 2026-11-18 (-5d) |  |  |
| SDR-ST-CON-P1-3330 | Sand bedding for GRP Pipe 200mm Diameter | 2026-11-11 → 2026-11-08 (-3d) | 2026-11-23 → 2026-11-18 (-5d) |  | 14d → 91.8d |
| 2 | **Pipes Laying** | 2026-11-23 → 2026-11-19 (-4d) | 2026-12-17 → 2026-12-13 (-4d) |  |  |
| SDR-ST-CON-P1-3750 | 200 mm GRP Pipe Laying | 2026-11-23 → 2026-11-19 (-4d) | 2026-12-17 → 2026-12-13 (-4d) |  | 14d → 91.8d |
| 3 | **Testing** | 2026-12-17 → 2026-12-14 (-3d) | 2027-01-11 → 2027-01-06 (-5d) |  |  |
| SDR-ST-CON-P1-4670 | Testing of 200 mm GRP Pipe. | 2026-12-17 → 2026-12-14 (-3d) | 2027-01-11 → 2027-01-06 (-5d) |  | 14d → 91.8d |
| 6 | **Backfilling** | 2027-01-11 → 2027-01-07 (-4d) | 2027-02-04 → 2027-01-31 (-4d) |  |  |
| SDR-ST-CON-P1-5670 | Backfilling of 200 mm GRP Pipe. | 2027-01-11 → 2027-01-07 (-4d) | 2027-02-04 → 2027-01-31 (-4d) |  | 14d → 91.8d |
| 4 | **Manholes** | 2026-10-01 → 2026-09-28 (-3d) | 2027-03-14 → 2027-03-03 (-11d) |  |  |
| 1 | **Excavation** | 2026-10-01 → 2026-09-28 (-3d) | 2026-11-19 → 2026-11-15 (-4d) |  |  |
| SDR-ST-CON-P1-2040 | Excavation for manhole. Section 1 | 2026-10-01 → 2026-09-28 (-3d) | 2026-10-26 → 2026-10-21 (-5d) |  | 3d → 60.8d |
| SDR-ST-CON-P1-2760 | Excavation for manhole. Section 2 | 2026-10-26 → 2026-10-22 (-4d) | 2026-11-19 → 2026-11-15 (-4d) |  | 3d → 60.8d |
| 2 | **bedding Works** | 2026-11-19 → 2026-11-16 (-3d) | 2026-12-14 → 2026-12-09 (-5d) |  |  |
| SDR-ST-CON-P1-3620 | Sand bedding for manhole. | 2026-11-19 → 2026-11-16 (-3d) | 2026-12-14 → 2026-12-09 (-5d) |  | 3d → 60.8d |
| 3 | **Install Manholes** | 2026-12-14 → 2026-12-10 (-4d) | 2027-01-07 → 2027-01-03 (-4d) |  |  |
| SDR-ST-CON-P1-4560 | Manhole Installation | 2026-12-14 → 2026-12-10 (-4d) | 2027-01-07 → 2027-01-03 (-4d) |  | 3d → 60.8d |
| 4 | **Testing** | 2027-01-07 → 2027-01-04 (-3d) | 2027-02-01 → 2027-01-27 (-5d) |  |  |
| SDR-ST-CON-P1-5440 | Testing | 2027-01-07 → 2027-01-04 (-3d) | 2027-02-01 → 2027-01-27 (-5d) |  | 3d → 60.8d |
| 5 | **Backfilling** | 2027-02-01 → 2027-01-28 (-4d) | 2027-03-14 → 2027-03-03 (-11d) |  |  |
| SDR-ST-CON-P1-5800 | Backfilling | 2027-02-01 → 2027-01-28 (-4d) | 2027-03-14 → 2027-03-03 (-11d) |  | 3d → 60.8d |
| 11 | **STORM WATER** | 2026-08-31 → 2026-08-09 (-22d) | 2027-01-19 → 2027-04-15 (+86d) |  |  |
| 2 | **ROAD N...** | 2026-08-31 → 2026-08-09 (-22d) | 2027-01-19 → 2027-04-15 (+86d) |  |  |
| 8 | **Pipes Works** | 2026-08-31 → 2026-08-09 (-22d) | 2027-01-19 → 2027-04-15 (+86d) |  |  |
| 1 | **Excavation** | 2026-08-31 → 2026-08-09 (-22d) | 2026-09-26 → 2026-08-31 (-26d) |  |  |
| SDR-ST-CON-P1-1460 | Excavation for GRP Pipes Section 1 | 2026-08-31 → 2026-08-09 A (-22d) | 2026-09-26 → 2026-08-31 A (-26d) | 0% → 100% | 3.5d → none |
| 7 | **bedding Works** | 2026-09-26 → 2026-09-22 (-4d) | 2026-10-20 → 2026-10-21 (+1d) |  |  |
| SDR-ST-CON-P1-2170 | Sand bedding for GRP Pipes | 2026-09-26 → 2026-09-22 A (-4d) | 2026-10-20 → 2026-10-21 (+1d) | 0% → 75% | 3.5d → 44.9d |
| 2 | **Pipes Laying** | 2026-10-20 → 2026-09-15 (-35d) | 2026-11-14 → 2026-12-07 (+23d) |  |  |
| SDR-ST-CON-P1-2910 | Install ST GRP Pipes | 2026-10-20 → 2026-09-15 A (-35d) | 2026-11-14 → 2026-12-07 (+23d) | 0% → 75% | 3.5d → 25.9d |
| 6 | **Testing** | 2026-11-14 → 2026-12-08 (+24d) | 2026-12-08 → 2026-12-31 (+23d) |  |  |
| SDR-ST-CON-P1-3830 | Testing ST GRP Pipes | 2026-11-14 → 2026-12-08 (+24d) | 2026-12-08 → 2026-12-31 (+23d) |  | 3.5d → 25.9d |
| 3 | **Backfilling** | 2026-12-27 → 2027-03-23 (+86d) | 2027-01-19 → 2027-04-15 (+86d) |  |  |
| SDR-ST-CON-P1-4760 | Backfilling ST GRP Pipes | 2026-12-27 → 2027-03-23 (+86d) | 2027-01-19 → 2027-04-15 (+86d) |  | 0d → 3.01d |
| 3 | **Package-3** | 2026-07-08 → 2026-09-28 (+82d) | 2027-07-21 → 2027-08-06 (+16d) |  |  |
| 1 | **Site Works** | 2026-07-08 → 2026-09-28 (+82d) | 2026-08-18 → 2026-10-20 (+63d) |  |  |
| 1 | **Earthworks** | 2026-07-08 → 2026-09-28 (+82d) | 2026-08-18 → 2026-10-20 (+63d) |  |  |
| 2 | **Excavation** | 2026-07-08 → 2026-09-28 (+82d) | 2026-08-01 → 2026-10-20 (+80d) |  |  |
| SDR-ST-CON-P3-1000 | Excavation in all types of soil to the required depth includes removal of waste material | 2026-07-08 → 2026-09-28 (+82d) | 2026-08-01 → 2026-10-20 (+80d) |  | 0d → 10.9d |

| ID | Task | Start | Finish | Total float | Predecessors | Other |
| --- | --- | --- | --- | --- | --- | --- |
| 1 | **Fill** | 2026-08-01 → 2026-09-28 (+58d) | 2026-08-18 → 2026-10-14 (+57d) |  |  |  |
| SDR-ST-CON-P3-1010 | Backfilling with improved and select fill material from the site or imported | 2026-08-01 → 2026-09-28 (+58d) | 2026-08-18 → 2026-10-14 (+57d) | 0d → 10.9d | SDR-ST-CON-P3-1000, SDR-ST-MILS-1000 → SDR-ST-CON-P3-1000 SS, SDR-ST-MILS-1000 |  |
| 2 | **Platform Works** | 2026-08-18 → 2026-10-07 (+50d) | 2027-06-30 → 2027-08-06 (+37d) |  |  |  |
| 1 | **Platform** | 2026-08-18 → 2026-10-07 (+50d) | 2027-02-11 → 2027-04-07 (+55d) |  |  |  |
| 1 | **Earthworks** | 2026-08-18 → 2026-10-07 (+50d) | 2026-09-28 → 2026-11-15 (+48d) |  |  |  |
| 1 | **Excavation** | 2026-08-18 → 2026-10-07 (+50d) | 2026-09-06 → 2026-10-25 (+49d) |  |  |  |
| SDR-ST-CON-P3-1020 | Excavation in all types of soil to the required depth includes removal of waste material | 2026-08-18 → 2026-10-07 (+50d) | 2026-09-06 → 2026-10-25 (+49d) | 0d → 10.9d | SDR-ST-CON-P3-1010, SDR-ST-MILS-1000 → SDR-ST-CON-P3-1010 SS+8d, SDR-ST-MILS-1000 | resources SIC- Cost [48000]; Mason [95.97 h]; Mason Helper [95.97 h]; Excavator [15 h]; Excavator Operator [95.97 h]; Dumper Operator [95.97 h]; Dumper Truck [100 h]; Loader [100 h]; Loader Operator [95.97 h]; Supervisor [38.39 h] → SIC- Cost [48000]; Excavator [15 h]; Excavator Operator [95.97 h]; Dumper Operator [95.97 h]; Dumper Truck [100 h]; Loader [100 h]; Loader Operator [95.97 h]; Supervisor [38.39 h]; Mason [95.97 h]; Mason Helper [95.97 h] |
| 2 | **Fill** | 2026-09-06 → 2026-10-26 (+50d) | 2026-09-28 → 2026-11-15 (+48d) |  |  |  |
| SDR-ST-CON-P3-1030 | Backfilling with improved and select fill material from the site or imported Part 1 | 2026-09-06 → 2026-10-26 (+50d) | 2026-09-28 → 2026-11-15 (+48d) | 0d → 10.9d |  | resources SIC- Cost [53100]; Mason [95.97 h]; Mason Helper [95.97 h]; Excavator [37.86 h]; Excavator Operator [95.97 h]; Dumper Operator [95.97 h]; Dumper Truck [100 h]; Loader [100 h]; Loader Operator [95.97 h]; Supervisor [38.39 h] → SIC- Cost [53100]; Excavator [37.86 h]; Excavator Operator [95.97 h]; Dumper Operator [95.97 h]; Dumper Truck [100 h]; Loader [100 h]; Loader Operator [95.97 h]; Supervisor [38.39 h]; Mason [95.97 h]; Mason Helper [95.97 h] |
| SDR-ST-CON-P3-1040 | Backfilling with improved and select fill material from the site or imported Part 2 | 2026-09-06 → 2026-10-26 (+50d) | 2026-09-26 → 2026-11-12 (+47d) | 2d → 12.9d |  | resources SIC- Cost [53100]; Mason [95.97 h]; Mason Helper [95.97 h]; Excavator [16.25 h]; Excavator Operator [95.97 h]; Dumper Operator [95.97 h]; Dumper Truck [100 h]; Loader [100 h]; Loader Operator [95.97 h]; Supervisor [38.39 h] → SIC- Cost [53100]; Excavator [16.25 h]; Excavator Operator [95.97 h]; Dumper Operator [95.97 h]; Dumper Truck [100 h]; Loader [100 h]; Loader Operator [95.97 h]; Supervisor [38.39 h]; Mason [95.97 h]; Mason Helper [95.97 h] |
| 3 | **Concrete Works** | 2026-09-28 → 2026-11-16 (+49d) | 2027-02-11 → 2027-04-07 (+55d) |  |  |  |
| 1 | **Foundations** | 2026-09-28 → 2026-11-16 (+49d) | 2026-12-01 → 2027-01-20 (+50d) |  |  |  |
| SDR-ST-CON-P3-1060 | Pouring Concrete under Foundation 100 mm thickness lean | 2026-09-28 → 2026-11-16 (+49d) | 2026-10-10 → 2026-11-26 (+47d) | 0d → 10.9d |  | resources SIC- Cost [82000.1]; Supervisor [38.39 h]; Mason [95.97 h]; Mason Helper [95.97 h]; Helper [95.97 h]; Carpenter [95.97 h] → SIC- Cost [82000.1]; Helper [95.97 h]; Supervisor [38.39 h]; Mason [95.97 h]; Mason Helper [95.97 h]; Carpenter [95.97 h] |
| SDR-ST-CON-P3-1080 | Provide and lay 2 layers of waterproofing bitumenous membrane 4mm below footings | 2026-10-10 → 2026-11-28 (+49d) | 2026-10-19 → 2026-12-06 (+48d) | 0d → 10.9d |  | resources SIC- Cost [135300]; Mason [95.97 h]; Mason Helper [95.97 h]; Plumbing Helper [95.97 h]; Plumber [95.97 h] → SIC- Cost [135300]; Plumbing Helper [95.97 h]; Plumber [95.97 h]; Mason [95.97 h]; Mason Helper [95.97 h] |
| SDR-ST-CON-P3-1100 | Pouring Concrete for protecting waterproofing under the foundation 50 mm thickness | 2026-10-19 → 2026-12-09 (+51d) | 2026-10-31 → 2026-12-20 (+50d) | 0d → 8.9d |  | resources SIC- Cost [45100]; Supervisor [38.39 h]; Mason [38.39 h]; Mason Helper [38.39 h]; Helper [38.39 h]; Carpenter [38.39 h] → SIC- Cost [45100]; Helper [38.39 h]; Supervisor [38.39 h]; Mason [38.39 h]; Mason Helper [38.39 h]; Carpenter [38.39 h] |
| 1 | **Footings** | 2026-10-31 → 2026-12-21 (+51d) | 2026-12-01 → 2027-01-20 (+50d) |  |  |  |
| SDR-ST-CON-P3-1130 | Pouring concrete for footings Part 1 | 2026-10-31 → 2026-12-21 (+51d) | 2026-11-11 → 2026-12-31 (+50d) | 0d → 8.9d |  | resources SIC- Cost [309753]; Supervisor [38.39 h]; Mason [38.39 h]; Mason Helper [38.39 h]; Helper [38.39 h]; Carpenter [38.39 h] → SIC- Cost [309753]; Helper [38.39 h]; Supervisor [38.39 h]; Mason [38.39 h]; Mason Helper [38.39 h]; Carpenter [38.39 h] |
| SDR-ST-CON-P3-1150 | Pouring concrete for footings Part 2 | 2026-11-11 → 2027-01-02 (+52d) | 2026-11-23 → 2027-01-12 (+50d) | 0d → 8.9d |  | resources SIC- Cost [309753]; Supervisor [129.56 h]; Mason [129.56 h]; Mason Helper [129.56 h]; Helper [129.56 h]; Carpenter [129.56 h] → SIC- Cost [309753]; Helper [129.56 h]; Supervisor [129.56 h]; Mason [129.56 h]; Mason Helper [129.56 h]; Carpenter [129.56 h] |
| SDR-ST-CON-P3-1180 | Pouring concrete for footings Part 3 | 2026-11-11 → 2027-01-02 (+52d) | 2026-12-01 → 2027-01-20 (+50d) | 0d → 8.9d |  | resources SIC- Cost [309754]; Supervisor [129.56 h]; Mason [129.56 h]; Mason Helper [129.56 h]; Helper [129.56 h]; Carpenter [129.56 h] → SIC- Cost [309754]; Helper [129.56 h]; Supervisor [129.56 h]; Mason [129.56 h]; Mason Helper [129.56 h]; Carpenter [129.56 h] |
| 2 | **Substructure** | 2026-12-01 → 2027-01-09 (+39d) | 2026-12-28 → 2027-02-04 (+38d) |  |  |  |
| 1 | **Basement** | 2026-12-01 → 2027-01-09 (+39d) | 2026-12-16 → 2027-01-23 (+38d) |  |  |  |
| SDR-ST-CON-P3-1200 | Pouring concrete for Basement Part 1 | 2026-12-01 → 2027-01-09 (+39d) | 2026-12-13 → 2027-01-19 (+37d) | 0d → 8.9d | SDR-ST-CON-P3-1180, SDR-ST-MILS-1000 → SDR-ST-CON-P3-1180 SS+6d, SDR-ST-MILS-1000 | resources SIC- Cost [214175]; Supervisor [202.02 h]; Mason [202.02 h]; Mason Helper [202.02 h]; Helper [202.02 h]; Carpenter [202.02 h] → SIC- Cost [214175]; Helper [202.02 h]; Supervisor [202.02 h]; Mason [202.02 h]; Mason Helper [202.02 h]; Carpenter [202.02 h] |
| SDR-ST-CON-P3-1220 | Pouring concrete for Basement Part 2 | 2026-12-07 → 2027-01-14 (+38d) | 2026-12-16 → 2027-01-23 (+38d) | 4d → 31.9d |  | resources SIC- Cost [200]; Supervisor [129.56 h]; Mason [202.02 h]; Mason Helper [202.02 h]; Helper [202.02 h]; Carpenter [202.02 h] → SIC- Cost [200]; Helper [202.02 h]; Supervisor [129.56 h]; Mason [202.02 h]; Mason Helper [202.02 h]; Carpenter [202.02 h] |
| 2 | **Tank** | 2026-12-01 → 2027-01-20 (+50d) | 2026-12-15 → 2027-02-03 (+50d) |  |  |  |
| SDR-ST-CON-P3-1210 | Pouring concrete for Tank Part 1 | 2026-12-01 → 2027-01-20 (+50d) | 2026-12-08 → 2027-01-27 (+50d) | 5d → 22.7d |  | resources SIC- Cost [214175]; Supervisor [202.02 h]; Mason [202.02 h]; Mason Helper [202.02 h]; Helper [202.02 h]; Carpenter [202.02 h] → SIC- Cost [214175]; Helper [202.02 h]; Supervisor [202.02 h]; Mason [202.02 h]; Mason Helper [202.02 h]; Carpenter [202.02 h] |
| SDR-ST-CON-P3-1230 | Pouring concrete for Tank Part 2 | 2026-12-08 → 2027-01-27 (+50d) | 2026-12-15 → 2027-02-03 (+50d) | 4.5d → 22.7d |  | resources SIC- Cost [214175]; Supervisor [202.02 h]; Mason [202.02 h]; Mason Helper [202.02 h]; Helper [202.02 h]; Carpenter [202.02 h] → SIC- Cost [214175]; Helper [202.02 h]; Supervisor [202.02 h]; Mason [202.02 h]; Mason Helper [202.02 h]; Carpenter [202.02 h] |
| 3 | **Retaining Walls** | 2026-12-13 → 2027-01-21 (+39d) | 2026-12-28 → 2027-02-04 (+38d) |  |  |  |
| SDR-ST-CON-P3-1190 | Pouring concrete for Retaining Walls Part 1 | 2026-12-13 → 2027-01-21 (+39d) | 2026-12-21 → 2027-01-28 (+38d) | 0d → 8.9d | SDR-ST-CON-P3-1180, SDR-ST-MILS-1000, SDR-ST-CON-P3-1200, SDR-ST-CON-P1-3830 → SDR-ST-CON-P3-1180, SDR-ST-MILS-1000, SDR-ST-CON-P3-1200 FS+1d, SDR-ST-CON-P1-3830 | resources SIC- Cost [214175]; Supervisor [40.4 h]; Mason [40.4 h]; Mason Helper [40.4 h]; Helper [40.4 h]; Carpenter [40.4 h] → SIC- Cost [214175]; Helper [40.4 h]; Supervisor [40.4 h]; Mason [40.4 h]; Mason Helper [40.4 h]; Carpenter [40.4 h] |
| SDR-ST-CON-P3-1250 | Pouring concrete for Retaining Walls Part 2 | 2026-12-21 → 2027-01-30 (+40d) | 2026-12-28 → 2027-02-04 (+38d) | 0d → 8.9d |  | resources SIC- Cost [214175]; Supervisor [202.02 h]; Mason [202.02 h]; Mason Helper [202.02 h]; Helper [202.02 h]; Carpenter [202.02 h] → SIC- Cost [214175]; Helper [202.02 h]; Supervisor [202.02 h]; Mason [202.02 h]; Mason Helper [202.02 h]; Carpenter [202.02 h] |
| 3 | **Waterproofing Vertical** | 2026-12-28 → 2027-02-06 (+40d) | 2027-01-11 → 2027-02-28 (+48d) |  |  |  |
| SDR-ST-CON-P3-1300 | lay 2 layers of waterproofing bitumenous membrane 4mm including protection board for substructure vertical Part 1 | 2026-12-28 → 2027-02-06 (+40d) | 2027-01-02 → 2027-02-11 (+40d) | 0d → 8.9d |  | resources SIC- Cost [263720]; Mason [151.16 h]; Mason Helper [151.16 h]; Plumbing Helper [1157.22 h]; Plumber [1157.22 h] → SIC- Cost [263720]; Plumbing Helper [1157.22 h]; Plumber [1157.22 h]; Mason [151.16 h]; Mason Helper [151.16 h] |
| SDR-ST-CON-P3-1370 | lay 2 layers of waterproofing bitumenous membrane 4mm including protection board for substructure vertical Part 2 | 2027-01-02 → 2027-02-11 (+40d) | 2027-01-06 → 2027-02-18 (+43d) | 0d → 8.9d |  | resources SIC- Cost [263720]; Mason [40.4 h]; Mason Helper [40.4 h]; Plumbing Helper [40.4 h]; Plumber [40.4 h] → SIC- Cost [263720]; Plumbing Helper [40.4 h]; Plumber [40.4 h]; Mason [40.4 h]; Mason Helper [40.4 h] |
| SDR-ST-CON-P3-1430 | lay 2 layers of waterproofing bitumenous membrane 4mm including protection board for substructure vertical Part 3 | 2027-01-06 → 2027-02-20 (+45d) | 2027-01-11 → 2027-02-28 (+48d) | 0d → 8.9d |  | resources SIC- Cost [263720]; Mason [129.56 h]; Mason Helper [129.56 h]; Plumbing Helper [129.56 h]; Plumber [129.56 h] → SIC- Cost [263720]; Plumbing Helper [129.56 h]; Plumber [129.56 h]; Mason [129.56 h]; Mason Helper [129.56 h] |
| 4 | **Neck Walls** | 2027-01-11 → 2027-02-28 (+48d) | 2027-01-17 → 2027-03-14 (+56d) |  |  |  |
| SDR-ST-CON-P3-1270 | Pouring concrete for Neck Walls Part 1 | 2027-01-11 → 2027-02-28 (+48d) | 2027-01-17 → 2027-03-14 (+56d) | 0d → 8.9d |  | resources SIC- Cost [214175]; Supervisor [40.4 h]; Mason [40.4 h]; Mason Helper [40.4 h]; Helper [40.4 h]; Carpenter [40.4 h] → SIC- Cost [214175]; Helper [40.4 h]; Supervisor [40.4 h]; Mason [40.4 h]; Mason Helper [40.4 h]; Carpenter [40.4 h] |
| SDR-ST-CON-P3-1290 | Pouring concrete for Neck Walls Part 2 | 2027-01-11 → 2027-02-28 (+48d) | 2027-01-17 → 2027-03-14 (+56d) | 0d → 8.9d |  | resources SIC- Cost [214175]; Supervisor [2020.2 h]; Mason [4525.24 h]; Mason Helper [40.4 h]; Helper [40.4 h]; Carpenter [40.4 h] → SIC- Cost [214175]; Helper [40.4 h]; Supervisor [2020.2 h]; Mason [4525.24 h]; Mason Helper [40.4 h]; Carpenter [40.4 h] |
| 5 | **Preparation for Slab** | 2027-01-17 → 2027-03-14 (+56d) | 2027-01-26 → 2027-03-23 (+56d) |  |  |  |
| SDR-ST-CON-P3-1320 | Pouring Concrete under slab on grade and gound beams 50 mm thickness lean | 2027-01-17 → 2027-03-14 (+56d) | 2027-01-21 → 2027-03-18 (+56d) | 0d → 8.9d |  | resources SIC- Cost [79800.1]; Supervisor [129.56 h]; Mason [129.56 h]; Mason Helper [129.56 h]; Helper [129.56 h]; Carpenter [129.56 h] → SIC- Cost [79800.1]; Helper [129.56 h]; Supervisor [129.56 h]; Mason [129.56 h]; Mason Helper [129.56 h]; Carpenter [129.56 h] |
| SDR-ST-CON-P3-1360 | Supply and lay 250 micron thk polyethylene sheet below slab on grade and ground beams | 2027-01-21 → 2027-03-18 (+56d) | 2027-01-26 → 2027-03-23 (+56d) | 0d → 8.9d |  | resources SIC- Cost [21000]; Mason [50.3 h]; Mason Helper [50.3 h]; Plumbing Helper [129.56 h]; Plumber [28.79 h] → SIC- Cost [21000]; Plumbing Helper [129.56 h]; Plumber [28.79 h]; Mason [50.3 h]; Mason Helper [50.3 h] |
| 6 | **Slab on Grade** | 2027-01-26 → 2027-03-23 (+56d) | 2027-01-31 → 2027-03-28 (+56d) |  |  |  |
| SDR-ST-CON-P3-1380 | Pouring Concrete for Slab on grade | 2027-01-26 → 2027-03-23 (+56d) | 2027-01-31 → 2027-03-28 (+56d) | 0d → 8.9d |  | resources SIC- Cost [44900]; Supervisor [129.56 h]; Mason [4510.73 h]; Mason Helper [4510.73 h]; Helper [129.56 h]; Carpenter [129.56 h] → SIC- Cost [44900]; Helper [129.56 h]; Supervisor [129.56 h]; Mason [4510.73 h]; Mason Helper [4510.73 h]; Carpenter [129.56 h] |
| 7 | **Finishes** | 2027-01-31 → 2027-03-28 (+56d) | 2027-02-11 → 2027-04-07 (+55d) |  |  |  |
| 9 | **Troweled Finish** | 2027-01-31 → 2027-03-28 (+56d) | 2027-02-03 → 2027-03-31 (+56d) |  |  |  |
| SDR-ST-CON-P3-1400 | Pouring Concrete for Slab on grade with troweled finish Part 1 | 2027-01-31 → 2027-03-28 (+56d) | 2027-02-03 → 2027-03-31 (+56d) | 0d → 8.9d |  | resources SIC- Cost [112030]; Supervisor [129.56 h]; Mason [90.55 h]; Mason Helper [90.55 h]; Helper [129.56 h]; Carpenter [129.56 h] → SIC- Cost [112030]; Helper [129.56 h]; Supervisor [129.56 h]; Mason [90.55 h]; Mason Helper [90.55 h]; Carpenter [129.56 h] |
| SDR-ST-CON-P3-1500 | Pouring Concrete for Slab on grade with troweled finish Part 2 | 2027-01-31 → 2027-03-28 (+56d) | 2027-02-03 → 2027-03-31 (+56d) | 0d → 8.9d |  | resources SIC- Cost [112030]; Supervisor [129.56 h]; Mason [129.56 h]; Mason Helper [129.56 h]; Helper [129.56 h]; Carpenter [129.56 h] → SIC- Cost [112030]; Helper [129.56 h]; Supervisor [129.56 h]; Mason [129.56 h]; Mason Helper [129.56 h]; Carpenter [129.56 h] |
| 8 | **Exposed Aggregate Finish** | 2027-02-03 → 2027-03-31 (+56d) | 2027-02-11 → 2027-04-07 (+55d) |  |  |  |
| SDR-ST-CON-P3-1420 | Pouring Concrete for Slab on grade with exposed aggregate finish Part 1 | 2027-02-03 → 2027-03-31 (+56d) | 2027-02-07 → 2027-04-04 (+56d) | 0d → 8.9d |  | resources SIC- Cost [272386]; Supervisor [129.56 h]; Mason [2141.68 h]; Mason Helper [2141.68 h]; Helper [1135.62 h]; Carpenter [692.17 h] → SIC- Cost [272386]; Helper [1135.62 h]; Supervisor [129.56 h]; Mason [2141.68 h]; Mason Helper [2141.68 h]; Carpenter [692.17 h] |
| SDR-ST-CON-P3-1480 | Pouring Concrete for Slab on grade with exposed aggregate finish Part 2 | 2027-02-03 → 2027-03-31 (+56d) | 2027-02-07 → 2027-04-04 (+56d) | 0d → 8.9d |  | resources SIC- Cost [272387]; Supervisor [129.56 h]; Mason [2141.68 h]; Mason Helper [2141.68 h]; Helper [1135.62 h]; Carpenter [129.56 h] → SIC- Cost [272387]; Helper [1135.62 h]; Supervisor [129.56 h]; Mason [2141.68 h]; Mason Helper [2141.68 h]; Carpenter [129.56 h] |
| SDR-ST-CON-P3-1490 | Pouring Concrete for Slab on grade with exposed aggregate finish Part 3 | 2027-02-03 → 2027-03-31 (+56d) | 2027-02-11 → 2027-04-07 (+55d) | 0d → 8.9d |  | resources SIC- Cost [272387]; Supervisor [28.79 h]; Mason [2141.68 h]; Mason Helper [2141.68 h]; Helper [129.56 h]; Carpenter [129.56 h] → SIC- Cost [272387]; Helper [129.56 h]; Supervisor [28.79 h]; Mason [2141.68 h]; Mason Helper [2141.68 h]; Carpenter [129.56 h] |
| 3 | **Finishes & Architectural Works** | 2027-04-29 → 2027-06-14 (+46d) | 2027-06-30 → 2027-08-06 (+37d) |  |  |  |
| SDR-ST-CON-P3-1540 | Installation of metal steel 1200mm railing including all accessories Part 1 | 2027-04-29 → 2027-06-14 (+46d) | 2027-05-23 → 2027-07-01 (+39d) | 17.7d → 0.6d | SDR-ST-CON-P3-1400, SDR-ST-CON-P3-1490, SDR-ST-MILS-1000, SDR-ST-CON-P1-5430, SDR-ST-CON-P1-4070, SDR-ST-CON-P1-4320, SDR-ST-CON-P1-5460 → SDR-ST-CON-P3-1400, SDR-ST-CON-P3-1490, SDR-ST-MILS-1000, SDR-ST-CON-P1-5430, SDR-ST-CON-P1-4070, SDR-ST-CON-P1-4320, SDR-ST-CON-P1-5460 SS+3d |  |
| SDR-ST-CON-P3-1590 | Installation of metal steel 1200mm railing including all accessories Part 2 | 2027-05-23 → 2027-07-01 (+39d) | 2027-06-09 → 2027-07-19 (+40d) | 17.7d → 0.6d |  |  |
| SDR-ST-CON-P3-1640 | Installation of metal steel 1200mm railing including all accessories Part3 | 2027-06-09 → 2027-07-19 (+40d) | 2027-06-19 → 2027-07-28 (+39d) | 17.7d → 0.6d |  |  |
| SDR-ST-CON-P3-1710 | Platform Paving & warning tiles | 2027-06-19 → 2027-07-28 (+39d) | 2027-06-23 → 2027-08-02 (+40d) | 17.7d → 0.6d | SDR-ST-CON-P3-1590, SDR-ST-CON-P3-1640, SDR-ST-MILS-1000, SDR-ST-CON-P1-5920 → SDR-ST-CON-P3-1590, SDR-ST-CON-P3-1640, SDR-ST-MILS-1000 SS, SDR-ST-CON-P1-5920 SS |  |
| SDR-ST-CON-P3-1760 | Painting Part 1 | 2027-06-23 → 2027-07-31 (+38d) | 2027-06-30 → 2027-08-06 (+37d) | 17.7d → 0.6d | SDR-ST-CON-P3-1710, SDR-ST-MILS-1000 → SDR-ST-CON-P3-1710 FF+4d, SDR-ST-MILS-1000 | resources SIC- Cost [143758]; Supervisor [151.16 h]; Helper [151.16 h]; Painter [151.16 h] → SIC- Cost [143758]; Helper [151.16 h]; Supervisor [151.16 h]; Painter [151.16 h] |
| SDR-ST-CON-P3-1840 | Painting Part 2 | 2027-06-23 → 2027-07-31 (+38d) | 2027-06-30 → 2027-08-06 (+37d) | 17.7d → 0.6d |  | resources SIC- Cost [143758]; Supervisor [151.16 h]; Helper [151.16 h]; Painter [151.16 h] → SIC- Cost [143758]; Helper [151.16 h]; Supervisor [151.16 h]; Painter [151.16 h] |
| 5 | **Platform Electrical Works** | 2027-01-17 → 2027-03-14 (+56d) | 2027-02-09 → 2027-04-06 (+56d) |  |  |  |
| SDR-ST-CON-P3-1310 | cable conduits | 2027-01-17 → 2027-03-14 (+56d) | 2027-02-09 → 2027-04-06 (+56d) | 13.7d → 9.8d |  |  |
| 3 | **Canopy works** | 2026-10-01 → 2026-11-19 (+49d) | 2027-07-20 → 2027-08-01 (+12d) |  |  |  |
| 1 | **Civil and Architectural Works** | 2026-10-01 → 2026-11-19 (+49d) | 2026-12-20 → 2027-03-17 (+87d) |  |  |  |
| 1 | **Concrete** | 2026-10-01 → 2026-11-19 (+49d) | 2026-12-20 → 2027-03-17 (+87d) |  |  |  |
| SDR-ST-CON-P3-1050 | Pouring Concrete under the foundation 100 mm thickness lean | 2026-10-01 → 2026-11-19 (+49d) | 2026-10-17 → 2026-12-03 (+47d) | 15.2d → 40.5d |  | resources charpenter [38.39 h]; SIC- Cost [11200]; Supervisor [38.39 h]; Civil Forman [38.39 h]; Mason [38.39 h]; Mason Helper [38.39 h]; Labor [38.39 h] → SIC- Cost [11200]; Civil Forman [38.39 h]; Labor [38.39 h]; charpenter [38.39 h]; Supervisor [38.39 h]; Mason [38.39 h]; Mason Helper [38.39 h] |
| SDR-ST-CON-P3-1090 | Pouring Concrete for protecting waterproofing under the foundation 50 mm thickness | 2026-11-07 → 2027-01-23 (+77d) | 2026-11-19 → 2027-02-06 (+79d) | 3.1d → 3.01d |  | resources charpenter [38.39 h]; SIC- Cost [6720.01]; Supervisor [38.39 h]; Civil Forman [38.39 h]; Mason [38.39 h]; Mason Helper [38.39 h]; Labor [38.39 h] → SIC- Cost [6720.01]; Civil Forman [38.39 h]; Labor [38.39 h]; charpenter [38.39 h]; Supervisor [38.39 h]; Mason [38.39 h]; Mason Helper [38.39 h] |
| SDR-ST-CON-P3-1110 | Pouring Concrete for Footings | 2026-11-24 → 2027-02-06 (+74d) | 2026-12-07 → 2027-03-01 (+84d) | 0.1d → 3.01d |  | resources charpenter [38.39 h]; SIC- Cost [95800.1]; Supervisor [38.39 h]; Civil Forman [38.39 h]; Mason [38.39 h]; Mason Helper [38.39 h]; Labor [38.39 h] → SIC- Cost [95800.1]; Civil Forman [38.39 h]; Labor [38.39 h]; charpenter [38.39 h]; Supervisor [38.39 h]; Mason [38.39 h]; Mason Helper [38.39 h] |
| SDR-ST-CON-P3-1140 | Pouring Concrete for Coulumns necks | 2026-12-12 → 2027-03-01 (+79d) | 2026-12-20 → 2027-03-17 (+87d) | 0.1d → 3.01d |  | resources charpenter [202.02 h]; SIC- Cost [52720]; Supervisor [129.56 h]; Civil Forman [202.02 h]; Mason [202.02 h]; Mason Helper [202.02 h]; Labor [202.02 h] → SIC- Cost [52720]; Civil Forman [202.02 h]; Labor [202.02 h]; charpenter [202.02 h]; Supervisor [129.56 h]; Mason [202.02 h]; Mason Helper [202.02 h] |
| 4 | **Metals** | 2026-10-17 → 2026-12-05 (+49d) | 2027-07-20 → 2027-08-01 (+12d) |  |  |  |
| 2 | **Structural Steel Framing** | 2026-11-24 → 2027-02-06 (+74d) | 2027-04-14 → 2027-06-29 (+76d) |  |  |  |
| SDR-ST-CON-P3-1120 | Anchor Bolt Verification | 2026-11-24 → 2027-02-06 (+74d) | 2026-12-12 → 2027-03-08 (+86d) | 0.1d → 3.01d |  |  |
| SDR-ST-CON-P3-1160 | Erection of Columns Part 1 | 2026-12-13 → 2027-02-25 (+74d) | 2027-01-04 → 2027-03-29 (+84d) | 0.1d → 3.01d | SDR-ST-CON-P3-1120, SDR-ST-PRO-MS-1140, SDR-ST-PRO-MS-1130, SDR-ST-PRO-MS-1110, SDR-ST-MILS-1000, SDR-ST-CON-P1-3670 → SDR-ST-CON-P3-1120 SS+10d, SDR-ST-PRO-MS-1140, SDR-ST-PRO-MS-1130, SDR-ST-PRO-MS-1110, SDR-ST-MILS-1000, SDR-ST-CON-P1-3670 | resources charpenter [136.76 h]; SIC- Cost [161728]; Supervisor [136.76 h]; Mason [136.76 h]; Mason Helper [136.76 h]; Surveyor [136.76 h]; Helper [136.76 h] → SIC- Cost [161728]; Surveyor [136.76 h]; Helper [136.76 h]; charpenter [136.76 h]; Supervisor [136.76 h]; Mason [136.76 h]; Mason Helper [136.76 h] |
| SDR-ST-CON-P3-1240 | Erection of Columns Part 2 | 2027-01-05 → 2027-03-29 (+83d) | 2027-01-17 → 2027-04-11 (+84d) | 0.1d → 3.01d |  | resources charpenter [136.76 h]; SIC- Cost [161728]; Supervisor [136.76 h]; Mason [136.76 h]; Mason Helper [136.76 h]; Surveyor [136.76 h]; Helper [136.76 h] → SIC- Cost [161728]; Surveyor [136.76 h]; Helper [136.76 h]; charpenter [136.76 h]; Supervisor [136.76 h]; Mason [136.76 h]; Mason Helper [136.76 h] |

| ID | Task | Start | Finish | Duration | Total float | Predecessors | Other |
| --- | --- | --- | --- | --- | --- | --- | --- |
| SDR-ST-CON-P3-1260 | Erection of Rafters Part 1 | 2027-01-18 → 2027-04-14 (+86d) | 2027-02-04 → 2027-05-02 (+87d) |  | 0.1d → 0.7d |  | resources charpenter [129.56 h]; SIC- Cost [125789]; Supervisor [129.56 h]; Mason [129.56 h]; Mason Helper [129.56 h]; Surveyor [129.56 h]; Helper [129.56 h] → SIC- Cost [125789]; Surveyor [129.56 h]; Helper [129.56 h]; charpenter [129.56 h]; Supervisor [129.56 h]; Mason [129.56 h]; Mason Helper [129.56 h] |
| SDR-ST-CON-P3-1280 | Erection of Rafters Part 2 | 2027-01-18 → 2027-04-14 (+86d) | 2027-02-04 → 2027-05-02 (+87d) |  | 0.1d → 0.7d |  | resources charpenter [107.97 h]; SIC- Cost [125789]; Supervisor [107.97 h]; Mason [107.97 h]; Mason Helper [107.97 h]; Surveyor [107.97 h]; Helper [107.97 h] → SIC- Cost [125789]; Surveyor [107.97 h]; Helper [107.97 h]; charpenter [107.97 h]; Supervisor [107.97 h]; Mason [107.97 h]; Mason Helper [107.97 h] |
| SDR-ST-CON-P3-1330 | Installation of Bracing System Part 1 | 2027-02-06 → 2027-05-03 (+86d) | 2027-03-06 → 2027-05-25 (+80d) |  | 13.1d → 28d |  | resources charpenter [129.56 h]; SIC- Cost [107819]; Supervisor [129.56 h]; Mason [129.56 h]; Mason Helper [129.56 h]; Surveyor [129.56 h]; Helper [129.56 h] → SIC- Cost [107819]; Surveyor [129.56 h]; Helper [129.56 h]; charpenter [129.56 h]; Supervisor [129.56 h]; Mason [129.56 h]; Mason Helper [129.56 h] |
| SDR-ST-CON-P3-1340 | Installation of Beams Part 1 | 2027-02-06 → 2027-05-03 (+86d) | 2027-02-24 → 2027-05-13 (+78d) |  | 0.2d → 19d |  | resources charpenter [115.17 h]; SIC- Cost [143758]; Supervisor [115.17 h]; Mason [2127.28 h]; Mason Helper [2127.28 h]; Surveyor [115.17 h]; Helper [115.17 h] → SIC- Cost [143758]; Surveyor [115.17 h]; Helper [115.17 h]; charpenter [115.17 h]; Supervisor [115.17 h]; Mason [2127.28 h]; Mason Helper [2127.28 h] |
| SDR-ST-CON-P3-1350 | Installation of Girders Part 1 | 2027-02-06 → 2027-05-03 (+86d) | 2027-03-17 → 2027-05-31 (+75d) |  | 0d → 0.7d | SDR-ST-CON-P3-1280, SDR-ST-MILS-1000, SDR-ST-TC-1010 → SDR-ST-CON-P3-1280, SDR-ST-MILS-1000, SDR-ST-TC-1010 SS+12d | resources charpenter [100.77 h]; SIC- Cost [89849]; Supervisor [100.77 h]; Mason [100.77 h]; Mason Helper [100.77 h]; Surveyor [100.77 h]; Helper [100.77 h] → SIC- Cost [89849]; Surveyor [100.77 h]; Helper [100.77 h]; charpenter [100.77 h]; Supervisor [100.77 h]; Mason [100.77 h]; Mason Helper [100.77 h] |
| SDR-ST-CON-P3-1390 | Installation of Beams Part 2 | 2027-02-24 → 2027-05-22 (+87d) | 2027-03-20 → 2027-06-03 (+75d) |  | 0d → 18d | SDR-ST-CON-P3-1340, SDR-ST-PRO-MS-1220, SDR-ST-PRO-MS-1210, SDR-ST-MILS-1000, SDR-ST-CON-P1-5770, SDR-ST-CON-P1-5740, SDR-ST-CON-P1-5700 → SDR-ST-CON-P3-1340, SDR-ST-PRO-MS-1220 FF, SDR-ST-PRO-MS-1210, SDR-ST-MILS-1000, SDR-ST-CON-P1-5770, SDR-ST-CON-P1-5740, SDR-ST-CON-P1-5700 | resources charpenter [115.17 h]; SIC- Cost [143758]; Supervisor [115.17 h]; Mason [115.17 h]; Mason Helper [115.17 h]; Surveyor [115.17 h]; Helper [115.17 h] → SIC- Cost [143758]; Surveyor [115.17 h]; Helper [115.17 h]; charpenter [115.17 h]; Supervisor [115.17 h]; Mason [115.17 h]; Mason Helper [115.17 h] |
| SDR-ST-CON-P3-1410 | Installation of Bracing System Part 2 | 2027-03-06 → 2027-05-26 (+81d) | 2027-03-30 → 2027-06-13 (+75d) |  | 13.1d → 28d |  | resources charpenter [129.56 h]; SIC- Cost [107819]; Supervisor [129.56 h]; Mason [129.56 h]; Mason Helper [129.56 h]; Surveyor [129.56 h]; Helper [129.56 h] → SIC- Cost [107819]; Surveyor [129.56 h]; Helper [129.56 h]; charpenter [129.56 h]; Supervisor [129.56 h]; Mason [129.56 h]; Mason Helper [129.56 h] |
| SDR-ST-CON-P3-1440 | Installation of Girders Part 2 | 2027-03-17 → 2027-06-01 (+76d) | 2027-03-31 → 2027-06-15 (+76d) |  | 0d → 0.7d | SDR-ST-CON-P3-1350, SDR-ST-MILS-1000, SDR-ST-CON-P1-5800 → SDR-ST-CON-P3-1350 FS+0.3d, SDR-ST-MILS-1000, SDR-ST-CON-P1-5800 | resources charpenter [100.77 h]; SIC- Cost [89849]; Supervisor [100.77 h]; Mason [100.77 h]; Mason Helper [100.77 h]; Surveyor [100.77 h]; Helper [100.77 h] → SIC- Cost [89849]; Surveyor [100.77 h]; Helper [100.77 h]; charpenter [100.77 h]; Supervisor [100.77 h]; Mason [100.77 h]; Mason Helper [100.77 h] |
| SDR-ST-CON-P3-1460 | Installation of Connections (Bolting) | 2027-03-20 → 2027-06-06 (+78d) | 2027-04-03 → 2027-06-19 (+77d) |  | 0d → 18d | SDR-ST-CON-P3-1390, SDR-ST-PRO-MS-1230, SDR-ST-MILS-1000 → SDR-ST-CON-P3-1390 FS+1d, SDR-ST-PRO-MS-1230, SDR-ST-MILS-1000 | resources charpenter [143.96 h]; SIC- Cost [53909.4]; Supervisor [143.96 h]; Mason [143.96 h]; Mason Helper [143.96 h]; Surveyor [143.96 h]; Helper [143.96 h] → SIC- Cost [53909.4]; Surveyor [143.96 h]; Helper [143.96 h]; charpenter [143.96 h]; Supervisor [143.96 h]; Mason [143.96 h]; Mason Helper [143.96 h] |
| SDR-ST-CON-P3-1450 | Installation of Joists Part 1 | 2027-03-31 → 2027-06-15 (+76d) | 2027-04-14 → 2027-06-29 (+76d) |  | 0d → 14.7d |  | resources charpenter [115.17 h]; SIC- Cost [89849]; Supervisor [115.17 h]; Mason [115.17 h]; Mason Helper [115.17 h]; Surveyor [115.17 h]; Helper [115.17 h] → SIC- Cost [89849]; Surveyor [115.17 h]; Helper [115.17 h]; charpenter [115.17 h]; Supervisor [115.17 h]; Mason [115.17 h]; Mason Helper [115.17 h] |
| SDR-ST-CON-P3-1470 | Installation of Joists Part 2 | 2027-03-31 → 2027-06-15 (+76d) | 2027-04-14 → 2027-06-29 (+76d) |  | 0d → 14.7d |  | resources charpenter [115.17 h]; SIC- Cost [89849]; Supervisor [115.17 h]; Mason [115.17 h]; Mason Helper [115.17 h]; Surveyor [115.17 h]; Helper [115.17 h] → SIC- Cost [89849]; Surveyor [115.17 h]; Helper [115.17 h]; charpenter [115.17 h]; Supervisor [115.17 h]; Mason [115.17 h]; Mason Helper [115.17 h] |
| 3 | **Aluminum Cladding Panels** | 2027-04-14 → 2027-06-28 (+75d) | 2027-07-20 → 2027-08-01 (+12d) |  |  |  |  |
| 1 | **Steel Subframe Installation** | 2027-04-14 → 2027-06-28 (+75d) | 2027-07-20 → 2027-07-27 (+7d) |  |  |  |  |
| SDR-ST-CON-P3-1560 | Install Steel Subframe Supports Part 1 | 2027-04-24 → 2027-06-28 (+65d) | 2027-05-15 → 2027-07-19 (+65d) |  | 0d → 5.5d | SDR-ST-CON-P3-1530, SDR-ST-MILS-1090, SDR-ST-MILS-1000, SDR-ST-PRO-MS-1250, SDR-ST-CON-P1-4070, SDR-ST-CON-P1-5280, SDR-ST-CON-P1-5490 → SDR-ST-CON-P3-1530 FF, SDR-ST-MILS-1090 SS, SDR-ST-MILS-1000, SDR-ST-PRO-MS-1250, SDR-ST-CON-P1-4070, SDR-ST-CON-P1-5280 SS+2d, SDR-ST-CON-P1-5490 SS+2d |  |
| SDR-ST-CON-P3-1620 | Install Steel Subframe Supports Part 2 | 2027-05-15 → 2027-06-28 (+44d) | 2027-06-10 → 2027-07-19 (+39d) |  | 0d → 5.5d | SDR-ST-CON-P3-1560, SDR-ST-MILS-1000, SDR-ST-CON-P1-5460, SDR-ST-CON-P1-3980, SDR-ST-CON-P1-4050 → SDR-ST-CON-P3-1560 FF, SDR-ST-MILS-1000, SDR-ST-CON-P1-5460, SDR-ST-CON-P1-3980, SDR-ST-CON-P1-4050 |  |
| SDR-ST-CON-P3-1530 | Survey & Setting Out for Cladding | 2027-04-14 → 2027-06-29 (+76d) | 2027-04-24 → 2027-07-08 (+75d) |  | 0d → 14.7d |  |  |
| SDR-ST-CON-P3-1690 | Install Steel Subframe Supports Part 3 | 2027-06-10 → 2027-07-10 (+30d) | 2027-06-26 → 2027-07-25 (+29d) |  | 0.7d → 9.5d | SDR-ST-CON-P3-1620, SDR-ST-MILS-1000 → SDR-ST-CON-P3-1620 SS+10d, SDR-ST-MILS-1000 |  |
| SDR-ST-CON-P3-1720 | Alignment & Leveling of Subframe Part 1 | 2027-06-10 → 2027-07-10 (+30d) | 2027-06-23 → 2027-07-22 (+29d) |  | 0.7d → 9.5d |  |  |
| SDR-ST-CON-P3-1770 | Alignment & Leveling of Subframe Part 2 | 2027-06-23 → 2027-07-17 (+24d) | 2027-07-03 → 2027-07-26 (+23d) |  | 0.7d → 9.5d | SDR-ST-CON-P3-1720, SDR-ST-MILS-1000 → SDR-ST-CON-P3-1720 SS+6d, SDR-ST-MILS-1000 |  |
| SDR-ST-CON-P3-1830 | Fixing & Tightening of Subframe Connections Part 1 | 2027-07-03 → 2027-07-18 (+15d) | 2027-07-12 → 2027-07-27 (+15d) |  | 0.7d → 9.5d | SDR-ST-CON-P3-1770, SDR-ST-MILS-1000 → SDR-ST-CON-P3-1770 SS+1d, SDR-ST-MILS-1000 |  |
| SDR-ST-CON-P3-1880 | Fixing & Tightening of Subframe Connections Part 2 | 2027-07-12 → 2027-07-19 (+7d) | 2027-07-20 → 2027-07-27 (+7d) |  | 0.7d → 9.5d | SDR-ST-CON-P3-1830, SDR-ST-MILS-1000 → SDR-ST-CON-P3-1830 FF, SDR-ST-MILS-1000 |  |
| 2 | **Aluminum Cladding Installation** | 2027-05-15 → 2027-06-28 (+44d) | 2027-07-20 → 2027-08-01 (+12d) |  |  |  |  |
| SDR-ST-CON-P3-1610 | Install Aluminum Panels (4mm Thick Part 1 | 2027-05-15 → 2027-06-28 (+44d) | 2027-06-09 → 2027-07-18 (+39d) |  | 0d → 5.5d |  |  |
| SDR-ST-CON-P3-1660 | Install Aluminum Panels (4mm Thick Part 2 | 2027-06-09 → 2027-07-18 (+39d) | 2027-06-23 → 2027-08-01 (+39d) |  | 0d → 5.5d |  |  |
| SDR-ST-CON-P3-1700 | Install Aluminum Panels (4mm Thick Part 3 | 2027-06-23 → 2027-07-18 (+25d) | 2027-07-01 → 2027-07-26 (+25d) |  | 0d → 10.5d | SDR-ST-CON-P3-1660, SDR-ST-MILS-1000 → SDR-ST-CON-P3-1660 SS, SDR-ST-MILS-1000 |  |
| SDR-ST-CON-P3-1890 | Sealant & Finishing Works | 2027-07-15 → 2027-07-19 (+4d) | 2027-07-20 → 2027-07-24 (+4d) |  | 0d → 12.4d | SDR-ST-CON-P3-1860, SDR-ST-MILS-1000 → SDR-ST-CON-P3-1860 FF, SDR-ST-MILS-1000 |  |
| SDR-ST-CON-P3-1730 | Fix Panels with Snap Hooks & Fasteners Part 1 | 2027-07-01 → 2027-07-19 (+18d) | 2027-07-08 → 2027-07-26 (+18d) |  | 0d → 10.5d | SDR-ST-CON-P3-1700, SDR-ST-MILS-1000 → SDR-ST-CON-P3-1700 FF, SDR-ST-MILS-1000 |  |
| SDR-ST-CON-P3-1750 | Fix Panels with Snap Hooks & Fasteners Part 2 | 2027-07-01 → 2027-07-19 (+18d) | 2027-07-07 → 2027-07-25 (+18d) |  | 0d → 11.5d | SDR-ST-CON-P3-1730 SS, SDR-ST-CON-P1-5920, SDR-ST-MILS-1000 → SDR-ST-CON-P3-1730 SS, SDR-ST-CON-P1-5920 FF, SDR-ST-MILS-1000 |  |
| SDR-ST-CON-P3-1810 | Install Drainage System Part 1 | 2027-07-07 → 2027-07-19 (+12d) | 2027-07-12 → 2027-07-24 (+12d) |  | 0d → 12.4d | SDR-ST-CON-P3-1750, SDR-ST-MILS-1000 → SDR-ST-CON-P3-1750 SS, SDR-ST-MILS-1000 |  |
| SDR-ST-CON-P3-1820 | Install Drainage System Part 2 | 2027-07-07 → 2027-07-19 (+12d) | 2027-07-12 → 2027-07-24 (+12d) |  | 0d → 12.4d |  |  |
| SDR-ST-CON-P3-1850 | Adjustment & Alignment of Panels Part 1 | 2027-07-12 → 2027-07-20 (+8d) | 2027-07-15 → 2027-07-24 (+9d) |  | 0d → 12.4d | SDR-ST-CON-P3-1820, SDR-ST-CON-P1-6000, SDR-ST-MILS-1000 → SDR-ST-CON-P3-1820 FF, SDR-ST-CON-P1-6000, SDR-ST-MILS-1000 |  |
| SDR-ST-CON-P3-1860 | Adjustment & Alignment of Panels Part 2 | 2027-07-12 → 2027-07-20 (+8d) | 2027-07-15 → 2027-07-24 (+9d) |  | 0d → 12.4d | SDR-ST-CON-P3-1850 SS, SDR-ST-MILS-1000 → SDR-ST-CON-P3-1850 FF, SDR-ST-MILS-1000 |  |
| 1 | **THERMAL & MOISTURE PROTECTION** | 2026-10-17 → 2026-12-05 (+49d) | 2026-12-27 → 2027-03-23 (+86d) |  |  |  |  |
| 1 | **Bituminous Sheet Waterproofing** | 2026-10-17 → 2026-12-05 (+49d) | 2026-12-27 → 2027-03-23 (+86d) |  |  |  |  |
| SDR-ST-CON-P3-1070 | Provide and lay 2 layers of waterproofing bitumenous membrane 4mm below footings | 2026-10-17 → 2026-12-05 (+49d) | 2026-10-22 → 2026-12-09 (+48d) |  | 15.2d → 40.5d |  |  |
| SDR-ST-CON-P3-1170 | Provide and lay 2 layers of waterproofing bitumenous membrane 4mm in contact with soil | 2026-12-21 → 2027-03-17 (+86d) | 2026-12-27 → 2027-03-23 (+86d) |  | 0d → 3.01d |  |  |
| 4 | **Electrical Works** | 2027-03-31 → 2027-05-26 (+56d) | 2027-07-21 → 2027-08-06 (+16d) |  |  |  |  |
| 1 | **Low-Voltage Electrical Power Conductors and Cables** | 2027-03-31 → 2027-05-26 (+56d) | 2027-04-24 → 2027-06-15 (+52d) |  |  |  |  |
| SDR-ST-CON-P3-1510 | Installtion and test low voltage cable including pulling of cable 600/1000V . | 2027-03-31 → 2027-05-26 (+56d) | 2027-04-24 → 2027-06-15 (+52d) | 20d → 17d | 0.7d → 5.7d | SDR-ST-CON-P3-1440, SDR-ST-MILS-1000 → SDR-ST-CON-P3-1440 FF, SDR-ST-MILS-1000 |  |
| 2 | **Ondoor Lighting Points** | 2027-04-24 → 2027-06-07 (+44d) | 2027-05-24 → 2027-07-01 (+38d) |  |  |  |  |
| SDR-ST-CON-P3-1580 | Install, test, and commission all necessary components for outdoor lighting points. | 2027-04-24 → 2027-06-07 (+44d) | 2027-05-24 → 2027-07-01 (+38d) |  | 0.7d → 5.7d | SDR-ST-CON-P3-1510, SDR-ST-PRO-MS-1250, SDR-ST-MILS-1000 → SDR-ST-CON-P3-1510 SS+10d, SDR-ST-PRO-MS-1250, SDR-ST-MILS-1000 |  |
| 3 | **Outdoor Lighting Fixtures** | 2027-05-24 → 2027-07-01 (+38d) | 2027-06-23 → 2027-08-06 (+44d) |  |  |  |  |
| SDR-ST-CON-P3-1630 | Install of L10 recessed in ceiling light, lenght1535mmxwidth75mmxhieght105mm, LED 53.2w Part 1 | 2027-05-24 → 2027-07-01 (+38d) | 2027-06-16 → 2027-07-25 (+39d) |  | 0.7d → 5.7d |  |  |
| SDR-ST-CON-P3-1650 | Install of L10 recessed in ceiling light, lenght1535mmxwidth75mmxhieght105mm, LED 53.2w Part 2 | 2027-06-01 → 2027-07-14 (+43d) | 2027-06-23 → 2027-08-06 (+44d) |  | 0d → 0.5d |  |  |
| 4 | **CCTV** | 2027-03-31 → 2027-06-15 (+76d) | 2027-07-21 → 2027-08-06 (+16d) |  |  |  |  |
| SDR-ST-CON-P3-1520 | Install of Handhole (600x600x730mm) | 2027-03-31 → 2027-06-15 (+76d) | 2027-04-10 → 2027-06-24 (+75d) |  |  |  |  |
| SDR-ST-CON-P3-1550 | Install of 2 core 9/125um indoor -outdoor central tube | 2027-04-10 → 2027-06-24 (+75d) | 2027-04-22 → 2027-07-07 (+76d) |  |  |  |  |
| SDR-ST-CON-P3-1570 | Install of 4 Port (2 duplex) LC/UPC OS2 fiber patch panel | 2027-04-22 → 2027-07-07 (+76d) | 2027-05-06 → 2027-07-21 (+76d) |  |  |  |  |
| SDR-ST-CON-P3-1600 | Install of Pole mounted Filed Equipment cabinet (FEC) , with fan and ventilation | 2027-05-06 → 2027-07-14 (+69d) | 2027-06-05 → 2027-08-06 (+62d) |  |  | SDR-ST-CON-P3-1570, SDR-ST-MILS-1000, SDR-ST-CON-P1-5430 → SDR-ST-CON-P3-1570 SS+6d, SDR-ST-MILS-1000, SDR-ST-CON-P1-5430 |  |
| SDR-ST-CON-P3-1670 | Install of 8 Port Industrial PoE Switch 10/1000BaseT | 2027-06-05 → 2027-07-19 (+44d) | 2027-06-23 → 2027-08-06 (+44d) |  |  | SDR-ST-CON-P3-1600, SDR-ST-CON-P1-5850, SDR-ST-MILS-1000 → SDR-ST-CON-P3-1600 FF, SDR-ST-CON-P1-5850, SDR-ST-MILS-1000 |  |
| SDR-ST-CON-P3-1680 | Install of 1.2KVA Industrial type UPS located at FEC | 2027-06-05 → 2027-07-19 (+44d) | 2027-06-23 → 2027-08-06 (+44d) |  |  | SDR-ST-CON-P3-1600, SDR-ST-MILS-1000, SDR-ST-CO-1010 → SDR-ST-CON-P3-1600 FF, SDR-ST-MILS-1000, SDR-ST-CO-1010 |  |
| SDR-ST-CON-P3-1790 | Install of 5MP IP PoE Bullet Camera, outdoor mounted on canopy ceiling Part 2. | 2027-07-06 → 2027-07-21 (+15d) | 2027-07-21 → 2027-08-06 (+16d) |  | 0d → 0.5d | SDR-ST-CON-P3-1740, SDR-ST-MILS-1000 → SDR-ST-CON-P3-1740 FF, SDR-ST-MILS-1000 |  |
| SDR-ST-CON-P3-1780 | Install of 5MP IP PoE Bullet Camera, outdoor mounted on canopy ceiling Part 1. | 2027-07-06 → 2027-07-24 (+18d) | 2027-07-19 → 2027-08-06 (+18d) |  | 1.1d → 0.5d | SDR-ST-CON-P3-1740, SDR-ST-MILS-1000 → SDR-ST-CON-P3-1740 FF, SDR-ST-MILS-1000 |  |
| SDR-ST-CON-P3-1740 | Install of UTP CAT6 Patch Cord , connect the industrial switch with the cameras | 2027-06-24 → 2027-07-29 (+35d) | 2027-07-05 → 2027-08-06 (+32d) | 10d → 7d | 0d → 0.5d | SDR-ST-CON-P3-1680, SDR-ST-CON-P3-1670, SDR-ST-CON-P3-1650, SDR-ST-MILS-1000, SDR-ST-CON-P1-5920 → SDR-ST-CON-P3-1680 SS, SDR-ST-CON-P3-1670 SS, SDR-ST-CON-P3-1650 FF, SDR-ST-MILS-1000, SDR-ST-CON-P1-5920 FF |  |
| 5 | **Voice Evacuation System** | 2027-07-07 → 2027-07-28 (+21d) | 2027-07-17 → 2027-08-06 (+20d) |  |  |  |  |
| SDR-ST-CON-P3-1800 | install, test of Suspended ceiling outdoor projector speaker, bi-directional, 20w Part 1 | 2027-07-07 → 2027-07-28 (+21d) | 2027-07-17 → 2027-08-06 (+20d) |  | 0d → 0.5d | SDR-ST-CON-P3-1740, SDR-ST-CON-P1-5910, SDR-ST-CON-P1-5980 SS, SDR-ST-CON-P1-5970, SDR-ST-MILS-1000 → SDR-ST-CON-P3-1740 FF, SDR-ST-CON-P1-5910, SDR-ST-CON-P1-5980, SDR-ST-CON-P1-5970, SDR-ST-MILS-1000 |  |
| SDR-ST-CON-P3-1870 | install, test of Suspended ceiling outdoor projector speaker, bi-directional, 20w Part 2 | 2027-07-07 → 2027-07-28 (+21d) | 2027-07-17 → 2027-08-06 (+20d) |  | 0d → 0.5d | SDR-ST-CON-P3-1800 SS, SDR-ST-CON-P3-1780 SS, SDR-ST-CON-P3-1650, SDR-ST-MILS-1000 → SDR-ST-CON-P3-1800 SS, SDR-ST-CON-P3-1780 SS, SDR-ST-CON-P3-1650 FF, SDR-ST-MILS-1000 |  |
| 6 | **Testing and Comissioning** | 2027-01-19 → 2027-03-29 (+69d) |  |  |  |  |  |
| 1 | **Civil Works** | 2027-05-09 → 2027-06-27 (+49d) | 2027-05-31 → 2027-07-14 (+44d) |  |  |  |  |
| SDR-ST-TC-1000 | Testing & Commissioning of road works | 2027-05-09 → 2027-06-27 (+49d) | 2027-05-31 → 2027-07-14 (+44d) |  | 0d → 0.5d |  |  |
| 2 | **Storm Water Drainage Network** | 2027-01-19 → 2027-04-15 (+86d) | 2027-02-06 → 2027-05-03 (+86d) |  |  |  |  |
| SDR-ST-TC-1010 | Testing & Commissioning of network work | 2027-01-19 → 2027-04-15 (+86d) | 2027-02-06 → 2027-05-03 (+86d) |  | 0d → 3.01d |  |  |
| 3 | **Sewerage Network** | 2027-03-14 → 2027-03-29 (+15d) | 2027-03-31 → 2027-04-15 (+15d) |  |  |  |  |
| SDR-ST-TC-1030 | Testing & Commissioning of Sewage Network | 2027-03-14 → 2027-03-29 (+15d) | 2027-03-31 → 2027-04-15 (+15d) |  | 3d → 44.8d |  |  |
| 5 | **Portable Water** | 2027-03-22 → 2027-04-01 (+10d) | 2027-04-08 → 2027-04-19 (+11d) |  |  |  |  |
| SDR-ST-TC-1020 | Testing & Commissioning of Potable Network | 2027-03-22 → 2027-04-01 (+10d) | 2027-04-08 → 2027-04-19 (+11d) |  | 5.2d → 70.8d |  |  |
| 6 | **Electrical Works** | 2027-07-18 → 2027-07-12 (-6d) | 2027-08-03 → 2027-07-29 (-5d) |  |  |  |  |
| SDR-ST-TC-1050 | Testing & Commissioning of Electrical Network | 2027-07-18 → 2027-07-12 (-6d) | 2027-08-03 → 2027-07-29 (-5d) |  | 3d → 7.5d | SDR-ST-CON-P1-6050 → SDR-ST-CON-P1-6050 FF |  |
| 8 | **CCTV Works** | 2027-07-22 → 2027-07-21 (-1d) |  |  |  |  |  |
| SDR-ST-TC-1040 | Testing & Commissioning of medium voltage works | 2027-07-22 → 2027-07-21 (-1d) |  |  | 0d → 0.5d | SDR-ST-CON-P3-1790 → SDR-ST-CON-P3-1790 FF |  |

| ID | Task | Start | Finish | Duration | Total float | Predecessors |
| --- | --- | --- | --- | --- | --- | --- |
| 7 | **Close Out** | 2027-03-22 → 2027-03-31 (+9d) |  |  |  |  |
| 1 | **As Built Drawings** | 2027-03-22 → 2027-03-31 (+9d) |  |  |  |  |
| 1 | **Civil** | 2027-05-09 → 2027-06-19 (+41d) | 2027-05-27 → 2027-07-03 (+37d) |  |  |  |
| SDR-ST-CO-1000 | Civil As-Built Drawing Submission | 2027-05-09 → 2027-06-19 (+41d) | 2027-05-22 → 2027-06-27 (+36d) |  | 3d → 3.5d | SDR-ST-CON-P1-5530 → SDR-ST-CON-P1-5530 FF |
| SDR-ST-CO-1010 | Civil As-Built Drawing Approvals | 2027-05-23 → 2027-06-27 (+35d) | 2027-05-27 → 2027-07-03 (+37d) |  | 3d → 3.5d |  |
| 2 | **Mechanical** | 2027-03-22 → 2027-03-31 (+9d) | 2027-04-08 → 2027-04-19 (+11d) |  |  |  |
| SDR-ST-CO-1020 | Mechanical As-Built Drawing Submission | 2027-03-22 → 2027-03-31 (+9d) | 2027-03-30 → 2027-04-10 (+11d) |  | 1d → 52.9d |  |
| SDR-ST-CO-1030 | Mechanical As-Built Drawing Approvals | 2027-03-31 → 2027-04-10 (+10d) | 2027-04-08 → 2027-04-19 (+11d) |  | 1d → 52.9d |  |
| 3 | **Electrical** | 2027-07-12 → 2027-07-22 (+10d) |  |  |  |  |
| SDR-ST-CO-1100 | Electrical As-Built Drawing Approvals | 2027-07-24 → 2027-07-22 (-2d) |  |  | 3d → 3.5d | SDR-ST-CO-1040 → SDR-ST-CO-1040 FF |
| SDR-ST-CO-1040 | Electrical As-Built Drawing Submission | 2027-07-12 → 2027-07-24 (+12d) | 2027-07-22 → 2027-08-03 (+12d) | 10d → 9d | 3d → 3.5d |  |
| 2 | **Training and Manuals** | 2027-07-07 → 2027-07-06 (-1d) |  |  |  |  |
| SDR-ST-CO-1050 | Training and Manuals | 2027-07-07 → 2027-07-06 (-1d) |  |  | 0d → 0.5d | SDR-ST-CON-P3-1870 SS, SDR-ST-CON-P3-1630 → SDR-ST-CON-P3-1870 FF, SDR-ST-CON-P3-1630 FF |
| 3 | **Demobilize Manpower** | 2027-07-07 → 2027-07-06 (-1d) |  |  |  |  |
| SDR-ST-CO-1060 | Manpower Demobilize | 2027-07-07 → 2027-07-06 (-1d) |  |  | 0d → 0.5d |  |
| 4 | **Demobilize Equipment** | 2027-07-07 → 2027-07-06 (-1d) |  |  |  |  |
| SDR-ST-CO-1070 | Equipments Demobilize | 2027-07-07 → 2027-07-06 (-1d) |  |  | 0d → 0.5d |  |
| 5 | **Removal of Site Offices and Structures** | 2027-07-07 → 2027-07-06 (-1d) |  |  |  |  |
| SDR-ST-CO-1090 | Site Office Removal | 2027-07-07 → 2027-07-06 (-1d) |  |  | 0d → 0.5d | SDR-ST-CO-1070 SS+0.1d, SDR-ST-CO-1020 → SDR-ST-CO-1070 SS, SDR-ST-CO-1020 |
| 6 | **Handover** | 2027-07-21 → 2027-07-22 (+1d) |  |  |  |  |
| SDR-ST-CO-1080 | Project Handover | 2027-07-21 → 2027-07-22 (+1d) |  | 15d → 13d | 0d → 0.5d | SDR-ST-CO-1070 SS, SDR-ST-CO-1090 FF, SDR-ST-CON-P3-1890, SDR-ST-CON-P3-1880, SDR-ST-CON-P3-1840, SDR-ST-CON-P1-6030, SDR-ST-CON-P1-6040 SS, SDR-ST-CON-P1-6000, SDR-ST-CO-1100 FF, SDR-ST-TC-1050 FF, SDR-ST-MILS-1100, SDR-ST-MILS-1120 FF, SDR-ST-TC-1000 FF, SDR-ST-TC-1040 FF, SDR-ST-CON-P1-5980, SDR-ST-CON-P1-6040 → SDR-ST-CO-1070 SS, SDR-ST-CO-1090 SS, SDR-ST-CON-P3-1890 FF, SDR-ST-CON-P3-1880 FF, SDR-ST-CON-P3-1840 FF, SDR-ST-CON-P1-6030 FF, SDR-ST-CON-P1-6000, SDR-ST-CO-1100 FF, SDR-ST-MILS-1100, SDR-ST-MILS-1120 FF, SDR-ST-TC-1000 FF, SDR-ST-TC-1040 SS, SDR-ST-CON-P1-5980, SDR-ST-CON-P1-6040 FF, SDR-ST-TC-1050 FF |

## Version 3 (data date 2026-10-12, saved 2026-10-13, file SUD0518 13 -10- 26 = SAR.xer)

Note of the change: Renumber project folders 01–23 in order (after removing projects 12 and 25)

Last finish 2027-08-06 → 2027-08-05 (-1d). Complete tasks 183 → 202.

Added:

| ID | Task | Duration | Start | Finish | Predecessors |
| --- | --- | --- | --- | --- | --- |
| SDR-ST-PRO-DL-2000 | MANHOLE, CATCH BASIN & VALVE BOX COVER | 60d | 2026-10-12 | 2026-12-20 | SDR-ST-PRO-PO-1140 FF |
| 15 | **ROAD WORKS 1** |  | 2026-04-23 | 2027-05-26 |  |
| 1 | **ROAD-01 From 0 to 400 m (9)** |  | 2026-05-02 | 2027-05-03 |  |
| 2 | **ROAD-01 From 400 to 900 m (10)** |  | 2026-05-02 | 2027-05-23 |  |
| 3 | **ROAD-01 From 900 to 1239 m (11)** |  | 2026-05-03 | 2027-05-15 |  |
| 3 | **ROAD-01 From 0 to 400 m (9) 2 Way 150 mm** |  | 2026-11-14 | 2027-04-26 |  |
| 2 | **ROAD-01 From 400 to 900 m (10) 2 Way 150 mm** |  | 2026-11-22 | 2027-05-06 |  |
| 1 | **ROAD-01 From 900 to 1239 m (11) 2 Way 150 mm** |  | 2026-11-30 | 2027-04-20 |  |
| 6 | **ROAD-01 From 0 to 400 m (9) 2 Way 110 mm** |  | 2026-10-12 | 2027-01-30 |  |
| 5 | **ROAD-01 From 400 to 900 m (10) 4 Way 110 mm** |  | 2026-10-12 | 2027-01-24 |  |
| 4 | **ROAD-01 From 900 to 1239 m (11) 2 Way 110 mm** |  | 2026-10-12 | 2027-02-03 |  |
| 1 | **ROAD-01 From 0 to 400 m (9) 2 Way 110 mm** |  | 2026-10-12 | 2027-01-10 |  |
| 2 | **ROAD-01 From 400 to 900 m (10) 4 Way 110 mm** |  | 2026-10-12 | 2027-01-06 |  |
| 3 | **ROAD-01 From 900 to 1239 m (11) 2 Way 110 mm** |  | 2026-10-12 | 2026-12-31 |  |
| 3 | **ROAD-01 From 0 to 400 m (9) (2X3)X50 mm MH-5 to MH-7** |  | 2026-10-12 | 2027-02-09 |  |
| 1 | **ROAD-01 From 400 to 900 m (10) (2X3)X50 mm MH-1 to MH-4** |  | 2026-10-12 | 2027-02-07 |  |
| 2 | **ROAD-01 From 900 to 1239 m (11) (2)X32 mm MH-1** |  | 2026-10-12 | 2027-02-10 |  |
| 1 | **ROAD-01 From 400 to 900 m (10)** |  | 2026-08-24 | 2027-04-08 |  |
| 4 | **ROAD-01 From 900 to 1239 m (11)** |  | 2026-08-24 | 2027-04-08 |  |
| 3 | **ROAD-01 From 0 to 400 m (9)** |  | 2026-08-27 | 2027-03-15 |  |
| 2 | **ROAD-01 From 400 to 900 m (10)** |  | 2026-08-27 | 2027-03-02 |  |
| 1 | **ROAD-01 From 900 to 1239 m (11)** |  | 2026-08-27 | 2027-03-01 |  |
| 1 | **ROAD-01 From 400 to 900 m (10) 110 mm HDPE** |  | 2026-09-07 | 2027-03-15 |  |
| 3 | **ROAD-01 From 900 to 1239 m (11) 110 mm HDPE** |  | 2026-09-07 | 2027-03-15 |  |

Removed: SDR-ST-PRO-DL-1140 VALVE & BOX COVER; ROAD WORKS; ROAD-02 From 0 to 400 m (9); ROAD-02 From 400 to 900 m (10); ROAD-02 From 900 to 1239 m (11); ROAD-02 From 0 to 400 m (9) 2 Way 150 mm; ROAD-02 From 400 to 900 m (10) 2 Way 150 mm; ROAD-02 From 900 to 1239 m (11) 2 Way 150 mm; ROAD-02 From 0 to 400 m (9) 2 Way 110 mm; ROAD-02 From 400 to 900 m (10) 4 Way 110 mm; ROAD-02 From 900 to 1239 m (11) 2 Way 110 mm; ROAD-02 From 0 to 400 m (9) 2 Way 110 mm; ROAD-02 From 400 to 900 m (10) 4 Way 110 mm; ROAD-02 From 900 to 1239 m (11) 2 Way 110 mm; ROAD-02 From 0 to 400 m (9) (2X3)X50 mm MH-5 to MH-7; ROAD-02 From 400 to 900 m (10) (2X3)X50 mm MH-1 to MH-4; ROAD-02 From 900 to 1239 m (11) (2)X32 mm MH-1; ROAD-02 From 400 to 900 m (10); ROAD-02 From 900 to 1239 m (11); ROAD-02 From 0 to 400 m (9); ROAD-02 From 400 to 900 m (10); ROAD-02 From 900 to 1239 m (11); ROAD-02 From 400 to 900 m (10) 110 mm HDPE; ROAD-02 From 900 to 1239 m (11) 110 mm HDPE

Changed:

| ID | Task | Start | Finish | Complete | Total float | Predecessors | Other |
| --- | --- | --- | --- | --- | --- | --- | --- |
| 1 | **Milestone** | 2026-04-07 → 2026-02-05 (-61d) | 2027-08-06 → 2027-08-05 (-1d) |  |  |  |  |
| SDR-ST-MILS-1070 | Completion of road and paving works | 2027-01-21 → 2027-01-13 (-8d) | 2027-01-21 → 2027-01-13 (-8d) |  | 20.6d → 7d | SDR-ST-CON-P1-4770 FF → SDR-ST-CON-P1-4770 |  |
| SDR-ST-MILS-1100 | Completion of site and platform works | 2027-04-07 → 2027-04-01 (-6d) | 2027-04-07 → 2027-04-01 (-6d) |  | 33.9d → 92d | SDR-ST-CON-P3-1490 FF → SDR-ST-CON-P3-1490, SDR-ST-CON-P3-1420, SDR-ST-CON-P3-1480 |  |
| SDR-ST-MILS-1140 | Project Finish | 2027-08-06 → 2027-08-05 (-1d) | 2027-08-06 → 2027-08-05 (-1d) |  | 0.5d → 1d | SDR-ST-CO-1080 FF, SDR-ST-CO-1090 FF, SDR-ST-CON-P1-1050, SDR-ST-CON-P1-1000, SDR-ST-CON-P1-1090, SDR-ST-CON-P1-1150, SDR-ST-CON-P1-1200, SDR-ST-CON-P1-1470, SDR-ST-CON-P1-2140, SDR-ST-CON-P1-2710, SDR-ST-CON-P1-3260, SDR-ST-CON-P1-3850, SDR-ST-CON-P1-4770, SDR-ST-CON-P1-4410, SDR-ST-CON-P1-5110, SDR-ST-CON-P1-3860, SDR-ST-CON-P1-4530, SDR-ST-CON-P1-4620, SDR-ST-CON-P1-4100, SDR-ST-CON-P1-5310, SDR-ST-CON-P1-5210, SDR-ST-CON-P1-5470, SDR-ST-CON-P1-5480, SDR-ST-CON-P1-5320, SDR-ST-CON-P1-5220, SDR-ST-CON-P1-5490, SDR-ST-CON-P1-1010, SDR-ST-CON-P1-1070, SDR-ST-CON-P1-1120, SDR-ST-CON-P1-1190, SDR-ST-CON-P1-2090, SDR-ST-CON-P1-1400, SDR-ST-CON-P1-2570, SDR-ST-CON-P1-3140, SDR-ST-CON-P1-3720, SDR-ST-CON-P1-4730, SDR-ST-CON-P1-4430, SDR-ST-CON-P1-5040, SDR-ST-CON-P1-3730, SDR-ST-CON-P1-4480, SDR-ST-CON-P1-4490, SDR-ST-CON-P1-3890, SDR-ST-CON-P1-5400, SDR-ST-CON-P1-5270, SDR-ST-CON-P1-5150, SDR-ST-CON-P1-5080, SDR-ST-CON-P1-5160, SDR-ST-CON-P1-5090, SDR-ST-CON-P1-5280, SDR-ST-CON-P1-1020, SDR-ST-CON-P1-1080, SDR-ST-CON-P1-1140, SDR-ST-CON-P1-1210 FF, SDR-ST-CON-P1-1580, SDR-ST-CON-P1-2220, SDR-ST-CON-P1-2880, SDR-ST-CON-P1-3600, SDR-ST-CON-P1-4220, SDR-ST-CON-P1-5010, SDR-ST-CON-P1-4750, SDR-ST-CON-P1-5200, SDR-ST-CON-P1-4230, SDR-ST-CON-P1-4950, SDR-ST-CON-P1-4870, SDR-ST-CON-P1-4440, SDR-ST-CON-P1-5690, SDR-ST-CON-P1-5610, SDR-ST-CON-P1-5450, SDR-ST-CON-P1-5300, SDR-ST-CON-P1-5680, SDR-ST-CON-P1-5540, SDR-ST-CON-P1-5460, SDR-ST-CON-P1-1030, SDR-ST-CON-P1-1100, SDR-ST-CON-P1-1160, SDR-ST-CON-P1-2920, SDR-ST-CON-P1-2620, SDR-ST-CON-P1-1910, SDR-ST-CON-P1-1300, SDR-ST-CON-P1-3390, SDR-ST-CON-P1-3960, SDR-ST-CON-P1-4890, SDR-ST-CON-P1-4540, SDR-ST-CON-P1-5130, SDR-ST-CON-P1-3970, SDR-ST-CON-P1-4690, SDR-ST-CON-P1-4780, SDR-ST-CON-P1-4200, SDR-ST-CON-P1-5550, SDR-ST-CON-P1-5370, SDR-ST-CON-P1-5250, SDR-ST-CON-P1-5630, SDR-ST-CON-P1-5560, SDR-ST-CON-P1-5380, SDR-ST-CON-P1-5260, SDR-ST-CON-P1-5390, SDR-ST-CON-P1-1040, SDR-ST-CON-P1-1110, SDR-ST-CON-P1-1170, SDR-ST-CON-P1-2540, SDR-ST-CON-P1-1830, SDR-ST-CON-P1-1250, SDR-ST-CON-P1-3100, SDR-ST-CON-P1-3540, SDR-ST-CON-P1-4130, SDR-ST-CON-P1-4930, SDR-ST-CON-P1-4600, SDR-ST-CON-P1-5180, SDR-ST-CON-P1-4140, SDR-ST-CON-P1-4810, SDR-ST-CON-P1-4920, SDR-ST-CON-P1-4350, SDR-ST-CON-P1-5640, SDR-ST-CON-P1-5580, SDR-ST-CON-P1-5410, SDR-ST-CON-P1-5290, SDR-ST-CON-P1-5590, SDR-ST-CON-P1-5420, SDR-ST-CON-P1-5430, SDR-ST-CON-P1-1060, SDR-ST-CON-P1-1130, SDR-ST-CON-P1-1220, SDR-ST-CON-P1-2730, SDR-ST-CON-P1-1350, SDR-ST-CON-P1-1990, SDR-ST-CON-P1-3320, SDR-ST-CON-P1-3740, SDR-ST-CON-P1-4290, SDR-ST-CON-P1-4980, SDR-ST-CON-P1-4650, SDR-ST-CON-P1-5230, SDR-ST-CON-P1-4300, SDR-ST-CON-P1-4860, SDR-ST-CON-P1-4450, SDR-ST-CON-P1-4940, SDR-ST-CON-P1-5650, SDR-ST-CON-P1-5600, SDR-ST-CON-P1-5510, SDR-ST-CON-P1-5350, SDR-ST-CON-P1-5660, SDR-ST-CON-P1-5520, SDR-ST-CON-P1-5360, SDR-ST-CON-P1-5530, SDR-ST-CON-P1-1570, SDR-ST-CON-P1-2270, SDR-ST-CON-P1-3000, SDR-ST-CON-P1-3900, SDR-ST-CON-P1-1720, SDR-ST-CON-P1-2420, SDR-ST-CON-P1-3150, SDR-ST-CON-P1-4000, SDR-ST-CON-P1-1770, SDR-ST-CON-P1-2500, SDR-ST-CON-P1-3280, SDR-ST-CON-P1-4250, SDR-ST-CON-P1-1730, SDR-ST-CON-P1-2430, SDR-ST-CON-P1-3160, SDR-ST-CON-P1-4010, SDR-ST-CON-P1-1920, SDR-ST-CON-P1-2660, SDR-ST-CON-P1-3430, SDR-ST-CON-P1-4320, SDR-ST-CON-P1-1840, SDR-ST-CON-P1-2590, SDR-ST-CON-P1-3340, SDR-ST-CON-P1-4050, SDR-ST-CON-P1-2000, SDR-ST-CON-P1-2750, SDR-ST-CON-P1-3460, SDR-ST-CON-P1-3980, SDR-ST-CON-P1-4840, SDR-ST-CON-P1-1180, SDR-ST-CON-P1-2250, SDR-ST-CON-P1-1560, SDR-ST-CON-P1-2980, SDR-ST-CON-P1-3870, SDR-ST-CON-P1-5170, SDR-ST-CON-P1-4420, SDR-ST-CON-P1-3120, SDR-ST-CON-P1-1590, SDR-ST-CON-P1-2390, SDR-ST-CON-P1-3990, SDR-ST-CON-P1-4680, SDR-ST-CON-P1-5760, SDR-ST-CON-P1-5050, SDR-ST-CON-P1-3040, SDR-ST-CON-P1-1500, SDR-ST-CON-P1-2320, SDR-ST-CON-P1-3920, SDR-ST-CON-P1-4850, SDR-ST-CON-P1-5780, SDR-ST-CON-P1-5330, SDR-ST-CON-P1-3190, SDR-ST-CON-P1-1700, SDR-ST-CON-P1-2410, SDR-ST-CON-P1-4110, SDR-ST-CON-P1-4960, SDR-ST-CON-P1-5790, SDR-ST-CON-P1-5340, SDR-ST-CON-P1-1450, SDR-ST-CON-P1-2160, SDR-ST-CON-P1-2890, SDR-ST-CON-P1-3530, SDR-ST-CON-P1-3810, SDR-ST-CON-P1-1600, SDR-ST-CON-P1-2280, SDR-ST-CON-P1-2800, SDR-ST-CON-P1-3250, SDR-ST-CON-P1-3670, SDR-ST-CON-P1-1510, SDR-ST-CON-P1-2180, SDR-ST-CON-P1-2930, SDR-ST-CON-P1-3510, SDR-ST-CON-P1-3760, SDR-ST-CON-P1-1710, SDR-ST-CON-P1-2360, SDR-ST-CON-P1-3090, SDR-ST-CON-P1-3520, SDR-ST-CON-P1-3930, SDR-ST-CON-P1-5840, SDR-ST-CON-P1-5890, SDR-ST-CON-P1-5920, SDR-ST-CON-P1-5880, SDR-ST-CON-P1-5930, SDR-ST-CON-P1-6000, SDR-ST-CON-P1-5940, SDR-ST-CON-P1-6010, SDR-ST-CON-P1-6040, SDR-ST-CON-P1-5960, SDR-ST-CON-P1-5950, SDR-ST-CON-P1-6020, SDR-ST-CON-P1-6050, SDR-ST-CON-P1-1310, SDR-ST-CON-P1-2350, SDR-ST-CON-P1-1780, SDR-ST-CON-P1-2860, SDR-ST-CON-P1-3500, SDR-ST-CON-P1-4570, SDR-ST-CON-P1-4260, SDR-ST-CON-P1-1260, SDR-ST-CON-P1-2260, SDR-ST-CON-P1-1760, SDR-ST-CON-P1-2770, SDR-ST-CON-P1-3350, SDR-ST-CON-P1-4400, SDR-ST-CON-P1-3940, SDR-ST-CON-P1-2400, SDR-ST-CON-P1-1360, SDR-ST-CON-P1-1900, SDR-ST-CON-P1-2840, SDR-ST-CON-P1-3470, SDR-ST-CON-P1-4610, SDR-ST-CON-P1-4080, SDR-ST-CON-P1-1320, SDR-ST-CON-P1-1950, SDR-ST-CON-P1-2560, SDR-ST-CON-P1-3200, SDR-ST-CON-P1-3700, SDR-ST-CON-P1-1270, SDR-ST-CON-P1-1870, SDR-ST-CON-P1-2470, SDR-ST-CON-P1-2970, SDR-ST-CON-P1-3360, SDR-ST-CON-P1-1370, SDR-ST-CON-P1-2060, SDR-ST-CON-P1-2600, SDR-ST-CON-P1-3110, SDR-ST-CON-P1-3480, SDR-ST-CON-P1-5810, SDR-ST-CON-P1-5850, SDR-ST-CON-P1-5970, SDR-ST-CON-P1-5820, SDR-ST-CON-P1-5860, SDR-ST-CON-P1-5980, SDR-ST-CON-P1-5830, SDR-ST-CON-P1-5870, SDR-ST-CON-P1-5910, SDR-ST-CON-P1-5900, SDR-ST-CON-P1-5990, SDR-ST-CON-P1-6030, SDR-ST-CON-P1-1690, SDR-ST-CON-P1-2340, SDR-ST-CON-P1-3070, SDR-ST-CON-P1-3680, SDR-ST-CON-P1-4310, SDR-ST-CON-P1-2370, SDR-ST-CON-P1-1680, SDR-ST-CON-P1-3080, SDR-ST-CON-P1-3690, SDR-ST-CON-P1-4360, SDR-ST-CON-P1-4880, SDR-ST-CON-P1-1530, SDR-ST-CON-P1-2190, SDR-ST-CON-P1-2940, SDR-ST-CON-P1-3770, SDR-ST-CON-P1-4370, SDR-ST-CON-P1-2200, SDR-ST-CON-P1-1520, SDR-ST-CON-P1-2950, SDR-ST-CON-P1-3780, SDR-ST-CON-P1-4630, SDR-ST-CON-P1-5140, SDR-ST-CON-P1-1240, SDR-ST-CON-P1-1790, SDR-ST-CON-P1-2510, SDR-ST-CON-P1-3230, SDR-ST-CON-P1-4020, SDR-ST-CON-P1-1230, SDR-ST-CON-P1-1800, SDR-ST-CON-P1-2520, SDR-ST-CON-P1-3240, SDR-ST-CON-P1-4150, SDR-ST-CON-P1-4740, SDR-ST-CON-P1-2290, SDR-ST-CON-P1-1620, SDR-ST-CON-P1-3010, SDR-ST-CON-P1-3630, SDR-ST-CON-P1-4240, SDR-ST-CON-P1-1610, SDR-ST-CON-P1-2300, SDR-ST-CON-P1-3020, SDR-ST-CON-P1-3820, SDR-ST-CON-P1-4720, SDR-ST-CON-P1-5240, SDR-ST-CON-P1-1340, SDR-ST-CON-P1-1960, SDR-ST-CON-P1-2670, SDR-ST-CON-P1-3440, SDR-ST-CON-P1-4270, SDR-ST-CON-P1-1330, SDR-ST-CON-P1-1970, SDR-ST-CON-P1-2680, SDR-ST-CON-P1-3450, SDR-ST-CON-P1-4380, SDR-ST-CON-P1-4900, SDR-ST-CON-P1-1290, SDR-ST-CON-P1-1880, SDR-ST-CON-P1-2640, SDR-ST-CON-P1-3370, SDR-ST-CON-P1-4160, SDR-ST-CON-P1-1280, SDR-ST-CON-P1-1890, SDR-ST-CON-P1-2650, SDR-ST-CON-P1-3380, SDR-ST-CON-P1-4280, SDR-ST-CON-P1-4820, SDR-ST-CON-P1-1390, SDR-ST-CON-P1-2070, SDR-ST-CON-P1-2780, SDR-ST-CON-P1-3580, SDR-ST-CON-P1-4170, SDR-ST-CON-P1-1380, SDR-ST-CON-P1-2080, SDR-ST-CON-P1-2790, SDR-ST-CON-P1-3590, SDR-ST-CON-P1-4500, SDR-ST-CON-P1-5000, SDR-ST-CON-P1-1670, SDR-ST-CON-P1-2330, SDR-ST-CON-P1-2990, SDR-ST-CON-P1-3880, SDR-ST-CON-P1-1740, SDR-ST-CON-P1-2440, SDR-ST-CON-P1-3170, SDR-ST-CON-P1-4040, SDR-ST-CON-P1-1750, SDR-ST-CON-P1-2450, SDR-ST-CON-P1-3180, SDR-ST-CON-P1-4070, SDR-ST-CON-P1-1480, SDR-ST-CON-P1-1980, SDR-ST-CON-P1-2490, SDR-ST-CON-P1-3270, SDR-ST-CON-P1-4190, SDR-ST-CON-P1-4800, SDR-ST-CON-P1-2150, SDR-ST-CON-P1-1490, SDR-ST-CON-P1-2850, SDR-ST-CON-P1-3560, SDR-ST-CON-P1-4470, SDR-ST-CON-P1-5030, SDR-ST-CON-P1-1410, SDR-ST-CON-P1-2050, SDR-ST-CON-P1-2690, SDR-ST-CON-P1-3290, SDR-ST-CON-P1-4030, SDR-ST-CON-P1-4700, SDR-ST-CON-P1-2100, SDR-ST-CON-P1-1420, SDR-ST-CON-P1-2820, SDR-ST-CON-P1-3660, SDR-ST-CON-P1-4550, SDR-ST-CON-P1-5100, SDR-ST-CON-P1-1630, SDR-ST-CON-P1-2130, SDR-ST-CON-P1-2810, SDR-ST-CON-P1-3490, SDR-ST-CON-P1-3950, SDR-ST-CON-P1-4520, SDR-ST-CON-P1-2230, SDR-ST-CON-P1-1640, SDR-ST-CON-P1-2900, SDR-ST-CON-P1-3640, SDR-ST-CON-P1-4510, SDR-ST-CON-P1-5070, SDR-ST-CON-P1-1930, SDR-ST-CON-P1-2480, SDR-ST-CON-P1-3130, SDR-ST-CON-P1-3650, SDR-ST-CON-P1-4340, SDR-ST-CON-P1-4910, SDR-ST-CON-P1-1940, SDR-ST-CON-P1-2630, SDR-ST-CON-P1-3400, SDR-ST-CON-P1-4330, SDR-ST-CON-P1-5060, SDR-ST-CON-P1-5730, SDR-ST-CON-P1-2460, SDR-ST-CON-P1-1850, SDR-ST-CON-P1-3060, SDR-ST-CON-P1-3570, SDR-ST-CON-P1-4060, SDR-ST-CON-P1-4640, SDR-ST-CON-P1-1860, SDR-ST-CON-P1-2550, SDR-ST-CON-P1-3310, SDR-ST-CON-P1-4210, SDR-ST-CON-P1-4990, SDR-ST-CON-P1-5710, SDR-ST-CON-P1-2010, SDR-ST-CON-P1-2610, SDR-ST-CON-P1-3220, SDR-ST-CON-P1-3610, SDR-ST-CON-P1-4090, SDR-ST-CON-P1-4660, SDR-ST-CON-P1-2020, SDR-ST-CON-P1-2740, SDR-ST-CON-P1-3550, SDR-ST-CON-P1-4460, SDR-ST-CON-P1-5190, SDR-ST-CON-P1-5750, SDR-ST-CON-P1-1540, SDR-ST-CON-P1-2380, SDR-ST-CON-P1-3050, SDR-ST-CON-P1-3710, SDR-ST-CON-P1-4590, SDR-ST-CON-P1-5570, SDR-ST-CON-P1-1550, SDR-ST-CON-P1-2210, SDR-ST-CON-P1-2960, SDR-ST-CON-P1-3840, SDR-ST-CON-P1-4790, SDR-ST-CON-P1-5720, SDR-ST-CON-P1-1430, SDR-ST-CON-P1-2110, SDR-ST-CON-P1-2720, SDR-ST-CON-P1-3300, SDR-ST-CON-P1-4120, SDR-ST-CON-P1-4970, SDR-ST-CON-P1-1440, SDR-ST-CON-P1-2120, SDR-ST-CON-P1-2870, SDR-ST-CON-P1-3790, SDR-ST-CON-P1-4710, SDR-ST-CON-P1-5700, SDR-ST-CON-P1-2240, SDR-ST-CON-P1-1650, SDR-ST-CON-P1-2830, SDR-ST-CON-P1-3420, SDR-ST-CON-P1-4180, SDR-ST-CON-P1-5020, SDR-ST-CON-P1-1660, SDR-ST-CON-P1-2310, SDR-ST-CON-P1-3030, SDR-ST-CON-P1-3910, SDR-ST-CON-P1-4830, SDR-ST-CON-P1-5740, SDR-ST-CON-P1-2530, SDR-ST-CON-P1-1810, SDR-ST-CON-P1-3210, SDR-ST-CON-P1-3800, SDR-ST-CON-P1-4580, SDR-ST-CON-P1-5500, SDR-ST-CON-P1-1820, SDR-ST-CON-P1-2580, SDR-ST-CON-P1-3410, SDR-ST-CON-P1-4390, SDR-ST-CON-P1-5120, SDR-ST-CON-P1-5770, SDR-ST-CON-P1-2030, SDR-ST-CON-P1-2700, SDR-ST-CON-P1-3330, SDR-ST-CON-P1-3750, SDR-ST-CON-P1-4670, SDR-ST-CON-P1-5670, SDR-ST-CON-P1-2040, SDR-ST-CON-P1-2760, SDR-ST-CON-P1-3620, SDR-ST-CON-P1-4560, SDR-ST-CON-P1-5440, SDR-ST-CON-P1-5800, SDR-ST-CON-P1-1460, SDR-ST-CON-P1-2170, SDR-ST-CON-P1-2910, SDR-ST-CON-P1-3830, SDR-ST-CON-P1-4760, SDR-ST-CON-P3-1000, SDR-ST-CON-P3-1010, SDR-ST-CON-P3-1020, SDR-ST-CON-P3-1030, SDR-ST-CON-P3-1040 FF, SDR-ST-CON-P3-1060, SDR-ST-CON-P3-1080, SDR-ST-CON-P3-1100, SDR-ST-CON-P3-1180, SDR-ST-CON-P3-1150, SDR-ST-CON-P3-1130, SDR-ST-CON-P3-1220, SDR-ST-CON-P3-1200, SDR-ST-CON-P3-1230, SDR-ST-CON-P3-1210, SDR-ST-CON-P3-1430, SDR-ST-CON-P3-1370, SDR-ST-CON-P3-1290, SDR-ST-CON-P3-1270, SDR-ST-CON-P3-1360, SDR-ST-CON-P3-1320, SDR-ST-CON-P3-1380, SDR-ST-CON-P3-1400, SDR-ST-CON-P3-1500, SDR-ST-CON-P3-1480, SDR-ST-CON-P3-1420, SDR-ST-CON-P3-1490, SDR-ST-CON-P3-1540, SDR-ST-CON-P3-1640, SDR-ST-CON-P3-1590, SDR-ST-CON-P3-1840, SDR-ST-CON-P3-1760, SDR-ST-CON-P3-1710, SDR-ST-CON-P3-1310, SDR-ST-CON-P3-1140, SDR-ST-CON-P3-1110, SDR-ST-CON-P3-1090, SDR-ST-CON-P3-1050, SDR-ST-CON-P3-1460, SDR-ST-CON-P3-1240, SDR-ST-CON-P3-1160, SDR-ST-CON-P3-1410, SDR-ST-CON-P3-1260, SDR-ST-CON-P3-1330, SDR-ST-CON-P3-1470, SDR-ST-CON-P3-1390, SDR-ST-CON-P3-1340, SDR-ST-CON-P3-1450, SDR-ST-CON-P3-1280, SDR-ST-CON-P3-1440, SDR-ST-CON-P3-1350, SDR-ST-CON-P3-1120, SDR-ST-CON-P3-1690, SDR-ST-CON-P3-1880, SDR-ST-CON-P3-1770, SDR-ST-CON-P3-1620, SDR-ST-CON-P3-1830, SDR-ST-CON-P3-1720, SDR-ST-CON-P3-1560, SDR-ST-CON-P3-1530, SDR-ST-CON-P3-1700, SDR-ST-CON-P3-1860, SDR-ST-CON-P3-1820, SDR-ST-CON-P3-1750, SDR-ST-CON-P3-1660, SDR-ST-CON-P3-1890, SDR-ST-CON-P3-1850, SDR-ST-CON-P3-1810, SDR-ST-CON-P3-1730, SDR-ST-CON-P3-1610, SDR-ST-CON-P3-1170, SDR-ST-CON-P3-1070, SDR-ST-CON-P3-1510, SDR-ST-CON-P3-1580, SDR-ST-CON-P3-1630, SDR-ST-CON-P3-1740, SDR-ST-CON-P3-1570, SDR-ST-CON-P3-1670, SDR-ST-CON-P3-1790, SDR-ST-CON-P3-1600, SDR-ST-CON-P3-1780, SDR-ST-CON-P3-1680, SDR-ST-CON-P3-1550, SDR-ST-CON-P3-1520, SDR-ST-PRO-DL-1260, SDR-ST-PRO-DL-1030, SDR-ST-PRO-DL-1060, SDR-ST-PRO-DL-1040, SDR-ST-PRO-DL-1270, SDR-ST-PRO-DL-1020, SDR-ST-PRO-DL-1010, SDR-ST-PRO-DL-1100, SDR-ST-PRO-DL-1130, SDR-ST-PRO-DL-1050, SDR-ST-PRO-DL-1070, SDR-ST-PRO-DL-1110, SDR-ST-PRO-DL-1200, SDR-ST-PRO-DL-1230, SDR-ST-PRO-DL-1000, SDR-ST-PRO-DL-1080, SDR-ST-PRO-DL-1120, SDR-ST-PRO-DL-1090, VALVE & BOX COVER, SDR-ST-CON-P1-6090, SDR-ST-CON-P1-6100, SDR-ST-CON-P1-6110, SDR-ST-CON-P1-6120, SDR-ST-CON-P1-6130, SDR-ST-CON-P1-6140, SDR-ST-CON-P1-6150, SDR-ST-CON-P1-6160, SDR-ST-CON-P1-6170, SDR-ST-CON-P1-6180, SDR-ST-CON-P1-6190, SDR-ST-CON-P1-6200, SDR-ST-CON-P1-6210, SDR-ST-CON-P1-6220, SDR-ST-MILS-1110 FF → SDR-ST-CO-1080, SDR-ST-CO-1090, SDR-ST-CON-P1-4790, SDR-ST-CON-P1-4710, SDR-ST-CON-P1-4830, SDR-ST-CON-P1-5120, SDR-ST-CON-P1-5440, SDR-ST-CON-P3-1890, SDR-ST-MILS-1110 FF, SDR-ST-TC-1040, SDR-ST-CO-1050, SDR-ST-CO-1070, SDR-ST-TC-1050, SDR-ST-CON-P3-1780 |  |
| 1 | **Major Milestone** |  | 2027-08-06 → 2027-08-05 (-1d) |  |  |  |  |
| SDR-ST-MILS-1120 | Project Finish Milstone | 2027-08-06 → 2027-08-05 (-1d) | 2027-08-06 → 2027-08-05 (-1d) |  | 0.5d → 1d | SDR-ST-MILS-1130 FF, SDR-ST-CO-1060 FF → SDR-ST-MILS-1130, SDR-ST-CO-1060 FF |  |
| 3 | **Contractual Milestone** | 2026-05-06 → 2026-02-05 (-90d) | 2027-08-06 → 2027-07-31 (-6d) |  |  |  |  |
| SDR-ST-MILS-1040 | Submission and approval of plans and materials Finish Milestone | 2026-09-28 → 2026-02-05 A (-235d) | 2026-09-28 → 2026-02-05 A (-235d) | 0% → 100% | 0d → none | SDR-ST-ENG-AP-1230 FF → SDR-ST-ENG-AP-1230 |  |
| SDR-ST-MILS-1020 | Mobilization Finish Milestone |  |  |  |  | SDR-ST-MOBL-1060 FF → SDR-ST-MOBL-1060 |  |
| SDR-ST-MILS-1030 | Execution Plan and Baseline Submission Finish Milestone | 2026-09-28 → 2026-08-15 A (-44d) | 2026-09-28 → 2026-08-15 A (-44d) | 0% → 100% | 6d → none | SDR-ST-PREL-1110 FF, SDR-ST-PREL-1100 FF → SDR-ST-PREL-1110 |  |
| SDR-ST-MILS-1080 | Completion of road works | 2027-01-21 → 2027-01-14 (-7d) | 2027-01-21 → 2027-01-14 (-7d) |  | 0.6d → 108d | SDR-ST-CON-P1-4770 FF → SDR-ST-CON-P1-4770 FF, SDR-ST-CON-P1-4410 FF, SDR-ST-CON-P1-4430 FF, SDR-ST-CON-P1-4730 FF, SDR-ST-CON-P1-4750 FF, SDR-ST-CON-P1-5010 FF, SDR-ST-CON-P1-4540 FF, SDR-ST-CON-P1-4890 FF, SDR-ST-CON-P1-4600 FF, SDR-ST-CON-P1-4930 FF, SDR-ST-CON-P1-4650 FF, SDR-ST-CON-P1-4980 FF | was named Completion of road works/ Paving Work |
| SDR-ST-MILS-1060 | Completion of medium voltage works | 2027-05-24 → 2027-05-25 (+1d) | 2027-05-24 → 2027-05-25 (+1d) |  | 44.8d → 2.9d | SDR-ST-CON-P1-4320 FF, SDR-ST-CON-P1-3980 FF → SDR-ST-CON-P1-3900 FF, SDR-ST-CON-P1-4000 FF, SDR-ST-CON-P1-4250 FF, SDR-ST-CON-P1-4010 FF, SDR-ST-CON-P1-4320 FF, SDR-ST-CON-P1-4050 FF, SDR-ST-CON-P1-3980 FF |  |
| SDR-ST-MILS-1130 | Completion of finishing works in the project | 2027-08-06 → 2027-07-31 (-6d) | 2027-08-06 → 2027-07-31 (-6d) |  | 0.6d → 6d | SDR-ST-CON-P3-1840 FF, SDR-ST-CON-P3-1890 FF → SDR-ST-CON-P1-5490 FF, SDR-ST-CON-P1-5280 FF, SDR-ST-CON-P1-5460 FF, SDR-ST-CON-P1-5390 FF, SDR-ST-CON-P1-5430 FF, SDR-ST-CON-P1-5530 FF, SDR-ST-CON-P1-3900 FF, SDR-ST-CON-P1-4000 FF, SDR-ST-CON-P1-4250 FF, SDR-ST-CON-P1-4010 FF, SDR-ST-CON-P1-4320 FF, SDR-ST-CON-P1-4050 FF, SDR-ST-CON-P1-3980 FF, SDR-ST-CON-P1-5170 FF, SDR-ST-CON-P1-5760 FF, SDR-ST-CON-P1-6080 FF, SDR-ST-CON-P1-5790 FF, SDR-ST-CON-P1-3810 FF, SDR-ST-CON-P1-3670 FF, SDR-ST-CON-P1-3760 FF, SDR-ST-CON-P1-3930 FF, SDR-ST-CON-P1-5920 FF, SDR-ST-CON-P1-6000 FF, SDR-ST-CON-P1-6040 FF, SDR-ST-CON-P1-6050 FF, SDR-ST-CON-P1-4570 FF, SDR-ST-CON-P1-4400 FF, SDR-ST-CON-P1-4610 FF, SDR-ST-CON-P1-3700 FF, SDR-ST-CON-P1-3360 FF, SDR-ST-CON-P1-3480 FF, SDR-ST-CON-P1-5970 FF, SDR-ST-CON-P1-5980 FF, SDR-ST-CON-P1-5910 FF, SDR-ST-CON-P1-6030 FF, SDR-ST-CON-P1-4310 FF, SDR-ST-CON-P1-4880 FF, SDR-ST-CON-P1-4370 FF, SDR-ST-CON-P1-5140 FF, SDR-ST-CON-P1-4020 FF, SDR-ST-CON-P1-4740 FF, SDR-ST-CON-P1-4240 FF, SDR-ST-CON-P1-5240 FF, SDR-ST-CON-P1-4270 FF, SDR-ST-CON-P1-4900 FF, SDR-ST-CON-P1-4160 FF, SDR-ST-CON-P1-4820 FF, SDR-ST-CON-P1-4170 FF, SDR-ST-CON-P1-5000 FF, SDR-ST-CON-P1-3880 FF, SDR-ST-CON-P1-4040 FF, SDR-ST-CON-P1-4070 FF, SDR-ST-CON-P1-4800 FF, SDR-ST-CON-P1-5030 FF, SDR-ST-CON-P1-4700 FF, SDR-ST-CON-P1-5100 FF, SDR-ST-CON-P1-4520 FF, SDR-ST-CON-P1-5070 FF, SDR-ST-CON-P1-4910 FF, SDR-ST-CON-P1-5730 FF, SDR-ST-CON-P1-4640 FF, SDR-ST-CON-P1-5710 FF, SDR-ST-CON-P1-4660 FF, SDR-ST-CON-P1-5750 FF, SDR-ST-CON-P1-5570 FF, SDR-ST-CON-P1-5720 FF, SDR-ST-CON-P1-4970 FF, SDR-ST-CON-P1-5700 FF, SDR-ST-CON-P1-5020 FF, SDR-ST-CON-P1-5740 FF, SDR-ST-CON-P1-5500 FF, SDR-ST-CON-P1-5770 FF, SDR-ST-CON-P1-5670 FF, SDR-ST-CON-P1-5800 FF, SDR-ST-CON-P1-4760 FF, SDR-ST-CON-P3-1840 FF, SDR-ST-CON-P3-1140 FF, SDR-ST-CON-P3-1450 FF, SDR-ST-CON-P3-1880 FF, SDR-ST-CON-P3-1890 FF, SDR-ST-CON-P3-1170 FF, SDR-ST-CON-P3-1790 FF, SDR-ST-CON-P3-1870 FF |  |
| 2 | **Phases Milestone** | 2026-10-04 → 2026-10-13 (+9d) | 2027-08-06 → 2027-07-28 (-9d) |  |  |  |  |
| SDR-ST-MILS-1050 | Engineering Phase Finish Milestone | 2026-10-04 → 2026-10-13 (+9d) | 2026-10-04 → 2026-10-13 (+9d) |  | 0d → 41d | SDR-ST-ENG-AP-1230 FF, SDR-ST-PRO-A-1180 FF → SDR-ST-ENG-AP-1080 FF, SDR-ST-ENG-AP-1090 FF, SDR-ST-ENG-AP-1100 FF, SDR-ST-ENG-AP-1110 FF, SDR-ST-ENG-AP-1120 FF, SDR-ST-ENG-AP-1000 FF, SDR-ST-ENG-AP-1010 FF, SDR-ST-ENG-AP-1020 FF, SDR-ST-ENG-AP-1030 FF, SDR-ST-ENG-AP-1040 FF, SDR-ST-ENG-AP-1050 FF, SDR-ST-ENG-AP-1060 FF, SDR-ST-ENG-AP-1070 FF, SDR-ST-ENG-AP-1130 FF, SDR-ST-ENG-AP-1140 FF, SDR-ST-ENG-AP-1150 FF, SDR-ST-ENG-AP-1160 FF, SDR-ST-ENG-AP-1170 FF, SDR-ST-ENG-AP-1180 FF, SDR-ST-ENG-AP-1190 FF, SDR-ST-ENG-AP-1200 FF, SDR-ST-ENG-AP-1210 FF, SDR-ST-ENG-AP-1220 FF, SDR-ST-ENG-AP-1230 FF |  |
| SDR-ST-MILS-1090 | Procurment Phase Finish Milestone | 2027-06-09 → 2027-02-25 (-104d) | 2027-06-09 → 2027-02-25 (-104d) |  | 21.5d → 36d | SDR-ST-PRO-DL-1250 FF, SDR-ST-PRO-MS-1250 FF, SDR-ST-PRO-MS-1240 FF → SDR-ST-PRO-MS-1260 FF, SDR-ST-PRO-MS-1100 FF, SDR-ST-PRO-MS-1080 FF, SDR-ST-PRO-MS-1270 FF, SDR-ST-PRO-MS-1070 FF, SDR-ST-PRO-MS-1000 FF, SDR-ST-PRO-MS-1010 FF, SDR-ST-PRO-MS-1030 FF, SDR-ST-PRO-MS-1020 FF, SDR-ST-PRO-MS-1040 FF, SDR-ST-PRO-MS-1090 FF, SDR-ST-PRO-MS-1120 FF, SDR-ST-PRO-MS-1150 FF, SDR-ST-PRO-MS-1160 FF, SDR-ST-PRO-MS-1050 FF, SDR-ST-PRO-MS-1060 FF, SDR-ST-PRO-MS-1110 FF, SDR-ST-PRO-MS-1140 FF, SDR-ST-PRO-MS-1130 FF, SDR-ST-PRO-MS-1200 FF, SDR-ST-PRO-MS-1240 FF, SDR-ST-PRO-MS-1180 FF, SDR-ST-PRO-MS-1230 FF, SDR-ST-PRO-MS-1220 FF, SDR-ST-PRO-MS-1210 FF, SDR-ST-PRO-MS-1170 FF, SDR-ST-PRO-MS-1250 FF, SDR-ST-PRO-MS-1190 FF |  |
| SDR-ST-MILS-1110 | Construction Phase Finish Milestone | 2027-08-06 → 2027-07-28 (-9d) | 2027-08-06 → 2027-07-28 (-9d) |  | 0.5d → 8d | SDR-ST-CON-P1-6050 FF, SDR-ST-CON-P1-6040 FF, SDR-ST-CON-P3-1890 FF, SDR-ST-CON-P3-1790 FF → SDR-ST-CON-P1-6050, SDR-ST-CON-P1-6040, SDR-ST-CON-P3-1890 FF, SDR-ST-CON-P3-1790 |  |
| SDR-ST-MOBL-1000 | Office Area Grading and Prepare |  |  |  |  |  | resources Mobilzation Team [2736.29 h] → Mobilzation Team [2827.55 h] |
| SDR-ST-MOBL-1010 | Office Area Access Roads Prepare |  |  |  |  | SDR-ST-MOBL-1000, SDR-ST-MILS-1010 SS → SDR-ST-MOBL-1000, SDR-ST-MILS-1010 | resources Mobilzation Team [2736.29 h] → Mobilzation Team [2827.55 h] |
| SDR-ST-MOBL-1020 | Offices Cabins Installation |  |  |  |  | SDR-ST-MOBL-1010 → SDR-ST-MOBL-1010, SDR-ST-MILS-1010 | resources Mobilzation Team [2736.29 h] → Mobilzation Team [2827.55 h] |
| SDR-ST-MOBL-1030 | Office Cabins MEP Works |  |  |  |  | SDR-ST-MOBL-1020 FF → SDR-ST-MOBL-1020 FF, SDR-ST-MILS-1000 | resources Mobilzation Team [2736.29 h] → Mobilzation Team [2827.55 h] |
| SDR-ST-MOBL-1040 | Manpower Arrive |  |  |  |  |  | resources Mobilzation Team [2736.29 h] → Mobilzation Team [2827.54 h] |
| SDR-ST-MOBL-1050 | Equipment Arrive |  |  |  |  |  | resources Mobilzation Team [2736.29 h] → Mobilzation Team [2827.53 h] |
| SDR-ST-MOBL-1060 | Project Sign Installation |  |  |  |  |  | resources Mobilzation Team [2736.29 h] → Mobilzation Team [2827.55 h] |
| 3 | **Engineering** |  | 2026-10-13 → 2026-10-21 (+8d) |  |  |  |  |
| 5 | **Shop Drawings Stage** |  | 2026-10-12 → 2026-10-13 (+1d) |  |  |  |  |
| SDR-ST-ENG-SUB-1080 | STRUCTURAL STEEL GENERAL NOTES Submission |  |  |  |  | SDR-ST-MILS-1000 SS+8d → SDR-ST-MILS-1000 SS | resources Civil Engineer [266.03 h]; Civil Drafman [266.03 h] → Civil Engineer [274.9 h]; Civil Drafman [274.9 h] |
| SDR-ST-ENG-SUB-1090 | REINFORCED CONCRETE GENERAL NOTES - 01 Submission |  |  |  |  | SDR-ST-MILS-1000 SS+8d → SDR-ST-MILS-1000 SS | resources Civil Engineer [266.03 h]; Civil Drafman [266.03 h] → Civil Engineer [274.9 h]; Civil Drafman [274.9 h] |
| SDR-ST-ENG-SUB-1120 | RC DETAILS Submission |  |  |  |  | SDR-ST-ENG-SUB-1080 SS → SDR-ST-MILS-1000 SS | resources Civil Engineer [266.03 h]; Civil Drafman [266.03 h] → Civil Engineer [274.9 h]; Civil Drafman [274.9 h] |
| SDR-ST-ENG-SUB-1100 | EXTERNAL CANOPY PLANS Submission |  |  |  |  | SDR-ST-ENG-SUB-1080 SS → SDR-ST-MILS-1000 SS | resources Civil Engineer [266.03 h]; Civil Drafman [266.03 h] → Civil Engineer [274.9 h]; Civil Drafman [274.9 h] |
| SDR-ST-ENG-SUB-1110 | CANOPY FRAMING Submission |  |  |  |  | SDR-ST-ENG-SUB-1080 SS → SDR-ST-MILS-1000 SS | resources Civil Engineer [266.03 h]; Civil Drafman [266.03 h] → Civil Engineer [274.9 h]; Civil Drafman [274.9 h] |
| SDR-ST-ENG-SUB-1000 | Sewage Layout Master Plan Submission |  |  |  |  | SDR-ST-MILS-1000 SS+8d → SDR-ST-MILS-1000 SS | resources SIC- Cost; Mechanical Drafman [266.03 h]; Design Engineer [266.03 h] → SIC- Cost; Mechanical Drafman [274.9 h]; Design Engineer [274.9 h] |
| SDR-ST-ENG-SUB-1010 | Sewage Network Profile Submission |  |  |  |  | SDR-ST-ENG-SUB-1000 SS → SDR-ST-MILS-1000 SS | resources SIC- Cost; Mechanical Drafman [266.03 h]; Design Engineer [266.03 h] → SIC- Cost; Mechanical Drafman [274.9 h]; Design Engineer [274.9 h] |
| SDR-ST-ENG-SUB-1020 | Sewage Network Standard Details Submission |  |  |  |  | SDR-ST-ENG-SUB-1000 SS → SDR-ST-MILS-1000 SS | resources SIC- Cost; Mechanical Drafman [266.05 h]; Design Engineer [266.05 h] → SIC- Cost; Mechanical Drafman [274.92 h]; Design Engineer [274.92 h] |
| SDR-ST-ENG-SUB-1030 | Sewage Network Section Submission |  |  |  |  | SDR-ST-ENG-SUB-1000 SS → SDR-ST-MILS-1000 SS | resources SIC- Cost; Mechanical Drafman [266.03 h]; Design Engineer [266.03 h] → SIC- Cost; Mechanical Drafman [274.9 h]; Design Engineer [274.9 h] |
| SDR-ST-ENG-SUB-1040 | Potable Water Piping Layout Master Plan Submission |  |  |  |  | SDR-ST-MILS-1000 SS+8d → SDR-ST-MILS-1000 SS | resources SIC- Cost; Mechanical Drafman [266.03 h]; Design Engineer [266.03 h] → SIC- Cost; Mechanical Drafman [274.9 h]; Design Engineer [274.9 h] |
| SDR-ST-ENG-SUB-1050 | Potable Water Piping Layout Submission |  |  |  |  | SDR-ST-ENG-SUB-1040 SS → SDR-ST-MILS-1000 SS | resources SIC- Cost; Mechanical Drafman [266.03 h]; Design Engineer [266.03 h] → SIC- Cost; Mechanical Drafman [274.9 h]; Design Engineer [274.9 h] |
| SDR-ST-ENG-SUB-1060 | Potable Water Standard Details Submission |  |  |  |  | SDR-ST-ENG-SUB-1040 SS → SDR-ST-MILS-1000 SS | resources SIC- Cost; Mechanical Drafman [266.03 h]; Design Engineer [266.03 h] → SIC- Cost; Mechanical Drafman [274.9 h]; Design Engineer [274.9 h] |
| SDR-ST-ENG-SUB-1070 | Potable Water Section Submission |  |  |  |  | SDR-ST-ENG-SUB-1040 SS → SDR-ST-MILS-1000 SS | resources SIC- Cost; Mechanical Drafman [266.03 h]; Design Engineer [266.03 h] → SIC- Cost; Mechanical Drafman [274.9 h]; Design Engineer [274.9 h] |
| SDR-ST-ENG-SUB-1150 | Low Voltage Network Submission |  |  |  |  | SDR-ST-ENG-SUB-1070 SS → SDR-ST-MILS-1000 SS | resources Electrical Engineer [266.03 h]; Electrical Forman [266.03 h] → Electrical Engineer [274.9 h]; Electrical Forman [274.9 h] |
| SDR-ST-ENG-SUB-1160 | Standard Details_Low Voltage Submission |  |  |  |  | SDR-ST-ENG-SUB-1070 SS → SDR-ST-ENG-SUB-1130 SS | resources Electrical Engineer [266.03 h]; Electrical Forman [266.03 h] → Electrical Engineer [274.9 h]; Electrical Forman [274.9 h] |
| SDR-ST-ENG-SUB-1170 | Street Lighting Network Submission |  |  |  |  | SDR-ST-ENG-SUB-1070 SS → SDR-ST-ENG-SUB-1130 SS | resources Electrical Engineer [266.03 h]; Electrical Forman [266.03 h] → Electrical Engineer [274.9 h]; Electrical Forman [274.9 h] |
| SDR-ST-ENG-SUB-1180 | Standard Details_Street Lighting Submission |  |  |  |  | SDR-ST-ENG-SUB-1070 SS → SDR-ST-ENG-SUB-1130 SS | resources Electrical Engineer [266.03 h]; Electrical Forman [266.03 h] → Electrical Engineer [274.9 h]; Electrical Forman [274.9 h] |
| SDR-ST-ENG-SUB-1190 | Telecommunication Network Submission |  |  |  |  | SDR-ST-ENG-SUB-1070 → SDR-ST-ENG-SUB-1130 SS | resources Electrical Engineer [266.03 h]; Electrical Forman [266.03 h] → Electrical Engineer [274.9 h]; Electrical Forman [274.9 h] |
| SDR-ST-ENG-SUB-1200 | Telecommunication Standard Details Submission |  |  |  |  | SDR-ST-ENG-SUB-1070 SS → SDR-ST-ENG-SUB-1130 SS | resources Electrical Engineer [266.03 h]; Electrical Forman [266.03 h] → Electrical Engineer [274.9 h]; Electrical Forman [274.9 h] |
| SDR-ST-ENG-SUB-1210 | Canopy:Ground Floor Lighting Plan Submission |  |  |  |  | SDR-ST-ENG-SUB-1070 SS → SDR-ST-ENG-SUB-1130 SS | resources Electrical Engineer [266.03 h]; Electrical Forman [266.03 h] → Electrical Engineer [274.9 h]; Electrical Forman [274.9 h] |
| SDR-ST-ENG-SUB-1220 | Canopy:Ground Floor CCTV Plan Submission |  |  |  |  | SDR-ST-ENG-SUB-1070 SS → SDR-ST-ENG-SUB-1130 SS | resources Electrical Engineer [266.03 h]; Electrical Forman [266.03 h] → Electrical Engineer [274.9 h]; Electrical Forman [274.9 h] |
| SDR-ST-ENG-SUB-1230 | Canopy:Ground Floor Voice Evacuation Plan Submission |  |  |  |  | SDR-ST-ENG-SUB-1070 SS → SDR-ST-ENG-SUB-1130 SS | resources Electrical Engineer [266.03 h]; Electrical Forman [266.03 h] → Electrical Engineer [274.9 h]; Electrical Forman [274.9 h] |
| SDR-ST-ENG-SUB-1130 | Medium Voltage Network Submission |  |  |  |  | SDR-ST-MILS-1000 SS+8d, SDR-ST-PREL-1100, SDR-ST-MILS-1030, SDR-ST-MILS-1050 → SDR-ST-MILS-1000 SS | resources Electrical Engineer [266.03 h]; Electrical Forman [266.03 h] → Electrical Engineer [274.9 h]; Electrical Forman [274.9 h] |
| SDR-ST-ENG-SUB-1140 | Standard Details Medium Voltage Submission |  |  |  |  | SDR-ST-ENG-SUB-1130 SS → SDR-ST-MILS-1000 SS | resources Electrical Engineer [266.03 h]; Electrical Forman [266.03 h] → Electrical Engineer [274.9 h]; Electrical Forman [274.9 h] |
| 4 | **Approvals** |  | 2026-10-12 → 2026-10-13 (+1d) |  |  |  |  |
| SDR-ST-ENG-AP-1080 | STRUCTURAL STEEL GENERAL NOTES Approval |  |  |  |  |  | resources Civil Engineer [399.04 h]; Civil Forman [399.04 h] → Civil Engineer [412.35 h]; Civil Forman [412.35 h] |
| SDR-ST-ENG-AP-1090 | REINFORCED CONCRETE GENERAL NOTES - 01 Approval |  |  |  |  |  | resources Civil Engineer [399.04 h]; Civil Forman [399.04 h] → Civil Engineer [412.35 h]; Civil Forman [412.35 h] |
| SDR-ST-ENG-AP-1120 | RC DETAILS Approval |  |  |  |  |  | resources Civil Engineer [399.04 h]; Civil Forman [399.04 h] → Civil Engineer [412.35 h]; Civil Forman [412.35 h] |
| SDR-ST-ENG-AP-1100 | EXTERNAL CANOPY PLANS Approval |  |  |  |  | SDR-ST-ENG-SUB-1100 FF+2d → SDR-ST-ENG-SUB-1100 | resources Civil Engineer [399.04 h]; Civil Forman [399.04 h] → Civil Engineer [412.35 h]; Civil Forman [412.35 h] |
| SDR-ST-ENG-AP-1110 | CANOPY FRAMING Approval |  |  |  |  |  | resources Civil Engineer [399.04 h]; Civil Forman [399.04 h] → Civil Engineer [412.35 h]; Civil Forman [412.35 h] |
| SDR-ST-ENG-AP-1010 | Sewage Network Profile Approval |  |  |  |  |  | resources SIC- Cost; Project Coordinator [798.08 h] → SIC- Cost; Project Coordinator [824.7 h] |
| SDR-ST-ENG-AP-1020 | Sewage Network Standard Details Approval |  |  |  |  |  | resources SIC- Cost; Project Coordinator [798.08 h] → SIC- Cost; Project Coordinator [824.7 h] |
| SDR-ST-ENG-AP-1030 | Sewage Network Section Approval |  |  |  |  |  | resources SIC- Cost; Project Coordinator [798.08 h] → SIC- Cost; Project Coordinator [824.7 h] |
| SDR-ST-ENG-AP-1000 | Sewage Layout Master Plan Approval |  |  |  |  |  | resources SIC- Cost; Project Coordinator [798.08 h] → SIC- Cost; Project Coordinator [824.7 h] |
| SDR-ST-ENG-AP-1060 | Potable Water Standard Details Approval |  |  |  |  |  | resources SIC- Cost; Project Coordinator [798.08 h] → SIC- Cost; Project Coordinator [824.7 h] |
| SDR-ST-ENG-AP-1070 | Potable Water Section Approval |  |  |  |  |  | resources SIC- Cost; Project Coordinator [798.08 h] → SIC- Cost; Project Coordinator [824.7 h] |
| SDR-ST-ENG-AP-1040 | Potable Water Piping Layout Master Plan Approval |  |  |  |  |  | resources SIC- Cost; Project Coordinator [798.08 h] → SIC- Cost; Project Coordinator [824.7 h] |
| SDR-ST-ENG-AP-1050 | Potable Water Piping Layout Approval |  |  |  |  |  | resources SIC- Cost; Project Coordinator [798.08 h] → SIC- Cost; Project Coordinator [824.7 h] |
| 9 | **Electrical** |  | 2026-10-12 → 2026-10-13 (+1d) |  |  |  |  |
| SDR-ST-ENG-AP-1160 | Standard Details_Low Voltage Approval |  |  |  |  |  | resources Electrical Engineer [399.04 h]; Electrical Forman [399.04 h] → Electrical Engineer [412.35 h]; Electrical Forman [412.35 h] |
| SDR-ST-ENG-AP-1150 | Low Voltage Network Approval |  |  |  |  |  | resources Electrical Engineer [399.04 h]; Electrical Forman [399.04 h] → Electrical Engineer [412.35 h]; Electrical Forman [412.35 h] |
| SDR-ST-ENG-AP-1170 | Street Lighting Network Approval |  |  |  |  |  | resources Electrical Engineer [399.04 h]; Electrical Forman [399.04 h] → Electrical Engineer [412.35 h]; Electrical Forman [412.35 h] |
| SDR-ST-ENG-AP-1180 | Standard Details_Street Lighting Approval |  |  |  |  |  | resources Electrical Engineer [399.04 h]; Electrical Forman [399.04 h] → Electrical Engineer [412.35 h]; Electrical Forman [412.35 h] |
| SDR-ST-ENG-AP-1190 | Telecommunication Network Approval |  |  |  |  |  | resources Electrical Engineer [399.04 h]; Electrical Forman [399.04 h] → Electrical Engineer [412.35 h]; Electrical Forman [412.35 h] |

| ID | Task | Start | Finish | Duration | Total float | Predecessors | Other |
| --- | --- | --- | --- | --- | --- | --- | --- |
| SDR-ST-ENG-AP-1200 | Telecommunication Standard Details Approval |  |  |  |  |  | resources Electrical Engineer [399.04 h]; Electrical Forman [399.04 h] → Electrical Engineer [412.35 h]; Electrical Forman [412.35 h] |
| SDR-ST-ENG-AP-1210 | Canopy:Ground Floor Lighting Plan Approval |  |  |  |  |  | resources Electrical Engineer [399.04 h]; Electrical Forman [399.04 h] → Electrical Engineer [412.35 h]; Electrical Forman [412.35 h] |
| SDR-ST-ENG-AP-1220 | Canopy:Ground Floor CCTV Plan Approval |  |  |  |  |  | resources Electrical Engineer [399.04 h]; Electrical Forman [399.04 h] → Electrical Engineer [412.35 h]; Electrical Forman [412.35 h] |
| SDR-ST-ENG-AP-1230 | Canopy:Ground Floor Voice Evacuation Plan Approval |  |  |  |  | SDR-ST-ENG-SUB-1230 → SDR-ST-ENG-SUB-1230 FS+8d | resources Electrical Engineer [399.04 h]; Electrical Forman [399.04 h] → Electrical Engineer [412.35 h]; Electrical Forman [412.35 h] |
| SDR-ST-ENG-AP-1130 | Medium Voltage Network Approval | 2026-10-05 → 2026-10-12 (+7d) | 2026-10-11 → 2026-10-13 (+2d) | 6d → 2d | 0d → 26.2d | SDR-ST-ENG-SUB-1130 SS+2d → SDR-ST-ENG-SUB-1130 | resources Electrical Engineer [399.04 h]; Electrical Forman [399.04 h] → Electrical Engineer [412.35 h]; Electrical Forman [412.35 h] |
| SDR-ST-ENG-AP-1140 | Standard Details Medium Voltage Approval | 2026-10-05 → 2026-10-12 (+7d) | 2026-10-12 → 2026-10-13 (+1d) | 7d → 2d | 0d → 26.2d | SDR-ST-ENG-SUB-1140 SS+2d → SDR-ST-ENG-SUB-1140 | resources Electrical Engineer [399.04 h]; Electrical Forman [399.04 h] → Electrical Engineer [412.35 h]; Electrical Forman [412.35 h] |
| 6 | **Materials** |  | 2026-10-13 → 2026-10-21 (+8d) |  |  |  |  |
| 5 | **Materials Submission** |  | 2026-10-06 → 2026-10-19 (+13d) |  |  |  |  |
| SDR-ST-PRO-S-1010 | Waterproofing (Thermal & moisture Protection) |  |  |  |  | SDR-ST-PRO-S-1270 SS, SDR-ST-MILS-1000 SS → SDR-ST-ENG-AP-1120 SS+1d, SDR-ST-MILS-1000 SS |  |
| SDR-ST-PRO-S-1030 | Interlock |  |  |  |  | SDR-ST-MILS-1000 SS+8d, SDR-ST-MILS-1000 → SDR-ST-ENG-AP-1090 SS+1d, SDR-ST-MILS-1000 SS |  |
| SDR-ST-PRO-S-1060 | Kerbstone |  |  |  |  | SDR-ST-PRO-S-1030 SS, SDR-ST-MILS-1000 → SDR-ST-ENG-AP-1090 SS+1d, SDR-ST-MILS-1000 |  |
| SDR-ST-PRO-S-1260 | Steel Bars |  |  |  |  | SDR-ST-PRO-S-1030 SS, SDR-ST-MILS-1000 → SDR-ST-ENG-AP-1080 SS+1d, SDR-ST-MILS-1000 SS |  |
| SDR-ST-PRO-S-1270 | Asphalt |  |  |  |  | SDR-ST-PRO-S-1030 SS, SDR-ST-MILS-1000 → SDR-ST-MILS-1000, SDR-ST-ENG-AP-1090 SS+1d |  |
| SDR-ST-PRO-S-1140 | LOW VOLTAGE CABLES |  |  |  |  | SDR-ST-MILS-1000 SS+8d, SDR-ST-PRO-S-1010 SS → SDR-ST-MILS-1000 FS+8d, SDR-ST-ENG-AP-1150 SS+1d, SDR-ST-ENG-AP-1160 SS |  |
| SDR-ST-PRO-S-1150 | LOW VOLTAGE DISTRIBUTION Panel |  |  |  |  | SDR-ST-PRO-S-1140 SS, SDR-ST-MILS-1000 → SDR-ST-MILS-1000, SDR-ST-ENG-AP-1150 SS+1d |  |
| SDR-ST-PRO-S-1160 | STREET LIGHTING FEEDER Panel |  |  |  |  | SDR-ST-PRO-S-1140 SS, SDR-ST-PRO-S-1150 SS, SDR-ST-MILS-1000 → SDR-ST-MILS-1000, SDR-ST-ENG-AP-1170 SS+1d |  |
| SDR-ST-PRO-S-1170 | STREET LIGHTING CABLES |  |  |  |  | SDR-ST-PRO-S-1140 SS, SDR-ST-PRO-S-1160 SS, SDR-ST-MILS-1000 → SDR-ST-MILS-1000, SDR-ST-ENG-AP-1170 SS+1d, SDR-ST-ENG-AP-1180 SS |  |
| SDR-ST-PRO-S-1200 | ROAD CROSSING DUCTS Ø110mm |  |  |  |  | SDR-ST-PRO-S-1140 SS, SDR-ST-PRO-S-1250 SS, SDR-ST-MILS-1000 → SDR-ST-MILS-1000, SDR-ST-ENG-AP-1010 SS+1d |  |
| SDR-ST-PRO-S-1210 | Drawpits |  |  |  |  | SDR-ST-PRO-S-1140 SS, SDR-ST-PRO-S-1150 SS, SDR-ST-MILS-1000 → SDR-ST-MILS-1000, SDR-ST-ENG-AP-1090 SS+1d |  |
| SDR-ST-PRO-S-1240 | CCTV :Pole mounted Filed Equipment cabinet (FE |  |  |  |  | SDR-ST-PRO-S-1140 SS, SDR-ST-PRO-S-1250 SS, SDR-ST-MILS-1000 → SDR-ST-MILS-1000, SDR-ST-ENG-AP-1200 SS+1d |  |
| SDR-ST-PRO-S-1250 | VOICE EVACUATION SYSTEM |  |  |  |  | SDR-ST-PRO-S-1140 SS, SDR-ST-PRO-S-1230 SS, SDR-ST-MILS-1000 → SDR-ST-MILS-1000, SDR-ST-ENG-AP-1200 SS+1d |  |
| SDR-ST-PRO-S-1230 | CCTV :5MP IP PoE Bullet Camera |  |  |  |  | SDR-ST-PRO-S-1140 SS, SDR-ST-PRO-S-1170 SS, SDR-ST-MILS-1000 → SDR-ST-MILS-1000, SDR-ST-ENG-AP-1190 SS+1d |  |
| SDR-ST-PRO-S-1040 | HDPE PIPES & FITTINGS |  |  |  |  | SDR-ST-PRO-S-1030 SS, SDR-ST-MILS-1000 → SDR-ST-MILS-1000, SDR-ST-ENG-AP-1000 SS+1d, SDR-ST-ENG-AP-1020 SS, SDR-ST-ENG-AP-1040 SS, SDR-ST-ENG-AP-1060 SS |  |
| SDR-ST-PRO-S-1050 | CONCRETE PIPES AND FITTINGS |  |  |  |  | SDR-ST-PRO-S-1030 SS, SDR-ST-MILS-1000 → SDR-ST-MILS-1000, SDR-ST-ENG-AP-1090 SS+1d |  |
| SDR-ST-PRO-S-1070 | GI GOOSENECK & VENT |  |  |  |  | SDR-ST-PRO-S-1030 SS, SDR-ST-MILS-1000 → SDR-ST-MILS-1000, SDR-ST-ENG-AP-1010 SS+1d |  |
| SDR-ST-PRO-S-1080 | WARNING TAPE |  |  |  |  | SDR-ST-PRO-S-1030 SS, SDR-ST-MILS-1000 → SDR-ST-MILS-1000, SDR-ST-ENG-AP-1000 SS+1d, SDR-ST-ENG-AP-1050 SS+1d |  |
| SDR-ST-PRO-S-1090 | MANHOLE, CATCH BASIN & VALVE BOX COVER |  |  |  |  | SDR-ST-PRO-S-1030 SS, SDR-ST-MILS-1000 → SDR-ST-MILS-1000, SDR-ST-ENG-AP-1030 SS+1d, SDR-ST-ENG-AP-1070 SS+1d |  |
| 1 | **Long Lead Items** |  | 2026-10-06 → 2026-10-19 (+13d) |  |  |  |  |
| SDR-ST-PRO-S-1000 | Metal railing for platform |  |  |  |  | SDR-ST-MILS-1000 SS+8d, SDR-ST-MILS-1000 → SDR-ST-MILS-1000, SDR-ST-ENG-AP-1110 SS+1d |  |
| SDR-ST-PRO-S-1020 | Canopy |  |  |  |  | SDR-ST-MILS-1000 SS+8d, SDR-ST-MILS-1000 → SDR-ST-MILS-1000, SDR-ST-ENG-AP-1100 SS+1d |  |
| 3 | **Electrical** |  | 2026-10-06 → 2026-10-19 (+13d) |  |  |  |  |
| SDR-ST-PRO-S-1180 | LIGHTING POLES |  |  |  |  | SDR-ST-MILS-1000 → SDR-ST-MILS-1000, SDR-ST-ENG-AP-1170 SS+1d |  |
| SDR-ST-PRO-S-1190 | STREET LIGHTING LUMINAIRE |  |  |  |  | SDR-ST-MILS-1000 → SDR-ST-MILS-1000, SDR-ST-ENG-AP-1170 SS+1d, SDR-ST-ENG-AP-1210 SS |  |
| SDR-ST-PRO-S-1220 | Outdoor Lighting Fixtures |  |  |  |  | SDR-ST-MILS-1000 → SDR-ST-MILS-1000, SDR-ST-ENG-AP-1170 SS+1d, SDR-ST-ENG-AP-1220 SS |  |
| SDR-ST-PRO-S-1110 | MEDIUM VOLTAGE CABLES DUCT BANKS |  | 2026-10-06 → 2026-10-19 (+13d) |  | 0d → 69d | SDR-ST-MILS-1000 SS+8d, SDR-ST-MILS-1000, SDR-ST-MILS-1040 → SDR-ST-MILS-1000, SDR-ST-ENG-AP-1130 FF |  |
| SDR-ST-PRO-S-1120 | MEDIUM VOLTAGE CABLES |  | 2026-10-06 → 2026-10-19 (+13d) |  | 4d → 21.2d | SDR-ST-PRO-S-1110 SS, SDR-ST-MILS-1000 → SDR-ST-MILS-1000, SDR-ST-ENG-AP-1140 FF, SDR-ST-ENG-AP-1130 FF |  |
| SDR-ST-PRO-S-1130 | SUB-STATION |  | 2026-10-06 → 2026-10-19 (+13d) |  | 0d → 36d | SDR-ST-PRO-S-1110 SS, SDR-ST-MILS-1000 → SDR-ST-MILS-1000, SDR-ST-ENG-AP-1190 SS+1d, SDR-ST-ENG-AP-1170 SS+1d, SDR-ST-ENG-AP-1130 FF |  |
| SDR-ST-PRO-S-1100 | WASHOUT & AIR VALVE, GATE VALVE, BUTTERFLY VALVE |  |  |  |  | SDR-ST-MILS-1000 SS+8d, SDR-ST-MILS-1000 → SDR-ST-MILS-1000, SDR-ST-ENG-AP-1010 SS+1d |  |
| 6 | **Materials Approval** |  | 2026-10-13 → 2026-10-21 (+8d) |  |  |  |  |
| 2 | **Short Lead Items** |  | 2026-10-04 → 2026-10-18 (+14d) |  |  |  |  |
| 3 | **Electrical** |  | 2026-10-04 → 2026-10-18 (+14d) |  |  |  |  |
| SDR-ST-PRO-A-1130 | STREET LIGHTING FEEDER Panel |  |  |  |  | SDR-ST-PRO-S-1160 SS+4d → SDR-ST-PRO-S-1160 |  |
| SDR-ST-PRO-A-1110 | LOW VOLTAGE CABLES |  |  |  |  | SDR-ST-PRO-S-1140 → SDR-ST-PRO-S-1140 SS |  |
| SDR-ST-PRO-A-1170 | CCTV :5MP IP PoE Bullet Camera |  | 2026-10-04 → 2026-10-18 (+14d) |  | 1d → 82d |  |  |
| SDR-ST-PRO-A-1180 | CCTV :Pole mounted Filed Equipment cabinet (FE |  | 2026-10-04 → 2026-10-18 (+14d) |  | 0d → 82d | SDR-ST-PRO-S-1240 SS → SDR-ST-PRO-S-1240 |  |
| 1 | **Long Lead Items** |  | 2026-10-13 → 2026-10-21 (+8d) |  |  |  |  |
| 3 | **Electrical** |  | 2026-10-13 → 2026-10-21 (+8d) |  |  |  |  |
| SDR-ST-PRO-A-1250 | Outdoor Lighting Fixtures |  |  |  |  | SDR-ST-PRO-S-1220, SDR-ST-ENG-AP-1100 → SDR-ST-PRO-S-1220 |  |
| SDR-ST-PRO-A-1200 | MEDIUM VOLTAGE CABLES DUCT BANKS | 2026-10-12 → 2026-10-20 (+8d) | 2026-10-13 → 2026-10-21 (+8d) |  | 0d → 69d | SDR-ST-PRO-S-1110, SDR-ST-ENG-AP-1130 → SDR-ST-PRO-S-1110 |  |
| SDR-ST-PRO-A-1210 | MEDIUM VOLTAGE CABLES | 2026-10-13 → 2026-10-20 (+7d) | 2026-10-13 → 2026-10-20 (+7d) |  | 0d → 21.2d | SDR-ST-PRO-S-1120, SDR-ST-ENG-AP-1140 → SDR-ST-PRO-S-1120 |  |
| SDR-ST-PRO-A-1220 | SUB-STATION | 2026-10-07 → 2026-10-20 (+13d) | 2026-10-13 → 2026-10-21 (+8d) | 6d → 2d | 0d → 36d | SDR-ST-PRO-S-1130, SDR-ST-ENG-AP-1110 FF → SDR-ST-PRO-S-1130, SDR-ST-MILS-1050 |  |
| 4 | **Procurement** |  | 2027-06-12 → 2027-02-25 (-107d) |  |  |  |  |
| 5 | **Purchase Order** |  | 2027-04-14 → 2026-11-10 (-155d) |  |  |  |  |
| 4 | **Short Lead Items** |  | 2027-02-11 → 2026-11-03 (-100d) |  |  |  |  |
| 1 | **Civil** | 2026-09-28 → 2026-10-12 (+14d) | 2026-12-25 → 2026-11-03 (-52d) |  |  |  |  |
| SDR-ST-PRO-PO-1030 | Waterproofing (Thermal & moisture Protection) | 2026-09-28 → 2026-10-12 (+14d) | 2026-10-23 → 2026-11-03 (+11d) |  | 9d → 26d | SDR-ST-PRO-A-1010 FS+77d → SDR-ST-PRO-A-1010, SDR-ST-MILS-1000 SS+103d | resources Civil Engineer [456.05 h] → Civil Engineer [471.26 h] |
| SDR-ST-PRO-PO-1040 | Interlock | 2026-10-21 → 2026-10-12 (-9d) | 2026-11-05 → 2026-10-25 (-11d) |  | 21.8d → 35d | SDR-ST-PRO-A-1030 FS+60d, SDR-ST-PRO-PO-1030 SS+17d → SDR-ST-PRO-A-1030, SDR-ST-MILS-1000 SS+86d | resources Civil Engineer [456.05 h] → Civil Engineer [471.26 h] |
| SDR-ST-PRO-PO-1060 | Kerbstone | 2026-10-22 → 2026-10-12 (-10d) | 2026-11-04 → 2026-10-22 (-13d) |  | 21.8d → 44d | SDR-ST-PRO-A-1060 FS+61d, SDR-ST-PRO-PO-1040 SS+1d → SDR-ST-PRO-A-1060, SDR-ST-MILS-1000 SS+87d | resources Civil Engineer [456.05 h] → Civil Engineer [471.26 h] |
| SDR-ST-PRO-PO-1260 | Steel Bars | 2026-10-14 → 2026-10-12 (-2d) | 2026-10-27 → 2026-10-22 (-5d) |  | 0d → 24d | SDR-ST-PRO-A-1260 FS+17d, SDR-ST-PRO-A-1030, SDR-ST-PRO-A-1060, SDR-ST-PRO-A-1260 FF, SDR-ST-PRO-A-1270, SDR-ST-PRO-A-1130, SDR-ST-PRO-A-1110, SDR-ST-PRO-A-1120, SDR-ST-PRO-A-1140, SDR-ST-PRO-A-1150, SDR-ST-PRO-A-1160, SDR-ST-PRO-A-1170, SDR-ST-PRO-A-1180, SDR-ST-PRO-A-1190, SDR-ST-PRO-A-1040, SDR-ST-PRO-A-1050, SDR-ST-PRO-A-1070, SDR-ST-PRO-A-1080, SDR-ST-PRO-A-1090, SDR-ST-PRO-A-1000, SDR-ST-PRO-A-1020, SDR-ST-PRO-A-1200, SDR-ST-PRO-A-1210, SDR-ST-PRO-A-1220, SDR-ST-PRO-A-1230, SDR-ST-PRO-A-1240, SDR-ST-PRO-A-1250, SDR-ST-PREL-1110, SDR-ST-PRO-S-1160 → SDR-ST-PRO-A-1260, SDR-ST-PREL-1110 | resources Civil Engineer [456.05 h] → Civil Engineer [471.26 h] |
| SDR-ST-PRO-PO-1270 | Asphalt | 2026-12-14 → 2026-10-12 (-63d) | 2026-12-25 → 2026-10-22 (-64d) |  | 25.2d → 72d | SDR-ST-PRO-A-1270 FS+100d, SDR-ST-PRO-PO-1060 FS+27d → SDR-ST-PRO-A-1270, SDR-ST-MILS-1000 SS+126d | resources Civil Engineer [456.05 h] → Civil Engineer [471.26 h] |
| 3 | **Electrical** |  | 2027-02-11 → 2026-10-29 (-105d) |  |  |  |  |
| SDR-ST-PRO-PO-1100 | LOW VOLTAGE CABLES |  |  |  |  | SDR-ST-PRO-A-1110 FS+62d → SDR-ST-PRO-A-1110, SDR-ST-MILS-1000 SS+98d | resources Electrical Engineer [456.05 h] → Electrical Engineer [471.26 h] |
| SDR-ST-PRO-PO-1010 | ROAD CROSSING DUCTS Ø110mm |  |  |  |  | SDR-ST-PRO-A-1150 FS+55d, SDR-ST-PRO-PO-1070 FF → SDR-ST-PRO-A-1150, SDR-ST-MILS-1000 SS+81d | resources Electrical Engineer [456.05 h] → Electrical Engineer [471.26 h] |
| SDR-ST-PRO-PO-1070 | STREET LIGHTING FEEDER Panel |  | 2026-09-28 → 2026-10-12 (+14d) |  | 9.8d → 27d | SDR-ST-PRO-A-1130 FS+60d → SDR-ST-PRO-A-1130, SDR-ST-MILS-1000 SS+86d | resources Electrical Engineer [456.05 h] → Electrical Engineer [471.26 h] |
| SDR-ST-PRO-PO-1130 | LOW VOLTAGE DISTRIBUTION Panel |  | 2026-09-30 → 2026-10-12 (+12d) |  | 49.8d → 112d | SDR-ST-PRO-A-1120 FS+68d, SDR-ST-PRO-PO-1010 SS+1d → SDR-ST-PRO-A-1120, SDR-ST-MILS-1000 SS+94d | resources Electrical Engineer [456.05 h] → Electrical Engineer [471.2 h] |
| SDR-ST-PRO-PO-1110 | STREET LIGHTING CABLES |  | 2026-12-15 → 2026-10-12 (-64d) |  | 0.4d → 83d | SDR-ST-PRO-A-1140 FS+62d, SDR-ST-PRO-PO-1050 SS+1d → SDR-ST-PRO-A-1140, SDR-ST-MILS-1000 SS+98d | resources Electrical Engineer [456.05 h] → Electrical Engineer [471.23 h] |
| SDR-ST-PRO-PO-1020 | Drawpits | 2026-09-28 → 2026-10-12 (+14d) | 2026-10-09 → 2026-10-22 (+13d) |  | 9.8d → 19d | SDR-ST-PRO-A-1160 FS+55d, SDR-ST-PRO-PO-1100 SS+8d → SDR-ST-PRO-A-1160, SDR-ST-MILS-1000 SS+81d | resources Electrical Engineer [456.05 h] → Electrical Engineer [471.23 h] |
| SDR-ST-PRO-PO-1220 | VOICE EVACUATION SYSTEM | 2026-12-31 → 2026-10-12 (-80d) | 2027-01-13 → 2026-10-22 (-83d) |  | 0.4d → 88d | SDR-ST-PRO-A-1190 FS+100d, SDR-ST-PRO-PO-1110 FF+22d → SDR-ST-PRO-A-1190, SDR-ST-MILS-1000 SS+126d | resources Electrical Engineer [456.05 h] → Electrical Engineer [471.26 h] |
| SDR-ST-PRO-PO-1050 | CCTV :Pole mounted Filed Equipment cabinet | 2026-12-14 → 2026-10-19 (-56d) | 2026-12-25 → 2026-10-29 (-57d) |  | 0.4d → 82d | SDR-ST-PRO-A-1180 FS+60d, SDR-ST-PRO-PO-1130 SS+4d → SDR-ST-PRO-A-1180, SDR-ST-MILS-1000 SS+86d | resources Electrical Engineer [456.02 h] → Electrical Engineer [471.26 h] |
| SDR-ST-PRO-PO-1230 | CCTV :5MP IP PoE Bullet Camera | 2027-01-27 → 2026-10-19 (-100d) | 2027-02-11 → 2026-10-29 (-105d) |  | 1d → 82d | SDR-ST-PRO-A-1170 FS+98d, SDR-ST-PRO-PO-1220 SS+3d → SDR-ST-PRO-A-1170, SDR-ST-MILS-1000 SS+131d | resources Electrical Engineer [456.05 h] → Electrical Engineer [471.21 h] |

| ID | Task | Start | Finish | Total float | Predecessors | Other |
| --- | --- | --- | --- | --- | --- | --- |
| 2 | **Mechanical** |  | 2026-11-13 → 2026-10-22 (-22d) |  |  |  |
| SDR-ST-PRO-PO-1000 | WARNING TAPE |  |  |  | SDR-ST-PRO-A-1080 FS+50d, SDR-ST-ENG-AP-1230, SDR-ST-ENG-AP-1080, SDR-ST-ENG-AP-1090, SDR-ST-ENG-AP-1120, SDR-ST-ENG-AP-1000, SDR-ST-ENG-AP-1010, SDR-ST-ENG-AP-1020, SDR-ST-ENG-AP-1030, SDR-ST-ENG-AP-1040, SDR-ST-ENG-AP-1050, SDR-ST-ENG-AP-1060, SDR-ST-ENG-AP-1070, SDR-ST-ENG-AP-1150, SDR-ST-ENG-AP-1160, SDR-ST-ENG-AP-1170, SDR-ST-ENG-AP-1180, SDR-ST-ENG-AP-1190, SDR-ST-ENG-AP-1200, SDR-ST-ENG-AP-1210, SDR-ST-ENG-AP-1220, SDR-ST-MILS-1020, SDR-ST-PREL-1090, SDR-ST-PREL-1080, SDR-ST-PREL-1060, SDR-ST-PREL-1070, SDR-ST-PRO-PO-1100 SS+4d → SDR-ST-PRO-A-1080, SDR-ST-MILS-1020, SDR-ST-PREL-1100, SDR-ST-PREL-1090, SDR-ST-PREL-1080, SDR-ST-PREL-1060, SDR-ST-PREL-1070, SDR-ST-MILS-1000 SS+76d | resources Mechanical Engineer [456.05 h] → Mechanical Engineer [471.26 h] |
| SDR-ST-PRO-PO-1080 | HDPE PIPES & FITTINGS |  |  |  | SDR-ST-PRO-A-1040 FS+62d → SDR-ST-PRO-A-1040, SDR-ST-MILS-1000 SS+98d | resources Mechanical Engineer [456.05 h] → Mechanical Engineer [471.26 h] |
| SDR-ST-PRO-PO-1120 | CONCRETE PIPES AND FITTINGS |  |  |  | SDR-ST-PRO-A-1050 FS+63d → SDR-ST-PRO-A-1050, SDR-ST-MILS-1000 SS+89d | resources Mechanical Engineer [456.05 h] → Mechanical Engineer [471.26 h] |
| SDR-ST-PRO-PO-1090 | GI GOOSENECK & VENT | 2026-10-26 → 2026-10-12 (-14d) | 2026-11-06 → 2026-10-22 (-15d) | 22.8d → 90d | SDR-ST-PRO-A-1070 FS+62d, SDR-ST-PRO-PO-1030 → SDR-ST-PRO-A-1070, SDR-ST-MILS-1000 SS+88d | resources Mechanical Engineer [456.05 h] → Mechanical Engineer [471.26 h] |
| SDR-ST-PRO-PO-1140 | MANHOLE, CATCH BASIN & VALVE BOX COVER | 2026-11-02 → 2026-10-12 (-21d) | 2026-11-13 → 2026-10-22 (-22d) | 9d → 52d | SDR-ST-PRO-A-1090 FS+70d, SDR-ST-PRO-PO-1030 FS+5d → SDR-ST-PRO-A-1090, SDR-ST-MILS-1000 SS+96d | resources Mechanical Engineer [456.05 h] → Mechanical Engineer [471.26 h] |
| 5 | **Long Lead Items** |  | 2027-04-14 → 2026-11-10 (-155d) |  |  |  |
| 1 | **Civil** | 2026-10-16 → 2026-10-12 (-4d) | 2027-03-25 → 2026-11-10 (-135d) |  |  |  |
| SDR-ST-PRO-PO-1150 | Metal railing for platform | 2026-10-16 → 2026-10-12 (-4d) | 2026-11-20 → 2026-11-10 (-10d) | 10d → 40d | SDR-ST-PRO-A-1000 FS+80d, SDR-ST-PRO-PO-1000 SS+1d → SDR-ST-PRO-A-1000, SDR-ST-MILS-1000 SS+106d | resources Civil Engineer [456.05 h] → Civil Engineer [471.26 h] |
| SDR-ST-PRO-PO-1240 | Canopy | 2027-02-24 → 2026-10-12 (-135d) | 2027-03-25 → 2026-10-27 (-149d) | 17.4d → 37d | SDR-ST-PRO-A-1020 FS+120d, SDR-ST-PRO-PO-1230 FS+5d → SDR-ST-PRO-A-1020, SDR-ST-MILS-1000 SS+146d | resources Civil Engineer [456.05 h] → Civil Engineer [471.26 h] |
| 3 | **Electrical** |  | 2027-04-14 → 2026-11-07 (-158d) |  |  |  |
| SDR-ST-PRO-PO-1200 | LIGHTING POLES |  | 2026-09-28 → 2026-10-12 (+14d) | 101d → 67d | SDR-ST-PRO-A-1230 FS+96d → SDR-ST-PRO-A-1230, SDR-ST-MILS-1000 SS+122d | resources Electrical Engineer [456.05 h] → Electrical Engineer [471.26 h] |
| SDR-ST-PRO-PO-1180 | Outdoor Lighting Fixtures | 2026-12-04 → 2026-10-12 (-53d) | 2026-12-23 → 2026-10-27 (-57d) | 9d → 60d | SDR-ST-PRO-A-1250 FF+90d, SDR-ST-PRO-PO-1140 FS+14d → SDR-ST-PRO-A-1250, SDR-ST-MILS-1000 SS+131d | resources Electrical Engineer [456.05 h] → Electrical Engineer [471.26 h] |
| SDR-ST-PRO-PO-1210 | STREET LIGHTING LUMINAIRE | 2027-01-15 → 2026-10-12 (-95d) | 2027-02-03 → 2026-10-27 (-99d) | 0.4d → 26d | SDR-ST-PRO-A-1240 FS+97d, SDR-ST-PRO-PO-1220 FS+1d → SDR-ST-PRO-A-1240, SDR-ST-MILS-1000 SS+133d | resources Electrical Engineer [456.05 h] → Electrical Engineer [471.26 h] |
| SDR-ST-PRO-PO-1170 | MEDIUM VOLTAGE CABLES | 2027-01-27 → 2026-10-21 (-98d) | 2027-02-24 → 2026-11-07 (-109d) | 75.6d → 21.2d | SDR-ST-PRO-A-1210 FS+90d, SDR-ST-PRO-PO-1160 SS → SDR-ST-PRO-A-1210, SDR-ST-MILS-1000 SS+116d | resources Electrical Engineer [456.05 h] → Electrical Engineer [471.26 h] |
| SDR-ST-PRO-PO-1160 | MEDIUM VOLTAGE CABLES DUCT BANKS | 2026-12-28 → 2026-10-22 (-67d) | 2027-01-14 → 2026-11-07 (-68d) | 15.2d → 69d | SDR-ST-PRO-A-1200 FF+80d, SDR-ST-PRO-PO-1140 FS+9d → SDR-ST-PRO-A-1200, SDR-ST-MILS-1000 SS+116d | resources Electrical Engineer [456.05 h] → Electrical Engineer [471.26 h] |
| SDR-ST-PRO-PO-1250 | SUB-STATION | 2027-03-25 → 2026-10-22 (-154d) | 2027-04-14 → 2026-11-07 (-158d) | 38.8d → 36d | SDR-ST-PRO-A-1220 FS+125d, SDR-ST-PRO-PO-1230 FS+7d → SDR-ST-PRO-A-1220, SDR-ST-MILS-1000 SS+151d | resources Electrical Engineer [456.05 h] → Electrical Engineer [471.26 h] |
| 2 | **Mechanical** | 2026-12-11 → 2026-10-12 (-60d) | 2026-12-30 → 2026-10-27 (-64d) |  |  |  |
| SDR-ST-PRO-PO-1190 | WASHOUT & AIR VALVE, GATE VALVE, BUTTERFLY VALVE | 2026-12-11 → 2026-10-12 (-60d) | 2026-12-30 → 2026-10-27 (-64d) | 9d → 60d | SDR-ST-PRO-A-1100 FS+96d, SDR-ST-PRO-PO-1180 SS+5d → SDR-ST-PRO-A-1100, SDR-ST-MILS-1000 SS+122d | resources Mechanical Engineer [456.05 h] → Mechanical Engineer [471.26 h] |
| 6 | **Delivery to Site** |  | 2027-06-08 → 2027-02-20 (-108d) |  |  |  |
| 2 | **Short Lead Items Delivery** |  | 2027-04-14 → 2027-01-09 (-95d) |  |  |  |
| 1 | **Civil** | 2026-10-05 → 2026-10-12 (+7d) | 2027-04-14 → 2027-01-09 (-95d) |  |  |  |
| SDR-ST-PRO-DL-1060 | Kerbstone | 2026-11-05 → 2026-10-12 (-24d) | 2027-01-04 → 2026-12-10 (-25d) | 31.8d → 3d | SDR-ST-PRO-PO-1060 FS+1d → SDR-ST-PRO-PO-1060 FF | resources SIC- Cost; Delivery Team [2736.29 h] → SIC- Cost; Delivery Team [2827.55 h] |
| SDR-ST-PRO-DL-1270 | Asphalt | 2026-12-28 → 2026-10-12 (-77d) | 2027-04-14 → 2027-01-09 (-95d) | 35.5d → 6d | SDR-ST-PRO-PO-1270 FS+1d → SDR-ST-PRO-PO-1270 FF | resources SIC- Cost; Delivery Team [2736.29 h] → SIC- Cost; Delivery Team [2827.55 h] |
| SDR-ST-PRO-DL-1260 | Steel Bars | 2026-10-05 → 2026-10-23 (+18d) | 2026-12-04 → 2026-12-21 (+17d) | 0.8d → 28d | SDR-ST-PRO-PO-1260 FF+28d → SDR-ST-PRO-PO-1260, SDR-ST-MILS-1000 SS+64d | resources SIC- Cost; Delivery Team [2736.29 h] → SIC- Cost; Delivery Team [2827.55 h] |
| SDR-ST-PRO-DL-1040 | Interlock | 2026-11-13 → 2026-11-02 (-11d) | 2027-01-04 → 2026-12-23 (-12d) | 31.8d → 41d |  | resources SIC- Cost; Delivery Team [2736.29 h] → SIC- Cost; Delivery Team [2827.55 h] |
| SDR-ST-PRO-DL-1030 | Waterproofing (Thermal & moisture Protection) | 2026-10-23 → 2026-11-04 (+12d) | 2026-12-22 → 2027-01-02 (+11d) | 44.8d → 31d |  | resources SIC- Cost; Delivery Team [2736.29 h] → SIC- Cost; Delivery Team [2827.55 h] |
| 3 | **Electrical** |  | 2027-04-13 → 2026-12-28 (-106d) |  |  |  |
| SDR-ST-PRO-DL-1100 | LOW VOLTAGE CABLES |  | 2026-11-17 → 2026-12-01 (+14d) | 79.7d → 119d |  | resources SIC- Cost; Delivery Team [2736.29 h] → SIC- Cost; Delivery Team [2827.55 h] |
| SDR-ST-PRO-DL-1010 | ROAD CROSSING DUCTS Ø110mm | 2026-09-28 → 2026-10-12 (+14d) | 2026-10-27 → 2026-11-09 (+13d) | 11.5d → 37.9d |  | resources SIC- Cost; Delivery Team [2736.29 h] → SIC- Cost; Delivery Team [2827.55 h] |
| SDR-ST-PRO-DL-1020 | Drawpits | 2026-10-09 → 2026-10-12 (+3d) | 2026-11-08 → 2026-11-10 (+2d) | 13.8d → 4d | SDR-ST-PRO-PO-1020 → SDR-ST-PRO-PO-1020 FF | resources SIC- Cost; Delivery Team [2736.29 h] → SIC- Cost; Delivery Team [2827.55 h] |
| SDR-ST-PRO-DL-1110 | STREET LIGHTING CABLES | 2026-12-16 → 2026-10-15 (-62d) | 2027-01-20 → 2026-11-18 (-63d) | 3.01d → 97d | SDR-ST-PRO-PO-1110 FS+2d → SDR-ST-PRO-PO-1110 FS+3d | resources SIC- Cost; Delivery Team [2736.29 h] → SIC- Cost; Delivery Team [2827.55 h] |
| SDR-ST-PRO-DL-1130 | LOW VOLTAGE DISTRIBUTION Panel | 2026-10-05 → 2026-10-15 (+10d) | 2026-11-14 → 2026-11-23 (+9d) | 69.3d → 131d |  | resources SIC- Cost; Delivery Team [2736.29 h] → SIC- Cost; Delivery Team [2827.55 h] |
| SDR-ST-PRO-DL-1070 | STREET LIGHTING FEEDER Panel | 2026-10-05 → 2026-10-19 (+14d) | 2026-11-14 → 2026-11-27 (+13d) | 68.8d → 31d |  | resources SIC- Cost; Delivery Team [2736.29 h] → SIC- Cost; Delivery Team [2827.55 h] |
| SDR-ST-PRO-DL-1200 | VOICE EVACUATION SYSTEM | 2027-01-13 → 2026-10-23 (-82d) | 2027-03-31 → 2026-12-21 (-100d) | 10d → 103d |  | resources SIC- Cost; Delivery Team [2736.29 h] → SIC- Cost; Delivery Team [2827.55 h] |
| SDR-ST-PRO-DL-1050 | CCTV :Pole mounted Filed Equipment cabinet | 2026-10-26 → 2026-10-30 (+4d) | 2026-12-25 → 2026-12-28 (+3d) | 41.8d → 96d | SDR-ST-PRO-PO-1050 FF → SDR-ST-PRO-PO-1050 | resources SIC- Cost; Delivery Team [2736.29 h] → SIC- Cost; Delivery Team [2827.55 h] |
| SDR-ST-PRO-DL-1230 | CCTV :5MP IP PoE Bullet Camera | 2027-01-27 → 2026-10-30 (-89d) | 2027-04-13 → 2026-12-28 (-106d) | 0.7d → 96d | SDR-ST-PRO-PO-1230 SS → SDR-ST-PRO-PO-1230 | resources SIC- Cost; Delivery Team [2736.29 h] → SIC- Cost; Delivery Team [2827.55 h] |
| 2 | **Mechanical** |  | 2027-01-22 → 2026-12-20 (-33d) |  |  |  |
| SDR-ST-PRO-DL-1080 | HDPE PIPES & FITTINGS |  |  |  |  | resources SIC- Cost; Delivery Team [2736.29 h] → SIC- Cost; Delivery Team [2827.55 h] |
| SDR-ST-PRO-DL-1000 | WARNING TAPE |  |  |  |  | resources SIC- Cost; Delivery Team [2736.29 h] → SIC- Cost; Delivery Team [2827.55 h] |
| SDR-ST-PRO-DL-1120 | CONCRETE PIPES AND FITTINGS |  |  |  |  | resources SIC- Cost; Delivery Team [2736.29 h] → SIC- Cost; Delivery Team [2827.55 h] |
| SDR-ST-PRO-DL-1090 | GI GOOSENECK & VENT | 2026-11-06 → 2026-10-23 (-14d) | 2027-01-03 → 2026-12-19 (-15d) | 32.8d → 105d |  | resources SIC- Cost; Delivery Team [2736.29 h] → SIC- Cost; Delivery Team [2827.55 h] |
| 5 | **Long Lead Items Delivery** | 2026-09-28 → 2026-10-12 (+14d) | 2027-06-08 → 2027-02-20 (-108d) |  |  |  |
| 1 | **Civil** | 2026-12-18 → 2026-11-09 (-39d) | 2027-06-05 → 2027-02-15 (-110d) |  |  |  |
| SDR-ST-PRO-DL-1240 | Canopy | 2027-04-01 → 2026-11-09 (-143d) | 2027-06-05 → 2027-01-07 (-149d) | 25.2d → 43d | SDR-ST-PRO-PO-1240 FS+5d → SDR-ST-PRO-PO-1240 FS+10d | resources SIC- Cost; Delivery Team [2736.29 h] → SIC- Cost; Delivery Team [2827.55 h] |
| SDR-ST-PRO-DL-1150 | Metal railing for platform | 2026-12-18 → 2026-11-11 (-37d) | 2027-04-11 → 2027-02-15 (-55d) | 15.1d → 47d | SDR-ST-PRO-PO-1150 FS+20d → SDR-ST-PRO-PO-1150, SDR-ST-MILS-1000 SS+152d | resources SIC- Cost; Delivery Team [2736.29 h] → SIC- Cost; Delivery Team [2827.55 h] |
| 3 | **Electrical** | 2026-09-28 → 2026-10-12 (+14d) | 2027-06-08 → 2027-02-20 (-108d) |  |  |  |
| SDR-ST-PRO-DL-1210 | LIGHTING POLES | 2026-09-28 → 2026-10-12 (+14d) | 2027-01-11 → 2027-01-24 (+13d) | 141.2d → 78d |  | resources SIC- Cost; Delivery Team [2736.29 h] → SIC- Cost; Delivery Team [2827.55 h] |
| SDR-ST-PRO-DL-1180 | Outdoor Lighting Fixtures | 2027-01-20 → 2026-10-28 (-84d) | 2027-04-27 → 2027-01-15 (-102d) | 49.5d → 70d | SDR-ST-PRO-PO-1180 FS+20d → SDR-ST-PRO-PO-1180, SDR-ST-MILS-1000 SS+165d | resources SIC- Cost; Delivery Team [2736.29 h] → SIC- Cost; Delivery Team [2827.55 h] |
| SDR-ST-PRO-DL-1220 | STREET LIGHTING LUMINAIRE | 2027-03-15 → 2026-10-28 (-138d) | 2027-06-08 → 2027-01-15 (-144d) | 0.5d → 31d | SDR-ST-PRO-PO-1210 FS+15d → SDR-ST-PRO-PO-1210, SDR-ST-MILS-1000 SS+162d | resources SIC- Cost; Delivery Team [2736.29 h] → SIC- Cost; Delivery Team [2827.55 h] |
| SDR-ST-PRO-DL-1170 | MEDIUM VOLTAGE CABLES | 2026-11-04 → 2026-11-07 (+3d) | 2027-02-24 → 2027-02-20 (-4d) | 105.7d → 24.2d | SDR-ST-PRO-PO-1170 FF → SDR-ST-PRO-PO-1170 | resources SIC- Cost; Delivery Team [2736.29 h] → SIC- Cost; Delivery Team [2827.55 h] |
| SDR-ST-PRO-DL-1160 | MEDIUM VOLTAGE CABLES DUCT BANKS | 2027-01-14 → 2026-11-08 (-67d) | 2027-05-21 → 2027-02-20 (-90d) | 21.5d → 80d |  | resources SIC- Cost; Delivery Team [2736.29 h] → SIC- Cost; Delivery Team [2827.55 h] |
| SDR-ST-PRO-DL-1250 | SUB-STATION | 2026-12-13 → 2026-11-08 (-35d) | 2027-04-14 → 2027-02-20 (-53d) | 55.8d → 42d | SDR-ST-PRO-PO-1250 FF → SDR-ST-PRO-PO-1250 | resources SIC- Cost; Delivery Team [2736.29 h] → SIC- Cost; Delivery Team [2827.55 h] |
| 2 | **Mechanical** | 2027-01-25 → 2026-10-16 (-101d) | 2027-05-12 → 2027-01-13 (-119d) |  |  |  |
| SDR-ST-PRO-DL-1190 | WASHOUT & AIR VALVE, GATE VALVE, BUTTERFLY VALVE | 2027-01-25 → 2026-10-16 (-101d) | 2027-05-12 → 2027-01-13 (-119d) | 12.5d → 70d | SDR-ST-PRO-PO-1190 FS+18d → SDR-ST-PRO-PO-1190 SS+4d | resources SIC- Cost; Delivery Team [2736.29 h] → SIC- Cost; Delivery Team [2827.55 h] |
| 4 | **Materials Staging Time** | 2026-09-28 → 2026-10-12 (+14d) | 2027-06-12 → 2027-02-25 (-107d) |  |  |  |
| 4 | **Short Lead Items Delivery** | 2026-09-28 → 2026-10-12 (+14d) | 2027-04-18 → 2027-01-09 (-99d) |  |  |  |
| 1 | **Civil** | 2026-12-04 → 2026-10-23 (-42d) | 2027-04-18 → 2027-01-09 (-99d) |  |  |  |
| SDR-ST-PRO-MS-1260 | Steel Bars | 2026-12-04 → 2026-10-23 (-42d) | 2026-12-08 → 2026-10-26 (-43d) | 0.8d → 28d | SDR-ST-PRO-DL-1260 → SDR-ST-PRO-DL-1260 SS |  |
| SDR-ST-PRO-MS-1100 | Kerbstone | 2027-01-04 → 2026-12-07 (-28d) | 2027-01-08 → 2026-12-10 (-29d) | 31.8d → 3d | SDR-ST-PRO-DL-1060 → SDR-ST-PRO-DL-1060 FF |  |
| SDR-ST-PRO-MS-1080 | Interlock | 2027-01-04 → 2026-12-24 (-11d) | 2027-01-08 → 2026-12-27 (-12d) | 31.8d → 41d |  |  |
| SDR-ST-PRO-MS-1070 | Waterproofing (Thermal & moisture Protection) | 2026-12-22 → 2027-01-03 (+12d) | 2026-12-26 → 2027-01-06 (+11d) | 44.8d → 31d |  |  |
| SDR-ST-PRO-MS-1270 | Asphalt | 2027-04-14 → 2027-01-06 (-98d) | 2027-04-18 → 2027-01-09 (-99d) | 35.5d → 6d | SDR-ST-PRO-DL-1270, SDR-ST-CON-P1-5570 → SDR-ST-PRO-DL-1270 FF |  |
| 3 | **Electrical** | 2026-10-23 → 2026-11-07 (+15d) | 2027-04-13 → 2027-01-01 (-102d) |  |  |  |
| SDR-ST-PRO-MS-1010 | Drawpits | 2026-11-08 → 2026-11-07 (-1d) | 2026-11-12 → 2026-11-10 (-2d) | 13.8d → 4d | SDR-ST-PRO-DL-1020 → SDR-ST-PRO-DL-1020 FF |  |
| SDR-ST-PRO-MS-1000 | ROAD CROSSING DUCTS Ø110mm | 2026-10-23 → 2026-11-10 (+18d) | 2026-10-27 → 2026-11-13 (+17d) | 11.5d → 37.9d | SDR-ST-PRO-DL-1010 FF → SDR-ST-PRO-DL-1010 |  |
| SDR-ST-PRO-MS-1030 | STREET LIGHTING CABLES | 2027-01-19 → 2026-11-19 (-61d) | 2027-01-23 → 2026-11-22 (-62d) | 3.01d → 97d | SDR-ST-PRO-DL-1110 FF+2.79d → SDR-ST-PRO-DL-1110 |  |
| SDR-ST-PRO-MS-1040 | LOW VOLTAGE DISTRIBUTION Panel | 2026-11-14 → 2026-11-24 (+10d) | 2026-11-18 → 2026-11-27 (+9d) | 69.3d → 131d |  |  |
| SDR-ST-PRO-MS-1020 | STREET LIGHTING FEEDER Panel | 2026-11-14 → 2026-11-28 (+14d) | 2026-11-18 → 2026-12-01 (+13d) | 68.8d → 31d |  |  |
| SDR-ST-PRO-MS-1120 | LOW VOLTAGE CABLES | 2026-11-18 → 2026-12-02 (+14d) | 2026-11-21 → 2026-12-05 (+14d) | 79.7d → 119d |  |  |

| ID | Task | Start | Finish | Duration | Complete | Total float | Predecessors | Other |
| --- | --- | --- | --- | --- | --- | --- | --- | --- |
| SDR-ST-PRO-MS-1150 | VOICE EVACUATION SYSTEM | 2027-03-31 → 2026-12-22 (-99d) | 2027-04-04 → 2026-12-25 (-100d) |  |  | 10d → 103d |  |  |
| SDR-ST-PRO-MS-1090 | CCTV :Pole mounted Filed Equipment cabinet | 2026-12-25 → 2026-12-29 (+4d) | 2026-12-29 → 2027-01-01 (+3d) |  |  | 41.8d → 96d |  |  |
| SDR-ST-PRO-MS-1160 | CCTV :5MP IP PoE Bullet Camera | 2027-04-10 → 2026-12-29 (-102d) | 2027-04-13 → 2027-01-01 (-102d) |  |  | 0.7d → 96d | SDR-ST-PRO-DL-1230 FF → SDR-ST-PRO-DL-1230 |  |
| 2 | **Mechanical** | 2026-09-28 → 2026-10-12 (+14d) | 2027-01-26 → 2026-12-23 (-34d) |  |  |  |  |  |
| SDR-ST-PRO-MS-1050 | WARNING TAPE | 2026-09-28 → 2026-10-12 (+14d) | 2026-10-01 → 2026-10-15 (+14d) |  |  | 116.7d → 79d |  |  |
| SDR-ST-PRO-MS-1110 | HDPE PIPES & FITTINGS | 2026-09-28 → 2026-10-12 (+14d) | 2026-10-01 → 2026-10-15 (+14d) |  |  | 130.7d → 62d |  |  |
| SDR-ST-PRO-MS-1130 | CONCRETE PIPES AND FITTINGS | 2026-09-28 → 2026-10-12 (+14d) | 2026-10-01 → 2026-10-15 (+14d) |  |  | 142.5d → 54d |  |  |
| SDR-ST-PRO-MS-1140 | MANHOLE, CATCH BASIN & VALVE BOX COVER | 2027-01-22 → 2026-12-17 (-36d) | 2027-01-26 → 2026-12-20 (-37d) |  |  | 25.6d → 2d | VALVE & BOX COVER → SDR-ST-PRO-DL-2000 FF |  |
| SDR-ST-PRO-MS-1060 | GI GOOSENECK & VENT | 2027-01-03 → 2026-12-20 (-14d) | 2027-01-07 → 2026-12-23 (-15d) |  |  | 32.8d → 105d |  |  |
| 5 | **Long Lead Items Delivery** | 2027-01-11 → 2026-10-12 (-91d) | 2027-06-12 → 2027-02-25 (-107d) |  |  |  |  |  |
| 1 | **Civil** | 2027-06-05 → 2027-01-08 (-148d) | 2027-06-09 → 2027-02-19 (-110d) |  |  |  |  |  |
| SDR-ST-PRO-MS-1240 | Canopy | 2027-06-05 → 2027-01-08 (-148d) | 2027-06-09 → 2027-01-11 (-149d) |  |  | 25.2d → 43d |  | was named Aluminum Cladding Panels |
| SDR-ST-PRO-MS-1200 | Metal railing for platform | 2027-04-11 → 2027-02-16 (-54d) | 2027-04-15 → 2027-02-19 (-55d) |  |  | 15.1d → 47d |  |  |
| 3 | **Electrical** | 2027-01-11 → 2026-10-12 (-91d) | 2027-06-12 → 2027-02-25 (-107d) |  |  |  |  |  |
| SDR-ST-PRO-MS-1230 | LIGHTING POLES | 2027-01-11 → 2026-10-12 (-91d) | 2027-01-15 → 2026-10-15 (-92d) |  |  | 141.2d → 78d | SDR-ST-PRO-DL-1210 → SDR-ST-PRO-DL-1210 SS |  |
| SDR-ST-PRO-MS-1210 | MEDIUM VOLTAGE CABLES DUCT BANKS | 2027-05-12 → 2026-12-11 (-152d) | 2027-05-21 → 2026-12-14 (-158d) |  |  | 21.5d → 47d | SDR-ST-PRO-DL-1160 FF, SDR-ST-CON-P1-5570 → SDR-ST-PRO-DL-1160 SS, SDR-ST-CON-P1-5570 |  |
| SDR-ST-PRO-MS-1180 | STREET LIGHTING LUMINAIRE | 2027-06-08 → 2027-01-16 (-143d) | 2027-06-12 → 2027-01-19 (-144d) |  |  | 0.5d → 31d |  |  |
| SDR-ST-PRO-MS-1170 | Outdoor Lighting Fixtures | 2027-05-05 → 2027-01-24 (-101d) | 2027-05-09 → 2027-01-27 (-102d) |  |  | 49.5d → 70d |  |  |
| SDR-ST-PRO-MS-1220 | MEDIUM VOLTAGE CABLES | 2027-02-17 → 2027-02-20 (+3d) | 2027-02-24 → 2027-02-25 (+1d) |  |  | 105.7d → 24.2d | SDR-ST-PRO-DL-1170 FF → SDR-ST-PRO-DL-1170 |  |
| SDR-ST-PRO-MS-1250 | SUB-STATION | 2027-04-10 → 2027-02-21 (-48d) | 2027-04-14 → 2027-02-25 (-48d) |  |  | 55.8d → 42d | SDR-ST-PRO-DL-1250 FF → SDR-ST-PRO-DL-1250 |  |
| 2 | **Mechanical** | 2027-04-11 → 2026-10-16 (-177d) | 2027-05-12 → 2026-10-19 (-205d) |  |  |  |  |  |
| SDR-ST-PRO-MS-1190 | WASHOUT & AIR VALVE, GATE VALVE, BUTTERFLY VALVE | 2027-05-08 → 2026-10-16 (-204d) | 2027-05-12 → 2026-10-19 (-205d) |  |  | 12.5d → 70d | SDR-ST-PRO-DL-1190 FF → SDR-ST-PRO-DL-1190 SS |  |
| 5 | **Construction** |  | 2027-08-06 → 2027-08-01 (-5d) |  |  |  |  |  |
| 1 | **Package-1** |  | 2027-08-02 → 2027-07-22 (-11d) |  |  |  |  |  |
| 8 | **ROAD - 01** |  | 2027-07-05 → 2027-05-26 (-40d) |  |  |  |  |  |
| 6 | **ROAD-01 From 0 to 470 m (3)** |  | 2027-07-01 → 2027-05-05 (-57d) |  |  |  |  |  |
| SDR-ST-CON-P1-1000 | Cleaning and removal of organic materials Part 1 |  |  |  |  |  |  | resources SIC- Cost [2153.77]; Excavator [200 h]; Excavator Operator [143.96 h]; Dumper Operator [143.96 h]; Dumper Truck [1040 h]; Grader [200 h]; Grader Operator [143.96 h]; Loader [200 h]; Loader Operator [143.96 h]; Un-Skilled Labor [143.96 h]; Supervisor [71.98 h]; Skilled Labor [143.96 h] → SIC- Cost [2153.77]; Excavator [200 h]; Excavator Operator [142.43 h]; Dumper Operator [142.43 h]; Dumper Truck [1040 h]; Grader [200 h]; Grader Operator [142.43 h]; Loader [200 h]; Loader Operator [142.43 h]; Un-Skilled Labor [7859.41 h]; Supervisor [71.21 h]; Skilled Labor [142.43 h] |
| SDR-ST-CON-P1-1050 | Cleaning and removal of organic materials Part 2 |  |  | 19.9d → 20d |  |  | SDR-ST-CON-P1-1000, SDR-ST-ENG-AP-1150, SDR-ST-ENG-AP-1160, SDR-ST-ENG-AP-1170, SDR-ST-ENG-AP-1180, SDR-ST-ENG-AP-1120, SDR-ST-ENG-AP-1090, SDR-ST-ENG-AP-1080, SDR-ST-ENG-AP-1030, SDR-ST-ENG-AP-1020, SDR-ST-ENG-AP-1010, SDR-ST-ENG-AP-1000, SDR-ST-ENG-AP-1070, SDR-ST-ENG-AP-1060, SDR-ST-ENG-AP-1050, SDR-ST-ENG-AP-1040, SDR-ST-ENG-AP-1230, SDR-ST-ENG-AP-1220, SDR-ST-ENG-AP-1210, SDR-ST-ENG-AP-1200, SDR-ST-ENG-AP-1190, SDR-ST-MILS-1020, SDR-ST-PREL-1060, SDR-ST-PREL-1070, SDR-ST-PREL-1010, SDR-ST-PREL-1080, SDR-ST-PREL-1020, SDR-ST-PREL-1090, SDR-ST-PREL-1030, SDR-ST-PRO-A-1100 → SDR-ST-CON-P1-1000, SDR-ST-MILS-1020, SDR-ST-PREL-1060, SDR-ST-PREL-1070, SDR-ST-PREL-1010, SDR-ST-PREL-1080, SDR-ST-PREL-1020, SDR-ST-PREL-1090, SDR-ST-PREL-1030, SDR-ST-PREL-1100, SDR-ST-PREL-1040 | resources SIC- Cost [2153.77]; Excavator [100 h]; Excavator Operator [143.96 h]; Dumper Operator [143.96 h]; Dumper Truck [520 h]; Grader [100 h]; Grader Operator [143.96 h]; Loader [100 h]; Loader Operator [143.96 h]; Un-Skilled Labor [8930.79 h]; Supervisor [71.98 h]; Skilled Labor [4184.36 h] → SIC- Cost [2153.77]; Excavator [100 h]; Excavator Operator [142.43 h]; Dumper Operator [142.43 h]; Dumper Truck [520 h]; Grader [100 h]; Grader Operator [142.43 h]; Loader [100 h]; Loader Operator [142.43 h]; Un-Skilled Labor [8835.74 h]; Supervisor [71.21 h]; Skilled Labor [4139.82 h] |
| SDR-ST-CON-P1-6060 | Cleaning and removal of organic materials Part 3 |  |  |  |  |  |  | resources SIC- Cost [2155.52]; Excavator [100 h]; Excavator Operator [100.61 h]; Grader [100 h]; Grader Operator [100.61 h]; Loader [100 h]; Loader Operator [100.61 h] → SIC- Cost [2155.52]; Excavator [100 h]; Excavator Operator [99.54 h]; Grader [100 h]; Grader Operator [99.54 h]; Loader [100 h]; Loader Operator [99.54 h] |
| SDR-ST-CON-P1-1090 | Surveying works Zone A |  |  | 13.7d → 14d |  |  |  | resources SIC- Cost [3877.83]; Un-Skilled Labor [115.17 h]; Surveyor [115.17 h]; Supervisor [57.58 h] → SIC- Cost [3877.83]; Un-Skilled Labor [113.94 h]; Surveyor [113.94 h]; Supervisor [56.97 h] |
| SDR-ST-CON-P1-1150 | Roadway Excavation and cuttings |  |  |  |  |  |  | resources SIC- Cost [15511.3]; Excavator [46 h]; Excavator Operator [143.96 h]; Dumper Operator [143.96 h]; Dumper Truck [2180 h]; Grader [200 h]; Grader Operator [143.96 h]; Loader [200 h]; Loader Operator [143.96 h]; Un-Skilled Labor [143.96 h]; Supervisor [71.98 h]; Skilled Labor [143.96 h] → SIC- Cost [15511.3]; Excavator [46 h]; Excavator Operator [142.43 h]; Dumper Operator [142.43 h]; Dumper Truck [2180 h]; Grader [200 h]; Grader Operator [142.43 h]; Loader [200 h]; Loader Operator [142.43 h]; Un-Skilled Labor [142.43 h]; Supervisor [71.21 h]; Skilled Labor [142.43 h] |
| SDR-ST-CON-P1-1200 | Embankments to the Road 1 Layer |  |  |  |  |  |  | resources SIC- Cost [252647]; Excavator [65 h]; Excavator Operator [143.96 h]; Dumper Operator [143.96 h]; Dumper Truck [200 h]; Grader [200 h]; Grader Operator [143.96 h]; Loader [200 h]; Loader Operator [143.96 h]; Un-Skilled Labor [143.96 h]; Supervisor [71.98 h]; Skilled Labor [143.96 h]; Water Tanker [200 h] → SIC- Cost [252647]; Excavator [65 h]; Excavator Operator [142.43 h]; Dumper Operator [142.43 h]; Dumper Truck [200 h]; Grader [200 h]; Grader Operator [142.43 h]; Loader [200 h]; Loader Operator [142.43 h]; Un-Skilled Labor [142.43 h]; Supervisor [71.21 h]; Skilled Labor [142.43 h]; Water Tanker [200 h] |
| SDR-ST-CON-P1-1470 | Embankments to the Road 2 Layer |  |  |  |  |  |  | resources SIC- Cost [252647]; Compactor [200 h]; Excavator [15 h]; Excavator Operator [143.96 h]; Dumper Operator [143.96 h]; Dumper Truck [200 h]; Grader [200 h]; Grader Operator [143.96 h]; Loader [50 h]; Loader Operator [143.96 h]; Un-Skilled Labor [47.99 h]; Supervisor [71.98 h]; Skilled Labor [47.99 h]; Water Tanker [200 h] → SIC- Cost [252647]; Compactor [200 h]; Excavator [15 h]; Excavator Operator [142.43 h]; Dumper Operator [142.43 h]; Dumper Truck [200 h]; Grader [200 h]; Grader Operator [142.43 h]; Loader [50 h]; Loader Operator [142.43 h]; Un-Skilled Labor [47.48 h]; Supervisor [71.21 h]; Skilled Labor [47.48 h]; Water Tanker [200 h] |
| SDR-ST-CON-P1-2140 | Embankments to the Road 3 Layer |  |  |  |  |  |  | resources SIC- Cost [252647]; Compactor [200 h]; Excavator [30 h]; Excavator Operator [143.96 h]; Dumper Operator [143.96 h]; Dumper Truck [1870 h]; Grader [70 h]; Grader Operator [143.96 h]; Loader [200 h]; Loader Operator [143.96 h]; Un-Skilled Labor [38.39 h]; Supervisor [35.99 h]; Skilled Labor [38.39 h]; Water Tanker [79.06 h] → SIC- Cost [252647]; Compactor [200 h]; Excavator [30 h]; Excavator Operator [142.43 h]; Dumper Operator [142.43 h]; Dumper Truck [1870 h]; Grader [70 h]; Grader Operator [142.43 h]; Loader [200 h]; Loader Operator [142.43 h]; Un-Skilled Labor [37.98 h]; Supervisor [35.61 h]; Skilled Labor [37.98 h]; Water Tanker [79.06 h] |
| SDR-ST-CON-P1-2710 | Embankments to the Road 4 Layer |  |  |  |  |  |  | resources SIC- Cost [252647]; Compactor [96.67 h]; Excavator [20 h]; Excavator Operator [143.96 h]; Dumper Operator [143.96 h]; Dumper Truck [96.67 h]; Grader [68.11 h]; Grader Operator [143.96 h]; Loader [395.65 h]; Loader Operator [143.96 h]; Un-Skilled Labor [38.39 h]; Supervisor [28.79 h]; Skilled Labor [38.39 h]; Water Tanker [200 h] → SIC- Cost [252647]; Compactor [96.67 h]; Excavator [20 h]; Excavator Operator [142.43 h]; Dumper Operator [142.43 h]; Dumper Truck [96.67 h]; Grader [68.11 h]; Grader Operator [142.43 h]; Loader [395.65 h]; Loader Operator [142.43 h]; Un-Skilled Labor [37.98 h]; Supervisor [28.49 h]; Skilled Labor [37.98 h]; Water Tanker [200 h] |
| 11 | **Subgrade** |  | 2026-12-26 → 2026-09-30 (-87d) |  |  |  |  |  |
| SDR-ST-CON-P1-3260 | Subgrade layer works |  | 2026-12-26 → 2026-09-30 A (-87d) | 14.2d → 14d | 50% → 100% | 0.6d → none | SDR-ST-CON-P1-2710, SDR-ST-CON-P3-1040, SDR-ST-PRO-MS-1260 → SDR-ST-CON-P1-2710 | resources SIC- Cost [144749]; Compactor [50 h]; Excavator [15 h]; Excavator Operator [143.96 h]; Dumper Operator [143.96 h]; Dumper Truck [50 h]; Grader [80 h]; Grader Operator [143.96 h]; Loader [50 h]; Loader Operator [143.96 h]; Un-Skilled Labor [38.39 h]; Supervisor [28.79 h]; Skilled Labor [38.39 h]; Water Tanker [40 h]; Water Tanker Operator [38.39 h] → SIC- Cost [144749]; Compactor [50 h]; Excavator [15 h]; Excavator Operator [142.43 h]; Dumper Operator [142.43 h]; Dumper Truck [50 h]; Grader [80 h]; Grader Operator [142.43 h]; Loader [50 h]; Loader Operator [142.43 h]; Un-Skilled Labor [37.98 h]; Supervisor [28.49 h]; Skilled Labor [37.98 h]; Water Tanker [40 h]; Water Tanker Operator [37.98 h] |
| 2 | **Base Course** | 2026-12-26 → 2026-10-03 (-84d) | 2027-01-10 → 2026-10-11 (-91d) |  |  |  |  |  |
| SDR-ST-CON-P1-3850 | Aggregate base course layer | 2026-12-26 → 2026-10-03 A (-84d) | 2027-01-10 → 2026-10-11 A (-91d) |  | 0% → 100% | 0.6d → none |  | resources SIC- Cost [174309]; Compactor [61.66 h]; Dumper Operator [136.76 h]; Dumper Truck [63.25 h]; Grader [100 h]; Grader Operator [136.76 h]; Loader [105.57 h]; Loader Operator [136.76 h]; Un-Skilled Labor [136.76 h]; Supervisor [28.79 h]; Skilled Labor [136.76 h]; Water Tanker [78.5 h]; Water Tanker Operator [136.76 h] → SIC- Cost [174309]; Compactor [61.66 h]; Dumper Operator [135.31 h]; Dumper Truck [63.25 h]; Grader [100 h]; Grader Operator [135.31 h]; Loader [105.57 h]; Loader Operator [135.31 h]; Un-Skilled Labor [135.31 h]; Supervisor [28.49 h]; Skilled Labor [135.31 h]; Water Tanker [78.5 h]; Water Tanker Operator [135.31 h] |
| 3 | **Asphalt Works** | 2027-01-10 → 2026-10-11 (-91d) | 2027-02-24 → 2027-02-09 (-15d) |  |  |  |  |  |
| 1 | **Bituminous base course** | 2027-01-10 → 2026-10-11 (-91d) | 2027-01-21 → 2027-01-13 (-8d) |  |  |  |  |  |
| SDR-ST-CON-P1-4410 | Bituminous base course (Grading I - Class A 1st Layer with MC-01 | 2027-01-10 → 2026-10-11 A (-91d) | 2027-01-17 → 2026-10-18 (-91d) |  | 0% → 50% | 0.6d → 76d |  | was named Bituminous base course (Grading I - Class A 1st Layer with RC-01; resources SIC- Cost [518809]; Compactor [50 h]; Dumper Operator [129.56 h]; Dumper Truck [50 h]; Supervisor [28.79 h]; Sweeper Machine [30 h]; Sweeper Machine Operator [129.56 h]; Pneumatic Tire Roller [288.26 h]; Pneumatic Roller Operator [129.56 h]; Asphalt Paver [30 h]; Asphalt Paver Operator [129.56 h] → SIC- Cost [518809]; Compactor [50 h]; Dumper Operator [128.18 h]; Dumper Truck [50 h]; Supervisor [28.49 h]; Sweeper Machine [30 h]; Sweeper Machine Operator [128.18 h]; Pneumatic Tire Roller [288.26 h]; Pneumatic Roller Operator [128.18 h]; Asphalt Paver [30 h]; Asphalt Paver Operator [128.18 h] |
| SDR-ST-CON-P1-4770 | Bituminous base course (Grading I - Class A 2nd layer with RC-02 | 2027-01-17 → 2027-01-10 (-7d) | 2027-01-21 → 2027-01-13 (-8d) |  |  | 0.6d → 5d | SDR-ST-CON-P1-4410 → SDR-ST-CON-P1-4410, SDR-ST-PRO-MS-1270 | resources SIC- Cost [518809]; Compactor [50 h]; Dumper Operator [129.56 h]; Dumper Truck [50 h]; Supervisor [28.79 h]; Sweeper Machine [30 h]; Sweeper Machine Operator [849.36 h]; Pneumatic Tire Roller [30 h]; Pneumatic Roller Operator [129.56 h]; Asphalt Paver [30 h]; Asphalt Paver Operator [129.56 h] → SIC- Cost [518809]; Compactor [50 h]; Dumper Operator [128.18 h]; Dumper Truck [50 h]; Supervisor [28.49 h]; Sweeper Machine [30 h]; Sweeper Machine Operator [840.32 h]; Pneumatic Tire Roller [30 h]; Pneumatic Roller Operator [128.18 h]; Asphalt Paver [30 h]; Asphalt Paver Operator [128.18 h] |
| 2 | **Bituminous concrete wearing course** | 2027-01-24 → 2027-01-17 (-7d) | 2027-02-24 → 2027-02-09 (-15d) |  |  |  |  |  |
| SDR-ST-CON-P1-5110 | Bituminous concrete wearing course, (Grading I - Class A), including tack coat (RC2) | 2027-01-24 → 2027-01-17 (-7d) | 2027-02-24 → 2027-02-09 (-15d) |  |  | 24.6d → 5d | SDR-ST-CON-P1-4770 FS+2d → SDR-ST-CON-P1-4770 FS+2d, SDR-ST-PRO-MS-1270 | resources SIC- Cost [366211]; Compactor [80 h]; Dumper Operator [115.17 h]; Dumper Truck [230 h]; Supervisor [28.79 h]; Sweeper Machine [200 h]; Sweeper Machine Operator [115.17 h]; Pneumatic Tire Roller [140 h]; Pneumatic Roller Operator [115.17 h]; Asphalt Paver [475 h]; Asphalt Paver Operator [115.17 h] → SIC- Cost [366211]; Compactor [80 h]; Dumper Operator [113.94 h]; Dumper Truck [230 h]; Supervisor [28.49 h]; Sweeper Machine [200 h]; Sweeper Machine Operator [113.94 h]; Pneumatic Tire Roller [140 h]; Pneumatic Roller Operator [113.94 h]; Asphalt Paver [475 h]; Asphalt Paver Operator [113.94 h] |
| 4 | **Kerbstone Installation** | 2026-12-26 → 2026-10-12 (-75d) | 2027-03-17 → 2027-02-21 (-24d) |  |  |  |  |  |
| SDR-ST-CON-P1-3860 | Precast Concrete Curbstone, Type A2 | 2026-12-26 → 2026-10-12 (-75d) | 2027-01-19 → 2026-11-04 (-76d) |  |  | 29.6d → 69d |  | resources SIC- Cost [144150]; Un-Skilled Labor [129.56 h]; Supervisor [129.56 h]; Skilled Labor [129.56 h] → SIC- Cost [144150]; Un-Skilled Labor [128.18 h]; Supervisor [128.18 h]; Skilled Labor [128.18 h] |
| SDR-ST-CON-P1-4530 | Precast Concrete Curbstone, Type D | 2027-02-24 → 2027-02-10 (-14d) | 2027-03-17 → 2027-02-21 (-24d) |  |  | 24.6d → 5d |  | resources SIC- Cost [70526]; Un-Skilled Labor [40.4 h]; Supervisor [40.4 h]; Skilled Labor [40.4 h] → SIC- Cost [70526]; Un-Skilled Labor [39.97 h]; Supervisor [39.97 h]; Skilled Labor [39.97 h] |
| 5 | **Interlock Installation** | 2027-03-17 → 2027-02-24 (-21d) | 2027-05-03 → 2027-04-15 (-18d) |  |  |  |  |  |
| SDR-ST-CON-P1-4100 | Interlock Installation Part 1 | 2027-03-17 → 2027-02-24 (-21d) | 2027-04-10 → 2027-03-23 (-18d) |  |  | 24.6d → 5d | SDR-ST-CON-P1-3860, SDR-ST-CON-P1-2710, SDR-ST-ENG-AP-1080, SDR-ST-CON-P1-4530 → SDR-ST-CON-P1-3860, SDR-ST-CON-P1-2710, SDR-ST-CON-P1-4530 FS+1d, SDR-ST-PRO-MS-1080 | resources SIC- Cost [213105]; Un-Skilled Labor [143.96 h]; Supervisor [143.96 h]; Skilled Labor [143.96 h] → SIC- Cost [213105]; Un-Skilled Labor [142.43 h]; Supervisor [142.43 h]; Skilled Labor [142.43 h] |
| SDR-ST-CON-P1-4620 | Interlock Installation Part 2 | 2027-04-10 → 2027-03-24 (-17d) | 2027-05-03 → 2027-04-15 (-18d) |  |  | 24.6d → 5d |  | resources SIC- Cost [213105]; Un-Skilled Labor [143.96 h]; Supervisor [143.96 h]; Skilled Labor [143.96 h] → SIC- Cost [213105]; Un-Skilled Labor [142.43 h]; Supervisor [142.43 h]; Skilled Labor [142.43 h] |
| 6 | **Road Marking** | 2027-06-12 → 2027-04-17 (-56d) | 2027-06-27 → 2027-05-04 (-54d) |  |  |  |  |  |
| SDR-ST-CON-P1-5210 | Retroreflective Thermoplastic White Traffic lines | 2027-06-12 → 2027-04-17 (-56d) | 2027-06-16 → 2027-04-20 (-57d) |  |  | 0.5d → 6d | SDR-ST-CON-P1-5110 SS, SDR-ST-CON-P1-2710, SDR-ST-ENG-AP-1080, SDR-ST-CON-P1-4620, SDR-ST-TC-1030, SDR-ST-PRO-MS-1190, SDR-ST-PRO-MS-1180 → SDR-ST-CON-P1-5110 SS, SDR-ST-CON-P1-2710, SDR-ST-CON-P1-4620, SDR-ST-TC-1030 | resources SIC- Cost [19365.7]; Supervisor [7.2 h]; Painter [28.79 h]; Painter Helper [28.79 h] → SIC- Cost [19365.7]; Supervisor [7.12 h]; Painter [28.49 h]; Painter Helper [28.49 h] |
| SDR-ST-CON-P1-5310 | Retroreflective Thermoplastic Yellow, Traffic lines | 2027-06-16 → 2027-04-21 (-56d) | 2027-06-21 → 2027-04-25 (-57d) |  |  | 0.5d → 6d | SDR-ST-CON-P1-5210, SDR-ST-PRO-MS-1190 → SDR-ST-CON-P1-5210 | resources SIC- Cost [13725.2]; Supervisor [7.2 h]; Painter [28.79 h]; Painter Helper [28.79 h] → SIC- Cost [13725.2]; Supervisor [7.12 h]; Painter [28.49 h]; Painter Helper [28.49 h] |
| SDR-ST-CON-P1-5470 | Ceramic raised pavement markers | 2027-06-21 → 2027-04-26 (-56d) | 2027-06-26 → 2027-04-29 (-58d) |  |  | 0.5d → 6d |  | resources SIC- Cost [733.26]; Un-Skilled Labor [28.79 h]; Supervisor [7.2 h]; Skilled Labor [28.79 h] → SIC- Cost [733.26]; Un-Skilled Labor [28.49 h]; Supervisor [7.12 h]; Skilled Labor [28.49 h] |
| SDR-ST-CON-P1-5620 | Rumble strip | 2027-06-22 → 2027-05-01 (-52d) | 2027-06-27 → 2027-05-04 (-54d) |  |  | 0.5d → 6d | SDR-ST-CON-P1-5470 SS+1d → SDR-ST-CON-P1-5470 | resources SIC- Cost [928.33]; Un-Skilled Labor [28.79 h]; Supervisor [7.2 h]; Skilled Labor [28.79 h] → SIC- Cost [928.33]; Un-Skilled Labor [28.49 h]; Supervisor [7.12 h]; Skilled Labor [28.49 h] |
| 7 | **Traffic Signage** | 2027-06-12 → 2027-04-17 (-56d) | 2027-06-26 → 2027-04-29 (-58d) |  |  |  |  |  |
| SDR-ST-CON-P1-5220 | Traffic signs, ground mounted, 1 Sheet Alumenium, (breakaway) Single post, with all accessories | 2027-06-12 → 2027-04-17 (-56d) | 2027-06-16 → 2027-04-20 (-57d) |  |  | 5.5d → 18d | SDR-ST-CON-P1-5210 SS, SDR-ST-ENG-AP-1080 → SDR-ST-CON-P1-5210 SS | resources SIC- Cost [8095.27]; Un-Skilled Labor [28.79 h]; Supervisor [7.2 h]; Skilled Labor [28.79 h] → SIC- Cost [8095.27]; Un-Skilled Labor [28.49 h]; Supervisor [7.12 h]; Skilled Labor [28.49 h] |
| SDR-ST-CON-P1-5320 | Traffic signs, ground mounted, 1 Sheet Aluminum, (breakaway) Double post, with all accessories | 2027-06-16 → 2027-04-21 (-56d) | 2027-06-21 → 2027-04-25 (-57d) |  |  | 5.5d → 18d |  | resources SIC- Cost [8446.63]; Un-Skilled Labor [28.79 h]; Supervisor [7.2 h]; Skilled Labor [28.79 h] → SIC- Cost [8446.63]; Un-Skilled Labor [28.49 h]; Supervisor [7.12 h]; Skilled Labor [28.49 h] |
| SDR-ST-CON-P1-5480 | Traffic signs, ground mounted, 2 Sheet Aluminum, (breakaway) Single post, with all accessories | 2027-06-21 → 2027-04-26 (-56d) | 2027-06-26 → 2027-04-29 (-58d) |  |  | 5.5d → 18d |  | resources SIC- Cost [3519.42]; Un-Skilled Labor [28.79 h]; Supervisor [7.2 h]; Skilled Labor [28.79 h] → SIC- Cost [3519.42]; Un-Skilled Labor [28.49 h]; Supervisor [7.12 h]; Skilled Labor [28.49 h] |
| 8 | **Speed table** | 2027-06-26 → 2027-05-01 (-56d) | 2027-07-01 → 2027-05-05 (-57d) |  |  |  |  |  |
| SDR-ST-CON-P1-5490 | Interlock speed table including interlock, flush kerb and marking | 2027-06-26 → 2027-05-01 (-56d) | 2027-07-01 → 2027-05-05 (-57d) |  |  | 5.5d → 18d |  | resources SIC- Cost [15282.2]; Un-Skilled Labor [57.58 h]; Supervisor [14.4 h]; Skilled Labor [57.58 h] → SIC- Cost [15282.2]; Un-Skilled Labor [56.97 h]; Supervisor [14.24 h]; Skilled Labor [56.97 h] |
| 7 | **ROAD-01 From 470 to 1125 m (6)** |  | 2027-07-05 → 2027-05-26 (-40d) |  |  |  |  |  |
| SDR-ST-CON-P1-1010 | Cleaning and removal of organic materials in Zone A |  |  |  |  |  | SDR-ST-ENG-AP-1080, SDR-ST-CON-P1-1050 → SDR-ST-CON-P1-1050 SS | resources SIC- Cost [6463.05]; Excavator [200 h]; Excavator Operator [143.96 h]; Dumper Operator [143.96 h]; Dumper Truck [886.3 h]; Grader [200 h]; Grader Operator [143.96 h]; Loader [200 h]; Loader Operator [143.96 h]; Un-Skilled Labor [143.96 h]; Supervisor [143.96 h]; Skilled Labor [143.96 h] → SIC- Cost [6463.05]; Excavator [200 h]; Excavator Operator [142.43 h]; Dumper Operator [142.43 h]; Dumper Truck [886.3 h]; Grader [200 h]; Grader Operator [142.43 h]; Loader [200 h]; Loader Operator [142.43 h]; Un-Skilled Labor [142.43 h]; Supervisor [142.43 h]; Skilled Labor [142.43 h] |
| SDR-ST-CON-P1-1070 | Surveying works Zone A |  |  |  |  |  |  | resources SIC- Cost [3877.83]; Un-Skilled Labor [115.17 h]; Surveyor [115.17 h]; Supervisor [35.99 h] → SIC- Cost [3877.83]; Un-Skilled Labor [113.94 h]; Surveyor [113.94 h]; Supervisor [35.61 h] |
| SDR-ST-CON-P1-1120 | Roadway Excavation and cuttings |  |  |  |  |  |  | resources SIC- Cost [15511.3]; Excavator [111.43 h]; Excavator Operator [143.96 h]; Dumper Operator [143.96 h]; Dumper Truck [200 h]; Grader [200 h]; Grader Operator [143.96 h]; Loader [200 h]; Loader Operator [143.96 h]; Un-Skilled Labor [143.96 h]; Supervisor [143.96 h]; Skilled Labor [6381.53 h] → SIC- Cost [15511.3]; Excavator [111.43 h]; Excavator Operator [142.43 h]; Dumper Operator [142.43 h]; Dumper Truck [200 h]; Grader [200 h]; Grader Operator [142.43 h]; Loader [200 h]; Loader Operator [142.43 h]; Un-Skilled Labor [142.43 h]; Supervisor [142.43 h]; Skilled Labor [6313.6 h] |
| SDR-ST-CON-P1-1190 | Embankments to the Road 1 Layer |  |  |  |  |  |  | resources SIC- Cost [252647]; Compactor [200 h]; Excavator [65 h]; Excavator Operator [143.96 h]; Dumper Operator [143.96 h]; Dumper Truck [200 h]; Grader [200 h]; Grader Operator [143.96 h]; Loader [200 h]; Loader Operator [143.96 h]; Un-Skilled Labor [143.96 h]; Supervisor [28.79 h]; Skilled Labor [143.96 h]; Water Tanker [200 h] → SIC- Cost [252647]; Compactor [200 h]; Excavator [65 h]; Excavator Operator [142.43 h]; Dumper Operator [142.43 h]; Dumper Truck [200 h]; Grader [200 h]; Grader Operator [142.43 h]; Loader [200 h]; Loader Operator [142.43 h]; Un-Skilled Labor [142.43 h]; Supervisor [28.49 h]; Skilled Labor [142.43 h]; Water Tanker [200 h] |
| SDR-ST-CON-P1-1400 | Embankments to the Road 2 Layer |  |  |  |  |  |  | resources SIC- Cost [252647]; Compactor [200 h]; Excavator [15 h]; Excavator Operator [143.96 h]; Dumper Operator [143.96 h]; Dumper Truck [200 h]; Grader [200 h]; Grader Operator [143.96 h]; Loader [50 h]; Loader Operator [143.96 h]; Un-Skilled Labor [38.39 h]; Supervisor [28.79 h]; Skilled Labor [38.39 h] → SIC- Cost [252647]; Compactor [200 h]; Excavator [15 h]; Excavator Operator [142.43 h]; Dumper Operator [142.43 h]; Dumper Truck [200 h]; Grader [200 h]; Grader Operator [142.43 h]; Loader [50 h]; Loader Operator [142.43 h]; Un-Skilled Labor [37.98 h]; Supervisor [28.49 h]; Skilled Labor [37.98 h] |
| SDR-ST-CON-P1-2090 | Embankments to the Road 3 Layer |  |  |  |  |  |  | resources SIC- Cost [252647]; Compactor [50 h]; Excavator [30 h]; Excavator Operator [143.96 h]; Dumper Operator [143.96 h]; Dumper Truck [2150.77 h]; Grader [100 h]; Grader Operator [143.96 h]; Loader [100.77 h]; Loader Operator [143.96 h]; Un-Skilled Labor [38.39 h]; Supervisor [38.39 h]; Skilled Labor [38.39 h]; Water Tanker [100 h] → SIC- Cost [252647]; Compactor [50 h]; Excavator [30 h]; Excavator Operator [142.43 h]; Dumper Operator [142.43 h]; Dumper Truck [2150.77 h]; Grader [100 h]; Grader Operator [142.43 h]; Loader [100.77 h]; Loader Operator [142.43 h]; Un-Skilled Labor [37.98 h]; Supervisor [37.98 h]; Skilled Labor [37.98 h]; Water Tanker [100 h] |
| SDR-ST-CON-P1-2570 | Embankments to the Road 4 Layer |  |  |  |  |  |  | resources SIC- Cost [252647]; Compactor [50 h]; Excavator [15 h]; Excavator Operator [143.96 h]; Dumper Operator [143.96 h]; Dumper Truck [50 h]; Grader [4813.44 h]; Grader Operator [143.96 h]; Loader [50 h]; Loader Operator [143.96 h]; Un-Skilled Labor [38.39 h]; Supervisor [28.79 h]; Skilled Labor [38.39 h]; Water Tanker [40 h] → SIC- Cost [252647]; Compactor [50 h]; Excavator [15 h]; Excavator Operator [142.43 h]; Dumper Operator [142.43 h]; Dumper Truck [50 h]; Grader [4813.44 h]; Grader Operator [142.43 h]; Loader [50 h]; Loader Operator [142.43 h]; Un-Skilled Labor [37.98 h]; Supervisor [28.49 h]; Skilled Labor [37.98 h]; Water Tanker [40 h] |

| ID | Task | Start | Finish | Duration | Complete | Total float | Predecessors | Other |
| --- | --- | --- | --- | --- | --- | --- | --- | --- |
| 11 | **Subgrade** |  | 2026-10-10 → 2026-10-07 (-3d) |  |  |  |  |  |
| SDR-ST-CON-P1-3140 | Subgrade layer works |  | 2026-10-10 → 2026-10-07 A (-3d) |  | 50% → 100% | 89.5d → none |  | resources SIC- Cost [144749]; Compactor [200 h]; Excavator [30 h]; Excavator Operator [143.96 h]; Dumper Operator [143.96 h]; Dumper Truck [101.16 h]; Grader [200 h]; Grader Operator [143.96 h]; Loader [104.27 h]; Loader Operator [143.96 h]; Un-Skilled Labor [38.39 h]; Supervisor [38.39 h]; Skilled Labor [38.39 h]; Water Tanker [100 h]; Water Tanker Operator [95.97 h] → SIC- Cost [144749]; Compactor [200 h]; Excavator [30 h]; Excavator Operator [142.43 h]; Dumper Operator [142.43 h]; Dumper Truck [101.16 h]; Grader [200 h]; Grader Operator [142.43 h]; Loader [104.27 h]; Loader Operator [142.43 h]; Un-Skilled Labor [37.98 h]; Supervisor [37.98 h]; Skilled Labor [37.98 h]; Water Tanker [100 h]; Water Tanker Operator [94.95 h] |
| 2 | **Base Course** | 2026-10-11 → 2026-10-08 (-3d) | 2026-10-21 → 2026-10-22 (+1d) |  |  |  |  |  |
| SDR-ST-CON-P1-3720 | Aggregate base course layer | 2026-10-11 → 2026-10-08 A (-3d) | 2026-10-21 → 2026-10-22 (+1d) |  | 0% → 50% | 89.5d → 73d |  | resources SIC- Cost [174309]; Compactor [50 h]; Dumper Operator [136.76 h]; Dumper Truck [5969.32 h]; Grader [80 h]; Grader Operator [136.76 h]; Loader [50 h]; Loader Operator [136.76 h]; Un-Skilled Labor [38.39 h]; Supervisor [28.79 h]; Skilled Labor [38.39 h]; Water Tanker [300 h]; Water Tanker Operator [95.97 h] → SIC- Cost [174309]; Compactor [50 h]; Dumper Operator [135.31 h]; Dumper Truck [5969.32 h]; Grader [80 h]; Grader Operator [135.31 h]; Loader [50 h]; Loader Operator [135.31 h]; Un-Skilled Labor [37.98 h]; Supervisor [28.49 h]; Skilled Labor [37.98 h]; Water Tanker [300 h]; Water Tanker Operator [94.95 h] |
| 3 | **Asphalt Works** | 2026-10-22 → 2026-10-24 (+2d) | 2026-12-01 → 2027-02-11 (+72d) |  |  |  |  |  |
| 1 | **Bituminous base course** | 2026-10-22 → 2026-10-24 (+2d) | 2026-11-03 → 2027-01-14 (+72d) |  |  |  |  |  |
| SDR-ST-CON-P1-4430 | Bituminous base course (Grading I - Class A 1st Layer with MC-01 | 2026-10-22 → 2026-10-24 (+2d) | 2026-10-28 → 2026-10-29 (+1d) |  |  | 89.5d → 73d |  | was named Bituminous base course (Grading I - Class A 1st Layer with RC-01; resources SIC- Cost [518809]; Compactor [56 h]; Dumper Operator [129.56 h]; Dumper Truck [51.48 h]; Supervisor [28.79 h]; Sweeper Machine [50 h]; Sweeper Machine Operator [129.56 h]; Pneumatic Tire Roller [30 h]; Pneumatic Roller Operator [129.56 h]; Asphalt Paver [550 h]; Asphalt Paver Operator [129.56 h] → SIC- Cost [518809]; Compactor [56 h]; Dumper Operator [128.18 h]; Dumper Truck [51.48 h]; Supervisor [28.49 h]; Sweeper Machine [50 h]; Sweeper Machine Operator [128.18 h]; Pneumatic Tire Roller [30 h]; Pneumatic Roller Operator [128.18 h]; Asphalt Paver [550 h]; Asphalt Paver Operator [128.18 h] |
| SDR-ST-CON-P1-4730 | Bituminous base course (Grading I - Class A 2nd layer with RC-02 | 2026-10-29 → 2027-01-10 (+73d) | 2026-11-03 → 2027-01-14 (+72d) |  |  | 89.5d → 12d | SDR-ST-CON-P1-4430 → SDR-ST-CON-P1-4430, SDR-ST-PRO-MS-1270 | resources SIC- Cost [518809]; Compactor [50 h]; Dumper Operator [129.56 h]; Dumper Truck [50 h]; Supervisor [28.79 h]; Sweeper Machine [30 h]; Sweeper Machine Operator [129.56 h]; Pneumatic Tire Roller [30 h]; Pneumatic Roller Operator [129.56 h]; Asphalt Paver [30 h]; Asphalt Paver Operator [129.56 h] → SIC- Cost [518809]; Compactor [50 h]; Dumper Operator [128.18 h]; Dumper Truck [50 h]; Supervisor [28.49 h]; Sweeper Machine [30 h]; Sweeper Machine Operator [128.18 h]; Pneumatic Tire Roller [30 h]; Pneumatic Roller Operator [128.18 h]; Asphalt Paver [30 h]; Asphalt Paver Operator [128.18 h] |
| 2 | **Bituminous concrete wearing course** | 2026-11-08 → 2027-01-19 (+72d) | 2026-12-01 → 2027-02-11 (+72d) |  |  |  |  |  |
| SDR-ST-CON-P1-5040 | Bituminous concrete wearing course, (Grading I - Class A), including tack coat (RC2) | 2026-11-08 → 2027-01-19 (+72d) | 2026-12-01 → 2027-02-11 (+72d) |  |  | 89.5d → 12d | SDR-ST-CON-P1-4730 FS+3d → SDR-ST-CON-P1-4730 FS+3d, SDR-ST-PRO-MS-1270 | resources SIC- Cost [365045]; Compactor [50 h]; Dumper Operator [100.77 h]; Dumper Truck [100 h]; Supervisor [35.99 h]; Sweeper Machine [30 h]; Sweeper Machine Operator [100.77 h]; Pneumatic Tire Roller [260 h]; Pneumatic Roller Operator [100.77 h]; Asphalt Paver [30 h]; Asphalt Paver Operator [100.77 h] → SIC- Cost [365045]; Compactor [50 h]; Dumper Operator [99.7 h]; Dumper Truck [100 h]; Supervisor [35.61 h]; Sweeper Machine [30 h]; Sweeper Machine Operator [99.7 h]; Pneumatic Tire Roller [260 h]; Pneumatic Roller Operator [99.7 h]; Asphalt Paver [30 h]; Asphalt Paver Operator [99.7 h] |
| 4 | **Kerbstone Installation** | 2026-10-11 → 2026-10-12 (+1d) | 2027-02-14 → 2026-12-01 (-75d) |  |  |  |  |  |
| SDR-ST-CON-P1-3730 | Precast Concrete Curbstone, Type A2 | 2026-10-11 → 2026-10-12 (+1d) | 2026-11-02 → 2026-11-03 (+1d) |  |  | 91.8d → 66d |  | resources SIC- Cost [144150]; Un-Skilled Labor [38.39 h]; Supervisor [28.79 h]; Skilled Labor [38.39 h] → SIC- Cost [144150]; Un-Skilled Labor [37.98 h]; Supervisor [28.49 h]; Skilled Labor [37.98 h] |
| SDR-ST-CON-P1-4480 | Precast Concrete Curbstone, Type D | 2027-01-19 → 2026-11-09 (-71d) | 2027-02-14 → 2026-12-01 (-75d) |  |  | 29.6d → 66d |  | resources SIC- Cost [70526]; Un-Skilled Labor [38.39 h]; Supervisor [28.79 h]; Skilled Labor [38.39 h] → SIC- Cost [70526]; Un-Skilled Labor [4796.79 h]; Supervisor [28.49 h]; Skilled Labor [4796.79 h] |
| 5 | **Interlock Installation** | 2027-02-14 → 2026-12-28 (-48d) | 2027-04-15 → 2027-03-07 (-39d) |  |  |  |  |  |
| SDR-ST-CON-P1-3890 | Interlock Installation Part 1 | 2027-02-14 → 2026-12-28 (-48d) | 2027-03-23 → 2027-01-19 (-63d) |  |  | 29.6d → 44d | SDR-ST-ENG-AP-1080, SDR-ST-CON-P1-4480 → SDR-ST-CON-P1-4480, SDR-ST-PRO-MS-1080 | resources SIC- Cost [213105]; Un-Skilled Labor [38.39 h]; Supervisor [28.79 h]; Skilled Labor [38.39 h] → SIC- Cost [213105]; Un-Skilled Labor [37.98 h]; Supervisor [28.49 h]; Skilled Labor [37.98 h] |
| SDR-ST-CON-P1-4490 | Interlock Installation Part 2 | 2027-03-23 → 2027-02-11 (-40d) | 2027-04-15 → 2027-03-07 (-39d) |  |  | 29.6d → 25d |  | resources SIC- Cost [213105]; Un-Skilled Labor [143.96 h]; Supervisor [28.79 h]; Skilled Labor [143.96 h] → SIC- Cost [213105]; Un-Skilled Labor [142.43 h]; Supervisor [28.49 h]; Skilled Labor [142.43 h] |
| 6 | **Road Marking** | 2027-04-15 → 2027-03-08 (-38d) | 2027-05-23 → 2027-04-27 (-26d) |  |  |  |  |  |
| SDR-ST-CON-P1-5080 | Retroreflective Thermoplastic White Traffic lines | 2027-04-15 → 2027-03-08 (-38d) | 2027-04-21 → 2027-03-17 (-35d) |  |  | 29.6d → 25d | SDR-ST-CON-P1-5040 SS, SDR-ST-ENG-AP-1080, SDR-ST-CON-P1-4490, SDR-ST-CON-P1-5570 → SDR-ST-CON-P1-5040 SS, SDR-ST-CON-P1-4490, SDR-ST-CON-P1-5570 | resources SIC- Cost [19365.7]; Supervisor [7.2 h]; Painter [28.79 h]; Painter Helper [28.79 h] → SIC- Cost [19365.7]; Supervisor [7.12 h]; Painter [28.49 h]; Painter Helper [28.49 h] |
| SDR-ST-CON-P1-5150 | Retroreflective Thermoplastic Yellow, Traffic lines | 2027-04-29 → 2027-03-27 (-33d) | 2027-05-05 → 2027-03-31 (-35d) |  |  | 22.6d → 18d |  | resources SIC- Cost [13725.2]; Supervisor [7.2 h]; Painter [4040.4 h]; Painter Helper [28.79 h] → SIC- Cost [13725.2]; Supervisor [7.12 h]; Painter [3997.39 h]; Painter Helper [28.49 h] |
| SDR-ST-CON-P1-5270 | Ceramic raised pavement markers | 2027-05-05 → 2027-04-17 (-18d) | 2027-05-11 → 2027-04-21 (-20d) |  |  | 22.6d → 5d |  | resources SIC- Cost [733.26]; Un-Skilled Labor [1038.89 h]; Supervisor [7.2 h]; Skilled Labor [1038.89 h] → SIC- Cost [733.26]; Un-Skilled Labor [1027.83 h]; Supervisor [7.12 h]; Skilled Labor [1027.83 h] |
| SDR-ST-CON-P1-5400 | Rumble strip | 2027-05-11 → 2027-04-22 (-19d) | 2027-05-23 → 2027-04-27 (-26d) |  |  | 22.6d → 5d |  | resources SIC- Cost [928.33]; Un-Skilled Labor [28.79 h]; Supervisor [7.2 h]; Skilled Labor [28.79 h] → SIC- Cost [928.33]; Un-Skilled Labor [28.49 h]; Supervisor [7.12 h]; Skilled Labor [28.49 h] |
| 7 | **Traffic Signage** | 2027-06-12 → 2027-04-28 (-45d) | 2027-06-26 → 2027-05-11 (-46d) |  |  |  |  |  |
| SDR-ST-CON-P1-5090 | Traffic signs, ground mounted, 1 Sheet Alumenium, (breakaway) Single post, with all accessories | 2027-06-12 → 2027-04-28 (-45d) | 2027-06-19 → 2027-05-04 (-46d) |  |  | 5.5d → 5d | SDR-ST-ENG-AP-1080, SDR-ST-CON-P1-5400, SDR-ST-PRO-MS-1190, SDR-ST-PRO-MS-1180 → SDR-ST-CON-P1-5400 | resources SIC- Cost [8095.27]; Un-Skilled Labor [28.79 h]; Supervisor [7.2 h]; Skilled Labor [28.79 h] → SIC- Cost [8095.27]; Un-Skilled Labor [28.49 h]; Supervisor [7.12 h]; Skilled Labor [28.49 h] |
| SDR-ST-CON-P1-5160 | Traffic signs, ground mounted, 1 Sheet Aluminum, (breakaway) Double post, with all accessories | 2027-06-19 → 2027-05-05 (-45d) | 2027-06-26 → 2027-05-11 (-46d) |  |  | 5.5d → 5d | SDR-ST-CON-P1-5090, SDR-ST-PRO-MS-1190 → SDR-ST-CON-P1-5090 | resources SIC- Cost [8446.63]; Un-Skilled Labor [28.79 h]; Supervisor [7.2 h]; Skilled Labor [28.79 h] → SIC- Cost [8446.63]; Un-Skilled Labor [28.49 h]; Supervisor [7.12 h]; Skilled Labor [28.49 h] |
| 8 | **Speed table** | 2027-06-26 → 2027-05-12 (-45d) | 2027-07-05 → 2027-05-26 (-40d) |  |  |  |  |  |
| SDR-ST-CON-P1-5280 | Interlock speed table including interlock, flush kerb and marking | 2027-06-26 → 2027-05-12 (-45d) | 2027-07-05 → 2027-05-26 (-40d) | 8.3d → 8d |  | 5.5d → 5d |  | resources SIC- Cost [15282.2]; Un-Skilled Labor [57.58 h]; Supervisor [21.59 h]; Skilled Labor [57.58 h] → SIC- Cost [15282.2]; Un-Skilled Labor [56.97 h]; Supervisor [21.36 h]; Skilled Labor [56.97 h] |
| 9 | **ROAD-01 From 1125 to 1765 m (7)** |  | 2027-06-20 → 2027-05-10 (-41d) |  |  |  |  |  |
| SDR-ST-CON-P1-1020 | Cleaning and removal of organic materials in Zone A |  |  |  |  |  | SDR-ST-CON-P1-1010 SS+7d, SDR-ST-ENG-AP-1080 → SDR-ST-CON-P1-1010 SS+7d | resources SIC- Cost [6463.05]; Excavator [200 h]; Excavator Operator [143.96 h]; Dumper Operator [143.96 h]; Dumper Truck [392.21 h]; Grader [200 h]; Grader Operator [143.96 h]; Loader [200 h]; Loader Operator [143.96 h]; Un-Skilled Labor [2164.16 h]; Supervisor [143.96 h]; Skilled Labor [9407.78 h] → SIC- Cost [6463.05]; Excavator [200 h]; Excavator Operator [142.43 h]; Dumper Operator [142.43 h]; Dumper Truck [392.21 h]; Grader [200 h]; Grader Operator [142.43 h]; Loader [200 h]; Loader Operator [142.43 h]; Un-Skilled Labor [2141.12 h]; Supervisor [142.43 h]; Skilled Labor [9307.65 h] |
| SDR-ST-CON-P1-1080 | Surveying works Zone A |  |  |  |  |  |  | resources SIC- Cost [3877.83]; Un-Skilled Labor [115.17 h]; Surveyor [115.17 h]; Supervisor [21.59 h] → SIC- Cost [3877.83]; Un-Skilled Labor [113.94 h]; Surveyor [113.94 h]; Supervisor [21.36 h] |
| SDR-ST-CON-P1-1140 | Roadway Excavation and cuttings |  |  |  |  |  |  | resources SIC- Cost [15511.3]; Excavator [60 h]; Excavator Operator [143.96 h]; Dumper Operator [143.96 h]; Dumper Truck [1230 h]; Grader [200 h]; Grader Operator [143.96 h]; Loader [200 h]; Loader Operator [143.96 h]; Un-Skilled Labor [2164.16 h]; Supervisor [28.79 h]; Skilled Labor [2164.16 h] → SIC- Cost [15511.3]; Excavator [60 h]; Excavator Operator [142.43 h]; Dumper Operator [142.43 h]; Dumper Truck [1230 h]; Grader [200 h]; Grader Operator [142.43 h]; Loader [200 h]; Loader Operator [142.43 h]; Un-Skilled Labor [2141.12 h]; Supervisor [28.49 h]; Skilled Labor [2141.12 h] |
| SDR-ST-CON-P1-1210 | Embankments to the Road 1 Layer |  |  |  |  |  | SDR-ST-CON-P1-1140 SS → SDR-ST-CON-P1-1140 | resources SIC- Cost [252647]; Compactor [200 h]; Excavator [65 h]; Excavator Operator [143.96 h]; Dumper Operator [143.96 h]; Dumper Truck [200 h]; Grader [200 h]; Grader Operator [143.96 h]; Loader [200 h]; Loader Operator [143.96 h]; Un-Skilled Labor [143.96 h]; Supervisor [28.79 h]; Skilled Labor [143.96 h]; Water Tanker [200 h] → SIC- Cost [252647]; Compactor [200 h]; Excavator [65 h]; Excavator Operator [142.43 h]; Dumper Operator [142.43 h]; Dumper Truck [200 h]; Grader [200 h]; Grader Operator [142.43 h]; Loader [200 h]; Loader Operator [142.43 h]; Un-Skilled Labor [142.43 h]; Supervisor [28.49 h]; Skilled Labor [142.43 h]; Water Tanker [200 h] |
| SDR-ST-CON-P1-1580 | Embankments to the Road 2 Layer |  |  |  |  |  |  | resources SIC- Cost [252647]; Compactor [200 h]; Excavator [18 h]; Excavator Operator [143.96 h]; Dumper Operator [143.96 h]; Dumper Truck [200 h]; Grader [179 h]; Grader Operator [143.96 h]; Loader [60.51 h]; Loader Operator [143.96 h]; Un-Skilled Labor [47.99 h]; Supervisor [28.79 h]; Skilled Labor [47.99 h]; Water Tanker [200 h] → SIC- Cost [252647]; Compactor [200 h]; Excavator [18 h]; Excavator Operator [142.43 h]; Dumper Operator [142.43 h]; Dumper Truck [200 h]; Grader [179 h]; Grader Operator [142.43 h]; Loader [60.51 h]; Loader Operator [142.43 h]; Un-Skilled Labor [47.48 h]; Supervisor [28.49 h]; Skilled Labor [47.48 h]; Water Tanker [200 h] |
| SDR-ST-CON-P1-2220 | Embankments to the Road 3 Layer |  |  |  |  |  |  | resources SIC- Cost [252647]; Compactor [50 h]; Excavator [15 h]; Excavator Operator [143.96 h]; Dumper Operator [143.96 h]; Dumper Truck [200 h]; Grader [100 h]; Grader Operator [143.96 h]; Loader [50 h]; Loader Operator [143.96 h]; Un-Skilled Labor [38.39 h]; Supervisor [28.79 h]; Skilled Labor [38.39 h]; Water Tanker [50 h] → SIC- Cost [252647]; Compactor [50 h]; Excavator [15 h]; Excavator Operator [142.43 h]; Dumper Operator [142.43 h]; Dumper Truck [200 h]; Grader [100 h]; Grader Operator [142.43 h]; Loader [50 h]; Loader Operator [142.43 h]; Un-Skilled Labor [37.98 h]; Supervisor [28.49 h]; Skilled Labor [37.98 h]; Water Tanker [50 h] |
| SDR-ST-CON-P1-2880 | Embankments to the Road 4 Layer |  |  |  |  |  |  | resources SIC- Cost [252647]; Compactor [97.14 h]; Excavator [30 h]; Excavator Operator [143.96 h]; Dumper Operator [143.96 h]; Dumper Truck [147.14 h]; Grader [239.51 h]; Grader Operator [143.96 h]; Loader [126.42 h]; Loader Operator [143.96 h]; Un-Skilled Labor [38.39 h]; Supervisor [28.79 h]; Skilled Labor [38.39 h]; Water Tanker [128.8 h] → SIC- Cost [252647]; Compactor [97.14 h]; Excavator [30 h]; Excavator Operator [142.43 h]; Dumper Operator [142.43 h]; Dumper Truck [147.14 h]; Grader [239.51 h]; Grader Operator [142.43 h]; Loader [126.42 h]; Loader Operator [142.43 h]; Un-Skilled Labor [37.98 h]; Supervisor [28.49 h]; Skilled Labor [37.98 h]; Water Tanker [128.8 h] |
| 11 | **Subgrade** |  | 2026-10-08 → 2026-10-22 (+14d) |  |  |  |  |  |
| SDR-ST-CON-P1-3600 | Subgrade layer works |  | 2026-10-08 → 2026-10-22 (+14d) |  | 25% → 75% | 74.8d → 47d |  | resources SIC- Cost [144749]; Compactor [200 h]; Excavator [15 h]; Excavator Operator [143.96 h]; Dumper Operator [143.96 h]; Dumper Truck [180 h]; Grader [200 h]; Grader Operator [143.96 h]; Loader [150 h]; Loader Operator [143.96 h]; Un-Skilled Labor [143.96 h]; Supervisor [143.96 h]; Skilled Labor [143.96 h]; Water Tanker [50 h]; Water Tanker Operator [143.96 h] → SIC- Cost [144749]; Compactor [200 h]; Excavator [15 h]; Excavator Operator [142.43 h]; Dumper Operator [142.43 h]; Dumper Truck [180 h]; Grader [200 h]; Grader Operator [142.43 h]; Loader [150 h]; Loader Operator [142.43 h]; Un-Skilled Labor [142.43 h]; Supervisor [142.43 h]; Skilled Labor [142.43 h]; Water Tanker [50 h]; Water Tanker Operator [142.43 h] |
| 2 | **Base Course** | 2026-10-10 → 2026-10-24 (+14d) | 2026-10-19 → 2026-11-02 (+14d) |  |  |  |  |  |
| SDR-ST-CON-P1-4220 | Aggregate base course layer | 2026-10-10 → 2026-10-24 (+14d) | 2026-10-19 → 2026-11-02 (+14d) |  |  | 91.5d → 64d |  | resources SIC- Cost [174309]; Compactor [71.33 h]; Dumper Operator [136.76 h]; Dumper Truck [2835 h]; Grader [101.55 h]; Grader Operator [136.76 h]; Loader [209.58 h]; Loader Operator [136.76 h]; Un-Skilled Labor [136.76 h]; Supervisor [21.59 h]; Skilled Labor [136.76 h]; Water Tanker [240 h]; Water Tanker Operator [136.76 h] → SIC- Cost [174309]; Compactor [71.33 h]; Dumper Operator [135.31 h]; Dumper Truck [2835 h]; Grader [101.55 h]; Grader Operator [135.31 h]; Loader [209.58 h]; Loader Operator [135.31 h]; Un-Skilled Labor [135.31 h]; Supervisor [21.36 h]; Skilled Labor [135.31 h]; Water Tanker [240 h]; Water Tanker Operator [135.31 h] |
| 3 | **Asphalt Works** | 2026-10-20 → 2026-11-03 (+14d) | 2026-11-29 → 2027-02-02 (+65d) |  |  |  |  |  |
| 1 | **Bituminous base course** | 2026-10-20 → 2026-11-03 (+14d) | 2026-11-01 → 2026-11-15 (+14d) |  |  |  |  |  |
| SDR-ST-CON-P1-4750 | Bituminous base course (Grading I - Class A 1st Layer with MC-01 | 2026-10-20 → 2026-11-03 (+14d) | 2026-10-26 → 2026-11-09 (+14d) |  |  | 91.5d → 64d |  | was named Bituminous base course (Grading I - Class A 1st Layer with RC-01; resources SIC- Cost [518809]; Compactor [50 h]; Dumper Operator [129.56 h]; Dumper Truck [50 h]; Supervisor [28.79 h]; Sweeper Machine [30 h]; Sweeper Machine Operator [129.56 h]; Pneumatic Tire Roller [30 h]; Pneumatic Roller Operator [129.56 h]; Asphalt Paver [30 h]; Asphalt Paver Operator [129.56 h] → SIC- Cost [518809]; Compactor [50 h]; Dumper Operator [128.18 h]; Dumper Truck [50 h]; Supervisor [28.49 h]; Sweeper Machine [30 h]; Sweeper Machine Operator [128.18 h]; Pneumatic Tire Roller [30 h]; Pneumatic Roller Operator [128.18 h]; Asphalt Paver [30 h]; Asphalt Paver Operator [128.18 h] |
| SDR-ST-CON-P1-5010 | Bituminous base course (Grading I - Class A 2nd layer with RC-02 | 2026-10-27 → 2026-11-10 (+14d) | 2026-11-01 → 2026-11-15 (+14d) |  |  | 91.5d → 64d |  | resources SIC- Cost [518809]; Compactor [50 h]; Dumper Operator [129.56 h]; Dumper Truck [50 h]; Supervisor [28.79 h]; Sweeper Machine [172 h]; Sweeper Machine Operator [129.56 h]; Pneumatic Tire Roller [120 h]; Pneumatic Roller Operator [129.56 h]; Asphalt Paver [30 h]; Asphalt Paver Operator [129.56 h] → SIC- Cost [518809]; Compactor [50 h]; Dumper Operator [128.18 h]; Dumper Truck [50 h]; Supervisor [28.49 h]; Sweeper Machine [172 h]; Sweeper Machine Operator [128.18 h]; Pneumatic Tire Roller [120 h]; Pneumatic Roller Operator [128.18 h]; Asphalt Paver [30 h]; Asphalt Paver Operator [128.18 h] |
| 2 | **Bituminous concrete wearing course** | 2026-11-05 → 2027-01-10 (+66d) | 2026-11-29 → 2027-02-02 (+65d) |  |  |  |  |  |
| SDR-ST-CON-P1-5200 | Bituminous concrete wearing course, (Grading I - Class A), including tack coat (RC2) | 2026-11-05 → 2027-01-10 (+66d) | 2026-11-29 → 2027-02-02 (+65d) |  |  | 91.5d → 20d | SDR-ST-CON-P1-5010 FS+3d → SDR-ST-CON-P1-5010 FS+3d, SDR-ST-PRO-MS-1270 | resources SIC- Cost [364403]; Compactor [50 h]; Dumper Operator [129.56 h]; Dumper Truck [50 h]; Supervisor [28.79 h]; Sweeper Machine [30 h]; Sweeper Machine Operator [129.56 h]; Pneumatic Tire Roller [36 h]; Pneumatic Roller Operator [129.56 h]; Asphalt Paver [30 h]; Asphalt Paver Operator [129.56 h] → SIC- Cost [364403]; Compactor [50 h]; Dumper Operator [128.18 h]; Dumper Truck [50 h]; Supervisor [28.49 h]; Sweeper Machine [30 h]; Sweeper Machine Operator [128.18 h]; Pneumatic Tire Roller [36 h]; Pneumatic Roller Operator [128.18 h]; Asphalt Paver [30 h]; Asphalt Paver Operator [128.18 h] |
| 4 | **Kerbstone Installation** | 2026-10-10 → 2026-10-24 (+14d) | 2026-11-29 → 2026-12-13 (+14d) |  |  |  |  |  |
| SDR-ST-CON-P1-4230 | Precast Concrete Curbstone, Type A2 | 2026-10-10 → 2026-10-24 (+14d) | 2026-11-01 → 2026-11-15 (+14d) |  |  | 74.8d → 47d |  | resources SIC- Cost [144150]; Un-Skilled Labor [143.96 h]; Supervisor [28.79 h]; Skilled Labor [143.96 h] → SIC- Cost [144150]; Un-Skilled Labor [142.43 h]; Supervisor [28.49 h]; Skilled Labor [142.43 h] |
| SDR-ST-CON-P1-4950 | Precast Concrete Curbstone, Type D | 2026-11-07 → 2026-11-21 (+14d) | 2026-11-29 → 2026-12-13 (+14d) |  |  | 74.8d → 47d |  | resources SIC- Cost [70526]; Un-Skilled Labor [143.96 h]; Supervisor [28.79 h]; Skilled Labor [143.96 h] → SIC- Cost [70526]; Un-Skilled Labor [142.43 h]; Supervisor [28.49 h]; Skilled Labor [142.43 h] |
| 5 | **Interlock Installation** | 2026-11-30 → 2026-12-28 (+28d) | 2027-01-16 → 2027-02-13 (+28d) |  |  |  |  |  |
| SDR-ST-CON-P1-4440 | Interlock Installation Part 1 | 2026-11-30 → 2026-12-28 (+28d) | 2026-12-23 → 2027-01-20 (+28d) |  |  | 74.8d → 35d | SDR-ST-ENG-AP-1080, SDR-ST-CON-P1-4950 → SDR-ST-CON-P1-4950, SDR-ST-PRO-MS-1080 | resources SIC- Cost [213105]; Un-Skilled Labor [40.4 h]; Supervisor [28.79 h]; Skilled Labor [40.4 h] → SIC- Cost [213105]; Un-Skilled Labor [39.97 h]; Supervisor [28.49 h]; Skilled Labor [39.97 h] |
| SDR-ST-CON-P1-4870 | Interlock Installation Part 2 | 2026-12-24 → 2027-01-21 (+28d) | 2027-01-16 → 2027-02-13 (+28d) |  |  | 74.8d → 35d |  | resources SIC- Cost [213105]; Un-Skilled Labor [143.96 h]; Supervisor [28.79 h]; Skilled Labor [143.96 h] → SIC- Cost [213105]; Un-Skilled Labor [142.43 h]; Supervisor [28.49 h]; Skilled Labor [142.43 h] |
| 6 | **Road Marking** | 2027-04-29 → 2027-04-03 (-26d) | 2027-05-29 → 2027-04-25 (-34d) |  |  |  |  |  |
| SDR-ST-CON-P1-5300 | Retroreflective Thermoplastic White Traffic lines | 2027-04-29 → 2027-04-03 (-26d) | 2027-05-05 → 2027-04-07 (-28d) |  |  | 0.6d → 3d | SDR-ST-CON-P1-5200 SS, SDR-ST-ENG-AP-1080, SDR-ST-CON-P1-4870, SDR-ST-CON-P3-1310, SDR-ST-CON-P3-1490, SDR-ST-CON-P1-6070 → SDR-ST-CON-P1-5200 SS, SDR-ST-CON-P1-4870, SDR-ST-CON-P3-1310, SDR-ST-CON-P3-1490, SDR-ST-CON-P1-6070 | resources SIC- Cost [19365.7]; Supervisor [7.2 h]; Painter [4069.19 h]; Painter Helper [28.79 h] → SIC- Cost [19365.7]; Supervisor [7.12 h]; Painter [1057.81 h]; Painter Helper [28.49 h] |
| SDR-ST-CON-P1-5450 | Retroreflective Thermoplastic Yellow, Traffic lines | 2027-05-05 → 2027-04-08 (-27d) | 2027-05-11 → 2027-04-13 (-28d) |  |  | 0.6d → 3d |  | resources SIC- Cost [13725.2]; Supervisor [7.2 h]; Painter [4069.19 h]; Painter Helper [28.79 h] → SIC- Cost [13725.2]; Supervisor [7.12 h]; Painter [1057.81 h]; Painter Helper [28.49 h] |
| SDR-ST-CON-P1-5610 | Ceramic raised pavement markers | 2027-05-11 → 2027-04-14 (-27d) | 2027-05-23 → 2027-04-19 (-34d) |  |  | 0.6d → 3d |  | resources SIC- Cost [733.26]; Un-Skilled Labor [28.79 h]; Supervisor [7.2 h]; Skilled Labor [28.79 h] → SIC- Cost [733.26]; Un-Skilled Labor [28.49 h]; Supervisor [7.12 h]; Skilled Labor [28.49 h] |
| SDR-ST-CON-P1-5690 | Rumble strip | 2027-05-23 → 2027-04-20 (-33d) | 2027-05-29 → 2027-04-25 (-34d) |  |  | 0.6d → 3d |  | resources SIC- Cost [928.33]; Un-Skilled Labor [28.79 h]; Supervisor [7.2 h]; Skilled Labor [28.79 h] → SIC- Cost [928.33]; Un-Skilled Labor [28.49 h]; Supervisor [7.12 h]; Skilled Labor [28.49 h] |
| 7 | **Traffic Signage** | 2027-05-29 → 2027-04-26 (-33d) | 2027-06-10 → 2027-05-08 (-33d) |  |  |  |  |  |
| SDR-ST-CON-P1-5540 | Traffic signs, ground mounted, 1 Sheet Alumenium, (breakaway) Single post, with all accessories | 2027-05-29 → 2027-04-26 (-33d) | 2027-06-03 → 2027-05-01 (-33d) |  |  | 0.6d → 3d | SDR-ST-ENG-AP-1080, SDR-ST-CON-P1-5690, SDR-ST-PRO-MS-1190 → SDR-ST-CON-P1-5690 | resources SIC- Cost [8095.27]; Un-Skilled Labor [4069.19 h]; Supervisor [7.2 h]; Skilled Labor [4069.19 h] → SIC- Cost [8095.27]; Un-Skilled Labor [4025.87 h]; Supervisor [7.12 h]; Skilled Labor [4025.87 h] |
| SDR-ST-CON-P1-5680 | Traffic signs, ground mounted, 1 Sheet Aluminum, (breakaway) Double post, with all accessories | 2027-06-03 → 2027-05-02 (-32d) | 2027-06-10 → 2027-05-08 (-33d) |  |  | 0.6d → 3d |  | resources SIC- Cost [8446.63]; Un-Skilled Labor [4069.19 h]; Supervisor [7.2 h]; Skilled Labor [4069.19 h] → SIC- Cost [8446.63]; Un-Skilled Labor [4025.87 h]; Supervisor [7.12 h]; Skilled Labor [4025.87 h] |
| 8 | **Speed table** | 2027-06-10 → 2027-05-02 (-39d) | 2027-06-20 → 2027-05-10 (-41d) |  |  |  |  |  |
| SDR-ST-CON-P1-5460 | Interlock speed table including interlock, flush kerb and marking | 2027-06-10 → 2027-05-02 (-39d) | 2027-06-20 → 2027-05-10 (-41d) |  |  | 0.6d → 3d | SDR-ST-ENG-AP-1080, SDR-ST-CON-P1-5680 → SDR-ST-CON-P1-5680 SS | resources SIC- Cost [15282.2]; Un-Skilled Labor [57.58 h]; Supervisor [7.2 h]; Skilled Labor [57.58 h] → SIC- Cost [15282.2]; Un-Skilled Labor [56.97 h]; Supervisor [7.12 h]; Skilled Labor [56.97 h] |
| 6 | **ROAD - 02** |  | 2027-07-14 → 2027-05-23 (-52d) |  |  |  |  |  |
| SDR-ST-CON-P1-1030 | Cleaning and removal of organic materials in Zone A |  |  |  |  |  | SDR-ST-CON-P1-1020 SS+4d, SDR-ST-ENG-AP-1080 → SDR-ST-CON-P1-1020 SS+4d | resources SIC- Cost [4536.95]; Excavator [200 h]; Excavator Operator [143.96 h]; Dumper Operator [143.96 h]; Dumper Truck [200 h]; Grader [200 h]; Grader Operator [143.96 h]; Loader [200 h]; Loader Operator [143.96 h]; Un-Skilled Labor [143.96 h]; Supervisor [143.96 h]; Skilled Labor [143.96 h] → SIC- Cost [4536.95]; Excavator [200 h]; Excavator Operator [142.43 h]; Dumper Operator [142.43 h]; Dumper Truck [200 h]; Grader [200 h]; Grader Operator [142.43 h]; Loader [200 h]; Loader Operator [142.43 h]; Un-Skilled Labor [142.43 h]; Supervisor [142.43 h]; Skilled Labor [142.43 h] |
| SDR-ST-CON-P1-1100 | Surveying works Zone A |  |  |  |  |  |  | resources SIC- Cost [2722.17]; Un-Skilled Labor [115.17 h]; Surveyor [115.17 h]; Supervisor [28.79 h] → SIC- Cost [2722.17]; Un-Skilled Labor [113.94 h]; Surveyor [113.94 h]; Supervisor [28.49 h] |
| SDR-ST-CON-P1-1160 | Roadway Excavation and cuttings |  |  |  |  |  |  | resources SIC- Cost [10888.7]; Excavator [50 h]; Excavator Operator [143.96 h]; Dumper Operator [143.96 h]; Dumper Truck [200 h]; Grader [200 h]; Grader Operator [143.96 h]; Loader [200 h]; Loader Operator [143.96 h]; Un-Skilled Labor [143.96 h]; Supervisor [143.96 h]; Skilled Labor [143.96 h] → SIC- Cost [10888.7]; Excavator [50 h]; Excavator Operator [142.43 h]; Dumper Operator [142.43 h]; Dumper Truck [200 h]; Grader [200 h]; Grader Operator [142.43 h]; Loader [200 h]; Loader Operator [142.43 h]; Un-Skilled Labor [142.43 h]; Supervisor [142.43 h]; Skilled Labor [142.43 h] |
| SDR-ST-CON-P1-1300 | Embankments to the Road 1 Layer |  |  |  |  |  | SDR-ST-CON-P1-1160 SS → SDR-ST-CON-P1-1160 | resources SIC- Cost [177354]; Compactor [200 h]; Excavator [40 h]; Excavator Operator [143.96 h]; Dumper Operator [143.96 h]; Dumper Truck [1215 h]; Grader [200 h]; Grader Operator [143.96 h]; Loader [200 h]; Loader Operator [143.96 h]; Un-Skilled Labor [38.39 h]; Supervisor [28.79 h]; Skilled Labor [38.39 h]; Water Tanker [200 h] → SIC- Cost [177354]; Compactor [200 h]; Excavator [40 h]; Excavator Operator [142.43 h]; Dumper Operator [142.43 h]; Dumper Truck [1215 h]; Grader [200 h]; Grader Operator [142.43 h]; Loader [200 h]; Loader Operator [142.43 h]; Un-Skilled Labor [37.98 h]; Supervisor [28.49 h]; Skilled Labor [37.98 h]; Water Tanker [200 h] |
| SDR-ST-CON-P1-1910 | Embankments to the Road 2 Layer |  |  |  |  |  |  | resources SIC- Cost [177354]; Compactor [200 h]; Excavator [30 h]; Excavator Operator [143.96 h]; Dumper Operator [143.96 h]; Dumper Truck [200 h]; Grader [175.38 h]; Grader Operator [143.96 h]; Loader [119.41 h]; Loader Operator [143.96 h]; Un-Skilled Labor [38.39 h]; Supervisor [28.79 h]; Skilled Labor [38.39 h]; Water Tanker [233.22 h] → SIC- Cost [177354]; Compactor [200 h]; Excavator [30 h]; Excavator Operator [142.43 h]; Dumper Operator [142.43 h]; Dumper Truck [200 h]; Grader [175.38 h]; Grader Operator [142.43 h]; Loader [119.41 h]; Loader Operator [142.43 h]; Un-Skilled Labor [37.98 h]; Supervisor [28.49 h]; Skilled Labor [37.98 h]; Water Tanker [233.22 h] |
| SDR-ST-CON-P1-2620 | Embankments to the Road 3 Layer |  |  |  |  |  |  | resources SIC- Cost [177354]; Compactor [50 h]; Excavator [15 h]; Excavator Operator [143.96 h]; Dumper Operator [143.96 h]; Dumper Truck [200 h]; Grader [100 h]; Grader Operator [143.96 h]; Loader [50 h]; Loader Operator [143.96 h]; Un-Skilled Labor [38.39 h]; Supervisor [28.79 h]; Skilled Labor [38.39 h]; Water Tanker [50 h] → SIC- Cost [177354]; Compactor [50 h]; Excavator [15 h]; Excavator Operator [142.43 h]; Dumper Operator [142.43 h]; Dumper Truck [200 h]; Grader [100 h]; Grader Operator [142.43 h]; Loader [50 h]; Loader Operator [142.43 h]; Un-Skilled Labor [37.98 h]; Supervisor [28.49 h]; Skilled Labor [37.98 h]; Water Tanker [50 h] |
| SDR-ST-CON-P1-2920 | Embankments to the Road 4 Layer |  |  |  |  |  |  | resources SIC- Cost [177354]; Compactor [160 h]; Excavator [30 h]; Excavator Operator [143.96 h]; Dumper Operator [143.96 h]; Dumper Truck [200 h]; Grader [200 h]; Grader Operator [143.96 h]; Loader [143.27 h]; Loader Operator [143.96 h]; Un-Skilled Labor [38.39 h]; Supervisor [38.39 h]; Skilled Labor [38.39 h]; Water Tanker [148.21 h] → SIC- Cost [177354]; Compactor [160 h]; Excavator [30 h]; Excavator Operator [142.43 h]; Dumper Operator [142.43 h]; Dumper Truck [200 h]; Grader [200 h]; Grader Operator [142.43 h]; Loader [143.27 h]; Loader Operator [142.43 h]; Un-Skilled Labor [37.98 h]; Supervisor [37.98 h]; Skilled Labor [37.98 h]; Water Tanker [148.21 h] |
| 11 | **Subgrade** |  | 2026-10-12 → 2026-10-26 (+14d) |  |  |  |  |  |
| SDR-ST-CON-P1-3390 | Subgrade layer works |  | 2026-10-12 → 2026-10-26 (+14d) |  | 20% → 75% | 80.8d → 36d |  | resources SIC- Cost [101611]; Compactor [50 h]; Excavator [15 h]; Excavator Operator [143.96 h]; Dumper Operator [143.96 h]; Dumper Truck [200 h]; Grader [200 h]; Grader Operator [143.96 h]; Loader [90.82 h]; Loader Operator [143.96 h]; Un-Skilled Labor [143.96 h]; Supervisor [143.96 h]; Skilled Labor [143.96 h]; Water Tanker [50 h]; Water Tanker Operator [143.96 h] → SIC- Cost [101611]; Compactor [50 h]; Excavator [15 h]; Excavator Operator [142.43 h]; Dumper Operator [142.43 h]; Dumper Truck [200 h]; Grader [200 h]; Grader Operator [142.43 h]; Loader [90.82 h]; Loader Operator [142.43 h]; Un-Skilled Labor [142.43 h]; Supervisor [142.43 h]; Skilled Labor [142.43 h]; Water Tanker [50 h]; Water Tanker Operator [142.43 h] |

| ID | Task | Start | Finish | Complete | Total float | Predecessors | Other |
| --- | --- | --- | --- | --- | --- | --- | --- |
| 2 | **Base Course** | 2026-10-13 → 2026-10-27 (+14d) | 2026-10-20 → 2026-11-03 (+14d) |  |  |  |  |
| SDR-ST-CON-P1-3960 | Aggregate base course layer | 2026-10-13 → 2026-10-27 (+14d) | 2026-10-20 → 2026-11-03 (+14d) |  | 80.8d → 41d |  | resources SIC- Cost [122362]; Compactor [85.55 h]; Dumper Operator [136.76 h]; Dumper Truck [1229.2 h]; Grader [101.27 h]; Grader Operator [136.76 h]; Loader [260 h]; Loader Operator [136.76 h]; Un-Skilled Labor [136.76 h]; Supervisor [136.76 h]; Skilled Labor [136.76 h]; Water Tanker [137.08 h]; Water Tanker Operator [136.76 h] → SIC- Cost [122362]; Compactor [85.55 h]; Dumper Operator [135.31 h]; Dumper Truck [1229.2 h]; Grader [101.27 h]; Grader Operator [135.31 h]; Loader [260 h]; Loader Operator [135.31 h]; Un-Skilled Labor [135.31 h]; Supervisor [135.31 h]; Skilled Labor [135.31 h]; Water Tanker [137.08 h]; Water Tanker Operator [135.31 h] |
| 3 | **Asphalt Works** | 2026-10-21 → 2026-11-04 (+14d) | 2026-11-24 → 2026-12-08 (+14d) |  |  |  |  |
| 1 | **Bituminous base course** | 2026-10-21 → 2026-11-04 (+14d) | 2026-10-28 → 2026-11-11 (+14d) |  |  |  |  |
| SDR-ST-CON-P1-4540 | Bituminous base course (Grading I - Class A 1st Layer with MC-01 | 2026-10-21 → 2026-11-04 (+14d) | 2026-10-25 → 2026-11-08 (+14d) |  | 80.8d → 41d |  | was named Bituminous base course (Grading I - Class A 1st Layer with RC-01; resources SIC- Cost [364195]; Compactor [50 h]; Dumper Operator [129.56 h]; Dumper Truck [50 h]; Supervisor [28.79 h]; Sweeper Machine [30 h]; Sweeper Machine Operator [129.56 h]; Pneumatic Tire Roller [30 h]; Pneumatic Roller Operator [129.56 h]; Asphalt Paver [30 h]; Asphalt Paver Operator [129.56 h] → SIC- Cost [364195]; Compactor [50 h]; Dumper Operator [128.18 h]; Dumper Truck [50 h]; Supervisor [28.49 h]; Sweeper Machine [30 h]; Sweeper Machine Operator [128.18 h]; Pneumatic Tire Roller [30 h]; Pneumatic Roller Operator [128.18 h]; Asphalt Paver [30 h]; Asphalt Paver Operator [128.18 h] |
| SDR-ST-CON-P1-4890 | Bituminous base course (Grading I - Class A 2nd layer with RC-02 | 2026-10-26 → 2026-11-09 (+14d) | 2026-10-28 → 2026-11-11 (+14d) |  | 80.8d → 41d |  | resources SIC- Cost [364195]; Compactor [50 h]; Dumper Operator [129.56 h]; Dumper Truck [50 h]; Supervisor [28.79 h]; Sweeper Machine [30 h]; Sweeper Machine Operator [129.56 h]; Pneumatic Tire Roller [30 h]; Pneumatic Roller Operator [129.56 h]; Asphalt Paver [30 h]; Asphalt Paver Operator [129.56 h] → SIC- Cost [364195]; Compactor [50 h]; Dumper Operator [128.18 h]; Dumper Truck [50 h]; Supervisor [28.49 h]; Sweeper Machine [30 h]; Sweeper Machine Operator [128.18 h]; Pneumatic Tire Roller [30 h]; Pneumatic Roller Operator [128.18 h]; Asphalt Paver [30 h]; Asphalt Paver Operator [128.18 h] |
| 2 | **Bituminous concrete wearing course** | 2026-11-01 → 2026-11-15 (+14d) | 2026-11-24 → 2026-12-08 (+14d) |  |  |  |  |
| SDR-ST-CON-P1-5130 | Bituminous concrete wearing course, (Grading I - Class A), including tack coat (RC2) | 2026-11-01 → 2026-11-15 (+14d) | 2026-11-24 → 2026-12-08 (+14d) |  | 80.8d → 41d |  | resources SIC- Cost [256255]; Compactor [1460 h]; Dumper Operator [129.56 h]; Dumper Truck [125 h]; Supervisor [28.79 h]; Sweeper Machine [460 h]; Sweeper Machine Operator [129.56 h]; Pneumatic Tire Roller [160 h]; Pneumatic Roller Operator [129.56 h]; Asphalt Paver [105 h]; Asphalt Paver Operator [129.56 h] → SIC- Cost [256255]; Compactor [1460 h]; Dumper Operator [128.18 h]; Dumper Truck [125 h]; Supervisor [28.49 h]; Sweeper Machine [460 h]; Sweeper Machine Operator [128.18 h]; Pneumatic Tire Roller [160 h]; Pneumatic Roller Operator [128.18 h]; Asphalt Paver [105 h]; Asphalt Paver Operator [128.18 h] |
| 4 | **Kerbstone Installation** | 2026-10-13 → 2026-10-27 (+14d) | 2026-12-02 → 2026-12-16 (+14d) |  |  |  |  |
| SDR-ST-CON-P1-3970 | Precast Concrete Curbstone, Type A2 | 2026-10-13 → 2026-10-27 (+14d) | 2026-11-04 → 2026-11-18 (+14d) |  | 91.8d → 36d |  | resources SIC- Cost [101191]; Un-Skilled Labor [129.56 h]; Supervisor [28.85 h]; Skilled Labor [129.56 h] → SIC- Cost [101191]; Un-Skilled Labor [128.18 h]; Supervisor [28.54 h]; Skilled Labor [128.18 h] |
| SDR-ST-CON-P1-4690 | Precast Concrete Curbstone, Type D | 2026-11-10 → 2026-11-24 (+14d) | 2026-12-02 → 2026-12-16 (+14d) |  | 91.8d → 36d |  | resources SIC- Cost [49508.1]; Un-Skilled Labor [129.56 h]; Supervisor [28.79 h]; Skilled Labor [129.56 h] → SIC- Cost [49508.1]; Un-Skilled Labor [128.18 h]; Supervisor [28.49 h]; Skilled Labor [128.18 h] |
| 5 | **Interlock Installation** | 2026-12-03 → 2026-12-17 (+14d) | 2027-01-18 → 2027-02-01 (+14d) |  |  |  |  |
| SDR-ST-CON-P1-4200 | Interlock Installation Part 1 | 2026-12-03 → 2026-12-17 (+14d) | 2026-12-26 → 2027-01-09 (+14d) |  | 91.8d → 36d | SDR-ST-CON-P1-3970 FS+4d, SDR-ST-ENG-AP-1080, SDR-ST-CON-P1-4690 → SDR-ST-CON-P1-3970 FS+4d, SDR-ST-CON-P1-4690 | resources SIC- Cost [149596]; Un-Skilled Labor [143.96 h]; Supervisor [28.79 h]; Skilled Labor [143.96 h] → SIC- Cost [149596]; Un-Skilled Labor [142.43 h]; Supervisor [28.49 h]; Skilled Labor [142.43 h] |
| SDR-ST-CON-P1-4780 | Interlock Installation Part 2 | 2026-12-27 → 2027-01-10 (+14d) | 2027-01-18 → 2027-02-01 (+14d) |  | 91.8d → 36d |  | resources SIC- Cost [149596]; Un-Skilled Labor [143.96 h]; Supervisor [28.79 h]; Skilled Labor [143.96 h] → SIC- Cost [149596]; Un-Skilled Labor [142.43 h]; Supervisor [28.49 h]; Skilled Labor [142.43 h] |
| 6 | **Road Marking** | 2027-04-29 → 2027-03-14 (-46d) | 2027-06-17 → 2027-04-05 (-73d) |  |  |  |  |
| SDR-ST-CON-P1-5250 | Retroreflective Thermoplastic White Traffic lines | 2027-04-29 → 2027-03-14 (-46d) | 2027-05-05 → 2027-03-18 (-48d) |  | 19.6d → 7d | SDR-ST-ENG-AP-1080, SDR-ST-CON-P1-4780, SDR-ST-PRO-MS-1270, SDR-ST-CON-P3-1310, SDR-ST-CON-P1-6070, SDR-ST-CON-P1-6070 FF → SDR-ST-CON-P1-4780, SDR-ST-CON-P1-6070, SDR-ST-CON-P1-6070 FF | resources SIC- Cost [13594.4]; Supervisor [7.2 h]; Painter [4069.19 h]; Painter Helper [28.79 h] → SIC- Cost [13594.4]; Supervisor [7.12 h]; Painter [1057.81 h]; Painter Helper [28.49 h] |
| SDR-ST-CON-P1-5370 | Retroreflective Thermoplastic Yellow, Traffic lines | 2027-05-05 → 2027-03-20 (-46d) | 2027-05-11 → 2027-03-24 (-48d) |  | 19.6d → 7d |  | resources SIC- Cost [9634.84]; Supervisor [7.2 h]; Painter [4069.19 h]; Painter Helper [28.79 h] → SIC- Cost [9634.84]; Supervisor [7.12 h]; Painter [1611.85 h]; Painter Helper [28.49 h] |
| SDR-ST-CON-P1-5550 | Ceramic raised pavement markers | 2027-05-11 → 2027-03-25 (-47d) | 2027-05-23 → 2027-03-30 (-54d) |  | 19.6d → 7d |  | resources SIC- Cost [514.74]; Un-Skilled Labor [28.79 h]; Supervisor [7.2 h]; Skilled Labor [28.79 h] → SIC- Cost [514.74]; Un-Skilled Labor [28.49 h]; Supervisor [7.12 h]; Skilled Labor [28.49 h] |
| SDR-ST-CON-P1-5630 | Rumble strip | 2027-06-12 → 2027-03-31 (-73d) | 2027-06-17 → 2027-04-05 (-73d) |  | 2.5d → 7d | SDR-ST-CON-P1-5550, SDR-ST-PRO-MS-1180 → SDR-ST-CON-P1-5550 | resources SIC- Cost [651.67]; Un-Skilled Labor [7.21 h]; Supervisor [7.21 h]; Skilled Labor [7.21 h] → SIC- Cost [651.67]; Un-Skilled Labor [7.14 h]; Supervisor [7.14 h]; Skilled Labor [7.14 h] |
| 7 | **Traffic Signage** | 2027-06-17 → 2027-04-06 (-72d) | 2027-07-05 → 2027-04-22 (-74d) |  |  |  |  |
| SDR-ST-CON-P1-5260 | Traffic signs, ground mounted, 1 Sheet Alumenium, (breakaway) Single post, with all accessories | 2027-06-17 → 2027-04-06 (-72d) | 2027-06-23 → 2027-04-11 (-73d) |  | 2.5d → 7d | SDR-ST-CON-P1-5250, SDR-ST-ENG-AP-1080, SDR-ST-CON-P1-5630, SDR-ST-PRO-MS-1190 → SDR-ST-CON-P1-5250, SDR-ST-CON-P1-5630 | resources SIC- Cost [5681.92]; Un-Skilled Labor [4069.19 h]; Supervisor [7.2 h]; Skilled Labor [4069.19 h] → SIC- Cost [5681.92]; Un-Skilled Labor [1453.55 h]; Supervisor [7.12 h]; Skilled Labor [1453.55 h] |
| SDR-ST-CON-P1-5380 | Traffic signs, ground mounted, 1 Sheet Aluminum, (breakaway) Double post, with all accessories | 2027-06-23 → 2027-04-12 (-72d) | 2027-06-29 → 2027-04-17 (-73d) |  | 2.5d → 7d |  | resources SIC- Cost [5929.3]; Un-Skilled Labor [28.79 h]; Supervisor [7.2 h]; Skilled Labor [28.79 h] → SIC- Cost [5929.3]; Un-Skilled Labor [28.49 h]; Supervisor [7.12 h]; Skilled Labor [28.49 h] |
| SDR-ST-CON-P1-5560 | Traffic signs, ground mounted, 2 Sheet Aluminum, (breakaway) Single post, with all accessories | 2027-06-29 → 2027-04-18 (-72d) | 2027-07-05 → 2027-04-22 (-74d) |  | 2.5d → 7d |  | resources SIC- Cost [2470.58]; Un-Skilled Labor [28.79 h]; Supervisor [7.2 h]; Skilled Labor [28.79 h] → SIC- Cost [2470.58]; Un-Skilled Labor [28.49 h]; Supervisor [7.12 h]; Skilled Labor [28.49 h] |
| 8 | **Speed table** | 2027-07-05 → 2027-04-25 (-71d) | 2027-07-14 → 2027-05-03 (-72d) |  |  |  |  |
| SDR-ST-CON-P1-5390 | Interlock speed table including interlock, flush kerb and marking | 2027-07-05 → 2027-04-25 (-71d) | 2027-07-14 → 2027-05-03 (-72d) |  | 2.5d → 7d | SDR-ST-CON-P1-5380, SDR-ST-ENG-AP-1080, SDR-ST-CON-P1-5560 → SDR-ST-CON-P1-5380, SDR-ST-CON-P1-5560 FS+1d | resources SIC- Cost [10727.8]; Un-Skilled Labor [57.58 h]; Supervisor [7.2 h]; Skilled Labor [57.58 h] → SIC- Cost [10727.8]; Un-Skilled Labor [56.97 h]; Supervisor [7.12 h]; Skilled Labor [56.97 h] |
| SDR-ST-CON-P1-1040 | Cleaning and removal of organic materials in Zone A |  |  |  |  | SDR-ST-CON-P1-1030 SS+3.2d, SDR-ST-ENG-AP-1080 → SDR-ST-CON-P1-1030 SS+3d | resources SIC- Cost [4536.95]; Excavator [200 h]; Excavator Operator [143.96 h]; Dumper Operator [143.96 h]; Dumper Truck [200 h]; Grader [200 h]; Grader Operator [143.96 h]; Loader [200 h]; Loader Operator [143.96 h]; Un-Skilled Labor [143.96 h]; Supervisor [143.96 h]; Skilled Labor [143.96 h] → SIC- Cost [4536.95]; Excavator [200 h]; Excavator Operator [142.43 h]; Dumper Operator [142.43 h]; Dumper Truck [200 h]; Grader [200 h]; Grader Operator [142.43 h]; Loader [200 h]; Loader Operator [142.43 h]; Un-Skilled Labor [142.43 h]; Supervisor [142.43 h]; Skilled Labor [142.43 h] |
| SDR-ST-CON-P1-1110 | Surveying works Zone A |  |  |  |  |  | resources SIC- Cost [2722.17]; Un-Skilled Labor [115.17 h]; Surveyor [115.17 h]; Supervisor [28.79 h] → SIC- Cost [2722.17]; Un-Skilled Labor [113.94 h]; Surveyor [113.94 h]; Supervisor [28.49 h] |
| SDR-ST-CON-P1-1170 | Roadway Excavation and cuttings |  |  |  |  |  | resources SIC- Cost [10888.7]; Excavator [50 h]; Excavator Operator [143.96 h]; Dumper Operator [143.96 h]; Dumper Truck [200 h]; Grader [200 h]; Grader Operator [143.96 h]; Loader [200 h]; Loader Operator [143.96 h]; Un-Skilled Labor [143.96 h]; Supervisor [28.79 h]; Skilled Labor [143.96 h] → SIC- Cost [10888.7]; Excavator [50 h]; Excavator Operator [142.43 h]; Dumper Operator [142.43 h]; Dumper Truck [200 h]; Grader [200 h]; Grader Operator [142.43 h]; Loader [200 h]; Loader Operator [142.43 h]; Un-Skilled Labor [142.43 h]; Supervisor [28.49 h]; Skilled Labor [142.43 h] |
| SDR-ST-CON-P1-1250 | Embankments to the Road 1 Layer |  |  |  |  | SDR-ST-CON-P1-1170 SF → SDR-ST-CON-P1-1170 | resources SIC- Cost [177354]; Compactor [200 h]; Excavator [57 h]; Excavator Operator [143.96 h]; Dumper Operator [143.96 h]; Dumper Truck [200 h]; Grader [200 h]; Grader Operator [143.96 h]; Loader [200 h]; Loader Operator [143.96 h]; Un-Skilled Labor [38.39 h]; Supervisor [28.79 h]; Skilled Labor [38.39 h]; Water Tanker [200 h] → SIC- Cost [177354]; Compactor [200 h]; Excavator [57 h]; Excavator Operator [142.43 h]; Dumper Operator [142.43 h]; Dumper Truck [200 h]; Grader [200 h]; Grader Operator [142.43 h]; Loader [200 h]; Loader Operator [142.43 h]; Un-Skilled Labor [37.98 h]; Supervisor [28.49 h]; Skilled Labor [37.98 h]; Water Tanker [200 h] |
| SDR-ST-CON-P1-1830 | Embankments to the Road 2 Layer |  |  |  |  |  | resources SIC- Cost [177354]; Compactor [200 h]; Excavator [30 h]; Excavator Operator [143.96 h]; Dumper Operator [143.96 h]; Dumper Truck [200 h]; Grader [187.69 h]; Grader Operator [143.96 h]; Loader [131.84 h]; Loader Operator [143.96 h]; Un-Skilled Labor [38.39 h]; Supervisor [28.79 h]; Skilled Labor [38.39 h]; Water Tanker [200 h] → SIC- Cost [177354]; Compactor [200 h]; Excavator [30 h]; Excavator Operator [142.43 h]; Dumper Operator [142.43 h]; Dumper Truck [200 h]; Grader [187.69 h]; Grader Operator [142.43 h]; Loader [131.84 h]; Loader Operator [142.43 h]; Un-Skilled Labor [37.98 h]; Supervisor [28.49 h]; Skilled Labor [37.98 h]; Water Tanker [200 h] |
| SDR-ST-CON-P1-2540 | Embankments to the Road 3 Layer |  |  |  |  |  | resources SIC- Cost [177354]; Compactor [50 h]; Excavator [15 h]; Excavator Operator [143.96 h]; Dumper Operator [143.96 h]; Dumper Truck [200 h]; Grader [100 h]; Grader Operator [143.96 h]; Loader [50 h]; Loader Operator [143.96 h]; Un-Skilled Labor [38.39 h]; Supervisor [28.79 h]; Skilled Labor [38.39 h]; Water Tanker [200 h] → SIC- Cost [177354]; Compactor [50 h]; Excavator [15 h]; Excavator Operator [142.43 h]; Dumper Operator [142.43 h]; Dumper Truck [200 h]; Grader [100 h]; Grader Operator [142.43 h]; Loader [50 h]; Loader Operator [142.43 h]; Un-Skilled Labor [37.98 h]; Supervisor [28.49 h]; Skilled Labor [37.98 h]; Water Tanker [200 h] |
| SDR-ST-CON-P1-3100 | Embankments to the Road 4 Layer |  |  |  |  |  | resources SIC- Cost [177354]; Compactor [200 h]; Excavator [30 h]; Excavator Operator [143.96 h]; Dumper Operator [143.96 h]; Dumper Truck [200 h]; Grader [200 h]; Grader Operator [143.96 h]; Loader [139.18 h]; Loader Operator [143.96 h]; Un-Skilled Labor [38.39 h]; Supervisor [28.79 h]; Skilled Labor [38.39 h]; Water Tanker [200 h] → SIC- Cost [177354]; Compactor [200 h]; Excavator [30 h]; Excavator Operator [142.43 h]; Dumper Operator [142.43 h]; Dumper Truck [200 h]; Grader [200 h]; Grader Operator [142.43 h]; Loader [139.18 h]; Loader Operator [142.43 h]; Un-Skilled Labor [37.98 h]; Supervisor [28.49 h]; Skilled Labor [37.98 h]; Water Tanker [200 h] |
| 11 | **Subgrade** |  | 2026-10-10 → 2026-10-24 (+14d) |  |  |  |  |
| SDR-ST-CON-P1-3540 | Subgrade layer works |  | 2026-10-10 → 2026-10-24 (+14d) | 10% → 50% | 63.8d → 40d |  | resources SIC- Cost [101611]; Compactor [50 h]; Excavator [15 h]; Excavator Operator [143.96 h]; Dumper Operator [143.96 h]; Dumper Truck [200 h]; Grader [200 h]; Grader Operator [143.96 h]; Loader [200 h]; Loader Operator [143.96 h]; Un-Skilled Labor [143.96 h]; Supervisor [28.79 h]; Skilled Labor [143.96 h]; Water Tanker [200 h]; Water Tanker Operator [143.96 h] → SIC- Cost [101611]; Compactor [50 h]; Excavator [15 h]; Excavator Operator [142.43 h]; Dumper Operator [142.43 h]; Dumper Truck [200 h]; Grader [200 h]; Grader Operator [142.43 h]; Loader [200 h]; Loader Operator [142.43 h]; Un-Skilled Labor [142.43 h]; Supervisor [28.49 h]; Skilled Labor [142.43 h]; Water Tanker [200 h]; Water Tanker Operator [142.43 h] |
| 2 | **Base Course** | 2026-10-11 → 2026-10-25 (+14d) | 2026-10-21 → 2026-11-04 (+14d) |  |  |  |  |
| SDR-ST-CON-P1-4130 | Aggregate base course layer | 2026-10-11 → 2026-10-25 (+14d) | 2026-10-21 → 2026-11-04 (+14d) |  | 65.8d → 40d |  | resources SIC- Cost [122362]; Compactor [68.1 h]; Dumper Operator [136.76 h]; Dumper Truck [190 h]; Grader [103.81 h]; Grader Operator [136.76 h]; Loader [190 h]; Loader Operator [136.76 h]; Un-Skilled Labor [136.76 h]; Supervisor [21.59 h]; Skilled Labor [136.76 h]; Water Tanker [94.33 h]; Water Tanker Operator [136.76 h] → SIC- Cost [122362]; Compactor [68.1 h]; Dumper Operator [135.31 h]; Dumper Truck [190 h]; Grader [103.81 h]; Grader Operator [135.31 h]; Loader [190 h]; Loader Operator [135.31 h]; Un-Skilled Labor [135.31 h]; Supervisor [21.36 h]; Skilled Labor [135.31 h]; Water Tanker [94.33 h]; Water Tanker Operator [135.31 h] |
| 3 | **Asphalt Works** | 2026-10-22 → 2026-11-05 (+14d) | 2026-11-28 → 2026-12-09 (+11d) |  |  |  |  |
| 1 | **Bituminous base course** | 2026-10-22 → 2026-11-05 (+14d) | 2026-11-01 → 2026-11-15 (+14d) |  |  |  |  |
| SDR-ST-CON-P1-4600 | Bituminous base course (Grading I - Class A 1st Layer with MC-01 | 2026-10-22 → 2026-11-05 (+14d) | 2026-10-27 → 2026-11-10 (+14d) |  | 65.8d → 40d |  | was named Bituminous base course (Grading I - Class A 1st Layer with RC-01; resources SIC- Cost [364195]; Compactor [50 h]; Dumper Operator [57.13 h]; Dumper Truck [50 h]; Supervisor [9.52 h]; Sweeper Machine [30 h]; Sweeper Machine Operator [57.13 h]; Pneumatic Tire Roller [30 h]; Pneumatic Roller Operator [57.13 h]; Asphalt Paver [30 h]; Asphalt Paver Operator [57.13 h] → SIC- Cost [364195]; Compactor [50 h]; Dumper Operator [56.52 h]; Dumper Truck [50 h]; Supervisor [9.42 h]; Sweeper Machine [30 h]; Sweeper Machine Operator [56.52 h]; Pneumatic Tire Roller [30 h]; Pneumatic Roller Operator [56.52 h]; Asphalt Paver [30 h]; Asphalt Paver Operator [56.52 h] |
| SDR-ST-CON-P1-4930 | Bituminous base course (Grading I - Class A 2nd layer with RC-02 | 2026-10-28 → 2026-11-11 (+14d) | 2026-11-01 → 2026-11-15 (+14d) |  | 65.8d → 40d |  | resources SIC- Cost [364195]; Compactor [50 h]; Dumper Operator [57.13 h]; Dumper Truck [50 h]; Supervisor [9.52 h]; Sweeper Machine [30 h]; Sweeper Machine Operator [57.13 h]; Pneumatic Tire Roller [60 h]; Pneumatic Roller Operator [57.13 h]; Asphalt Paver [30 h]; Asphalt Paver Operator [57.13 h] → SIC- Cost [364195]; Compactor [50 h]; Dumper Operator [56.52 h]; Dumper Truck [50 h]; Supervisor [9.42 h]; Sweeper Machine [30 h]; Sweeper Machine Operator [56.52 h]; Pneumatic Tire Roller [60 h]; Pneumatic Roller Operator [56.52 h]; Asphalt Paver [30 h]; Asphalt Paver Operator [56.52 h] |
| 2 | **Bituminous concrete wearing course** | 2026-11-04 → 2026-11-16 (+12d) | 2026-11-28 → 2026-12-09 (+11d) |  |  |  |  |
| SDR-ST-CON-P1-5180 | Bituminous concrete wearing course, (Grading I - Class A), including tack coat (RC2) | 2026-11-04 → 2026-11-16 (+12d) | 2026-11-28 → 2026-12-09 (+11d) |  | 65.8d → 40d | SDR-ST-CON-P1-4930 FS+2d → SDR-ST-CON-P1-4930 | resources SIC- Cost [256255]; Compactor [50 h]; Dumper Operator [274.44 h]; Dumper Truck [180 h]; Supervisor [45.74 h]; Sweeper Machine [30 h]; Sweeper Machine Operator [274.44 h]; Pneumatic Tire Roller [42 h]; Pneumatic Roller Operator [274.44 h]; Asphalt Paver [30 h]; Asphalt Paver Operator [274.44 h] → SIC- Cost [256255]; Compactor [50 h]; Dumper Operator [271.52 h]; Dumper Truck [180 h]; Supervisor [45.25 h]; Sweeper Machine [30 h]; Sweeper Machine Operator [271.52 h]; Pneumatic Tire Roller [42 h]; Pneumatic Roller Operator [271.52 h]; Asphalt Paver [30 h]; Asphalt Paver Operator [271.52 h] |
| 4 | **Kerbstone Installation** | 2026-10-11 → 2026-10-25 (+14d) | 2026-11-30 → 2026-12-14 (+14d) |  |  |  |  |
| SDR-ST-CON-P1-4140 | Precast Concrete Curbstone, Type A2 | 2026-10-11 → 2026-10-25 (+14d) | 2026-11-02 → 2026-11-16 (+14d) |  | 63.8d → 43d |  | resources SIC- Cost [101191]; Un-Skilled Labor [129.56 h]; Supervisor [28.85 h]; Skilled Labor [129.56 h] → SIC- Cost [101191]; Un-Skilled Labor [128.18 h]; Supervisor [28.54 h]; Skilled Labor [128.18 h] |
| SDR-ST-CON-P1-4810 | Precast Concrete Curbstone, Type D | 2026-11-08 → 2026-11-22 (+14d) | 2026-11-30 → 2026-12-14 (+14d) |  | 63.8d → 43d |  | resources SIC- Cost [49508.2]; Un-Skilled Labor [129.56 h]; Supervisor [28.85 h]; Skilled Labor [129.56 h] → SIC- Cost [49508.2]; Un-Skilled Labor [128.18 h]; Supervisor [28.54 h]; Skilled Labor [128.18 h] |
| 5 | **Interlock Installation** | 2026-12-01 → 2026-12-15 (+14d) | 2027-01-16 → 2027-01-31 (+15d) |  |  |  |  |
| SDR-ST-CON-P1-4350 | Interlock Installation Part 1 | 2026-12-01 → 2026-12-15 (+14d) | 2026-12-23 → 2027-01-06 (+14d) |  | 63.8d → 43d | SDR-ST-CON-P1-4140 SS, SDR-ST-ENG-AP-1080, SDR-ST-CON-P1-4810, SDR-ST-CON-P1-5180 → SDR-ST-CON-P1-4140 SS, SDR-ST-CON-P1-4810, SDR-ST-CON-P1-5180 | resources SIC- Cost [149596]; Dumper Truck [40 h]; Un-Skilled Labor [40.4 h]; Supervisor [28.85 h]; Skilled Labor [40.4 h] → SIC- Cost [149596]; Dumper Truck [40 h]; Un-Skilled Labor [39.97 h]; Supervisor [28.54 h]; Skilled Labor [39.97 h] |
| SDR-ST-CON-P1-4920 | Interlock Installation Part 2 | 2026-12-24 → 2027-01-09 (+16d) | 2027-01-16 → 2027-01-31 (+15d) |  | 63.8d → 43d | SDR-ST-CON-P1-4350 → SDR-ST-CON-P1-4350 FS+1d | resources SIC- Cost [149596]; Un-Skilled Labor [4067.59 h]; Supervisor [28.85 h]; Skilled Labor [4067.59 h] → SIC- Cost [149596]; Un-Skilled Labor [4024.3 h]; Supervisor [28.54 h]; Skilled Labor [4024.3 h] |
| 6 | **Road Marking** | 2027-04-07 → 2027-03-27 (-11d) | 2027-05-05 → 2027-04-22 (-13d) |  |  |  |  |
| SDR-ST-CON-P1-5290 | Retroreflective Thermoplastic White Traffic lines | 2027-04-07 → 2027-03-27 (-11d) | 2027-04-14 → 2027-04-01 (-13d) |  | 8.9d → 2d | SDR-ST-CON-P1-5180 SS, SDR-ST-ENG-AP-1080, SDR-ST-CON-P1-4920, SDR-ST-CON-P3-1310, SDR-ST-CON-P3-1490 → SDR-ST-CON-P1-5180 SS, SDR-ST-CON-P1-4920, SDR-ST-CON-P3-1310 | resources SIC- Cost [13594.4]; Dumper Truck [260 h]; Un-Skilled Labor [28.79 h]; Supervisor [7.2 h]; Skilled Labor [28.79 h] → SIC- Cost [13594.4]; Dumper Truck [260 h]; Un-Skilled Labor [28.49 h]; Supervisor [7.12 h]; Skilled Labor [28.49 h] |
| SDR-ST-CON-P1-5410 | Retroreflective Thermoplastic Yellow, Traffic lines | 2027-04-14 → 2027-04-03 (-11d) | 2027-04-21 → 2027-04-08 (-13d) |  | 8.9d → 2d |  | resources SIC- Cost [9634.84]; Un-Skilled Labor [28.79 h]; Supervisor [7.21 h]; Skilled Labor [28.79 h] → SIC- Cost [9634.84]; Un-Skilled Labor [28.49 h]; Supervisor [7.14 h]; Skilled Labor [28.49 h] |
| SDR-ST-CON-P1-5580 | Ceramic raised pavement markers | 2027-04-21 → 2027-04-10 (-11d) | 2027-04-28 → 2027-04-15 (-13d) |  | 8.9d → 2d |  | resources SIC- Cost [514.74]; Un-Skilled Labor [28.79 h]; Supervisor [7.21 h]; Skilled Labor [28.79 h] → SIC- Cost [514.74]; Un-Skilled Labor [28.49 h]; Supervisor [7.14 h]; Skilled Labor [28.49 h] |
| SDR-ST-CON-P1-5640 | Rumble strip | 2027-04-28 → 2027-04-17 (-11d) | 2027-05-05 → 2027-04-22 (-13d) |  | 8.9d → 2d |  | resources SIC- Cost [651.67]; Un-Skilled Labor [28.79 h]; Supervisor [7.21 h]; Skilled Labor [28.79 h] → SIC- Cost [651.67]; Un-Skilled Labor [28.49 h]; Supervisor [7.14 h]; Skilled Labor [28.49 h] |
| 7 | **Traffic Signage** | 2027-05-05 → 2027-04-24 (-11d) | 2027-05-25 → 2027-05-06 (-19d) |  |  |  |  |
| SDR-ST-CON-P1-5420 | Traffic signs, ground mounted, 1 Sheet Alumenium, (breakaway) Single post, with all accessories | 2027-05-05 → 2027-04-24 (-11d) | 2027-05-12 → 2027-04-29 (-13d) |  | 8.9d → 2d | SDR-ST-CON-P1-5290 SS, SDR-ST-ENG-AP-1080, SDR-ST-CON-P1-5640 → SDR-ST-CON-P1-5290 SS, SDR-ST-CON-P1-5640 | resources SIC- Cost [5681.92]; Dumper Truck [260 h]; Un-Skilled Labor [3059.09 h]; Supervisor [7.2 h]; Skilled Labor [3059.09 h] → SIC- Cost [5681.92]; Dumper Truck [260 h]; Un-Skilled Labor [3026.53 h]; Supervisor [7.12 h]; Skilled Labor [3026.53 h] |
| SDR-ST-CON-P1-5590 | Traffic signs, ground mounted, 1 Sheet Aluminum, (breakaway) Double post, with all accessories | 2027-05-12 → 2027-05-01 (-11d) | 2027-05-25 → 2027-05-06 (-19d) |  | 8.9d → 2d |  | resources SIC- Cost [5929.39]; Un-Skilled Labor [2352.02 h]; Supervisor [7.2 h]; Skilled Labor [2048.99 h] → SIC- Cost [5929.39]; Un-Skilled Labor [2326.98 h]; Supervisor [7.12 h]; Skilled Labor [2027.18 h] |
| 8 | **Speed table** | 2027-05-25 → 2027-05-08 (-17d) | 2027-06-05 → 2027-05-23 (-13d) |  |  |  |  |
| SDR-ST-CON-P1-5430 | Interlock speed table including interlock, flush kerb and marking | 2027-05-25 → 2027-05-08 (-17d) | 2027-06-05 → 2027-05-23 (-13d) |  | 8.9d → 2d | SDR-ST-CON-P1-5410 SS, SDR-ST-ENG-AP-1080, SDR-ST-CON-P1-5590 → SDR-ST-CON-P1-5410 SS, SDR-ST-CON-P1-5590 | resources SIC- Cost [10727.8]; Un-Skilled Labor [57.58 h]; Supervisor [21.59 h]; Skilled Labor [57.58 h] → SIC- Cost [10727.8]; Un-Skilled Labor [56.97 h]; Supervisor [21.36 h]; Skilled Labor [56.97 h] |
| SDR-ST-CON-P1-1060 | Cleaning and removal of organic materials in Zone A |  |  |  |  | SDR-ST-CON-P1-1040 SS+6d, SDR-ST-ENG-AP-1080 → SDR-ST-CON-P1-1040 SS+6d | resources SIC- Cost [4536.95]; Excavator [200 h]; Excavator Operator [143.96 h]; Dumper Operator [143.96 h]; Dumper Truck [608.13 h]; Grader [200 h]; Grader Operator [143.96 h]; Loader [200 h]; Loader Operator [143.96 h]; Un-Skilled Labor [143.96 h]; Supervisor [21.59 h]; Skilled Labor [143.96 h] → SIC- Cost [4536.95]; Excavator [200 h]; Excavator Operator [142.43 h]; Dumper Operator [142.43 h]; Dumper Truck [608.13 h]; Grader [200 h]; Grader Operator [142.43 h]; Loader [200 h]; Loader Operator [142.43 h]; Un-Skilled Labor [142.43 h]; Supervisor [21.36 h]; Skilled Labor [142.43 h] |
| SDR-ST-CON-P1-1130 | Surveying works Zone A |  |  |  |  |  | resources SIC- Cost [2722.17]; Un-Skilled Labor [115.17 h]; Surveyor [115.17 h]; Supervisor [21.59 h] → SIC- Cost [2722.17]; Un-Skilled Labor [113.94 h]; Surveyor [113.94 h]; Supervisor [21.36 h] |
| SDR-ST-CON-P1-1220 | Roadway Excavation and cuttings |  |  |  |  |  | resources SIC- Cost [10888.7]; Excavator [63.85 h]; Excavator Operator [143.96 h]; Dumper Operator [143.96 h]; Dumper Truck [200 h]; Grader [200 h]; Grader Operator [143.96 h]; Loader [200 h]; Loader Operator [143.96 h]; Un-Skilled Labor [143.96 h]; Supervisor [21.59 h]; Skilled Labor [143.96 h] → SIC- Cost [10888.7]; Excavator [63.85 h]; Excavator Operator [142.43 h]; Dumper Operator [142.43 h]; Dumper Truck [200 h]; Grader [200 h]; Grader Operator [142.43 h]; Loader [200 h]; Loader Operator [142.43 h]; Un-Skilled Labor [142.43 h]; Supervisor [21.36 h]; Skilled Labor [142.43 h] |
| SDR-ST-CON-P1-1350 | Embankments to the Road 1 Layer |  |  |  |  | SDR-ST-CON-P1-1220 FF → SDR-ST-CON-P1-1220 | resources SIC- Cost [177354]; Compactor [200 h]; Excavator [15 h]; Excavator Operator [143.96 h]; Dumper Operator [143.96 h]; Dumper Truck [2780 h]; Grader [200 h]; Grader Operator [143.96 h]; Loader [200 h]; Loader Operator [143.96 h]; Un-Skilled Labor [38.39 h]; Supervisor [28.79 h]; Skilled Labor [38.39 h]; Water Tanker [200 h] → SIC- Cost [177354]; Compactor [200 h]; Excavator [15 h]; Excavator Operator [142.43 h]; Dumper Operator [142.43 h]; Dumper Truck [2780 h]; Grader [200 h]; Grader Operator [142.43 h]; Loader [200 h]; Loader Operator [142.43 h]; Un-Skilled Labor [37.98 h]; Supervisor [28.49 h]; Skilled Labor [37.98 h]; Water Tanker [200 h] |
| SDR-ST-CON-P1-1990 | Embankments to the Road 2 Layer |  |  |  |  | SDR-ST-CON-P1-1350 SS → SDR-ST-CON-P1-1350 | resources SIC- Cost [177354]; Compactor [90 h]; Excavator [20 h]; Excavator Operator [143.96 h]; Dumper Operator [143.96 h]; Dumper Truck [200 h]; Grader [100 h]; Grader Operator [143.96 h]; Loader [94.57 h]; Loader Operator [143.96 h]; Un-Skilled Labor [38.39 h]; Supervisor [21.59 h]; Skilled Labor [38.39 h]; Water Tanker [200 h] → SIC- Cost [177354]; Compactor [90 h]; Excavator [20 h]; Excavator Operator [142.43 h]; Dumper Operator [142.43 h]; Dumper Truck [200 h]; Grader [100 h]; Grader Operator [142.43 h]; Loader [94.57 h]; Loader Operator [142.43 h]; Un-Skilled Labor [37.98 h]; Supervisor [21.36 h]; Skilled Labor [37.98 h]; Water Tanker [200 h] |
| SDR-ST-CON-P1-2730 | Embankments to the Road 3 Layer |  |  |  |  |  | resources SIC- Cost [177354]; Compactor [50 h]; Excavator [15 h]; Excavator Operator [143.96 h]; Dumper Operator [143.96 h]; Dumper Truck [200 h]; Grader [200 h]; Grader Operator [143.96 h]; Loader [50 h]; Loader Operator [143.96 h]; Un-Skilled Labor [38.39 h]; Supervisor [28.79 h]; Skilled Labor [38.39 h]; Water Tanker [200 h] → SIC- Cost [177354]; Compactor [50 h]; Excavator [15 h]; Excavator Operator [142.43 h]; Dumper Operator [142.43 h]; Dumper Truck [200 h]; Grader [200 h]; Grader Operator [142.43 h]; Loader [50 h]; Loader Operator [142.43 h]; Un-Skilled Labor [37.98 h]; Supervisor [28.49 h]; Skilled Labor [37.98 h]; Water Tanker [200 h] |
| SDR-ST-CON-P1-3320 | Embankments to the Road 4 Layer |  |  |  |  |  | resources SIC- Cost [177354]; Compactor [72 h]; Excavator [37 h]; Excavator Operator [143.96 h]; Dumper Operator [143.96 h]; Dumper Truck [150 h]; Grader [150 h]; Grader Operator [143.96 h]; Loader [150 h]; Loader Operator [143.96 h]; Un-Skilled Labor [38.39 h]; Supervisor [21.59 h]; Skilled Labor [38.39 h]; Water Tanker [200 h] → SIC- Cost [177354]; Compactor [72 h]; Excavator [37 h]; Excavator Operator [142.43 h]; Dumper Operator [142.43 h]; Dumper Truck [150 h]; Grader [150 h]; Grader Operator [142.43 h]; Loader [150 h]; Loader Operator [142.43 h]; Un-Skilled Labor [37.98 h]; Supervisor [21.36 h]; Skilled Labor [37.98 h]; Water Tanker [200 h] |
| 11 | **Subgrade** |  | 2026-10-06 → 2026-10-20 (+14d) |  |  |  |  |
| SDR-ST-CON-P1-3740 | Subgrade layer works |  | 2026-10-06 → 2026-10-20 (+14d) | 10% → 50% | 83.8d → 44d |  | resources SIC- Cost [101611]; Compactor [50 h]; Excavator [15 h]; Excavator Operator [143.96 h]; Dumper Operator [143.96 h]; Dumper Truck [150 h]; Grader [100 h]; Grader Operator [143.96 h]; Loader [150 h]; Loader Operator [143.96 h]; Un-Skilled Labor [38.39 h]; Supervisor [21.59 h]; Skilled Labor [38.39 h]; Water Tanker [150 h]; Water Tanker Operator [143.96 h] → SIC- Cost [101611]; Compactor [50 h]; Excavator [15 h]; Excavator Operator [142.43 h]; Dumper Operator [142.43 h]; Dumper Truck [150 h]; Grader [100 h]; Grader Operator [142.43 h]; Loader [150 h]; Loader Operator [142.43 h]; Un-Skilled Labor [37.98 h]; Supervisor [21.36 h]; Skilled Labor [37.98 h]; Water Tanker [150 h]; Water Tanker Operator [142.43 h] |
| 2 | **Base Course** | 2026-10-07 → 2026-10-21 (+14d) | 2026-10-14 → 2026-10-28 (+14d) |  |  |  |  |
| SDR-ST-CON-P1-4290 | Aggregate base course layer | 2026-10-07 → 2026-10-21 (+14d) | 2026-10-14 → 2026-10-28 (+14d) |  | 83.8d → 44d |  | resources SIC- Cost [122362]; Compactor [69.15 h]; Dumper Operator [134.36 h]; Dumper Truck [140 h]; Grader [103.87 h]; Grader Operator [134.36 h]; Loader [140 h]; Loader Operator [134.36 h]; Un-Skilled Labor [38.39 h]; Supervisor [21.59 h]; Skilled Labor [38.39 h]; Water Tanker [140 h]; Water Tanker Operator [134.36 h] → SIC- Cost [122362]; Compactor [69.15 h]; Dumper Operator [132.93 h]; Dumper Truck [140 h]; Grader [103.87 h]; Grader Operator [132.93 h]; Loader [140 h]; Loader Operator [132.93 h]; Un-Skilled Labor [37.98 h]; Supervisor [21.36 h]; Skilled Labor [37.98 h]; Water Tanker [140 h]; Water Tanker Operator [132.93 h] |
| 3 | **Asphalt Works** | 2026-10-15 → 2026-10-29 (+14d) | 2026-11-21 → 2026-12-05 (+14d) |  |  |  |  |

| ID | Task | Start | Finish | Duration | Total float | Predecessors | Other |
| --- | --- | --- | --- | --- | --- | --- | --- |
| 1 | **Bituminous base course** | 2026-10-15 → 2026-10-29 (+14d) | 2026-10-25 → 2026-11-08 (+14d) |  |  |  |  |
| SDR-ST-CON-P1-4650 | Bituminous base course (Grading I - Class A 1st Layer with MC-01 | 2026-10-15 → 2026-10-29 (+14d) | 2026-10-20 → 2026-11-03 (+14d) |  | 83.8d → 44d |  | was named Bituminous base course (Grading I - Class A 1st Layer with RC-01; resources SIC- Cost [364195]; Compactor [50 h]; Dumper Operator [129.56 h]; Dumper Truck [180 h]; Supervisor [21.59 h]; Sweeper Machine [30 h]; Sweeper Machine Operator [129.56 h]; Pneumatic Tire Roller [30 h]; Pneumatic Roller Operator [129.56 h]; Asphalt Paver [30 h]; Asphalt Paver Operator [129.56 h] → SIC- Cost [364195]; Compactor [50 h]; Dumper Operator [128.18 h]; Dumper Truck [180 h]; Supervisor [21.36 h]; Sweeper Machine [30 h]; Sweeper Machine Operator [128.18 h]; Pneumatic Tire Roller [30 h]; Pneumatic Roller Operator [128.18 h]; Asphalt Paver [30 h]; Asphalt Paver Operator [128.18 h] |
| SDR-ST-CON-P1-4980 | Bituminous base course (Grading I - Class A 2nd layer with RC-02 | 2026-10-21 → 2026-11-04 (+14d) | 2026-10-25 → 2026-11-08 (+14d) |  | 83.8d → 44d |  | resources SIC- Cost [364195]; Compactor [50 h]; Dumper Operator [129.56 h]; Dumper Truck [180 h]; Supervisor [21.59 h]; Sweeper Machine [30 h]; Sweeper Machine Operator [129.56 h]; Pneumatic Tire Roller [90 h]; Pneumatic Roller Operator [129.56 h]; Asphalt Paver [30 h]; Asphalt Paver Operator [129.56 h] → SIC- Cost [364195]; Compactor [50 h]; Dumper Operator [128.18 h]; Dumper Truck [180 h]; Supervisor [21.36 h]; Sweeper Machine [30 h]; Sweeper Machine Operator [128.18 h]; Pneumatic Tire Roller [90 h]; Pneumatic Roller Operator [128.18 h]; Asphalt Paver [30 h]; Asphalt Paver Operator [128.18 h] |
| 2 | **Bituminous concrete wearing course** | 2026-10-28 → 2026-11-11 (+14d) | 2026-11-21 → 2026-12-05 (+14d) |  |  |  |  |
| SDR-ST-CON-P1-5230 | Bituminous concrete wearing course, (Grading I - Class A), including tack coat (RC2) | 2026-10-28 → 2026-11-11 (+14d) | 2026-11-21 → 2026-12-05 (+14d) |  | 83.8d → 44d |  | resources SIC- Cost [256255]; Compactor [50 h]; Dumper Operator [129.56 h]; Dumper Truck [80 h]; Supervisor [21.59 h]; Sweeper Machine [30 h]; Sweeper Machine Operator [129.56 h]; Pneumatic Tire Roller [58.5 h]; Pneumatic Roller Operator [129.56 h]; Asphalt Paver [30 h]; Asphalt Paver Operator [129.56 h] → SIC- Cost [256255]; Compactor [50 h]; Dumper Operator [128.18 h]; Dumper Truck [80 h]; Supervisor [21.36 h]; Sweeper Machine [30 h]; Sweeper Machine Operator [128.18 h]; Pneumatic Tire Roller [58.5 h]; Pneumatic Roller Operator [128.18 h]; Asphalt Paver [30 h]; Asphalt Paver Operator [128.18 h] |
| 4 | **Kerbstone Installation** | 2026-10-07 → 2026-12-12 (+66d) | 2026-11-26 → 2027-01-31 (+66d) |  |  |  |  |
| SDR-ST-CON-P1-4300 | Precast Concrete Curbstone, Type A2 | 2026-10-07 → 2026-12-12 (+66d) | 2026-10-29 → 2027-01-03 (+66d) |  | 83.8d → 2d | SDR-ST-CON-P1-3740 → SDR-ST-CON-P1-3740, SDR-ST-PRO-MS-1100 | resources SIC- Cost [101191]; Un-Skilled Labor [129.56 h]; Supervisor [28.85 h]; Skilled Labor [129.56 h] → SIC- Cost [101191]; Un-Skilled Labor [128.18 h]; Supervisor [28.54 h]; Skilled Labor [128.18 h] |
| SDR-ST-CON-P1-4860 | Precast Concrete Curbstone, Type D | 2026-11-04 → 2027-01-09 (+66d) | 2026-11-26 → 2027-01-31 (+66d) |  | 83.8d → 2d | SDR-ST-CON-P1-4300 FS+4d → SDR-ST-CON-P1-4300 FS+4d, SDR-ST-PRO-MS-1100 | resources SIC- Cost [49508.1]; Un-Skilled Labor [129.56 h]; Supervisor [28.85 h]; Skilled Labor [129.56 h] → SIC- Cost [49508.1]; Un-Skilled Labor [128.18 h]; Supervisor [28.54 h]; Skilled Labor [128.18 h] |
| 5 | **Interlock Installation** | 2026-11-29 → 2027-02-01 (+64d) | 2027-01-13 → 2027-03-24 (+70d) |  |  |  |  |
| SDR-ST-CON-P1-4450 | Interlock Installation Part 1 | 2026-11-29 → 2027-02-01 (+64d) | 2026-12-21 → 2027-02-24 (+65d) |  | 82.8d → 2d | SDR-ST-CON-P1-4300 SS, SDR-ST-ENG-AP-1080, SDR-ST-CON-P1-4860, SDR-ST-CON-P1-5180 → SDR-ST-CON-P1-4300 SS, SDR-ST-CON-P1-4860, SDR-ST-CON-P1-5180 | resources SIC- Cost [149596]; Un-Skilled Labor [40.4 h]; Supervisor [28.85 h]; Skilled Labor [40.4 h] → SIC- Cost [149596]; Un-Skilled Labor [39.97 h]; Supervisor [28.54 h]; Skilled Labor [39.97 h] |
| SDR-ST-CON-P1-4940 | Interlock Installation Part 2 | 2026-12-22 → 2027-02-25 (+65d) | 2027-01-13 → 2027-03-24 (+70d) |  | 82.8d → 2d |  | resources SIC- Cost [149596]; Un-Skilled Labor [4053.19 h]; Supervisor [28.85 h]; Skilled Labor [4053.19 h] → SIC- Cost [149596]; Un-Skilled Labor [4010.05 h]; Supervisor [28.54 h]; Skilled Labor [4010.05 h] |
| 6 | **Road Marking** | 2027-04-29 → 2027-03-25 (-35d) | 2027-06-02 → 2027-04-21 (-42d) |  |  |  |  |
| SDR-ST-CON-P1-5350 | Retroreflective Thermoplastic White Traffic lines | 2027-04-29 → 2027-03-25 (-35d) | 2027-05-06 → 2027-03-31 (-36d) |  | 6.6d → 2d | SDR-ST-CON-P1-5230 SS, SDR-ST-ENG-AP-1080, SDR-ST-CON-P1-4940, SDR-ST-CON-P1-5750, SDR-ST-CON-P1-6070 → SDR-ST-CON-P1-5230 SS, SDR-ST-CON-P1-4940, SDR-ST-CON-P1-5750, SDR-ST-CON-P1-6070 | resources SIC- Cost [13594.4]; Un-Skilled Labor [28.79 h]; Supervisor [7.21 h]; Skilled Labor [28.79 h] → SIC- Cost [13594.4]; Un-Skilled Labor [28.49 h]; Supervisor [7.14 h]; Skilled Labor [28.49 h] |
| SDR-ST-CON-P1-5510 | Retroreflective Thermoplastic Yellow, Traffic lines | 2027-05-06 → 2027-04-01 (-35d) | 2027-05-13 → 2027-04-07 (-36d) |  | 6.6d → 2d |  | resources SIC- Cost [9634.84]; Un-Skilled Labor [28.79 h]; Supervisor [7.21 h]; Skilled Labor [28.79 h] → SIC- Cost [9634.84]; Un-Skilled Labor [28.49 h]; Supervisor [7.14 h]; Skilled Labor [28.49 h] |
| SDR-ST-CON-P1-5600 | Ceramic raised pavement markers | 2027-05-13 → 2027-04-08 (-35d) | 2027-05-26 → 2027-04-14 (-42d) |  | 6.6d → 2d |  | resources SIC- Cost [514.74]; Un-Skilled Labor [28.79 h]; Supervisor [7.21 h]; Skilled Labor [28.79 h] → SIC- Cost [514.74]; Un-Skilled Labor [28.49 h]; Supervisor [7.14 h]; Skilled Labor [28.49 h] |
| SDR-ST-CON-P1-5650 | Rumble strip | 2027-05-26 → 2027-04-15 (-41d) | 2027-06-02 → 2027-04-21 (-42d) |  | 6.6d → 2d | SDR-ST-CON-P1-5600, SDR-ST-PRO-MS-1190 FF → SDR-ST-CON-P1-5600 | resources SIC- Cost [651.67]; Un-Skilled Labor [28.79 h]; Supervisor [7.21 h]; Skilled Labor [28.79 h] → SIC- Cost [651.67]; Un-Skilled Labor [28.49 h]; Supervisor [7.14 h]; Skilled Labor [28.49 h] |
| 7 | **Traffic Signage** | 2027-06-02 → 2027-04-22 (-41d) | 2027-06-20 → 2027-05-09 (-42d) |  |  |  |  |
| SDR-ST-CON-P1-5360 | Traffic signs, ground mounted, 1 Sheet Alumenium, (breakaway) Single post, with all accessories | 2027-06-02 → 2027-04-22 (-41d) | 2027-06-08 → 2027-04-27 (-42d) |  | 6.6d → 2d | SDR-ST-CON-P1-5350 SS, SDR-ST-ENG-AP-1080, SDR-ST-CON-P1-5650 → SDR-ST-CON-P1-5350 SS, SDR-ST-CON-P1-5650 | resources SIC- Cost [5681.92]; Un-Skilled Labor [28.79 h]; Supervisor [7.2 h]; Skilled Labor [28.79 h] → SIC- Cost [5681.92]; Un-Skilled Labor [28.49 h]; Supervisor [7.12 h]; Skilled Labor [28.49 h] |
| SDR-ST-CON-P1-5520 | Traffic signs, ground mounted, 1 Sheet Aluminum, (breakaway) Double post, with all accessories | 2027-06-08 → 2027-04-28 (-41d) | 2027-06-14 → 2027-05-03 (-42d) |  | 6.6d → 2d |  | resources SIC- Cost [5929.39]; Un-Skilled Labor [28.79 h]; Supervisor [7.2 h]; Skilled Labor [28.79 h] → SIC- Cost [5929.39]; Un-Skilled Labor [28.49 h]; Supervisor [7.12 h]; Skilled Labor [28.49 h] |
| SDR-ST-CON-P1-5660 | Traffic signs, ground mounted, 2 Sheet Aluminum, (breakaway) Single post, with all accessories | 2027-06-14 → 2027-05-04 (-41d) | 2027-06-20 → 2027-05-09 (-42d) |  | 6.6d → 2d |  | resources SIC- Cost [2470.58]; Un-Skilled Labor [28.79 h]; Supervisor [7.2 h]; Skilled Labor [28.79 h] → SIC- Cost [2470.58]; Un-Skilled Labor [28.49 h]; Supervisor [7.12 h]; Skilled Labor [28.49 h] |
| 8 | **Speed table** | 2027-06-16 → 2027-05-10 (-37d) | 2027-06-27 → 2027-05-15 (-43d) |  |  |  |  |
| SDR-ST-CON-P1-5530 | Interlock speed table including interlock, flush kerb and marking | 2027-06-16 → 2027-05-10 (-37d) | 2027-06-27 → 2027-05-15 (-43d) | 9d → 5d | 0.5d → 2d | SDR-ST-CON-P1-5350, SDR-ST-CON-P1-5660 FF, SDR-ST-CON-P1-5620 FF, SDR-ST-CON-P1-5460 FF → SDR-ST-CON-P1-5350, SDR-ST-CON-P1-5660, SDR-ST-CON-P1-5620, SDR-ST-CON-P1-5460 SS | resources SIC- Cost [10727.8]; Compactor [260 h]; Dumper Truck [260 h]; Un-Skilled Labor [57.58 h]; Supervisor [7.2 h]; Skilled Labor [57.58 h] → SIC- Cost [10727.8]; Compactor [260 h]; Dumper Truck [260 h]; Un-Skilled Labor [6359.17 h]; Supervisor [7.12 h]; Skilled Labor [6359.17 h] |
| 12 | **ELECTRICAL WORKS** |  | 2027-08-02 → 2027-07-22 (-11d) |  |  |  |  |
| 2 | **MV Network** | 2026-09-28 → 2026-10-12 (+14d) | 2027-06-06 → 2027-05-25 (-12d) |  |  |  |  |
| 5 | **ROAD - 01** | 2026-09-28 → 2026-10-12 (+14d) | 2027-06-05 → 2027-05-25 (-11d) |  |  |  |  |
| 4 | **ROAD-01 From 1125 to 1765 m (7)** | 2026-09-28 → 2026-10-12 (+14d) | 2027-04-08 → 2027-03-27 (-12d) |  |  |  |  |
| 6 | **Excavation** | 2026-09-28 → 2026-10-12 (+14d) | 2026-12-09 → 2026-12-23 (+14d) |  |  |  |  |
| SDR-ST-CON-P1-1570 | Excavation Works Part 1 | 2026-09-28 → 2026-10-12 (+14d) | 2026-10-21 → 2026-11-04 (+14d) |  | 33.8d → 13d |  | resources SIC- Cost [22541.3]; Electrical Forman [151.16 h]; Electrical Technician [151.16 h]; Electrical Helper [151.16 h]; Labor [38.39 h]; Excavator [26.38 h]; Excavator Operator [151.16 h] → SIC- Cost [22541.3]; Electrical Forman [149.55 h]; Electrical Technician [149.55 h]; Electrical Helper [149.55 h]; Labor [37.98 h]; Excavator [26.38 h]; Excavator Operator [149.55 h] |
| SDR-ST-CON-P1-6090 | Excavation Works Part 2 | 2026-10-22 → 2026-11-05 (+14d) | 2026-11-15 → 2026-11-29 (+14d) |  | 88.5d → 37d |  | resources SIC- Cost; Electrical Forman [151.16 h]; Electrical Technician [151.16 h]; Electrical Helper [151.16 h]; Labor [38.39 h]; Excavator [26.38 h]; Excavator Operator [151.16 h] → SIC- Cost; Electrical Forman [149.55 h]; Electrical Technician [149.55 h]; Electrical Helper [149.55 h]; Labor [37.98 h]; Excavator [26.38 h]; Excavator Operator [149.55 h] |
| SDR-ST-CON-P1-6100 | Excavation Works Part 3 | 2026-11-16 → 2026-11-30 (+14d) | 2026-12-09 → 2026-12-23 (+14d) |  | 88.5d → 37d |  | resources SIC- Cost; Electrical Forman [151.16 h]; Electrical Technician [151.16 h]; Electrical Helper [151.16 h]; Labor [38.39 h]; Excavator [26.38 h]; Excavator Operator [151.16 h] → SIC- Cost; Electrical Forman [149.55 h]; Electrical Technician [149.55 h]; Electrical Helper [149.55 h]; Labor [37.98 h]; Excavator [26.38 h]; Excavator Operator [149.55 h] |
| 7 | **Pipe laying** | 2026-12-10 → 2026-12-24 (+14d) | 2027-01-03 → 2027-01-17 (+14d) |  |  |  |  |
| SDR-ST-CON-P1-2270 | Pipe Laying | 2026-12-10 → 2026-12-24 (+14d) | 2027-01-03 → 2027-01-17 (+14d) |  | 88.5d → 37d | SDR-ST-CON-P1-6100 → SDR-ST-CON-P1-6100, SDR-ST-PRO-MS-1210 | resources SIC- Cost [45082.6]; Electrical Forman [40.4 h]; Electrical Technician [40.4 h]; Electrical Helper [40.4 h]; Labor [38.39 h] → SIC- Cost [45082.6]; Electrical Forman [39.97 h]; Electrical Technician [39.97 h]; Electrical Helper [39.97 h]; Labor [37.98 h] |
| 8 | **Backfilling** | 2027-02-03 → 2027-01-18 (-16d) | 2027-03-15 → 2027-02-09 (-34d) |  |  |  |  |
| SDR-ST-CON-P1-3000 | Backfilling Works | 2027-02-03 → 2027-01-18 (-16d) | 2027-03-15 → 2027-02-09 (-34d) |  | 62.5d → 37d | SDR-ST-CON-P1-2270, SDR-ST-CON-P1-4660 → SDR-ST-CON-P1-2270, SDR-ST-CON-P1-4660, SDR-ST-PRO-MS-1050 | resources SIC- Cost [22541.3]; Electrical Forman [151.16 h]; Electrical Technician [151.16 h]; Electrical Helper [151.16 h]; Labor [151.16 h]; Excavator [30 h]; Excavator Operator [151.16 h] → SIC- Cost [22541.3]; Electrical Forman [149.55 h]; Electrical Technician [149.55 h]; Electrical Helper [149.55 h]; Labor [149.55 h]; Excavator [30 h]; Excavator Operator [149.55 h] |
| 9 | **Pulling Cable** | 2027-03-15 → 2027-02-25 (-18d) | 2027-04-08 → 2027-03-27 (-12d) |  |  |  |  |
| SDR-ST-CON-P1-3900 | Pulling Cable | 2027-03-15 → 2027-02-25 (-18d) | 2027-04-08 → 2027-03-27 (-12d) | 21.3d → 21d | 62.5d → 24.2d | SDR-ST-CON-P1-2270, SDR-ST-CON-P1-3000 → SDR-ST-CON-P1-2270, SDR-ST-CON-P1-3000, SDR-ST-PRO-MS-1220 | resources SIC- Cost [135248]; Electrical Forman [151.16 h]; Electrical Technician [2373.38 h]; Electrical Helper [2373.38 h]; Labor [5080.85 h] → SIC- Cost [135248]; Electrical Forman [149.55 h]; Electrical Technician [2348.12 h]; Electrical Helper [2348.12 h]; Labor [5026.77 h] |
| 3 | **ROAD-01 From 470 to 1125 m (6)** | 2026-10-06 → 2026-10-20 (+14d) | 2027-04-07 → 2027-03-25 (-13d) |  |  |  |  |
| 6 | **Excavation** | 2026-10-06 → 2026-10-20 (+14d) | 2026-12-14 → 2026-12-28 (+14d) |  |  |  |  |
| SDR-ST-CON-P1-1720 | Excavation Works Part 1 | 2026-10-06 → 2026-10-20 (+14d) | 2026-10-29 → 2026-11-12 (+14d) |  | 33.8d → 13d |  | resources SIC- Cost [22541.3]; Electrical Forman [151.16 h]; Electrical Technician [151.16 h]; Electrical Helper [151.16 h]; Labor [151.16 h]; Excavator [30 h]; Excavator Operator [151.16 h] → SIC- Cost [22541.3]; Electrical Forman [149.55 h]; Electrical Technician [149.55 h]; Electrical Helper [149.55 h]; Labor [149.55 h]; Excavator [30 h]; Excavator Operator [149.55 h] |
| SDR-ST-CON-P1-6110 | Excavation Works Part2 | 2026-10-31 → 2026-11-14 (+14d) | 2026-11-23 → 2026-12-07 (+14d) |  | 33.8d → 29d |  | resources SIC- Cost; Electrical Forman [151.16 h]; Electrical Technician [151.16 h]; Electrical Helper [151.16 h]; Labor [151.16 h]; Excavator [30 h]; Excavator Operator [151.16 h] → SIC- Cost; Electrical Forman [149.55 h]; Electrical Technician [149.55 h]; Electrical Helper [149.55 h]; Labor [149.55 h]; Excavator [30 h]; Excavator Operator [149.55 h] |
| SDR-ST-CON-P1-6120 | Excavation Works Part 3 | 2026-11-24 → 2026-12-08 (+14d) | 2026-12-14 → 2026-12-28 (+14d) |  | 33.8d → 29d |  | resources SIC- Cost; Electrical Forman [151.16 h]; Electrical Technician [151.16 h]; Electrical Helper [151.16 h]; Labor [151.16 h]; Excavator [30 h]; Excavator Operator [151.16 h] → SIC- Cost; Electrical Forman [149.55 h]; Electrical Technician [149.55 h]; Electrical Helper [149.55 h]; Labor [149.55 h]; Excavator [30 h]; Excavator Operator [149.55 h] |
| 7 | **Pipe laying** | 2026-12-15 → 2026-12-29 (+14d) | 2027-01-07 → 2027-01-21 (+14d) |  |  |  |  |
| SDR-ST-CON-P1-2420 | Pipe Laying | 2026-12-15 → 2026-12-29 (+14d) | 2027-01-07 → 2027-01-21 (+14d) |  | 33.8d → 29d | SDR-ST-CON-P1-6120 → SDR-ST-CON-P1-6120, SDR-ST-PRO-MS-1210 | resources SIC- Cost [45082.6]; Electrical Forman [143.96 h]; Electrical Technician [143.96 h]; Electrical Helper [143.96 h]; Labor [38.39 h] → SIC- Cost [45082.6]; Electrical Forman [142.43 h]; Electrical Technician [142.43 h]; Electrical Helper [142.43 h]; Labor [37.98 h] |
| 8 | **Backfilling** | 2027-02-03 → 2027-01-23 (-11d) | 2027-03-15 → 2027-02-14 (-29d) |  |  |  |  |
| SDR-ST-CON-P1-3150 | Backfilling Works | 2027-02-03 → 2027-01-23 (-11d) | 2027-03-15 → 2027-02-14 (-29d) |  | 11.8d → 29d |  | resources SIC- Cost [22541.3]; Electrical Forman [38.39 h]; Electrical Technician [151.16 h]; Electrical Helper [151.16 h]; Labor [38.39 h]; Excavator [20.25 h]; Excavator Operator [151.16 h] → SIC- Cost [22541.3]; Electrical Forman [37.98 h]; Electrical Technician [149.55 h]; Electrical Helper [149.55 h]; Labor [37.98 h]; Excavator [20.25 h]; Excavator Operator [149.55 h] |
| 9 | **Pulling Cable** | 2027-03-15 → 2027-02-25 (-18d) | 2027-04-07 → 2027-03-25 (-13d) |  |  |  |  |
| SDR-ST-CON-P1-4000 | Pulling Cable | 2027-03-15 → 2027-02-25 (-18d) | 2027-04-07 → 2027-03-25 (-13d) |  | 11.8d → 20.2d | SDR-ST-CON-P1-2420, SDR-ST-CON-P1-3150 → SDR-ST-CON-P1-2420, SDR-ST-CON-P1-3150, SDR-ST-PRO-MS-1220 | resources SIC- Cost [135248]; Electrical Forman [151.16 h]; Electrical Technician [3068.73 h]; Electrical Helper [151.16 h]; Labor [151.16 h] → SIC- Cost [135248]; Electrical Forman [149.55 h]; Electrical Technician [3036.07 h]; Electrical Helper [149.55 h]; Labor [149.55 h] |
| 2 | **ROAD-01 N 03** | 2026-10-14 → 2026-10-28 (+14d) | 2027-05-30 → 2027-05-25 (-5d) |  |  |  |  |
| 6 | **Excavation** | 2026-10-14 → 2026-10-28 (+14d) | 2026-12-22 → 2027-01-05 (+14d) |  |  |  |  |
| SDR-ST-CON-P1-1770 | Excavation Works Part 1 | 2026-10-14 → 2026-10-28 (+14d) | 2026-11-07 → 2026-11-21 (+14d) |  | 52.8d → 13d |  | resources SIC- Cost [22541.3]; Electrical Forman [38.39 h]; Electrical Technician [151.16 h]; Electrical Helper [151.16 h]; Labor [38.39 h]; Excavator [30 h]; Excavator Operator [143.96 h] → SIC- Cost [22541.3]; Electrical Forman [37.98 h]; Electrical Technician [149.55 h]; Electrical Helper [149.55 h]; Labor [37.98 h]; Excavator [30 h]; Excavator Operator [142.43 h] |
| SDR-ST-CON-P1-6130 | Excavation Works Part 2 | 2026-11-08 → 2026-11-22 (+14d) | 2026-12-01 → 2026-12-15 (+14d) |  | 95.7d → 21d |  | resources SIC- Cost; Electrical Forman [38.39 h]; Electrical Technician [151.16 h]; Electrical Helper [151.16 h]; Labor [38.39 h]; Excavator [30 h]; Excavator Operator [143.96 h] → SIC- Cost; Electrical Forman [37.98 h]; Electrical Technician [149.55 h]; Electrical Helper [149.55 h]; Labor [37.98 h]; Excavator [30 h]; Excavator Operator [142.43 h] |
| SDR-ST-CON-P1-6140 | Excavation Works Part 3 | 2026-12-02 → 2026-12-16 (+14d) | 2026-12-22 → 2027-01-05 (+14d) |  | 95.7d → 21d |  | resources SIC- Cost; Electrical Forman [38.39 h]; Electrical Technician [151.16 h]; Electrical Helper [151.16 h]; Labor [38.39 h]; Excavator [30 h]; Excavator Operator [143.96 h] → SIC- Cost; Electrical Forman [37.98 h]; Electrical Technician [149.55 h]; Electrical Helper [149.55 h]; Labor [37.98 h]; Excavator [30 h]; Excavator Operator [142.43 h] |
| 7 | **Pipe laying** | 2026-12-23 → 2027-01-06 (+14d) | 2027-01-16 → 2027-01-30 (+14d) |  |  |  |  |
| SDR-ST-CON-P1-2500 | Pipe Laying | 2026-12-23 → 2027-01-06 (+14d) | 2027-01-16 → 2027-01-30 (+14d) |  | 95.7d → 21d | SDR-ST-CON-P1-6140 → SDR-ST-CON-P1-6140, SDR-ST-PRO-MS-1210 | resources SIC- Cost [45082.6]; Electrical Forman [151.16 h]; Electrical Technician [151.16 h]; Electrical Helper [151.16 h]; Labor [38.39 h] → SIC- Cost [45082.6]; Electrical Forman [149.55 h]; Electrical Technician [149.55 h]; Electrical Helper [149.55 h]; Labor [37.98 h] |
| 8 | **Backfilling** | 2027-04-07 → 2027-04-03 (-4d) | 2027-05-01 → 2027-04-25 (-6d) |  |  |  |  |
| SDR-ST-CON-P1-3280 | Backfilling Works | 2027-04-07 → 2027-04-03 (-4d) | 2027-05-01 → 2027-04-25 (-6d) |  | 40.8d → 2.9d |  | resources SIC- Cost [22541.3]; Electrical Forman [151.16 h]; Electrical Technician [151.16 h]; Electrical Helper [151.16 h]; Compactor [600 h]; Labor [151.16 h]; Excavator [15 h]; Excavator Operator [151.16 h] → SIC- Cost [22541.3]; Electrical Forman [149.55 h]; Electrical Technician [149.55 h]; Electrical Helper [149.55 h]; Compactor [600 h]; Labor [149.55 h]; Excavator [15 h]; Excavator Operator [149.55 h] |
| 9 | **Pulling Cable** | 2027-05-01 → 2027-04-26 (-5d) | 2027-05-30 → 2027-05-25 (-5d) |  |  |  |  |
| SDR-ST-CON-P1-4250 | Pulling Cable | 2027-05-01 → 2027-04-26 (-5d) | 2027-05-30 → 2027-05-25 (-5d) |  | 40.8d → 2.9d | SDR-ST-CON-P1-2500, SDR-ST-CON-P1-3280 → SDR-ST-CON-P1-2500, SDR-ST-CON-P1-3280, SDR-ST-PRO-MS-1220 | resources SIC- Cost [135248]; Electrical Forman [97.38 h]; Electrical Technician [2018.96 h]; Electrical Helper [97.38 h]; Compactor [520 h]; Labor [97.38 h] → SIC- Cost [135248]; Electrical Forman [96.35 h]; Electrical Technician [1997.47 h]; Electrical Helper [96.35 h]; Compactor [520 h]; Labor [96.35 h] |
| 1 | **ROAD-01 N 01** | 2026-10-22 → 2026-11-05 (+14d) | 2027-06-05 → 2027-05-05 (-31d) |  |  |  |  |
| 6 | **Excavation** | 2026-10-22 → 2026-11-05 (+14d) | 2027-03-24 → 2027-02-23 (-29d) |  |  |  |  |
| SDR-ST-CON-P1-1730 | Excavation Works Part 1 | 2026-10-22 → 2026-11-05 (+14d) | 2026-11-15 → 2026-11-29 (+14d) |  | 52.8d → 13d | SDR-ST-ENG-AP-1080, SDR-ST-CON-P1-1770 SS+7d → SDR-ST-CON-P1-1770 SS+7d | resources SIC- Cost [22541.3]; Electrical Forman [38.39 h]; Electrical Technician [97.38 h]; Electrical Helper [97.38 h]; Labor [38.39 h]; Excavator [16 h]; Excavator Operator [15.36 h] → SIC- Cost [22541.3]; Electrical Forman [37.98 h]; Electrical Technician [96.35 h]; Electrical Helper [96.35 h]; Labor [37.98 h]; Excavator [16 h]; Excavator Operator [15.19 h] |
| SDR-ST-CON-P1-6150 | Excavation Works Part 2 | 2027-01-21 → 2027-01-14 (-7d) | 2027-02-17 → 2027-01-31 (-17d) | 20d → 15d | 20.6d → 7d |  | resources SIC- Cost; Electrical Forman [38.39 h]; Electrical Technician [97.38 h]; Electrical Helper [97.38 h]; Labor [38.39 h]; Excavator [16 h]; Excavator Operator [15.36 h] → SIC- Cost; Electrical Forman [37.98 h]; Electrical Technician [96.35 h]; Electrical Helper [96.35 h]; Labor [37.98 h]; Excavator [16 h]; Excavator Operator [15.19 h] |
| SDR-ST-CON-P1-6160 | Excavation Works Part 3 | 2027-02-17 → 2027-02-01 (-16d) | 2027-03-24 → 2027-02-23 (-29d) |  | 20.6d → 7d |  | resources SIC- Cost; Electrical Forman [38.39 h]; Electrical Technician [97.38 h]; Electrical Helper [97.38 h]; Labor [38.39 h]; Excavator [16 h]; Excavator Operator [15.36 h] → SIC- Cost; Electrical Forman [37.98 h]; Electrical Technician [96.35 h]; Electrical Helper [96.35 h]; Labor [37.98 h]; Excavator [16 h]; Excavator Operator [15.19 h] |
| 7 | **Pipe laying** | 2027-03-24 → 2027-02-24 (-28d) | 2027-04-17 → 2027-03-23 (-25d) |  |  |  |  |
| SDR-ST-CON-P1-2430 | Pipe Laying | 2027-03-24 → 2027-02-24 (-28d) | 2027-04-17 → 2027-03-23 (-25d) |  | 20.6d → 7d | SDR-ST-CON-P1-6160, SDR-ST-CON-P1-4640 → SDR-ST-CON-P1-6160, SDR-ST-CON-P1-4640, SDR-ST-PRO-MS-1210 | resources SIC- Cost [45082.6]; Electrical Forman [38.39 h]; Electrical Technician [97.38 h]; Electrical Helper [97.38 h]; Labor [38.39 h] → SIC- Cost [45082.6]; Electrical Forman [37.98 h]; Electrical Technician [96.35 h]; Electrical Helper [96.35 h]; Labor [37.98 h] |
| 8 | **Backfilling** | 2027-04-17 → 2027-03-24 (-24d) | 2027-05-09 → 2027-04-14 (-25d) |  |  |  |  |
| SDR-ST-CON-P1-3160 | Backfilling Works | 2027-04-17 → 2027-03-24 (-24d) | 2027-05-09 → 2027-04-14 (-25d) |  | 20.6d → 14d |  | resources SIC- Cost [22541.3]; Electrical Forman [38.39 h]; Electrical Technician [97.38 h]; Electrical Helper [96.93 h]; Labor [97.38 h]; Excavator [12 h]; Excavator Operator [97.38 h] → SIC- Cost [22541.3]; Electrical Forman [37.98 h]; Electrical Technician [96.35 h]; Electrical Helper [95.9 h]; Labor [96.35 h]; Excavator [12 h]; Excavator Operator [96.35 h] |
| 9 | **Pulling Cable** | 2027-05-09 → 2027-04-15 (-24d) | 2027-06-05 → 2027-05-05 (-31d) |  |  |  |  |
| SDR-ST-CON-P1-4010 | Pulling Cable | 2027-05-09 → 2027-04-15 (-24d) | 2027-06-05 → 2027-05-05 (-31d) |  | 20.6d → 14d | SDR-ST-CON-P1-2430, SDR-ST-CON-P1-3160, SDR-ST-CON-P1-4910, SDR-ST-CON-P1-4520 → SDR-ST-CON-P1-2430, SDR-ST-CON-P1-3160, SDR-ST-CON-P1-4910, SDR-ST-CON-P1-4520, SDR-ST-PRO-MS-1220 | resources SIC- Cost [135248]; Electrical Forman [38.39 h]; Electrical Technician [2018.96 h]; Electrical Helper [97.38 h]; Labor [38.39 h] → SIC- Cost [135248]; Electrical Forman [37.98 h]; Electrical Technician [1997.47 h]; Electrical Helper [96.35 h]; Labor [37.98 h] |
| 6 | **ROAD - 02** | 2026-10-31 → 2026-11-14 (+14d) | 2027-06-06 → 2027-05-06 (-31d) |  |  |  |  |

| ID | Task | Start | Finish | Duration | Complete | Total float | Predecessors | Other |
| --- | --- | --- | --- | --- | --- | --- | --- | --- |
| 6 | **Excavation** | 2026-10-31 → 2026-11-14 (+14d) | 2027-01-27 → 2027-02-06 (+10d) |  |  |  |  |  |
| SDR-ST-CON-P1-1920 | Excavation Works Part 1 | 2026-10-31 → 2026-11-14 (+14d) | 2026-11-23 → 2026-12-07 (+14d) |  |  | 52.8d → 13d |  | resources SIC- Cost [22541.3]; Electrical Forman [38.39 h]; Electrical Technician [97.38 h]; Electrical Helper [97.38 h]; Labor [38.39 h]; Excavator [30 h]; Excavator Operator [97.38 h] → SIC- Cost [22541.3]; Electrical Forman [37.98 h]; Electrical Technician [96.35 h]; Electrical Helper [96.35 h]; Labor [37.98 h]; Excavator [30 h]; Excavator Operator [96.35 h] |
| SDR-ST-CON-P1-6170 | Excavation Works Part 2 | 2026-11-24 → 2026-12-08 (+14d) | 2026-12-16 → 2026-12-30 (+14d) |  |  | 58.8d → 24d |  | resources SIC- Cost; Electrical Forman [38.39 h]; Electrical Technician [97.38 h]; Electrical Helper [97.38 h]; Labor [38.39 h]; Excavator [30 h]; Excavator Operator [97.38 h] → SIC- Cost; Electrical Forman [37.98 h]; Electrical Technician [96.35 h]; Electrical Helper [96.35 h]; Labor [37.98 h]; Excavator [30 h]; Excavator Operator [96.35 h] |
| SDR-ST-CON-P1-6180 | Excavation Works Part 3 | 2027-01-06 → 2027-01-16 (+10d) | 2027-01-27 → 2027-02-06 (+10d) |  |  | 41.8d → 11d |  | resources SIC- Cost; Electrical Forman [38.39 h]; Electrical Technician [97.38 h]; Electrical Helper [97.38 h]; Labor [38.39 h]; Excavator [30 h]; Excavator Operator [97.38 h] → SIC- Cost; Electrical Forman [37.98 h]; Electrical Technician [96.35 h]; Electrical Helper [96.35 h]; Labor [37.98 h]; Excavator [30 h]; Excavator Operator [96.35 h] |
| 7 | **Pipe laying** | 2027-03-08 → 2027-02-14 (-22d) | 2027-04-05 → 2027-03-14 (-22d) |  |  |  |  |  |
| SDR-ST-CON-P1-2660 | Pipe Laying | 2027-03-08 → 2027-02-14 (-22d) | 2027-04-05 → 2027-03-14 (-22d) |  |  | 18.8d → 5d | SDR-ST-CON-P1-6180, SDR-ST-CON-P1-4740, SDR-ST-CON-P1-4880 → SDR-ST-CON-P1-6180, SDR-ST-CON-P1-4740, SDR-ST-CON-P1-4880, SDR-ST-PRO-MS-1210 | resources SIC- Cost [45082.6]; Electrical Forman [38.39 h]; Electrical Technician [97.38 h]; Electrical Helper [97.38 h]; Labor [38.39 h] → SIC- Cost [45082.6]; Electrical Forman [37.98 h]; Electrical Technician [96.35 h]; Electrical Helper [96.35 h]; Labor [37.98 h] |
| 8 | **Backfilling** | 2027-04-05 → 2027-03-15 (-21d) | 2027-04-27 → 2027-04-05 (-22d) |  |  |  |  |  |
| SDR-ST-CON-P1-3430 | Backfilling Works | 2027-04-05 → 2027-03-15 (-21d) | 2027-04-27 → 2027-04-05 (-22d) |  |  | 18.8d → 5d |  | resources SIC- Cost [22541.3]; Electrical Forman [38.39 h]; Electrical Technician [97.38 h]; Electrical Helper [96.93 h]; Labor [38.39 h]; Excavator [12 h]; Excavator Operator [97.38 h] → SIC- Cost [22541.3]; Electrical Forman [37.98 h]; Electrical Technician [96.35 h]; Electrical Helper [95.9 h]; Labor [37.98 h]; Excavator [12 h]; Excavator Operator [96.35 h] |
| 9 | **Pulling Cable** | 2027-04-27 → 2027-04-06 (-21d) | 2027-05-24 → 2027-04-26 (-28d) |  |  |  |  |  |
| SDR-ST-CON-P1-4320 | Pulling Cable | 2027-04-27 → 2027-04-06 (-21d) | 2027-05-24 → 2027-04-26 (-28d) |  |  | 18.8d → 5d | SDR-ST-CON-P1-2660, SDR-ST-CON-P1-3430 → SDR-ST-CON-P1-2660, SDR-ST-CON-P1-3430, SDR-ST-PRO-MS-1220 | resources SIC- Cost [135248]; Electrical Forman [97.38 h]; Electrical Technician [97.38 h]; Electrical Helper [97.38 h]; Labor [97.38 h] → SIC- Cost [135248]; Electrical Forman [96.35 h]; Electrical Technician [96.35 h]; Electrical Helper [96.35 h]; Labor [96.35 h] |
| 6 | **Excavation** | 2026-11-08 → 2026-11-22 (+14d) | 2027-03-25 → 2027-02-24 (-29d) |  |  |  |  |  |
| SDR-ST-CON-P1-1840 | Excavation Works Part 1 | 2026-11-08 → 2026-11-22 (+14d) | 2026-12-01 → 2026-12-15 (+14d) |  |  | 52.8d → 13d |  | resources SIC- Cost [22541.3]; Electrical Forman [38.39 h]; Electrical Technician [97.38 h]; Electrical Helper [97.38 h]; Labor [38.39 h]; Excavator [30 h]; Excavator Operator [97.38 h] → SIC- Cost [22541.3]; Electrical Forman [37.98 h]; Electrical Technician [96.35 h]; Electrical Helper [96.35 h]; Labor [37.98 h]; Excavator [30 h]; Excavator Operator [96.35 h] |
| SDR-ST-CON-P1-6190 | Excavation Works Part 2 | 2027-01-21 → 2027-01-14 (-7d) | 2027-02-17 → 2027-01-31 (-17d) | 20d → 15d |  | 24.6d → 7.9d |  | resources SIC- Cost; Electrical Forman [38.39 h]; Electrical Technician [97.38 h]; Electrical Helper [97.38 h]; Labor [38.39 h]; Excavator [30 h]; Excavator Operator [97.38 h] → SIC- Cost; Electrical Forman [37.98 h]; Electrical Technician [96.35 h]; Electrical Helper [96.35 h]; Labor [37.98 h]; Excavator [30 h]; Excavator Operator [96.35 h] |
| SDR-ST-CON-P1-6200 | Excavation Works Part 3 | 2027-02-17 → 2027-02-01 (-16d) | 2027-03-25 → 2027-02-24 (-29d) |  |  | 24.6d → 7.9d |  | resources SIC- Cost; Electrical Forman [38.39 h]; Electrical Technician [97.38 h]; Electrical Helper [97.38 h]; Labor [38.39 h]; Excavator [30 h]; Excavator Operator [97.38 h] → SIC- Cost; Electrical Forman [37.98 h]; Electrical Technician [96.35 h]; Electrical Helper [96.35 h]; Labor [37.98 h]; Excavator [30 h]; Excavator Operator [96.35 h] |
| 7 | **Pipe laying** | 2027-03-25 → 2027-02-25 (-28d) | 2027-04-18 → 2027-03-24 (-25d) |  |  |  |  |  |
| SDR-ST-CON-P1-2590 | Pipe Laying | 2027-03-25 → 2027-02-25 (-28d) | 2027-04-18 → 2027-03-24 (-25d) |  |  | 24.6d → 13d | SDR-ST-CON-P1-1840, SDR-ST-CON-P1-6200, SDR-ST-MILS-1100 FF → SDR-ST-CON-P1-1840, SDR-ST-CON-P1-6200, SDR-ST-PRO-MS-1210 | resources SIC- Cost [45082.6]; Electrical Forman [38.39 h]; Electrical Technician [97.38 h]; Electrical Helper [97.38 h]; Labor [38.39 h] → SIC- Cost [45082.6]; Electrical Forman [37.98 h]; Electrical Technician [96.35 h]; Electrical Helper [96.35 h]; Labor [37.98 h] |
| 8 | **Backfilling** | 2027-04-18 → 2027-03-25 (-24d) | 2027-05-10 → 2027-04-15 (-25d) |  |  |  |  |  |
| SDR-ST-CON-P1-3340 | Backfilling Works | 2027-04-18 → 2027-03-25 (-24d) | 2027-05-10 → 2027-04-15 (-25d) |  |  | 24.6d → 13d |  | resources SIC- Cost [22541.3]; Electrical Forman [38.39 h]; Electrical Technician [97.38 h]; Electrical Helper [96.93 h]; Labor [38.39 h]; Excavator [12 h]; Excavator Operator [11.52 h] → SIC- Cost [22541.3]; Electrical Forman [37.98 h]; Electrical Technician [96.35 h]; Electrical Helper [95.9 h]; Labor [37.98 h]; Excavator [12 h]; Excavator Operator [11.39 h] |
| 9 | **Pulling Cable** | 2027-05-10 → 2027-04-17 (-23d) | 2027-06-06 → 2027-05-06 (-31d) |  |  |  |  |  |
| SDR-ST-CON-P1-4050 | Pulling Cable | 2027-05-10 → 2027-04-17 (-23d) | 2027-06-06 → 2027-05-06 (-31d) |  |  | 24.6d → 13d | SDR-ST-CON-P1-2590, SDR-ST-CON-P1-3340 → SDR-ST-CON-P1-2590, SDR-ST-CON-P1-3340, SDR-ST-PRO-MS-1220 | resources SIC- Cost [135248]; Electrical Forman [97.38 h]; Electrical Technician [97.38 h]; Electrical Helper [97.38 h]; Labor [97.38 h] → SIC- Cost [135248]; Electrical Forman [96.35 h]; Electrical Technician [96.35 h]; Electrical Helper [96.35 h]; Labor [96.35 h] |
| 6 | **Excavation** | 2026-11-16 → 2026-11-30 (+14d) | 2027-01-24 → 2027-02-07 (+14d) |  |  |  |  |  |
| SDR-ST-CON-P1-2000 | Excavation Works Part 1 | 2026-11-16 → 2026-11-30 (+14d) | 2026-12-09 → 2026-12-23 (+14d) |  |  | 52.8d → 13d |  | resources SIC- Cost [22541.3]; Electrical Forman [38.39 h]; Electrical Technician [97.38 h]; Electrical Helper [97.38 h]; Labor [38.39 h]; Excavator [30 h]; Excavator Operator [97.38 h] → SIC- Cost [22541.3]; Electrical Forman [37.98 h]; Electrical Technician [96.35 h]; Electrical Helper [96.35 h]; Labor [37.98 h]; Excavator [30 h]; Excavator Operator [96.35 h] |
| SDR-ST-CON-P1-6210 | Excavation Works Part 2 | 2026-12-10 → 2026-12-24 (+14d) | 2027-01-02 → 2027-01-16 (+14d) |  |  | 52.8d → 13d |  | resources SIC- Cost; Electrical Forman [38.39 h]; Electrical Technician [97.38 h]; Electrical Helper [97.38 h]; Labor [38.39 h]; Excavator [30 h]; Excavator Operator [97.38 h] → SIC- Cost; Electrical Forman [37.98 h]; Electrical Technician [96.35 h]; Electrical Helper [96.35 h]; Labor [37.98 h]; Excavator [30 h]; Excavator Operator [96.35 h] |
| SDR-ST-CON-P1-6220 | Excavation Works Part 3 | 2027-01-03 → 2027-01-17 (+14d) | 2027-01-24 → 2027-02-07 (+14d) |  |  | 59.8d → 27d |  | resources SIC- Cost; Electrical Forman [38.39 h]; Electrical Technician [97.38 h]; Electrical Helper [97.38 h]; Labor [38.39 h]; Excavator [1070 h]; Excavator Operator [97.38 h] → SIC- Cost; Electrical Forman [37.98 h]; Electrical Technician [96.35 h]; Electrical Helper [96.35 h]; Labor [37.98 h]; Excavator [1070 h]; Excavator Operator [96.35 h] |
| 7 | **Pipe laying** | 2027-02-03 → 2027-02-08 (+5d) | 2027-03-15 → 2027-03-03 (-12d) |  |  |  |  |  |
| SDR-ST-CON-P1-2750 | Pipe Laying | 2027-02-03 → 2027-02-08 (+5d) | 2027-03-15 → 2027-03-03 (-12d) |  |  | 51.8d → 27d | SDR-ST-CON-P1-6220, SDR-ST-CON-P1-4660 → SDR-ST-CON-P1-6220, SDR-ST-CON-P1-4660, SDR-ST-PRO-MS-1210 | resources SIC- Cost [45082.6]; Electrical Forman [38.39 h]; Electrical Technician [97.38 h]; Electrical Helper [97.38 h]; Labor [38.39 h] → SIC- Cost [45082.6]; Electrical Forman [37.98 h]; Electrical Technician [96.35 h]; Electrical Helper [96.35 h]; Labor [37.98 h] |
| 8 | **Backfilling** | 2027-03-15 → 2027-03-04 (-11d) | 2027-04-06 → 2027-03-30 (-7d) |  |  |  |  |  |
| SDR-ST-CON-P1-3460 | Backfilling Works | 2027-03-15 → 2027-03-04 (-11d) | 2027-04-06 → 2027-03-30 (-7d) |  |  | 51.8d → 27d |  | resources SIC- Cost [22541.3]; Electrical Forman [38.39 h]; Electrical Technician [97.38 h]; Electrical Helper [96.93 h]; Labor [38.39 h]; Excavator [12 h]; Excavator Operator [11.52 h] → SIC- Cost [22541.3]; Electrical Forman [37.98 h]; Electrical Technician [96.35 h]; Electrical Helper [95.9 h]; Labor [37.98 h]; Excavator [12 h]; Excavator Operator [11.39 h] |
| 9 | **Pulling Cable** | 2027-04-06 → 2027-03-31 (-6d) | 2027-04-27 → 2027-04-20 (-7d) |  |  |  |  |  |
| SDR-ST-CON-P1-3980 | Pulling Cable | 2027-04-06 → 2027-03-31 (-6d) | 2027-04-27 → 2027-04-20 (-7d) |  |  | 51.8d → 27d | SDR-ST-CON-P1-2750, SDR-ST-CON-P1-3460 → SDR-ST-CON-P1-2750, SDR-ST-CON-P1-3460, SDR-ST-PRO-MS-1220 | resources SIC- Cost [135248]; Electrical Forman [97.38 h]; Electrical Technician [3025.02 h]; Electrical Helper [97.38 h]; Labor [97.38 h] → SIC- Cost [135248]; Electrical Forman [96.35 h]; Electrical Technician [2992.82 h]; Electrical Helper [96.35 h]; Labor [96.35 h] |
| 1 | **Earthing System** | 2027-01-03 → 2027-01-17 (+14d) | 2027-01-20 → 2027-02-03 (+14d) |  |  |  |  |  |
| SDR-ST-CON-P1-4840 | Installation of Earthing System Including lighting poles circuits | 2027-01-03 → 2027-01-17 (+14d) | 2027-01-20 → 2027-02-03 (+14d) |  |  | 52.8d → 13d |  | resources SIC- Cost [4795]; Electrical Technician [86.38 h]; Electrical Helper [86.38 h] → SIC- Cost [4795]; Electrical Technician [85.46 h]; Electrical Helper [85.46 h] |
| 16 | **Street Lighting Network** |  | 2027-08-02 → 2027-07-22 (-11d) |  |  |  |  |  |
| 7 | **ROAD - 01** |  | 2027-08-02 → 2027-07-21 (-12d) |  |  |  |  |  |
| 2 | **ROAD-01 From 470 to 1125 m (6)** |  | 2027-03-29 → 2027-01-28 (-60d) |  |  |  |  |  |
| 10 | **Excavation** |  | 2026-12-16 → 2026-11-04 (-42d) |  |  |  |  |  |
| SDR-ST-CON-P1-1180 | Excavation for LV Cable trench Section 1 |  | 2026-10-27 → 2026-11-03 (+7d) |  | 25% → 50% | 9.8d → 18d | SDR-ST-CON-P1-1190 SS, SDR-ST-ENG-AP-1080, SDR-ST-PRO-MS-1000 FF → SDR-ST-CON-P1-1190 SS | resources SIC- Cost [5106]; Electrical Forman [97.38 h]; Electrical Technician [97.38 h]; Electrical Helper [97.38 h]; Labor [97.38 h]; Excavator [65 h]; Excavator Operator [97.38 h] → SIC- Cost [5106]; Electrical Forman [96.35 h]; Electrical Technician [96.35 h]; Electrical Helper [96.35 h]; Labor [96.35 h]; Excavator [65 h]; Excavator Operator [96.35 h] |
| SDR-ST-CON-P1-1560 | Excavation for LV Cable trench Section 2 | 2026-10-29 → 2026-10-12 (-17d) | 2026-11-22 → 2026-11-04 (-18d) |  |  | 9.8d → 18d | SDR-ST-CON-P1-1180 FS+2d → SDR-ST-CON-P1-1180 SS | resources SIC- Cost [5106]; Electrical Forman [38.39 h]; Electrical Technician [97.38 h]; Electrical Helper [97.38 h]; Labor [38.39 h]; Excavator [15.36 h]; Excavator Operator [97.38 h] → SIC- Cost [5106]; Electrical Forman [37.98 h]; Electrical Technician [96.35 h]; Electrical Helper [96.35 h]; Labor [37.98 h]; Excavator [15.36 h]; Excavator Operator [96.35 h] |
| SDR-ST-CON-P1-2250 | Excavation for LV Cable trench Section 3 | 2026-11-23 → 2026-10-12 (-42d) | 2026-12-16 → 2026-11-04 (-42d) |  |  | 9.8d → 18d | SDR-ST-CON-P1-1560 → SDR-ST-CON-P1-1560 SS | resources SIC- Cost [5106]; Electrical Forman [38.39 h]; Electrical Technician [97.38 h]; Electrical Helper [97.38 h]; Labor [38.39 h]; Excavator [15 h]; Excavator Operator [97.38 h] → SIC- Cost [5106]; Electrical Forman [37.98 h]; Electrical Technician [96.35 h]; Electrical Helper [96.35 h]; Labor [37.98 h]; Excavator [15 h]; Excavator Operator [96.35 h] |
| 11 | **Install Footings** | 2026-12-17 → 2026-11-05 (-42d) | 2027-01-10 → 2026-11-29 (-42d) |  |  |  |  |  |
| SDR-ST-CON-P1-2980 | Install Footings | 2026-12-17 → 2026-11-05 (-42d) | 2027-01-10 → 2026-11-29 (-42d) |  |  | 9.8d → 18d | SDR-ST-CON-P1-2250 → SDR-ST-CON-P1-2250, SDR-ST-PRO-MS-1260 | resources SIC- Cost [15318]; Electrical Forman [38.39 h]; Electrical Technician [97.38 h]; Electrical Helper [97.38 h]; Labor [38.39 h] → SIC- Cost [15318]; Electrical Forman [37.98 h]; Electrical Technician [96.35 h]; Electrical Helper [96.35 h]; Labor [37.98 h] |
| 12 | **Backfilling** | 2027-01-11 → 2026-11-30 (-42d) | 2027-01-21 → 2026-12-10 (-42d) |  |  |  |  |  |
| SDR-ST-CON-P1-3870 | Backfilling over LV Cables of Street lighting | 2027-01-11 → 2026-11-30 (-42d) | 2027-01-21 → 2026-12-10 (-42d) |  |  | 9.8d → 18d |  | resources SIC- Cost [15318]; Electrical Forman [48.69 h]; Electrical Technician [48.69 h]; Electrical Helper [48.69 h]; Labor [9.18 h]; Excavator [65 h]; Excavator Operator [48.69 h] → SIC- Cost [15318]; Electrical Forman [48.17 h]; Electrical Technician [48.17 h]; Electrical Helper [48.17 h]; Labor [9.08 h]; Excavator [65 h]; Excavator Operator [48.17 h] |
| 13 | **Install pole** | 2027-01-23 → 2026-12-12 (-42d) | 2027-03-29 → 2027-01-28 (-60d) |  |  |  |  |  |
| SDR-ST-CON-P1-4420 | Install Pole Part 1 | 2027-01-23 → 2026-12-12 (-42d) | 2027-02-21 → 2027-01-04 (-48d) |  |  | 9.8d → 18d | SDR-ST-CON-P1-3870 → SDR-ST-CON-P1-3870, SDR-ST-PRO-MS-1020, SDR-ST-PRO-MS-1230 | resources SIC- Cost [53613]; Electrical Forman [48.69 h]; Electrical Technician [48.69 h]; Electrical Helper [48.69 h]; Labor [48.69 h] → SIC- Cost [53613]; Electrical Forman [48.17 h]; Electrical Technician [48.17 h]; Electrical Helper [48.17 h]; Labor [48.17 h] |
| SDR-ST-CON-P1-5170 | Install Pole Part 2 | 2027-02-21 → 2027-01-05 (-47d) | 2027-03-29 → 2027-01-28 (-60d) |  |  | 9.8d → 18d | SDR-ST-CON-P1-4420 → SDR-ST-CON-P1-4420, SDR-ST-PRO-MS-1230 | resources SIC- Cost [53613]; Electrical Forman [48.69 h]; Electrical Technician [48.69 h]; Electrical Helper [48.69 h]; Labor [48.69 h] → SIC- Cost [53613]; Electrical Forman [48.17 h]; Electrical Technician [48.17 h]; Electrical Helper [48.17 h]; Labor [48.17 h] |
| 3 | **ROAD-01 From 1125 to 1765 m (7)** |  | 2027-03-16 → 2027-03-18 (+2d) |  |  |  |  |  |
| 10 | **Excavation** |  | 2026-12-10 → 2026-12-24 (+14d) |  |  |  |  |  |
| SDR-ST-CON-P1-1590 | Excavation for LV Cable trench Section 1 |  | 2026-10-20 → 2026-11-03 (+14d) |  | 25% → 50% | 5.8d → 1d |  | resources SIC- Cost [5106]; Electrical Forman [38.39 h]; Electrical Technician [97.38 h]; Electrical Helper [97.38 h]; Labor [38.39 h]; Excavator [22.18 h]; Excavator Operator [97.38 h] → SIC- Cost [5106]; Electrical Forman [37.98 h]; Electrical Technician [96.35 h]; Electrical Helper [96.35 h]; Labor [37.98 h]; Excavator [22.18 h]; Excavator Operator [96.35 h] |
| SDR-ST-CON-P1-2390 | Excavation for LV Cable trench Section 2 | 2026-10-24 → 2026-11-07 (+14d) | 2026-11-16 → 2026-11-30 (+14d) |  |  | 5.8d → 1d |  | resources SIC- Cost [5106]; Electrical Forman [38.39 h]; Electrical Technician [97.38 h]; Electrical Helper [97.38 h]; Labor [38.39 h]; Excavator [15 h]; Excavator Operator [97.38 h] → SIC- Cost [5106]; Electrical Forman [37.98 h]; Electrical Technician [96.35 h]; Electrical Helper [96.35 h]; Labor [37.98 h]; Excavator [15 h]; Excavator Operator [96.35 h] |
| SDR-ST-CON-P1-3120 | Excavation for LV Cable trench Section 3 | 2026-11-17 → 2026-12-01 (+14d) | 2026-12-10 → 2026-12-24 (+14d) |  |  | 5.8d → 1d |  | resources SIC- Cost [5106]; Electrical Forman [38.39 h]; Electrical Technician [97.38 h]; Electrical Helper [97.38 h]; Labor [38.39 h]; Excavator [30 h]; Excavator Operator [97.38 h] → SIC- Cost [5106]; Electrical Forman [37.98 h]; Electrical Technician [96.35 h]; Electrical Helper [96.35 h]; Labor [37.98 h]; Excavator [30 h]; Excavator Operator [96.35 h] |
| 11 | **Install Footings** | 2026-12-12 → 2026-12-26 (+14d) | 2026-12-28 → 2027-01-11 (+14d) |  |  |  |  |  |
| SDR-ST-CON-P1-3990 | Install Footings | 2026-12-12 → 2026-12-26 (+14d) | 2026-12-28 → 2027-01-11 (+14d) |  |  | 5.8d → 1d | SDR-ST-CON-P1-3120 → SDR-ST-CON-P1-3120, SDR-ST-PRO-MS-1260 | resources SIC- Cost [15318]; Electrical Forman [97.38 h]; Electrical Technician [97.38 h]; Electrical Helper [97.38 h]; Labor [97.38 h] → SIC- Cost [15318]; Electrical Forman [96.35 h]; Electrical Technician [96.35 h]; Electrical Helper [96.35 h]; Labor [96.35 h] |
| 12 | **Backfilling** | 2026-12-29 → 2027-01-12 (+14d) | 2027-01-09 → 2027-01-23 (+14d) |  |  |  |  |  |
| SDR-ST-CON-P1-4680 | Backfilling over LV Cables of Street lighting | 2026-12-29 → 2027-01-12 (+14d) | 2027-01-09 → 2027-01-23 (+14d) |  |  | 5.8d → 1d |  | resources SIC- Cost [15318]; Electrical Forman [48.69 h]; Electrical Technician [48.69 h]; Electrical Helper [48.69 h]; Labor [9.18 h]; Excavator [15 h]; Excavator Operator [48.69 h] → SIC- Cost [15318]; Electrical Forman [48.17 h]; Electrical Technician [48.17 h]; Electrical Helper [48.17 h]; Labor [9.08 h]; Excavator [15 h]; Excavator Operator [48.17 h] |
| 13 | **Install pole** | 2027-01-10 → 2027-01-24 (+14d) | 2027-03-16 → 2027-03-18 (+2d) |  |  |  |  |  |
| SDR-ST-CON-P1-5050 | Install Pole Part 1 | 2027-01-10 → 2027-01-24 (+14d) | 2027-02-02 → 2027-02-16 (+14d) |  |  | 5.8d → 1d | SDR-ST-CON-P1-4680 → SDR-ST-CON-P1-4680, SDR-ST-PRO-MS-1230 | resources SIC- Cost [53613]; Electrical Forman [48.69 h]; Electrical Technician [48.69 h]; Electrical Helper [48.69 h]; Labor [48.69 h] → SIC- Cost [53613]; Electrical Forman [48.17 h]; Electrical Technician [48.17 h]; Electrical Helper [48.17 h]; Labor [48.17 h] |
| SDR-ST-CON-P1-5760 | Install Pole Part 2 | 2027-02-03 → 2027-02-17 (+14d) | 2027-03-16 → 2027-03-18 (+2d) |  |  | 5.8d → 1d | SDR-ST-CON-P1-5050 → SDR-ST-CON-P1-5050, SDR-ST-PRO-MS-1230 | resources SIC- Cost [53613]; Electrical Forman [48.69 h]; Electrical Technician [48.69 h]; Electrical Helper [48.69 h]; Labor [48.69 h] → SIC- Cost [53613]; Electrical Forman [48.17 h]; Electrical Technician [48.17 h]; Electrical Helper [48.17 h]; Labor [48.17 h] |
| 1 | **ROAD-01 From 0 to 470 m (3)** | 2026-09-28 → 2026-09-05 (-23d) | 2027-05-06 → 2027-04-10 (-26d) |  |  |  |  |  |
| 10 | **Excavation** | 2026-09-28 → 2026-09-05 (-23d) | 2026-12-09 → 2026-11-04 (-35d) |  |  |  |  |  |
| SDR-ST-CON-P1-1500 | Excavation for LV Cable trench Section 1 | 2026-09-28 → 2026-09-05 A (-23d) | 2026-10-21 → 2026-11-04 (+14d) |  | 0% → 25% | 13.5d → 16d |  | resources SIC- Cost [5106]; Electrical Forman [38.39 h]; Electrical Technician [97.38 h]; Electrical Helper [97.38 h]; Labor [38.39 h]; Excavator [15 h]; Excavator Operator [97.38 h] → SIC- Cost [5106]; Electrical Forman [37.98 h]; Electrical Technician [96.35 h]; Electrical Helper [96.35 h]; Labor [37.98 h]; Excavator [15 h]; Excavator Operator [96.35 h] |
| SDR-ST-CON-P1-2320 | Excavation for LV Cable trench Section 2 | 2026-10-22 → 2026-10-12 (-10d) | 2026-11-15 → 2026-11-04 (-11d) |  |  | 13.5d → 16d | SDR-ST-CON-P1-1500 → SDR-ST-CON-P1-1500 FF | resources SIC- Cost [5106]; Electrical Forman [38.39 h]; Electrical Technician [97.38 h]; Electrical Helper [97.38 h]; Labor [38.39 h]; Excavator [15 h]; Excavator Operator [97.38 h] → SIC- Cost [5106]; Electrical Forman [37.98 h]; Electrical Technician [96.35 h]; Electrical Helper [96.35 h]; Labor [37.98 h]; Excavator [15 h]; Excavator Operator [96.35 h] |
| SDR-ST-CON-P1-3040 | Excavation for LV Cable trench Section 3 | 2026-11-16 → 2026-10-12 (-35d) | 2026-12-09 → 2026-11-04 (-35d) |  |  | 13.5d → 16d | SDR-ST-CON-P1-2320 → SDR-ST-CON-P1-2320 FF | resources SIC- Cost [5106]; Electrical Forman [38.39 h]; Electrical Technician [97.38 h]; Electrical Helper [97.38 h]; Labor [38.39 h]; Excavator [30 h]; Excavator Operator [97.38 h] → SIC- Cost [5106]; Electrical Forman [37.98 h]; Electrical Technician [96.35 h]; Electrical Helper [96.35 h]; Labor [37.98 h]; Excavator [30 h]; Excavator Operator [96.35 h] |
| 11 | **Install Footings** | 2026-12-10 → 2026-11-05 (-35d) | 2027-01-03 → 2026-11-29 (-35d) |  |  |  |  |  |
| SDR-ST-CON-P1-3920 | Install Footings | 2026-12-10 → 2026-11-05 (-35d) | 2027-01-03 → 2026-11-29 (-35d) |  |  | 13.5d → 16d | SDR-ST-CON-P1-3040 → SDR-ST-CON-P1-3040, SDR-ST-PRO-MS-1260 | resources SIC- Cost [15318]; Electrical Forman [97.38 h]; Electrical Technician [97.38 h]; Electrical Helper [97.38 h]; Labor [97.38 h] → SIC- Cost [15318]; Electrical Forman [96.35 h]; Electrical Technician [96.35 h]; Electrical Helper [96.35 h]; Labor [96.35 h] |
| 12 | **Backfilling** | 2027-01-04 → 2026-11-30 (-35d) | 2027-01-18 → 2026-12-13 (-36d) |  |  |  |  |  |
| SDR-ST-CON-P1-4850 | Backfilling over LV Cables of Street lighting | 2027-01-04 → 2026-11-30 (-35d) | 2027-01-18 → 2026-12-13 (-36d) | 12.3d → 12d |  | 13.5d → 16d |  | resources SIC- Cost [15318]; Electrical Forman [48.69 h]; Electrical Technician [48.69 h]; Electrical Helper [48.69 h]; Labor [9.18 h]; Excavator [15 h]; Excavator Operator [48.69 h] → SIC- Cost [15318]; Electrical Forman [48.17 h]; Electrical Technician [48.17 h]; Electrical Helper [48.17 h]; Labor [9.08 h]; Excavator [15 h]; Excavator Operator [48.17 h] |
| 13 | **Install pole** | 2027-01-18 → 2026-12-14 (-35d) | 2027-05-06 → 2027-04-10 (-26d) |  |  |  |  |  |
| SDR-ST-CON-P1-5330 | Install Pole Part 1 | 2027-01-18 → 2026-12-14 (-35d) | 2027-02-14 → 2027-01-06 (-39d) |  |  | 13.5d → 16d | SDR-ST-CON-P1-4850 → SDR-ST-CON-P1-4850, SDR-ST-PRO-MS-1020, SDR-ST-PRO-MS-1230 | resources SIC- Cost [26807.5]; Electrical Forman [24.35 h]; Electrical Technician [24.35 h]; Electrical Helper [24.35 h]; Labor [24.35 h] → SIC- Cost [26807.5]; Electrical Forman [24.09 h]; Electrical Technician [24.09 h]; Electrical Helper [24.09 h]; Labor [24.09 h] |
| SDR-ST-CON-P1-5780 | Install Pole Part 2 | 2027-02-14 → 2027-01-18 (-27d) | 2027-03-24 → 2027-02-10 (-42d) |  |  | 13.5d → 7d | SDR-ST-CON-P1-5330, SDR-ST-CON-P1-4660, SDR-ST-CON-P1-5230, SDR-ST-CON-P1-5180, SDR-ST-CON-P1-4160, SDR-ST-CON-P1-4270 → SDR-ST-CON-P1-5330, SDR-ST-CON-P1-4660, SDR-ST-CON-P1-5230, SDR-ST-CON-P1-5180, SDR-ST-CON-P1-4160, SDR-ST-CON-P1-4270, SDR-ST-PRO-MS-1230 | resources SIC- Cost [26806]; Electrical Forman [24.35 h]; Electrical Technician [24.35 h]; Electrical Helper [24.35 h]; Labor [24.35 h] → SIC- Cost [26806]; Electrical Forman [24.09 h]; Electrical Technician [24.09 h]; Electrical Helper [24.09 h]; Labor [24.09 h] |

| ID | Task | Start | Finish | Total float | Predecessors | Other |
| --- | --- | --- | --- | --- | --- | --- |
| SDR-ST-CON-P1-6070 | Install Pole Part 3 | 2027-04-08 → 2027-02-11 (-56d) | 2027-04-29 → 2027-03-08 (-52d) | 1.6d → 7d | SDR-ST-CON-P1-5780, SDR-ST-PRO-MS-1200 FF, SDR-ST-CON-P1-5790, SDR-ST-CON-P1-5170, SDR-ST-CON-P1-4840, SDR-ST-CON-P1-4800 FS+2d, SDR-ST-CON-P1-5000, SDR-ST-CON-P1-4820, SDR-ST-CON-P1-4900, SDR-ST-CON-P1-5240 → SDR-ST-CON-P1-5780, SDR-ST-CON-P1-5790, SDR-ST-CON-P1-5170, SDR-ST-CON-P1-4840, SDR-ST-CON-P1-4800 FS+4d, SDR-ST-CON-P1-5000, SDR-ST-CON-P1-4820, SDR-ST-CON-P1-4900, SDR-ST-CON-P1-5240, SDR-ST-PRO-MS-1180, SDR-ST-PRO-MS-1230 | resources SIC- Cost [26806]; Electrical Forman [24.34 h]; Electrical Technician [24.34 h]; Electrical Helper [24.34 h]; Labor [24.34 h] → SIC- Cost [26806]; Electrical Forman [24.09 h]; Electrical Technician [24.09 h]; Electrical Helper [24.09 h]; Labor [24.09 h] |
| SDR-ST-CON-P1-6080 | Install Pole Part 4 | 2027-04-29 → 2027-04-03 (-26d) | 2027-05-06 → 2027-04-10 (-26d) | 51.6d → 16d | SDR-ST-CON-P1-6070, SDR-ST-CON-P3-1490, SDR-ST-CON-P1-5750 → SDR-ST-CON-P1-6070, SDR-ST-CON-P3-1490, SDR-ST-CON-P1-5750, SDR-ST-PRO-MS-1180, SDR-ST-PRO-MS-1180 FF, SDR-ST-PRO-MS-1230 | resources SIC- Cost [26806.5]; Electrical Forman [24.35 h]; Electrical Technician [24.35 h]; Electrical Helper [24.35 h]; Labor [24.35 h] → SIC- Cost [26806.5]; Electrical Forman [24.09 h]; Electrical Technician [24.09 h]; Electrical Helper [24.09 h]; Labor [24.09 h] |
| 4 | **ROAD-01 N (1)** | 2026-09-28 → 2026-10-12 (+14d) | 2027-03-23 → 2027-01-30 (-52d) |  |  |  |
| 10 | **Excavation** | 2026-09-28 → 2026-10-12 (+14d) | 2026-12-12 → 2026-11-07 (-35d) |  |  |  |
| SDR-ST-CON-P1-1700 | Excavation for LV Cable trench Section 1 | 2026-09-28 → 2026-10-12 (+14d) | 2026-10-21 → 2026-11-04 (+14d) | 14.8d → 17d | SDR-ST-CON-P1-1500 SS, SDR-ST-ENG-AP-1080 → SDR-ST-CON-P1-1500 SS | resources SIC- Cost [4946.16]; Electrical Forman [38.39 h]; Electrical Technician [97.38 h]; Electrical Helper [97.38 h]; Labor [38.39 h]; Excavator [28.81 h]; Excavator Operator [97.38 h] → SIC- Cost [4946.16]; Electrical Forman [37.98 h]; Electrical Technician [96.35 h]; Electrical Helper [96.35 h]; Labor [37.98 h]; Excavator [28.81 h]; Excavator Operator [96.35 h] |
| SDR-ST-CON-P1-2410 | Excavation for LV Cable trench Section 2 | 2026-10-25 → 2026-10-14 (-11d) | 2026-11-17 → 2026-11-07 (-10d) | 14.8d → 17d | SDR-ST-CON-P1-1700 FS+2d → SDR-ST-CON-P1-1700 FF+2d | resources SIC- Cost [4946.16]; Electrical Forman [38.39 h]; Electrical Technician [97.38 h]; Electrical Helper [97.38 h]; Labor [38.39 h]; Excavator [15.26 h]; Excavator Operator [97.38 h] → SIC- Cost [4946.16]; Electrical Forman [37.98 h]; Electrical Technician [96.35 h]; Electrical Helper [96.35 h]; Labor [37.98 h]; Excavator [15.26 h]; Excavator Operator [96.35 h] |
| SDR-ST-CON-P1-3190 | Excavation for LV Cable trench Section 3 | 2026-11-18 → 2026-10-14 (-35d) | 2026-12-12 → 2026-11-07 (-35d) | 14.8d → 17d | SDR-ST-CON-P1-2410 → SDR-ST-CON-P1-2410 FF | resources SIC- Cost [4946.16]; Electrical Forman [38.39 h]; Electrical Technician [97.38 h]; Electrical Helper [97.38 h]; Labor [38.39 h]; Excavator [15 h]; Excavator Operator [97.38 h] → SIC- Cost [4946.16]; Electrical Forman [37.98 h]; Electrical Technician [96.35 h]; Electrical Helper [96.35 h]; Labor [37.98 h]; Excavator [15 h]; Excavator Operator [96.35 h] |
| 11 | **Install Footings** | 2026-12-13 → 2026-11-08 (-35d) | 2027-01-05 → 2026-12-01 (-35d) |  |  |  |
| SDR-ST-CON-P1-4110 | Install Footings | 2026-12-13 → 2026-11-08 (-35d) | 2027-01-05 → 2026-12-01 (-35d) | 14.8d → 17d |  | resources SIC- Cost [14838.5]; Electrical Forman [97.38 h]; Electrical Technician [97.38 h]; Electrical Helper [97.38 h]; Labor [97.38 h] → SIC- Cost [14838.5]; Electrical Forman [96.35 h]; Electrical Technician [96.35 h]; Electrical Helper [96.35 h]; Labor [96.35 h] |
| 12 | **Backfilling** | 2027-01-06 → 2026-12-02 (-35d) | 2027-01-16 → 2026-12-12 (-35d) |  |  |  |
| SDR-ST-CON-P1-4960 | Backfilling over LV Cables of Street lighting | 2027-01-06 → 2026-12-02 (-35d) | 2027-01-16 → 2026-12-12 (-35d) | 14.8d → 17d |  | resources SIC- Cost [14838.5]; Electrical Forman [48.69 h]; Electrical Technician [48.69 h]; Electrical Helper [48.69 h]; Labor [9.18 h]; Excavator [15 h]; Excavator Operator [48.69 h] → SIC- Cost [14838.5]; Electrical Forman [48.17 h]; Electrical Technician [48.17 h]; Electrical Helper [48.17 h]; Labor [9.08 h]; Excavator [15 h]; Excavator Operator [48.17 h] |
| 13 | **Install pole** | 2027-01-17 → 2026-12-13 (-35d) | 2027-03-23 → 2027-01-30 (-52d) |  |  |  |
| SDR-ST-CON-P1-5340 | Install Pole Part 1 | 2027-01-17 → 2026-12-13 (-35d) | 2027-02-11 → 2027-01-05 (-37d) | 14.8d → 17d | SDR-ST-CON-P1-4960 → SDR-ST-CON-P1-4960, SDR-ST-PRO-MS-1230 | resources SIC- Cost [51934.7]; Electrical Forman [48.69 h]; Electrical Technician [48.69 h]; Electrical Helper [48.69 h]; Labor [48.69 h] → SIC- Cost [51934.7]; Electrical Forman [48.17 h]; Electrical Technician [48.17 h]; Electrical Helper [48.17 h]; Labor [48.17 h] |
| SDR-ST-CON-P1-5790 | Install Pole Part 2 | 2027-02-11 → 2027-01-06 (-36d) | 2027-03-23 → 2027-01-30 (-52d) | 14.8d → 17d | SDR-ST-CON-P1-5340, SDR-ST-CON-P1-5130 → SDR-ST-CON-P1-5340, SDR-ST-CON-P1-5130, SDR-ST-PRO-MS-1230 | resources SIC- Cost [51934.7]; Electrical Forman [48.69 h]; Electrical Technician [48.69 h]; Electrical Helper [48.69 h]; Labor [48.69 h] → SIC- Cost [51934.7]; Electrical Forman [48.17 h]; Electrical Technician [48.17 h]; Electrical Helper [48.17 h]; Labor [48.17 h] |
| 5 | **Road Crossing & Drawpits** | 2026-09-28 → 2026-10-12 (+14d) | 2027-01-14 → 2027-01-03 (-11d) |  |  |  |
| 1 | **ROAD - 01** | 2026-09-28 → 2026-10-12 (+14d) | 2027-01-14 → 2027-01-03 (-11d) |  |  |  |
| 1 | **ROAD-01 From 470 to 1125 m (6)** | 2026-10-27 → 2026-10-12 (-15d) | 2027-01-14 → 2026-12-30 (-15d) |  |  |  |
| 1 | **Road crossing Ducts & Drawpits** | 2026-10-27 → 2026-10-12 (-15d) | 2027-01-14 → 2026-12-30 (-15d) |  |  |  |
| 1 | **Excavation** | 2026-10-27 → 2026-10-12 (-15d) | 2026-11-19 → 2026-11-04 (-15d) |  |  |  |
| SDR-ST-CON-P1-1450 | Excavation for GRP Pipes Section 1 | 2026-10-27 → 2026-10-12 (-15d) | 2026-11-19 → 2026-11-04 (-15d) | 41.5d → 25d | SDR-ST-CON-P1-1180 → SDR-ST-CON-P1-1180 SS | resources SIC- Cost [2160.34]; Labor [38.39 h]; Excavator [15 h]; Excavator Operator [143.96 h] → SIC- Cost [2160.34]; Labor [37.98 h]; Excavator [15 h]; Excavator Operator [142.43 h] |
| 7 | **bedding Works** | 2026-11-21 → 2026-11-05 (-16d) | 2026-12-14 → 2026-11-29 (-15d) |  |  |  |
| SDR-ST-CON-P1-2160 | Sand bedding for GRP Pipes | 2026-11-21 → 2026-11-05 (-16d) | 2026-12-14 → 2026-11-29 (-15d) | 41.5d → 25d |  | resources SIC- Cost [540.09]; Labor [143.96 h]; Excavator [24.29 h]; Excavator Operator [143.96 h]; Loader [61.35 h] → SIC- Cost [540.09]; Labor [142.43 h]; Excavator [24.29 h]; Excavator Operator [142.43 h]; Loader [61.35 h] |
| 2 | **Pipes Laying** | 2026-12-15 → 2026-11-30 (-15d) | 2026-12-30 → 2026-12-15 (-15d) |  |  |  |
| SDR-ST-CON-P1-2890 | Install ST GRP Pipes | 2026-12-15 → 2026-11-30 (-15d) | 2026-12-30 → 2026-12-15 (-15d) | 41.5d → 25d |  | resources Pipe Fitter [143.96 h]; SIC- Cost [4860.77]; Labor [143.96 h] → Pipe Fitter [142.43 h]; SIC- Cost [4860.77]; Labor [142.43 h] |
| 6 | **Testing** | 2026-12-31 → 2026-12-16 (-15d) | 2027-01-07 → 2026-12-23 (-15d) |  |  |  |
| SDR-ST-CON-P1-3530 | Testing ST GRP Pipes | 2026-12-31 → 2026-12-16 (-15d) | 2027-01-07 → 2026-12-23 (-15d) | 41.5d → 25d |  | resources Pipe Fitter [143.96 h]; SIC- Cost [1080.17]; Labor [38.39 h] → Pipe Fitter [142.43 h]; SIC- Cost [1080.17]; Labor [37.98 h] |
| 3 | **Backfilling** | 2027-01-09 → 2026-12-24 (-16d) | 2027-01-14 → 2026-12-30 (-15d) |  |  |  |
| SDR-ST-CON-P1-3810 | Backfilling ST GRP Pipes | 2027-01-09 → 2026-12-24 (-16d) | 2027-01-14 → 2026-12-30 (-15d) | 41.5d → 25d |  | resources SIC- Cost [2160.34]; Labor [38.39 h]; Excavator [15 h]; Excavator Operator [143.96 h] → SIC- Cost [2160.34]; Labor [37.98 h]; Excavator [15 h]; Excavator Operator [142.43 h] |
| 2 | **ROAD-01 From 1125 to 1765 m (7)** | 2026-09-28 → 2026-10-12 (+14d) | 2026-12-16 → 2026-12-30 (+14d) |  |  |  |
| 1 | **Road crossing Ducts & Drawpits** | 2026-09-28 → 2026-10-12 (+14d) | 2026-12-16 → 2026-12-30 (+14d) |  |  |  |
| 1 | **Excavation** | 2026-09-28 → 2026-10-12 (+14d) | 2026-10-21 → 2026-11-04 (+14d) |  |  |  |
| SDR-ST-CON-P1-1600 | Excavation for GRP Pipes Section 1 | 2026-09-28 → 2026-10-12 (+14d) | 2026-10-21 → 2026-11-04 (+14d) | 57.4d → 24.9d | SDR-ST-CON-P1-1590 SS, SDR-ST-ENG-AP-1080 → SDR-ST-CON-P1-1590 SS | resources SIC- Cost [2160.34]; Labor [38.39 h]; Excavator [29.36 h]; Excavator Operator [143.96 h] → SIC- Cost [2160.34]; Labor [37.98 h]; Excavator [29.36 h]; Excavator Operator [142.43 h] |
| 7 | **bedding Works** | 2026-10-22 → 2026-11-05 (+14d) | 2026-11-08 → 2026-11-22 (+14d) |  |  |  |
| SDR-ST-CON-P1-2280 | Sand bedding for GRP Pipes | 2026-10-22 → 2026-11-05 (+14d) | 2026-11-08 → 2026-11-22 (+14d) | 57.4d → 24.9d |  | resources SIC- Cost [540.09]; Labor [143.96 h]; Excavator [15 h]; Excavator Operator [143.96 h]; Loader [50 h] → SIC- Cost [540.09]; Labor [142.43 h]; Excavator [15 h]; Excavator Operator [142.43 h]; Loader [50 h] |
| 2 | **Pipes Laying** | 2026-11-09 → 2026-11-23 (+14d) | 2026-11-22 → 2026-12-06 (+14d) |  |  |  |
| SDR-ST-CON-P1-2800 | Install ST GRP Pipes | 2026-11-09 → 2026-11-23 (+14d) | 2026-11-22 → 2026-12-06 (+14d) | 57.4d → 24.9d | SDR-ST-CON-P1-2280 → SDR-ST-CON-P1-2280, SDR-ST-PRO-MS-1000 | resources Pipe Fitter [143.96 h]; SIC- Cost [4860.77]; Labor [38.39 h] → Pipe Fitter [142.43 h]; SIC- Cost [4860.77]; Labor [37.98 h] |
| 6 | **Testing** | 2026-11-23 → 2026-12-07 (+14d) | 2026-12-02 → 2026-12-16 (+14d) |  |  |  |
| SDR-ST-CON-P1-3250 | Testing ST GRP Pipes | 2026-11-23 → 2026-12-07 (+14d) | 2026-12-02 → 2026-12-16 (+14d) | 57.4d → 24.9d |  | resources Pipe Fitter [143.96 h]; SIC- Cost [1080.17]; Labor [38.39 h] → Pipe Fitter [142.43 h]; SIC- Cost [1080.17]; Labor [37.98 h] |
| 3 | **Backfilling** | 2026-12-03 → 2026-12-17 (+14d) | 2026-12-16 → 2026-12-30 (+14d) |  |  |  |
| SDR-ST-CON-P1-3670 | Backfilling ST GRP Pipes | 2026-12-03 → 2026-12-17 (+14d) | 2026-12-16 → 2026-12-30 (+14d) | 57.4d → 24.9d |  | resources SIC- Cost [2160.34]; Labor [143.96 h]; Excavator [15 h]; Excavator Operator [143.96 h] → SIC- Cost [2160.34]; Labor [142.43 h]; Excavator [15 h]; Excavator Operator [142.43 h] |
| 3 | **ROAD-01 From 0 to 470 m (3)** | 2026-09-28 → 2026-10-12 (+14d) | 2026-12-19 → 2027-01-03 (+15d) |  |  |  |
| 1 | **Road crossing Ducts & Drawpits** | 2026-09-28 → 2026-10-12 (+14d) | 2026-12-19 → 2027-01-03 (+15d) |  |  |  |
| 1 | **Excavation** | 2026-09-28 → 2026-10-12 (+14d) | 2026-10-21 → 2026-11-04 (+14d) |  |  |  |
| SDR-ST-CON-P1-1510 | Excavation for GRP Pipes Section 1 | 2026-09-28 → 2026-10-12 (+14d) | 2026-10-21 → 2026-11-04 (+14d) | 15.8d → 29d | SDR-ST-CON-P1-1500 SS, SDR-ST-ENG-AP-1080 → SDR-ST-CON-P1-1500 SS | resources SIC- Cost [2160.34]; Labor [38.39 h]; Excavator [15 h]; Excavator Operator [143.96 h] → SIC- Cost [2160.34]; Labor [37.98 h]; Excavator [15 h]; Excavator Operator [142.43 h] |
| 7 | **bedding Works** | 2026-10-22 → 2026-11-05 (+14d) | 2026-11-15 → 2026-11-29 (+14d) |  |  |  |
| SDR-ST-CON-P1-2180 | Sand bedding for GRP Pipes | 2026-10-22 → 2026-11-05 (+14d) | 2026-11-15 → 2026-11-29 (+14d) | 15.8d → 29d |  | resources SIC- Cost [540.09]; Labor [38.39 h]; Excavator [18.57 h]; Excavator Operator [143.96 h]; Loader [54.37 h] → SIC- Cost [540.09]; Labor [37.98 h]; Excavator [18.57 h]; Excavator Operator [142.43 h]; Loader [54.37 h] |
| 2 | **Pipes Laying** | 2026-11-16 → 2026-11-30 (+14d) | 2026-11-30 → 2026-12-14 (+14d) |  |  |  |
| SDR-ST-CON-P1-2930 | Install ST GRP Pipes | 2026-11-16 → 2026-11-30 (+14d) | 2026-11-30 → 2026-12-14 (+14d) | 15.8d → 29d |  | resources Pipe Fitter [143.96 h]; SIC- Cost [4860.77]; Labor [38.39 h] → Pipe Fitter [142.43 h]; SIC- Cost [4860.77]; Labor [37.98 h] |
| 6 | **Testing** | 2026-12-01 → 2026-12-15 (+14d) | 2026-12-07 → 2026-12-21 (+14d) |  |  |  |
| SDR-ST-CON-P1-3510 | Testing ST GRP Pipes | 2026-12-01 → 2026-12-15 (+14d) | 2026-12-07 → 2026-12-21 (+14d) | 15.8d → 29d |  | resources Pipe Fitter [143.96 h]; SIC- Cost [1080.17]; Labor [143.96 h] → Pipe Fitter [142.43 h]; SIC- Cost [1080.17]; Labor [142.43 h] |
| 3 | **Backfilling** | 2026-12-08 → 2026-12-23 (+15d) | 2026-12-19 → 2027-01-03 (+15d) |  |  |  |
| SDR-ST-CON-P1-3760 | Backfilling ST GRP Pipes | 2026-12-08 → 2026-12-23 (+15d) | 2026-12-19 → 2027-01-03 (+15d) | 15.8d → 29d | SDR-ST-CON-P1-3510 → SDR-ST-CON-P1-3510 FS+1d | resources SIC- Cost [2160.34]; Labor [143.96 h]; Excavator [15 h]; Excavator Operator [143.96 h] → SIC- Cost [2160.34]; Labor [142.43 h]; Excavator [15 h]; Excavator Operator [142.43 h] |
| 4 | **ROAD-01 N (1)** | 2026-09-28 → 2026-10-12 (+14d) | 2026-12-16 → 2026-12-31 (+15d) |  |  |  |
| 1 | **Road crossing Ducts & Drawpits** | 2026-09-28 → 2026-10-12 (+14d) | 2026-12-16 → 2026-12-31 (+15d) |  |  |  |
| 1 | **Excavation** | 2026-09-28 → 2026-10-12 (+14d) | 2026-10-21 → 2026-11-04 (+14d) |  |  |  |
| SDR-ST-CON-P1-1710 | Excavation for GRP Pipes Section 1 | 2026-09-28 → 2026-10-12 (+14d) | 2026-10-21 → 2026-11-04 (+14d) | 17.8d → 31d | SDR-ST-CON-P1-1700 SS, SDR-ST-ENG-AP-1080 → SDR-ST-CON-P1-1700 SS | resources SIC- Cost [2160.34]; Labor [38.39 h]; Excavator [35.51 h]; Excavator Operator [143.96 h] → SIC- Cost [2160.34]; Labor [37.98 h]; Excavator [35.51 h]; Excavator Operator [142.43 h] |
| 7 | **bedding Works** | 2026-10-22 → 2026-11-05 (+14d) | 2026-11-15 → 2026-11-29 (+14d) |  |  |  |
| SDR-ST-CON-P1-2360 | Sand bedding for GRP Pipes | 2026-10-22 → 2026-11-05 (+14d) | 2026-11-15 → 2026-11-29 (+14d) | 17.8d → 31d |  | resources SIC- Cost [540.09]; Labor [143.96 h]; Excavator [15 h]; Excavator Operator [143.96 h]; Loader [50 h] → SIC- Cost [540.09]; Labor [142.43 h]; Excavator [15 h]; Excavator Operator [142.43 h]; Loader [50 h] |
| 2 | **Pipes Laying** | 2026-11-16 → 2026-11-30 (+14d) | 2026-11-26 → 2026-12-10 (+14d) |  |  |  |
| SDR-ST-CON-P1-3090 | Install ST GRP Pipes | 2026-11-16 → 2026-11-30 (+14d) | 2026-11-26 → 2026-12-10 (+14d) | 17.8d → 31d |  | resources Pipe Fitter [143.96 h]; SIC- Cost [4860.77]; Labor [38.39 h] → Pipe Fitter [142.43 h]; SIC- Cost [4860.77]; Labor [37.98 h] |
| 6 | **Testing** | 2026-11-28 → 2026-12-12 (+14d) | 2026-12-08 → 2026-12-22 (+14d) |  |  |  |
| SDR-ST-CON-P1-3520 | Testing ST GRP Pipes | 2026-11-28 → 2026-12-12 (+14d) | 2026-12-08 → 2026-12-22 (+14d) | 17.8d → 31d |  | resources Pipe Fitter [143.96 h]; SIC- Cost [1080.17]; Labor [143.96 h] → Pipe Fitter [142.43 h]; SIC- Cost [1080.17]; Labor [142.43 h] |
| 3 | **Backfilling** | 2026-12-09 → 2026-12-24 (+15d) | 2026-12-16 → 2026-12-31 (+15d) |  |  |  |
| SDR-ST-CON-P1-3930 | Backfilling ST GRP Pipes | 2026-12-09 → 2026-12-24 (+15d) | 2026-12-16 → 2026-12-31 (+15d) | 17.8d → 31d | SDR-ST-CON-P1-3520 → SDR-ST-CON-P1-3520 FS+1d | resources SIC- Cost [2160.34]; Labor [143.96 h]; Excavator [15 h]; Excavator Operator [143.96 h] → SIC- Cost [2160.34]; Labor [142.43 h]; Excavator [15 h]; Excavator Operator [142.43 h] |
| 11 | **Ring Main Unit** | 2027-06-06 → 2027-04-21 (-46d) | 2027-07-17 → 2027-07-11 (-6d) |  |  |  |
| 1 | **Leveling** | 2027-06-06 → 2027-04-21 (-46d) | 2027-06-28 → 2027-05-13 (-46d) |  |  |  |
| SDR-ST-CON-P1-5840 | Ring Main Unit leveling | 2027-06-06 → 2027-04-21 (-46d) | 2027-06-28 → 2027-05-13 (-46d) | 18d → 7d | SDR-ST-CON-P1-5780, SDR-ST-CON-P3-1460 SS, SDR-ST-CON-P1-6080, SDR-ST-CON-P1-3900 → SDR-ST-CON-P1-5780, SDR-ST-CON-P3-1460, SDR-ST-CON-P1-6080, SDR-ST-CON-P1-3900 | resources SIC- Cost [5534.7]; Electrical Forman [143.96 h]; Electrical Technician [143.96 h]; Electrical Helper [143.96 h]; Labor [143.96 h] → SIC- Cost [5534.7]; Electrical Forman [142.43 h]; Electrical Technician [142.43 h]; Electrical Helper [142.43 h]; Labor [142.43 h] |
| 2 | **Lean Concrete** | 2027-06-24 → 2027-05-25 (-30d) | 2027-07-17 → 2027-06-17 (-30d) |  |  |  |
| SDR-ST-CON-P1-5890 | Ring Main Unit Lean Concrete | 2027-06-24 → 2027-05-25 (-30d) | 2027-07-17 → 2027-06-17 (-30d) | 18d → 2.9d | SDR-ST-CON-P1-5840 SS+16d, SDR-ST-CON-P1-4070 → SDR-ST-CON-P1-5840, SDR-ST-CON-P1-4070, SDR-ST-MILS-1060 | resources SIC- Cost [11069.4]; Electrical Forman [143.96 h]; Electrical Technician [143.96 h]; Electrical Helper [143.96 h]; Labor [143.96 h] → SIC- Cost [11069.4]; Electrical Forman [142.43 h]; Electrical Technician [142.43 h]; Electrical Helper [142.43 h]; Labor [142.43 h] |
| 3 | **Installation** | 2027-06-24 → 2027-06-17 (-7d) | 2027-07-17 → 2027-07-11 (-6d) |  |  |  |

| ID | Task | Start | Finish | Total float | Predecessors | Other |
| --- | --- | --- | --- | --- | --- | --- |
| SDR-ST-CON-P1-5920 | Ring Main Unit installation for Street Lighting | 2027-06-24 → 2027-06-17 (-7d) | 2027-07-17 → 2027-07-11 (-6d) | 18d → 2.9d | SDR-ST-CON-P1-5890 FF, SDR-ST-MILS-1080, SDR-ST-MILS-1060, SDR-ST-CON-P1-5800 → SDR-ST-CON-P1-5890, SDR-ST-MILS-1080, SDR-ST-MILS-1060, SDR-ST-CON-P1-5800 | resources SIC- Cost [38742.9]; Electrical Forman [143.96 h]; Electrical Technician [143.96 h]; Electrical Helper [143.96 h]; Labor [143.96 h] → SIC- Cost [38742.9]; Electrical Forman [142.43 h]; Electrical Technician [142.43 h]; Electrical Helper [142.43 h]; Labor [142.43 h] |
| 12 | **Feeder Pillars** | 2027-06-05 → 2027-04-27 (-39d) | 2027-06-29 → 2027-07-12 (+13d) |  |  |  |
| 1 | **Leveling** | 2027-06-05 → 2027-04-27 (-39d) | 2027-06-29 → 2027-05-26 (-34d) |  |  |  |
| SDR-ST-CON-P1-5880 | Feeder Pillars Leveling | 2027-06-05 → 2027-04-27 (-39d) | 2027-06-29 → 2027-05-26 (-34d) | 20.6d → 5d | SDR-ST-CON-P1-5840 FF, SDR-ST-CON-P1-4320, SDR-ST-CON-P1-4010, SDR-ST-CON-P1-4250 FF, SDR-ST-CON-P1-4000 → SDR-ST-CON-P1-5840 FF, SDR-ST-CON-P1-4320, SDR-ST-CON-P1-4010 FF, SDR-ST-CON-P1-4250 FF, SDR-ST-CON-P1-4000 FF | resources SIC- Cost [1209.3]; Electrical Forman [143.96 h]; Electrical Technician [143.96 h]; Electrical Helper [143.96 h]; Labor [143.96 h] → SIC- Cost [1209.3]; Electrical Forman [142.43 h]; Electrical Technician [142.43 h]; Electrical Helper [142.43 h]; Labor [142.43 h] |
| 2 | **Lean Concrete** | 2027-06-06 → 2027-05-27 (-10d) | 2027-06-29 → 2027-06-19 (-10d) |  |  |  |
| SDR-ST-CON-P1-5930 | Feeder Pillars Lean Concrete | 2027-06-06 → 2027-05-27 (-10d) | 2027-06-29 → 2027-06-19 (-10d) | 20.6d → 5d | SDR-ST-CON-P1-5880 FF, SDR-ST-MILS-1070, SDR-ST-MILS-1080, SDR-ST-CON-P3-1500 → SDR-ST-CON-P1-5880, SDR-ST-MILS-1070, SDR-ST-MILS-1080, SDR-ST-CON-P3-1500 | resources SIC- Cost [2418.6]; Electrical Forman [143.96 h]; Electrical Technician [143.96 h]; Electrical Helper [143.96 h]; Labor [143.96 h] → SIC- Cost [2418.6]; Electrical Forman [142.43 h]; Electrical Technician [142.43 h]; Electrical Helper [142.43 h]; Labor [142.43 h] |
| 3 | **Installation** | 2027-06-06 → 2027-06-20 (+14d) | 2027-06-29 → 2027-07-12 (+13d) |  |  |  |
| SDR-ST-CON-P1-6000 | Feeder Pillars Installation | 2027-06-06 → 2027-06-20 (+14d) | 2027-06-29 → 2027-07-12 (+13d) | 20.6d → 5d | SDR-ST-CON-P1-5930 FF → SDR-ST-CON-P1-5930 | resources SIC- Cost [8465.11]; Electrical Forman [143.96 h]; Electrical Technician [143.96 h]; Electrical Helper [143.96 h]; Labor [143.96 h] → SIC- Cost [8465.11]; Electrical Forman [142.43 h]; Electrical Technician [142.43 h]; Electrical Helper [142.43 h]; Labor [142.43 h] |
| 13 | **KWH Frame** | 2027-06-27 → 2027-06-02 (-25d) | 2027-08-02 → 2027-07-21 (-12d) |  |  |  |
| 1 | **Leveling** | 2027-06-27 → 2027-06-02 (-25d) | 2027-07-20 → 2027-06-24 (-26d) |  |  |  |
| SDR-ST-CON-P1-5940 | KWH meter mounting frame Leveling | 2027-06-27 → 2027-06-02 (-25d) | 2027-07-20 → 2027-06-24 (-26d) | 3.5d → 2d | SDR-ST-CON-P1-5880 FF, SDR-ST-CO-1010 SS → SDR-ST-CON-P1-5880, SDR-ST-CO-1010 | resources SIC- Cost [720.9]; Electrical Forman [143.96 h]; Electrical Technician [143.96 h]; Electrical Helper [143.96 h]; Labor [143.96 h] → SIC- Cost [720.9]; Electrical Forman [142.43 h]; Electrical Technician [142.43 h]; Electrical Helper [142.43 h]; Labor [142.43 h] |
| 2 | **Lean Concrete** | 2027-07-06 → 2027-06-26 (-10d) | 2027-07-24 → 2027-07-12 (-12d) |  |  |  |
| SDR-ST-CON-P1-6010 | KWH meter mounting frame Lean Concrete | 2027-07-06 → 2027-06-26 (-10d) | 2027-07-24 → 2027-07-12 (-12d) | 4.5d → 2d | SDR-ST-CON-P1-5940 SS+8d → SDR-ST-CON-P1-5940 | resources SIC- Cost [1441.8]; Electrical Forman [143.96 h]; Electrical Technician [143.96 h]; Electrical Helper [143.96 h]; Labor [143.96 h] → SIC- Cost [1441.8]; Electrical Forman [142.43 h]; Electrical Technician [142.43 h]; Electrical Helper [142.43 h]; Labor [142.43 h] |
| 3 | **Installation** | 2027-07-24 → 2027-07-13 (-11d) | 2027-08-02 → 2027-07-21 (-12d) |  |  |  |
| SDR-ST-CON-P1-6040 | KWH meter mounting frame installation | 2027-07-24 → 2027-07-13 (-11d) | 2027-08-02 → 2027-07-21 (-12d) | 4.5d → 2d |  | resources SIC- Cost [5046.3]; Electrical Forman [143.96 h]; Electrical Technician [143.96 h]; Electrical Helper [143.96 h]; Labor [143.96 h] → SIC- Cost [5046.3]; Electrical Forman [142.43 h]; Electrical Technician [142.43 h]; Electrical Helper [142.43 h]; Labor [142.43 h] |
| 14 | **Street Lighting Sub-station** | 2027-06-27 → 2027-06-02 (-25d) | 2027-07-29 → 2027-07-14 (-15d) |  |  |  |
| 1 | **Leveling** | 2027-06-27 → 2027-06-02 (-25d) | 2027-07-20 → 2027-06-24 (-26d) |  |  |  |
| SDR-ST-CON-P1-5950 | Unit Substation Leveling Part 1 | 2027-06-27 → 2027-06-02 (-25d) | 2027-07-20 → 2027-06-24 (-26d) | 3.5d → 4d |  | resources SIC- Cost [4054.25]; Electrical Forman [143.96 h]; Electrical Technician [2055.47 h]; Electrical Helper [143.96 h]; Labor [143.96 h] → SIC- Cost [4054.25]; Electrical Forman [142.43 h]; Electrical Technician [2033.59 h]; Electrical Helper [142.43 h]; Labor [142.43 h] |
| SDR-ST-CON-P1-5960 | Unit Substation Leveling Part 2 | 2027-06-27 → 2027-06-02 (-25d) | 2027-07-20 → 2027-06-24 (-26d) | 3.5d → 4d | SDR-ST-CON-P1-5950 SS, SDR-ST-ENG-AP-1080 → SDR-ST-CON-P1-5950 SS | resources SIC- Cost [4054.25]; Electrical Forman [143.96 h]; Electrical Technician [2558.5 h]; Electrical Helper [143.96 h]; Labor [143.96 h] → SIC- Cost [4054.25]; Electrical Forman [142.43 h]; Electrical Technician [2531.27 h]; Electrical Helper [142.43 h]; Labor [142.43 h] |
| 2 | **Lean Concrete** | 2027-07-15 → 2027-06-26 (-19d) | 2027-07-29 → 2027-07-08 (-21d) |  |  |  |
| SDR-ST-CON-P1-6020 | Unit Substation Lean Concrete | 2027-07-15 → 2027-06-26 (-19d) | 2027-07-29 → 2027-07-08 (-21d) | 3.5d → 4d | SDR-ST-CON-P1-5950 SS, SDR-ST-CON-P1-5960 SS+16d → SDR-ST-CON-P1-5950, SDR-ST-CON-P1-5960 | resources SIC- Cost [16217]; Electrical Forman [143.96 h]; Electrical Technician [143.96 h]; Electrical Helper [143.96 h]; Labor [143.96 h] → SIC- Cost [16217]; Electrical Forman [142.43 h]; Electrical Technician [142.43 h]; Electrical Helper [142.43 h]; Labor [142.43 h] |
| 3 | **Installation** | 2027-07-24 → 2027-07-10 (-14d) | 2027-07-29 → 2027-07-14 (-15d) |  |  |  |
| SDR-ST-CON-P1-6050 | Unit Substation Install for Street Lighting | 2027-07-24 → 2027-07-10 (-14d) | 2027-07-29 → 2027-07-14 (-15d) | 3.5d → 4d | SDR-ST-CON-P1-6020 FF → SDR-ST-CON-P1-6020 | resources SIC- Cost [56759.6]; Electrical Forman [143.96 h]; Electrical Technician [143.96 h]; Electrical Helper [143.96 h]; Labor [143.96 h] → SIC- Cost [56759.6]; Electrical Forman [142.43 h]; Electrical Technician [142.43 h]; Electrical Helper [142.43 h]; Labor [142.43 h] |
| 8 | **ROAD - 02** | 2026-09-28 → 2026-10-12 (+14d) | 2027-07-28 → 2027-07-22 (-6d) |  |  |  |
| 10 | **Excavation** | 2026-09-28 → 2026-10-12 (+14d) | 2026-11-22 → 2026-12-06 (+14d) |  |  |  |
| SDR-ST-CON-P1-1310 | Excavation for LV Cable trench Section 1 | 2026-09-28 → 2026-10-12 (+14d) | 2026-10-14 → 2026-10-28 (+14d) | 25.6d → 7d | SDR-ST-CON-P1-1300 SS, SDR-ST-ENG-AP-1090 → SDR-ST-CON-P1-1300 SS | resources SIC- Cost [5106]; Electrical Forman [143.96 h]; Electrical Technician [143.96 h]; Electrical Helper [143.96 h]; Labor [143.96 h]; Excavator [84.31 h]; Excavator Operator [143.96 h] → SIC- Cost [5106]; Electrical Forman [142.43 h]; Electrical Technician [142.43 h]; Electrical Helper [142.43 h]; Labor [142.43 h]; Excavator [84.31 h]; Excavator Operator [142.43 h] |
| SDR-ST-CON-P1-1780 | Excavation for LV Cable trench Section 2 | 2026-10-18 → 2026-11-01 (+14d) | 2026-11-03 → 2026-11-17 (+14d) | 54.8d → 7d |  | resources SIC- Cost [5106]; Electrical Forman [143.96 h]; Electrical Technician [143.96 h]; Electrical Helper [143.96 h]; Labor [38.39 h]; Excavator [17.71 h]; Excavator Operator [143.96 h] → SIC- Cost [5106]; Electrical Forman [142.43 h]; Electrical Technician [142.43 h]; Electrical Helper [142.43 h]; Labor [37.98 h]; Excavator [17.71 h]; Excavator Operator [142.43 h] |
| SDR-ST-CON-P1-2350 | Excavation for LV Cable trench Section 3 | 2026-11-04 → 2026-11-18 (+14d) | 2026-11-22 → 2026-12-06 (+14d) | 54.8d → 7d |  | resources SIC- Cost [5106]; Electrical Forman [143.96 h]; Electrical Technician [143.96 h]; Electrical Helper [143.96 h]; Labor [38.39 h]; Excavator [15 h]; Excavator Operator [143.96 h] → SIC- Cost [5106]; Electrical Forman [142.43 h]; Electrical Technician [142.43 h]; Electrical Helper [142.43 h]; Labor [37.98 h]; Excavator [15 h]; Excavator Operator [142.43 h] |
| 11 | **Install Footings** | 2026-11-23 → 2026-12-07 (+14d) | 2026-12-09 → 2026-12-23 (+14d) |  |  |  |
| SDR-ST-CON-P1-2860 | Install Footings | 2026-11-23 → 2026-12-07 (+14d) | 2026-12-09 → 2026-12-23 (+14d) | 54.8d → 7d |  | resources SIC- Cost [15318]; Electrical Forman [38.39 h]; Electrical Technician [143.96 h]; Electrical Helper [143.96 h]; Labor [38.39 h] → SIC- Cost [15318]; Electrical Forman [37.98 h]; Electrical Technician [142.43 h]; Electrical Helper [142.43 h]; Labor [37.98 h] |
| 12 | **Backfilling** | 2026-12-10 → 2026-12-24 (+14d) | 2026-12-28 → 2027-01-11 (+14d) |  |  |  |
| SDR-ST-CON-P1-3500 | Backfilling over LV Cables of Street lighting | 2026-12-10 → 2026-12-24 (+14d) | 2026-12-28 → 2027-01-11 (+14d) | 54.8d → 7d |  | resources SIC- Cost [15318]; Electrical Forman [38.39 h]; Electrical Technician [143.96 h]; Electrical Helper [143.96 h]; Labor [38.39 h]; Excavator [15 h]; Excavator Operator [143.96 h] → SIC- Cost [15318]; Electrical Forman [37.98 h]; Electrical Technician [142.43 h]; Electrical Helper [142.43 h]; Labor [37.98 h]; Excavator [15 h]; Excavator Operator [142.43 h] |
| 13 | **Install pole** | 2026-12-29 → 2027-01-12 (+14d) | 2027-01-16 → 2027-01-30 (+14d) |  |  |  |
| SDR-ST-CON-P1-4260 | Install Pole Part 1 | 2026-12-29 → 2027-01-12 (+14d) | 2027-01-06 → 2027-01-20 (+14d) | 54.8d → 7d |  | resources SIC- Cost [53613]; Electrical Forman [143.96 h]; Electrical Technician [143.96 h]; Electrical Helper [143.96 h]; Labor [143.96 h] → SIC- Cost [53613]; Electrical Forman [142.43 h]; Electrical Technician [142.43 h]; Electrical Helper [142.43 h]; Labor [142.43 h] |
| SDR-ST-CON-P1-4570 | Install Pole Part 2 | 2027-01-07 → 2027-01-21 (+14d) | 2027-01-16 → 2027-01-30 (+14d) | 54.8d → 7d |  | resources SIC- Cost [53613]; Electrical Forman [40.4 h]; Electrical Technician [40.4 h]; Electrical Helper [40.4 h]; Labor [40.4 h] → SIC- Cost [53613]; Electrical Forman [39.97 h]; Electrical Technician [39.97 h]; Electrical Helper [39.97 h]; Labor [39.97 h] |
| 10 | **Excavation** | 2026-09-28 → 2026-10-12 (+14d) | 2026-11-21 → 2026-10-28 (-24d) |  |  |  |
| SDR-ST-CON-P1-1260 | Excavation for LV Cable trench Section 1 | 2026-09-28 → 2026-10-12 (+14d) | 2026-10-14 → 2026-10-28 (+14d) | 16.8d → 7d | SDR-ST-CON-P1-1250 SS, SDR-ST-ENG-AP-1090 → SDR-ST-CON-P1-1250 SS | resources SIC- Cost [5106]; Electrical Forman [143.96 h]; Electrical Technician [143.96 h]; Electrical Helper [143.96 h]; Labor [143.96 h]; Excavator [98.84 h]; Excavator Operator [143.96 h] → SIC- Cost [5106]; Electrical Forman [142.43 h]; Electrical Technician [142.43 h]; Electrical Helper [142.43 h]; Labor [142.43 h]; Excavator [98.84 h]; Excavator Operator [142.43 h] |
| SDR-ST-CON-P1-1760 | Excavation for LV Cable trench Section 2 | 2026-10-18 → 2026-10-12 (-6d) | 2026-11-03 → 2026-10-28 (-6d) | 16.8d → 43d | SDR-ST-CON-P1-1260 FS+2d → SDR-ST-CON-P1-1260 FF | resources SIC- Cost [5106]; Electrical Forman [38.39 h]; Electrical Technician [143.96 h]; Electrical Helper [143.96 h]; Labor [38.39 h]; Excavator [15.87 h]; Excavator Operator [143.96 h] → SIC- Cost [5106]; Electrical Forman [37.98 h]; Electrical Technician [142.43 h]; Electrical Helper [142.43 h]; Labor [37.98 h]; Excavator [15.87 h]; Excavator Operator [142.43 h] |
| SDR-ST-CON-P1-2260 | Excavation for LV Cable trench Section 3 | 2026-11-04 → 2026-10-12 (-23d) | 2026-11-21 → 2026-10-28 (-24d) | 16.8d → 43d | SDR-ST-CON-P1-1760 → SDR-ST-CON-P1-1760 FF | resources SIC- Cost [5106]; Electrical Forman [38.39 h]; Electrical Technician [143.96 h]; Electrical Helper [143.96 h]; Labor [38.39 h]; Excavator [15 h]; Excavator Operator [143.96 h] → SIC- Cost [5106]; Electrical Forman [37.98 h]; Electrical Technician [142.43 h]; Electrical Helper [142.43 h]; Labor [37.98 h]; Excavator [15 h]; Excavator Operator [142.43 h] |
| 11 | **Install Footings** | 2026-11-22 → 2026-10-29 (-24d) | 2026-12-07 → 2026-11-14 (-23d) |  |  |  |
| SDR-ST-CON-P1-2770 | Install Footings | 2026-11-22 → 2026-10-29 (-24d) | 2026-12-07 → 2026-11-14 (-23d) | 16.8d → 43d |  | resources SIC- Cost [15318]; Electrical Forman [38.39 h]; Electrical Technician [143.96 h]; Electrical Helper [143.96 h]; Labor [38.39 h] → SIC- Cost [15318]; Electrical Forman [37.98 h]; Electrical Technician [142.43 h]; Electrical Helper [142.43 h]; Labor [37.98 h] |
| 12 | **Backfilling** | 2026-12-08 → 2026-11-15 (-23d) | 2026-12-23 → 2026-11-30 (-23d) |  |  |  |
| SDR-ST-CON-P1-3350 | Backfilling over LV Cables of Street lighting | 2026-12-08 → 2026-11-15 (-23d) | 2026-12-23 → 2026-11-30 (-23d) | 16.8d → 43d |  | resources SIC- Cost [15318]; Electrical Forman [38.39 h]; Electrical Technician [143.96 h]; Electrical Helper [143.96 h]; Labor [38.39 h]; Excavator [15 h]; Excavator Operator [143.96 h] → SIC- Cost [15318]; Electrical Forman [37.98 h]; Electrical Technician [142.43 h]; Electrical Helper [142.43 h]; Labor [37.98 h]; Excavator [15 h]; Excavator Operator [142.43 h] |
| 13 | **Install pole** | 2026-12-24 → 2026-12-01 (-23d) | 2027-01-31 → 2027-01-24 (-7d) |  |  |  |
| SDR-ST-CON-P1-3940 | Install Pole Part 1 | 2026-12-24 → 2026-12-01 (-23d) | 2027-01-02 → 2026-12-09 (-24d) | 16.8d → 43d |  | resources SIC- Cost [53613]; Electrical Forman [38.39 h]; Electrical Technician [40.4 h]; Electrical Helper [40.4 h]; Labor [38.39 h] → SIC- Cost [53613]; Electrical Forman [37.98 h]; Electrical Technician [39.97 h]; Electrical Helper [39.97 h]; Labor [37.98 h] |
| SDR-ST-CON-P1-4400 | Install Pole Part 2 | 2027-01-21 → 2027-01-16 (-5d) | 2027-01-31 → 2027-01-24 (-7d) | 0.6d → 157d |  | resources SIC- Cost [53613]; Electrical Forman [40.4 h]; Electrical Technician [40.4 h]; Electrical Helper [40.4 h]; Labor [40.4 h] → SIC- Cost [53613]; Electrical Forman [39.97 h]; Electrical Technician [39.97 h]; Electrical Helper [39.97 h]; Labor [39.97 h] |
| 10 | **Excavation** | 2026-09-28 → 2026-10-12 (+14d) | 2026-11-17 → 2026-12-01 (+14d) |  |  |  |
| SDR-ST-CON-P1-1360 | Excavation for LV Cable trench Section 1 | 2026-09-28 → 2026-10-12 (+14d) | 2026-10-13 → 2026-10-27 (+14d) | 30.8d → 12d | SDR-ST-CON-P1-1350 SS, SDR-ST-ENG-AP-1090 → SDR-ST-CON-P1-1350 SS | resources SIC- Cost [5106]; Electrical Forman [143.96 h]; Electrical Technician [143.96 h]; Electrical Helper [143.96 h]; Labor [143.96 h]; Excavator [15 h]; Excavator Operator [143.96 h] → SIC- Cost [5106]; Electrical Forman [142.43 h]; Electrical Technician [142.43 h]; Electrical Helper [142.43 h]; Labor [142.43 h]; Excavator [15 h]; Excavator Operator [142.43 h] |
| SDR-ST-CON-P1-1900 | Excavation for LV Cable trench Section 2 | 2026-10-17 → 2026-10-31 (+14d) | 2026-11-01 → 2026-11-15 (+14d) | 38.9d → 18d |  | resources SIC- Cost [5106]; Electrical Forman [143.96 h]; Electrical Technician [143.96 h]; Electrical Helper [143.96 h]; Labor [143.96 h]; Excavator [20.63 h]; Excavator Operator [143.96 h] → SIC- Cost [5106]; Electrical Forman [142.43 h]; Electrical Technician [142.43 h]; Electrical Helper [142.43 h]; Labor [142.43 h]; Excavator [20.63 h]; Excavator Operator [142.43 h] |
| SDR-ST-CON-P1-2400 | Excavation for LV Cable trench Section 3 | 2026-11-02 → 2026-11-16 (+14d) | 2026-11-17 → 2026-12-01 (+14d) | 38.9d → 18d |  | resources SIC- Cost [5106]; Electrical Forman [143.96 h]; Electrical Technician [143.96 h]; Electrical Helper [143.96 h]; Labor [143.96 h]; Excavator [15 h]; Excavator Operator [143.96 h] → SIC- Cost [5106]; Electrical Forman [142.43 h]; Electrical Technician [142.43 h]; Electrical Helper [142.43 h]; Labor [142.43 h]; Excavator [15 h]; Excavator Operator [142.43 h] |
| 11 | **Install Footings** | 2026-11-18 → 2026-12-02 (+14d) | 2026-12-03 → 2026-12-17 (+14d) |  |  |  |
| SDR-ST-CON-P1-2840 | Install Footings | 2026-11-18 → 2026-12-02 (+14d) | 2026-12-03 → 2026-12-17 (+14d) | 38.9d → 18d |  | resources SIC- Cost [15318]; Electrical Forman [143.96 h]; Electrical Technician [143.96 h]; Electrical Helper [143.96 h]; Labor [143.96 h] → SIC- Cost [15318]; Electrical Forman [142.43 h]; Electrical Technician [142.43 h]; Electrical Helper [142.43 h]; Labor [142.43 h] |
| 12 | **Backfilling** | 2026-12-05 → 2026-12-19 (+14d) | 2026-12-20 → 2027-01-03 (+14d) |  |  |  |
| SDR-ST-CON-P1-3470 | Backfilling over LV Cables of Street lighting | 2026-12-05 → 2026-12-19 (+14d) | 2026-12-20 → 2027-01-03 (+14d) | 38.9d → 18d |  | resources SIC- Cost [15318]; Electrical Forman [143.96 h]; Electrical Technician [143.96 h]; Electrical Helper [143.96 h]; Labor [143.96 h]; Excavator [15 h]; Excavator Operator [143.96 h] → SIC- Cost [15318]; Electrical Forman [142.43 h]; Electrical Technician [142.43 h]; Electrical Helper [142.43 h]; Labor [142.43 h]; Excavator [15 h]; Excavator Operator [142.43 h] |
| 13 | **Install pole** | 2026-12-21 → 2027-01-04 (+14d) | 2027-01-20 → 2027-02-03 (+14d) |  |  |  |
| SDR-ST-CON-P1-4080 | Install Pole Part 1 | 2026-12-21 → 2027-01-04 (+14d) | 2027-01-04 → 2027-01-18 (+14d) | 38.9d → 18d |  | resources SIC- Cost [53613]; Electrical Forman [40.4 h]; Electrical Technician [40.4 h]; Electrical Helper [40.4 h]; Labor [40.4 h] → SIC- Cost [53613]; Electrical Forman [39.97 h]; Electrical Technician [39.97 h]; Electrical Helper [39.97 h]; Labor [39.97 h] |
| SDR-ST-CON-P1-4610 | Install Pole Part 2 | 2027-01-05 → 2027-01-19 (+14d) | 2027-01-20 → 2027-02-03 (+14d) | 38.9d → 18d |  | resources SIC- Cost [53613]; Electrical Forman [143.96 h]; Electrical Technician [143.96 h]; Electrical Helper [143.96 h]; Labor [143.96 h] → SIC- Cost [53613]; Electrical Forman [142.43 h]; Electrical Technician [142.43 h]; Electrical Helper [142.43 h]; Labor [142.43 h] |
| 1 | **Road Crossing & Drawpits** | 2026-09-28 → 2026-10-12 (+14d) | 2026-12-27 → 2027-01-10 (+14d) |  |  |  |
| 2 | **ROAD - 02** | 2026-09-28 → 2026-10-12 (+14d) | 2026-12-27 → 2027-01-10 (+14d) |  |  |  |
| 1 | **Road crossing Ducts & Drawpits** | 2026-09-28 → 2026-10-12 (+14d) | 2026-12-27 → 2027-01-10 (+14d) |  |  |  |
| 1 | **Excavation** | 2026-09-28 → 2026-10-12 (+14d) | 2026-10-21 → 2026-11-04 (+14d) |  |  |  |
| SDR-ST-CON-P1-1320 | Excavation for GRP Pipes Section 1 | 2026-09-28 → 2026-10-12 (+14d) | 2026-10-21 → 2026-11-04 (+14d) | 57.5d → 16d | SDR-ST-CON-P1-1310 SS, SDR-ST-ENG-AP-1090 → SDR-ST-CON-P1-1310 SS | resources SIC- Cost [2160.34]; Labor [38.39 h]; Excavator [42.61 h]; Excavator Operator [143.96 h] → SIC- Cost [2160.34]; Labor [37.98 h]; Excavator [42.61 h]; Excavator Operator [142.43 h] |
| 7 | **bedding Works** | 2026-10-22 → 2026-11-05 (+14d) | 2026-11-11 → 2026-11-25 (+14d) |  |  |  |
| SDR-ST-CON-P1-1950 | Sand bedding for GRP Pipes | 2026-10-22 → 2026-11-05 (+14d) | 2026-11-11 → 2026-11-25 (+14d) | 57.5d → 16d |  | resources SIC- Cost [540.09]; Labor [38.39 h]; Excavator [20 h]; Excavator Operator [143.96 h]; Loader [114.96 h] → SIC- Cost [540.09]; Labor [37.98 h]; Excavator [20 h]; Excavator Operator [142.43 h]; Loader [114.96 h] |
| 2 | **Pipes Laying** | 2026-11-12 → 2026-11-26 (+14d) | 2026-11-30 → 2026-12-14 (+14d) |  |  |  |
| SDR-ST-CON-P1-2560 | Install ST GRP Pipes | 2026-11-12 → 2026-11-26 (+14d) | 2026-11-30 → 2026-12-14 (+14d) | 57.5d → 16d |  | resources Pipe Fitter [143.96 h]; SIC- Cost [4860.77]; Labor [38.39 h] → Pipe Fitter [142.43 h]; SIC- Cost [4860.77]; Labor [37.98 h] |
| 6 | **Testing** | 2026-12-01 → 2026-12-15 (+14d) | 2026-12-14 → 2026-12-28 (+14d) |  |  |  |
| SDR-ST-CON-P1-3200 | Testing ST GRP Pipes | 2026-12-01 → 2026-12-15 (+14d) | 2026-12-14 → 2026-12-28 (+14d) | 57.5d → 16d |  | resources Pipe Fitter [143.96 h]; SIC- Cost [1080.17]; Labor [143.96 h] → Pipe Fitter [142.43 h]; SIC- Cost [1080.17]; Labor [142.43 h] |
| 3 | **Backfilling** | 2026-12-15 → 2026-12-29 (+14d) | 2026-12-27 → 2027-01-10 (+14d) |  |  |  |
| SDR-ST-CON-P1-3700 | Backfilling ST GRP Pipes | 2026-12-15 → 2026-12-29 (+14d) | 2026-12-27 → 2027-01-10 (+14d) | 57.5d → 16d |  | resources SIC- Cost [2160.34]; Labor [143.96 h]; Excavator [15 h]; Excavator Operator [143.96 h] → SIC- Cost [2160.34]; Labor [142.43 h]; Excavator [15 h]; Excavator Operator [142.43 h] |

| ID | Task | Start | Finish | Complete | Total float | Predecessors | Other |
| --- | --- | --- | --- | --- | --- | --- | --- |
| 1 | **Road crossing Ducts & Drawpits** | 2026-09-28 → 2026-10-12 (+14d) | 2026-12-23 → 2027-01-06 (+14d) |  |  |  |  |
| 1 | **Excavation** | 2026-09-28 → 2026-10-12 (+14d) | 2026-10-21 → 2026-11-04 (+14d) |  |  |  |  |
| SDR-ST-CON-P1-1270 | Excavation for GRP Pipes Section 1 | 2026-09-28 → 2026-10-12 (+14d) | 2026-10-21 → 2026-11-04 (+14d) |  | 60.5d → 19d | SDR-ST-CON-P1-1260 SS, SDR-ST-ENG-AP-1090 → SDR-ST-CON-P1-1260 SS | resources SIC- Cost [2160.34]; Labor [143.96 h]; Excavator [76.85 h]; Excavator Operator [143.96 h] → SIC- Cost [2160.34]; Labor [142.43 h]; Excavator [76.85 h]; Excavator Operator [142.43 h] |
| 7 | **bedding Works** | 2026-10-22 → 2026-11-05 (+14d) | 2026-11-10 → 2026-11-24 (+14d) |  |  |  |  |
| SDR-ST-CON-P1-1870 | Sand bedding for GRP Pipes | 2026-10-22 → 2026-11-05 (+14d) | 2026-11-10 → 2026-11-24 (+14d) |  | 60.5d → 19d |  | resources SIC- Cost [540.09]; Labor [38.39 h]; Excavator [20 h]; Excavator Operator [143.96 h]; Loader [132.54 h] → SIC- Cost [540.09]; Labor [37.98 h]; Excavator [20 h]; Excavator Operator [142.43 h]; Loader [132.54 h] |
| 2 | **Pipes Laying** | 2026-11-11 → 2026-11-25 (+14d) | 2026-11-26 → 2026-12-10 (+14d) |  |  |  |  |
| SDR-ST-CON-P1-2470 | Install ST GRP Pipes | 2026-11-11 → 2026-11-25 (+14d) | 2026-11-26 → 2026-12-10 (+14d) |  | 60.5d → 19d |  | resources Pipe Fitter [143.96 h]; SIC- Cost [4860.77]; Labor [38.39 h] → Pipe Fitter [142.43 h]; SIC- Cost [4860.77]; Labor [37.98 h] |
| 6 | **Testing** | 2026-11-28 → 2026-12-12 (+14d) | 2026-12-07 → 2026-12-21 (+14d) |  |  |  |  |
| SDR-ST-CON-P1-2970 | Testing ST GRP Pipes | 2026-11-28 → 2026-12-12 (+14d) | 2026-12-07 → 2026-12-21 (+14d) |  | 60.5d → 19d |  | resources Pipe Fitter [143.96 h]; SIC- Cost [1080.17]; Labor [38.39 h] → Pipe Fitter [142.43 h]; SIC- Cost [1080.17]; Labor [37.98 h] |
| 3 | **Backfilling** | 2026-12-08 → 2026-12-22 (+14d) | 2026-12-23 → 2027-01-06 (+14d) |  |  |  |  |
| SDR-ST-CON-P1-3360 | Backfilling ST GRP Pipes | 2026-12-08 → 2026-12-22 (+14d) | 2026-12-23 → 2027-01-06 (+14d) |  | 60.5d → 19d |  | resources SIC- Cost [2160.34]; Labor [38.39 h]; Excavator [15 h]; Excavator Operator [143.96 h] → SIC- Cost [2160.34]; Labor [37.98 h]; Excavator [15 h]; Excavator Operator [142.43 h] |
| 1 | **Road crossing Ducts & Drawpits** | 2026-09-28 → 2026-10-12 (+14d) | 2026-12-17 → 2026-12-31 (+14d) |  |  |  |  |
| 1 | **Excavation** | 2026-09-28 → 2026-10-12 (+14d) | 2026-10-21 → 2026-11-04 (+14d) |  |  |  |  |
| SDR-ST-CON-P1-1370 | Excavation for GRP Pipes Section 1 | 2026-09-28 → 2026-10-12 (+14d) | 2026-10-21 → 2026-11-04 (+14d) |  | 65.5d → 24d | SDR-ST-CON-P1-1360 SS, SDR-ST-ENG-AP-1090 → SDR-ST-CON-P1-1360 SS | resources SIC- Cost [2160.34]; Labor [38.39 h]; Excavator [15 h]; Excavator Operator [143.96 h] → SIC- Cost [2160.34]; Labor [37.98 h]; Excavator [15 h]; Excavator Operator [142.43 h] |
| 7 | **bedding Works** | 2026-10-22 → 2026-11-05 (+14d) | 2026-11-08 → 2026-11-22 (+14d) |  |  |  |  |
| SDR-ST-CON-P1-2060 | Sand bedding for GRP Pipes | 2026-10-22 → 2026-11-05 (+14d) | 2026-11-08 → 2026-11-22 (+14d) |  | 65.5d → 24d |  | resources SIC- Cost [540.09]; Labor [38.39 h]; Excavator [20 h]; Excavator Operator [143.96 h]; Loader [96.77 h] → SIC- Cost [540.09]; Labor [37.98 h]; Excavator [20 h]; Excavator Operator [142.43 h]; Loader [96.77 h] |
| 2 | **Pipes Laying** | 2026-11-09 → 2026-11-23 (+14d) | 2026-11-24 → 2026-12-08 (+14d) |  |  |  |  |
| SDR-ST-CON-P1-2600 | Install ST GRP Pipes | 2026-11-09 → 2026-11-23 (+14d) | 2026-11-24 → 2026-12-08 (+14d) |  | 65.5d → 24d |  | resources Pipe Fitter [143.96 h]; SIC- Cost [4860.77]; Labor [38.39 h] → Pipe Fitter [142.43 h]; SIC- Cost [4860.77]; Labor [37.98 h] |
| 6 | **Testing** | 2026-11-25 → 2026-12-09 (+14d) | 2026-12-03 → 2026-12-17 (+14d) |  |  |  |  |
| SDR-ST-CON-P1-3110 | Testing ST GRP Pipes | 2026-11-25 → 2026-12-09 (+14d) | 2026-12-03 → 2026-12-17 (+14d) |  | 65.5d → 24d |  | resources Pipe Fitter [143.96 h]; SIC- Cost [1080.17]; Labor [38.39 h] → Pipe Fitter [142.43 h]; SIC- Cost [1080.17]; Labor [37.98 h] |
| 3 | **Backfilling** | 2026-12-05 → 2026-12-19 (+14d) | 2026-12-17 → 2026-12-31 (+14d) |  |  |  |  |
| SDR-ST-CON-P1-3480 | Backfilling ST GRP Pipes | 2026-12-05 → 2026-12-19 (+14d) | 2026-12-17 → 2026-12-31 (+14d) |  | 65.5d → 24d |  | resources SIC- Cost [2160.34]; Labor [38.39 h]; Excavator [15 h]; Excavator Operator [143.96 h] → SIC- Cost [2160.34]; Labor [37.98 h]; Excavator [15 h]; Excavator Operator [142.43 h] |
| 11 | **Ring Main Unit** | 2027-04-14 → 2027-04-18 (+4d) | 2027-07-26 → 2027-07-13 (-13d) |  |  |  |  |
| 1 | **Leveling** | 2027-04-14 → 2027-04-18 (+4d) | 2027-05-08 → 2027-05-10 (+2d) |  |  |  |  |
| SDR-ST-CON-P1-5810 | Ring Main Unit leveling | 2027-04-14 → 2027-04-18 (+4d) | 2027-05-08 → 2027-05-10 (+2d) |  | 5.8d → 1d |  | resources SIC- Cost [5534.7]; Electrical Forman [143.96 h]; Electrical Technician [143.96 h]; Electrical Helper [143.96 h]; Labor [143.96 h] → SIC- Cost [5534.7]; Electrical Forman [142.43 h]; Electrical Technician [142.43 h]; Electrical Helper [142.43 h]; Labor [142.43 h] |
| 2 | **Lean Concrete** | 2027-06-21 → 2027-05-11 (-41d) | 2027-07-14 → 2027-06-08 (-36d) |  |  |  |  |
| SDR-ST-CON-P1-5850 | Ring Main Unit Lean Concrete | 2027-06-21 → 2027-05-11 (-41d) | 2027-07-14 → 2027-06-08 (-36d) |  | 2.5d → 1d | SDR-ST-CON-P1-5810, SDR-ST-CON-P1-5390 FF → SDR-ST-CON-P1-5810, SDR-ST-CON-P1-5390 | resources SIC- Cost [11069.4]; Electrical Forman [143.96 h]; Electrical Technician [143.96 h]; Electrical Helper [143.96 h]; Labor [143.96 h] → SIC- Cost [11069.4]; Electrical Forman [142.43 h]; Electrical Technician [142.43 h]; Electrical Helper [142.43 h]; Labor [142.43 h] |
| 3 | **Installation** | 2027-07-03 → 2027-06-21 (-12d) | 2027-07-26 → 2027-07-13 (-13d) |  |  |  |  |
| SDR-ST-CON-P1-5970 | Ring Main Unit installation for Street Lighting | 2027-07-03 → 2027-06-21 (-12d) | 2027-07-26 → 2027-07-13 (-13d) |  | 2.5d → 1d | SDR-ST-CON-P1-5850 SS+10d → SDR-ST-CON-P1-5850 FS+10d | resources SIC- Cost [38742.9]; Electrical Forman [143.96 h]; Electrical Technician [143.96 h]; Electrical Helper [143.96 h]; Labor [143.96 h] → SIC- Cost [38742.9]; Electrical Forman [142.43 h]; Electrical Technician [142.43 h]; Electrical Helper [142.43 h]; Labor [142.43 h] |
| 12 | **Feeder Pillars** | 2027-04-14 → 2027-04-18 (+4d) | 2027-07-17 → 2027-07-19 (+2d) |  |  |  |  |
| 1 | **Leveling** | 2027-04-14 → 2027-04-18 (+4d) | 2027-05-08 → 2027-05-10 (+2d) |  |  |  |  |
| SDR-ST-CON-P1-5820 | Feeder Pillars Leveling | 2027-04-14 → 2027-04-18 (+4d) | 2027-05-08 → 2027-05-10 (+2d) |  | 5.8d → 1d | SDR-ST-CON-P1-5810 SS, SDR-ST-ENG-AP-1090 → SDR-ST-CON-P1-5810 SS | resources SIC- Cost [1209.3]; Electrical Forman [143.96 h]; Electrical Technician [143.96 h]; Electrical Helper [143.96 h]; Labor [143.96 h] → SIC- Cost [1209.3]; Electrical Forman [142.43 h]; Electrical Technician [142.43 h]; Electrical Helper [142.43 h]; Labor [142.43 h] |
| 2 | **Lean Concrete** | 2027-05-08 → 2027-05-11 (+3d) | 2027-06-06 → 2027-06-08 (+2d) |  |  |  |  |
| SDR-ST-CON-P1-5860 | Feeder Pillars Lean Concrete | 2027-05-08 → 2027-05-11 (+3d) | 2027-06-06 → 2027-06-08 (+2d) |  | 5.8d → 4d |  | resources SIC- Cost [2418.6]; Electrical Forman [143.96 h]; Electrical Technician [143.96 h]; Electrical Helper [143.96 h]; Labor [143.96 h] → SIC- Cost [2418.6]; Electrical Forman [142.43 h]; Electrical Technician [142.43 h]; Electrical Helper [142.43 h]; Labor [142.43 h] |
| 3 | **Installation** | 2027-06-23 → 2027-06-27 (+4d) | 2027-07-17 → 2027-07-19 (+2d) |  |  |  |  |
| SDR-ST-CON-P1-5980 | Feeder Pillars Installation | 2027-06-23 → 2027-06-27 (+4d) | 2027-07-17 → 2027-07-19 (+2d) |  | 5.8d → 4d |  | resources SIC- Cost [8465.11]; Electrical Forman [143.96 h]; Electrical Technician [143.96 h]; Electrical Helper [143.96 h]; Labor [143.96 h] → SIC- Cost [8465.11]; Electrical Forman [142.43 h]; Electrical Technician [142.43 h]; Electrical Helper [142.43 h]; Labor [142.43 h] |
| 13 | **KWH Frame** | 2027-04-15 → 2027-04-19 (+4d) | 2027-07-13 → 2027-07-03 (-10d) |  |  |  |  |
| 1 | **Leveling** | 2027-04-15 → 2027-04-19 (+4d) | 2027-05-09 → 2027-05-11 (+2d) |  |  |  |  |
| SDR-ST-CON-P1-5830 | KWH meter mounting frame Leveling | 2027-04-15 → 2027-04-19 (+4d) | 2027-05-09 → 2027-05-11 (+2d) |  | 25.8d → 1d | SDR-ST-CON-P1-5820 SS+1d, SDR-ST-ENG-AP-1090 → SDR-ST-CON-P1-5820 SS+1d | resources SIC- Cost [720.9]; Electrical Forman [143.96 h]; Electrical Technician [143.96 h]; Electrical Helper [143.96 h]; Labor [143.96 h] → SIC- Cost [720.9]; Electrical Forman [142.43 h]; Electrical Technician [142.43 h]; Electrical Helper [142.43 h]; Labor [142.43 h] |
| 2 | **Lean Concrete** | 2027-06-20 → 2027-05-12 (-39d) | 2027-07-13 → 2027-06-09 (-34d) |  |  |  |  |
| SDR-ST-CON-P1-5870 | KWH meter mounting frame Lean Concrete | 2027-06-20 → 2027-05-12 (-39d) | 2027-07-13 → 2027-06-09 (-34d) |  | 13.6d → 2d |  | resources SIC- Cost [1441.8]; Electrical Forman [143.96 h]; Electrical Technician [143.96 h]; Electrical Helper [143.96 h]; Labor [143.96 h] → SIC- Cost [1441.8]; Electrical Forman [142.43 h]; Electrical Technician [142.43 h]; Electrical Helper [142.43 h]; Labor [142.43 h] |
| 3 | **Installation** | 2027-06-20 → 2027-06-10 (-10d) | 2027-07-13 → 2027-07-03 (-10d) |  |  |  |  |
| SDR-ST-CON-P1-5910 | KWH meter mounting frame installation | 2027-06-20 → 2027-06-10 (-10d) | 2027-07-13 → 2027-07-03 (-10d) |  | 13.6d → 2d | SDR-ST-CON-P1-5870 FF → SDR-ST-CON-P1-5870 | resources SIC- Cost [5046.3]; Electrical Forman [143.96 h]; Electrical Technician [143.96 h]; Electrical Helper [143.96 h]; Labor [143.96 h] → SIC- Cost [5046.3]; Electrical Forman [142.43 h]; Electrical Technician [142.43 h]; Electrical Helper [142.43 h]; Labor [142.43 h] |
| 14 | **Street Lighting Sub-station** | 2027-05-09 → 2027-05-12 (+3d) | 2027-07-28 → 2027-07-22 (-6d) |  |  |  |  |
| 1 | **Leveling** | 2027-05-09 → 2027-05-12 (+3d) | 2027-06-07 → 2027-06-09 (+2d) |  |  |  |  |
| SDR-ST-CON-P1-5900 | Unit Substation Leveling | 2027-05-09 → 2027-05-12 (+3d) | 2027-06-07 → 2027-06-09 (+2d) |  | 25.8d → 1d |  | resources SIC- Cost [8108.51]; Electrical Forman [143.96 h]; Electrical Technician [143.96 h]; Electrical Helper [143.96 h]; Labor [48.69 h] → SIC- Cost [8108.51]; Electrical Forman [142.43 h]; Electrical Technician [142.43 h]; Electrical Helper [142.43 h]; Labor [48.17 h] |
| 2 | **Lean Concrete** | 2027-06-27 → 2027-06-10 (-17d) | 2027-07-20 → 2027-07-03 (-17d) |  |  |  |  |
| SDR-ST-CON-P1-5990 | Unit Substation Lean Concrete | 2027-06-27 → 2027-06-10 (-17d) | 2027-07-20 → 2027-07-03 (-17d) |  | 8.5d → 1d | SDR-ST-CON-P1-5900, SDR-ST-CO-1010 SS → SDR-ST-CON-P1-5900, SDR-ST-CO-1010 | resources SIC- Cost [16217]; Electrical Forman [143.96 h]; Electrical Technician [2055.47 h]; Electrical Helper [2055.47 h]; Labor [2055.47 h] → SIC- Cost [16217]; Electrical Forman [142.43 h]; Electrical Technician [2033.59 h]; Electrical Helper [2033.59 h]; Labor [2033.59 h] |
| 3 | **Installation** | 2027-07-08 → 2027-07-04 (-4d) | 2027-07-28 → 2027-07-22 (-6d) |  |  |  |  |
| SDR-ST-CON-P1-6030 | Unit Substation Install for Street Lighting | 2027-07-08 → 2027-07-04 (-4d) | 2027-07-28 → 2027-07-22 (-6d) |  | 8.5d → 1d | SDR-ST-CON-P1-5990 SS+10d → SDR-ST-CON-P1-5990 | resources SIC- Cost [56759.6]; Electrical Forman [143.96 h]; Electrical Technician [143.96 h]; Electrical Helper [143.96 h]; Labor [143.96 h] → SIC- Cost [56759.6]; Electrical Forman [142.43 h]; Electrical Technician [142.43 h]; Electrical Helper [142.43 h]; Labor [142.43 h] |
| 5 | **TELECOMMUNICATIONS WORKS** |  | 2027-03-08 → 2027-02-13 (-23d) |  |  |  |  |
| 3 | **ROAD - 01** |  | 2027-03-08 → 2027-02-13 (-23d) |  |  |  |  |
| 4 | **ROAD-01 N 1 (2X3)X50 mm MH-15 to MH-16** |  | 2027-02-21 → 2027-01-14 (-38d) |  |  |  |  |
| 3 | **Ducts** |  | 2026-12-31 → 2027-01-14 (+14d) |  |  |  |  |
| 2 | **Excavation** |  | 2026-10-21 → 2026-11-04 (+14d) |  |  |  |  |
| SDR-ST-CON-P1-1690 | Excavation for telecom trench Section 1 |  |  |  |  | SDR-ST-CON-P1-1700 SS, SDR-ST-ENG-AP-1090 → none | resources SIC- Cost [2028.61]; Excavator [31.46 h]; Excavator Operator [143.96 h] → SIC- Cost [2028.61]; Excavator [31.46 h]; Excavator Operator [142.43 h] |
| SDR-ST-CON-P1-2340 | Excavation for telecom trench Section 2 | 2026-09-28 → 2026-10-12 (+14d) | 2026-10-21 → 2026-11-04 (+14d) |  | 42.9d → 11d |  | resources SIC- Cost [2028.61]; Excavator [15 h]; Excavator Operator [143.96 h] → SIC- Cost [2028.61]; Excavator [15 h]; Excavator Operator [142.43 h] |
| 5 | **Pipe laying** | 2026-10-22 → 2026-11-05 (+14d) | 2026-11-14 → 2026-11-28 (+14d) |  |  |  |  |
| SDR-ST-CON-P1-3070 | HDPE Pipes for Telecom Installation | 2026-10-22 → 2026-11-05 (+14d) | 2026-11-14 → 2026-11-28 (+14d) |  | 42.9d → 11d |  | resources SIC- Cost [8114.47]; Electrical Forman [38.39 h]; Electrical Technician [136.76 h]; Electrical Helper [136.76 h] → SIC- Cost [8114.47]; Electrical Forman [37.98 h]; Electrical Technician [135.31 h]; Electrical Helper [135.31 h] |
| 6 | **Backfilling** | 2026-11-15 → 2026-11-29 (+14d) | 2026-12-07 → 2026-12-21 (+14d) |  |  |  |  |
| SDR-ST-CON-P1-3680 | Backfilling over HDPE Telecom Pipes | 2026-11-15 → 2026-11-29 (+14d) | 2026-12-07 → 2026-12-21 (+14d) |  | 42.9d → 11d |  | resources SIC- Cost [4057.23]; Excavator [15 h]; Excavator Operator [129.56 h] → SIC- Cost [4057.23]; Excavator [15 h]; Excavator Operator [128.18 h] |
| 7 | **Pulling Cable** | 2026-12-08 → 2026-12-22 (+14d) | 2026-12-31 → 2027-01-14 (+14d) |  |  |  |  |
| SDR-ST-CON-P1-4310 | Pulling Cable | 2026-12-08 → 2026-12-22 (+14d) | 2026-12-31 → 2027-01-14 (+14d) |  | 42.9d → 11d |  | resources SIC- Cost [24343.4]; Electrical Forman [129.56 h]; Electrical Technician [129.56 h]; Electrical Helper [129.56 h] → SIC- Cost [24343.4]; Electrical Forman [128.18 h]; Electrical Technician [128.18 h]; Electrical Helper [128.18 h] |
| 4 | **Manholes** | 2026-09-28 → 2026-09-21 (-7d) | 2027-02-21 → 2027-01-13 (-39d) |  |  |  |  |
| 1 | **Excavation** | 2026-09-28 → 2026-09-21 (-7d) | 2026-11-15 → 2026-11-29 (+14d) |  |  |  |  |
| SDR-ST-CON-P1-1680 | Excavation for Telecom Manhole Section 1 | 2026-09-28 → 2026-09-21 A (-7d) | 2026-10-21 → 2026-11-04 (+14d) | 0% → 50% | 25.8d → 31d | SDR-ST-CON-P1-1690 SS, SDR-ST-ENG-AP-1090 → SDR-ST-CON-P1-1690 SS | resources SIC- Cost [1012.67]; Excavator [30 h]; Excavator Operator [129.56 h] → SIC- Cost [1012.67]; Excavator [30 h]; Excavator Operator [128.18 h] |
| SDR-ST-CON-P1-2370 | Excavation for Telecom Manhole Section 2 | 2026-10-22 → 2026-11-05 (+14d) | 2026-11-15 → 2026-11-29 (+14d) |  | 25.8d → 31d |  | resources SIC- Cost [1012.67]; Excavator [15 h]; Excavator Operator [129.56 h] → SIC- Cost [1012.67]; Excavator [15 h]; Excavator Operator [128.18 h] |
| 2 | **Bedding Work** | 2026-11-16 → 2026-09-24 (-53d) | 2026-12-08 → 2026-11-29 (-9d) |  |  |  |  |
| SDR-ST-CON-P1-3080 | Sand bedding for Telecom Manhole | 2026-11-16 → 2026-09-24 A (-53d) | 2026-12-08 → 2026-11-29 (-9d) | 0% → 50% | 25.8d → 31d | SDR-ST-CON-P1-2370 → SDR-ST-CON-P1-2370 FF | resources SIC- Cost [1350.23]; Labor [38.39 h]; Excavator [25.75 h]; Excavator Operator [129.56 h] → SIC- Cost [1350.23]; Labor [37.98 h]; Excavator [25.75 h]; Excavator Operator [128.18 h] |
| 3 | **Install Manholes** | 2026-12-09 → 2026-10-05 (-65d) | 2026-12-31 → 2026-11-29 (-32d) |  |  |  |  |

| ID | Task | Start | Finish | Complete | Total float | Predecessors | Other |
| --- | --- | --- | --- | --- | --- | --- | --- |
| SDR-ST-CON-P1-3690 | Installation of Telecom Manhole | 2026-12-09 → 2026-10-05 A (-65d) | 2026-12-31 → 2026-11-29 (-32d) | 0% → 50% | 25.8d → 31d | SDR-ST-CON-P1-1680, SDR-ST-CON-P1-3080 → SDR-ST-CON-P1-1680 SS, SDR-ST-CON-P1-3080 SS | resources SIC- Cost [6076.04]; Electrical Forman [129.56 h]; Electrical Technician [129.56 h]; Electrical Helper [129.56 h] → SIC- Cost [6076.04]; Electrical Forman [128.18 h]; Electrical Technician [128.18 h]; Electrical Helper [128.18 h] |
| 4 | **Testting** | 2027-01-02 → 2026-11-30 (-33d) | 2027-01-24 → 2026-12-22 (-33d) |  |  |  |  |
| SDR-ST-CON-P1-4360 | Telecom Manhole finishing works | 2027-01-02 → 2026-11-30 (-33d) | 2027-01-24 → 2026-12-22 (-33d) |  | 25.8d → 31d |  | resources SIC- Cost [1350.23]; Electrical Forman [129.56 h]; Electrical Technician [129.56 h]; Electrical Helper [129.56 h] → SIC- Cost [1350.23]; Electrical Forman [128.18 h]; Electrical Technician [128.18 h]; Electrical Helper [128.18 h] |
| 5 | **Backfilling** | 2027-01-25 → 2026-12-23 (-33d) | 2027-02-21 → 2027-01-13 (-39d) |  |  |  |  |
| SDR-ST-CON-P1-4880 | Backfilling over Telecom Manhole | 2027-01-25 → 2026-12-23 (-33d) | 2027-02-21 → 2027-01-13 (-39d) |  | 25.8d → 31d |  | resources SIC- Cost [2700.46]; Excavator [60 h]; Excavator Operator [129.56 h] → SIC- Cost [2700.46]; Excavator [60 h]; Excavator Operator [128.18 h] |
| 2 | **ROAD-01 From 0 to 470 m (3) (2X3)X50 mm MH-12 to MH-14** |  | 2027-02-25 → 2027-02-13 (-12d) |  |  |  |  |
| 3 | **Ducts** |  | 2027-01-03 → 2027-01-17 (+14d) |  |  |  |  |
| 2 | **Excavation** |  | 2026-10-21 → 2026-11-04 (+14d) |  |  |  |  |
| SDR-ST-CON-P1-1530 | Excavation for telecom trench Section 1 |  |  |  |  | SDR-ST-CON-P1-1500 SS, SDR-ST-ENG-AP-1090 → none | resources SIC- Cost [2028.61]; Excavator [15 h]; Excavator Operator [129.56 h] → SIC- Cost [2028.61]; Excavator [15 h]; Excavator Operator [128.18 h] |
| SDR-ST-CON-P1-2190 | Excavation for telecom trench Section 2 | 2026-09-28 → 2026-10-12 (+14d) | 2026-10-21 → 2026-11-04 (+14d) |  | 56.8d → 5d |  | resources SIC- Cost [2028.61]; Excavator [18.51 h]; Excavator Operator [129.56 h] → SIC- Cost [2028.61]; Excavator [18.51 h]; Excavator Operator [128.18 h] |
| 5 | **Pipe laying** | 2026-10-22 → 2026-11-05 (+14d) | 2026-11-15 → 2026-11-29 (+14d) |  |  |  |  |
| SDR-ST-CON-P1-2940 | HDPE Pipes for Telecom Installation | 2026-10-22 → 2026-11-05 (+14d) | 2026-11-15 → 2026-11-29 (+14d) |  | 56.8d → 5d |  | resources SIC- Cost [8114.47]; Electrical Forman [38.39 h]; Electrical Technician [129.56 h]; Electrical Helper [129.56 h] → SIC- Cost [8114.47]; Electrical Forman [37.98 h]; Electrical Technician [128.18 h]; Electrical Helper [128.18 h] |
| 6 | **Backfilling** | 2026-11-16 → 2026-11-30 (+14d) | 2026-12-09 → 2026-12-23 (+14d) |  |  |  |  |
| SDR-ST-CON-P1-3770 | Backfilling over HDPE Telecom Pipes | 2026-11-16 → 2026-11-30 (+14d) | 2026-12-09 → 2026-12-23 (+14d) |  | 56.8d → 5d |  | resources SIC- Cost [4057.23]; Excavator [22.5 h]; Excavator Operator [129.56 h] → SIC- Cost [4057.23]; Excavator [22.5 h]; Excavator Operator [128.18 h] |
| 7 | **Pulling Cable** | 2026-12-10 → 2026-12-24 (+14d) | 2027-01-03 → 2027-01-17 (+14d) |  |  |  |  |
| SDR-ST-CON-P1-4370 | Pulling Cable | 2026-12-10 → 2026-12-24 (+14d) | 2027-01-03 → 2027-01-17 (+14d) |  | 56.8d → 5d |  | resources SIC- Cost [24343.4]; Electrical Forman [129.56 h]; Electrical Technician [129.56 h]; Electrical Helper [129.56 h] → SIC- Cost [24343.4]; Electrical Forman [128.18 h]; Electrical Technician [128.18 h]; Electrical Helper [128.18 h] |
| 4 | **Manholes** | 2026-09-28 → 2026-09-30 (+2d) | 2027-02-25 → 2027-02-13 (-12d) |  |  |  |  |
| 1 | **Excavation** | 2026-09-28 → 2026-09-30 (+2d) | 2026-11-15 → 2026-11-04 (-11d) |  |  |  |  |
| SDR-ST-CON-P1-1520 | Excavation for Telecom Manhole Section 1 | 2026-09-28 → 2026-09-30 A (+2d) | 2026-10-21 → 2026-11-04 (+14d) | 0% → 25% | 38.8d → 8d | SDR-ST-CON-P1-1530 SS, SDR-ST-ENG-AP-1090 → SDR-ST-CON-P1-1530 SS | resources SIC- Cost [1012.67]; Excavator [15 h]; Excavator Operator [129.56 h] → SIC- Cost [1012.67]; Excavator [15 h]; Excavator Operator [128.18 h] |
| SDR-ST-CON-P1-2200 | Excavation for Telecom Manhole Section 2 | 2026-10-22 → 2026-10-12 (-10d) | 2026-11-15 → 2026-11-04 (-11d) |  | 38.8d → 8d | SDR-ST-CON-P1-1520 → SDR-ST-CON-P1-1520 FF | resources SIC- Cost [1012.67]; Excavator [17.63 h]; Excavator Operator [129.56 h] → SIC- Cost [1012.67]; Excavator [17.63 h]; Excavator Operator [128.18 h] |
| 2 | **Bedding Work** | 2026-11-16 → 2026-11-11 (-5d) | 2026-12-07 → 2026-12-02 (-5d) |  |  |  |  |
| SDR-ST-CON-P1-2950 | Sand bedding for Telecom Manhole | 2026-11-16 → 2026-11-11 (-5d) | 2026-12-07 → 2026-12-02 (-5d) |  | 38.8d → 3d |  | resources SIC- Cost [1350.23]; Labor [38.39 h]; Excavator [30 h]; Excavator Operator [129.56 h] → SIC- Cost [1350.23]; Labor [37.98 h]; Excavator [30 h]; Excavator Operator [128.18 h] |
| 3 | **Install Manholes** | 2026-12-08 → 2026-12-03 (-5d) | 2026-12-30 → 2026-12-26 (-4d) |  |  |  |  |
| SDR-ST-CON-P1-3780 | Installation of Telecom Manhole | 2026-12-08 → 2026-12-03 (-5d) | 2026-12-30 → 2026-12-26 (-4d) |  | 38.8d → 3d |  | resources SIC- Cost [6076.04]; Electrical Forman [129.56 h]; Electrical Technician [129.56 h]; Electrical Helper [129.56 h] → SIC- Cost [6076.04]; Electrical Forman [128.18 h]; Electrical Technician [128.18 h]; Electrical Helper [128.18 h] |
| 4 | **Testting** | 2026-12-31 → 2026-12-27 (-4d) | 2027-01-24 → 2027-01-19 (-5d) |  |  |  |  |
| SDR-ST-CON-P1-4630 | Telecom Manhole finishing works | 2026-12-31 → 2026-12-27 (-4d) | 2027-01-24 → 2027-01-19 (-5d) |  | 38.8d → 3d |  | resources SIC- Cost [1350.23]; Electrical Forman [100.77 h]; Electrical Technician [100.77 h]; Electrical Helper [100.77 h] → SIC- Cost [1350.23]; Electrical Forman [99.7 h]; Electrical Technician [99.7 h]; Electrical Helper [99.7 h] |
| 5 | **Backfilling** | 2027-01-25 → 2027-01-20 (-5d) | 2027-02-25 → 2027-02-13 (-12d) |  |  |  |  |
| SDR-ST-CON-P1-5140 | Backfilling over Telecom Manhole | 2027-01-25 → 2027-01-20 (-5d) | 2027-02-25 → 2027-02-13 (-12d) |  | 38.8d → 3d |  | resources SIC- Cost [2700.46]; Excavator [128.34 h]; Excavator Operator [129.56 h] → SIC- Cost [2700.46]; Excavator [128.34 h]; Excavator Operator [128.18 h] |
| 1 | **ROAD-01 From 470 to 1125 m (6) (2X3)X50 mm MH-10 to MH-11** |  | 2027-03-08 → 2027-02-13 (-23d) |  |  |  |  |
| 3 | **Ducts** |  | 2027-01-05 → 2027-01-13 (+8d) |  |  |  |  |
| 2 | **Excavation** |  | 2026-10-27 → 2026-11-04 (+8d) |  |  |  |  |
| SDR-ST-CON-P1-1240 | Excavation for telecom trench Section 1 |  |  |  |  | SDR-ST-CON-P1-1180 SS+10d, SDR-ST-ENG-AP-1090 → none | resources SIC- Cost [2028.61]; Excavator [74.02 h]; Excavator Operator [129.56 h] → SIC- Cost [2028.61]; Excavator [74.02 h]; Excavator Operator [128.18 h] |
| SDR-ST-CON-P1-1790 | Excavation for telecom trench Section 2 | 2026-10-04 → 2026-10-12 (+8d) | 2026-10-27 → 2026-11-04 (+8d) |  | 41.8d → 12d |  | resources SIC- Cost [2028.61]; Excavator [20 h]; Excavator Operator [129.56 h] → SIC- Cost [2028.61]; Excavator [20 h]; Excavator Operator [128.18 h] |
| 5 | **Pipe laying** | 2026-10-28 → 2026-11-05 (+8d) | 2026-11-21 → 2026-11-29 (+8d) |  |  |  |  |
| SDR-ST-CON-P1-2510 | HDPE Pipes for Telecom Installation | 2026-10-28 → 2026-11-05 (+8d) | 2026-11-21 → 2026-11-29 (+8d) |  | 41.8d → 12d |  | resources SIC- Cost [8114.47]; Electrical Forman [38.39 h]; Electrical Technician [129.56 h]; Electrical Helper [129.56 h] → SIC- Cost [8114.47]; Electrical Forman [37.98 h]; Electrical Technician [128.18 h]; Electrical Helper [128.18 h] |
| 6 | **Backfilling** | 2026-11-22 → 2026-11-30 (+8d) | 2026-12-12 → 2026-12-20 (+8d) |  |  |  |  |
| SDR-ST-CON-P1-3230 | Backfilling over HDPE Telecom Pipes | 2026-11-22 → 2026-11-30 (+8d) | 2026-12-12 → 2026-12-20 (+8d) |  | 41.8d → 12d |  | resources SIC- Cost [4057.23]; Excavator [100 h]; Excavator Operator [95.97 h] → SIC- Cost [4057.23]; Excavator [100 h]; Excavator Operator [94.95 h] |
| 7 | **Pulling Cable** | 2026-12-13 → 2026-12-21 (+8d) | 2027-01-05 → 2027-01-13 (+8d) |  |  |  |  |
| SDR-ST-CON-P1-4020 | Pulling Cable | 2026-12-13 → 2026-12-21 (+8d) | 2027-01-05 → 2027-01-13 (+8d) |  | 41.8d → 12d |  | resources SIC- Cost [24343.4]; Electrical Forman [129.56 h]; Electrical Technician [129.56 h]; Electrical Helper [129.56 h] → SIC- Cost [24343.4]; Electrical Forman [128.18 h]; Electrical Technician [128.18 h]; Electrical Helper [128.18 h] |
| 4 | **Manholes** | 2026-10-04 → 2026-10-12 (+8d) | 2027-03-08 → 2027-02-13 (-23d) |  |  |  |  |
| 1 | **Excavation** | 2026-10-04 → 2026-10-12 (+8d) | 2026-11-21 → 2026-11-04 (-17d) |  |  |  |  |
| SDR-ST-CON-P1-1230 | Excavation for Telecom Manhole Section 1 | 2026-10-04 → 2026-10-12 (+8d) | 2026-10-27 → 2026-11-04 (+8d) |  | 18.8d → 10d | SDR-ST-CON-P1-1240 SS, SDR-ST-ENG-AP-1090 → SDR-ST-CON-P1-1240 SS | resources SIC- Cost [1012.67]; Excavator [59.26 h]; Excavator Operator [129.56 h] → SIC- Cost [1012.67]; Excavator [59.26 h]; Excavator Operator [128.18 h] |
| SDR-ST-CON-P1-1800 | Excavation for Telecom Manhole Section 2 | 2026-10-28 → 2026-10-12 (-16d) | 2026-11-21 → 2026-11-04 (-17d) |  | 18.8d → 10d | SDR-ST-CON-P1-1230 → SDR-ST-CON-P1-1230 FF | resources SIC- Cost [1012.67]; Excavator [20 h]; Excavator Operator [95.97 h] → SIC- Cost [1012.67]; Excavator [20 h]; Excavator Operator [94.95 h] |
| 2 | **Bedding Work** | 2026-11-22 → 2026-11-11 (-11d) | 2026-12-13 → 2026-12-02 (-11d) |  |  |  |  |
| SDR-ST-CON-P1-2520 | Sand bedding for Telecom Manhole | 2026-11-22 → 2026-11-11 (-11d) | 2026-12-13 → 2026-12-02 (-11d) |  | 18.8d → 5d |  | resources SIC- Cost [1350.23]; Labor [38.39 h]; Excavator [29.5 h]; Excavator Operator [38.39 h] → SIC- Cost [1350.23]; Labor [37.98 h]; Excavator [29.5 h]; Excavator Operator [37.98 h] |
| 3 | **Install Manholes** | 2026-12-14 → 2026-12-03 (-11d) | 2027-01-05 → 2026-12-26 (-10d) |  |  |  |  |
| SDR-ST-CON-P1-3240 | Installation of Telecom Manhole | 2026-12-14 → 2026-12-03 (-11d) | 2027-01-05 → 2026-12-26 (-10d) |  | 18.8d → 5d |  | resources SIC- Cost [6076.04]; Electrical Forman [38.39 h]; Electrical Technician [38.39 h]; Electrical Helper [38.39 h] → SIC- Cost [6076.04]; Electrical Forman [37.98 h]; Electrical Technician [37.98 h]; Electrical Helper [37.98 h] |
| 4 | **Testting** | 2027-01-06 → 2026-12-27 (-10d) | 2027-01-30 → 2027-01-19 (-11d) |  |  |  |  |
| SDR-ST-CON-P1-4150 | Telecom Manhole finishing works | 2027-01-06 → 2026-12-27 (-10d) | 2027-01-30 → 2027-01-19 (-11d) |  | 18.8d → 5d |  | resources SIC- Cost [1350.23]; Electrical Forman [100.77 h]; Electrical Technician [100.77 h]; Electrical Helper [100.77 h] → SIC- Cost [1350.23]; Electrical Forman [99.7 h]; Electrical Technician [99.7 h]; Electrical Helper [99.7 h] |
| 5 | **Backfilling** | 2027-01-31 → 2027-01-20 (-11d) | 2027-03-08 → 2027-02-13 (-23d) |  |  |  |  |
| SDR-ST-CON-P1-4740 | Backfilling over Telecom Manhole | 2027-01-31 → 2027-01-20 (-11d) | 2027-03-08 → 2027-02-13 (-23d) |  | 18.8d → 5d |  | resources SIC- Cost [2700.46]; Excavator [30 h]; Excavator Operator [129.56 h] → SIC- Cost [2700.46]; Excavator [30 h]; Excavator Operator [128.18 h] |
| 3 | **ROAD-01 From 1125 to 1765 m (7) (2X3)X50 mm MH-8 to MH-9** |  | 2027-02-15 → 2027-02-02 (-13d) |  |  |  |  |
| 3 | **Ducts** |  | 2027-01-03 → 2027-01-17 (+14d) |  |  |  |  |
| 2 | **Excavation** |  | 2026-10-21 → 2026-11-04 (+14d) |  |  |  |  |
| SDR-ST-CON-P1-1620 | Excavation for telecom trench Section 1 |  |  |  |  | SDR-ST-CON-P1-1590 SS, SDR-ST-ENG-AP-1090 → none | resources SIC- Cost [2028.61]; Excavator [17.28 h]; Excavator Operator [38.39 h] → SIC- Cost [2028.61]; Excavator [17.28 h]; Excavator Operator [37.98 h] |
| SDR-ST-CON-P1-2290 | Excavation for telecom trench Section 2 | 2026-09-28 → 2026-10-12 (+14d) | 2026-10-21 → 2026-11-04 (+14d) |  | 61.9d → 26d |  | resources SIC- Cost [2028.61]; Excavator [15 h]; Excavator Operator [129.56 h] → SIC- Cost [2028.61]; Excavator [15 h]; Excavator Operator [128.18 h] |
| 5 | **Pipe laying** | 2026-10-22 → 2026-11-05 (+14d) | 2026-11-15 → 2026-11-29 (+14d) |  |  |  |  |
| SDR-ST-CON-P1-3010 | HDPE Pipes for Telecom Installation | 2026-10-22 → 2026-11-05 (+14d) | 2026-11-15 → 2026-11-29 (+14d) |  | 61.9d → 26d |  | resources SIC- Cost [8114.47]; Electrical Forman [129.56 h]; Electrical Technician [129.56 h]; Electrical Helper [129.56 h] → SIC- Cost [8114.47]; Electrical Forman [128.18 h]; Electrical Technician [128.18 h]; Electrical Helper [128.18 h] |
| 6 | **Backfilling** | 2026-11-16 → 2026-11-30 (+14d) | 2026-12-09 → 2026-12-23 (+14d) |  |  |  |  |
| SDR-ST-CON-P1-3630 | Backfilling over HDPE Telecom Pipes | 2026-11-16 → 2026-11-30 (+14d) | 2026-12-09 → 2026-12-23 (+14d) |  | 61.9d → 26d |  | resources SIC- Cost [4057.23]; Excavator [15 h]; Excavator Operator [38.39 h] → SIC- Cost [4057.23]; Excavator [15 h]; Excavator Operator [37.98 h] |
| 7 | **Pulling Cable** | 2026-12-10 → 2026-12-24 (+14d) | 2027-01-03 → 2027-01-17 (+14d) |  |  |  |  |
| SDR-ST-CON-P1-4240 | Pulling Cable | 2026-12-10 → 2026-12-24 (+14d) | 2027-01-03 → 2027-01-17 (+14d) |  | 61.9d → 26d |  | resources SIC- Cost [24343.4]; Electrical Forman [129.56 h]; Electrical Technician [129.56 h]; Electrical Helper [129.56 h] → SIC- Cost [24343.4]; Electrical Forman [128.18 h]; Electrical Technician [128.18 h]; Electrical Helper [128.18 h] |
| 4 | **Manholes** | 2026-09-28 → 2026-10-12 (+14d) | 2027-02-15 → 2027-02-02 (-13d) |  |  |  |  |
| 1 | **Excavation** | 2026-09-28 → 2026-10-12 (+14d) | 2026-11-15 → 2026-11-05 (-10d) |  |  |  |  |
| SDR-ST-CON-P1-1610 | Excavation for Telecom Manhole Section 1 | 2026-09-28 → 2026-10-12 (+14d) | 2026-10-21 → 2026-11-04 (+14d) |  | 33.8d → 14d | SDR-ST-CON-P1-1620 SS, SDR-ST-ENG-AP-1090 → SDR-ST-CON-P1-1620 SS | resources SIC- Cost [1012.67]; Excavator [22.94 h]; Excavator Operator [95.97 h] → SIC- Cost [1012.67]; Excavator [22.94 h]; Excavator Operator [94.95 h] |
| SDR-ST-CON-P1-2300 | Excavation for Telecom Manhole Section 2 | 2026-10-22 → 2026-10-13 (-9d) | 2026-11-15 → 2026-11-05 (-10d) |  | 33.8d → 14d | SDR-ST-CON-P1-1610 → SDR-ST-CON-P1-1610 SS+1d | resources SIC- Cost [1012.67]; Excavator [15 h]; Excavator Operator [38.39 h] → SIC- Cost [1012.67]; Excavator [15 h]; Excavator Operator [37.98 h] |
| 2 | **Bedding Work** | 2026-11-16 → 2026-11-07 (-9d) | 2026-12-07 → 2026-11-28 (-9d) |  |  |  |  |
| SDR-ST-CON-P1-3020 | Sand bedding for Telecom Manhole | 2026-11-16 → 2026-11-07 (-9d) | 2026-12-07 → 2026-11-28 (-9d) |  | 33.8d → 14d |  | resources SIC- Cost [1350.23]; Labor [38.39 h]; Excavator [19.22 h]; Excavator Operator [38.39 h] → SIC- Cost [1350.23]; Labor [37.98 h]; Excavator [19.22 h]; Excavator Operator [37.98 h] |
| 3 | **Install Manholes** | 2026-12-08 → 2026-11-29 (-9d) | 2026-12-30 → 2026-12-21 (-9d) |  |  |  |  |
| SDR-ST-CON-P1-3820 | Installation of Telecom Manhole | 2026-12-08 → 2026-11-29 (-9d) | 2026-12-30 → 2026-12-21 (-9d) |  | 33.8d → 14d |  | resources SIC- Cost [6076.04]; Electrical Forman [40.4 h]; Electrical Technician [40.4 h]; Electrical Helper [40.4 h] → SIC- Cost [6076.04]; Electrical Forman [39.97 h]; Electrical Technician [39.97 h]; Electrical Helper [39.97 h] |

| ID | Task | Start | Finish | Duration | Total float | Predecessors | Other |
| --- | --- | --- | --- | --- | --- | --- | --- |
| 4 | **Testting** | 2026-12-31 → 2026-12-22 (-9d) | 2027-01-20 → 2027-01-11 (-9d) |  |  |  |  |
| SDR-ST-CON-P1-4720 | Telecom Manhole finishing works | 2026-12-31 → 2026-12-22 (-9d) | 2027-01-20 → 2027-01-11 (-9d) |  | 33.8d → 14d |  | resources SIC- Cost [1350.23]; Electrical Forman [100.77 h]; Electrical Technician [100.77 h]; Electrical Helper [100.77 h] → SIC- Cost [1350.23]; Electrical Forman [99.7 h]; Electrical Technician [99.7 h]; Electrical Helper [99.7 h] |
| 5 | **Backfilling** | 2027-01-21 → 2027-01-12 (-9d) | 2027-02-15 → 2027-02-02 (-13d) |  |  |  |  |
| SDR-ST-CON-P1-5240 | Backfilling over Telecom Manhole | 2027-01-21 → 2027-01-12 (-9d) | 2027-02-15 → 2027-02-02 (-13d) |  | 33.8d → 14d |  | resources SIC- Cost [2700.46]; Excavator [30 h]; Excavator Operator [129.56 h] → SIC- Cost [2700.46]; Excavator [30 h]; Excavator Operator [128.18 h] |
| 4 | **ROAD - 02** | 2026-09-28 → 2026-10-12 (+14d) | 2027-03-02 → 2027-02-10 (-20d) |  |  |  |  |
| 3 | **Ducts** | 2026-09-28 → 2026-10-12 (+14d) | 2027-01-28 → 2026-12-23 (-36d) |  |  |  |  |
| 2 | **Excavation** | 2026-09-28 → 2026-10-12 (+14d) | 2026-11-15 → 2026-11-04 (-11d) |  |  |  |  |
| SDR-ST-CON-P1-1340 | Excavation for telecom trench Section 1 | 2026-09-28 → 2026-10-12 (+14d) | 2026-10-21 → 2026-11-04 (+14d) |  | 25.6d → 8d | SDR-ST-CON-P1-1310 SS, SDR-ST-ENG-AP-1090 → SDR-ST-CON-P1-1310 SS | resources SIC- Cost [2028.61]; Excavator [38.42 h]; Excavator Operator [129.56 h] → SIC- Cost [2028.61]; Excavator [38.42 h]; Excavator Operator [128.18 h] |
| SDR-ST-CON-P1-1960 | Excavation for telecom trench Section 2 | 2026-10-22 → 2026-10-12 (-10d) | 2026-11-15 → 2026-11-04 (-11d) |  | 25.6d → 28d | SDR-ST-CON-P1-1340 → SDR-ST-CON-P1-1340 FF | resources SIC- Cost [2028.61]; Excavator [20 h]; Excavator Operator [95.97 h] → SIC- Cost [2028.61]; Excavator [20 h]; Excavator Operator [94.95 h] |
| 5 | **Pipe laying** | 2026-11-16 → 2026-10-12 (-35d) | 2026-12-09 → 2026-11-04 (-35d) |  |  |  |  |
| SDR-ST-CON-P1-2670 | HDPE Pipes for Telecom Installation | 2026-11-16 → 2026-10-12 (-35d) | 2026-12-09 → 2026-11-04 (-35d) |  | 25.6d → 28d | SDR-ST-CON-P1-1960 → SDR-ST-CON-P1-1960 FF | resources SIC- Cost [8114.47]; Electrical Forman [38.39 h]; Electrical Technician [129.56 h]; Electrical Helper [129.56 h] → SIC- Cost [8114.47]; Electrical Forman [37.98 h]; Electrical Technician [128.18 h]; Electrical Helper [128.18 h] |
| 6 | **Backfilling** | 2026-12-10 → 2026-11-05 (-35d) | 2027-01-03 → 2026-11-29 (-35d) |  |  |  |  |
| SDR-ST-CON-P1-3440 | Backfilling over HDPE Telecom Pipes | 2026-12-10 → 2026-11-05 (-35d) | 2027-01-03 → 2026-11-29 (-35d) |  | 25.6d → 28d |  | resources SIC- Cost [4057.23]; Excavator [15 h]; Excavator Operator [38.39 h] → SIC- Cost [4057.23]; Excavator [15 h]; Excavator Operator [37.98 h] |
| 7 | **Pulling Cable** | 2027-01-04 → 2026-11-30 (-35d) | 2027-01-28 → 2026-12-23 (-36d) |  |  |  |  |
| SDR-ST-CON-P1-4270 | Pulling Cable | 2027-01-04 → 2026-11-30 (-35d) | 2027-01-28 → 2026-12-23 (-36d) | 21.2d → 21d | 25.6d → 28d |  | resources SIC- Cost [24343.4]; Electrical Forman [129.56 h]; Electrical Technician [129.56 h]; Electrical Helper [129.56 h] → SIC- Cost [24343.4]; Electrical Forman [128.18 h]; Electrical Technician [128.18 h]; Electrical Helper [128.18 h] |
| 4 | **Manholes** | 2026-09-28 → 2026-10-12 (+14d) | 2027-03-02 → 2027-02-09 (-21d) |  |  |  |  |
| 1 | **Excavation** | 2026-09-28 → 2026-10-12 (+14d) | 2026-11-15 → 2026-11-04 (-11d) |  |  |  |  |
| SDR-ST-CON-P1-1330 | Excavation for Telecom Manhole Section 1 | 2026-09-28 → 2026-10-12 (+14d) | 2026-10-21 → 2026-11-04 (+14d) |  | 26.8d → 8d | SDR-ST-CON-P1-1340 SS, SDR-ST-ENG-AP-1090 → SDR-ST-CON-P1-1340 SS | resources SIC- Cost [1012.67]; Excavator [32.56 h]; Excavator Operator [129.56 h] → SIC- Cost [1012.67]; Excavator [32.56 h]; Excavator Operator [128.18 h] |
| SDR-ST-CON-P1-1970 | Excavation for Telecom Manhole Section 2 | 2026-10-22 → 2026-10-12 (-10d) | 2026-11-15 → 2026-11-04 (-11d) |  | 26.8d → 8d | SDR-ST-CON-P1-1330 → SDR-ST-CON-P1-1330 FF | resources SIC- Cost [1012.67]; Excavator [20 h]; Excavator Operator [38.39 h] → SIC- Cost [1012.67]; Excavator [20 h]; Excavator Operator [37.98 h] |
| 2 | **Bedding Work** | 2026-11-16 → 2026-11-05 (-11d) | 2026-12-09 → 2026-11-29 (-10d) |  |  |  |  |
| SDR-ST-CON-P1-2680 | Sand bedding for Telecom Manhole | 2026-11-16 → 2026-11-05 (-11d) | 2026-12-09 → 2026-11-29 (-10d) |  | 26.8d → 8d |  | resources SIC- Cost [1350.23]; Labor [38.39 h]; Excavator [40 h]; Excavator Operator [38.39 h] → SIC- Cost [1350.23]; Labor [37.98 h]; Excavator [40 h]; Excavator Operator [37.98 h] |
| 3 | **Install Manholes** | 2026-12-10 → 2026-11-30 (-10d) | 2027-01-02 → 2026-12-22 (-11d) |  |  |  |  |
| SDR-ST-CON-P1-3450 | Installation of Telecom Manhole | 2026-12-10 → 2026-11-30 (-10d) | 2027-01-02 → 2026-12-22 (-11d) |  | 26.8d → 8d |  | resources SIC- Cost [6076.04]; Electrical Forman [129.56 h]; Electrical Technician [129.56 h]; Electrical Helper [129.56 h] → SIC- Cost [6076.04]; Electrical Forman [128.18 h]; Electrical Technician [128.18 h]; Electrical Helper [128.18 h] |
| 4 | **Testting** | 2027-01-03 → 2026-12-23 (-11d) | 2027-01-26 → 2027-01-16 (-10d) |  |  |  |  |
| SDR-ST-CON-P1-4380 | Telecom Manhole finishing works | 2027-01-03 → 2026-12-23 (-11d) | 2027-01-26 → 2027-01-16 (-10d) |  | 26.8d → 8d |  | resources SIC- Cost [1350.23]; Electrical Forman [100.77 h]; Electrical Technician [100.77 h]; Electrical Helper [100.77 h] → SIC- Cost [1350.23]; Electrical Forman [99.7 h]; Electrical Technician [99.7 h]; Electrical Helper [99.7 h] |
| 5 | **Backfilling** | 2027-01-27 → 2027-01-17 (-10d) | 2027-03-02 → 2027-02-09 (-21d) |  |  |  |  |
| SDR-ST-CON-P1-4900 | Backfilling over Telecom Manhole | 2027-01-27 → 2027-01-17 (-10d) | 2027-03-02 → 2027-02-09 (-21d) |  | 26.8d → 8d |  | resources SIC- Cost [2700.46]; Excavator [30 h]; Excavator Operator [129.56 h] → SIC- Cost [2700.46]; Excavator [30 h]; Excavator Operator [128.18 h] |
| 3 | **Ducts** | 2026-09-28 → 2026-10-12 (+14d) | 2027-01-27 → 2027-01-17 (-10d) |  |  |  |  |
| 2 | **Excavation** | 2026-09-28 → 2026-10-12 (+14d) | 2026-11-15 → 2026-11-04 (-11d) |  |  |  |  |
| SDR-ST-CON-P1-1290 | Excavation for telecom trench Section 1 | 2026-09-28 → 2026-10-12 (+14d) | 2026-10-21 → 2026-11-04 (+14d) |  | 25.8d → 7d | SDR-ST-CON-P1-1260 SS, SDR-ST-ENG-AP-1090 → SDR-ST-CON-P1-1260 SS | resources SIC- Cost [2028.61]; Excavator [54.34 h]; Excavator Operator [129.56 h] → SIC- Cost [2028.61]; Excavator [54.34 h]; Excavator Operator [128.18 h] |
| SDR-ST-CON-P1-1880 | Excavation for telecom trench Section 2 | 2026-10-22 → 2026-10-12 (-10d) | 2026-11-15 → 2026-11-04 (-11d) |  | 25.8d → 7d | SDR-ST-CON-P1-1290 → SDR-ST-CON-P1-1290 FF | resources SIC- Cost [2028.61]; Excavator [20 h]; Excavator Operator [95.97 h] → SIC- Cost [2028.61]; Excavator [20 h]; Excavator Operator [94.95 h] |
| 5 | **Pipe laying** | 2026-11-16 → 2026-11-05 (-11d) | 2026-12-09 → 2026-11-29 (-10d) |  |  |  |  |
| SDR-ST-CON-P1-2640 | HDPE Pipes for Telecom Installation | 2026-11-16 → 2026-11-05 (-11d) | 2026-12-09 → 2026-11-29 (-10d) |  | 25.8d → 7d |  | resources SIC- Cost [8114.47]; Electrical Forman [38.39 h]; Electrical Technician [129.56 h]; Electrical Helper [129.56 h] → SIC- Cost [8114.47]; Electrical Forman [37.98 h]; Electrical Technician [128.18 h]; Electrical Helper [128.18 h] |
| 6 | **Backfilling** | 2026-12-10 → 2026-11-30 (-10d) | 2027-01-03 → 2026-12-23 (-11d) |  |  |  |  |
| SDR-ST-CON-P1-3370 | Backfilling over HDPE Telecom Pipes | 2026-12-10 → 2026-11-30 (-10d) | 2027-01-03 → 2026-12-23 (-11d) |  | 25.8d → 7d |  | resources SIC- Cost [4057.23]; Excavator [15 h]; Excavator Operator [38.39 h] → SIC- Cost [4057.23]; Excavator [15 h]; Excavator Operator [37.98 h] |
| 7 | **Pulling Cable** | 2027-01-04 → 2026-12-24 (-11d) | 2027-01-27 → 2027-01-17 (-10d) |  |  |  |  |
| SDR-ST-CON-P1-4160 | Pulling Cable | 2027-01-04 → 2026-12-24 (-11d) | 2027-01-27 → 2027-01-17 (-10d) |  | 25.8d → 7d |  | resources SIC- Cost [24343.4]; Electrical Forman [129.56 h]; Electrical Technician [129.56 h]; Electrical Helper [129.56 h] → SIC- Cost [24343.4]; Electrical Forman [128.18 h]; Electrical Technician [128.18 h]; Electrical Helper [128.18 h] |
| 4 | **Manholes** | 2026-09-28 → 2026-10-12 (+14d) | 2027-02-25 → 2027-02-07 (-18d) |  |  |  |  |
| 1 | **Excavation** | 2026-09-28 → 2026-10-12 (+14d) | 2026-11-15 → 2026-11-04 (-11d) |  |  |  |  |
| SDR-ST-CON-P1-1280 | Excavation for Telecom Manhole Section 1 | 2026-09-28 → 2026-10-12 (+14d) | 2026-10-21 → 2026-11-04 (+14d) |  | 26.9d → 10d | SDR-ST-CON-P1-1290 SS, SDR-ST-ENG-AP-1090 → SDR-ST-CON-P1-1290 SS | resources SIC- Cost [1012.67]; Excavator [44.51 h]; Excavator Operator [129.56 h] → SIC- Cost [1012.67]; Excavator [44.51 h]; Excavator Operator [128.18 h] |
| SDR-ST-CON-P1-1890 | Excavation for Telecom Manhole Section 2 | 2026-10-22 → 2026-10-12 (-10d) | 2026-11-15 → 2026-11-04 (-11d) |  | 26.9d → 10d | SDR-ST-CON-P1-1280 → SDR-ST-CON-P1-1280 FF | resources SIC- Cost [1012.67]; Excavator [20 h]; Excavator Operator [95.97 h] → SIC- Cost [1012.67]; Excavator [20 h]; Excavator Operator [94.95 h] |
| 2 | **Bedding Work** | 2026-11-16 → 2026-11-05 (-11d) | 2026-12-07 → 2026-11-26 (-11d) |  |  |  |  |
| SDR-ST-CON-P1-2650 | Sand bedding for Telecom Manhole | 2026-11-16 → 2026-11-05 (-11d) | 2026-12-07 → 2026-11-26 (-11d) |  | 26.9d → 10d |  | resources SIC- Cost [1350.23]; Labor [38.39 h]; Excavator [40 h]; Excavator Operator [38.39 h] → SIC- Cost [1350.23]; Labor [37.98 h]; Excavator [40 h]; Excavator Operator [37.98 h] |
| 3 | **Install Manholes** | 2026-12-08 → 2026-11-28 (-10d) | 2026-12-30 → 2026-12-20 (-10d) |  |  |  |  |
| SDR-ST-CON-P1-3380 | Installation of Telecom Manhole | 2026-12-08 → 2026-11-28 (-10d) | 2026-12-30 → 2026-12-20 (-10d) |  | 26.9d → 10d |  | resources SIC- Cost [6076.04]; Electrical Forman [38.39 h]; Electrical Technician [38.39 h]; Electrical Helper [38.39 h] → SIC- Cost [6076.04]; Electrical Forman [37.98 h]; Electrical Technician [37.98 h]; Electrical Helper [37.98 h] |
| 4 | **Testting** | 2026-12-31 → 2026-12-21 (-10d) | 2027-01-24 → 2027-01-13 (-11d) |  |  |  |  |
| SDR-ST-CON-P1-4280 | Telecom Manhole finishing works | 2026-12-31 → 2026-12-21 (-10d) | 2027-01-24 → 2027-01-13 (-11d) |  | 26.9d → 10d |  | resources SIC- Cost [1350.23]; Electrical Forman [100.77 h]; Electrical Technician [100.77 h]; Electrical Helper [100.77 h] → SIC- Cost [1350.23]; Electrical Forman [99.7 h]; Electrical Technician [99.7 h]; Electrical Helper [99.7 h] |
| 5 | **Backfilling** | 2027-01-25 → 2027-01-14 (-11d) | 2027-02-25 → 2027-02-07 (-18d) |  |  |  |  |
| SDR-ST-CON-P1-4820 | Backfilling over Telecom Manhole | 2027-01-25 → 2027-01-14 (-11d) | 2027-02-25 → 2027-02-07 (-18d) |  | 26.9d → 10d |  | resources SIC- Cost [2700.46]; Excavator [30 h]; Excavator Operator [129.56 h] → SIC- Cost [2700.46]; Excavator [30 h]; Excavator Operator [128.18 h] |
| 3 | **Ducts** | 2026-09-28 → 2026-10-12 (+14d) | 2027-01-27 → 2027-02-10 (+14d) |  |  |  |  |
| 2 | **Excavation** | 2026-09-28 → 2026-10-12 (+14d) | 2026-11-15 → 2026-11-29 (+14d) |  |  |  |  |
| SDR-ST-CON-P1-1390 | Excavation for telecom trench Section 1 | 2026-09-28 → 2026-10-12 (+14d) | 2026-10-21 → 2026-11-04 (+14d) |  | 30.8d → 12d | SDR-ST-CON-P1-1360 SS, SDR-ST-ENG-AP-1090 → SDR-ST-CON-P1-1360 SS | resources SIC- Cost [2028.61]; Excavator [15 h]; Excavator Operator [129.56 h] → SIC- Cost [2028.61]; Excavator [15 h]; Excavator Operator [128.18 h] |
| SDR-ST-CON-P1-2070 | Excavation for telecom trench Section 2 | 2026-10-22 → 2026-11-05 (+14d) | 2026-11-15 → 2026-11-29 (+14d) |  | 61.8d → 14d |  | resources SIC- Cost [2028.61]; Excavator [23.85 h]; Excavator Operator [95.97 h] → SIC- Cost [2028.61]; Excavator [23.85 h]; Excavator Operator [94.95 h] |
| 5 | **Pipe laying** | 2026-11-16 → 2026-11-30 (+14d) | 2026-12-09 → 2026-12-23 (+14d) |  |  |  |  |
| SDR-ST-CON-P1-2780 | HDPE Pipes for Telecom Installation | 2026-11-16 → 2026-11-30 (+14d) | 2026-12-09 → 2026-12-23 (+14d) |  | 61.8d → 14d |  | resources SIC- Cost [8114.47]; Electrical Forman [38.39 h]; Electrical Technician [129.56 h]; Electrical Helper [129.56 h] → SIC- Cost [8114.47]; Electrical Forman [37.98 h]; Electrical Technician [128.18 h]; Electrical Helper [128.18 h] |
| 6 | **Backfilling** | 2026-12-10 → 2026-12-24 (+14d) | 2027-01-03 → 2027-01-17 (+14d) |  |  |  |  |
| SDR-ST-CON-P1-3580 | Backfilling over HDPE Telecom Pipes | 2026-12-10 → 2026-12-24 (+14d) | 2027-01-03 → 2027-01-17 (+14d) |  | 61.8d → 14d |  | resources SIC- Cost [4057.23]; Excavator [15 h]; Excavator Operator [38.39 h] → SIC- Cost [4057.23]; Excavator [15 h]; Excavator Operator [37.98 h] |
| 7 | **Pulling Cable** | 2027-01-04 → 2027-01-18 (+14d) | 2027-01-27 → 2027-02-10 (+14d) |  |  |  |  |
| SDR-ST-CON-P1-4170 | Pulling Cable | 2027-01-04 → 2027-01-18 (+14d) | 2027-01-27 → 2027-02-10 (+14d) |  | 61.8d → 14d |  | resources SIC- Cost [24343.4]; Electrical Forman [129.56 h]; Electrical Technician [129.56 h]; Electrical Helper [129.56 h] → SIC- Cost [24343.4]; Electrical Forman [128.18 h]; Electrical Technician [128.18 h]; Electrical Helper [128.18 h] |
| 4 | **Manholes** | 2026-09-28 → 2026-10-12 (+14d) | 2027-02-21 → 2027-02-04 (-17d) |  |  |  |  |
| 1 | **Excavation** | 2026-09-28 → 2026-10-12 (+14d) | 2026-11-15 → 2026-11-04 (-11d) |  |  |  |  |
| SDR-ST-CON-P1-1380 | Excavation for Telecom Manhole Section 1 | 2026-09-28 → 2026-10-12 (+14d) | 2026-10-21 → 2026-11-04 (+14d) |  | 30.8d → 12d | SDR-ST-CON-P1-1390 SS, SDR-ST-ENG-AP-1090 → SDR-ST-CON-P1-1390 SS | resources SIC- Cost [1012.67]; Excavator [15 h]; Excavator Operator [129.56 h] → SIC- Cost [1012.67]; Excavator [15 h]; Excavator Operator [128.18 h] |
| SDR-ST-CON-P1-2080 | Excavation for Telecom Manhole Section 2 | 2026-10-22 → 2026-10-12 (-10d) | 2026-11-15 → 2026-11-04 (-11d) |  | 30.8d → 12d | SDR-ST-CON-P1-1380 → SDR-ST-CON-P1-1380 FF | resources SIC- Cost [1012.67]; Excavator [34.91 h]; Excavator Operator [95.97 h] → SIC- Cost [1012.67]; Excavator [34.91 h]; Excavator Operator [94.95 h] |
| 2 | **Bedding Work** | 2026-11-16 → 2026-11-05 (-11d) | 2026-12-07 → 2026-11-26 (-11d) |  |  |  |  |
| SDR-ST-CON-P1-2790 | Sand bedding for Telecom Manhole | 2026-11-16 → 2026-11-05 (-11d) | 2026-12-07 → 2026-11-26 (-11d) |  | 30.8d → 12d |  | resources SIC- Cost [1350.23]; Labor [38.39 h]; Excavator [30 h]; Excavator Operator [76.78 h] → SIC- Cost [1350.23]; Labor [37.98 h]; Excavator [30 h]; Excavator Operator [75.96 h] |
| 3 | **Install Manholes** | 2026-12-08 → 2026-11-28 (-10d) | 2026-12-31 → 2026-12-21 (-10d) |  |  |  |  |
| SDR-ST-CON-P1-3590 | Installation of Telecom Manhole | 2026-12-08 → 2026-11-28 (-10d) | 2026-12-31 → 2026-12-21 (-10d) |  | 30.8d → 12d |  | resources SIC- Cost [6076.04]; Electrical Forman [129.56 h]; Electrical Technician [129.56 h]; Electrical Helper [129.56 h] → SIC- Cost [6076.04]; Electrical Forman [128.18 h]; Electrical Technician [128.18 h]; Electrical Helper [128.18 h] |
| 4 | **Testting** | 2027-01-02 → 2026-12-22 (-11d) | 2027-01-25 → 2027-01-14 (-11d) |  |  |  |  |
| SDR-ST-CON-P1-4500 | Telecom Manhole finishing works | 2027-01-02 → 2026-12-22 (-11d) | 2027-01-25 → 2027-01-14 (-11d) |  | 30.8d → 12d |  | resources SIC- Cost [1350.23]; Electrical Forman [100.77 h]; Electrical Technician [100.77 h]; Electrical Helper [100.77 h] → SIC- Cost [1350.23]; Electrical Forman [99.7 h]; Electrical Technician [99.7 h]; Electrical Helper [99.7 h] |
| 5 | **Backfilling** | 2027-01-26 → 2027-01-16 (-10d) | 2027-02-21 → 2027-02-04 (-17d) |  |  |  |  |

| ID | Task | Start | Finish | Complete | Total float | Predecessors | Other |
| --- | --- | --- | --- | --- | --- | --- | --- |
| SDR-ST-CON-P1-5000 | Backfilling over Telecom Manhole | 2027-01-26 → 2027-01-16 (-10d) | 2027-02-21 → 2027-02-04 (-17d) |  | 30.8d → 12d |  | resources SIC- Cost [2700.46]; Excavator [30 h]; Excavator Operator [129.56 h] → SIC- Cost [2700.46]; Excavator [30 h]; Excavator Operator [128.18 h] |
| 13 | **LOW VOLTAGE** |  | 2027-05-30 → 2027-04-08 (-52d) |  |  |  |  |
| 1 | **ROAD - 01** |  | 2027-04-22 → 2027-03-30 (-23d) |  |  |  |  |
| 1 | **ROAD-01 From 470 to 1125 m (6)** |  | 2027-04-22 → 2027-03-30 (-23d) |  |  |  |  |
| 6 | **Excavation** |  | 2026-12-14 → 2026-11-29 (-15d) |  |  |  |  |
| SDR-ST-CON-P1-1670 | Excavation Works Part 1 |  | 2026-11-19 → 2026-11-04 (-15d) |  | 74.8d → 52d | SDR-ST-CON-P1-1180, SDR-ST-ENG-AP-1090, SDR-ST-CON-P1-1570 → SDR-ST-CON-P1-1180 SS, SDR-ST-CON-P1-1570 FF | resources SIC- Cost [2898.07]; Electrical Forman [38.39 h]; Electrical Technician [129.56 h]; Electrical Helper [129.56 h]; Labor [38.39 h]; Excavator [24.56 h]; Excavator Operator [129.56 h] → SIC- Cost [2898.07]; Electrical Forman [37.98 h]; Electrical Technician [128.18 h]; Electrical Helper [128.18 h]; Labor [37.98 h]; Excavator [24.56 h]; Excavator Operator [128.18 h] |
| SDR-ST-CON-P1-6230 | Excavation Works Part 2 | 2026-11-21 → 2026-11-05 (-16d) | 2026-12-14 → 2026-11-29 (-15d) |  | 101.8d → 52d |  | resources SIC- Cost; Electrical Forman [38.39 h]; Electrical Technician [129.56 h]; Electrical Helper [129.56 h]; Labor [38.39 h]; Excavator [24.56 h]; Excavator Operator [129.56 h] → SIC- Cost; Electrical Forman [37.98 h]; Electrical Technician [128.18 h]; Electrical Helper [128.18 h]; Labor [37.98 h]; Excavator [24.56 h]; Excavator Operator [128.18 h] |
| 7 | **Pipe laying** | 2026-12-15 → 2026-11-30 (-15d) | 2027-01-06 → 2026-12-22 (-15d) |  |  |  |  |
| SDR-ST-CON-P1-2330 | Pipe Laying | 2026-12-15 → 2026-11-30 (-15d) | 2027-01-06 → 2026-12-22 (-15d) |  | 101.8d → 52d |  | resources SIC- Cost [5796.13]; Electrical Forman [38.39 h]; Electrical Technician [40.4 h]; Electrical Helper [40.4 h]; Labor [38.39 h] → SIC- Cost [5796.13]; Electrical Forman [37.98 h]; Electrical Technician [39.97 h]; Electrical Helper [39.97 h]; Labor [37.98 h] |
| 8 | **Backfilling** | 2027-02-21 → 2027-01-14 (-38d) | 2027-03-29 → 2027-02-07 (-50d) |  |  |  |  |
| SDR-ST-CON-P1-2990 | Backfilling Works | 2027-02-21 → 2027-01-14 (-38d) | 2027-03-29 → 2027-02-07 (-50d) |  | 67.8d → 47d |  | resources SIC- Cost [2898.07]; Electrical Forman [38.39 h]; Electrical Technician [129.56 h]; Electrical Helper [129.56 h]; Labor [38.39 h]; Excavator [30 h]; Excavator Operator [129.56 h] → SIC- Cost [2898.07]; Electrical Forman [37.98 h]; Electrical Technician [128.18 h]; Electrical Helper [128.18 h]; Labor [37.98 h]; Excavator [30 h]; Excavator Operator [128.18 h] |
| 9 | **Pulling Cable** | 2027-03-29 → 2027-03-02 (-27d) | 2027-04-22 → 2027-03-30 (-23d) |  |  |  |  |
| SDR-ST-CON-P1-3880 | Pulling Cable | 2027-03-29 → 2027-03-02 (-27d) | 2027-04-22 → 2027-03-30 (-23d) |  | 67.8d → 29d | SDR-ST-CON-P1-2330, SDR-ST-CON-P1-2990, SDR-ST-CON-P1-5750 → SDR-ST-CON-P1-2330, SDR-ST-CON-P1-2990, SDR-ST-CON-P1-5750, SDR-ST-PRO-MS-1120 | resources SIC- Cost [17388.4]; Electrical Forman [129.56 h]; Electrical Technician [129.56 h]; Electrical Helper [129.56 h]; Labor [129.56 h] → SIC- Cost [17388.4]; Electrical Forman [128.18 h]; Electrical Technician [128.18 h]; Electrical Helper [128.18 h]; Labor [128.18 h] |
| 2 | **ROAD - 02** |  | 2027-05-30 → 2027-04-08 (-52d) |  |  |  |  |
| 6 | **Excavation** |  | 2026-12-14 → 2026-11-29 (-15d) |  |  |  |  |
| SDR-ST-CON-P1-1740 | Excavation Works Part 1 |  | 2026-11-19 → 2026-11-04 (-15d) |  | 74.8d → 58d | SDR-ST-CON-P1-1260, SDR-ST-CON-P1-1670 SS+7d → SDR-ST-CON-P1-1260 FF | resources SIC- Cost [2898.07]; Electrical Forman [38.39 h]; Electrical Technician [129.56 h]; Electrical Helper [129.56 h]; Labor [38.39 h]; Excavator [30 h]; Excavator Operator [129.56 h] → SIC- Cost [2898.07]; Electrical Forman [37.98 h]; Electrical Technician [128.18 h]; Electrical Helper [128.18 h]; Labor [37.98 h]; Excavator [30 h]; Excavator Operator [128.18 h] |
| SDR-ST-CON-P1-6240 | Excavation Works Part 2 | 2026-11-21 → 2026-11-05 (-16d) | 2026-12-14 → 2026-11-29 (-15d) |  | 101.8d → 58d |  | resources SIC- Cost; Electrical Forman [38.39 h]; Electrical Technician [129.56 h]; Electrical Helper [129.56 h]; Labor [38.39 h]; Excavator [30 h]; Excavator Operator [129.56 h] → SIC- Cost; Electrical Forman [37.98 h]; Electrical Technician [128.18 h]; Electrical Helper [128.18 h]; Labor [37.98 h]; Excavator [30 h]; Excavator Operator [128.18 h] |
| 7 | **Pipe laying** | 2026-12-15 → 2026-11-30 (-15d) | 2027-01-06 → 2026-12-22 (-15d) |  |  |  |  |
| SDR-ST-CON-P1-2440 | Pipe Laying | 2026-12-15 → 2026-11-30 (-15d) | 2027-01-06 → 2026-12-22 (-15d) |  | 101.8d → 58d |  | resources SIC- Cost [5796.13]; Electrical Forman [38.39 h]; Electrical Technician [129.56 h]; Electrical Helper [129.56 h]; Labor [38.39 h] → SIC- Cost [5796.13]; Electrical Forman [37.98 h]; Electrical Technician [128.18 h]; Electrical Helper [128.18 h]; Labor [37.98 h] |
| 8 | **Backfilling** | 2027-01-07 → 2026-12-23 (-15d) | 2027-01-31 → 2027-01-16 (-15d) |  |  |  |  |
| SDR-ST-CON-P1-3170 | Backfilling Works | 2027-01-07 → 2026-12-23 (-15d) | 2027-01-31 → 2027-01-16 (-15d) |  | 101.8d → 58d |  | resources SIC- Cost [2898.07]; Electrical Forman [38.39 h]; Electrical Technician [129.56 h]; Electrical Helper [129.56 h]; Labor [38.39 h]; Excavator [17.25 h]; Excavator Operator [129.56 h] → SIC- Cost [2898.07]; Electrical Forman [37.98 h]; Electrical Technician [128.18 h]; Electrical Helper [128.18 h]; Labor [37.98 h]; Excavator [17.25 h]; Excavator Operator [128.18 h] |
| 9 | **Pulling Cable** | 2027-04-06 → 2027-03-16 (-21d) | 2027-05-01 → 2027-04-08 (-23d) |  |  |  |  |
| SDR-ST-CON-P1-4040 | Pulling Cable | 2027-04-06 → 2027-03-16 (-21d) | 2027-05-01 → 2027-04-08 (-23d) |  | 60.8d → 21d |  | resources SIC- Cost [17388.4]; Electrical Forman [129.56 h]; Electrical Technician [129.56 h]; Electrical Helper [129.56 h]; Labor [129.56 h] → SIC- Cost [17388.4]; Electrical Forman [128.18 h]; Electrical Technician [128.18 h]; Electrical Helper [128.18 h]; Labor [128.18 h] |
| 6 | **Excavation** |  | 2026-12-14 → 2026-11-29 (-15d) |  |  |  |  |
| SDR-ST-CON-P1-1750 | Excavation Works Part 1 |  | 2026-11-19 → 2026-11-04 (-15d) |  | 74.8d → 59d | SDR-ST-CON-P1-1360 SS, SDR-ST-ENG-AP-1090, SDR-ST-CON-P1-1740 SS+7d → SDR-ST-CON-P1-1360 FF | resources SIC- Cost [2898.07]; Electrical Forman [38.39 h]; Electrical Technician [40.4 h]; Electrical Helper [40.4 h]; Labor [38.39 h]; Excavator [30 h]; Excavator Operator [40.4 h] → SIC- Cost [2898.07]; Electrical Forman [37.98 h]; Electrical Technician [39.97 h]; Electrical Helper [39.97 h]; Labor [37.98 h]; Excavator [30 h]; Excavator Operator [39.97 h] |
| SDR-ST-CON-P1-6250 | Excavation Works Part 2 | 2026-11-21 → 2026-11-05 (-16d) | 2026-12-14 → 2026-11-29 (-15d) |  | 74.8d → 59d |  | resources SIC- Cost; Electrical Forman [38.39 h]; Electrical Technician [129.56 h]; Electrical Helper [129.56 h]; Labor [38.39 h]; Excavator [30 h]; Excavator Operator [129.56 h] → SIC- Cost; Electrical Forman [37.98 h]; Electrical Technician [128.18 h]; Electrical Helper [128.18 h]; Labor [37.98 h]; Excavator [30 h]; Excavator Operator [128.18 h] |
| 7 | **Pipe laying** | 2026-12-15 → 2026-11-30 (-15d) | 2027-01-06 → 2026-12-22 (-15d) |  |  |  |  |
| SDR-ST-CON-P1-2450 | Pipe Laying | 2026-12-15 → 2026-11-30 (-15d) | 2027-01-06 → 2026-12-22 (-15d) |  | 74.8d → 59d |  | resources SIC- Cost [5796.13]; Electrical Forman [129.56 h]; Electrical Technician [129.56 h]; Electrical Helper [129.56 h]; Labor [129.56 h] → SIC- Cost [5796.13]; Electrical Forman [128.18 h]; Electrical Technician [128.18 h]; Electrical Helper [128.18 h]; Labor [128.18 h] |
| 8 | **Backfilling** | 2027-01-07 → 2026-12-23 (-15d) | 2027-01-31 → 2027-01-16 (-15d) |  |  |  |  |
| SDR-ST-CON-P1-3180 | Backfilling Works | 2027-01-07 → 2026-12-23 (-15d) | 2027-01-31 → 2027-01-16 (-15d) |  | 74.8d → 59d |  | resources SIC- Cost [2898.07]; Electrical Forman [129.56 h]; Electrical Technician [129.56 h]; Electrical Helper [129.56 h]; Labor [129.56 h]; Excavator [16.5 h]; Excavator Operator [129.56 h] → SIC- Cost [2898.07]; Electrical Forman [128.18 h]; Electrical Technician [128.18 h]; Electrical Helper [128.18 h]; Labor [128.18 h]; Excavator [16.5 h]; Excavator Operator [128.18 h] |
| 9 | **Pulling Cable** | 2027-04-29 → 2027-03-16 (-44d) | 2027-05-30 → 2027-04-08 (-52d) |  |  |  |  |
| SDR-ST-CON-P1-4070 | Pulling Cable | 2027-04-29 → 2027-03-16 (-44d) | 2027-05-30 → 2027-04-08 (-52d) |  | 13.6d → 33d |  | resources SIC- Cost [17388.4]; Electrical Forman [129.56 h]; Electrical Technician [129.56 h]; Electrical Helper [129.56 h]; Labor [97.38 h] → SIC- Cost [17388.4]; Electrical Forman [128.18 h]; Electrical Technician [128.18 h]; Electrical Helper [128.18 h]; Labor [96.35 h] |
| 10 | **PORTABLE WATER** |  | 2027-04-06 → 2027-03-25 (-12d) |  |  |  |  |
| 2 | **ROAD - 01** |  | 2027-04-06 → 2027-03-25 (-12d) |  |  |  |  |
| 2 | **ROAD-01 From 0 to 470 m (3)** |  | 2027-04-06 → 2027-03-25 (-12d) |  |  |  |  |
| 7 | **Pipes Work** |  | 2027-04-06 → 2026-11-09 (-148d) |  |  |  |  |
| SDR-ST-CON-P1-1480 | Excavation for PW HDPE Pipes 315 mm Section 1 |  |  |  |  |  | resources SIC- Cost [5079]; Plumbing Helper [129.56 h]; Labor [129.56 h]; Plumber [129.56 h]; Excavator [15 h]; Excavator Operator [129.56 h]; Un-Skilled Labor [129.56 h]; Skilled Labor [129.56 h] → SIC- Cost [5079]; Plumbing Helper [128.18 h]; Labor [128.18 h]; Plumber [128.18 h]; Excavator [15 h]; Excavator Operator [128.18 h]; Un-Skilled Labor [128.18 h]; Skilled Labor [128.18 h] |
| SDR-ST-CON-P1-1980 | Excavation for PW HDPE Pipes 315 mm Section 2 |  |  |  |  |  | resources SIC- Cost [5079]; Plumbing Helper [129.56 h]; Labor [129.56 h]; Plumber [129.56 h]; Excavator [33.61 h]; Excavator Operator [129.56 h]; Un-Skilled Labor [38.39 h]; Skilled Labor [38.39 h] → SIC- Cost [5079]; Plumbing Helper [128.18 h]; Labor [128.18 h]; Plumber [128.18 h]; Excavator [33.61 h]; Excavator Operator [128.18 h]; Un-Skilled Labor [37.98 h]; Skilled Labor [37.98 h] |
| 8 | **bedding Works** |  | 2026-09-28 → 2026-09-30 (+2d) |  |  |  |  |
| SDR-ST-CON-P1-2490 | Sand bedding for PW HDPE Pipes 315 mm |  | 2026-09-28 → 2026-09-30 A (+2d) | 75% → 100% | 86.8d → none | SDR-ST-CON-P1-1980 → SDR-ST-CON-P1-1980 FS+1d | resources SIC- Cost [2539.5]; Plumbing Helper [129.56 h]; Labor [129.56 h]; Plumber [129.56 h]; Excavator [22 h]; Excavator Operator [129.56 h]; Un-Skilled Labor [38.39 h]; Skilled Labor [38.39 h] → SIC- Cost [2539.5]; Plumbing Helper [128.18 h]; Labor [128.18 h]; Plumber [128.18 h]; Excavator [22 h]; Excavator Operator [128.18 h]; Un-Skilled Labor [37.98 h]; Skilled Labor [37.98 h] |
| 2 | **Pipes Laying** |  | 2027-01-12 → 2026-09-27 (-107d) |  |  |  |  |
| SDR-ST-CON-P1-3270 | Install PW 315 mm HDPE Pipe |  | 2027-01-12 → 2026-09-27 A (-107d) | 75% → 100% | 15.8d → none | SDR-ST-CON-P1-2490, SDR-ST-CON-P1-3930, SDR-ST-CON-P1-3760 → SDR-ST-CON-P1-2490 | resources SIC- Cost [22855.5]; Plumbing Helper [38.39 h]; Labor [38.39 h]; Plumber [38.39 h]; Excavator [15 h]; Excavator Operator [38.39 h]; Un-Skilled Labor [38.39 h]; Skilled Labor [38.39 h] → SIC- Cost [22855.5]; Plumbing Helper [37.98 h]; Labor [37.98 h]; Plumber [37.98 h]; Excavator [15 h]; Excavator Operator [37.98 h]; Un-Skilled Labor [37.98 h]; Skilled Labor [37.98 h] |
| 5 | **Testing** | 2027-01-31 → 2026-10-03 (-120d) | 2027-03-08 → 2026-10-05 (-154d) |  |  |  |  |
| SDR-ST-CON-P1-4190 | Testing of PW HDPE Pipe 315 mm. | 2027-01-31 → 2026-10-03 A (-120d) | 2027-03-08 → 2026-10-05 A (-154d) | 0% → 100% | 0.6d → none | SDR-ST-CON-P1-3270, SDR-ST-CON-P1-4400 → SDR-ST-CON-P1-3270 | resources SIC- Cost [5079]; Plumbing Helper [107.97 h]; Labor [107.97 h]; Plumber [107.97 h]; Excavator [30 h]; Excavator Operator [107.97 h]; Un-Skilled Labor [107.97 h]; Skilled Labor [107.97 h] → SIC- Cost [5079]; Plumbing Helper [106.82 h]; Labor [106.82 h]; Plumber [106.82 h]; Excavator [30 h]; Excavator Operator [106.82 h]; Un-Skilled Labor [106.82 h]; Skilled Labor [106.82 h] |
| 9 | **Backfilling** | 2027-03-08 → 2026-10-17 (-142d) | 2027-04-06 → 2026-11-09 (-148d) |  |  |  |  |
| SDR-ST-CON-P1-4800 | Backfilling of PW HDPE Pipe 315 mm. | 2027-03-08 → 2026-10-17 (-142d) | 2027-04-06 → 2026-11-09 (-148d) |  | 0.6d → 83d | SDR-ST-CON-P1-4190 → SDR-ST-CON-P1-4190, SDR-ST-PRO-MS-1050 | resources SIC- Cost [10158]; Plumbing Helper [129.56 h]; Labor [129.56 h]; Plumber [129.56 h]; Excavator [30 h]; Excavator Operator [129.56 h]; Un-Skilled Labor [129.56 h]; Skilled Labor [129.56 h] → SIC- Cost [10158]; Plumbing Helper [128.18 h]; Labor [128.18 h]; Plumber [128.18 h]; Excavator [30 h]; Excavator Operator [128.18 h]; Un-Skilled Labor [128.18 h]; Skilled Labor [128.18 h] |
| 3 | **Valve Chambers & Valves & Fire Hydrant** | 2026-09-28 → 2026-10-12 (+14d) | 2027-04-01 → 2027-03-25 (-7d) |  |  |  |  |
| 3 | **Excavation** | 2026-09-28 → 2026-10-12 (+14d) | 2026-12-07 → 2026-12-05 (-2d) |  |  |  |  |
| SDR-ST-CON-P1-1490 | Excavation for Valve Chambers Section 1 | 2026-09-28 → 2026-10-12 (+14d) | 2026-10-21 → 2026-11-04 (+14d) |  | 65.8d → 18d |  | resources SIC- Cost [1249.33]; Plumbing Helper [129.56 h]; Labor [129.56 h]; Plumber [129.56 h]; Excavator [15 h]; Excavator Operator [129.56 h]; Un-Skilled Labor [38.39 h]; Skilled Labor [38.39 h] → SIC- Cost [1249.33]; Plumbing Helper [128.18 h]; Labor [128.18 h]; Plumber [128.18 h]; Excavator [15 h]; Excavator Operator [128.18 h]; Un-Skilled Labor [37.98 h]; Skilled Labor [37.98 h] |
| SDR-ST-CON-P1-2150 | Excavation for Valve Chambers Section 2 | 2026-11-14 → 2026-11-11 (-3d) | 2026-12-07 → 2026-12-05 (-2d) |  | 46.8d → 13d |  | resources SIC- Cost [1249.33]; Plumbing Helper [129.56 h]; Labor [129.56 h]; Plumber [129.56 h]; Excavator [30.1 h]; Excavator Operator [172.75 h]; Un-Skilled Labor [38.39 h]; Skilled Labor [38.39 h] → SIC- Cost [1249.33]; Plumbing Helper [128.18 h]; Labor [128.18 h]; Plumber [128.18 h]; Excavator [30.1 h]; Excavator Operator [170.91 h]; Un-Skilled Labor [37.98 h]; Skilled Labor [37.98 h] |
| 1 | **bedding Works** | 2026-12-08 → 2026-12-06 (-2d) | 2026-12-31 → 2026-12-29 (-2d) |  |  |  |  |
| SDR-ST-CON-P1-2850 | Sand bedding for Valve Chambers | 2026-12-08 → 2026-12-06 (-2d) | 2026-12-31 → 2026-12-29 (-2d) |  | 46.8d → 13d |  | resources SIC- Cost [624.67]; Plumbing Helper [129.56 h]; Labor [129.56 h]; Plumber [129.56 h]; Excavator [30 h]; Excavator Operator [129.56 h]; Un-Skilled Labor [38.39 h]; Skilled Labor [38.39 h] → SIC- Cost [624.67]; Plumbing Helper [128.18 h]; Labor [128.18 h]; Plumber [128.18 h]; Excavator [30 h]; Excavator Operator [128.18 h]; Un-Skilled Labor [37.98 h]; Skilled Labor [37.98 h] |
| 4 | **Install Chambers & Valves & Fire Hydrant** | 2027-01-02 → 2026-12-30 (-3d) | 2027-01-25 → 2027-01-23 (-2d) |  |  |  |  |
| SDR-ST-CON-P1-3560 | Install Chambers & Valves | 2027-01-02 → 2026-12-30 (-3d) | 2027-01-25 → 2027-01-23 (-2d) |  | 46.8d → 13d | SDR-ST-CON-P1-2850 → SDR-ST-CON-P1-2850, SDR-ST-PRO-MS-1190 | resources SIC- Cost [5622]; Plumbing Helper [129.56 h]; Labor [129.56 h]; Plumber [129.56 h]; Excavator [30 h]; Excavator Operator [129.56 h]; Un-Skilled Labor [129.56 h]; Skilled Labor [129.56 h] → SIC- Cost [5622]; Plumbing Helper [128.18 h]; Labor [128.18 h]; Plumber [128.18 h]; Excavator [30 h]; Excavator Operator [128.18 h]; Un-Skilled Labor [128.18 h]; Skilled Labor [128.18 h] |
| 2 | **Testing** | 2027-01-26 → 2027-01-31 (+5d) | 2027-02-28 → 2027-02-24 (-4d) |  |  |  |  |
| SDR-ST-CON-P1-4470 | Testing for Chambers & Valves | 2027-01-26 → 2027-01-31 (+5d) | 2027-02-28 → 2027-02-24 (-4d) |  | 46.8d → 7d |  | resources SIC- Cost [1249.33]; Plumbing Helper [40.4 h]; Labor [40.4 h]; Plumber [40.4 h]; Excavator [15 h]; Excavator Operator [40.4 h]; Un-Skilled Labor [40.4 h]; Skilled Labor [40.4 h] → SIC- Cost [1249.33]; Plumbing Helper [39.97 h]; Labor [39.97 h]; Plumber [39.97 h]; Excavator [15 h]; Excavator Operator [39.97 h]; Un-Skilled Labor [39.97 h]; Skilled Labor [39.97 h] |
| 6 | **Backfilling** | 2027-02-28 → 2027-02-25 (-3d) | 2027-04-01 → 2027-03-25 (-7d) |  |  |  |  |
| SDR-ST-CON-P1-5030 | Backfilling for Chambers & Valves | 2027-02-28 → 2027-02-25 (-3d) | 2027-04-01 → 2027-03-25 (-7d) |  | 46.8d → 7d | SDR-ST-CON-P1-4470 → SDR-ST-CON-P1-4470, SDR-ST-CON-P1-4990, SDR-ST-PRO-MS-1050 | resources SIC- Cost [2498.67]; Plumbing Helper [129.56 h]; Labor [129.56 h]; Plumber [129.56 h]; Excavator [16.45 h]; Excavator Operator [129.56 h]; Un-Skilled Labor [107.97 h]; Skilled Labor [129.56 h] → SIC- Cost [2498.67]; Plumbing Helper [128.18 h]; Labor [128.18 h]; Plumber [128.18 h]; Excavator [16.45 h]; Excavator Operator [128.18 h]; Un-Skilled Labor [106.82 h]; Skilled Labor [128.18 h] |
| 1 | **ROAD-01 From 470 to 1125 m (6)** |  | 2027-03-23 → 2027-03-08 (-15d) |  |  |  |  |
| 7 | **Pipes Work** |  | 2027-03-23 → 2026-11-09 (-134d) |  |  |  |  |
| 1 | **Excavation** |  | 2026-10-21 → 2026-09-24 (-27d) |  |  |  |  |
| SDR-ST-CON-P1-1410 | Excavation for PW HDPE Pipes 315 mm Section 1 |  |  |  |  |  | resources SIC- Cost [5079]; Plumbing Helper [129.56 h]; Labor [129.56 h]; Plumber [129.56 h]; Excavator [15 h]; Excavator Operator [129.56 h]; Un-Skilled Labor [38.39 h]; Skilled Labor [38.39 h] → SIC- Cost [5079]; Plumbing Helper [128.18 h]; Labor [128.18 h]; Plumber [128.18 h]; Excavator [15 h]; Excavator Operator [128.18 h]; Un-Skilled Labor [37.98 h]; Skilled Labor [37.98 h] |
| SDR-ST-CON-P1-2050 | Excavation for PW HDPE Pipes 315 mm Section 2 |  | 2026-10-21 → 2026-09-24 A (-27d) | 60% → 100% | 104.8d → none |  | resources SIC- Cost [5079]; Plumbing Helper [129.56 h]; Labor [129.56 h]; Plumber [129.56 h]; Excavator [30 h]; Excavator Operator [129.56 h]; Un-Skilled Labor [38.39 h]; Skilled Labor [38.39 h] → SIC- Cost [5079]; Plumbing Helper [128.18 h]; Labor [128.18 h]; Plumber [128.18 h]; Excavator [30 h]; Excavator Operator [128.18 h]; Un-Skilled Labor [37.98 h]; Skilled Labor [37.98 h] |
| 8 | **bedding Works** |  | 2026-11-15 → 2026-09-30 (-46d) |  |  |  |  |
| SDR-ST-CON-P1-2690 | Sand bedding for PW HDPE Pipes 315 mm |  | 2026-11-15 → 2026-09-30 A (-46d) | 75% → 100% | 104.8d → none |  | resources SIC- Cost [2539.5]; Plumbing Helper [129.56 h]; Labor [129.56 h]; Plumber [129.56 h]; Excavator [30 h]; Excavator Operator [129.56 h]; Un-Skilled Labor [38.39 h]; Skilled Labor [38.39 h] → SIC- Cost [2539.5]; Plumbing Helper [128.18 h]; Labor [128.18 h]; Plumber [128.18 h]; Excavator [30 h]; Excavator Operator [128.18 h]; Un-Skilled Labor [37.98 h]; Skilled Labor [37.98 h] |
| 2 | **Pipes Laying** |  | 2026-12-09 → 2026-10-03 (-67d) |  |  |  |  |
| SDR-ST-CON-P1-3290 | Install PW 315 mm HDPE Pipe |  | 2026-12-09 → 2026-10-03 A (-67d) | 75% → 100% | 104.8d → none |  | resources SIC- Cost [22855.5]; Plumbing Helper [38.39 h]; Labor [129.56 h]; Plumber [38.39 h]; Excavator [15 h]; Excavator Operator [129.56 h]; Un-Skilled Labor [38.39 h]; Skilled Labor [38.39 h] → SIC- Cost [22855.5]; Plumbing Helper [37.98 h]; Labor [128.18 h]; Plumber [37.98 h]; Excavator [15 h]; Excavator Operator [128.18 h]; Un-Skilled Labor [37.98 h]; Skilled Labor [37.98 h] |
| 5 | **Testing** | 2027-01-17 → 2026-10-03 (-106d) | 2027-02-11 → 2026-10-05 (-129d) |  |  |  |  |
| SDR-ST-CON-P1-4030 | Testing of PW HDPE Pipe 315 mm. | 2027-01-17 → 2026-10-03 A (-106d) | 2027-02-11 → 2026-10-05 A (-129d) | 0% → 100% | 72.8d → none | SDR-ST-CON-P1-3290, SDR-ST-CON-P1-4570 → SDR-ST-CON-P1-3290 | resources SIC- Cost [5079]; Plumbing Helper [40.4 h]; Labor [40.4 h]; Plumber [40.4 h]; Excavator [30 h]; Excavator Operator [40.4 h]; Un-Skilled Labor [40.4 h]; Skilled Labor [40.4 h] → SIC- Cost [5079]; Plumbing Helper [39.97 h]; Labor [39.97 h]; Plumber [39.97 h]; Excavator [30 h]; Excavator Operator [39.97 h]; Un-Skilled Labor [39.97 h]; Skilled Labor [39.97 h] |
| 9 | **Backfilling** | 2027-02-11 → 2026-10-17 (-117d) | 2027-03-23 → 2026-11-09 (-134d) |  |  |  |  |

| ID | Task | Start | Finish | Complete | Total float | Predecessors | Other |
| --- | --- | --- | --- | --- | --- | --- | --- |
| SDR-ST-CON-P1-4700 | Backfilling of PW HDPE Pipe 315 mm. | 2027-02-11 → 2026-10-17 (-117d) | 2027-03-23 → 2026-11-09 (-134d) |  | 72.8d → 109.9d | SDR-ST-CON-P1-4030 → SDR-ST-CON-P1-4030, SDR-ST-PRO-MS-1050 | resources SIC- Cost [10158]; Plumbing Helper [129.56 h]; Labor [129.56 h]; Plumber [129.56 h]; Excavator [30 h]; Excavator Operator [129.56 h]; Un-Skilled Labor [129.56 h]; Skilled Labor [129.56 h] → SIC- Cost [10158]; Plumbing Helper [128.18 h]; Labor [128.18 h]; Plumber [128.18 h]; Excavator [30 h]; Excavator Operator [128.18 h]; Un-Skilled Labor [128.18 h]; Skilled Labor [128.18 h] |
| 3 | **Valve Chambers & Valves & Fire Hydrant** | 2026-09-28 → 2026-10-12 (+14d) | 2027-03-03 → 2027-03-08 (+5d) |  |  |  |  |
| 3 | **Excavation** | 2026-09-28 → 2026-10-12 (+14d) | 2026-11-15 → 2026-11-29 (+14d) |  |  |  |  |
| SDR-ST-CON-P1-1420 | Excavation for Valve Chambers Section 1 | 2026-09-28 → 2026-10-12 (+14d) | 2026-10-21 → 2026-11-04 (+14d) |  | 56.8d → 16d | SDR-ST-CON-P1-1410 SS+7d, SDR-ST-ENG-AP-1090 → SDR-ST-CON-P1-1410 SS+7d | resources SIC- Cost [1249.33]; Plumbing Helper [38.39 h]; Labor [129.56 h]; Plumber [38.39 h]; Excavator [15 h]; Excavator Operator [129.56 h]; Un-Skilled Labor [38.39 h]; Skilled Labor [38.39 h] → SIC- Cost [1249.33]; Plumbing Helper [37.98 h]; Labor [128.18 h]; Plumber [37.98 h]; Excavator [15 h]; Excavator Operator [128.18 h]; Un-Skilled Labor [37.98 h]; Skilled Labor [37.98 h] |
| SDR-ST-CON-P1-2100 | Excavation for Valve Chambers Section 2 | 2026-10-22 → 2026-11-05 (+14d) | 2026-11-15 → 2026-11-29 (+14d) |  | 56.8d → 16d |  | resources SIC- Cost [1249.33]; Plumbing Helper [129.56 h]; Labor [129.56 h]; Plumber [129.56 h]; Excavator [22.38 h]; Excavator Operator [129.56 h]; Un-Skilled Labor [38.39 h]; Skilled Labor [38.39 h] → SIC- Cost [1249.33]; Plumbing Helper [128.18 h]; Labor [128.18 h]; Plumber [128.18 h]; Excavator [22.38 h]; Excavator Operator [128.18 h]; Un-Skilled Labor [37.98 h]; Skilled Labor [37.98 h] |
| 1 | **bedding Works** | 2026-11-16 → 2026-11-30 (+14d) | 2026-12-09 → 2026-12-23 (+14d) |  |  |  |  |
| SDR-ST-CON-P1-2820 | Sand bedding for Valve Chambers | 2026-11-16 → 2026-11-30 (+14d) | 2026-12-09 → 2026-12-23 (+14d) |  | 56.8d → 16d |  | resources SIC- Cost [624.67]; Plumbing Helper [129.56 h]; Labor [129.56 h]; Plumber [129.56 h]; Excavator [30 h]; Excavator Operator [129.56 h]; Un-Skilled Labor [38.39 h]; Skilled Labor [38.39 h] → SIC- Cost [624.67]; Plumbing Helper [128.18 h]; Labor [128.18 h]; Plumber [128.18 h]; Excavator [30 h]; Excavator Operator [128.18 h]; Un-Skilled Labor [37.98 h]; Skilled Labor [37.98 h] |
| 4 | **Install Chambers & Valves & Fire Hydrant** | 2026-12-10 → 2026-12-24 (+14d) | 2027-01-03 → 2027-01-17 (+14d) |  |  |  |  |
| SDR-ST-CON-P1-3660 | Install Chambers & Valves | 2026-12-10 → 2026-12-24 (+14d) | 2027-01-03 → 2027-01-17 (+14d) |  | 56.8d → 16d | SDR-ST-CON-P1-2820 → SDR-ST-CON-P1-2820, SDR-ST-PRO-MS-1190 | resources SIC- Cost [5622]; Plumbing Helper [129.56 h]; Labor [129.56 h]; Plumber [129.56 h]; Excavator [147.06 h]; Excavator Operator [129.56 h]; Un-Skilled Labor [129.56 h]; Skilled Labor [129.56 h] → SIC- Cost [5622]; Plumbing Helper [128.18 h]; Labor [128.18 h]; Plumber [128.18 h]; Excavator [147.06 h]; Excavator Operator [128.18 h]; Un-Skilled Labor [128.18 h]; Skilled Labor [128.18 h] |
| 2 | **Testing** | 2027-01-04 → 2027-01-18 (+14d) | 2027-01-27 → 2027-02-10 (+14d) |  |  |  |  |
| SDR-ST-CON-P1-4550 | Testing for Chambers & Valves | 2027-01-04 → 2027-01-18 (+14d) | 2027-01-27 → 2027-02-10 (+14d) |  | 56.8d → 16d |  | resources SIC- Cost [1249.33]; Plumbing Helper [107.97 h]; Labor [107.97 h]; Plumber [107.97 h]; Excavator [15 h]; Excavator Operator [107.97 h]; Un-Skilled Labor [107.97 h]; Skilled Labor [107.97 h] → SIC- Cost [1249.33]; Plumbing Helper [106.82 h]; Labor [106.82 h]; Plumber [106.82 h]; Excavator [15 h]; Excavator Operator [106.82 h]; Un-Skilled Labor [106.82 h]; Skilled Labor [106.82 h] |
| 6 | **Backfilling** | 2027-01-28 → 2027-02-11 (+14d) | 2027-03-03 → 2027-03-08 (+5d) |  |  |  |  |
| SDR-ST-CON-P1-5100 | Backfilling for Chambers & Valves | 2027-01-28 → 2027-02-11 (+14d) | 2027-03-03 → 2027-03-08 (+5d) |  | 56.8d → 16d | SDR-ST-CON-P1-4550 → SDR-ST-CON-P1-4550, SDR-ST-PRO-MS-1050 | resources SIC- Cost [2498.67]; Plumbing Helper [129.56 h]; Labor [129.56 h]; Plumber [129.56 h]; Excavator [16.03 h]; Excavator Operator [129.56 h]; Un-Skilled Labor [129.56 h]; Skilled Labor [129.56 h] → SIC- Cost [2498.67]; Plumbing Helper [128.18 h]; Labor [128.18 h]; Plumber [128.18 h]; Excavator [16.03 h]; Excavator Operator [128.18 h]; Un-Skilled Labor [128.18 h]; Skilled Labor [128.18 h] |
| 3 | **ROAD-01 From 1125 to 1765 m (7)** |  | 2027-03-31 → 2027-03-15 (-16d) |  |  |  |  |
| 7 | **Pipes Work** |  | 2027-03-03 → 2027-03-02 (-1d) |  |  |  |  |
| 1 | **Excavation** |  | 2026-11-14 → 2026-09-21 (-54d) |  |  |  |  |
| SDR-ST-CON-P1-1630 | Excavation for PW HDPE Pipes 315 mm Section 1 |  |  |  |  |  | resources SIC- Cost [5079]; Plumbing Helper [38.39 h]; Labor [129.56 h]; Plumber [38.39 h]; Excavator [15 h]; Excavator Operator [129.56 h]; Un-Skilled Labor [38.39 h]; Skilled Labor [38.39 h] → SIC- Cost [5079]; Plumbing Helper [37.98 h]; Labor [128.18 h]; Plumber [37.98 h]; Excavator [15 h]; Excavator Operator [128.18 h]; Un-Skilled Labor [37.98 h]; Skilled Labor [37.98 h] |
| SDR-ST-CON-P1-2130 | Excavation for PW HDPE Pipes 315 mm Section 2 |  | 2026-11-14 → 2026-09-21 A (-54d) | 50% → 100% | 73.8d → none | SDR-ST-CON-P1-1630, SDR-ST-PRO-MS-1010 → SDR-ST-CON-P1-1630 | resources SIC- Cost [5079]; Plumbing Helper [38.39 h]; Labor [129.56 h]; Plumber [38.39 h]; Excavator [31.21 h]; Excavator Operator [129.56 h]; Un-Skilled Labor [38.39 h]; Skilled Labor [38.39 h] → SIC- Cost [5079]; Plumbing Helper [37.98 h]; Labor [128.18 h]; Plumber [37.98 h]; Excavator [31.21 h]; Excavator Operator [128.18 h]; Un-Skilled Labor [37.98 h]; Skilled Labor [37.98 h] |
| 8 | **bedding Works** |  | 2026-12-07 → 2026-10-03 (-65d) |  |  |  |  |
| SDR-ST-CON-P1-2810 | Sand bedding for PW HDPE Pipes 315 mm |  | 2026-12-07 → 2026-10-03 A (-65d) | 75% → 100% | 73.8d → none |  | resources SIC- Cost [2539.5]; Plumbing Helper [38.39 h]; Labor [129.56 h]; Plumber [38.39 h]; Excavator [30 h]; Excavator Operator [129.56 h]; Un-Skilled Labor [38.39 h]; Skilled Labor [38.39 h] → SIC- Cost [2539.5]; Plumbing Helper [37.98 h]; Labor [128.18 h]; Plumber [37.98 h]; Excavator [30 h]; Excavator Operator [128.18 h]; Un-Skilled Labor [37.98 h]; Skilled Labor [37.98 h] |
| 2 | **Pipes Laying** |  | 2026-12-31 → 2026-09-30 (-92d) |  |  |  |  |
| SDR-ST-CON-P1-3490 | Install PW 315 mm HDPE Pipe |  | 2026-12-31 → 2026-09-30 A (-92d) | 75% → 100% | 73.8d → none |  | resources SIC- Cost [22855.5]; Plumbing Helper [38.39 h]; Labor [38.39 h]; Plumber [38.39 h]; Excavator [15 h]; Excavator Operator [38.39 h]; Un-Skilled Labor [38.39 h]; Skilled Labor [38.39 h] → SIC- Cost [22855.5]; Plumbing Helper [37.98 h]; Labor [37.98 h]; Plumber [37.98 h]; Excavator [15 h]; Excavator Operator [37.98 h]; Un-Skilled Labor [37.98 h]; Skilled Labor [37.98 h] |
| 5 | **Testing** | 2027-01-04 → 2026-10-03 (-93d) | 2027-01-27 → 2026-10-05 (-114d) |  |  |  |  |
| SDR-ST-CON-P1-3950 | Testing of PW HDPE Pipe 315 mm. | 2027-01-04 → 2026-10-03 A (-93d) | 2027-01-27 → 2026-10-05 A (-114d) | 0% → 100% | 71.8d → none | SDR-ST-CON-P1-3490, SDR-ST-CON-P1-4370 → SDR-ST-CON-P1-3490 | resources SIC- Cost [5079]; Plumbing Helper [86.38 h]; Labor [86.38 h]; Plumber [86.38 h]; Excavator [30 h]; Excavator Operator [86.38 h]; Un-Skilled Labor [86.38 h]; Skilled Labor [86.38 h] → SIC- Cost [5079]; Plumbing Helper [85.46 h]; Labor [85.46 h]; Plumber [85.46 h]; Excavator [30 h]; Excavator Operator [85.46 h]; Un-Skilled Labor [85.46 h]; Skilled Labor [85.46 h] |
| 9 | **Backfilling** | 2027-01-28 → 2027-02-06 (+9d) | 2027-03-03 → 2027-03-02 (-1d) |  |  |  |  |
| SDR-ST-CON-P1-4520 | Backfilling of PW HDPE Pipe 315 mm. | 2027-01-28 → 2027-02-06 (+9d) | 2027-03-03 → 2027-03-02 (-1d) |  | 71.8d → 28d | SDR-ST-CON-P1-3950 → SDR-ST-CON-P1-3950, SDR-ST-CON-P1-4990, SDR-ST-PRO-MS-1050 | resources SIC- Cost [10158]; Plumbing Helper [129.56 h]; Labor [129.56 h]; Plumber [129.56 h]; Excavator [17.57 h]; Excavator Operator [129.56 h]; Un-Skilled Labor [129.56 h]; Skilled Labor [129.56 h] → SIC- Cost [10158]; Plumbing Helper [128.18 h]; Labor [128.18 h]; Plumber [128.18 h]; Excavator [17.57 h]; Excavator Operator [128.18 h]; Un-Skilled Labor [128.18 h]; Skilled Labor [128.18 h] |
| 3 | **Valve Chambers & Valves & Fire Hydrant** | 2026-09-28 → 2026-10-12 (+14d) | 2027-03-31 → 2027-03-15 (-16d) |  |  |  |  |
| 3 | **Excavation** | 2026-09-28 → 2026-10-12 (+14d) | 2026-11-15 → 2026-11-29 (+14d) |  |  |  |  |
| SDR-ST-CON-P1-1640 | Excavation for Valve Chambers Section 1 | 2026-09-28 → 2026-10-12 (+14d) | 2026-10-21 → 2026-11-04 (+14d) |  | 56.8d → 5d | SDR-ST-CON-P1-1630 SS+7d, SDR-ST-ENG-AP-1090 → SDR-ST-CON-P1-1630 SS+7d | resources SIC- Cost [1249.33]; Plumbing Helper [38.39 h]; Labor [129.56 h]; Plumber [38.39 h]; Excavator [32.23 h]; Excavator Operator [129.56 h]; Un-Skilled Labor [38.39 h]; Skilled Labor [38.39 h] → SIC- Cost [1249.33]; Plumbing Helper [37.98 h]; Labor [128.18 h]; Plumber [37.98 h]; Excavator [32.23 h]; Excavator Operator [128.18 h]; Un-Skilled Labor [37.98 h]; Skilled Labor [37.98 h] |
| SDR-ST-CON-P1-2230 | Excavation for Valve Chambers Section 2 | 2026-10-22 → 2026-11-05 (+14d) | 2026-11-15 → 2026-11-29 (+14d) |  | 56.8d → 5d |  | resources SIC- Cost [1249.33]; Plumbing Helper [129.56 h]; Labor [129.56 h]; Plumber [129.56 h]; Excavator [15 h]; Excavator Operator [129.56 h]; Un-Skilled Labor [38.39 h]; Skilled Labor [38.39 h] → SIC- Cost [1249.33]; Plumbing Helper [128.18 h]; Labor [128.18 h]; Plumber [128.18 h]; Excavator [15 h]; Excavator Operator [128.18 h]; Un-Skilled Labor [37.98 h]; Skilled Labor [37.98 h] |
| 1 | **bedding Works** | 2026-11-16 → 2026-11-30 (+14d) | 2026-12-09 → 2026-12-23 (+14d) |  |  |  |  |
| SDR-ST-CON-P1-2900 | Sand bedding for Valve Chambers | 2026-11-16 → 2026-11-30 (+14d) | 2026-12-09 → 2026-12-23 (+14d) |  | 56.8d → 5d |  | resources SIC- Cost [624.67]; Plumbing Helper [38.39 h]; Labor [115.17 h]; Plumber [38.39 h]; Excavator [30 h]; Excavator Operator [115.17 h]; Un-Skilled Labor [38.39 h]; Skilled Labor [38.39 h] → SIC- Cost [624.67]; Plumbing Helper [37.98 h]; Labor [113.94 h]; Plumber [37.98 h]; Excavator [30 h]; Excavator Operator [113.94 h]; Un-Skilled Labor [37.98 h]; Skilled Labor [37.98 h] |
| 4 | **Install Chambers & Valves & Fire Hydrant** | 2026-12-10 → 2026-12-24 (+14d) | 2027-01-03 → 2027-01-17 (+14d) |  |  |  |  |
| SDR-ST-CON-P1-3640 | Install Chambers & Valves | 2026-12-10 → 2026-12-24 (+14d) | 2027-01-03 → 2027-01-17 (+14d) |  | 56.8d → 5d | SDR-ST-CON-P1-2900 → SDR-ST-CON-P1-2900, SDR-ST-PRO-MS-1190 | resources SIC- Cost [5622]; Plumbing Helper [129.56 h]; Labor [129.56 h]; Plumber [129.56 h]; Excavator [30 h]; Excavator Operator [129.56 h]; Un-Skilled Labor [129.56 h]; Skilled Labor [129.56 h] → SIC- Cost [5622]; Plumbing Helper [128.18 h]; Labor [128.18 h]; Plumber [128.18 h]; Excavator [30 h]; Excavator Operator [128.18 h]; Un-Skilled Labor [128.18 h]; Skilled Labor [128.18 h] |
| 2 | **Testing** | 2027-01-04 → 2027-01-18 (+14d) | 2027-01-27 → 2027-02-10 (+14d) |  |  |  |  |
| SDR-ST-CON-P1-4510 | Testing for Chambers & Valves | 2027-01-04 → 2027-01-18 (+14d) | 2027-01-27 → 2027-02-10 (+14d) |  | 56.8d → 5d |  | resources SIC- Cost [1249.33]; Plumbing Helper [107.97 h]; Labor [107.97 h]; Plumber [107.97 h]; Excavator [15 h]; Excavator Operator [107.97 h]; Un-Skilled Labor [107.97 h]; Skilled Labor [107.97 h] → SIC- Cost [1249.33]; Plumbing Helper [106.82 h]; Labor [106.82 h]; Plumber [106.82 h]; Excavator [15 h]; Excavator Operator [106.82 h]; Un-Skilled Labor [106.82 h]; Skilled Labor [106.82 h] |
| 6 | **Backfilling** | 2027-02-27 → 2027-02-14 (-13d) | 2027-03-31 → 2027-03-15 (-16d) |  |  |  |  |
| SDR-ST-CON-P1-5070 | Backfilling for Chambers & Valves | 2027-02-27 → 2027-02-14 (-13d) | 2027-03-31 → 2027-03-15 (-16d) |  | 38.8d → 3d | SDR-ST-CON-P1-4510, SDR-ST-CON-P1-5020, SDR-ST-CON-P1-4970, SDR-ST-CON-P1-5140 → SDR-ST-CON-P1-4510, SDR-ST-CON-P1-5020, SDR-ST-CON-P1-4970, SDR-ST-CON-P1-5140, SDR-ST-PRO-MS-1050 | resources SIC- Cost [2498.67]; Plumbing Helper [44.44 h]; Compactor [600 h]; Labor [18.36 h]; Plumber [44.44 h]; Excavator [16.63 h]; Excavator Operator [64.75 h]; Un-Skilled Labor [71.98 h]; Skilled Labor [57.53 h] → SIC- Cost [2498.67]; Plumbing Helper [43.97 h]; Compactor [600 h]; Labor [18.17 h]; Plumber [43.97 h]; Excavator [16.63 h]; Excavator Operator [64.06 h]; Un-Skilled Labor [71.22 h]; Skilled Labor [56.91 h] |
| 3 | **ROAD - 02** |  | 2027-04-06 → 2027-03-15 (-22d) |  |  |  |  |
| 7 | **Pipes Work** |  | 2027-04-06 → 2027-03-15 (-22d) |  |  |  |  |
| 1 | **Excavation** |  | 2026-10-21 → 2026-09-21 (-30d) |  |  |  |  |
| SDR-ST-CON-P1-1930 | Excavation for PW HDPE Pipes 315 mm Section 1 |  |  |  |  |  | resources SIC- Cost [5079]; Plumbing Helper [38.39 h]; Labor [129.56 h]; Plumber [38.39 h]; Excavator [20 h]; Excavator Operator [129.56 h]; Un-Skilled Labor [38.39 h]; Skilled Labor [38.39 h] → SIC- Cost [5079]; Plumbing Helper [37.98 h]; Labor [128.18 h]; Plumber [37.98 h]; Excavator [20 h]; Excavator Operator [128.18 h]; Un-Skilled Labor [37.98 h]; Skilled Labor [37.98 h] |
| SDR-ST-CON-P1-2480 | Excavation for PW HDPE Pipes 315 mm Section 2 | 2026-09-28 → 2026-08-31 A (-28d) | 2026-10-21 → 2026-09-21 A (-30d) | 0% → 100% | 92.8d → none |  | resources SIC- Cost [5079]; Plumbing Helper [38.39 h]; Labor [129.56 h]; Plumber [38.39 h]; Excavator [15 h]; Excavator Operator [129.56 h]; Un-Skilled Labor [38.39 h]; Skilled Labor [38.39 h] → SIC- Cost [5079]; Plumbing Helper [37.98 h]; Labor [128.18 h]; Plumber [37.98 h]; Excavator [15 h]; Excavator Operator [128.18 h]; Un-Skilled Labor [37.98 h]; Skilled Labor [37.98 h] |
| 8 | **bedding Works** |  | 2026-11-15 → 2026-11-04 (-11d) |  |  |  |  |
| SDR-ST-CON-P1-3130 | Sand bedding for PW HDPE Pipes 315 mm |  | 2026-11-15 → 2026-11-04 (-11d) | 50% → 75% | 92.8d → 77.9d |  | resources SIC- Cost [2539.5]; Plumbing Helper [38.39 h]; Labor [129.56 h]; Plumber [38.39 h]; Excavator [20.62 h]; Excavator Operator [129.56 h]; Un-Skilled Labor [38.39 h]; Skilled Labor [38.39 h] → SIC- Cost [2539.5]; Plumbing Helper [37.98 h]; Labor [128.18 h]; Plumber [37.98 h]; Excavator [20.62 h]; Excavator Operator [128.18 h]; Un-Skilled Labor [37.98 h]; Skilled Labor [37.98 h] |
| 2 | **Pipes Laying** |  | 2026-12-09 → 2026-11-04 (-35d) |  |  |  |  |
| SDR-ST-CON-P1-3650 | Install PW 315 mm HDPE Pipe |  | 2026-12-09 → 2026-11-04 (-35d) | 50% → 75% | 92.8d → 77.9d | SDR-ST-CON-P1-3130 → SDR-ST-CON-P1-3130 SS, SDR-ST-PRO-MS-1110 FF | resources SIC- Cost [22855.5]; Plumbing Helper [38.39 h]; Labor [38.39 h]; Plumber [38.39 h]; Excavator [15 h]; Excavator Operator [38.39 h]; Un-Skilled Labor [38.39 h]; Skilled Labor [38.39 h] → SIC- Cost [22855.5]; Plumbing Helper [37.98 h]; Labor [37.98 h]; Plumber [37.98 h]; Excavator [15 h]; Excavator Operator [37.98 h]; Un-Skilled Labor [37.98 h]; Skilled Labor [37.98 h] |
| 5 | **Testing** | 2026-12-10 → 2026-11-05 (-35d) | 2027-01-03 → 2026-11-29 (-35d) |  |  |  |  |
| SDR-ST-CON-P1-4340 | Testing of PW HDPE Pipe 315 mm. | 2026-12-10 → 2026-11-05 (-35d) | 2027-01-03 → 2026-11-29 (-35d) |  | 92.8d → 77.9d |  | resources SIC- Cost [5079]; Plumbing Helper [107.97 h]; Labor [107.97 h]; Plumber [107.97 h]; Excavator [19.39 h]; Excavator Operator [107.97 h]; Un-Skilled Labor [107.97 h]; Skilled Labor [107.97 h] → SIC- Cost [5079]; Plumbing Helper [106.82 h]; Labor [106.82 h]; Plumber [106.82 h]; Excavator [19.39 h]; Excavator Operator [106.82 h]; Un-Skilled Labor [106.82 h]; Skilled Labor [106.82 h] |
| 9 | **Backfilling** | 2027-03-08 → 2027-02-14 (-22d) | 2027-04-06 → 2027-03-15 (-22d) |  |  |  |  |
| SDR-ST-CON-P1-4910 | Backfilling of PW HDPE Pipe 315 mm. | 2027-03-08 → 2027-02-14 (-22d) | 2027-04-06 → 2027-03-15 (-22d) |  | 48.8d → 14d | SDR-ST-CON-P1-4340, SDR-ST-CON-P1-5020, SDR-ST-CON-P1-4740, SDR-ST-CON-P1-4880 → SDR-ST-CON-P1-4340, SDR-ST-CON-P1-5020, SDR-ST-CON-P1-4740, SDR-ST-CON-P1-4880, SDR-ST-PRO-MS-1050 | resources SIC- Cost [10158]; Plumbing Helper [107.97 h]; Labor [107.97 h]; Plumber [107.97 h]; Excavator [101.25 h]; Excavator Operator [107.97 h]; Un-Skilled Labor [107.97 h]; Skilled Labor [107.97 h] → SIC- Cost [10158]; Plumbing Helper [106.82 h]; Labor [106.82 h]; Plumber [106.82 h]; Excavator [101.25 h]; Excavator Operator [106.82 h]; Un-Skilled Labor [106.82 h]; Skilled Labor [106.82 h] |
| 3 | **Valve Chambers & Valves & Fire Hydrant** | 2026-09-28 → 2026-10-12 (+14d) | 2027-02-18 → 2027-03-02 (+12d) |  |  |  |  |
| 3 | **Excavation** | 2026-09-28 → 2026-10-12 (+14d) | 2026-11-12 → 2026-11-26 (+14d) |  |  |  |  |
| SDR-ST-CON-P1-1940 | Excavation for Valve Chambers Section 1 | 2026-09-28 → 2026-10-12 (+14d) | 2026-10-20 → 2026-11-03 (+14d) |  | 63.8d → 14d | SDR-ST-CON-P1-1930 SS, SDR-ST-ENG-AP-1090 → SDR-ST-CON-P1-1930 SS | resources SIC- Cost [1249.33]; Plumbing Helper [129.56 h]; Labor [129.56 h]; Plumber [129.56 h]; Excavator [20 h]; Excavator Operator [129.56 h]; Un-Skilled Labor [38.39 h]; Skilled Labor [38.39 h] → SIC- Cost [1249.33]; Plumbing Helper [128.18 h]; Labor [128.18 h]; Plumber [128.18 h]; Excavator [20 h]; Excavator Operator [128.18 h]; Un-Skilled Labor [37.98 h]; Skilled Labor [37.98 h] |
| SDR-ST-CON-P1-2630 | Excavation for Valve Chambers Section 2 | 2026-10-21 → 2026-11-04 (+14d) | 2026-11-12 → 2026-11-26 (+14d) |  | 63.8d → 14d |  | resources SIC- Cost [1249.33]; Plumbing Helper [129.56 h]; Labor [129.56 h]; Plumber [129.56 h]; Excavator [30 h]; Excavator Operator [129.56 h]; Un-Skilled Labor [38.39 h]; Skilled Labor [38.39 h] → SIC- Cost [1249.33]; Plumbing Helper [128.18 h]; Labor [128.18 h]; Plumber [128.18 h]; Excavator [30 h]; Excavator Operator [128.18 h]; Un-Skilled Labor [37.98 h]; Skilled Labor [37.98 h] |
| 1 | **bedding Works** | 2026-11-14 → 2026-11-28 (+14d) | 2026-12-06 → 2026-12-20 (+14d) |  |  |  |  |
| SDR-ST-CON-P1-3400 | Sand bedding for Valve Chambers | 2026-11-14 → 2026-11-28 (+14d) | 2026-12-06 → 2026-12-20 (+14d) |  | 63.8d → 14d |  | resources SIC- Cost [624.67]; Plumbing Helper [38.39 h]; Labor [129.56 h]; Plumber [38.39 h]; Excavator [15 h]; Excavator Operator [129.56 h]; Un-Skilled Labor [38.39 h]; Skilled Labor [38.39 h] → SIC- Cost [624.67]; Plumbing Helper [37.98 h]; Labor [128.18 h]; Plumber [37.98 h]; Excavator [15 h]; Excavator Operator [128.18 h]; Un-Skilled Labor [37.98 h]; Skilled Labor [37.98 h] |
| 4 | **Install Chambers & Valves & Fire Hydrant** | 2026-12-07 → 2026-12-21 (+14d) | 2026-12-29 → 2027-01-12 (+14d) |  |  |  |  |
| SDR-ST-CON-P1-4330 | Install Chambers & Valves | 2026-12-07 → 2026-12-21 (+14d) | 2026-12-29 → 2027-01-12 (+14d) |  | 63.8d → 14d | SDR-ST-CON-P1-3400 → SDR-ST-CON-P1-3400, SDR-ST-PRO-MS-1190 | resources SIC- Cost [5622]; Plumbing Helper [129.56 h]; Labor [129.56 h]; Plumber [129.56 h]; Excavator [19.84 h]; Excavator Operator [129.56 h]; Un-Skilled Labor [129.56 h]; Skilled Labor [129.56 h] → SIC- Cost [5622]; Plumbing Helper [128.18 h]; Labor [128.18 h]; Plumber [128.18 h]; Excavator [19.84 h]; Excavator Operator [128.18 h]; Un-Skilled Labor [128.18 h]; Skilled Labor [128.18 h] |
| 2 | **Testing** | 2027-01-04 → 2027-01-18 (+14d) | 2027-01-19 → 2027-02-02 (+14d) |  |  |  |  |
| SDR-ST-CON-P1-5060 | Testing for Chambers & Valves | 2027-01-04 → 2027-01-18 (+14d) | 2027-01-19 → 2027-02-02 (+14d) |  | 59.8d → 23d |  | resources SIC- Cost [1249.33]; Plumbing Helper [100.77 h]; Labor [100.77 h]; Plumber [100.77 h]; Excavator [106.49 h]; Excavator Operator [100.77 h]; Un-Skilled Labor [100.77 h]; Skilled Labor [100.77 h] → SIC- Cost [1249.33]; Plumbing Helper [99.7 h]; Labor [99.7 h]; Plumber [99.7 h]; Excavator [106.49 h]; Excavator Operator [99.7 h]; Un-Skilled Labor [99.7 h]; Skilled Labor [99.7 h] |
| 6 | **Backfilling** | 2027-01-21 → 2027-02-06 (+16d) | 2027-02-18 → 2027-03-02 (+12d) |  |  |  |  |
| SDR-ST-CON-P1-5730 | Backfilling for Chambers & Valves | 2027-01-21 → 2027-02-06 (+16d) | 2027-02-18 → 2027-03-02 (+12d) |  | 58.8d → 21d | SDR-ST-CON-P1-5060, SDR-ST-CON-P1-4020, SDR-ST-CON-P1-4610 → SDR-ST-CON-P1-5060, SDR-ST-CON-P1-4020, SDR-ST-CON-P1-4610, SDR-ST-CON-P1-4990, SDR-ST-PRO-MS-1050 | resources SIC- Cost [2498.67]; Plumbing Helper [129.56 h]; Labor [129.56 h]; Plumber [129.56 h]; Excavator [180 h]; Excavator Operator [129.56 h]; Un-Skilled Labor [129.56 h]; Skilled Labor [129.56 h] → SIC- Cost [2498.67]; Plumbing Helper [128.18 h]; Labor [128.18 h]; Plumber [128.18 h]; Excavator [180 h]; Excavator Operator [128.18 h]; Un-Skilled Labor [128.18 h]; Skilled Labor [128.18 h] |
| 7 | **Pipes Work** |  | 2026-12-23 → 2026-12-03 (-20d) |  |  |  |  |
| 1 | **Excavation** |  | 2026-10-17 → 2026-09-24 (-23d) |  |  |  |  |
| SDR-ST-CON-P1-1850 | Excavation for PW HDPE Pipes 315 mm Section 1 |  |  |  |  |  | resources SIC- Cost [5079]; Plumbing Helper [129.56 h]; Labor [129.56 h]; Plumber [129.56 h]; Excavator [20 h]; Excavator Operator [129.56 h]; Un-Skilled Labor [38.39 h]; Skilled Labor [38.39 h] → SIC- Cost [5079]; Plumbing Helper [128.18 h]; Labor [128.18 h]; Plumber [128.18 h]; Excavator [20 h]; Excavator Operator [128.18 h]; Un-Skilled Labor [37.98 h]; Skilled Labor [37.98 h] |
| SDR-ST-CON-P1-2460 | Excavation for PW HDPE Pipes 315 mm Section 2 | 2026-09-28 → 2026-08-31 A (-28d) | 2026-10-17 → 2026-09-24 A (-23d) | 0% → 100% | 83.8d → none |  | resources SIC- Cost [5079]; Plumbing Helper [129.56 h]; Labor [129.56 h]; Plumber [129.56 h]; Excavator [15 h]; Excavator Operator [129.56 h]; Un-Skilled Labor [129.56 h]; Skilled Labor [129.56 h] → SIC- Cost [5079]; Plumbing Helper [128.18 h]; Labor [128.18 h]; Plumber [128.18 h]; Excavator [15 h]; Excavator Operator [128.18 h]; Un-Skilled Labor [128.18 h]; Skilled Labor [128.18 h] |
| 8 | **bedding Works** |  | 2026-10-31 → 2026-10-25 (-6d) |  |  |  |  |
| SDR-ST-CON-P1-3060 | Sand bedding for PW HDPE Pipes 315 mm |  | 2026-10-31 → 2026-10-25 (-6d) | 50% → 75% | 83.8d → 58d |  | resources SIC- Cost [2539.5]; Plumbing Helper [129.56 h]; Labor [129.56 h]; Plumber [129.56 h]; Excavator [30 h]; Excavator Operator [129.56 h]; Un-Skilled Labor [38.39 h]; Skilled Labor [38.39 h] → SIC- Cost [2539.5]; Plumbing Helper [128.18 h]; Labor [128.18 h]; Plumber [128.18 h]; Excavator [30 h]; Excavator Operator [128.18 h]; Un-Skilled Labor [37.98 h]; Skilled Labor [37.98 h] |
| 2 | **Pipes Laying** |  | 2026-11-12 → 2026-10-24 (-19d) |  |  |  |  |

| ID | Task | Start | Finish | Complete | Total float | Predecessors | Other |
| --- | --- | --- | --- | --- | --- | --- | --- |
| SDR-ST-CON-P1-3570 | Install PW 315 mm HDPE Pipe |  | 2026-11-12 → 2026-10-24 (-19d) | 50% → 75% | 83.8d → 58d | SDR-ST-CON-P1-3060 → SDR-ST-CON-P1-3060 SS, SDR-ST-PRO-MS-1110 FF | resources SIC- Cost [22855.5]; Plumbing Helper [38.39 h]; Labor [38.39 h]; Plumber [38.39 h]; Excavator [15 h]; Excavator Operator [38.39 h]; Un-Skilled Labor [38.39 h]; Skilled Labor [38.39 h] → SIC- Cost [22855.5]; Plumbing Helper [37.98 h]; Labor [37.98 h]; Plumber [37.98 h]; Excavator [15 h]; Excavator Operator [37.98 h]; Un-Skilled Labor [37.98 h]; Skilled Labor [37.98 h] |
| 5 | **Testing** | 2026-11-14 → 2026-10-25 (-20d) | 2026-11-29 → 2026-11-09 (-20d) |  |  |  |  |
| SDR-ST-CON-P1-4060 | Testing of PW HDPE Pipe 315 mm. | 2026-11-14 → 2026-10-25 (-20d) | 2026-11-29 → 2026-11-09 (-20d) |  | 83.8d → 58d |  | resources SIC- Cost [5079]; Plumbing Helper [100.77 h]; Labor [100.77 h]; Plumber [100.77 h]; Excavator [30 h]; Excavator Operator [100.77 h]; Un-Skilled Labor [100.77 h]; Skilled Labor [100.77 h] → SIC- Cost [5079]; Plumbing Helper [99.7 h]; Labor [99.7 h]; Plumber [99.7 h]; Excavator [30 h]; Excavator Operator [99.7 h]; Un-Skilled Labor [99.7 h]; Skilled Labor [99.7 h] |
| 9 | **Backfilling** | 2026-11-30 → 2026-11-10 (-20d) | 2026-12-23 → 2026-12-03 (-20d) |  |  |  |  |
| SDR-ST-CON-P1-4640 | Backfilling of PW HDPE Pipe 315 mm. | 2026-11-30 → 2026-11-10 (-20d) | 2026-12-23 → 2026-12-03 (-20d) |  | 83.8d → 58d | SDR-ST-CON-P1-4060 → SDR-ST-CON-P1-4060, SDR-ST-PRO-MS-1050 | resources SIC- Cost [10158]; Plumbing Helper [129.56 h]; Labor [129.56 h]; Plumber [129.56 h]; Excavator [162.43 h]; Excavator Operator [129.56 h]; Un-Skilled Labor [129.56 h]; Skilled Labor [129.56 h] → SIC- Cost [10158]; Plumbing Helper [128.18 h]; Labor [128.18 h]; Plumber [128.18 h]; Excavator [162.43 h]; Excavator Operator [128.18 h]; Un-Skilled Labor [128.18 h]; Skilled Labor [128.18 h] |
| 3 | **Valve Chambers & Valves & Fire Hydrant** | 2026-09-28 → 2026-10-12 (+14d) | 2027-03-29 → 2027-03-02 (-27d) |  |  |  |  |
| 3 | **Excavation** | 2026-09-28 → 2026-10-12 (+14d) | 2026-12-06 → 2026-12-03 (-3d) |  |  |  |  |
| SDR-ST-CON-P1-1860 | Excavation for Valve Chambers Section 1 | 2026-09-28 → 2026-10-12 (+14d) | 2026-10-20 → 2026-11-03 (+14d) |  | 63.8d → 20d |  | resources SIC- Cost [1249.33]; Plumbing Helper [129.56 h]; Labor [129.56 h]; Plumber [129.56 h]; Excavator [20 h]; Excavator Operator [129.56 h]; Un-Skilled Labor [38.39 h]; Skilled Labor [38.39 h] → SIC- Cost [1249.33]; Plumbing Helper [128.18 h]; Labor [128.18 h]; Plumber [128.18 h]; Excavator [20 h]; Excavator Operator [128.18 h]; Un-Skilled Labor [37.98 h]; Skilled Labor [37.98 h] |
| SDR-ST-CON-P1-2550 | Excavation for Valve Chambers Section 2 | 2026-11-14 → 2026-11-11 (-3d) | 2026-12-06 → 2026-12-03 (-3d) |  | 43.8d → 14d |  | resources SIC- Cost [1249.33]; Plumbing Helper [129.56 h]; Labor [129.56 h]; Plumber [129.56 h]; Excavator [30 h]; Excavator Operator [129.56 h]; Un-Skilled Labor [38.39 h]; Skilled Labor [38.39 h] → SIC- Cost [1249.33]; Plumbing Helper [128.18 h]; Labor [128.18 h]; Plumber [128.18 h]; Excavator [30 h]; Excavator Operator [128.18 h]; Un-Skilled Labor [37.98 h]; Skilled Labor [37.98 h] |
| 1 | **bedding Works** | 2026-12-07 → 2026-12-05 (-2d) | 2026-12-29 → 2026-12-27 (-2d) |  |  |  |  |
| SDR-ST-CON-P1-3310 | Sand bedding for Valve Chambers | 2026-12-07 → 2026-12-05 (-2d) | 2026-12-29 → 2026-12-27 (-2d) |  | 43.8d → 14d |  | resources SIC- Cost [624.67]; Plumbing Helper [38.39 h]; Labor [38.39 h]; Plumber [38.39 h]; Excavator [15 h]; Excavator Operator [38.39 h]; Un-Skilled Labor [38.39 h]; Skilled Labor [38.39 h] → SIC- Cost [624.67]; Plumbing Helper [37.98 h]; Labor [37.98 h]; Plumber [37.98 h]; Excavator [15 h]; Excavator Operator [37.98 h]; Un-Skilled Labor [37.98 h]; Skilled Labor [37.98 h] |
| 4 | **Install Chambers & Valves & Fire Hydrant** | 2026-12-30 → 2026-12-28 (-2d) | 2027-01-21 → 2027-01-19 (-2d) |  |  |  |  |
| SDR-ST-CON-P1-4210 | Install Chambers & Valves | 2026-12-30 → 2026-12-28 (-2d) | 2027-01-21 → 2027-01-19 (-2d) |  | 43.8d → 14d | SDR-ST-CON-P1-3310 → SDR-ST-CON-P1-3310, SDR-ST-PRO-MS-1190 | resources SIC- Cost [5622]; Plumbing Helper [129.56 h]; Labor [129.56 h]; Plumber [129.56 h]; Excavator [30 h]; Excavator Operator [129.56 h]; Un-Skilled Labor [129.56 h]; Skilled Labor [129.56 h] → SIC- Cost [5622]; Plumbing Helper [128.18 h]; Labor [128.18 h]; Plumber [128.18 h]; Excavator [30 h]; Excavator Operator [128.18 h]; Un-Skilled Labor [128.18 h]; Skilled Labor [128.18 h] |
| 2 | **Testing** | 2027-01-23 → 2027-01-20 (-3d) | 2027-02-07 → 2027-02-04 (-3d) |  |  |  |  |
| SDR-ST-CON-P1-4990 | Testing for Chambers & Valves | 2027-01-23 → 2027-01-20 (-3d) | 2027-02-07 → 2027-02-04 (-3d) |  | 43.8d → 21d |  | resources SIC- Cost [1249.33]; Plumbing Helper [100.77 h]; Labor [100.77 h]; Plumber [100.77 h]; Excavator [30 h]; Excavator Operator [100.77 h]; Un-Skilled Labor [100.77 h]; Skilled Labor [100.77 h] → SIC- Cost [1249.33]; Plumbing Helper [99.7 h]; Labor [99.7 h]; Plumber [99.7 h]; Excavator [30 h]; Excavator Operator [99.7 h]; Un-Skilled Labor [99.7 h]; Skilled Labor [99.7 h] |
| 6 | **Backfilling** | 2027-02-21 → 2027-02-06 (-15d) | 2027-03-29 → 2027-03-02 (-27d) |  |  |  |  |
| SDR-ST-CON-P1-5710 | Backfilling for Chambers & Valves | 2027-02-21 → 2027-02-06 (-15d) | 2027-03-29 → 2027-03-02 (-27d) |  | 36.8d → 28d | SDR-ST-CON-P1-4990, SDR-ST-CON-P1-4880 → SDR-ST-CON-P1-4990, SDR-ST-CON-P1-4880, SDR-ST-PRO-MS-1050 | resources SIC- Cost [2498.67]; Plumbing Helper [129.56 h]; Labor [129.56 h]; Plumber [129.56 h]; Excavator [15 h]; Excavator Operator [129.56 h]; Un-Skilled Labor [2879.19 h]; Skilled Labor [2879.19 h] → SIC- Cost [2498.67]; Plumbing Helper [128.18 h]; Labor [128.18 h]; Plumber [128.18 h]; Excavator [15 h]; Excavator Operator [128.18 h]; Un-Skilled Labor [2848.55 h]; Skilled Labor [2848.55 h] |
| 7 | **Pipes Work** |  | 2027-02-02 → 2026-12-01 (-63d) |  |  |  |  |
| 1 | **Excavation** |  | 2026-12-01 → 2026-09-24 (-68d) |  |  |  |  |
| SDR-ST-CON-P1-2010 | Excavation for PW HDPE Pipes 315 mm Section 1 |  |  |  |  |  | resources SIC- Cost [5079]; Plumbing Helper [38.39 h]; Labor [129.56 h]; Plumber [38.39 h]; Excavator [20 h]; Excavator Operator [129.56 h]; Un-Skilled Labor [129.56 h]; Skilled Labor [129.56 h] → SIC- Cost [5079]; Plumbing Helper [37.98 h]; Labor [128.18 h]; Plumber [37.98 h]; Excavator [20 h]; Excavator Operator [128.18 h]; Un-Skilled Labor [128.18 h]; Skilled Labor [128.18 h] |
| SDR-ST-CON-P1-2610 | Excavation for PW HDPE Pipes 315 mm Section 2 | 2026-11-14 → 2026-08-31 A (-75d) | 2026-12-01 → 2026-09-24 A (-68d) | 0% → 100% | 11.8d → none | SDR-ST-CON-P1-2010, SDR-ST-PRO-MS-1010 → SDR-ST-CON-P1-2010 | resources SIC- Cost [5079]; Plumbing Helper [129.56 h]; Labor [129.56 h]; Plumber [129.56 h]; Excavator [30 h]; Excavator Operator [129.56 h]; Un-Skilled Labor [38.39 h]; Skilled Labor [38.39 h] → SIC- Cost [5079]; Plumbing Helper [128.18 h]; Labor [128.18 h]; Plumber [128.18 h]; Excavator [30 h]; Excavator Operator [128.18 h]; Un-Skilled Labor [37.98 h]; Skilled Labor [37.98 h] |
| 8 | **bedding Works** |  | 2026-12-13 → 2026-10-22 (-52d) |  |  |  |  |
| SDR-ST-CON-P1-3220 | Sand bedding for PW HDPE Pipes 315 mm |  | 2026-12-13 → 2026-10-22 (-52d) | 50% → 75% | 11.8d → 47d |  | resources SIC- Cost [2539.5]; Plumbing Helper [38.39 h]; Labor [38.39 h]; Plumber [38.39 h]; Excavator [15 h]; Excavator Operator [38.39 h]; Un-Skilled Labor [38.39 h]; Skilled Labor [38.39 h] → SIC- Cost [2539.5]; Plumbing Helper [37.98 h]; Labor [37.98 h]; Plumber [37.98 h]; Excavator [15 h]; Excavator Operator [37.98 h]; Un-Skilled Labor [37.98 h]; Skilled Labor [37.98 h] |
| 2 | **Pipes Laying** |  | 2026-12-24 → 2026-10-22 (-63d) |  |  |  |  |
| SDR-ST-CON-P1-3610 | Install PW 315 mm HDPE Pipe |  | 2026-12-24 → 2026-10-22 (-63d) | 50% → 75% | 11.8d → 47d | SDR-ST-CON-P1-3220 → SDR-ST-CON-P1-3220 SS, SDR-ST-PRO-MS-1110 FF | resources SIC- Cost [22855.5]; Plumbing Helper [38.39 h]; Labor [38.39 h]; Plumber [38.39 h]; Excavator [15 h]; Excavator Operator [38.39 h]; Un-Skilled Labor [38.39 h]; Skilled Labor [38.39 h] → SIC- Cost [22855.5]; Plumbing Helper [37.98 h]; Labor [37.98 h]; Plumber [37.98 h]; Excavator [15 h]; Excavator Operator [37.98 h]; Un-Skilled Labor [37.98 h]; Skilled Labor [37.98 h] |
| 5 | **Testing** | 2026-12-26 → 2026-10-24 (-63d) | 2027-01-10 → 2026-11-08 (-63d) |  |  |  |  |
| SDR-ST-CON-P1-4090 | Testing of PW HDPE Pipe 315 mm. | 2026-12-26 → 2026-10-24 (-63d) | 2027-01-10 → 2026-11-08 (-63d) |  | 11.8d → 47d |  | resources SIC- Cost [5079]; Plumbing Helper [86.38 h]; Labor [86.38 h]; Plumber [86.38 h]; Excavator [53.35 h]; Excavator Operator [86.38 h]; Un-Skilled Labor [86.38 h]; Skilled Labor [86.38 h] → SIC- Cost [5079]; Plumbing Helper [85.46 h]; Labor [85.46 h]; Plumber [85.46 h]; Excavator [53.35 h]; Excavator Operator [85.46 h]; Un-Skilled Labor [85.46 h]; Skilled Labor [85.46 h] |
| 9 | **Backfilling** | 2027-01-11 → 2026-11-09 (-63d) | 2027-02-02 → 2026-12-01 (-63d) |  |  |  |  |
| SDR-ST-CON-P1-4660 | Backfilling of PW HDPE Pipe 315 mm. | 2027-01-11 → 2026-11-09 (-63d) | 2027-02-02 → 2026-12-01 (-63d) |  | 11.8d → 47d | SDR-ST-CON-P1-4090 → SDR-ST-CON-P1-4090, SDR-ST-PRO-MS-1050 | resources SIC- Cost [10158]; Plumbing Helper [129.56 h]; Labor [129.56 h]; Plumber [129.56 h]; Excavator [30 h]; Excavator Operator [129.56 h]; Un-Skilled Labor [129.56 h]; Skilled Labor [129.56 h] → SIC- Cost [10158]; Plumbing Helper [128.18 h]; Labor [128.18 h]; Plumber [128.18 h]; Excavator [30 h]; Excavator Operator [128.18 h]; Un-Skilled Labor [128.18 h]; Skilled Labor [128.18 h] |
| 3 | **Valve Chambers & Valves & Fire Hydrant** | 2026-09-28 → 2026-10-12 (+14d) | 2027-02-18 → 2027-03-01 (+11d) |  |  |  |  |
| 3 | **Excavation** | 2026-09-28 → 2026-10-12 (+14d) | 2026-11-12 → 2026-11-26 (+14d) |  |  |  |  |
| SDR-ST-CON-P1-2020 | Excavation for Valve Chambers Section 1 | 2026-09-28 → 2026-10-12 (+14d) | 2026-10-20 → 2026-11-03 (+14d) |  | 60.8d → 6d | SDR-ST-CON-P1-2010 SS, SDR-ST-ENG-AP-1090 → SDR-ST-CON-P1-2010 SS | resources SIC- Cost [1249.33]; Plumbing Helper [129.56 h]; Labor [129.56 h]; Plumber [129.56 h]; Excavator [20 h]; Excavator Operator [129.56 h]; Un-Skilled Labor [129.56 h]; Skilled Labor [129.56 h] → SIC- Cost [1249.33]; Plumbing Helper [128.18 h]; Labor [128.18 h]; Plumber [128.18 h]; Excavator [20 h]; Excavator Operator [128.18 h]; Un-Skilled Labor [128.18 h]; Skilled Labor [128.18 h] |
| SDR-ST-CON-P1-2740 | Excavation for Valve Chambers Section 2 | 2026-10-21 → 2026-11-04 (+14d) | 2026-11-12 → 2026-11-26 (+14d) |  | 60.8d → 6d |  | resources SIC- Cost [1249.33]; Plumbing Helper [129.56 h]; Labor [129.56 h]; Plumber [129.56 h]; Excavator [110.42 h]; Excavator Operator [129.56 h]; Un-Skilled Labor [129.56 h]; Skilled Labor [129.56 h] → SIC- Cost [1249.33]; Plumbing Helper [128.18 h]; Labor [128.18 h]; Plumber [128.18 h]; Excavator [110.42 h]; Excavator Operator [128.18 h]; Un-Skilled Labor [128.18 h]; Skilled Labor [128.18 h] |
| 1 | **bedding Works** | 2026-11-14 → 2026-11-28 (+14d) | 2026-12-06 → 2026-12-20 (+14d) |  |  |  |  |
| SDR-ST-CON-P1-3550 | Sand bedding for Valve Chambers | 2026-11-14 → 2026-11-28 (+14d) | 2026-12-06 → 2026-12-20 (+14d) |  | 60.8d → 6d |  | resources SIC- Cost [624.67]; Plumbing Helper [129.56 h]; Labor [129.56 h]; Plumber [129.56 h]; Excavator [41.1 h]; Excavator Operator [129.56 h]; Un-Skilled Labor [129.56 h]; Skilled Labor [129.56 h] → SIC- Cost [624.67]; Plumbing Helper [128.18 h]; Labor [128.18 h]; Plumber [128.18 h]; Excavator [41.1 h]; Excavator Operator [128.18 h]; Un-Skilled Labor [128.18 h]; Skilled Labor [128.18 h] |
| 4 | **Install Chambers & Valves & Fire Hydrant** | 2026-12-07 → 2026-12-22 (+15d) | 2026-12-29 → 2027-01-13 (+15d) |  |  |  |  |
| SDR-ST-CON-P1-4460 | Install Chambers & Valves | 2026-12-07 → 2026-12-22 (+15d) | 2026-12-29 → 2027-01-13 (+15d) |  | 60.8d → 6d | SDR-ST-CON-P1-3550 → SDR-ST-CON-P1-3550 FS+1d, SDR-ST-PRO-MS-1190 | resources SIC- Cost [5622]; Plumbing Helper [129.56 h]; Labor [129.56 h]; Plumber [129.56 h]; Excavator [69.35 h]; Excavator Operator [129.56 h]; Un-Skilled Labor [129.56 h]; Skilled Labor [129.56 h] → SIC- Cost [5622]; Plumbing Helper [128.18 h]; Labor [128.18 h]; Plumber [128.18 h]; Excavator [69.35 h]; Excavator Operator [128.18 h]; Un-Skilled Labor [128.18 h]; Skilled Labor [128.18 h] |
| 2 | **Testing** | 2027-01-04 → 2027-01-18 (+14d) | 2027-01-19 → 2027-02-02 (+14d) |  |  |  |  |
| SDR-ST-CON-P1-5190 | Testing for Chambers & Valves | 2027-01-04 → 2027-01-18 (+14d) | 2027-01-19 → 2027-02-02 (+14d) |  | 56.8d → 19d |  | resources SIC- Cost [1249.33]; Plumbing Helper [100.77 h]; Labor [100.77 h]; Plumber [100.77 h]; Excavator [38.13 h]; Excavator Operator [100.77 h]; Un-Skilled Labor [100.77 h]; Skilled Labor [100.77 h] → SIC- Cost [1249.33]; Plumbing Helper [99.7 h]; Labor [99.7 h]; Plumber [99.7 h]; Excavator [38.13 h]; Excavator Operator [99.7 h]; Un-Skilled Labor [99.7 h]; Skilled Labor [99.7 h] |
| 6 | **Backfilling** | 2027-01-21 → 2027-02-04 (+14d) | 2027-02-18 → 2027-03-01 (+11d) |  |  |  |  |
| SDR-ST-CON-P1-5750 | Backfilling for Chambers & Valves | 2027-01-21 → 2027-02-04 (+14d) | 2027-02-18 → 2027-03-01 (+11d) |  | 55.8d → 18d | SDR-ST-CON-P1-5190, SDR-ST-CON-P1-4610 → SDR-ST-CON-P1-5190, SDR-ST-CON-P1-4610, SDR-ST-PRO-MS-1050 | resources SIC- Cost [2498.67]; Plumbing Helper [129.56 h]; Labor [129.56 h]; Plumber [129.56 h]; Excavator [18.12 h]; Excavator Operator [129.56 h]; Un-Skilled Labor [129.56 h]; Skilled Labor [129.56 h] → SIC- Cost [2498.67]; Plumbing Helper [128.18 h]; Labor [128.18 h]; Plumber [128.18 h]; Excavator [18.12 h]; Excavator Operator [128.18 h]; Un-Skilled Labor [128.18 h]; Skilled Labor [128.18 h] |
| 7 | **SEWARAGE NETWORK** |  | 2027-03-31 → 2027-03-15 (-16d) |  |  |  |  |
| 6 | **ROAD - 01** |  | 2027-03-29 → 2027-03-08 (-21d) |  |  |  |  |
| 2 | **ROAD-01 From 0 to 470 m (3) 110 mm HDPE** |  | 2027-03-03 → 2027-03-08 (+5d) |  |  |  |  |
| 7 | **Pipes Work** |  | 2027-01-16 → 2026-12-10 (-37d) |  |  |  |  |
| 1 | **Excavation** |  | 2026-10-20 → 2026-11-03 (+14d) |  |  |  |  |
| SDR-ST-CON-P1-1540 | Excavation for GRP Pipe 200mm Diameter Section 1 |  |  |  |  | SDR-ST-CON-P1-1200 FS+15d → SDR-ST-CON-P1-1200 | resources SIC- Cost [10614.3]; Surveyor [38.39 h]; Labor [38.39 h]; Plumber [38.39 h]; Excavator [15 h]; Excavator Operator [129.56 h] → SIC- Cost [10614.3]; Surveyor [37.98 h]; Labor [37.98 h]; Plumber [37.98 h]; Excavator [15 h]; Excavator Operator [128.18 h] |
| SDR-ST-CON-P1-2380 | Excavation for GRP Pipe 200mm Diameter Section 2 |  | 2026-10-20 → 2026-11-03 (+14d) |  | 83.8d → 40d | SDR-ST-CON-P1-1540 FS+3d → SDR-ST-CON-P1-1540 | resources SIC- Cost [10614.3]; Surveyor [38.39 h]; Labor [38.39 h]; Plumber [38.39 h]; Excavator [15 h]; Excavator Operator [129.56 h] → SIC- Cost [10614.3]; Surveyor [37.98 h]; Labor [37.98 h]; Plumber [37.98 h]; Excavator [15 h]; Excavator Operator [128.18 h] |
| 5 | **bedding Works** |  | 2026-11-07 → 2026-10-28 (-10d) |  |  |  |  |
| SDR-ST-CON-P1-3050 | Sand bedding for GRP Pipe 200mm Diameter |  | 2026-11-07 → 2026-10-28 (-10d) | 25% → 50% | 83.8d → 40d | SDR-ST-CON-P1-2380 → SDR-ST-CON-P1-2380 SS | resources SIC- Cost [5307.16]; Surveyor [38.39 h]; Labor [38.39 h]; Plumber [38.39 h]; Excavator [33.52 h]; Excavator Operator [129.56 h] → SIC- Cost [5307.16]; Surveyor [37.98 h]; Labor [37.98 h]; Plumber [37.98 h]; Excavator [33.52 h]; Excavator Operator [128.18 h] |
| 2 | **Pipes Laying** |  | 2026-11-28 → 2026-10-22 (-37d) |  |  |  |  |
| SDR-ST-CON-P1-3710 | 200 mm GRP Pipe Laying |  | 2026-11-28 → 2026-10-22 (-37d) | 25% → 50% | 83.8d → 40d | SDR-ST-CON-P1-3050 → SDR-ST-CON-P1-3050 SS, SDR-ST-PRO-MS-1130 FF | resources SIC- Cost [47764.5]; Surveyor [129.56 h]; Compactor [50 h]; Labor [129.56 h]; Plumber [129.56 h]; Excavator [15 h]; Excavator Operator [129.56 h] → SIC- Cost [47764.5]; Surveyor [128.18 h]; Compactor [50 h]; Labor [128.18 h]; Plumber [128.18 h]; Excavator [15 h]; Excavator Operator [128.18 h] |
| 3 | **Testing** | 2026-11-29 → 2026-10-24 (-36d) | 2026-12-22 → 2026-11-16 (-36d) |  |  |  |  |
| SDR-ST-CON-P1-4590 | Testing of 200 mm GRP Pipe. | 2026-11-29 → 2026-10-24 (-36d) | 2026-12-22 → 2026-11-16 (-36d) |  | 83.8d → 40d |  | resources SIC- Cost [10614.3]; Surveyor [129.56 h]; Labor [129.56 h]; Plumber [129.56 h]; Excavator [30 h]; Excavator Operator [129.56 h] → SIC- Cost [10614.3]; Surveyor [128.18 h]; Labor [128.18 h]; Plumber [128.18 h]; Excavator [30 h]; Excavator Operator [128.18 h] |
| 6 | **Backfilling** | 2026-12-23 → 2026-11-17 (-36d) | 2027-01-16 → 2026-12-10 (-37d) |  |  |  |  |
| SDR-ST-CON-P1-5570 | Backfilling of 200 mm GRP Pipe. | 2026-12-23 → 2026-11-17 (-36d) | 2027-01-16 → 2026-12-10 (-37d) |  | 83.8d → 40d | SDR-ST-CON-P1-4590 → SDR-ST-CON-P1-4590, SDR-ST-PRO-MS-1050 | resources SIC- Cost [21228.7]; Surveyor [129.56 h]; Labor [129.56 h]; Plumber [129.56 h]; Excavator [15 h]; Excavator Operator [129.56 h] → SIC- Cost [21228.7]; Surveyor [128.18 h]; Labor [128.18 h]; Plumber [128.18 h]; Excavator [15 h]; Excavator Operator [128.18 h] |
| 4 | **Manholes** | 2026-09-28 → 2026-10-12 (+14d) | 2027-03-03 → 2027-03-08 (+5d) |  |  |  |  |
| 1 | **Excavation** | 2026-09-28 → 2026-10-12 (+14d) | 2026-11-15 → 2026-11-29 (+14d) |  |  |  |  |
| SDR-ST-CON-P1-1550 | Excavation for manhole. Section 1 | 2026-09-28 → 2026-10-12 (+14d) | 2026-10-21 → 2026-11-04 (+14d) |  | 52.8d → 23d |  | resources SIC- Cost [1359.27]; Surveyor [38.39 h]; Labor [129.56 h]; Plumber [129.56 h]; Excavator [15 h]; Excavator Operator [129.56 h] → SIC- Cost [1359.27]; Surveyor [37.98 h]; Labor [128.18 h]; Plumber [128.18 h]; Excavator [15 h]; Excavator Operator [128.18 h] |
| SDR-ST-CON-P1-2210 | Excavation for manhole. Section 2 | 2026-10-22 → 2026-11-05 (+14d) | 2026-11-15 → 2026-11-29 (+14d) |  | 52.8d → 23d |  | resources SIC- Cost [1359.27]; Surveyor [38.39 h]; Labor [129.56 h]; Plumber [129.56 h]; Excavator [15.19 h]; Excavator Operator [129.56 h] → SIC- Cost [1359.27]; Surveyor [37.98 h]; Labor [128.18 h]; Plumber [128.18 h]; Excavator [15.19 h]; Excavator Operator [128.18 h] |
| 2 | **bedding Works** | 2026-11-16 → 2026-11-30 (+14d) | 2026-12-09 → 2026-12-23 (+14d) |  |  |  |  |
| SDR-ST-CON-P1-2960 | Sand bedding for manhole. | 2026-11-16 → 2026-11-30 (+14d) | 2026-12-09 → 2026-12-23 (+14d) |  | 52.8d → 23d |  | resources SIC- Cost [1812.36]; Surveyor [38.39 h]; Labor [129.56 h]; Plumber [129.56 h]; Excavator [30 h]; Excavator Operator [129.56 h] → SIC- Cost [1812.36]; Surveyor [37.98 h]; Labor [128.18 h]; Plumber [128.18 h]; Excavator [30 h]; Excavator Operator [128.18 h] |
| 3 | **Install Manholes** | 2026-12-10 → 2026-12-24 (+14d) | 2027-01-03 → 2027-01-17 (+14d) |  |  |  |  |
| SDR-ST-CON-P1-3840 | Manhole Installation | 2026-12-10 → 2026-12-24 (+14d) | 2027-01-03 → 2027-01-17 (+14d) |  | 52.8d → 23d | SDR-ST-CON-P1-2210, SDR-ST-CON-P1-2960 → SDR-ST-CON-P1-2210, SDR-ST-CON-P1-2960, SDR-ST-PRO-MS-1140 | resources SIC- Cost [8155.63]; Surveyor [129.56 h]; Compactor [92.9 h]; Labor [40.4 h]; Plumber [40.4 h]; Excavator [40 h]; Excavator Operator [40.4 h] → SIC- Cost [8155.63]; Surveyor [128.18 h]; Compactor [92.9 h]; Labor [39.97 h]; Plumber [39.97 h]; Excavator [40 h]; Excavator Operator [39.97 h] |
| 4 | **Testing** | 2027-01-04 → 2027-01-18 (+14d) | 2027-01-27 → 2027-02-10 (+14d) |  |  |  |  |
| SDR-ST-CON-P1-4790 | Testing | 2027-01-04 → 2027-01-18 (+14d) | 2027-01-27 → 2027-02-10 (+14d) |  | 52.8d → 23d |  | resources SIC- Cost [1812.36]; Surveyor [71.98 h]; Labor [129.56 h]; Plumber [129.56 h] → SIC- Cost [1812.36]; Surveyor [71.21 h]; Labor [128.18 h]; Plumber [128.18 h] |
| 5 | **Backfilling** | 2027-01-28 → 2027-02-11 (+14d) | 2027-03-03 → 2027-03-08 (+5d) |  |  |  |  |
| SDR-ST-CON-P1-5720 | Backfilling | 2027-01-28 → 2027-02-11 (+14d) | 2027-03-03 → 2027-03-08 (+5d) |  | 52.8d → 23d | SDR-ST-CON-P1-4790 → SDR-ST-CON-P1-4790, SDR-ST-PRO-MS-1050 | resources SIC- Cost [3624.72]; Surveyor [129.56 h]; Labor [129.56 h]; Plumber [129.56 h]; Excavator [22.69 h]; Excavator Operator [129.56 h] → SIC- Cost [3624.72]; Surveyor [128.18 h]; Labor [128.18 h]; Plumber [128.18 h]; Excavator [22.69 h]; Excavator Operator [128.18 h] |
| 1 | **ROAD-01 From 470 to 1125 m (6) 110 mm HDPE** |  | 2027-03-29 → 2027-03-04 (-25d) |  |  |  |  |
| 7 | **Pipes Work** |  | 2027-01-12 → 2027-01-26 (+14d) |  |  |  |  |

| ID | Task | Start | Finish | Duration | Total float | Predecessors | Other |
| --- | --- | --- | --- | --- | --- | --- | --- |
| 1 | **Excavation** |  | 2026-10-17 → 2026-10-31 (+14d) |  |  |  |  |
| SDR-ST-CON-P1-1430 | Excavation for GRP Pipe 200mm Diameter Section 1 |  |  |  |  |  | resources SIC- Cost [10614.3]; Surveyor [129.56 h]; Labor [129.56 h]; Plumber [129.56 h]; Excavator [15 h]; Excavator Operator [129.56 h] → SIC- Cost [10614.3]; Surveyor [128.18 h]; Labor [128.18 h]; Plumber [128.18 h]; Excavator [15 h]; Excavator Operator [128.18 h] |
| SDR-ST-CON-P1-2110 | Excavation for GRP Pipe 200mm Diameter Section 2 |  | 2026-10-17 → 2026-10-31 (+14d) |  | 69.8d → 18d |  | resources SIC- Cost [10614.3]; Surveyor [129.56 h]; Labor [129.56 h]; Plumber [129.56 h]; Excavator [22.15 h]; Excavator Operator [129.56 h] → SIC- Cost [10614.3]; Surveyor [128.18 h]; Labor [128.18 h]; Plumber [128.18 h]; Excavator [22.15 h]; Excavator Operator [128.18 h] |
| 5 | **bedding Works** | 2026-10-18 → 2026-11-01 (+14d) | 2026-11-03 → 2026-11-17 (+14d) |  |  |  |  |
| SDR-ST-CON-P1-2720 | Sand bedding for GRP Pipe 200mm Diameter | 2026-10-18 → 2026-11-01 (+14d) | 2026-11-03 → 2026-11-17 (+14d) |  | 69.8d → 18d |  | resources SIC- Cost [5307.16]; Surveyor [129.56 h]; Labor [129.56 h]; Plumber [129.56 h]; Excavator [30 h]; Excavator Operator [129.56 h] → SIC- Cost [5307.16]; Surveyor [128.18 h]; Labor [128.18 h]; Plumber [128.18 h]; Excavator [30 h]; Excavator Operator [128.18 h] |
| 2 | **Pipes Laying** | 2026-11-04 → 2026-11-18 (+14d) | 2026-11-24 → 2026-12-08 (+14d) |  |  |  |  |
| SDR-ST-CON-P1-3300 | 200 mm GRP Pipe Laying | 2026-11-04 → 2026-11-18 (+14d) | 2026-11-24 → 2026-12-08 (+14d) |  | 69.8d → 18d | SDR-ST-CON-P1-2110, SDR-ST-CON-P1-2720 → SDR-ST-CON-P1-2110, SDR-ST-CON-P1-2720, SDR-ST-PRO-MS-1130 | resources SIC- Cost [47764.5]; Surveyor [38.39 h]; Compactor [40 h]; Labor [38.39 h]; Plumber [38.39 h]; Excavator [15 h]; Excavator Operator [38.39 h] → SIC- Cost [47764.5]; Surveyor [37.98 h]; Compactor [40 h]; Labor [37.98 h]; Plumber [37.98 h]; Excavator [15 h]; Excavator Operator [37.98 h] |
| 3 | **Testing** | 2026-11-25 → 2026-12-09 (+14d) | 2026-12-19 → 2027-01-02 (+14d) |  |  |  |  |
| SDR-ST-CON-P1-4120 | Testing of 200 mm GRP Pipe. | 2026-11-25 → 2026-12-09 (+14d) | 2026-12-19 → 2027-01-02 (+14d) |  | 69.8d → 18d |  | resources SIC- Cost [10614.3]; Surveyor [129.56 h]; Labor [129.56 h]; Plumber [129.56 h]; Excavator [30 h]; Excavator Operator [129.56 h] → SIC- Cost [10614.3]; Surveyor [128.18 h]; Labor [128.18 h]; Plumber [128.18 h]; Excavator [30 h]; Excavator Operator [128.18 h] |
| 6 | **Backfilling** | 2026-12-20 → 2027-01-03 (+14d) | 2027-01-12 → 2027-01-26 (+14d) |  |  |  |  |
| SDR-ST-CON-P1-4970 | Backfilling of 200 mm GRP Pipe. | 2026-12-20 → 2027-01-03 (+14d) | 2027-01-12 → 2027-01-26 (+14d) |  | 69.8d → 18d | SDR-ST-CON-P1-4120 → SDR-ST-CON-P1-4120, SDR-ST-PRO-MS-1050 | resources SIC- Cost [21228.7]; Surveyor [40.4 h]; Labor [40.4 h]; Plumber [40.4 h]; Excavator [30 h]; Excavator Operator [40.4 h] → SIC- Cost [21228.7]; Surveyor [39.97 h]; Labor [39.97 h]; Plumber [39.97 h]; Excavator [30 h]; Excavator Operator [39.97 h] |
| 4 | **Manholes** | 2026-09-28 → 2026-10-12 (+14d) | 2027-03-29 → 2027-03-04 (-25d) |  |  |  |  |
| 1 | **Excavation** | 2026-09-28 → 2026-10-12 (+14d) | 2026-11-15 → 2026-11-04 (-11d) |  |  |  |  |
| SDR-ST-CON-P1-1440 | Excavation for manhole. Section 1 | 2026-09-28 → 2026-10-12 (+14d) | 2026-10-21 → 2026-11-04 (+14d) |  | 60.8d → 41d | SDR-ST-CON-P1-1430 SS, SDR-ST-ENG-AP-1090 → SDR-ST-CON-P1-1430 SS | resources SIC- Cost [1359.27]; Surveyor [38.39 h]; Labor [38.39 h]; Plumber [38.39 h]; Excavator [15 h]; Excavator Operator [38.39 h] → SIC- Cost [1359.27]; Surveyor [37.98 h]; Labor [37.98 h]; Plumber [37.98 h]; Excavator [15 h]; Excavator Operator [37.98 h] |
| SDR-ST-CON-P1-2120 | Excavation for manhole. Section 2 | 2026-10-22 → 2026-10-12 (-10d) | 2026-11-15 → 2026-11-04 (-11d) |  | 60.8d → 41d | SDR-ST-CON-P1-1440 → SDR-ST-CON-P1-1440 FF | resources SIC- Cost [1359.27]; Surveyor [38.39 h]; Labor [38.39 h]; Plumber [38.39 h]; Excavator [40 h]; Excavator Operator [38.39 h] → SIC- Cost [1359.27]; Surveyor [37.98 h]; Labor [37.98 h]; Plumber [37.98 h]; Excavator [40 h]; Excavator Operator [37.98 h] |
| 2 | **bedding Works** | 2026-11-16 → 2026-10-12 (-35d) | 2026-12-09 → 2026-11-04 (-35d) |  |  |  |  |
| SDR-ST-CON-P1-2870 | Sand bedding for manhole. | 2026-11-16 → 2026-10-12 (-35d) | 2026-12-09 → 2026-11-04 (-35d) |  | 60.8d → 41d | SDR-ST-CON-P1-2120 → SDR-ST-CON-P1-2120 FF | resources SIC- Cost [1812.36]; Surveyor [71.98 h]; Labor [38.39 h]; Plumber [38.39 h]; Excavator [35.82 h]; Excavator Operator [38.39 h] → SIC- Cost [1812.36]; Surveyor [71.21 h]; Labor [37.98 h]; Plumber [37.98 h]; Excavator [35.82 h]; Excavator Operator [37.98 h] |
| 3 | **Install Manholes** | 2026-12-10 → 2026-12-21 (+11d) | 2027-01-03 → 2027-01-13 (+10d) |  |  |  |  |
| SDR-ST-CON-P1-3790 | Manhole Installation | 2026-12-10 → 2026-12-21 (+11d) | 2027-01-03 → 2027-01-13 (+10d) |  | 60.8d → 2d | SDR-ST-CON-P1-2120, SDR-ST-CON-P1-2870 → SDR-ST-CON-P1-2120, SDR-ST-CON-P1-2870, SDR-ST-PRO-MS-1140 | resources SIC- Cost [8155.63]; Surveyor [71.98 h]; Compactor [100 h]; Labor [40.4 h]; Plumber [40.4 h]; Excavator [30 h]; Excavator Operator [40.4 h] → SIC- Cost [8155.63]; Surveyor [71.21 h]; Compactor [100 h]; Labor [39.97 h]; Plumber [39.97 h]; Excavator [30 h]; Excavator Operator [39.97 h] |
| 4 | **Testing** | 2027-01-04 → 2027-01-14 (+10d) | 2027-01-27 → 2027-02-07 (+11d) |  |  |  |  |
| SDR-ST-CON-P1-4710 | Testing | 2027-01-04 → 2027-01-14 (+10d) | 2027-01-27 → 2027-02-07 (+11d) |  | 60.8d → 2d |  | resources SIC- Cost [1812.36]; Surveyor [129.56 h]; Labor [129.56 h]; Plumber [129.56 h] → SIC- Cost [1812.36]; Surveyor [128.18 h]; Labor [128.18 h]; Plumber [128.18 h] |
| 5 | **Backfilling** | 2027-02-21 → 2027-02-08 (-13d) | 2027-03-29 → 2027-03-04 (-25d) |  |  |  |  |
| SDR-ST-CON-P1-5700 | Backfilling | 2027-02-21 → 2027-02-08 (-13d) | 2027-03-29 → 2027-03-04 (-25d) |  | 44.8d → 19d | SDR-ST-CON-P1-4710, SDR-ST-CON-P1-4880 → SDR-ST-CON-P1-4710, SDR-ST-CON-P1-4880, SDR-ST-PRO-MS-1050 | resources SIC- Cost [3624.72]; Surveyor [129.56 h]; Labor [129.56 h]; Plumber [129.56 h]; Excavator [15 h]; Excavator Operator [129.56 h] → SIC- Cost [3624.72]; Surveyor [128.18 h]; Labor [128.18 h]; Plumber [128.18 h]; Excavator [15 h]; Excavator Operator [128.18 h] |
| 3 | **ROAD-01 From 1125 to 1765 m (7) 110 mm HDPE** |  | 2027-03-04 → 2027-02-14 (-18d) |  |  |  |  |
| 7 | **Pipes Work** |  | 2027-01-10 → 2027-01-25 (+15d) |  |  |  |  |
| 1 | **Excavation** |  | 2026-10-17 → 2026-10-31 (+14d) |  |  |  |  |
| SDR-ST-CON-P1-1650 | Excavation for GRP Pipe 200mm Diameter Section 1 |  |  |  |  |  | resources SIC- Cost [10614.3]; Surveyor [38.39 h]; Labor [38.39 h]; Plumber [38.39 h]; Excavator [15 h]; Excavator Operator [129.56 h] → SIC- Cost [10614.3]; Surveyor [37.98 h]; Labor [37.98 h]; Plumber [37.98 h]; Excavator [15 h]; Excavator Operator [128.18 h] |
| SDR-ST-CON-P1-2240 | Excavation for GRP Pipe 200mm Diameter Section 2 |  | 2026-10-17 → 2026-10-31 (+14d) |  | 62.9d → 19d |  | resources SIC- Cost [10614.3]; Surveyor [38.39 h]; Labor [129.56 h]; Plumber [129.56 h]; Excavator [15 h]; Excavator Operator [129.56 h] → SIC- Cost [10614.3]; Surveyor [37.98 h]; Labor [128.18 h]; Plumber [128.18 h]; Excavator [15 h]; Excavator Operator [128.18 h] |
| 5 | **bedding Works** | 2026-10-18 → 2026-11-01 (+14d) | 2026-11-02 → 2026-11-16 (+14d) |  |  |  |  |
| SDR-ST-CON-P1-2830 | Sand bedding for GRP Pipe 200mm Diameter | 2026-10-18 → 2026-11-01 (+14d) | 2026-11-02 → 2026-11-16 (+14d) |  | 62.9d → 19d |  | resources SIC- Cost [5307.16]; Surveyor [38.39 h]; Labor [129.56 h]; Plumber [129.56 h]; Excavator [30 h]; Excavator Operator [129.56 h] → SIC- Cost [5307.16]; Surveyor [37.98 h]; Labor [128.18 h]; Plumber [128.18 h]; Excavator [30 h]; Excavator Operator [128.18 h] |
| 2 | **Pipes Laying** | 2026-11-03 → 2026-11-17 (+14d) | 2026-11-23 → 2026-12-07 (+14d) |  |  |  |  |
| SDR-ST-CON-P1-3420 | 200 mm GRP Pipe Laying | 2026-11-03 → 2026-11-17 (+14d) | 2026-11-23 → 2026-12-07 (+14d) | 17d → 18d | 62.9d → 19d | SDR-ST-CON-P1-2830 → SDR-ST-CON-P1-2830, SDR-ST-PRO-MS-1130 | resources SIC- Cost [47764.5]; Surveyor [38.39 h]; Compactor [40 h]; Labor [38.39 h]; Plumber [38.39 h]; Excavator; Excavator Operator [38.39 h] → SIC- Cost [47764.5]; Surveyor [37.98 h]; Compactor [40 h]; Labor [37.98 h]; Plumber [37.98 h]; Excavator; Excavator Operator [37.98 h] |
| 3 | **Testing** | 2026-11-23 → 2026-12-08 (+15d) | 2026-12-16 → 2026-12-31 (+15d) |  |  |  |  |
| SDR-ST-CON-P1-4180 | Testing of 200 mm GRP Pipe. | 2026-11-23 → 2026-12-08 (+15d) | 2026-12-16 → 2026-12-31 (+15d) |  | 62.9d → 19d |  | resources SIC- Cost [10614.3]; Surveyor [129.56 h]; Labor [129.56 h]; Plumber [129.56 h]; Excavator [30 h]; Excavator Operator [129.56 h] → SIC- Cost [10614.3]; Surveyor [128.18 h]; Labor [128.18 h]; Plumber [128.18 h]; Excavator [30 h]; Excavator Operator [128.18 h] |
| 6 | **Backfilling** | 2026-12-17 → 2027-01-02 (+16d) | 2027-01-10 → 2027-01-25 (+15d) |  |  |  |  |
| SDR-ST-CON-P1-5020 | Backfilling of 200 mm GRP Pipe. | 2026-12-17 → 2027-01-02 (+16d) | 2027-01-10 → 2027-01-25 (+15d) |  | 62.9d → 19d | SDR-ST-CON-P1-4180 → SDR-ST-CON-P1-4180, SDR-ST-PRO-MS-1050 | resources SIC- Cost [21228.7]; Surveyor [40.4 h]; Labor [40.4 h]; Plumber [40.4 h]; Excavator [30 h]; Excavator Operator [40.4 h] → SIC- Cost [21228.7]; Surveyor [39.97 h]; Labor [39.97 h]; Plumber [39.97 h]; Excavator [30 h]; Excavator Operator [39.97 h] |
| 4 | **Manholes** | 2026-09-28 → 2026-10-12 (+14d) | 2027-03-04 → 2027-02-14 (-18d) |  |  |  |  |
| 1 | **Excavation** | 2026-09-28 → 2026-10-12 (+14d) | 2026-11-15 → 2026-11-04 (-11d) |  |  |  |  |
| SDR-ST-CON-P1-1660 | Excavation for manhole. Section 1 | 2026-09-28 → 2026-10-12 (+14d) | 2026-10-21 → 2026-11-04 (+14d) |  | 74.5d → 38.6d | SDR-ST-CON-P1-1650 SS, SDR-ST-ENG-AP-1090 → SDR-ST-CON-P1-1650 SS | resources SIC- Cost [1359.27]; Surveyor [38.39 h]; Labor [38.39 h]; Plumber [38.39 h]; Excavator [23.48 h]; Excavator Operator [129.56 h] → SIC- Cost [1359.27]; Surveyor [37.98 h]; Labor [37.98 h]; Plumber [37.98 h]; Excavator [23.48 h]; Excavator Operator [128.18 h] |
| SDR-ST-CON-P1-2310 | Excavation for manhole. Section 2 | 2026-10-22 → 2026-10-12 (-10d) | 2026-11-15 → 2026-11-04 (-11d) |  | 74.5d → 38.6d | SDR-ST-CON-P1-1660 → SDR-ST-CON-P1-1660 FF | resources SIC- Cost [1359.27]; Surveyor [38.39 h]; Labor [38.39 h]; Plumber [38.39 h]; Excavator [15 h]; Excavator Operator [129.56 h] → SIC- Cost [1359.27]; Surveyor [37.98 h]; Labor [37.98 h]; Plumber [37.98 h]; Excavator [15 h]; Excavator Operator [128.18 h] |
| 2 | **bedding Works** | 2026-11-16 → 2026-11-05 (-11d) | 2026-12-09 → 2026-11-29 (-10d) |  |  |  |  |
| SDR-ST-CON-P1-3030 | Sand bedding for manhole. | 2026-11-16 → 2026-11-05 (-11d) | 2026-12-09 → 2026-11-29 (-10d) |  | 74.5d → 38.6d |  | resources SIC- Cost [1812.36]; Surveyor [38.39 h]; Labor [38.39 h]; Plumber [38.39 h]; Excavator [30 h]; Excavator Operator [129.56 h] → SIC- Cost [1812.36]; Surveyor [37.98 h]; Labor [37.98 h]; Plumber [37.98 h]; Excavator [30 h]; Excavator Operator [128.18 h] |
| 3 | **Install Manholes** | 2026-12-10 → 2026-12-21 (+11d) | 2027-01-03 → 2027-01-13 (+10d) |  |  |  |  |
| SDR-ST-CON-P1-3910 | Manhole Installation | 2026-12-10 → 2026-12-21 (+11d) | 2027-01-03 → 2027-01-13 (+10d) |  | 74.5d → 20.6d | SDR-ST-CON-P1-2310, SDR-ST-CON-P1-3030 → SDR-ST-CON-P1-2310, SDR-ST-CON-P1-3030, SDR-ST-PRO-MS-1140 | resources SIC- Cost [8155.63]; Surveyor [129.56 h]; Compactor [200 h]; Labor [202.02 h]; Plumber [202.02 h]; Excavator [200 h]; Excavator Operator [202.02 h] → SIC- Cost [8155.63]; Surveyor [128.18 h]; Compactor [200 h]; Labor [199.87 h]; Plumber [199.87 h]; Excavator [200 h]; Excavator Operator [199.87 h] |
| 4 | **Testing** | 2027-01-04 → 2026-12-21 (-14d) | 2027-01-27 → 2027-01-13 (-14d) |  |  |  |  |
| SDR-ST-CON-P1-4830 | Testing | 2027-01-04 → 2026-12-21 (-14d) | 2027-01-27 → 2027-01-13 (-14d) |  | 74.5d → 20.6d | SDR-ST-CON-P1-3910 → SDR-ST-CON-P1-3910 FF | resources SIC- Cost [1812.36]; Surveyor [40.4 h]; Labor [40.4 h]; Plumber [40.4 h] → SIC- Cost [1812.36]; Surveyor [39.97 h]; Labor [39.97 h]; Plumber [39.97 h] |
| 5 | **Backfilling** | 2027-01-28 → 2027-01-20 (-8d) | 2027-03-04 → 2027-02-14 (-18d) |  |  |  |  |
| SDR-ST-CON-P1-5740 | Backfilling | 2027-01-28 → 2027-01-20 (-8d) | 2027-03-04 → 2027-02-14 (-18d) |  | 74.5d → 20.6d | SDR-ST-CON-P1-4830 → SDR-ST-CON-P1-4830 FS+5d, SDR-ST-PRO-MS-1050 | resources SIC- Cost [3624.72]; Surveyor [129.56 h]; Labor [129.56 h]; Plumber [129.56 h]; Excavator [50.39 h]; Excavator Operator [129.56 h] → SIC- Cost [3624.72]; Surveyor [128.18 h]; Labor [128.18 h]; Plumber [128.18 h]; Excavator [50.39 h]; Excavator Operator [128.18 h] |
| 1 | **ROAD - 02** |  | 2027-03-31 → 2027-03-15 (-16d) |  |  |  |  |
| 7 | **Pipes Work** |  | 2027-02-03 → 2027-02-10 (+7d) |  |  |  |  |
| 1 | **Excavation** |  | 2026-11-09 → 2026-11-16 (+7d) |  |  |  |  |
| SDR-ST-CON-P1-1810 | Excavation for GRP Pipe 200mm Diameter Section 1 |  | 2026-10-17 → 2026-10-24 (+7d) |  | 41.9d → 3d |  | resources SIC- Cost [10614.3]; Surveyor [38.39 h]; Labor [38.39 h]; Plumber [38.39 h]; Excavator [28.09 h]; Excavator Operator [129.56 h] → SIC- Cost [10614.3]; Surveyor [37.98 h]; Labor [37.98 h]; Plumber [37.98 h]; Excavator [28.09 h]; Excavator Operator [128.18 h] |
| SDR-ST-CON-P1-2530 | Excavation for GRP Pipe 200mm Diameter Section 2 | 2026-10-21 → 2026-10-28 (+7d) | 2026-11-09 → 2026-11-16 (+7d) |  | 41.9d → 14.9d |  | resources SIC- Cost [10614.3]; Surveyor [38.39 h]; Labor [129.56 h]; Plumber [129.56 h]; Excavator [20.79 h]; Excavator Operator [129.56 h] → SIC- Cost [10614.3]; Surveyor [37.98 h]; Labor [128.18 h]; Plumber [128.18 h]; Excavator [20.79 h]; Excavator Operator [128.18 h] |
| 5 | **bedding Works** | 2026-11-10 → 2026-11-17 (+7d) | 2026-11-25 → 2026-12-02 (+7d) |  |  |  |  |
| SDR-ST-CON-P1-3210 | Sand bedding for GRP Pipe 200mm Diameter | 2026-11-10 → 2026-11-17 (+7d) | 2026-11-25 → 2026-12-02 (+7d) |  | 41.9d → 14.9d |  | resources SIC- Cost [5307.16]; Surveyor [38.39 h]; Labor [38.39 h]; Plumber [38.39 h]; Excavator [40 h]; Excavator Operator [38.39 h] → SIC- Cost [5307.16]; Surveyor [37.98 h]; Labor [37.98 h]; Plumber [37.98 h]; Excavator [40 h]; Excavator Operator [37.98 h] |
| 2 | **Pipes Laying** | 2026-11-26 → 2026-12-03 (+7d) | 2026-12-16 → 2026-12-23 (+7d) |  |  |  |  |
| SDR-ST-CON-P1-3800 | 200 mm GRP Pipe Laying | 2026-11-26 → 2026-12-03 (+7d) | 2026-12-16 → 2026-12-23 (+7d) |  | 41.9d → 14.9d | SDR-ST-CON-P1-3210 → SDR-ST-CON-P1-3210, SDR-ST-PRO-MS-1130 | resources SIC- Cost [47764.5]; Surveyor [38.39 h]; Compactor [336.57 h]; Labor [38.39 h]; Plumber [38.39 h]; Excavator [15 h]; Excavator Operator [38.39 h] → SIC- Cost [47764.5]; Surveyor [37.98 h]; Compactor [336.57 h]; Labor [37.98 h]; Plumber [37.98 h]; Excavator [15 h]; Excavator Operator [37.98 h] |
| 3 | **Testing** | 2026-12-17 → 2026-12-24 (+7d) | 2027-01-10 → 2027-01-17 (+7d) |  |  |  |  |
| SDR-ST-CON-P1-4580 | Testing of 200 mm GRP Pipe. | 2026-12-17 → 2026-12-24 (+7d) | 2027-01-10 → 2027-01-17 (+7d) |  | 41.9d → 14.9d |  | resources SIC- Cost [10614.3]; Surveyor [129.56 h]; Labor [129.56 h]; Plumber [129.56 h]; Excavator [30.43 h]; Excavator Operator [129.56 h] → SIC- Cost [10614.3]; Surveyor [128.18 h]; Labor [128.18 h]; Plumber [128.18 h]; Excavator [30.43 h]; Excavator Operator [128.18 h] |
| 6 | **Backfilling** | 2027-01-11 → 2027-01-18 (+7d) | 2027-02-03 → 2027-02-10 (+7d) |  |  |  |  |
| SDR-ST-CON-P1-5500 | Backfilling of 200 mm GRP Pipe. | 2027-01-11 → 2027-01-18 (+7d) | 2027-02-03 → 2027-02-10 (+7d) |  | 41.9d → 14.9d | SDR-ST-CON-P1-4580 → SDR-ST-CON-P1-4580, SDR-ST-PRO-MS-1050 | resources SIC- Cost [21228.7]; Surveyor [40.4 h]; Labor [40.4 h]; Plumber [40.4 h]; Excavator [15 h]; Excavator Operator [40.4 h] → SIC- Cost [21228.7]; Surveyor [39.97 h]; Labor [39.97 h]; Plumber [39.97 h]; Excavator [15 h]; Excavator Operator [39.97 h] |
| 4 | **Manholes** | 2026-09-28 → 2026-10-12 (+14d) | 2027-03-31 → 2027-03-15 (-16d) |  |  |  |  |
| 1 | **Excavation** | 2026-09-28 → 2026-10-12 (+14d) | 2026-11-15 → 2026-11-04 (-11d) |  |  |  |  |
| SDR-ST-CON-P1-1820 | Excavation for manhole. Section 1 | 2026-09-28 → 2026-10-12 (+14d) | 2026-10-21 → 2026-11-04 (+14d) |  | 74.8d → 3d | SDR-ST-CON-P1-1810 SS, SDR-ST-ENG-AP-1090 → SDR-ST-CON-P1-1810 SS | resources SIC- Cost [1359.27]; Surveyor [38.39 h]; Labor [38.39 h]; Plumber [38.39 h]; Excavator [40 h]; Excavator Operator [38.39 h] → SIC- Cost [1359.27]; Surveyor [37.98 h]; Labor [37.98 h]; Plumber [37.98 h]; Excavator [40 h]; Excavator Operator [37.98 h] |
| SDR-ST-CON-P1-2580 | Excavation for manhole. Section 2 | 2026-10-22 → 2026-10-12 (-10d) | 2026-11-15 → 2026-11-04 (-11d) |  | 74.8d → 3d | SDR-ST-CON-P1-1820 → SDR-ST-CON-P1-1820 FF | resources SIC- Cost [1359.27]; Surveyor [38.39 h]; Labor [38.39 h]; Plumber [38.39 h]; Excavator [26.8 h]; Excavator Operator [38.39 h] → SIC- Cost [1359.27]; Surveyor [37.98 h]; Labor [37.98 h]; Plumber [37.98 h]; Excavator [26.8 h]; Excavator Operator [37.98 h] |
| 2 | **bedding Works** | 2026-11-16 → 2026-11-05 (-11d) | 2026-12-09 → 2026-11-29 (-10d) |  |  |  |  |
| SDR-ST-CON-P1-3410 | Sand bedding for manhole. | 2026-11-16 → 2026-11-05 (-11d) | 2026-12-09 → 2026-11-29 (-10d) |  | 74.8d → 3d |  | resources SIC- Cost [1812.36]; Surveyor [38.39 h]; Labor [38.39 h]; Plumber [38.39 h]; Excavator [16.13 h]; Excavator Operator [38.39 h] → SIC- Cost [1812.36]; Surveyor [37.98 h]; Labor [37.98 h]; Plumber [37.98 h]; Excavator [16.13 h]; Excavator Operator [37.98 h] |
| 3 | **Install Manholes** | 2026-12-10 → 2026-11-30 (-10d) | 2027-01-03 → 2026-12-23 (-11d) |  |  |  |  |
| SDR-ST-CON-P1-4390 | Manhole Installation | 2026-12-10 → 2026-11-30 (-10d) | 2027-01-03 → 2026-12-23 (-11d) |  | 74.8d → 3d | SDR-ST-CON-P1-2580, SDR-ST-CON-P1-3410 → SDR-ST-CON-P1-2580, SDR-ST-CON-P1-3410, SDR-ST-PRO-MS-1140 FF | resources SIC- Cost [8155.63]; Surveyor [129.56 h]; Compactor [200 h]; Labor [202.02 h]; Plumber [202.02 h]; Excavator [200 h]; Excavator Operator [202.02 h] → SIC- Cost [8155.63]; Surveyor [128.18 h]; Compactor [200 h]; Labor [199.87 h]; Plumber [199.87 h]; Excavator [200 h]; Excavator Operator [199.87 h] |
| 4 | **Testing** | 2027-01-04 → 2026-12-24 (-11d) | 2027-01-27 → 2027-01-17 (-10d) |  |  |  |  |

| ID | Task | Start | Finish | Duration | Total float | Predecessors | Other |
| --- | --- | --- | --- | --- | --- | --- | --- |
| SDR-ST-CON-P1-5120 | Testing | 2027-01-04 → 2026-12-24 (-11d) | 2027-01-27 → 2027-01-17 (-10d) |  | 74.8d → 3d |  | resources SIC- Cost [1812.36]; Surveyor [28.79 h]; Labor [40.4 h]; Plumber [40.4 h] → SIC- Cost [1812.36]; Surveyor [28.49 h]; Labor [39.97 h]; Plumber [39.97 h] |
| 5 | **Backfilling** | 2027-02-27 → 2027-02-14 (-13d) | 2027-03-31 → 2027-03-15 (-16d) |  |  |  |  |
| SDR-ST-CON-P1-5770 | Backfilling | 2027-02-27 → 2027-02-14 (-13d) | 2027-03-31 → 2027-03-15 (-16d) |  | 56.8d → 14d | SDR-ST-CON-P1-5120, SDR-ST-CON-P1-5140 → SDR-ST-CON-P1-5120, SDR-ST-CON-P1-5140, SDR-ST-PRO-MS-1050 | resources SIC- Cost [3624.72]; Surveyor [71.98 h]; Labor [129.56 h]; Plumber [129.56 h]; Excavator [118.98 h]; Excavator Operator [129.56 h] → SIC- Cost [3624.72]; Surveyor [71.21 h]; Labor [128.18 h]; Plumber [128.18 h]; Excavator [118.98 h]; Excavator Operator [128.18 h] |
| 7 | **Pipes Work** |  | 2027-01-31 → 2027-02-13 (+13d) |  |  |  |  |
| 1 | **Excavation** |  | 2026-11-07 → 2026-11-15 (+8d) |  |  |  |  |
| SDR-ST-CON-P1-2030 | Excavation for GRP Pipe 200mm Diameter Section 1 |  | 2026-10-15 → 2026-10-24 (+9d) |  | 60.8d → 3d |  | resources SIC- Cost [10614.3]; Surveyor [38.39 h]; Labor [38.39 h]; Plumber [38.39 h]; Excavator [20 h]; Excavator Operator [129.56 h] → SIC- Cost [10614.3]; Surveyor [37.98 h]; Labor [37.98 h]; Plumber [37.98 h]; Excavator [20 h]; Excavator Operator [128.18 h] |
| SDR-ST-CON-P1-2700 | Excavation for GRP Pipe 200mm Diameter Section 2 | 2026-10-20 → 2026-10-28 (+8d) | 2026-11-07 → 2026-11-15 (+8d) |  | 91.8d → 12.9d |  | resources SIC- Cost [10614.3]; Surveyor [38.39 h]; Labor [38.39 h]; Plumber [38.39 h]; Excavator [30 h]; Excavator Operator [129.56 h] → SIC- Cost [10614.3]; Surveyor [37.98 h]; Labor [37.98 h]; Plumber [37.98 h]; Excavator [30 h]; Excavator Operator [128.18 h] |
| 5 | **bedding Works** | 2026-11-08 → 2026-11-16 (+8d) | 2026-11-18 → 2026-11-26 (+8d) |  |  |  |  |
| SDR-ST-CON-P1-3330 | Sand bedding for GRP Pipe 200mm Diameter | 2026-11-08 → 2026-11-16 (+8d) | 2026-11-18 → 2026-11-26 (+8d) |  | 91.8d → 12.9d |  | resources SIC- Cost [5307.16]; Surveyor [38.39 h]; Labor [38.39 h]; Plumber [38.39 h]; Excavator [15 h]; Excavator Operator [38.39 h] → SIC- Cost [5307.16]; Surveyor [37.98 h]; Labor [37.98 h]; Plumber [37.98 h]; Excavator [15 h]; Excavator Operator [37.98 h] |
| 2 | **Pipes Laying** | 2026-11-19 → 2026-11-28 (+9d) | 2026-12-13 → 2026-12-21 (+8d) |  |  |  |  |
| SDR-ST-CON-P1-3750 | 200 mm GRP Pipe Laying | 2026-11-19 → 2026-11-28 (+9d) | 2026-12-13 → 2026-12-21 (+8d) |  | 91.8d → 12.9d | SDR-ST-CON-P1-2700, SDR-ST-CON-P1-3330 → SDR-ST-CON-P1-2700, SDR-ST-CON-P1-3330, SDR-ST-PRO-MS-1130 | resources SIC- Cost [47764.5]; Surveyor [35.99 h]; Compactor [50 h]; Labor [129.56 h]; Plumber [129.56 h]; Excavator [15 h]; Excavator Operator [129.56 h] → SIC- Cost [47764.5]; Surveyor [35.61 h]; Compactor [50 h]; Labor [128.18 h]; Plumber [128.18 h]; Excavator [15 h]; Excavator Operator [128.18 h] |
| 3 | **Testing** | 2026-12-14 → 2026-12-22 (+8d) | 2027-01-06 → 2027-01-14 (+8d) |  |  |  |  |
| SDR-ST-CON-P1-4670 | Testing of 200 mm GRP Pipe. | 2026-12-14 → 2026-12-22 (+8d) | 2027-01-06 → 2027-01-14 (+8d) |  | 91.8d → 12.9d |  | resources SIC- Cost [10614.3]; Surveyor [21.59 h]; Labor [129.56 h]; Plumber [129.56 h] → SIC- Cost [10614.3]; Surveyor [21.36 h]; Labor [128.18 h]; Plumber [128.18 h] |
| 6 | **Backfilling** | 2027-01-07 → 2027-01-20 (+13d) | 2027-01-31 → 2027-02-13 (+13d) |  |  |  |  |
| SDR-ST-CON-P1-5670 | Backfilling of 200 mm GRP Pipe. | 2027-01-07 → 2027-01-20 (+13d) | 2027-01-31 → 2027-02-13 (+13d) |  | 91.8d → 12.9d | SDR-ST-CON-P1-4670 → SDR-ST-CON-P1-4670 FS+4d, SDR-ST-PRO-MS-1050 | resources SIC- Cost [21228.7]; Surveyor [21.59 h]; Labor [129.56 h]; Plumber [129.56 h]; Excavator [15 h]; Excavator Operator [129.56 h] → SIC- Cost [21228.7]; Surveyor [21.36 h]; Labor [128.18 h]; Plumber [128.18 h]; Excavator [15 h]; Excavator Operator [128.18 h] |
| 4 | **Manholes** | 2026-09-28 → 2026-10-12 (+14d) | 2027-03-03 → 2027-03-15 (+12d) |  |  |  |  |
| 1 | **Excavation** | 2026-09-28 → 2026-10-12 (+14d) | 2026-11-15 → 2026-11-29 (+14d) |  |  |  |  |
| SDR-ST-CON-P1-2040 | Excavation for manhole. Section 1 | 2026-09-28 → 2026-10-12 (+14d) | 2026-10-21 → 2026-11-04 (+14d) |  | 60.8d → 3d | SDR-ST-CON-P1-2030 SS, SDR-ST-ENG-AP-1090 → SDR-ST-CON-P1-2030 SS | resources SIC- Cost [1359.27]; Surveyor [38.39 h]; Labor [38.39 h]; Plumber [38.39 h]; Excavator [20 h]; Excavator Operator [129.56 h] → SIC- Cost [1359.27]; Surveyor [37.98 h]; Labor [37.98 h]; Plumber [37.98 h]; Excavator [20 h]; Excavator Operator [128.18 h] |
| SDR-ST-CON-P1-2760 | Excavation for manhole. Section 2 | 2026-10-22 → 2026-11-05 (+14d) | 2026-11-15 → 2026-11-29 (+14d) |  | 60.8d → 3d |  | resources SIC- Cost [1359.27]; Surveyor [38.39 h]; Labor [38.39 h]; Plumber [38.39 h]; Excavator [18.83 h]; Excavator Operator [129.56 h] → SIC- Cost [1359.27]; Surveyor [37.98 h]; Labor [37.98 h]; Plumber [37.98 h]; Excavator [18.83 h]; Excavator Operator [128.18 h] |
| 2 | **bedding Works** | 2026-11-16 → 2026-11-30 (+14d) | 2026-12-09 → 2026-12-23 (+14d) |  |  |  |  |
| SDR-ST-CON-P1-3620 | Sand bedding for manhole. | 2026-11-16 → 2026-11-30 (+14d) | 2026-12-09 → 2026-12-23 (+14d) |  | 60.8d → 3d |  | resources SIC- Cost [1812.36]; Surveyor [35.99 h]; Labor [129.56 h]; Plumber [129.56 h]; Excavator [30 h]; Excavator Operator [129.56 h] → SIC- Cost [1812.36]; Surveyor [35.61 h]; Labor [128.18 h]; Plumber [128.18 h]; Excavator [30 h]; Excavator Operator [128.18 h] |
| 3 | **Install Manholes** | 2026-12-10 → 2026-12-24 (+14d) | 2027-01-03 → 2027-01-17 (+14d) |  |  |  |  |
| SDR-ST-CON-P1-4560 | Manhole Installation | 2026-12-10 → 2026-12-24 (+14d) | 2027-01-03 → 2027-01-17 (+14d) |  | 60.8d → 3d | SDR-ST-CON-P1-2760, SDR-ST-CON-P1-3620 → SDR-ST-CON-P1-2760, SDR-ST-CON-P1-3620, SDR-ST-PRO-MS-1140 | resources SIC- Cost [8155.63]; Surveyor [35.99 h]; Compactor [65.68 h]; Labor [129.56 h]; Plumber [129.56 h]; Excavator [22.71 h]; Excavator Operator [129.56 h] → SIC- Cost [8155.63]; Surveyor [35.61 h]; Compactor [65.68 h]; Labor [128.18 h]; Plumber [128.18 h]; Excavator [22.71 h]; Excavator Operator [128.18 h] |
| 4 | **Testing** | 2027-01-04 → 2027-01-18 (+14d) | 2027-01-27 → 2027-02-10 (+14d) |  |  |  |  |
| SDR-ST-CON-P1-5440 | Testing | 2027-01-04 → 2027-01-18 (+14d) | 2027-01-27 → 2027-02-10 (+14d) |  | 60.8d → 3d | SDR-ST-CON-P1-4560, SDR-ST-CON-P1-4560 FF → SDR-ST-CON-P1-4560, SDR-ST-CON-P1-4560 FF, SDR-ST-CON-P1-5120 | resources SIC- Cost [1812.36]; Surveyor [35.99 h]; Labor [40.4 h]; Plumber [40.4 h] → SIC- Cost [1812.36]; Surveyor [35.61 h]; Labor [39.97 h]; Plumber [39.97 h] |
| 5 | **Backfilling** | 2027-01-28 → 2027-02-14 (+17d) | 2027-03-03 → 2027-03-15 (+12d) |  |  |  |  |
| SDR-ST-CON-P1-5800 | Backfilling | 2027-01-28 → 2027-02-14 (+17d) | 2027-03-03 → 2027-03-15 (+12d) |  | 60.8d → 3d | SDR-ST-CON-P1-5440, SDR-ST-CON-P1-4240 → SDR-ST-CON-P1-5440 FS+2d, SDR-ST-CON-P1-4240, SDR-ST-PRO-MS-1050 | resources SIC- Cost [3624.72]; Surveyor [28.79 h]; Labor [129.56 h]; Plumber [129.56 h]; Excavator [30 h]; Excavator Operator [129.56 h] → SIC- Cost [3624.72]; Surveyor [28.49 h]; Labor [128.18 h]; Plumber [128.18 h]; Excavator [30 h]; Excavator Operator [128.18 h] |
| 11 | **STORM WATER** |  | 2027-04-15 → 2027-02-20 (-54d) |  |  |  |  |
| 2 | **ROAD N...** |  | 2027-04-15 → 2027-02-20 (-54d) |  |  |  |  |
| 8 | **Pipes Works** |  | 2027-04-15 → 2027-02-20 (-54d) |  |  |  |  |
| SDR-ST-CON-P1-1460 | Excavation for GRP Pipes Section 1 |  |  |  |  |  | resources SIC- Cost [58808.1]; Labor [38.39 h]; Excavator [160.71 h]; Excavator Operator [38.39 h] → SIC- Cost [58808.1]; Labor [37.98 h]; Excavator [160.71 h]; Excavator Operator [37.98 h] |
| 7 | **bedding Works** |  | 2026-10-21 → 2026-11-04 (+14d) |  |  |  |  |
| SDR-ST-CON-P1-2170 | Sand bedding for GRP Pipes |  | 2026-10-21 → 2026-11-04 (+14d) |  | 44.9d → 41d | SDR-ST-CON-P1-1460 → SDR-ST-CON-P1-1460 FS+4d | resources SIC- Cost [14702]; Labor [38.39 h]; Excavator [15.95 h]; Excavator Operator [38.39 h]; Loader [40 h] → SIC- Cost [14702]; Labor [37.98 h]; Excavator [15.95 h]; Excavator Operator [37.98 h]; Loader [40 h] |
| 2 | **Pipes Laying** |  | 2026-12-07 → 2026-11-10 (-27d) |  |  |  |  |
| SDR-ST-CON-P1-2910 | Install ST GRP Pipes |  | 2026-12-07 → 2026-11-10 (-27d) |  | 25.9d → 36d | SDR-ST-CON-P1-2170, SDR-ST-PRO-MS-1010 → SDR-ST-CON-P1-2170 SS, SDR-ST-PRO-MS-1010 FF | resources Pipe Fitter [38.39 h]; SIC- Cost [132318]; Labor [38.39 h] → Pipe Fitter [37.98 h]; SIC- Cost [132318]; Labor [37.98 h] |
| 6 | **Testing** | 2026-12-08 → 2026-11-16 (-22d) | 2026-12-31 → 2026-12-09 (-22d) |  |  |  |  |
| SDR-ST-CON-P1-3830 | Testing ST GRP Pipes | 2026-12-08 → 2026-11-16 (-22d) | 2026-12-31 → 2026-12-09 (-22d) |  | 25.9d → 36d | SDR-ST-CON-P1-2910 → SDR-ST-CON-P1-2910 FS+4d | resources Pipe Fitter [129.56 h]; SIC- Cost [29404]; Labor [129.56 h] → Pipe Fitter [128.18 h]; SIC- Cost [29404]; Labor [128.18 h] |
| 3 | **Backfilling** | 2027-03-23 → 2027-01-28 (-54d) | 2027-04-15 → 2027-02-20 (-54d) |  |  |  |  |
| SDR-ST-CON-P1-4760 | Backfilling ST GRP Pipes | 2027-03-23 → 2027-01-28 (-54d) | 2027-04-15 → 2027-02-20 (-54d) |  | 3.01d → 13d | SDR-ST-CON-P1-3830, SDR-ST-CON-P3-1170 → SDR-ST-CON-P1-3830, SDR-ST-CON-P3-1170, SDR-ST-PRO-MS-1050 | resources SIC- Cost [58808.1]; Labor [129.56 h]; Excavator [410 h]; Excavator Operator [129.56 h] → SIC- Cost [58808.1]; Labor [128.18 h]; Excavator [410 h]; Excavator Operator [128.18 h] |
| 3 | **Package-3** | 2026-09-28 → 2026-10-12 (+14d) | 2027-08-06 → 2027-08-01 (-5d) |  |  |  |  |
| 1 | **Site Works** | 2026-09-28 → 2026-10-12 (+14d) | 2026-10-20 → 2026-11-03 (+14d) |  |  |  |  |
| 1 | **Earthworks** | 2026-09-28 → 2026-10-12 (+14d) | 2026-10-20 → 2026-11-03 (+14d) |  |  |  |  |
| 2 | **Excavation** | 2026-09-28 → 2026-10-12 (+14d) | 2026-10-20 → 2026-11-03 (+14d) |  |  |  |  |
| SDR-ST-CON-P3-1000 | Excavation in all types of soil to the required depth includes removal of waste material | 2026-09-28 → 2026-10-12 (+14d) | 2026-10-20 → 2026-11-03 (+14d) |  | 10.9d → 6d |  | resources SIC- Cost [13800]; Excavator [92 h]; Excavator Operator [143.96 h]; Grader [200 h]; Grader Operator [143.96 h]; Loader [200 h]; Loader Operator [143.96 h]; Un-Skilled Labor [287.92 h]; Supervisor [71.98 h]; Skilled Labor [287.92 h] → SIC- Cost [13800]; Excavator [92 h]; Excavator Operator [142.43 h]; Grader [200 h]; Grader Operator [142.43 h]; Loader [200 h]; Loader Operator [142.43 h]; Un-Skilled Labor [7975.12 h]; Supervisor [71.21 h]; Skilled Labor [284.85 h] |
| 1 | **Fill** | 2026-09-28 → 2026-10-12 (+14d) | 2026-10-14 → 2026-10-28 (+14d) |  |  |  |  |
| SDR-ST-CON-P3-1010 | Backfilling with improved and select fill material from the site or imported | 2026-09-28 → 2026-10-12 (+14d) | 2026-10-14 → 2026-10-28 (+14d) |  | 10.9d → 6d |  | resources SIC- Cost [7290.01]; Excavator [65 h]; Excavator Operator [143.96 h]; Grader [200 h]; Grader Operator [143.96 h]; Loader [200 h]; Loader Operator [143.96 h]; Un-Skilled Labor [143.96 h]; Supervisor [35.99 h]; Skilled Labor [143.96 h] → SIC- Cost [7290.01]; Excavator [65 h]; Excavator Operator [142.43 h]; Grader [200 h]; Grader Operator [142.43 h]; Loader [200 h]; Loader Operator [142.43 h]; Un-Skilled Labor [142.43 h]; Supervisor [35.61 h]; Skilled Labor [142.43 h] |
| 2 | **Platform Works** | 2026-10-07 → 2026-10-12 (+5d) | 2027-08-06 → 2027-07-20 (-17d) |  |  |  |  |
| 1 | **Platform** | 2026-10-07 → 2026-10-12 (+5d) | 2027-04-07 → 2027-04-01 (-6d) |  |  |  |  |
| 1 | **Earthworks** | 2026-10-07 → 2026-10-12 (+5d) | 2026-11-15 → 2026-11-19 (+4d) |  |  |  |  |
| 1 | **Excavation** | 2026-10-07 → 2026-10-12 (+5d) | 2026-10-25 → 2026-10-29 (+4d) |  |  |  |  |
| SDR-ST-CON-P3-1020 | Excavation in all types of soil to the required depth includes removal of waste material | 2026-10-07 → 2026-10-12 (+5d) | 2026-10-25 → 2026-10-29 (+4d) |  | 10.9d → 6d | SDR-ST-CON-P3-1010 SS+8d, SDR-ST-MILS-1000 → SDR-ST-CON-P3-1010 SS, SDR-ST-MILS-1000 | resources SIC- Cost [48000]; Excavator [15 h]; Excavator Operator [95.97 h]; Dumper Operator [95.97 h]; Dumper Truck [100 h]; Loader [100 h]; Loader Operator [95.97 h]; Supervisor [38.39 h]; Mason [95.97 h]; Mason Helper [95.97 h] → SIC- Cost [48000]; Excavator [15 h]; Excavator Operator [94.95 h]; Dumper Operator [94.95 h]; Dumper Truck [100 h]; Loader [100 h]; Loader Operator [94.95 h]; Supervisor [37.98 h]; Mason [94.95 h]; Mason Helper [94.95 h] |
| 2 | **Fill** | 2026-10-26 → 2026-10-31 (+5d) | 2026-11-15 → 2026-11-19 (+4d) |  |  |  |  |
| SDR-ST-CON-P3-1030 | Backfilling with improved and select fill material from the site or imported Part 1 | 2026-10-26 → 2026-10-31 (+5d) | 2026-11-15 → 2026-11-19 (+4d) |  | 10.9d → 6d | SDR-ST-CON-P3-1020, SDR-ST-ENG-AP-1090, SDR-ST-MILS-1000 → SDR-ST-CON-P3-1020, SDR-ST-MILS-1000 | resources SIC- Cost [53100]; Excavator [37.86 h]; Excavator Operator [95.97 h]; Dumper Operator [95.97 h]; Dumper Truck [100 h]; Loader [100 h]; Loader Operator [95.97 h]; Supervisor [38.39 h]; Mason [95.97 h]; Mason Helper [95.97 h] → SIC- Cost [53100]; Excavator [37.86 h]; Excavator Operator [94.95 h]; Dumper Operator [94.95 h]; Dumper Truck [100 h]; Loader [100 h]; Loader Operator [94.95 h]; Supervisor [37.98 h]; Mason [94.95 h]; Mason Helper [94.95 h] |
| SDR-ST-CON-P3-1040 | Backfilling with improved and select fill material from the site or imported Part 2 | 2026-10-26 → 2026-10-31 (+5d) | 2026-11-12 → 2026-11-17 (+5d) |  | 12.9d → 8d |  | resources SIC- Cost [53100]; Excavator [16.25 h]; Excavator Operator [95.97 h]; Dumper Operator [95.97 h]; Dumper Truck [100 h]; Loader [100 h]; Loader Operator [95.97 h]; Supervisor [38.39 h]; Mason [95.97 h]; Mason Helper [95.97 h] → SIC- Cost [53100]; Excavator [16.25 h]; Excavator Operator [94.95 h]; Dumper Operator [94.95 h]; Dumper Truck [100 h]; Loader [100 h]; Loader Operator [94.95 h]; Supervisor [37.98 h]; Mason [94.95 h]; Mason Helper [94.95 h] |
| 3 | **Concrete Works** | 2026-11-16 → 2026-11-21 (+5d) | 2027-04-07 → 2027-04-01 (-6d) |  |  |  |  |
| 1 | **Foundations** | 2026-11-16 → 2026-11-21 (+5d) | 2027-01-20 → 2026-12-30 (-21d) |  |  |  |  |
| SDR-ST-CON-P3-1060 | Pouring Concrete under Foundation 100 mm thickness lean | 2026-11-16 → 2026-11-21 (+5d) | 2026-11-26 → 2026-12-01 (+5d) |  | 10.9d → 6d |  | resources SIC- Cost [82000.1]; Helper [95.97 h]; Supervisor [38.39 h]; Mason [95.97 h]; Mason Helper [95.97 h]; Carpenter [95.97 h] → SIC- Cost [82000.1]; Helper [94.95 h]; Supervisor [37.98 h]; Mason [94.95 h]; Mason Helper [94.95 h]; Carpenter [94.95 h] |
| SDR-ST-CON-P3-1080 | Provide and lay 2 layers of waterproofing bitumenous membrane 4mm below footings | 2026-11-28 → 2026-12-02 (+4d) | 2026-12-06 → 2026-12-10 (+4d) |  | 10.9d → 6d | SDR-ST-CON-P3-1060, SDR-ST-MILS-1000 → SDR-ST-CON-P3-1060, SDR-ST-MILS-1000, SDR-ST-CON-P1-1860, SDR-ST-CON-P1-1800 | resources SIC- Cost [135300]; Plumbing Helper [95.97 h]; Plumber [95.97 h]; Mason [95.97 h]; Mason Helper [95.97 h] → SIC- Cost [135300]; Plumbing Helper [94.95 h]; Plumber [94.95 h]; Mason [94.95 h]; Mason Helper [94.95 h] |
| SDR-ST-CON-P3-1100 | Pouring Concrete for protecting waterproofing under the foundation 50 mm thickness | 2026-12-09 → 2026-12-13 (+4d) | 2026-12-20 → 2026-12-23 (+3d) |  | 8.9d → 6d | SDR-ST-CON-P3-1080, SDR-ST-MILS-1000, SDR-ST-PRO-MS-1260, SDR-ST-PRO-MS-1010, SDR-ST-PRO-MS-1010 FF → SDR-ST-CON-P3-1080 FS+1d, SDR-ST-MILS-1000, SDR-ST-PRO-MS-1260, SDR-ST-PRO-MS-1010, SDR-ST-PRO-MS-1010 FF | resources SIC- Cost [45100]; Helper [38.39 h]; Supervisor [38.39 h]; Mason [38.39 h]; Mason Helper [38.39 h]; Carpenter [38.39 h] → SIC- Cost [45100]; Helper [37.98 h]; Supervisor [37.98 h]; Mason [37.98 h]; Mason Helper [37.98 h]; Carpenter [37.98 h] |
| 1 | **Footings** | 2026-12-21 → 2026-12-13 (-8d) | 2027-01-20 → 2026-12-30 (-21d) |  |  |  |  |
| SDR-ST-CON-P3-1130 | Pouring concrete for footings Part 1 | 2026-12-21 → 2026-12-13 (-8d) | 2026-12-31 → 2026-12-23 (-8d) |  | 8.9d → 6d | SDR-ST-CON-P3-1100, SDR-ST-MILS-1000 → SDR-ST-CON-P3-1100 SS, SDR-ST-MILS-1000, SDR-ST-CON-P3-1070 SS | resources SIC- Cost [309753]; Helper [38.39 h]; Supervisor [38.39 h]; Mason [38.39 h]; Mason Helper [38.39 h]; Carpenter [38.39 h] → SIC- Cost [309753]; Helper [37.98 h]; Supervisor [37.98 h]; Mason [37.98 h]; Mason Helper [37.98 h]; Carpenter [37.98 h] |
| SDR-ST-CON-P3-1150 | Pouring concrete for footings Part 2 | 2027-01-02 → 2026-12-13 (-20d) | 2027-01-12 → 2026-12-23 (-20d) |  | 8.9d → 6d | SDR-ST-CON-P3-1130, SDR-ST-MILS-1000 → SDR-ST-CON-P3-1130 SS, SDR-ST-MILS-1000 | resources SIC- Cost [309753]; Helper [129.56 h]; Supervisor [129.56 h]; Mason [129.56 h]; Mason Helper [129.56 h]; Carpenter [129.56 h] → SIC- Cost [309753]; Helper [128.18 h]; Supervisor [128.18 h]; Mason [128.18 h]; Mason Helper [128.18 h]; Carpenter [128.18 h] |
| SDR-ST-CON-P3-1180 | Pouring concrete for footings Part 3 | 2027-01-02 → 2026-12-13 (-20d) | 2027-01-20 → 2026-12-30 (-21d) | 16.2d → 16d | 8.9d → 6d | SDR-ST-CON-P3-1150 SS, SDR-ST-ENG-AP-1090, SDR-ST-MILS-1000 → SDR-ST-CON-P3-1150 SS, SDR-ST-MILS-1000 | resources SIC- Cost [309754]; Helper [129.56 h]; Supervisor [129.56 h]; Mason [129.56 h]; Mason Helper [129.56 h]; Carpenter [129.56 h] → SIC- Cost [309754]; Helper [128.18 h]; Supervisor [128.18 h]; Mason [128.18 h]; Mason Helper [128.18 h]; Carpenter [128.18 h] |
| 2 | **Substructure** | 2027-01-09 → 2026-12-31 (-9d) | 2027-02-04 → 2027-01-28 (-7d) |  |  |  |  |
| 1 | **Basement** | 2027-01-09 → 2027-01-03 (-6d) | 2027-01-23 → 2027-01-17 (-6d) |  |  |  |  |
| SDR-ST-CON-P3-1200 | Pouring concrete for Basement Part 1 | 2027-01-09 → 2027-01-03 (-6d) | 2027-01-19 → 2027-01-13 (-6d) |  | 8.9d → 6d | SDR-ST-CON-P3-1180 SS+6d, SDR-ST-MILS-1000 → SDR-ST-CON-P3-1180 FS+2d, SDR-ST-MILS-1000, SDR-ST-CON-P1-3620, SDR-ST-CON-P3-1150 | resources SIC- Cost [214175]; Helper [202.02 h]; Supervisor [202.02 h]; Mason [202.02 h]; Mason Helper [202.02 h]; Carpenter [202.02 h] → SIC- Cost [214175]; Helper [199.87 h]; Supervisor [199.87 h]; Mason [199.87 h]; Mason Helper [199.87 h]; Carpenter [199.87 h] |
| SDR-ST-CON-P3-1220 | Pouring concrete for Basement Part 2 | 2027-01-14 → 2027-01-09 (-5d) | 2027-01-23 → 2027-01-17 (-6d) |  | 31.9d → 17d | SDR-ST-CON-P3-1200 SS+5d, SDR-ST-ENG-AP-1090, SDR-ST-MILS-1000 → SDR-ST-CON-P3-1200 SS+5d, SDR-ST-MILS-1000 | resources SIC- Cost [200]; Helper [202.02 h]; Supervisor [129.56 h]; Mason [202.02 h]; Mason Helper [202.02 h]; Carpenter [202.02 h] → SIC- Cost [200]; Helper [199.87 h]; Supervisor [128.18 h]; Mason [199.87 h]; Mason Helper [199.87 h]; Carpenter [199.87 h] |
| 2 | **Tank** | 2027-01-20 → 2026-12-31 (-20d) | 2027-02-03 → 2027-01-13 (-21d) |  |  |  |  |
| SDR-ST-CON-P3-1210 | Pouring concrete for Tank Part 1 | 2027-01-20 → 2026-12-31 (-20d) | 2027-01-27 → 2027-01-06 (-21d) |  | 22.7d → 20d |  | resources SIC- Cost [214175]; Helper [202.02 h]; Supervisor [202.02 h]; Mason [202.02 h]; Mason Helper [202.02 h]; Carpenter [202.02 h] → SIC- Cost [214175]; Helper [199.87 h]; Supervisor [199.87 h]; Mason [199.87 h]; Mason Helper [199.87 h]; Carpenter [199.87 h] |
| SDR-ST-CON-P3-1230 | Pouring concrete for Tank Part 2 | 2027-01-27 → 2027-01-07 (-20d) | 2027-02-03 → 2027-01-13 (-21d) |  | 22.7d → 20d |  | resources SIC- Cost [214175]; Helper [202.02 h]; Supervisor [202.02 h]; Mason [202.02 h]; Mason Helper [202.02 h]; Carpenter [202.02 h] → SIC- Cost [214175]; Helper [199.87 h]; Supervisor [199.87 h]; Mason [199.87 h]; Mason Helper [199.87 h]; Carpenter [199.87 h] |

| ID | Task | Start | Finish | Duration | Total float | Predecessors | Other |
| --- | --- | --- | --- | --- | --- | --- | --- |
| 3 | **Retaining Walls** | 2027-01-21 → 2027-01-14 (-7d) | 2027-02-04 → 2027-01-28 (-7d) |  |  |  |  |
| SDR-ST-CON-P3-1190 | Pouring concrete for Retaining Walls Part 1 | 2027-01-21 → 2027-01-14 (-7d) | 2027-01-28 → 2027-01-21 (-7d) |  | 8.9d → 6d | SDR-ST-CON-P3-1180, SDR-ST-MILS-1000, SDR-ST-CON-P3-1200 FS+1d, SDR-ST-CON-P1-3830 → SDR-ST-CON-P3-1180, SDR-ST-MILS-1000, SDR-ST-CON-P3-1200, SDR-ST-CON-P1-3830, SDR-ST-CON-P1-4460 | resources SIC- Cost [214175]; Helper [40.4 h]; Supervisor [40.4 h]; Mason [40.4 h]; Mason Helper [40.4 h]; Carpenter [40.4 h] → SIC- Cost [214175]; Helper [39.97 h]; Supervisor [39.97 h]; Mason [39.97 h]; Mason Helper [39.97 h]; Carpenter [39.97 h] |
| SDR-ST-CON-P3-1250 | Pouring concrete for Retaining Walls Part 2 | 2027-01-30 → 2027-01-23 (-7d) | 2027-02-04 → 2027-01-28 (-7d) |  | 8.9d → 6d | SDR-ST-CON-P3-1190, SDR-ST-MILS-1000 → SDR-ST-CON-P3-1190, SDR-ST-MILS-1000, SDR-ST-CON-P1-4330, SDR-ST-CON-P1-4020, SDR-ST-CON-P1-4270 | resources SIC- Cost [214175]; Helper [202.02 h]; Supervisor [202.02 h]; Mason [202.02 h]; Mason Helper [202.02 h]; Carpenter [202.02 h] → SIC- Cost [214175]; Helper [199.87 h]; Supervisor [199.87 h]; Mason [199.87 h]; Mason Helper [199.87 h]; Carpenter [199.87 h] |
| 3 | **Waterproofing Vertical** | 2027-02-06 → 2027-01-30 (-7d) | 2027-02-28 → 2027-02-16 (-12d) |  |  |  |  |
| SDR-ST-CON-P3-1300 | lay 2 layers of waterproofing bitumenous membrane 4mm including protection board for substructure vertical Part 1 | 2027-02-06 → 2027-01-30 (-7d) | 2027-02-11 → 2027-02-02 (-9d) |  | 8.9d → 6d | SDR-ST-CON-P3-1250, SDR-ST-MILS-1000 → SDR-ST-CON-P3-1250, SDR-ST-CON-P1-3640, SDR-ST-CON-P1-4210, SDR-ST-CON-P1-4160 | resources SIC- Cost [263720]; Plumbing Helper [1157.22 h]; Plumber [1157.22 h]; Mason [151.16 h]; Mason Helper [151.16 h] → SIC- Cost [263720]; Plumbing Helper [1144.9 h]; Plumber [1144.9 h]; Mason [149.55 h]; Mason Helper [149.55 h] |
| SDR-ST-CON-P3-1370 | lay 2 layers of waterproofing bitumenous membrane 4mm including protection board for substructure vertical Part 2 | 2027-02-11 → 2027-02-08 (-3d) | 2027-02-18 → 2027-02-11 (-7d) |  | 8.9d → 2d | SDR-ST-CON-P3-1300, SDR-ST-MILS-1000, SDR-ST-CON-P1-4310 → SDR-ST-MILS-1000, SDR-ST-CON-P1-4310, SDR-ST-CON-P1-4710, SDR-ST-CON-P1-4640, SDR-ST-CON-P3-1300 | resources SIC- Cost [263720]; Plumbing Helper [40.4 h]; Plumber [40.4 h]; Mason [40.4 h]; Mason Helper [40.4 h] → SIC- Cost [263720]; Plumbing Helper [39.97 h]; Plumber [39.97 h]; Mason [39.97 h]; Mason Helper [39.97 h] |
| SDR-ST-CON-P3-1430 | lay 2 layers of waterproofing bitumenous membrane 4mm including protection board for substructure vertical Part 3 | 2027-02-20 → 2027-02-13 (-7d) | 2027-02-28 → 2027-02-16 (-12d) |  | 8.9d → 2d |  | resources SIC- Cost [263720]; Plumbing Helper [129.56 h]; Plumber [129.56 h]; Mason [129.56 h]; Mason Helper [129.56 h] → SIC- Cost [263720]; Plumbing Helper [128.18 h]; Plumber [128.18 h]; Mason [128.18 h]; Mason Helper [128.18 h] |
| 4 | **Neck Walls** | 2027-02-28 → 2027-02-18 (-10d) | 2027-03-14 → 2027-02-25 (-17d) |  |  |  |  |
| SDR-ST-CON-P3-1270 | Pouring concrete for Neck Walls Part 1 | 2027-02-28 → 2027-02-18 (-10d) | 2027-03-14 → 2027-02-24 (-18d) |  | 8.9d → 2d | SDR-ST-CON-P3-1230, SDR-ST-CON-P3-1220, SDR-ST-CON-P1-4950, SDR-ST-MILS-1000, SDR-ST-CON-P3-1430, SDR-ST-CON-P1-4270 → SDR-ST-CON-P3-1230, SDR-ST-CON-P3-1220, SDR-ST-CON-P1-4950, SDR-ST-MILS-1000, SDR-ST-CON-P3-1430 FS+1d, SDR-ST-CON-P1-4270, SDR-ST-CON-P1-5020, SDR-ST-CON-P1-4970 | resources SIC- Cost [214175]; Helper [40.4 h]; Supervisor [40.4 h]; Mason [40.4 h]; Mason Helper [40.4 h]; Carpenter [40.4 h] → SIC- Cost [214175]; Helper [39.97 h]; Supervisor [39.97 h]; Mason [39.97 h]; Mason Helper [39.97 h]; Carpenter [39.97 h] |
| SDR-ST-CON-P3-1290 | Pouring concrete for Neck Walls Part 2 | 2027-02-28 → 2027-02-20 (-8d) | 2027-03-14 → 2027-02-25 (-17d) |  | 8.9d → 2d | SDR-ST-CON-P3-1270 SS, SDR-ST-CON-P1-4660, SDR-ST-MILS-1000 SS → SDR-ST-CON-P3-1270 SS+1d, SDR-ST-CON-P1-4660, SDR-ST-MILS-1000 SS | resources SIC- Cost [214175]; Helper [40.4 h]; Supervisor [2020.2 h]; Mason [4525.24 h]; Mason Helper [40.4 h]; Carpenter [40.4 h] → SIC- Cost [214175]; Helper [39.97 h]; Supervisor [1998.7 h]; Mason [4477.08 h]; Mason Helper [39.97 h]; Carpenter [39.97 h] |
| 5 | **Preparation for Slab** | 2027-03-14 → 2027-02-27 (-15d) | 2027-03-23 → 2027-03-07 (-16d) |  |  |  |  |
| SDR-ST-CON-P3-1320 | Pouring Concrete under slab on grade and gound beams 50 mm thickness lean | 2027-03-14 → 2027-02-27 (-15d) | 2027-03-18 → 2027-03-02 (-16d) |  | 8.9d → 2.9d | SDR-ST-CON-P3-1290, SDR-ST-MILS-1000, SDR-ST-CON-P1-4610 → SDR-ST-CON-P3-1290, SDR-ST-MILS-1000, SDR-ST-CON-P1-4610, SDR-ST-CON-P1-5670, SDR-ST-CON-P1-5500, SDR-ST-CON-P1-4340, SDR-ST-CON-P3-1270 | resources SIC- Cost [79800.1]; Helper [129.56 h]; Supervisor [129.56 h]; Mason [129.56 h]; Mason Helper [129.56 h]; Carpenter [129.56 h] → SIC- Cost [79800.1]; Helper [128.18 h]; Supervisor [128.18 h]; Mason [128.18 h]; Mason Helper [128.18 h]; Carpenter [128.18 h] |
| SDR-ST-CON-P3-1360 | Supply and lay 250 micron thk polyethylene sheet below slab on grade and ground beams | 2027-03-18 → 2027-03-03 (-15d) | 2027-03-23 → 2027-03-07 (-16d) |  | 8.9d → 2.9d | SDR-ST-CON-P3-1320, SDR-ST-MILS-1000 → SDR-ST-CON-P3-1320, SDR-ST-MILS-1000, SDR-ST-CON-P1-6200 | resources SIC- Cost [21000]; Plumbing Helper [129.56 h]; Plumber [28.79 h]; Mason [50.3 h]; Mason Helper [50.3 h] → SIC- Cost [21000]; Plumbing Helper [128.18 h]; Plumber [28.49 h]; Mason [49.77 h]; Mason Helper [49.77 h] |
| 6 | **Slab on Grade** | 2027-03-23 → 2027-03-08 (-15d) | 2027-03-28 → 2027-03-16 (-12d) |  |  |  |  |
| SDR-ST-CON-P3-1380 | Pouring Concrete for Slab on grade | 2027-03-23 → 2027-03-08 (-15d) | 2027-03-28 → 2027-03-16 (-12d) |  | 8.9d → 2.9d | SDR-ST-CON-P3-1360, SDR-ST-MILS-1000, SDR-ST-CON-P1-4240 → SDR-ST-CON-P3-1360, SDR-ST-MILS-1000, SDR-ST-CON-P1-4240, SDR-ST-CON-P1-5740 | resources SIC- Cost [44900]; Helper [129.56 h]; Supervisor [129.56 h]; Mason [4510.73 h]; Mason Helper [4510.73 h]; Carpenter [129.56 h] → SIC- Cost [44900]; Helper [128.18 h]; Supervisor [128.18 h]; Mason [4462.72 h]; Mason Helper [4462.72 h]; Carpenter [128.18 h] |
| 7 | **Finishes** | 2027-03-28 → 2027-03-21 (-7d) | 2027-04-07 → 2027-04-01 (-6d) |  |  |  |  |
| 9 | **Troweled Finish** | 2027-03-28 → 2027-03-21 (-7d) | 2027-03-31 → 2027-03-23 (-8d) |  |  |  |  |
| SDR-ST-CON-P3-1400 | Pouring Concrete for Slab on grade with troweled finish Part 1 | 2027-03-28 → 2027-03-21 (-7d) | 2027-03-31 → 2027-03-23 (-8d) |  | 8.9d → 2.9d | SDR-ST-CON-P3-1380, SDR-ST-MILS-1000 → SDR-ST-CON-P3-1380 FS+3d, SDR-ST-MILS-1000, SDR-ST-CON-P1-4700 | resources SIC- Cost [112030]; Helper [129.56 h]; Supervisor [129.56 h]; Mason [90.55 h]; Mason Helper [90.55 h]; Carpenter [129.56 h] → SIC- Cost [112030]; Helper [128.18 h]; Supervisor [128.18 h]; Mason [89.58 h]; Mason Helper [89.58 h]; Carpenter [128.18 h] |
| SDR-ST-CON-P3-1500 | Pouring Concrete for Slab on grade with troweled finish Part 2 | 2027-03-28 → 2027-03-21 (-7d) | 2027-03-31 → 2027-03-23 (-8d) |  | 8.9d → 2.9d |  | resources SIC- Cost [112030]; Helper [129.56 h]; Supervisor [129.56 h]; Mason [129.56 h]; Mason Helper [129.56 h]; Carpenter [129.56 h] → SIC- Cost [112030]; Helper [128.18 h]; Supervisor [128.18 h]; Mason [128.18 h]; Mason Helper [128.18 h]; Carpenter [128.18 h] |
| 8 | **Exposed Aggregate Finish** | 2027-03-31 → 2027-03-24 (-7d) | 2027-04-07 → 2027-04-01 (-6d) |  |  |  |  |
| SDR-ST-CON-P3-1420 | Pouring Concrete for Slab on grade with exposed aggregate finish Part 1 | 2027-03-31 → 2027-03-24 (-7d) | 2027-04-04 → 2027-03-27 (-8d) |  | 8.9d → 2.9d |  | resources SIC- Cost [272386]; Helper [1135.62 h]; Supervisor [129.56 h]; Mason [2141.68 h]; Mason Helper [2141.68 h]; Carpenter [692.17 h] → SIC- Cost [272386]; Helper [1123.53 h]; Supervisor [128.18 h]; Mason [2118.88 h]; Mason Helper [2118.88 h]; Carpenter [684.8 h] |
| SDR-ST-CON-P3-1480 | Pouring Concrete for Slab on grade with exposed aggregate finish Part 2 | 2027-03-31 → 2027-03-24 (-7d) | 2027-04-04 → 2027-03-27 (-8d) |  | 8.9d → 2.9d | SDR-ST-CON-P3-1420 SS, SDR-ST-ENG-AP-1090, SDR-ST-MILS-1000 → SDR-ST-CON-P3-1420 SS, SDR-ST-MILS-1000 | resources SIC- Cost [272387]; Helper [1135.62 h]; Supervisor [129.56 h]; Mason [2141.68 h]; Mason Helper [2141.68 h]; Carpenter [129.56 h] → SIC- Cost [272387]; Helper [1123.53 h]; Supervisor [128.18 h]; Mason [2118.88 h]; Mason Helper [2118.88 h]; Carpenter [128.18 h] |
| SDR-ST-CON-P3-1490 | Pouring Concrete for Slab on grade with exposed aggregate finish Part 3 | 2027-03-31 → 2027-03-27 (-4d) | 2027-04-07 → 2027-04-01 (-6d) | 5.9d → 6d | 8.9d → 2.9d | SDR-ST-CON-P3-1480 SS, SDR-ST-MILS-1000 → SDR-ST-CON-P3-1480 SS+2d, SDR-ST-MILS-1000 | resources SIC- Cost [272387]; Helper [129.56 h]; Supervisor [28.79 h]; Mason [2141.68 h]; Mason Helper [2141.68 h]; Carpenter [129.56 h] → SIC- Cost [272387]; Helper [128.18 h]; Supervisor [28.49 h]; Mason [2118.88 h]; Mason Helper [2118.88 h]; Carpenter [128.18 h] |
| 3 | **Finishes & Architectural Works** | 2027-06-14 → 2027-05-24 (-21d) | 2027-08-06 → 2027-07-20 (-17d) |  |  |  |  |
| SDR-ST-CON-P3-1540 | Installation of metal steel 1200mm railing including all accessories Part 1 | 2027-06-14 → 2027-05-24 (-21d) | 2027-07-01 → 2027-06-09 (-22d) |  | 0.6d → 12d | SDR-ST-CON-P3-1400, SDR-ST-CON-P3-1490, SDR-ST-MILS-1000, SDR-ST-CON-P1-5430, SDR-ST-CON-P1-4070, SDR-ST-CON-P1-4320, SDR-ST-CON-P1-5460 SS+3d → SDR-ST-CON-P3-1400, SDR-ST-CON-P3-1490, SDR-ST-MILS-1000, SDR-ST-CON-P1-5430, SDR-ST-CON-P1-4070, SDR-ST-CON-P1-4320, SDR-ST-CON-P1-5460, SDR-ST-PRO-MS-1200, SDR-ST-CON-P3-1420, SDR-ST-CON-P3-1480 | resources SIC- Cost [210906]; Mason [2150.25 h]; Mason Helper [2294.21 h]; Steel Structure Subcontractor [10182.6 h]; Metal Fabricator [4163.72 h] → SIC- Cost [210906]; Mason [2127.36 h]; Mason Helper [2269.79 h]; Steel Structure Subcontractor [10074.2 h]; Metal Fabricator [4119.41 h] |
| SDR-ST-CON-P3-1590 | Installation of metal steel 1200mm railing including all accessories Part 2 | 2027-07-01 → 2027-06-10 (-21d) | 2027-07-19 → 2027-06-21 (-28d) | 15d → 10d | 0.6d → 12d | SDR-ST-CON-P3-1540, SDR-ST-MILS-1000, SDR-ST-CON-P1-5460, SDR-ST-CON-P1-3980 → SDR-ST-CON-P3-1540, SDR-ST-MILS-1000, SDR-ST-CON-P1-5460, SDR-ST-CON-P1-3980, SDR-ST-PRO-MS-1200 | resources SIC- Cost [210907]; Mason [143.96 h]; Mason Helper [143.96 h]; Steel Structure Subcontractor [151.16 h]; Metal Fabricator [151.16 h] → SIC- Cost [210907]; Mason [142.43 h]; Mason Helper [142.43 h]; Steel Structure Subcontractor [149.55 h]; Metal Fabricator [149.55 h] |
| SDR-ST-CON-P3-1640 | Installation of metal steel 1200mm railing including all accessories Part3 | 2027-07-19 → 2027-06-22 (-27d) | 2027-07-28 → 2027-06-30 (-28d) |  | 0.6d → 12d | SDR-ST-CON-P3-1590, SDR-ST-MILS-1000 → SDR-ST-CON-P3-1590, SDR-ST-MILS-1000, SDR-ST-PRO-MS-1200 | resources SIC- Cost [210907]; Mason [143.96 h]; Mason Helper [143.96 h]; Steel Structure Subcontractor [151.16 h]; Metal Fabricator [151.16 h] → SIC- Cost [210907]; Mason [142.43 h]; Mason Helper [142.43 h]; Steel Structure Subcontractor [149.55 h]; Metal Fabricator [149.55 h] |
| SDR-ST-CON-P3-1710 | Platform Paving & warning tiles | 2027-07-28 → 2027-07-11 (-17d) | 2027-08-02 → 2027-07-15 (-18d) |  | 0.6d → 3.9d | SDR-ST-CON-P3-1590, SDR-ST-CON-P3-1640, SDR-ST-MILS-1000 SS, SDR-ST-CON-P1-5920 SS → SDR-ST-CON-P3-1590, SDR-ST-CON-P3-1640, SDR-ST-MILS-1000, SDR-ST-CON-P1-5920 | resources SIC- Cost [46200]; Mason [136.76 h]; Mason Helper [136.76 h] → SIC- Cost [46200]; Mason [135.31 h]; Mason Helper [135.31 h] |
| SDR-ST-CON-P3-1760 | Painting Part 1 | 2027-07-31 → 2027-07-15 (-16d) | 2027-08-06 → 2027-07-20 (-17d) | 6d → 4d | 0.6d → 3.9d | SDR-ST-CON-P3-1710 FF+4d, SDR-ST-MILS-1000 → SDR-ST-CON-P3-1710, SDR-ST-MILS-1000 | resources SIC- Cost [143758]; Helper [151.16 h]; Supervisor [151.16 h]; Painter [151.16 h] → SIC- Cost [143758]; Helper [149.55 h]; Supervisor [149.55 h]; Painter [149.55 h] |
| SDR-ST-CON-P3-1840 | Painting Part 2 | 2027-07-31 → 2027-07-15 (-16d) | 2027-08-06 → 2027-07-20 (-17d) | 6d → 4d | 0.6d → 3.9d |  | resources SIC- Cost [143758]; Helper [151.16 h]; Supervisor [151.16 h]; Painter [151.16 h] → SIC- Cost [143758]; Helper [149.55 h]; Supervisor [149.55 h]; Painter [149.55 h] |
| 5 | **Platform Electrical Works** | 2027-03-14 → 2027-02-27 (-15d) | 2027-04-06 → 2027-03-25 (-12d) |  |  |  |  |
| SDR-ST-CON-P3-1310 | cable conduits | 2027-03-14 → 2027-02-27 (-15d) | 2027-04-06 → 2027-03-25 (-12d) |  | 9.8d → 2d | SDR-ST-CON-P3-1290, SDR-ST-MILS-1000 → SDR-ST-CON-P3-1290, SDR-ST-MILS-1000, SDR-ST-PRO-MS-1030 | resources SIC- Cost; Electrical Technician [201.21 h]; Electrical Helper [201.21 h] → SIC- Cost; Electrical Technician [199.07 h]; Electrical Helper [199.07 h] |
| 3 | **Canopy works** | 2026-11-19 → 2026-11-24 (+5d) |  |  |  |  |  |
| 1 | **Civil and Architectural Works** | 2026-11-19 → 2026-11-24 (+5d) | 2027-03-17 → 2027-01-20 (-56d) |  |  |  |  |
| 1 | **Concrete** | 2026-11-19 → 2026-11-24 (+5d) | 2027-03-17 → 2027-01-20 (-56d) |  |  |  |  |
| SDR-ST-CON-P3-1050 | Pouring Concrete under the foundation 100 mm thickness lean | 2026-11-19 → 2026-11-24 (+5d) | 2026-12-03 → 2026-12-08 (+5d) |  | 40.5d → 9d | SDR-ST-CON-P3-1060 SS+3d, SDR-ST-ENG-AP-1090, SDR-ST-MILS-1000 → SDR-ST-CON-P3-1060 SS+3d, SDR-ST-MILS-1000 | resources SIC- Cost [11200]; Civil Forman [38.39 h]; Labor [38.39 h]; charpenter [38.39 h]; Supervisor [38.39 h]; Mason [38.39 h]; Mason Helper [38.39 h] → SIC- Cost [11200]; Civil Forman [37.98 h]; Labor [37.98 h]; charpenter [37.98 h]; Supervisor [37.98 h]; Mason [37.98 h]; Mason Helper [37.98 h] |
| SDR-ST-CON-P3-1090 | Pouring Concrete for protecting waterproofing under the foundation 50 mm thickness | 2027-01-23 → 2026-12-15 (-39d) | 2027-02-06 → 2026-12-28 (-40d) |  | 3.01d → 14d | SDR-ST-CON-P3-1050, SDR-ST-CON-P3-1070, SDR-ST-PRO-MS-1050, SDR-ST-MILS-1000, SDR-ST-PRO-MS-1030, SDR-ST-PRO-MS-1020, SDR-ST-PRO-MS-1040 → SDR-ST-CON-P3-1050, SDR-ST-CON-P3-1070, SDR-ST-MILS-1000 | resources SIC- Cost [6720.01]; Civil Forman [38.39 h]; Labor [38.39 h]; charpenter [38.39 h]; Supervisor [38.39 h]; Mason [38.39 h]; Mason Helper [38.39 h] → SIC- Cost [6720.01]; Civil Forman [37.98 h]; Labor [37.98 h]; charpenter [37.98 h]; Supervisor [37.98 h]; Mason [37.98 h]; Mason Helper [37.98 h] |
| SDR-ST-CON-P3-1110 | Pouring Concrete for Footings | 2027-02-06 → 2026-12-29 (-39d) | 2027-03-01 → 2027-01-11 (-49d) |  | 3.01d → 14d | SDR-ST-CON-P3-1090, SDR-ST-PRO-MS-1110, SDR-ST-PRO-MS-1100, SDR-ST-PRO-MS-1080, SDR-ST-PRO-MS-1060, SDR-ST-PRO-MS-1120, SDR-ST-PRO-MS-1090, SDR-ST-PRO-MS-1070, SDR-ST-MILS-1000 → SDR-ST-CON-P3-1090, SDR-ST-MILS-1000 | resources SIC- Cost [95800.1]; Civil Forman [38.39 h]; Labor [38.39 h]; charpenter [38.39 h]; Supervisor [38.39 h]; Mason [38.39 h]; Mason Helper [38.39 h] → SIC- Cost [95800.1]; Civil Forman [37.98 h]; Labor [37.98 h]; charpenter [37.98 h]; Supervisor [37.98 h]; Mason [37.98 h]; Mason Helper [37.98 h] |
| SDR-ST-CON-P3-1140 | Pouring Concrete for Coulumns necks | 2027-03-01 → 2027-01-12 (-48d) | 2027-03-17 → 2027-01-20 (-56d) |  | 3.01d → 14d | SDR-ST-CON-P3-1110, SDR-ST-PRO-MS-1110, SDR-ST-PRO-MS-1120, SDR-ST-MILS-1000, SDR-ST-CON-P1-3670 → SDR-ST-CON-P3-1110, SDR-ST-MILS-1000, SDR-ST-CON-P1-3670 | resources SIC- Cost [52720]; Civil Forman [202.02 h]; Labor [202.02 h]; charpenter [202.02 h]; Supervisor [129.56 h]; Mason [202.02 h]; Mason Helper [202.02 h] → SIC- Cost [52720]; Civil Forman [199.87 h]; Labor [199.87 h]; charpenter [199.87 h]; Supervisor [128.18 h]; Mason [199.87 h]; Mason Helper [199.87 h] |
| 4 | **Metals** | 2026-12-05 → 2026-12-09 (+4d) |  |  |  |  |  |
| 2 | **Structural Steel Framing** | 2027-02-06 → 2027-01-11 (-26d) | 2027-06-29 → 2027-04-27 (-63d) |  |  |  |  |
| SDR-ST-CON-P3-1120 | Anchor Bolt Verification | 2027-02-06 → 2027-01-11 (-26d) | 2027-03-08 → 2027-01-28 (-39d) |  | 3.01d → 16d | SDR-ST-CON-P3-1110 SS, SDR-ST-ENG-AP-1090, SDR-ST-MILS-1000 → SDR-ST-CON-P3-1110 SS, SDR-ST-MILS-1000, SDR-ST-CON-P1-3480, SDR-ST-CON-P1-3360, SDR-ST-CON-P1-3700, SDR-ST-CON-P1-3940, SDR-ST-CON-P1-3670, SDR-ST-CON-P1-3810 | resources SIC- Cost [17969.8]; Mason [100.77 h]; Mason Helper [100.77 h] → SIC- Cost [17969.8]; Mason [99.7 h]; Mason Helper [99.7 h] |
| SDR-ST-CON-P3-1160 | Erection of Columns Part 1 | 2027-02-25 → 2027-01-31 (-25d) | 2027-03-29 → 2027-02-23 (-34d) |  | 3.01d → 15d | SDR-ST-CON-P3-1120 SS+10d, SDR-ST-PRO-MS-1140, SDR-ST-PRO-MS-1130, SDR-ST-PRO-MS-1110, SDR-ST-MILS-1000, SDR-ST-CON-P1-3670 → SDR-ST-CON-P3-1120, SDR-ST-MILS-1000, SDR-ST-CON-P1-3670, SDR-ST-CON-P1-4570 | resources SIC- Cost [161728]; Surveyor [136.76 h]; Helper [136.76 h]; charpenter [136.76 h]; Supervisor [136.76 h]; Mason [136.76 h]; Mason Helper [136.76 h] → SIC- Cost [161728]; Surveyor [135.31 h]; Helper [135.31 h]; charpenter [135.31 h]; Supervisor [135.31 h]; Mason [135.31 h]; Mason Helper [135.31 h] |
| SDR-ST-CON-P3-1260 | Erection of Rafters Part 1 | 2027-04-14 → 2027-02-10 (-63d) | 2027-05-02 → 2027-03-01 (-62d) |  | 0.7d → 10d | SDR-ST-CON-P3-1240, SDR-ST-MILS-1000, SDR-ST-PRO-MS-1160, SDR-ST-PRO-MS-1150 → SDR-ST-CON-P3-1240 FF, SDR-ST-MILS-1000, SDR-ST-CON-P1-2330, SDR-ST-CON-P1-5000, SDR-ST-CON-P1-4820, SDR-ST-CON-P1-4900, SDR-ST-CON-P1-5170, SDR-ST-CON-P1-5230 | resources SIC- Cost [125789]; Surveyor [129.56 h]; Helper [129.56 h]; charpenter [129.56 h]; Supervisor [129.56 h]; Mason [129.56 h]; Mason Helper [129.56 h] → SIC- Cost [125789]; Surveyor [128.18 h]; Helper [128.18 h]; charpenter [128.18 h]; Supervisor [128.18 h]; Mason [128.18 h]; Mason Helper [128.18 h] |
| SDR-ST-CON-P3-1280 | Erection of Rafters Part 2 | 2027-04-14 → 2027-02-13 (-60d) | 2027-05-02 → 2027-03-03 (-60d) |  | 0.7d → 10d | SDR-ST-CON-P3-1260 SS, SDR-ST-MILS-1000 → SDR-ST-CON-P3-1260 SS+2d, SDR-ST-MILS-1000, SDR-ST-CON-P1-5240, SDR-ST-CON-P1-2500, SDR-ST-PRO-MS-1240 | resources SIC- Cost [125789]; Surveyor [107.97 h]; Helper [107.97 h]; charpenter [107.97 h]; Supervisor [107.97 h]; Mason [107.97 h]; Mason Helper [107.97 h] → SIC- Cost [125789]; Surveyor [106.82 h]; Helper [106.82 h]; charpenter [106.82 h]; Supervisor [106.82 h]; Mason [106.82 h]; Mason Helper [106.82 h] |
| SDR-ST-CON-P3-1240 | Erection of Columns Part 2 | 2027-03-29 → 2027-02-14 (-43d) | 2027-04-11 → 2027-02-27 (-43d) |  | 3.01d → 12d | SDR-ST-CON-P3-1160, SDR-ST-MILS-1000, SDR-ST-CON-P1-5200, SDR-ST-CON-P1-5040 → SDR-ST-CON-P3-1160 FF, SDR-ST-MILS-1000, SDR-ST-CON-P1-5200 FS+1d, SDR-ST-CON-P1-5040 FS+1d, SDR-ST-CON-P1-4170, SDR-ST-CON-P1-4160, SDR-ST-CON-P1-4270, SDR-ST-CON-P1-4240, SDR-ST-CON-P1-4020, SDR-ST-CON-P1-4610, SDR-ST-CON-P1-5130, SDR-ST-CON-P1-3490 FF, SDR-ST-CON-P1-2330, SDR-ST-CON-P1-4160 FF | resources SIC- Cost [161728]; Surveyor [136.76 h]; Helper [136.76 h]; charpenter [136.76 h]; Supervisor [136.76 h]; Mason [136.76 h]; Mason Helper [136.76 h] → SIC- Cost [161728]; Surveyor [135.31 h]; Helper [135.31 h]; charpenter [135.31 h]; Supervisor [135.31 h]; Mason [135.31 h]; Mason Helper [135.31 h] |
| SDR-ST-CON-P3-1330 | Installation of Bracing System Part 1 | 2027-05-03 → 2027-03-04 (-60d) | 2027-05-25 → 2027-03-25 (-61d) |  | 28d → 17d | SDR-ST-CON-P3-1280, SDR-ST-MILS-1000, SDR-ST-CON-P1-5670, SDR-ST-CON-P1-5500, SDR-ST-CON-P1-5020, SDR-ST-CON-P1-4240 → SDR-ST-CON-P3-1280, SDR-ST-MILS-1000, SDR-ST-CON-P1-5670, SDR-ST-CON-P1-5500, SDR-ST-CON-P1-5020, SDR-ST-CON-P1-4240, SDR-ST-CON-P1-4700, SDR-ST-CON-P1-4840, SDR-ST-CON-P1-6200, SDR-ST-PRO-MS-1240, SDR-ST-CON-P3-1260 | resources SIC- Cost [107819]; Surveyor [129.56 h]; Helper [129.56 h]; charpenter [129.56 h]; Supervisor [129.56 h]; Mason [129.56 h]; Mason Helper [129.56 h] → SIC- Cost [107819]; Surveyor [128.18 h]; Helper [128.18 h]; charpenter [128.18 h]; Supervisor [128.18 h]; Mason [128.18 h]; Mason Helper [128.18 h] |
| SDR-ST-CON-P3-1340 | Installation of Beams Part 1 | 2027-05-03 → 2027-03-04 (-60d) | 2027-05-13 → 2027-03-20 (-54d) |  | 19d → 10d | SDR-ST-CON-P3-1280, SDR-ST-MILS-1000 → SDR-ST-CON-P3-1280, SDR-ST-MILS-1000, SDR-ST-CON-P1-4840, SDR-ST-CON-P1-6200, SDR-ST-PRO-MS-1240 | resources SIC- Cost [143758]; Surveyor [115.17 h]; Helper [115.17 h]; charpenter [115.17 h]; Supervisor [115.17 h]; Mason [2127.28 h]; Mason Helper [2127.28 h] → SIC- Cost [143758]; Surveyor [113.94 h]; Helper [113.94 h]; charpenter [113.94 h]; Supervisor [113.94 h]; Mason [2104.64 h]; Mason Helper [2104.64 h] |
| SDR-ST-CON-P3-1350 | Installation of Girders Part 1 | 2027-05-03 → 2027-03-16 (-48d) | 2027-05-31 → 2027-04-07 (-54d) |  | 0.7d → 13d | SDR-ST-CON-P3-1280, SDR-ST-MILS-1000, SDR-ST-TC-1010 SS+12d → SDR-ST-CON-P3-1280 SS, SDR-ST-MILS-1000, SDR-ST-TC-1010, SDR-ST-CON-P1-3170, SDR-ST-PRO-MS-1240 | resources SIC- Cost [89849]; Surveyor [100.77 h]; Helper [100.77 h]; charpenter [100.77 h]; Supervisor [100.77 h]; Mason [100.77 h]; Mason Helper [100.77 h] → SIC- Cost [89849]; Surveyor [99.7 h]; Helper [99.7 h]; charpenter [99.7 h]; Supervisor [99.7 h]; Mason [99.7 h]; Mason Helper [99.7 h] |
| SDR-ST-CON-P3-1440 | Installation of Girders Part 2 | 2027-06-01 → 2027-03-16 (-77d) | 2027-06-15 → 2027-03-29 (-78d) |  | 0.7d → 13d | SDR-ST-CON-P3-1350 FS+0.3d, SDR-ST-MILS-1000, SDR-ST-CON-P1-5800 → SDR-ST-CON-P3-1350 SS, SDR-ST-MILS-1000, SDR-ST-CON-P1-5800 SS, SDR-ST-CON-P1-3900 SS, SDR-ST-PRO-MS-1240 | resources SIC- Cost [89849]; Surveyor [100.77 h]; Helper [100.77 h]; charpenter [100.77 h]; Supervisor [100.77 h]; Mason [100.77 h]; Mason Helper [100.77 h] → SIC- Cost [89849]; Surveyor [99.7 h]; Helper [99.7 h]; charpenter [99.7 h]; Supervisor [99.7 h]; Mason [99.7 h]; Mason Helper [99.7 h] |
| SDR-ST-CON-P3-1390 | Installation of Beams Part 2 | 2027-05-22 → 2027-03-24 (-59d) | 2027-06-03 → 2027-04-06 (-58d) |  | 18d → 7d | SDR-ST-CON-P3-1340, SDR-ST-PRO-MS-1220 FF, SDR-ST-PRO-MS-1210, SDR-ST-MILS-1000, SDR-ST-CON-P1-5770, SDR-ST-CON-P1-5740, SDR-ST-CON-P1-5700 → SDR-ST-CON-P3-1340, SDR-ST-MILS-1000, SDR-ST-CON-P1-5770, SDR-ST-CON-P1-5740, SDR-ST-CON-P1-5700, SDR-ST-CON-P1-5100, SDR-ST-CON-P1-3180, SDR-ST-CON-P1-3170, SDR-ST-CON-P1-4780, SDR-ST-CON-P1-4870, SDR-ST-CON-P1-5730, SDR-ST-CON-P1-4910, SDR-ST-CON-P1-2430, SDR-ST-PRO-MS-1240 | resources SIC- Cost [143758]; Surveyor [115.17 h]; Helper [115.17 h]; charpenter [115.17 h]; Supervisor [115.17 h]; Mason [115.17 h]; Mason Helper [115.17 h] → SIC- Cost [143758]; Surveyor [113.94 h]; Helper [113.94 h]; charpenter [113.94 h]; Supervisor [113.94 h]; Mason [113.94 h]; Mason Helper [113.94 h] |
| SDR-ST-CON-P3-1410 | Installation of Bracing System Part 2 | 2027-05-26 → 2027-03-27 (-60d) | 2027-06-13 → 2027-04-13 (-61d) |  | 28d → 17d | SDR-ST-CON-P3-1330, SDR-ST-PRO-MS-1230, SDR-ST-MILS-1000 → SDR-ST-CON-P3-1330, SDR-ST-MILS-1000, SDR-ST-CON-P1-4520, SDR-ST-PRO-MS-1240 | resources SIC- Cost [107819]; Surveyor [129.56 h]; Helper [129.56 h]; charpenter [129.56 h]; Supervisor [129.56 h]; Mason [129.56 h]; Mason Helper [129.56 h] → SIC- Cost [107819]; Surveyor [128.18 h]; Helper [128.18 h]; charpenter [128.18 h]; Supervisor [128.18 h]; Mason [128.18 h]; Mason Helper [128.18 h] |
| SDR-ST-CON-P3-1450 | Installation of Joists Part 1 | 2027-06-15 → 2027-04-07 (-69d) | 2027-06-29 → 2027-04-20 (-70d) |  | 14.7d → 23d | SDR-ST-CON-P3-1390, SDR-ST-MILS-1000, SDR-ST-CON-P3-1440, SDR-ST-PRO-MS-1180, SDR-ST-PRO-MS-1170, SDR-ST-CON-P1-5070 → SDR-ST-CON-P3-1390, SDR-ST-MILS-1000, SDR-ST-CON-P3-1440, SDR-ST-CON-P1-5070, SDR-ST-CON-P1-3880, SDR-ST-PRO-MS-1240 | resources SIC- Cost [89849]; Surveyor [115.17 h]; Helper [115.17 h]; charpenter [115.17 h]; Supervisor [115.17 h]; Mason [115.17 h]; Mason Helper [115.17 h] → SIC- Cost [89849]; Surveyor [113.94 h]; Helper [113.94 h]; charpenter [113.94 h]; Supervisor [113.94 h]; Mason [113.94 h]; Mason Helper [113.94 h] |
| SDR-ST-CON-P3-1460 | Installation of Connections (Bolting) | 2027-06-06 → 2027-04-07 (-60d) | 2027-06-19 → 2027-04-20 (-60d) |  | 18d → 7d | SDR-ST-CON-P3-1390 FS+1d, SDR-ST-PRO-MS-1230, SDR-ST-MILS-1000 → SDR-ST-CON-P3-1390, SDR-ST-MILS-1000, SDR-ST-PRO-MS-1240 | resources SIC- Cost [53909.4]; Surveyor [143.96 h]; Helper [143.96 h]; charpenter [143.96 h]; Supervisor [143.96 h]; Mason [143.96 h]; Mason Helper [143.96 h] → SIC- Cost [53909.4]; Surveyor [142.43 h]; Helper [142.43 h]; charpenter [142.43 h]; Supervisor [142.43 h]; Mason [142.43 h]; Mason Helper [142.43 h] |
| SDR-ST-CON-P3-1470 | Installation of Joists Part 2 | 2027-06-15 → 2027-04-14 (-62d) | 2027-06-29 → 2027-04-27 (-63d) |  | 14.7d → 17d | SDR-ST-CON-P3-1450 SS, SDR-ST-ENG-AP-1090, SDR-ST-MILS-1000 → SDR-ST-CON-P3-1450 SS, SDR-ST-MILS-1000, SDR-ST-CON-P3-1410, SDR-ST-CON-P1-4040, SDR-ST-PRO-MS-1240 | resources SIC- Cost [89849]; Surveyor [115.17 h]; Helper [115.17 h]; charpenter [115.17 h]; Supervisor [115.17 h]; Mason [115.17 h]; Mason Helper [115.17 h] → SIC- Cost [89849]; Surveyor [113.94 h]; Helper [113.94 h]; charpenter [113.94 h]; Supervisor [113.94 h]; Mason [113.94 h]; Mason Helper [113.94 h] |
| 3 | **Aluminum Cladding Panels** | 2027-06-28 → 2027-04-28 (-61d) |  |  |  |  |  |
| 1 | **Steel Subframe Installation** | 2027-06-28 → 2027-04-28 (-61d) | 2027-07-27 → 2027-08-01 (+5d) |  |  |  |  |
| SDR-ST-CON-P3-1530 | Survey & Setting Out for Cladding | 2027-06-29 → 2027-04-28 (-62d) | 2027-07-08 → 2027-05-06 (-63d) |  | 14.7d → 17d | SDR-ST-CON-P3-1470, SDR-ST-CON-P3-1410, SDR-ST-CON-P3-1430, SDR-ST-PRO-MS-1240, SDR-ST-MILS-1000, SDR-ST-TC-1020, SDR-ST-CON-P1-4040, SDR-ST-CON-P1-3880, SDR-ST-CON-P1-4250 → SDR-ST-CON-P3-1470, SDR-ST-CON-P3-1410, SDR-ST-CON-P3-1430, SDR-ST-MILS-1000, SDR-ST-TC-1020, SDR-ST-CON-P1-4040, SDR-ST-CON-P1-3880, SDR-ST-CON-P1-4070, SDR-ST-CON-P1-4040 FF, SDR-ST-MILS-1090 | resources SIC- Cost [50280]; Surveyor [129.56 h] → SIC- Cost [50280]; Surveyor [128.18 h] |
| SDR-ST-CON-P3-1560 | Install Steel Subframe Supports Part 1 | 2027-06-28 → 2027-05-27 (-32d) | 2027-07-19 → 2027-06-16 (-33d) |  | 5.5d → 5d | SDR-ST-CON-P3-1530 FF, SDR-ST-MILS-1090 SS, SDR-ST-MILS-1000, SDR-ST-PRO-MS-1250, SDR-ST-CON-P1-4070, SDR-ST-CON-P1-5280 SS+2d, SDR-ST-CON-P1-5490 SS+2d → SDR-ST-CON-P3-1530, SDR-ST-MILS-1090, SDR-ST-MILS-1000, SDR-ST-CON-P1-4070, SDR-ST-CON-P1-5280, SDR-ST-CON-P1-5490, SDR-ST-CON-P1-3980 | resources SIC- Cost [234640]; Supervisor [143.96 h]; Steel Structure Subcontractor [431.88 h]; Carpenter [143.96 h]; Metal Fabricator [143.96 h]; Carpenter Helper [143.96 h] → SIC- Cost [234640]; Supervisor [142.43 h]; Steel Structure Subcontractor [427.28 h]; Carpenter [142.43 h]; Metal Fabricator [142.43 h]; Carpenter Helper [142.43 h] |
| SDR-ST-CON-P3-1620 | Install Steel Subframe Supports Part 2 | 2027-06-28 → 2027-06-17 (-11d) | 2027-07-19 → 2027-07-07 (-12d) |  | 5.5d → 5d | SDR-ST-CON-P3-1560 FF, SDR-ST-MILS-1000, SDR-ST-CON-P1-5460, SDR-ST-CON-P1-3980, SDR-ST-CON-P1-4050 → SDR-ST-CON-P3-1560, SDR-ST-MILS-1000, SDR-ST-CON-P1-5460, SDR-ST-CON-P1-3980, SDR-ST-CON-P1-4050, SDR-ST-CON-P1-5900 | resources SIC- Cost [234640]; Supervisor [143.96 h]; Steel Structure Subcontractor [431.88 h]; Carpenter [143.96 h]; Metal Fabricator [143.96 h]; Carpenter Helper [143.96 h] → SIC- Cost [234640]; Supervisor [142.43 h]; Steel Structure Subcontractor [427.28 h]; Carpenter [142.43 h]; Metal Fabricator [142.43 h]; Carpenter Helper [142.43 h] |
| SDR-ST-CON-P3-1690 | Install Steel Subframe Supports Part 3 | 2027-07-10 → 2027-07-08 (-2d) | 2027-07-25 → 2027-07-22 (-3d) |  | 9.5d → 5d | SDR-ST-CON-P3-1620 SS+10d, SDR-ST-MILS-1000 → SDR-ST-CON-P3-1620, SDR-ST-MILS-1000 | resources SIC- Cost [234640]; Supervisor [143.96 h]; Steel Structure Subcontractor [431.88 h]; Carpenter [143.96 h]; Metal Fabricator [143.96 h]; Carpenter Helper [143.96 h] → SIC- Cost [234640]; Supervisor [142.43 h]; Steel Structure Subcontractor [427.28 h]; Carpenter [142.43 h]; Metal Fabricator [142.43 h]; Carpenter Helper [142.43 h] |
| SDR-ST-CON-P3-1720 | Alignment & Leveling of Subframe Part 1 | 2027-07-10 → 2027-07-08 (-2d) | 2027-07-22 → 2027-07-20 (-2d) |  | 9.5d → 7d |  | resources SIC- Cost [125700]; Supervisor [143.96 h]; Steel Structure Subcontractor [431.88 h]; Carpenter [143.96 h]; Metal Fabricator [143.96 h]; Carpenter Helper [143.96 h] → SIC- Cost [125700]; Supervisor [142.43 h]; Steel Structure Subcontractor [427.28 h]; Carpenter [142.43 h]; Metal Fabricator [142.43 h]; Carpenter Helper [142.43 h] |
| SDR-ST-CON-P3-1770 | Alignment & Leveling of Subframe Part 2 | 2027-07-17 → 2027-07-24 (+7d) | 2027-07-26 → 2027-08-01 (+6d) |  | 9.5d → 5d | SDR-ST-CON-P3-1720 SS+6d, SDR-ST-MILS-1000 → SDR-ST-CON-P3-1720, SDR-ST-MILS-1000, SDR-ST-CON-P1-5980, SDR-ST-CON-P3-1690 | resources SIC- Cost [125700]; Supervisor [143.96 h]; Steel Structure Subcontractor [431.88 h]; Carpenter [143.96 h]; Metal Fabricator [143.96 h]; Carpenter Helper [143.96 h] → SIC- Cost [125700]; Supervisor [142.43 h]; Steel Structure Subcontractor [427.28 h]; Carpenter [142.43 h]; Metal Fabricator [142.43 h]; Carpenter Helper [142.43 h] |
| SDR-ST-CON-P3-1830 | Fixing & Tightening of Subframe Connections Part 1 | 2027-07-18 → 2027-07-24 (+6d) | 2027-07-27 → 2027-08-01 (+5d) |  | 9.5d → 5d | SDR-ST-CON-P3-1770 SS+1d, SDR-ST-MILS-1000 → SDR-ST-CON-P3-1770 SS, SDR-ST-MILS-1000 | resources SIC- Cost [125700]; Supervisor [143.96 h]; Steel Structure Subcontractor [431.88 h]; Carpenter [143.96 h]; Metal Fabricator [143.96 h]; Carpenter Helper [143.96 h] → SIC- Cost [125700]; Supervisor [142.43 h]; Steel Structure Subcontractor [427.28 h]; Carpenter [142.43 h]; Metal Fabricator [142.43 h]; Carpenter Helper [142.43 h] |
| SDR-ST-CON-P3-1880 | Fixing & Tightening of Subframe Connections Part 2 | 2027-07-19 → 2027-07-24 (+5d) | 2027-07-27 → 2027-07-31 (+4d) |  | 9.5d → 6d | SDR-ST-CON-P3-1830 FF, SDR-ST-MILS-1000 → SDR-ST-CON-P3-1830 SS, SDR-ST-MILS-1000 SS, SDR-ST-CON-P3-1760 | resources SIC- Cost [125700]; Supervisor [143.96 h]; Steel Structure Subcontractor [431.88 h]; Carpenter [143.96 h]; Metal Fabricator [143.96 h]; Carpenter Helper [143.96 h] → SIC- Cost [125700]; Supervisor [142.43 h]; Steel Structure Subcontractor [427.28 h]; Carpenter [142.43 h]; Metal Fabricator [142.43 h]; Carpenter Helper [142.43 h] |
| 2 | **Aluminum Cladding Installation** | 2027-06-28 → 2027-06-17 (-11d) | 2027-08-01 → 2027-07-21 (-11d) |  |  |  |  |
| SDR-ST-CON-P3-1610 | Install Aluminum Panels (4mm Thick Part 1 | 2027-06-28 → 2027-06-17 (-11d) | 2027-07-18 → 2027-07-04 (-14d) | 17d → 15d | 5.5d → 6d | SDR-ST-CON-P3-1620 SS, SDR-ST-ENG-AP-1090, SDR-ST-MILS-1000, SDR-ST-CON-P1-4320, SDR-ST-CON-P1-4010 → SDR-ST-CON-P3-1620 SS, SDR-ST-MILS-1000, SDR-ST-CON-P1-4320, SDR-ST-CON-P1-4010 | resources SIC- Cost [139666]; Steel Structure Subcontractor [431.88 h]; Carpenter [143.96 h]; Metal Fabricator [143.96 h]; Carpenter Helper [143.96 h]; Aluminum Cladding Subcontractor [143.96 h] → SIC- Cost [139666]; Steel Structure Subcontractor [427.28 h]; Carpenter [142.43 h]; Metal Fabricator [142.43 h]; Carpenter Helper [142.43 h]; Aluminum Cladding Subcontractor [142.43 h] |
| SDR-ST-CON-P3-1660 | Install Aluminum Panels (4mm Thick Part 2 | 2027-07-18 → 2027-06-21 (-27d) | 2027-08-01 → 2027-07-04 (-28d) |  | 5.5d → 6d | SDR-ST-CON-P3-1610, SDR-ST-MILS-1000 → SDR-ST-CON-P3-1610 FF, SDR-ST-MILS-1000 | resources SIC- Cost [139667]; Steel Structure Subcontractor [431.88 h]; Carpenter [143.96 h]; Metal Fabricator [143.96 h]; Carpenter Helper [143.96 h]; Aluminum Cladding Subcontractor [143.96 h] → SIC- Cost [139667]; Steel Structure Subcontractor [427.28 h]; Carpenter [142.43 h]; Metal Fabricator [142.43 h]; Carpenter Helper [142.43 h]; Aluminum Cladding Subcontractor [142.43 h] |
| SDR-ST-CON-P3-1700 | Install Aluminum Panels (4mm Thick Part 3 | 2027-07-18 → 2027-07-05 (-13d) | 2027-07-26 → 2027-07-12 (-14d) |  | 10.5d → 6d | SDR-ST-CON-P3-1660 SS, SDR-ST-MILS-1000 → SDR-ST-CON-P3-1660, SDR-ST-MILS-1000 | resources SIC- Cost [139667]; Steel Structure Subcontractor [431.88 h]; Carpenter [143.96 h]; Metal Fabricator [143.96 h]; Carpenter Helper [143.96 h]; Aluminum Cladding Subcontractor [143.96 h] → SIC- Cost [139667]; Steel Structure Subcontractor [427.28 h]; Carpenter [142.43 h]; Metal Fabricator [142.43 h]; Carpenter Helper [142.43 h]; Aluminum Cladding Subcontractor [142.43 h] |
| SDR-ST-CON-P3-1730 | Fix Panels with Snap Hooks & Fasteners Part 1 | 2027-07-19 → 2027-07-05 (-14d) | 2027-07-26 → 2027-07-11 (-15d) |  | 10.5d → 6d | SDR-ST-CON-P3-1700 FF, SDR-ST-MILS-1000 → SDR-ST-CON-P3-1700 SS, SDR-ST-MILS-1000 | resources SIC- Cost [41900]; Steel Structure Subcontractor [431.88 h]; Carpenter [143.96 h]; Metal Fabricator [143.96 h]; Carpenter Helper [143.96 h]; Aluminum Cladding Subcontractor [143.96 h] → SIC- Cost [41900]; Steel Structure Subcontractor [427.28 h]; Carpenter [142.43 h]; Metal Fabricator [142.43 h]; Carpenter Helper [142.43 h]; Aluminum Cladding Subcontractor [142.43 h] |

| ID | Task | Start | Finish | Duration | Total float | Predecessors | Other |
| --- | --- | --- | --- | --- | --- | --- | --- |
| SDR-ST-CON-P3-1750 | Fix Panels with Snap Hooks & Fasteners Part 2 | 2027-07-19 → 2027-07-11 (-8d) | 2027-07-25 → 2027-07-17 (-8d) |  | 11.5d → 2.9d | SDR-ST-CON-P3-1730 SS, SDR-ST-CON-P1-5920 FF, SDR-ST-MILS-1000 → SDR-ST-CON-P3-1730 SS, SDR-ST-CON-P1-5920, SDR-ST-MILS-1000 | resources SIC- Cost [41900]; Steel Structure Subcontractor [431.88 h]; Carpenter [143.96 h]; Metal Fabricator [143.96 h]; Carpenter Helper [143.96 h]; Aluminum Cladding Subcontractor [143.96 h] → SIC- Cost [41900]; Steel Structure Subcontractor [427.28 h]; Carpenter [142.43 h]; Metal Fabricator [142.43 h]; Carpenter Helper [142.43 h]; Aluminum Cladding Subcontractor [142.43 h] |
| SDR-ST-CON-P3-1810 | Install Drainage System Part 1 | 2027-07-19 → 2027-07-11 (-8d) | 2027-07-24 → 2027-07-15 (-9d) |  | 12.4d → 2.9d |  | resources SIC- Cost [41900]; Steel Structure Subcontractor [431.88 h]; Carpenter [143.96 h]; Metal Fabricator [143.96 h]; Carpenter Helper [143.96 h]; Aluminum Cladding Subcontractor [143.96 h] → SIC- Cost [41900]; Steel Structure Subcontractor [427.28 h]; Carpenter [142.43 h]; Metal Fabricator [142.43 h]; Carpenter Helper [142.43 h]; Aluminum Cladding Subcontractor [142.43 h] |
| SDR-ST-CON-P3-1820 | Install Drainage System Part 2 | 2027-07-19 → 2027-07-11 (-8d) | 2027-07-24 → 2027-07-15 (-9d) |  | 12.4d → 6.9d | SDR-ST-CON-P3-1810 SS, SDR-ST-ENG-AP-1090, SDR-ST-MILS-1000 → SDR-ST-CON-P3-1810 SS, SDR-ST-MILS-1000 | resources SIC- Cost [41900]; Steel Structure Subcontractor [431.88 h]; Carpenter [143.96 h]; Metal Fabricator [143.96 h]; Carpenter Helper [143.96 h]; Aluminum Cladding Subcontractor [143.96 h] → SIC- Cost [41900]; Steel Structure Subcontractor [427.28 h]; Carpenter [142.43 h]; Metal Fabricator [142.43 h]; Carpenter Helper [142.43 h]; Aluminum Cladding Subcontractor [142.43 h] |
| SDR-ST-CON-P3-1850 | Adjustment & Alignment of Panels Part 1 | 2027-07-20 → 2027-07-13 (-7d) | 2027-07-24 → 2027-07-15 (-9d) |  | 12.4d → 5d | SDR-ST-CON-P3-1820 FF, SDR-ST-CON-P1-6000, SDR-ST-MILS-1000 → SDR-ST-CON-P3-1820 SS, SDR-ST-CON-P1-6000, SDR-ST-MILS-1000, SDR-ST-CON-P3-1730 | resources SIC- Cost [83800.1]; Steel Structure Subcontractor [431.88 h]; Carpenter [143.96 h]; Metal Fabricator [143.96 h]; Carpenter Helper [143.96 h]; Aluminum Cladding Subcontractor [143.96 h] → SIC- Cost [83800.1]; Steel Structure Subcontractor [427.28 h]; Carpenter [142.43 h]; Metal Fabricator [142.43 h]; Carpenter Helper [142.43 h]; Aluminum Cladding Subcontractor [142.43 h] |
| SDR-ST-CON-P3-1860 | Adjustment & Alignment of Panels Part 2 | 2027-07-20 → 2027-07-13 (-7d) | 2027-07-24 → 2027-07-15 (-9d) |  | 12.4d → 5d | SDR-ST-CON-P3-1850 FF, SDR-ST-MILS-1000 → SDR-ST-CON-P3-1850 SS, SDR-ST-MILS-1000 | resources SIC- Cost [83800.1]; Steel Structure Subcontractor [431.88 h]; Carpenter [143.96 h]; Metal Fabricator [143.96 h]; Carpenter Helper [143.96 h]; Aluminum Cladding Subcontractor [143.96 h] → SIC- Cost [83800.1]; Steel Structure Subcontractor [427.28 h]; Carpenter [142.43 h]; Metal Fabricator [142.43 h]; Carpenter Helper [142.43 h]; Aluminum Cladding Subcontractor [142.43 h] |
| SDR-ST-CON-P3-1890 | Sealant & Finishing Works | 2027-07-19 → 2027-07-15 (-4d) | 2027-07-24 → 2027-07-21 (-3d) | 4.6d → 5d | 12.4d → 2.9d | SDR-ST-CON-P3-1860 FF, SDR-ST-MILS-1000 → SDR-ST-CON-P3-1860 SS, SDR-ST-MILS-1000, SDR-ST-CON-P3-1810, SDR-ST-CON-P3-1850 SS | resources SIC- Cost [83800.1]; Steel Structure Subcontractor [431.88 h]; Carpenter [143.96 h]; Metal Fabricator [143.96 h]; Carpenter Helper [143.96 h]; Aluminum Cladding Subcontractor [143.96 h] → SIC- Cost [83800.1]; Steel Structure Subcontractor [427.28 h]; Carpenter [142.43 h]; Metal Fabricator [142.43 h]; Carpenter Helper [142.43 h]; Aluminum Cladding Subcontractor [142.43 h] |
| 1 | **THERMAL & MOISTURE PROTECTION** | 2026-12-05 → 2026-12-09 (+4d) | 2027-03-23 → 2027-01-27 (-55d) |  |  |  |  |
| 1 | **Bituminous Sheet Waterproofing** | 2026-12-05 → 2026-12-09 (+4d) | 2027-03-23 → 2027-01-27 (-55d) |  |  |  |  |
| SDR-ST-CON-P3-1070 | Provide and lay 2 layers of waterproofing bitumenous membrane 4mm below footings | 2026-12-05 → 2026-12-09 (+4d) | 2026-12-09 → 2026-12-14 (+5d) |  | 40.5d → 9d |  | resources SIC- Cost [15180]; Plumbing Helper [100.77 h]; Plumber [100.77 h] → SIC- Cost [15180]; Plumbing Helper [99.7 h]; Plumber [99.7 h] |
| SDR-ST-CON-P3-1170 | Provide and lay 2 layers of waterproofing bitumenous membrane 4mm in contact with soil | 2027-03-17 → 2027-01-23 (-53d) | 2027-03-23 → 2027-01-27 (-55d) |  | 3.01d → 13d | SDR-ST-CON-P3-1140, SDR-ST-CON-P1-3480, SDR-ST-CON-P1-3360, SDR-ST-CON-P1-3700, SDR-ST-CON-P1-3930, SDR-ST-CON-P1-3760, SDR-ST-CON-P1-3670, SDR-ST-CON-P1-3810, SDR-ST-MILS-1000, SDR-ST-CON-P3-1190, SDR-ST-CON-P3-1230, SDR-ST-CON-P3-1220 → SDR-ST-CON-P3-1140, SDR-ST-CON-P1-3480, SDR-ST-CON-P1-3360, SDR-ST-CON-P1-3700, SDR-ST-CON-P1-3930, SDR-ST-CON-P1-3760, SDR-ST-CON-P1-3670, SDR-ST-CON-P1-3810, SDR-ST-MILS-1000, SDR-ST-CON-P3-1190, SDR-ST-CON-P3-1230, SDR-ST-CON-P3-1220, SDR-ST-PRO-MS-1070 | resources SIC- Cost [77520.1]; Plumbing Helper [202.02 h]; Plumber [202.02 h] → SIC- Cost [77520.1]; Plumbing Helper [199.87 h]; Plumber [199.87 h] |
| 4 | **Electrical Works** | 2027-05-26 → 2027-01-02 (-144d) | 2027-08-06 → 2027-07-28 (-9d) |  |  |  |  |
| 1 | **Low-Voltage Electrical Power Conductors and Cables** | 2027-05-26 → 2027-04-14 (-42d) | 2027-06-15 → 2027-05-03 (-43d) |  |  |  |  |
| SDR-ST-CON-P3-1510 | Installtion and test low voltage cable including pulling of cable 600/1000V . | 2027-05-26 → 2027-04-14 (-42d) | 2027-06-15 → 2027-05-03 (-43d) |  | 5.7d → 7d | SDR-ST-CON-P3-1440 FF, SDR-ST-MILS-1000 → SDR-ST-CON-P3-1440, SDR-ST-MILS-1000, SDR-ST-TC-1020 | resources SIC- Cost [36000]; Electrical Forman [71.98 h]; Electrical Technician [201.21 h]; Electrical Helper [201.21 h]; Labor [201.21 h] → SIC- Cost [36000]; Electrical Forman [71.21 h]; Electrical Technician [199.07 h]; Electrical Helper [199.07 h]; Labor [199.07 h] |
| 2 | **Ondoor Lighting Points** | 2027-06-07 → 2027-05-04 (-34d) | 2027-07-01 → 2027-06-02 (-29d) |  |  |  |  |
| SDR-ST-CON-P3-1580 | Install, test, and commission all necessary components for outdoor lighting points. | 2027-06-07 → 2027-05-04 (-34d) | 2027-07-01 → 2027-06-02 (-29d) |  | 5.7d → 7d | SDR-ST-CON-P3-1510 SS+10d, SDR-ST-PRO-MS-1250, SDR-ST-MILS-1000 → SDR-ST-CON-P3-1510, SDR-ST-MILS-1000 | resources SIC- Cost [62010.1]; Electrical Forman [97.38 h]; Electrical Technician [97.38 h]; Electrical Helper [97.38 h]; Labor [97.38 h] → SIC- Cost [62010.1]; Electrical Forman [96.35 h]; Electrical Technician [96.35 h]; Electrical Helper [96.35 h]; Labor [96.35 h] |
| 3 | **Outdoor Lighting Fixtures** | 2027-07-01 → 2027-06-05 (-26d) | 2027-08-06 → 2027-06-27 (-40d) |  |  |  |  |
| SDR-ST-CON-P3-1630 | Install of L10 recessed in ceiling light, lenght1535mmxwidth75mmxhieght105mm, LED 53.2w Part 1 | 2027-07-01 → 2027-06-05 (-26d) | 2027-07-25 → 2027-06-27 (-28d) |  | 5.7d → 7d | SDR-ST-CON-P3-1580, SDR-ST-MILS-1000, SDR-ST-CON-P1-4050 → SDR-ST-CON-P3-1580 FS+1d, SDR-ST-MILS-1000, SDR-ST-CON-P1-4050, SDR-ST-PRO-MS-1170 | resources SIC- Cost [76245.1]; Electrical Forman [71.98 h]; Electrical Technician [5278.52 h]; Electrical Helper [5278.52 h]; Labor [5278.52 h] → SIC- Cost [76245.1]; Electrical Forman [71.21 h]; Electrical Technician [5222.34 h]; Electrical Helper [5222.34 h]; Labor [5222.34 h] |
| SDR-ST-CON-P3-1650 | Install of L10 recessed in ceiling light, lenght1535mmxwidth75mmxhieght105mm, LED 53.2w Part 2 | 2027-07-14 → 2027-06-05 (-39d) | 2027-08-06 → 2027-06-27 (-40d) |  | 0.5d → 7d | SDR-ST-CON-P3-1630 SS+6d, SDR-ST-ENG-AP-1090, SDR-ST-MILS-1000, SDR-ST-TC-1000 → SDR-ST-CON-P3-1630 SS, SDR-ST-MILS-1000, SDR-ST-TC-1000, SDR-ST-PRO-MS-1170 | resources SIC- Cost [76245.1]; Electrical Forman [71.98 h]; Electrical Technician [143.96 h]; Electrical Helper [143.96 h]; Labor [143.96 h] → SIC- Cost [76245.1]; Electrical Forman [71.21 h]; Electrical Technician [142.43 h]; Electrical Helper [142.43 h]; Labor [142.43 h] |
| 4 | **CCTV** | 2027-06-15 → 2027-01-02 (-164d) | 2027-08-06 → 2027-07-28 (-9d) |  |  |  |  |
| SDR-ST-CON-P3-1780 | Install of 5MP IP PoE Bullet Camera, outdoor mounted on canopy ceiling Part 1. | 2027-07-24 → 2027-01-02 (-203d) | 2027-08-06 → 2027-01-14 (-204d) |  | 0.5d → 149d | SDR-ST-CON-P3-1740 FF, SDR-ST-MILS-1000 → SDR-ST-MILS-1000 SS, SDR-ST-PRO-MS-1160, SDR-ST-PRO-MS-1090 | resources SIC- Cost [106936]; Electrical Forman [143.96 h]; Electrical Technician [143.96 h]; Electrical Helper [143.96 h]; Labor [143.96 h] → SIC- Cost [106936]; Electrical Forman [142.43 h]; Electrical Technician [142.43 h]; Electrical Helper [142.43 h]; Labor [142.43 h] |
| SDR-ST-CON-P3-1520 | Install of Handhole (600x600x730mm) | 2027-06-15 → 2027-04-11 (-65d) | 2027-06-24 → 2027-04-19 (-66d) |  | 0.7d → 3d | SDR-ST-CON-P3-1440, SDR-ST-CON-P1-5790, SDR-ST-MILS-1000 → SDR-ST-CON-P3-1440, SDR-ST-CON-P1-5790, SDR-ST-MILS-1000, SDR-ST-CO-1030 SS, SDR-ST-MILS-1090 | resources SIC- Cost [2418]; Electrical Forman [57.58 h]; Electrical Technician [57.58 h]; Electrical Helper [57.58 h]; Labor [57.58 h] → SIC- Cost [2418]; Electrical Forman [56.97 h]; Electrical Technician [56.97 h]; Electrical Helper [56.97 h]; Labor [56.97 h] |
| SDR-ST-CON-P3-1550 | Install of 2 core 9/125um indoor -outdoor central tube | 2027-06-24 → 2027-04-20 (-65d) | 2027-07-07 → 2027-05-02 (-66d) |  | 0.7d → 3d |  | resources SIC- Cost [11760]; Electrical Forman [79.18 h]; Electrical Technician [79.18 h]; Electrical Helper [79.18 h]; Labor [79.18 h] → SIC- Cost [11760]; Electrical Forman [78.34 h]; Electrical Technician [78.34 h]; Electrical Helper [78.34 h]; Labor [78.34 h] |
| SDR-ST-CON-P3-1570 | Install of 4 Port (2 duplex) LC/UPC OS2 fiber patch panel | 2027-07-07 → 2027-05-03 (-65d) | 2027-07-21 → 2027-05-22 (-60d) |  | 0.7d → 3d | SDR-ST-CON-P3-1550, SDR-ST-MILS-1000 → SDR-ST-CON-P3-1550, SDR-ST-MILS-1000, SDR-ST-PRO-MS-1040 | resources SIC- Cost [16004]; Electrical Forman [86.38 h]; Electrical Technician [120.73 h]; Electrical Helper [120.73 h]; Labor [120.73 h] → SIC- Cost [16004]; Electrical Forman [85.46 h]; Electrical Technician [119.44 h]; Electrical Helper [119.44 h]; Labor [119.44 h] |
| SDR-ST-CON-P3-1600 | Install of Pole mounted Filed Equipment cabinet (FEC) , with fan and ventilation | 2027-07-14 → 2027-05-24 (-51d) | 2027-08-06 → 2027-06-15 (-52d) |  | 0.7d → 2d | SDR-ST-CON-P3-1570 SS+6d, SDR-ST-MILS-1000, SDR-ST-CON-P1-5430 → SDR-ST-CON-P3-1570, SDR-ST-MILS-1000, SDR-ST-CON-P1-5430, SDR-ST-PRO-MS-1060 | resources SIC- Cost [29768]; Electrical Forman [143.96 h]; Electrical Technician [143.96 h]; Electrical Helper [143.96 h]; Labor [143.96 h] → SIC- Cost [29768]; Electrical Forman [142.43 h]; Electrical Technician [142.43 h]; Electrical Helper [142.43 h]; Labor [142.43 h] |
| SDR-ST-CON-P3-1670 | Install of 8 Port Industrial PoE Switch 10/1000BaseT | 2027-07-19 → 2027-06-16 (-33d) | 2027-08-06 → 2027-07-01 (-36d) | 16d → 14d | 0.7d → 4d | SDR-ST-CON-P3-1600 FF, SDR-ST-CON-P1-5850, SDR-ST-MILS-1000 → SDR-ST-CON-P3-1600, SDR-ST-CON-P1-5850, SDR-ST-MILS-1000 | resources SIC- Cost [20488]; Electrical Forman [143.96 h]; Electrical Technician [143.96 h]; Electrical Helper [143.96 h]; Labor [143.96 h] → SIC- Cost [20488]; Electrical Forman [142.43 h]; Electrical Technician [142.43 h]; Electrical Helper [142.43 h]; Labor [142.43 h] |
| SDR-ST-CON-P3-1680 | Install of 1.2KVA Industrial type UPS located at FEC | 2027-07-19 → 2027-06-16 (-33d) | 2027-08-06 → 2027-07-04 (-33d) |  | 0.7d → 2d | SDR-ST-CON-P3-1600 FF, SDR-ST-MILS-1000, SDR-ST-CO-1010 → SDR-ST-CON-P3-1600, SDR-ST-MILS-1000, SDR-ST-CO-1010 | resources SIC- Cost [32012]; Electrical Forman [100.77 h]; Electrical Technician [100.77 h]; Electrical Helper [100.77 h]; Labor [100.77 h] → SIC- Cost [32012]; Electrical Forman [99.7 h]; Electrical Technician [99.7 h]; Electrical Helper [99.7 h]; Labor [99.7 h] |
| SDR-ST-CON-P3-1740 | Install of UTP CAT6 Patch Cord , connect the industrial switch with the cameras | 2027-07-29 → 2027-07-05 (-24d) | 2027-08-06 → 2027-07-12 (-25d) |  | 0.5d → 2d | SDR-ST-CON-P3-1680 SS, SDR-ST-CON-P3-1670 SS, SDR-ST-CON-P3-1650 FF, SDR-ST-MILS-1000, SDR-ST-CON-P1-5920 FF → SDR-ST-CON-P3-1680, SDR-ST-CON-P3-1670, SDR-ST-CON-P3-1650 FS+1d, SDR-ST-MILS-1000, SDR-ST-CON-P1-5920 FF, SDR-ST-PRO-MS-1160 | resources SIC- Cost [896]; Electrical Forman [71.98 h]; Electrical Technician [100.61 h]; Electrical Helper [100.61 h]; Labor [100.61 h] → SIC- Cost [896]; Electrical Forman [71.21 h]; Electrical Technician [99.54 h]; Electrical Helper [99.54 h]; Labor [99.54 h] |
| SDR-ST-CON-P3-1790 | Install of 5MP IP PoE Bullet Camera, outdoor mounted on canopy ceiling Part 2. | 2027-07-21 → 2027-07-13 (-8d) | 2027-08-06 → 2027-07-28 (-9d) |  | 0.5d → 8d | SDR-ST-CON-P3-1740 FF, SDR-ST-MILS-1000 → SDR-ST-CON-P3-1740, SDR-ST-MILS-1000, SDR-ST-PRO-MS-1160 | resources SIC- Cost [106936]; Electrical Forman [143.96 h]; Electrical Technician [143.96 h]; Electrical Helper [143.96 h]; Labor [143.96 h] → SIC- Cost [106936]; Electrical Forman [142.43 h]; Electrical Technician [142.43 h]; Electrical Helper [142.43 h]; Labor [142.43 h] |
| 5 | **Voice Evacuation System** | 2027-07-28 → 2027-07-05 (-23d) | 2027-08-06 → 2027-07-13 (-24d) |  |  |  |  |
| SDR-ST-CON-P3-1800 | install, test of Suspended ceiling outdoor projector speaker, bi-directional, 20w Part 1 | 2027-07-28 → 2027-07-05 (-23d) | 2027-08-06 → 2027-07-13 (-24d) |  | 0.5d → 1d | SDR-ST-CON-P3-1740 FF, SDR-ST-CON-P1-5910, SDR-ST-CON-P1-5980, SDR-ST-CON-P1-5970, SDR-ST-MILS-1000 → SDR-ST-CON-P3-1740 FF, SDR-ST-CON-P1-5910, SDR-ST-CON-P1-5980 SS, SDR-ST-CON-P1-5970 FF, SDR-ST-MILS-1000, SDR-ST-PRO-MS-1150 | resources SIC- Cost [61312.1]; Electrical Forman [143.96 h]; Electrical Technician [2207.38 h]; Electrical Helper [2207.38 h]; Labor [2207.38 h] → SIC- Cost [61312.1]; Electrical Forman [142.43 h]; Electrical Technician [2183.89 h]; Electrical Helper [2183.89 h]; Labor [2183.89 h] |
| SDR-ST-CON-P3-1870 | install, test of Suspended ceiling outdoor projector speaker, bi-directional, 20w Part 2 | 2027-07-28 → 2027-07-05 (-23d) | 2027-08-06 → 2027-07-13 (-24d) |  | 0.5d → 1d | SDR-ST-CON-P3-1800 SS, SDR-ST-CON-P3-1780 SS, SDR-ST-CON-P3-1650 FF, SDR-ST-MILS-1000 → SDR-ST-CON-P3-1800 FF, SDR-ST-CON-P3-1780 SS, SDR-ST-CON-P3-1650, SDR-ST-MILS-1000, SDR-ST-PRO-MS-1150 | resources SIC- Cost [61312.1]; Electrical Forman [143.96 h]; Electrical Technician [143.96 h]; Electrical Helper [143.96 h]; Labor [143.96 h] → SIC- Cost [61312.1]; Electrical Forman [142.43 h]; Electrical Technician [142.43 h]; Electrical Helper [142.43 h]; Labor [142.43 h] |
| 6 | **Testing and Comissioning** | 2027-03-29 → 2027-02-21 (-36d) | 2027-08-06 → 2027-08-02 (-4d) |  |  |  |  |
| 1 | **Civil Works** | 2027-06-27 → 2027-05-23 (-35d) | 2027-07-14 → 2027-06-01 (-43d) |  |  |  |  |
| SDR-ST-TC-1000 | Testing & Commissioning of road works | 2027-06-27 → 2027-05-23 (-35d) | 2027-07-14 → 2027-06-01 (-43d) | 15d → 9d | 0.5d → 9d | SDR-ST-CON-P1-5530 → SDR-ST-CON-P1-5530 FS+1d | resources SIC- Cost; Civil Engineer [1061.45 h]; Civil Forman [1061.45 h] → SIC- Cost; Civil Engineer [1096.85 h]; Civil Forman [1096.85 h] |
| 2 | **Storm Water Drainage Network** | 2027-04-15 → 2027-02-21 (-53d) | 2027-05-03 → 2027-03-15 (-49d) |  |  |  |  |
| SDR-ST-TC-1010 | Testing & Commissioning of network work | 2027-04-15 → 2027-02-21 (-53d) | 2027-05-03 → 2027-03-15 (-49d) |  | 3.01d → 13d |  | resources SIC- Cost; Mechanical Forman [1061.45 h]; Mechanical Engineer [1061.45 h] → SIC- Cost; Mechanical Forman [1096.85 h]; Mechanical Engineer [1096.85 h] |
| 3 | **Sewerage Network** | 2027-03-29 → 2027-03-22 (-7d) | 2027-04-15 → 2027-04-07 (-8d) |  |  |  |  |
| SDR-ST-TC-1030 | Testing & Commissioning of Sewage Network | 2027-03-29 → 2027-03-22 (-7d) | 2027-04-15 → 2027-04-07 (-8d) |  | 44.8d → 13d | SDR-ST-CON-P1-5700, SDR-ST-CON-P1-5800 → SDR-ST-CON-P1-5700, SDR-ST-CON-P1-5800 FS+5d | resources SIC- Cost; Civil Forman [1061.45 h]; Architecture [1061.45 h] → SIC- Cost; Civil Forman [1096.85 h]; Architecture [1096.85 h] |
| 5 | **Portable Water** | 2027-04-01 → 2027-03-28 (-4d) | 2027-04-19 → 2027-04-13 (-6d) |  |  |  |  |
| SDR-ST-TC-1020 | Testing & Commissioning of Potable Network | 2027-04-01 → 2027-03-28 (-4d) | 2027-04-19 → 2027-04-13 (-6d) |  | 70.8d → 7d | SDR-ST-CON-P1-5030, SDR-ST-CON-P1-5070 → SDR-ST-CON-P1-5030 FS+1d, SDR-ST-CON-P1-5070 | resources SIC- Cost; Mechanical Forman [1061.45 h]; Mechanical Engineer [1061.45 h] → SIC- Cost; Mechanical Forman [1096.87 h]; Mechanical Engineer [1096.87 h] |
| 6 | **Electrical Works** | 2027-07-12 → 2027-07-15 (+3d) | 2027-07-29 → 2027-08-02 (+4d) |  |  |  |  |
| SDR-ST-TC-1050 | Testing & Commissioning of Electrical Network | 2027-07-12 → 2027-07-15 (+3d) | 2027-07-29 → 2027-08-02 (+4d) |  | 7.5d → 4.9d | SDR-ST-CON-P1-6050 FF → SDR-ST-CON-P1-6050, SDR-ST-CON-P3-1890 SS | resources SIC- Cost; Electrical Engineer [2122.91 h] → SIC- Cost; Electrical Engineer [2193.7 h] |
| 8 | **CCTV Works** | 2027-07-21 → 2027-07-13 (-8d) | 2027-08-06 → 2027-07-28 (-9d) |  |  |  |  |
| SDR-ST-TC-1040 | Testing & Commissioning of medium voltage works | 2027-07-21 → 2027-07-13 (-8d) | 2027-08-06 → 2027-07-28 (-9d) |  | 0.5d → 8d | SDR-ST-CON-P3-1790 FF → SDR-ST-CON-P3-1790 SS, SDR-ST-CON-P3-1800 SS, SDR-ST-CON-P3-1870 SS | resources SIC- Cost; Electrical Forman [2122.91 h] → SIC- Cost; Electrical Forman [2193.7 h] |
| 7 | **Close Out** | 2027-03-31 → 2027-03-16 (-15d) | 2027-08-06 → 2027-08-05 (-1d) |  |  |  |  |
| 1 | **As Built Drawings** | 2027-03-31 → 2027-03-16 (-15d) | 2027-08-03 → 2027-08-01 (-2d) |  |  |  |  |
| 1 | **Civil** | 2027-06-19 → 2027-05-22 (-28d) | 2027-07-03 → 2027-06-01 (-32d) |  |  |  |  |
| SDR-ST-CO-1000 | Civil As-Built Drawing Submission | 2027-06-19 → 2027-05-22 (-28d) | 2027-06-27 → 2027-05-26 (-32d) | 7d → 5d | 3.5d → 2d | SDR-ST-CON-P1-5530 FF → SDR-ST-CON-P1-5530 | resources Civil Engineer [291.67 h]; Civil Drafman [291.67 h] → Civil Engineer [301.39 h]; Civil Drafman [301.39 h] |
| SDR-ST-CO-1010 | Civil As-Built Drawing Approvals | 2027-06-27 → 2027-05-27 (-31d) | 2027-07-03 → 2027-06-01 (-32d) |  | 3.5d → 2d |  | resources Civil Engineer [291.67 h]; Civil Forman [291.67 h] → Civil Engineer [301.39 h]; Civil Forman [301.39 h] |
| 2 | **Mechanical** | 2027-03-31 → 2027-03-16 (-15d) | 2027-04-19 → 2027-04-18 (-1d) |  |  |  |  |
| SDR-ST-CO-1020 | Mechanical As-Built Drawing Submission | 2027-03-31 → 2027-03-16 (-15d) | 2027-04-10 → 2027-03-23 (-18d) | 7.9d → 7d | 52.9d → 3d |  | resources Mechanical Drafman [291.65 h]; Mechanical Engineer [291.65 h] → Mechanical Drafman [301.39 h]; Mechanical Engineer [301.39 h] |
| SDR-ST-CO-1030 | Mechanical As-Built Drawing Approvals | 2027-04-10 → 2027-04-11 (+1d) | 2027-04-19 → 2027-04-18 (-1d) | 8d → 7d | 52.9d → 3d | SDR-ST-CO-1020 → SDR-ST-CO-1020 FS+15d | resources Mechanical Forman [291.65 h]; Mechanical Engineer [291.65 h] → Mechanical Forman [301.39 h]; Mechanical Engineer [301.39 h] |
| 3 | **Electrical** | 2027-07-22 → 2027-07-10 (-12d) | 2027-08-03 → 2027-08-01 (-2d) |  |  |  |  |
| SDR-ST-CO-1040 | Electrical As-Built Drawing Submission | 2027-07-24 → 2027-07-10 (-14d) | 2027-08-03 → 2027-07-19 (-15d) |  | 3.5d → 4d |  | resources Electrical Drafman [583.33 h] → Electrical Drafman [602.78 h] |
| SDR-ST-CO-1100 | Electrical As-Built Drawing Approvals | 2027-07-22 → 2027-07-21 (-1d) | 2027-08-03 → 2027-08-01 (-2d) |  | 3.5d → 4d | SDR-ST-CO-1040 FF → SDR-ST-CO-1040 FS+1d | resources Electrical Engineer [291.67 h]; Electrical Forman [291.67 h] → Electrical Engineer [301.39 h]; Electrical Forman [301.39 h] |
| 2 | **Training and Manuals** |  | 2027-08-06 → 2027-08-05 (-1d) |  |  |  |  |
| SDR-ST-CO-1050 | Training and Manuals |  | 2027-08-06 → 2027-08-05 (-1d) | 26.8d → 27d | 0.5d → 1d | SDR-ST-CON-P3-1870 FF, SDR-ST-CON-P3-1630 FF → SDR-ST-CON-P3-1870 SS+1d, SDR-ST-CON-P3-1630 | resources Civil Engineer [194.44 h]; Mechanical Engineer [194.44 h]; Architecture [194.44 h] → Civil Engineer [200.93 h]; Mechanical Engineer [200.93 h]; Architecture [200.93 h] |
| 3 | **Demobilize Manpower** |  | 2027-08-06 → 2027-08-05 (-1d) |  |  |  |  |
| SDR-ST-CO-1060 | Manpower Demobilize |  | 2027-08-06 → 2027-08-05 (-1d) | 26.8d → 27d | 0.5d → 1d |  | resources Labor [291.67 h]; Architecture [291.67 h] → Labor [301.39 h]; Architecture [301.39 h] |
| 4 | **Demobilize Equipment** |  | 2027-08-06 → 2027-08-05 (-1d) |  |  |  |  |
| SDR-ST-CO-1070 | Equipments Demobilize |  | 2027-08-06 → 2027-08-05 (-1d) | 26.8d → 27d | 0.5d → 1d |  | resources Mechanical Forman [291.67 h]; Helper [291.67 h] → Mechanical Forman [301.39 h]; Helper [301.39 h] |
| 5 | **Removal of Site Offices and Structures** |  | 2027-08-06 → 2027-08-05 (-1d) |  |  |  |  |
| SDR-ST-CO-1090 | Site Office Removal |  | 2027-08-06 → 2027-08-05 (-1d) | 26.8d → 27d | 0.5d → 1d |  | resources Helper [291.67 h]; Labor [291.67 h] → Helper [301.4 h]; Labor [301.4 h] |
| 6 | **Handover** | 2027-07-22 → 2027-07-24 (+2d) | 2027-08-06 → 2027-08-05 (-1d) |  |  |  |  |
| SDR-ST-CO-1080 | Project Handover | 2027-07-22 → 2027-07-24 (+2d) | 2027-08-06 → 2027-08-05 (-1d) | 13d → 12d | 0.5d → 1d | SDR-ST-CO-1070 SS, SDR-ST-CO-1090 SS, SDR-ST-CON-P3-1890 FF, SDR-ST-CON-P3-1880 FF, SDR-ST-CON-P3-1840 FF, SDR-ST-CON-P1-6030 FF, SDR-ST-CON-P1-6000, SDR-ST-CO-1100 FF, SDR-ST-MILS-1100, SDR-ST-MILS-1120 FF, SDR-ST-TC-1000 FF, SDR-ST-TC-1040 SS, SDR-ST-CON-P1-5980, SDR-ST-CON-P1-6040 FF, SDR-ST-TC-1050 FF → SDR-ST-CO-1070 SS, SDR-ST-CO-1090 FF, SDR-ST-CON-P3-1890, SDR-ST-CON-P3-1880 FF, SDR-ST-CON-P3-1840, SDR-ST-CON-P1-6030, SDR-ST-CON-P1-6040 SS, SDR-ST-CON-P1-6000, SDR-ST-CO-1100 FF+1d, SDR-ST-TC-1050 FF, SDR-ST-MILS-1100, SDR-ST-MILS-1120 FF, SDR-ST-TC-1000 FF, SDR-ST-TC-1040 FF, SDR-ST-CON-P1-5980, SDR-ST-CON-P1-6040 | resources Civil Engineer [83.33 h]; Civil Forman [83.33 h]; Electrical Forman [83.33 h]; Mechanical Forman [83.33 h]; Helper [83.33 h]; Labor [83.33 h]; Mechanical Engineer [83.33 h] → Civil Engineer [86.11 h]; Civil Forman [86.11 h]; Electrical Forman [86.11 h]; Mechanical Forman [86.11 h]; Helper [86.11 h]; Labor [86.11 h]; Mechanical Engineer [86.11 h] |

## Version 4 (data date 2026-10-19, saved 2026-10-20, file SUD1-05-018-= SAR Actual Update 20-10-2026.xer)

Note of the change: Renumber project folders 01–23 in order (after removing projects 12 and 25)

Last finish 2027-08-05 → 2027-08-08 (+3d). Complete tasks 202 → 223.

Changed:

| ID | Task | Start | Finish | Complete | Total float | Predecessors |
| --- | --- | --- | --- | --- | --- | --- |
| 1 | **Milestone** |  | 2027-08-05 → 2027-08-06 (+1d) |  |  |  |
| SDR-ST-MILS-1070 | Completion of road and paving works | 2027-01-13 → 2027-01-20 (+7d) | 2027-01-13 → 2027-01-20 (+7d) |  |  |  |
| SDR-ST-MILS-1100 | Completion of site and platform works | 2027-04-01 → 2027-04-10 (+9d) | 2027-04-01 → 2027-04-10 (+9d) |  | 92d → 96d |  |
| SDR-ST-MILS-1140 | Project Finish | 2027-08-05 → 2027-08-06 (+1d) | 2027-08-05 → 2027-08-06 (+1d) |  | 1d → 0d | SDR-ST-CO-1080, SDR-ST-CO-1090, SDR-ST-CON-P1-4790, SDR-ST-CON-P1-4710, SDR-ST-CON-P1-4830, SDR-ST-CON-P1-5120, SDR-ST-CON-P1-5440, SDR-ST-CON-P3-1890, SDR-ST-MILS-1110 FF, SDR-ST-TC-1040, SDR-ST-CO-1050, SDR-ST-CO-1070, SDR-ST-TC-1050, SDR-ST-CON-P3-1780 → SDR-ST-CO-1080 SS, SDR-ST-CO-1090 SS, SDR-ST-CON-P1-4790, SDR-ST-CON-P1-4710, SDR-ST-CON-P1-4830, SDR-ST-CON-P1-5120, SDR-ST-CON-P1-5440, SDR-ST-CON-P3-1890, SDR-ST-MILS-1110 FF, SDR-ST-TC-1040, SDR-ST-CO-1050 SS, SDR-ST-CO-1070 SS, SDR-ST-TC-1050 SS, SDR-ST-CON-P3-1780, SDR-ST-CO-1080, SDR-ST-CO-1090, SDR-ST-CO-1050, SDR-ST-CO-1070, SDR-ST-TC-1050 |
| SDR-ST-MILS-1120 | Project Finish Milstone |  |  |  |  | SDR-ST-MILS-1130, SDR-ST-CO-1060 FF → SDR-ST-MILS-1130, SDR-ST-CO-1060 SS, SDR-ST-CO-1060 FF |
| 3 | **Contractual Milestone** |  | 2027-07-31 → 2027-08-05 (+5d) |  |  |  |
| SDR-ST-MILS-1080 | Completion of road works | 2027-01-14 → 2027-01-21 (+7d) | 2027-01-14 → 2027-01-21 (+7d) |  | 108d → 116d |  |
| SDR-ST-MILS-1060 | Completion of medium voltage works | 2027-05-25 → 2027-05-26 (+1d) | 2027-05-25 → 2027-05-26 (+1d) |  | 2.9d → 7d | SDR-ST-CON-P1-3900 FF, SDR-ST-CON-P1-4000 FF, SDR-ST-CON-P1-4250 FF, SDR-ST-CON-P1-4010 FF, SDR-ST-CON-P1-4320 FF, SDR-ST-CON-P1-4050 FF, SDR-ST-CON-P1-3980 FF → SDR-ST-CON-P1-3900 FF, SDR-ST-CON-P1-4000 FF, SDR-ST-CON-P1-4250 SS, SDR-ST-CON-P1-4010 FF, SDR-ST-CON-P1-4320 FF, SDR-ST-CON-P1-4050 FF, SDR-ST-CON-P1-3980 FF, SDR-ST-CON-P1-4250 FF |
| SDR-ST-MILS-1130 | Completion of finishing works in the project | 2027-07-31 → 2027-08-05 (+5d) | 2027-07-31 → 2027-08-05 (+5d) |  | 6d → 1d | SDR-ST-CON-P1-5490 FF, SDR-ST-CON-P1-5280 FF, SDR-ST-CON-P1-5460 FF, SDR-ST-CON-P1-5390 FF, SDR-ST-CON-P1-5430 FF, SDR-ST-CON-P1-5530 FF, SDR-ST-CON-P1-3900 FF, SDR-ST-CON-P1-4000 FF, SDR-ST-CON-P1-4250 FF, SDR-ST-CON-P1-4010 FF, SDR-ST-CON-P1-4320 FF, SDR-ST-CON-P1-4050 FF, SDR-ST-CON-P1-3980 FF, SDR-ST-CON-P1-5170 FF, SDR-ST-CON-P1-5760 FF, SDR-ST-CON-P1-6080 FF, SDR-ST-CON-P1-5790 FF, SDR-ST-CON-P1-3810 FF, SDR-ST-CON-P1-3670 FF, SDR-ST-CON-P1-3760 FF, SDR-ST-CON-P1-3930 FF, SDR-ST-CON-P1-5920 FF, SDR-ST-CON-P1-6000 FF, SDR-ST-CON-P1-6040 FF, SDR-ST-CON-P1-6050 FF, SDR-ST-CON-P1-4570 FF, SDR-ST-CON-P1-4400 FF, SDR-ST-CON-P1-4610 FF, SDR-ST-CON-P1-3700 FF, SDR-ST-CON-P1-3360 FF, SDR-ST-CON-P1-3480 FF, SDR-ST-CON-P1-5970 FF, SDR-ST-CON-P1-5980 FF, SDR-ST-CON-P1-5910 FF, SDR-ST-CON-P1-6030 FF, SDR-ST-CON-P1-4310 FF, SDR-ST-CON-P1-4880 FF, SDR-ST-CON-P1-4370 FF, SDR-ST-CON-P1-5140 FF, SDR-ST-CON-P1-4020 FF, SDR-ST-CON-P1-4740 FF, SDR-ST-CON-P1-4240 FF, SDR-ST-CON-P1-5240 FF, SDR-ST-CON-P1-4270 FF, SDR-ST-CON-P1-4900 FF, SDR-ST-CON-P1-4160 FF, SDR-ST-CON-P1-4820 FF, SDR-ST-CON-P1-4170 FF, SDR-ST-CON-P1-5000 FF, SDR-ST-CON-P1-3880 FF, SDR-ST-CON-P1-4040 FF, SDR-ST-CON-P1-4070 FF, SDR-ST-CON-P1-4800 FF, SDR-ST-CON-P1-5030 FF, SDR-ST-CON-P1-4700 FF, SDR-ST-CON-P1-5100 FF, SDR-ST-CON-P1-4520 FF, SDR-ST-CON-P1-5070 FF, SDR-ST-CON-P1-4910 FF, SDR-ST-CON-P1-5730 FF, SDR-ST-CON-P1-4640 FF, SDR-ST-CON-P1-5710 FF, SDR-ST-CON-P1-4660 FF, SDR-ST-CON-P1-5750 FF, SDR-ST-CON-P1-5570 FF, SDR-ST-CON-P1-5720 FF, SDR-ST-CON-P1-4970 FF, SDR-ST-CON-P1-5700 FF, SDR-ST-CON-P1-5020 FF, SDR-ST-CON-P1-5740 FF, SDR-ST-CON-P1-5500 FF, SDR-ST-CON-P1-5770 FF, SDR-ST-CON-P1-5670 FF, SDR-ST-CON-P1-5800 FF, SDR-ST-CON-P1-4760 FF, SDR-ST-CON-P3-1840 FF, SDR-ST-CON-P3-1140 FF, SDR-ST-CON-P3-1450 FF, SDR-ST-CON-P3-1880 FF, SDR-ST-CON-P3-1890 FF, SDR-ST-CON-P3-1170 FF, SDR-ST-CON-P3-1790 FF, SDR-ST-CON-P3-1870 FF → SDR-ST-CON-P1-5490 FF, SDR-ST-CON-P1-5280 FF, SDR-ST-CON-P1-5460 FF, SDR-ST-CON-P1-5390 FF, SDR-ST-CON-P1-5430 FF, SDR-ST-CON-P1-5530 FF, SDR-ST-CON-P1-3900 FF, SDR-ST-CON-P1-4000 FF, SDR-ST-CON-P1-4250 FF, SDR-ST-CON-P1-4010 FF, SDR-ST-CON-P1-4320 FF, SDR-ST-CON-P1-4050 FF, SDR-ST-CON-P1-3980 FF, SDR-ST-CON-P1-5170 FF, SDR-ST-CON-P1-5760 FF, SDR-ST-CON-P1-6080 FF, SDR-ST-CON-P1-5790 FF, SDR-ST-CON-P1-3810 FF, SDR-ST-CON-P1-3670 FF, SDR-ST-CON-P1-3760 FF, SDR-ST-CON-P1-3930 FF, SDR-ST-CON-P1-5920 FF, SDR-ST-CON-P1-6000 FF, SDR-ST-CON-P1-6040 FF, SDR-ST-CON-P1-6050 FF, SDR-ST-CON-P1-4570 FF, SDR-ST-CON-P1-4400 FF, SDR-ST-CON-P1-4610 FF, SDR-ST-CON-P1-3700 FF, SDR-ST-CON-P1-3360 FF, SDR-ST-CON-P1-3480 FF, SDR-ST-CON-P1-5970 FF, SDR-ST-CON-P1-5980 FF, SDR-ST-CON-P1-5910 FF, SDR-ST-CON-P1-6030 FF, SDR-ST-CON-P1-4310 FF, SDR-ST-CON-P1-4880 FF, SDR-ST-CON-P1-4370 FF, SDR-ST-CON-P1-5140 FF, SDR-ST-CON-P1-4020 FF, SDR-ST-CON-P1-4740 FF, SDR-ST-CON-P1-4240 FF, SDR-ST-CON-P1-5240 FF, SDR-ST-CON-P1-4270 FF, SDR-ST-CON-P1-4900 FF, SDR-ST-CON-P1-4160 FF, SDR-ST-CON-P1-4820 FF, SDR-ST-CON-P1-4170 FF, SDR-ST-CON-P1-5000 FF, SDR-ST-CON-P1-3880 FF, SDR-ST-CON-P1-4040 FF, SDR-ST-CON-P1-4070 FF, SDR-ST-CON-P1-4800 FF, SDR-ST-CON-P1-5030 FF, SDR-ST-CON-P1-4700 FF, SDR-ST-CON-P1-5100 FF, SDR-ST-CON-P1-4520 FF, SDR-ST-CON-P1-5070 FF, SDR-ST-CON-P1-4910 FF, SDR-ST-CON-P1-5730 FF, SDR-ST-CON-P1-4640 FF, SDR-ST-CON-P1-5710 FF, SDR-ST-CON-P1-4660 FF, SDR-ST-CON-P1-5750 FF, SDR-ST-CON-P1-5570 FF, SDR-ST-CON-P1-5720 FF, SDR-ST-CON-P1-4970 FF, SDR-ST-CON-P1-5700 FF, SDR-ST-CON-P1-5020 FF, SDR-ST-CON-P1-5740 FF, SDR-ST-CON-P1-5500 FF, SDR-ST-CON-P1-5770 FF, SDR-ST-CON-P1-5670 FF, SDR-ST-CON-P1-5800 FF, SDR-ST-CON-P1-4760 FF, SDR-ST-CON-P3-1840 FF, SDR-ST-CON-P3-1140 FF, SDR-ST-CON-P3-1450 FF, SDR-ST-CON-P3-1880 FF, SDR-ST-CON-P3-1890 SS, SDR-ST-CON-P3-1170 FF, SDR-ST-CON-P3-1790 FF, SDR-ST-CON-P3-1870 FF |
| 2 | **Phases Milestone** | 2026-10-13 → 2026-10-20 (+7d) | 2027-07-28 → 2027-08-02 (+5d) |  |  |  |
| SDR-ST-MILS-1050 | Engineering Phase Finish Milestone | 2026-10-13 → 2026-10-20 (+7d) | 2026-10-13 → 2026-10-20 (+7d) |  | 41d → 65d |  |
| SDR-ST-MILS-1090 | Procurment Phase Finish Milestone | 2027-02-25 → 2027-03-04 (+7d) | 2027-02-25 → 2027-03-04 (+7d) |  | 36d → 59d |  |
| SDR-ST-MILS-1110 | Construction Phase Finish Milestone | 2027-07-28 → 2027-08-02 (+5d) | 2027-07-28 → 2027-08-02 (+5d) |  | 8d → 5d | SDR-ST-CON-P1-6050, SDR-ST-CON-P1-6040, SDR-ST-CON-P3-1890 FF, SDR-ST-CON-P3-1790 → SDR-ST-CON-P1-6050, SDR-ST-CON-P1-6040, SDR-ST-CON-P3-1890 SS, SDR-ST-CON-P3-1790 |
| 3 | **Engineering** |  | 2026-10-21 → 2026-10-28 (+7d) |  |  |  |
| 5 | **Shop Drawings Stage** |  | 2026-10-13 → 2026-10-20 (+7d) |  |  |  |
| 4 | **Approvals** |  | 2026-10-13 → 2026-10-20 (+7d) |  |  |  |
| 9 | **Electrical** |  | 2026-10-13 → 2026-10-20 (+7d) |  |  |  |
| SDR-ST-ENG-AP-1130 | Medium Voltage Network Approval | 2026-10-12 → 2026-10-19 (+7d) | 2026-10-13 → 2026-10-20 (+7d) |  | 26.2d → 27.2d |  |
| SDR-ST-ENG-AP-1140 | Standard Details Medium Voltage Approval | 2026-10-12 → 2026-10-19 (+7d) | 2026-10-13 → 2026-10-20 (+7d) |  | 26.2d → 27.2d |  |
| 6 | **Materials** |  | 2026-10-21 → 2026-10-28 (+7d) |  |  |  |
| 5 | **Materials Submission** |  | 2026-10-19 → 2026-10-26 (+7d) |  |  |  |
| 1 | **Long Lead Items** |  | 2026-10-19 → 2026-10-26 (+7d) |  |  |  |
| 3 | **Electrical** |  | 2026-10-19 → 2026-10-26 (+7d) |  |  |  |
| SDR-ST-PRO-S-1110 | MEDIUM VOLTAGE CABLES DUCT BANKS | 2026-09-14 A → 2026-10-19 (+35d) | 2026-10-19 → 2026-10-26 (+7d) |  |  |  |
| SDR-ST-PRO-S-1120 | MEDIUM VOLTAGE CABLES | 2026-09-14 A → 2026-10-19 (+35d) | 2026-10-19 → 2026-10-26 (+7d) |  | 21.2d → 22.2d |  |
| SDR-ST-PRO-S-1130 | SUB-STATION | 2026-09-14 A → 2026-10-19 (+35d) | 2026-10-19 → 2026-10-26 (+7d) |  | 36d → 60d |  |
| 6 | **Materials Approval** |  | 2026-10-21 → 2026-10-28 (+7d) |  |  |  |
| 2 | **Short Lead Items** |  | 2026-10-18 → 2026-10-25 (+7d) |  |  |  |
| 3 | **Electrical** |  | 2026-10-18 → 2026-10-25 (+7d) |  |  |  |
| SDR-ST-PRO-A-1170 | CCTV :5MP IP PoE Bullet Camera |  | 2026-10-18 → 2026-10-25 (+7d) |  | 82d → 106d |  |
| SDR-ST-PRO-A-1180 | CCTV :Pole mounted Filed Equipment cabinet (FE |  | 2026-10-18 → 2026-10-25 (+7d) |  | 82d → 106d |  |
| 1 | **Long Lead Items** |  | 2026-10-21 → 2026-10-28 (+7d) |  |  |  |
| 3 | **Electrical** |  | 2026-10-21 → 2026-10-28 (+7d) |  |  |  |
| SDR-ST-PRO-A-1200 | MEDIUM VOLTAGE CABLES DUCT BANKS | 2026-10-20 → 2026-10-27 (+7d) | 2026-10-21 → 2026-10-28 (+7d) |  |  |  |
| SDR-ST-PRO-A-1210 | MEDIUM VOLTAGE CABLES | 2026-10-20 → 2026-10-27 (+7d) | 2026-10-20 → 2026-10-27 (+7d) |  | 21.2d → 22.2d |  |
| SDR-ST-PRO-A-1220 | SUB-STATION | 2026-10-20 → 2026-10-27 (+7d) | 2026-10-21 → 2026-10-28 (+7d) |  | 36d → 60d |  |
| 4 | **Procurement** |  | 2027-02-25 → 2027-03-04 (+7d) |  |  |  |
| 5 | **Purchase Order** |  | 2026-11-10 → 2026-11-17 (+7d) |  |  |  |
| 4 | **Short Lead Items** |  | 2026-11-03 → 2026-11-10 (+7d) |  |  |  |
| 1 | **Civil** | 2026-10-12 → 2026-09-28 (-14d) | 2026-11-03 → 2026-11-10 (+7d) |  |  |  |
| SDR-ST-PRO-PO-1260 | Steel Bars | 2026-10-12 → 2026-09-28 A (-14d) | 2026-10-22 → 2026-10-19 (-3d) | 0% → 25% | 24d → 34d |  |
| SDR-ST-PRO-PO-1030 | Waterproofing (Thermal & moisture Protection) | 2026-10-12 → 2026-10-19 A (+7d) | 2026-11-03 → 2026-11-10 A (+7d) | 0% → 100% | 26d → none |  |
| SDR-ST-PRO-PO-1040 | Interlock | 2026-10-12 → 2026-10-19 (+7d) | 2026-10-25 → 2026-11-01 (+7d) |  |  |  |
| SDR-ST-PRO-PO-1060 | Kerbstone | 2026-10-12 → 2026-10-19 A (+7d) | 2026-10-22 → 2026-10-29 A (+7d) | 0% → 100% | 44d → none |  |
| SDR-ST-PRO-PO-1270 | Asphalt | 2026-10-12 → 2026-10-19 A (+7d) | 2026-10-22 → 2026-10-29 A (+7d) | 0% → 100% | 72d → none |  |
| 3 | **Electrical** |  | 2026-10-29 → 2026-11-05 (+7d) |  |  |  |
| SDR-ST-PRO-PO-1070 | STREET LIGHTING FEEDER Panel |  | 2026-10-12 → 2026-10-19 (+7d) |  | 27d → 28d |  |
| SDR-ST-PRO-PO-1130 | LOW VOLTAGE DISTRIBUTION Panel |  | 2026-10-12 → 2026-10-19 (+7d) |  | 112d → 136d |  |
| SDR-ST-PRO-PO-1110 | STREET LIGHTING CABLES |  | 2026-10-12 → 2026-10-19 (+7d) |  | 83d → 91d |  |
| SDR-ST-PRO-PO-1020 | Drawpits | 2026-10-12 → 2026-10-19 (+7d) | 2026-10-22 → 2026-10-29 (+7d) |  | 19d → 30d |  |
| SDR-ST-PRO-PO-1220 | VOICE EVACUATION SYSTEM | 2026-10-12 → 2026-10-19 (+7d) | 2026-10-22 → 2026-10-29 (+7d) |  | 88d → 112d |  |
| SDR-ST-PRO-PO-1050 | CCTV :Pole mounted Filed Equipment cabinet | 2026-10-19 → 2026-10-26 (+7d) | 2026-10-29 → 2026-11-05 (+7d) |  | 82d → 106d |  |
| SDR-ST-PRO-PO-1230 | CCTV :5MP IP PoE Bullet Camera | 2026-10-19 → 2026-10-26 (+7d) | 2026-10-29 → 2026-11-05 (+7d) |  | 82d → 106d |  |
| 2 | **Mechanical** |  | 2026-10-22 → 2026-10-29 (+7d) |  |  |  |
| SDR-ST-PRO-PO-1090 | GI GOOSENECK & VENT | 2026-10-12 → 2026-10-19 (+7d) | 2026-10-22 → 2026-10-29 (+7d) |  | 90d → 114d |  |
| SDR-ST-PRO-PO-1140 | MANHOLE, CATCH BASIN & VALVE BOX COVER | 2026-10-12 → 2026-10-19 (+7d) | 2026-10-22 → 2026-10-29 (+7d) |  | 52d → 54d |  |
| 5 | **Long Lead Items** |  | 2026-11-10 → 2026-11-17 (+7d) |  |  |  |
| 1 | **Civil** | 2026-10-12 → 2026-10-19 (+7d) | 2026-11-10 → 2026-11-17 (+7d) |  |  |  |
| SDR-ST-PRO-PO-1150 | Metal railing for platform | 2026-10-12 → 2026-10-19 (+7d) | 2026-11-10 → 2026-11-17 (+7d) |  | 40d → 64d |  |
| SDR-ST-PRO-PO-1240 | Canopy | 2026-10-12 → 2026-10-19 (+7d) | 2026-10-27 → 2026-11-03 (+7d) |  |  |  |
| 3 | **Electrical** |  | 2026-11-07 → 2026-11-14 (+7d) |  |  |  |
| SDR-ST-PRO-PO-1200 | LIGHTING POLES |  | 2026-10-12 → 2026-10-19 (+7d) |  | 67d → 68d |  |
| SDR-ST-PRO-PO-1180 | Outdoor Lighting Fixtures | 2026-10-12 → 2026-10-19 (+7d) | 2026-10-27 → 2026-11-03 (+7d) |  | 60d → 84d |  |
| SDR-ST-PRO-PO-1210 | STREET LIGHTING LUMINAIRE | 2026-10-12 → 2026-10-19 (+7d) | 2026-10-27 → 2026-11-03 (+7d) |  | 26d → 27d |  |
| SDR-ST-PRO-PO-1170 | MEDIUM VOLTAGE CABLES | 2026-10-21 → 2026-10-28 (+7d) | 2026-11-07 → 2026-11-14 (+7d) |  | 21.2d → 22.2d |  |
| SDR-ST-PRO-PO-1160 | MEDIUM VOLTAGE CABLES DUCT BANKS | 2026-10-22 → 2026-10-29 (+7d) | 2026-11-07 → 2026-11-14 (+7d) |  |  |  |
| SDR-ST-PRO-PO-1250 | SUB-STATION | 2026-10-22 → 2026-10-29 (+7d) | 2026-11-07 → 2026-11-14 (+7d) |  | 36d → 60d |  |
| 2 | **Mechanical** | 2026-10-12 → 2026-10-19 (+7d) | 2026-10-27 → 2026-11-03 (+7d) |  |  |  |
| SDR-ST-PRO-PO-1190 | WASHOUT & AIR VALVE, GATE VALVE, BUTTERFLY VALVE | 2026-10-12 → 2026-10-19 (+7d) | 2026-10-27 → 2026-11-03 (+7d) |  | 60d → 61d |  |
| 6 | **Delivery to Site** |  | 2027-02-20 → 2027-02-28 (+8d) |  |  |  |

| ID | Task | Start | Finish | Complete | Total float |
| --- | --- | --- | --- | --- | --- |
| 2 | **Short Lead Items Delivery** |  | 2027-01-09 → 2027-01-16 (+7d) |  |  |
| 1 | **Civil** | 2026-10-12 → 2026-10-19 (+7d) | 2027-01-09 → 2027-01-16 (+7d) |  |  |
| SDR-ST-PRO-DL-1030 | Waterproofing (Thermal & moisture Protection) | 2026-11-04 → 2026-10-19 A (-16d) | 2027-01-02 → 2026-12-17 (-16d) | 0% → 75% | 31d → 67d |
| SDR-ST-PRO-DL-1060 | Kerbstone | 2026-10-12 → 2026-10-19 (+7d) | 2026-12-10 → 2026-12-17 (+7d) |  | 3d → 11d |
| SDR-ST-PRO-DL-1260 | Steel Bars | 2026-10-23 → 2026-10-19 A (-4d) | 2026-12-21 → 2026-12-17 (-4d) | 0% → 25% | 28d → 40d |
| SDR-ST-PRO-DL-1270 | Asphalt | 2026-10-12 → 2026-10-19 A (+7d) | 2027-01-09 → 2027-01-16 (+7d) | 0% → 10% |  |
| SDR-ST-PRO-DL-1040 | Interlock | 2026-11-02 → 2026-11-09 (+7d) | 2026-12-23 → 2026-12-30 (+7d) |  |  |
| 3 | **Electrical** |  | 2026-12-28 → 2027-01-04 (+7d) |  |  |
| SDR-ST-PRO-DL-1100 | LOW VOLTAGE CABLES |  | 2026-12-01 → 2026-12-08 (+7d) |  | 119d → 112d |
| SDR-ST-PRO-DL-1010 | ROAD CROSSING DUCTS Ø110mm | 2026-10-12 → 2026-10-19 (+7d) | 2026-11-09 → 2026-11-16 (+7d) |  | 37.9d → 38.9d |
| SDR-ST-PRO-DL-1020 | Drawpits | 2026-10-12 → 2026-10-19 (+7d) | 2026-11-10 → 2026-11-17 (+7d) |  | 4d → 17d |
| SDR-ST-PRO-DL-1110 | STREET LIGHTING CABLES | 2026-10-15 → 2026-10-22 (+7d) | 2026-11-18 → 2026-11-25 (+7d) |  | 97d → 106d |
| SDR-ST-PRO-DL-1130 | LOW VOLTAGE DISTRIBUTION Panel | 2026-10-15 → 2026-10-22 (+7d) | 2026-11-23 → 2026-11-30 (+7d) |  | 131d → 159d |
| SDR-ST-PRO-DL-1070 | STREET LIGHTING FEEDER Panel | 2026-10-19 → 2026-10-26 (+7d) | 2026-11-27 → 2026-12-04 (+7d) |  | 31d → 32d |
| SDR-ST-PRO-DL-1200 | VOICE EVACUATION SYSTEM | 2026-10-23 → 2026-10-30 (+7d) | 2026-12-21 → 2026-12-28 (+7d) |  | 103d → 131d |
| SDR-ST-PRO-DL-1050 | CCTV :Pole mounted Filed Equipment cabinet | 2026-10-30 → 2026-11-06 (+7d) | 2026-12-28 → 2027-01-04 (+7d) |  | 96d → 124d |
| SDR-ST-PRO-DL-1230 | CCTV :5MP IP PoE Bullet Camera | 2026-10-30 → 2026-11-06 (+7d) | 2026-12-28 → 2027-01-04 (+7d) |  | 96d → 124d |
| 2 | **Mechanical** |  | 2026-12-20 → 2026-12-27 (+7d) |  |  |
| SDR-ST-PRO-DL-2000 | MANHOLE, CATCH BASIN & VALVE BOX COVER | 2026-10-12 → 2026-10-19 (+7d) | 2026-12-20 → 2026-12-27 (+7d) |  | 2d → 4d |
| SDR-ST-PRO-DL-1090 | GI GOOSENECK & VENT | 2026-10-23 → 2026-10-30 (+7d) | 2026-12-19 → 2026-12-26 (+7d) |  | 105d → 133d |
| 5 | **Long Lead Items Delivery** | 2026-10-12 → 2026-10-19 (+7d) | 2027-02-20 → 2027-02-28 (+8d) |  |  |
| 1 | **Civil** | 2026-11-09 → 2026-11-16 (+7d) | 2027-02-15 → 2027-02-23 (+8d) |  |  |
| SDR-ST-PRO-DL-1240 | Canopy | 2026-11-09 → 2026-11-16 (+7d) | 2027-01-07 → 2027-01-14 (+7d) |  |  |
| SDR-ST-PRO-DL-1150 | Metal railing for platform | 2026-11-11 → 2026-11-18 (+7d) | 2027-02-15 → 2027-02-23 (+8d) |  | 47d → 75d |
| 3 | **Electrical** | 2026-10-12 → 2026-10-19 (+7d) | 2027-02-20 → 2027-02-28 (+8d) |  |  |
| SDR-ST-PRO-DL-1210 | LIGHTING POLES | 2026-10-12 → 2026-10-19 (+7d) | 2027-01-24 → 2027-01-31 (+7d) |  | 78d → 79d |
| SDR-ST-PRO-DL-1180 | Outdoor Lighting Fixtures | 2026-10-28 → 2026-11-04 (+7d) | 2027-01-15 → 2027-01-22 (+7d) |  | 70d → 98d |
| SDR-ST-PRO-DL-1220 | STREET LIGHTING LUMINAIRE | 2026-10-28 → 2026-11-04 (+7d) | 2027-01-15 → 2027-01-22 (+7d) |  | 31d → 32d |
| SDR-ST-PRO-DL-1170 | MEDIUM VOLTAGE CABLES | 2026-11-07 → 2026-11-14 (+7d) | 2027-02-20 → 2027-02-28 (+8d) |  | 24.2d → 25.2d |
| SDR-ST-PRO-DL-1160 | MEDIUM VOLTAGE CABLES DUCT BANKS | 2026-11-08 → 2026-11-15 (+7d) | 2027-02-20 → 2027-02-28 (+8d) |  |  |
| SDR-ST-PRO-DL-1250 | SUB-STATION | 2026-11-08 → 2026-11-15 (+7d) | 2027-02-20 → 2027-02-28 (+8d) |  | 42d → 70d |
| 2 | **Mechanical** | 2026-10-16 → 2026-10-23 (+7d) | 2027-01-13 → 2027-01-20 (+7d) |  |  |
| SDR-ST-PRO-DL-1190 | WASHOUT & AIR VALVE, GATE VALVE, BUTTERFLY VALVE | 2026-10-16 → 2026-10-23 (+7d) | 2027-01-13 → 2027-01-20 (+7d) |  | 70d → 72d |
| 4 | **Materials Staging Time** | 2026-10-12 → 2026-10-19 (+7d) | 2027-02-25 → 2027-03-04 (+7d) |  |  |
| 4 | **Short Lead Items Delivery** | 2026-10-12 → 2026-10-19 (+7d) | 2027-01-09 → 2027-01-16 (+7d) |  |  |
| 1 | **Civil** | 2026-10-23 → 2026-10-19 (-4d) | 2027-01-09 → 2027-01-16 (+7d) |  |  |
| SDR-ST-PRO-MS-1260 | Steel Bars | 2026-10-23 → 2026-10-19 (-4d) | 2026-10-26 → 2026-10-22 (-4d) |  | 28d → 40d |
| SDR-ST-PRO-MS-1100 | Kerbstone | 2026-12-07 → 2026-12-14 (+7d) | 2026-12-10 → 2026-12-17 (+7d) |  | 3d → 11d |
| SDR-ST-PRO-MS-1070 | Waterproofing (Thermal & moisture Protection) | 2027-01-03 → 2026-12-18 (-16d) | 2027-01-06 → 2026-12-21 (-16d) |  | 31d → 67d |
| SDR-ST-PRO-MS-1080 | Interlock | 2026-12-24 → 2026-12-31 (+7d) | 2026-12-27 → 2027-01-03 (+7d) |  |  |
| SDR-ST-PRO-MS-1270 | Asphalt | 2027-01-06 → 2027-01-13 (+7d) | 2027-01-09 → 2027-01-16 (+7d) |  |  |
| 3 | **Electrical** | 2026-11-07 → 2026-11-14 (+7d) | 2027-01-01 → 2027-01-08 (+7d) |  |  |
| SDR-ST-PRO-MS-1010 | Drawpits | 2026-11-07 → 2026-11-14 (+7d) | 2026-11-10 → 2026-11-17 (+7d) |  | 4d → 17d |
| SDR-ST-PRO-MS-1000 | ROAD CROSSING DUCTS Ø110mm | 2026-11-10 → 2026-11-17 (+7d) | 2026-11-13 → 2026-11-20 (+7d) |  | 37.9d → 38.9d |
| SDR-ST-PRO-MS-1030 | STREET LIGHTING CABLES | 2026-11-19 → 2026-11-26 (+7d) | 2026-11-22 → 2026-11-29 (+7d) |  | 97d → 106d |
| SDR-ST-PRO-MS-1040 | LOW VOLTAGE DISTRIBUTION Panel | 2026-11-24 → 2026-12-01 (+7d) | 2026-11-27 → 2026-12-04 (+7d) |  | 131d → 159d |
| SDR-ST-PRO-MS-1020 | STREET LIGHTING FEEDER Panel | 2026-11-28 → 2026-12-05 (+7d) | 2026-12-01 → 2026-12-08 (+7d) |  | 31d → 32d |
| SDR-ST-PRO-MS-1120 | LOW VOLTAGE CABLES | 2026-12-02 → 2026-12-09 (+7d) | 2026-12-05 → 2026-12-12 (+7d) |  | 119d → 112d |
| SDR-ST-PRO-MS-1150 | VOICE EVACUATION SYSTEM | 2026-12-22 → 2026-12-29 (+7d) | 2026-12-25 → 2027-01-01 (+7d) |  | 103d → 131d |
| SDR-ST-PRO-MS-1090 | CCTV :Pole mounted Filed Equipment cabinet | 2026-12-29 → 2027-01-05 (+7d) | 2027-01-01 → 2027-01-08 (+7d) |  | 96d → 124d |
| SDR-ST-PRO-MS-1160 | CCTV :5MP IP PoE Bullet Camera | 2026-12-29 → 2027-01-05 (+7d) | 2027-01-01 → 2027-01-08 (+7d) |  | 96d → 124d |
| 2 | **Mechanical** | 2026-10-12 → 2026-10-19 (+7d) | 2026-12-23 → 2026-12-30 (+7d) |  |  |
| SDR-ST-PRO-MS-1050 | WARNING TAPE | 2026-10-12 → 2026-10-19 (+7d) | 2026-10-15 → 2026-10-22 (+7d) |  |  |
| SDR-ST-PRO-MS-1110 | HDPE PIPES & FITTINGS | 2026-10-12 → 2026-10-19 (+7d) | 2026-10-15 → 2026-10-22 (+7d) |  | 62d → 63d |
| SDR-ST-PRO-MS-1130 | CONCRETE PIPES AND FITTINGS | 2026-10-12 → 2026-10-19 (+7d) | 2026-10-15 → 2026-10-22 (+7d) |  |  |
| SDR-ST-PRO-MS-1140 | MANHOLE, CATCH BASIN & VALVE BOX COVER | 2026-12-17 → 2026-12-24 (+7d) | 2026-12-20 → 2026-12-27 (+7d) |  | 2d → 5d |
| SDR-ST-PRO-MS-1060 | GI GOOSENECK & VENT | 2026-12-20 → 2026-12-27 (+7d) | 2026-12-23 → 2026-12-30 (+7d) |  | 105d → 133d |
| 5 | **Long Lead Items Delivery** | 2026-10-12 → 2026-10-19 (+7d) | 2027-02-25 → 2027-03-04 (+7d) |  |  |
| 1 | **Civil** | 2027-01-08 → 2027-01-15 (+7d) | 2027-02-19 → 2027-02-27 (+8d) |  |  |
| SDR-ST-PRO-MS-1240 | Canopy | 2027-01-08 → 2027-01-15 (+7d) | 2027-01-11 → 2027-01-18 (+7d) |  |  |
| SDR-ST-PRO-MS-1200 | Metal railing for platform | 2027-02-16 → 2027-02-24 (+8d) | 2027-02-19 → 2027-02-27 (+8d) |  | 47d → 75d |
| 3 | **Electrical** | 2026-10-12 → 2026-10-19 (+7d) | 2027-02-25 → 2027-03-04 (+7d) |  |  |
| SDR-ST-PRO-MS-1230 | LIGHTING POLES | 2026-10-12 → 2026-10-19 (+7d) | 2026-10-15 → 2026-10-22 (+7d) |  | 78d → 79d |
| SDR-ST-PRO-MS-1210 | MEDIUM VOLTAGE CABLES DUCT BANKS | 2026-12-11 → 2026-12-18 (+7d) | 2026-12-14 → 2026-12-21 (+7d) |  |  |
| SDR-ST-PRO-MS-1180 | STREET LIGHTING LUMINAIRE | 2027-01-16 → 2027-01-23 (+7d) | 2027-01-19 → 2027-01-26 (+7d) |  | 31d → 32d |
| SDR-ST-PRO-MS-1170 | Outdoor Lighting Fixtures | 2027-01-24 → 2027-01-31 (+7d) | 2027-01-27 → 2027-02-03 (+7d) |  | 70d → 98d |
| SDR-ST-PRO-MS-1220 | MEDIUM VOLTAGE CABLES | 2027-02-20 → 2027-02-28 (+8d) | 2027-02-25 → 2027-03-04 (+7d) |  | 24.2d → 25.2d |
| SDR-ST-PRO-MS-1250 | SUB-STATION | 2027-02-21 → 2027-03-01 (+8d) | 2027-02-25 → 2027-03-04 (+7d) |  | 42d → 70d |
| 2 | **Mechanical** | 2026-10-16 → 2026-10-23 (+7d) | 2026-10-19 → 2026-10-26 (+7d) |  |  |
| SDR-ST-PRO-MS-1190 | WASHOUT & AIR VALVE, GATE VALVE, BUTTERFLY VALVE | 2026-10-16 → 2026-10-23 (+7d) | 2026-10-19 → 2026-10-26 (+7d) |  | 70d → 72d |

| ID | Task | Start | Finish | Complete | Total float | Predecessors |
| --- | --- | --- | --- | --- | --- | --- |
| 5 | **Construction** |  | 2027-08-01 → 2027-08-08 (+7d) |  |  |  |
| 1 | **Package-1** |  | 2027-07-22 → 2027-08-05 (+14d) |  |  |  |
| 15 | **ROAD WORKS 1** |  | 2027-05-26 → 2027-05-31 (+5d) |  |  |  |
| 6 | **ROAD-01 From 0 to 470 m (3)** |  | 2027-05-05 → 2027-05-12 (+7d) |  |  |  |
| 3 | **Asphalt Works** |  | 2027-02-09 → 2027-02-16 (+7d) |  |  |  |
| 1 | **Bituminous base course** |  | 2027-01-13 → 2027-01-20 (+7d) |  |  |  |
| SDR-ST-CON-P1-4410 | Bituminous base course (Grading I - Class A 1st Layer with MC-01 |  | 2026-10-18 → 2026-10-25 (+7d) |  |  |  |
| SDR-ST-CON-P1-4770 | Bituminous base course (Grading I - Class A 2nd layer with RC-02 | 2027-01-10 → 2027-01-17 (+7d) | 2027-01-13 → 2027-01-20 (+7d) |  |  |  |
| 2 | **Bituminous concrete wearing course** | 2027-01-17 → 2027-01-24 (+7d) | 2027-02-09 → 2027-02-16 (+7d) |  |  |  |
| SDR-ST-CON-P1-5110 | Bituminous concrete wearing course, (Grading I - Class A), including tack coat (RC2) | 2027-01-17 → 2027-01-24 (+7d) | 2027-02-09 → 2027-02-16 (+7d) |  |  |  |
| 4 | **Kerbstone Installation** | 2026-10-12 → 2026-10-19 (+7d) | 2027-02-21 → 2027-03-01 (+8d) |  |  |  |
| SDR-ST-CON-P1-3860 | Precast Concrete Curbstone, Type A2 | 2026-10-12 → 2026-10-19 (+7d) | 2026-11-04 → 2026-11-11 (+7d) |  |  |  |
| SDR-ST-CON-P1-4530 | Precast Concrete Curbstone, Type D | 2027-02-10 → 2027-02-17 (+7d) | 2027-02-21 → 2027-03-01 (+8d) |  |  |  |
| 5 | **Interlock Installation** | 2027-02-24 → 2027-03-03 (+7d) | 2027-04-15 → 2027-04-22 (+7d) |  |  |  |
| SDR-ST-CON-P1-4100 | Interlock Installation Part 1 | 2027-02-24 → 2027-03-03 (+7d) | 2027-03-23 → 2027-03-30 (+7d) |  |  |  |
| SDR-ST-CON-P1-4620 | Interlock Installation Part 2 | 2027-03-24 → 2027-03-31 (+7d) | 2027-04-15 → 2027-04-22 (+7d) |  |  |  |
| 6 | **Road Marking** | 2027-04-17 → 2027-04-24 (+7d) | 2027-05-04 → 2027-05-11 (+7d) |  |  |  |
| SDR-ST-CON-P1-5210 | Retroreflective Thermoplastic White Traffic lines | 2027-04-17 → 2027-04-24 (+7d) | 2027-04-20 → 2027-04-27 (+7d) |  | 6d → 12d |  |
| SDR-ST-CON-P1-5310 | Retroreflective Thermoplastic Yellow, Traffic lines | 2027-04-21 → 2027-04-28 (+7d) | 2027-04-25 → 2027-05-02 (+7d) |  | 6d → 13d |  |
| SDR-ST-CON-P1-5470 | Ceramic raised pavement markers | 2027-04-26 → 2027-05-03 (+7d) | 2027-04-29 → 2027-05-06 (+7d) |  | 6d → 13d |  |
| SDR-ST-CON-P1-5620 | Rumble strip | 2027-05-01 → 2027-05-08 (+7d) | 2027-05-04 → 2027-05-11 (+7d) |  | 6d → 13d |  |
| 7 | **Traffic Signage** | 2027-04-17 → 2027-04-24 (+7d) | 2027-04-29 → 2027-05-06 (+7d) |  |  |  |
| SDR-ST-CON-P1-5220 | Traffic signs, ground mounted, 1 Sheet Alumenium, (breakaway) Single post, with all accessories | 2027-04-17 → 2027-04-24 (+7d) | 2027-04-20 → 2027-04-27 (+7d) |  | 18d → 12d |  |
| SDR-ST-CON-P1-5320 | Traffic signs, ground mounted, 1 Sheet Aluminum, (breakaway) Double post, with all accessories | 2027-04-21 → 2027-04-28 (+7d) | 2027-04-25 → 2027-05-02 (+7d) |  | 18d → 12d |  |
| SDR-ST-CON-P1-5480 | Traffic signs, ground mounted, 2 Sheet Aluminum, (breakaway) Single post, with all accessories | 2027-04-26 → 2027-05-03 (+7d) | 2027-04-29 → 2027-05-06 (+7d) |  | 18d → 12d |  |
| 8 | **Speed table** | 2027-05-01 → 2027-05-08 (+7d) | 2027-05-05 → 2027-05-12 (+7d) |  |  |  |
| SDR-ST-CON-P1-5490 | Interlock speed table including interlock, flush kerb and marking | 2027-05-01 → 2027-05-08 (+7d) | 2027-05-05 → 2027-05-12 (+7d) |  | 18d → 12d |  |
| 2 | **Base Course** |  | 2026-10-22 → 2026-10-29 (+7d) |  |  |  |
| SDR-ST-CON-P1-3720 | Aggregate base course layer |  | 2026-10-22 → 2026-10-29 (+7d) |  |  |  |
| 3 | **Asphalt Works** | 2026-10-24 → 2026-10-31 (+7d) | 2027-02-11 → 2027-02-18 (+7d) |  |  |  |
| 1 | **Bituminous base course** | 2026-10-24 → 2026-10-31 (+7d) | 2027-01-14 → 2027-01-21 (+7d) |  |  |  |
| SDR-ST-CON-P1-4430 | Bituminous base course (Grading I - Class A 1st Layer with MC-01 | 2026-10-24 → 2026-10-31 (+7d) | 2026-10-29 → 2026-11-05 (+7d) |  |  |  |
| SDR-ST-CON-P1-4730 | Bituminous base course (Grading I - Class A 2nd layer with RC-02 | 2027-01-10 → 2027-01-17 (+7d) | 2027-01-14 → 2027-01-21 (+7d) |  |  |  |
| 2 | **Bituminous concrete wearing course** | 2027-01-19 → 2027-01-26 (+7d) | 2027-02-11 → 2027-02-18 (+7d) |  |  |  |
| SDR-ST-CON-P1-5040 | Bituminous concrete wearing course, (Grading I - Class A), including tack coat (RC2) | 2027-01-19 → 2027-01-26 (+7d) | 2027-02-11 → 2027-02-18 (+7d) |  |  |  |
| 4 | **Kerbstone Installation** | 2026-10-12 → 2026-10-19 (+7d) | 2026-12-01 → 2026-12-08 (+7d) |  |  |  |
| SDR-ST-CON-P1-3730 | Precast Concrete Curbstone, Type A2 | 2026-10-12 → 2026-10-19 (+7d) | 2026-11-03 → 2026-11-10 (+7d) |  |  |  |
| SDR-ST-CON-P1-4480 | Precast Concrete Curbstone, Type D | 2026-11-09 → 2026-11-16 (+7d) | 2026-12-01 → 2026-12-08 (+7d) |  |  |  |
| 5 | **Interlock Installation** | 2026-12-28 → 2027-01-04 (+7d) | 2027-03-07 → 2027-03-18 (+11d) |  |  |  |
| SDR-ST-CON-P1-3890 | Interlock Installation Part 1 | 2026-12-28 → 2027-01-04 (+7d) | 2027-01-19 → 2027-01-26 (+7d) |  |  |  |
| SDR-ST-CON-P1-4490 | Interlock Installation Part 2 | 2027-02-11 → 2027-02-18 (+7d) | 2027-03-07 → 2027-03-18 (+11d) |  |  |  |
| 6 | **Road Marking** | 2027-03-08 → 2027-03-20 (+12d) | 2027-04-27 → 2027-05-04 (+7d) |  |  |  |
| SDR-ST-CON-P1-5080 | Retroreflective Thermoplastic White Traffic lines | 2027-03-08 → 2027-03-20 (+12d) | 2027-03-17 → 2027-03-24 (+7d) |  |  |  |
| SDR-ST-CON-P1-5150 | Retroreflective Thermoplastic Yellow, Traffic lines | 2027-03-27 → 2027-04-12 (+16d) | 2027-03-31 → 2027-04-17 (+17d) |  | 18d → 10d |  |
| SDR-ST-CON-P1-5270 | Ceramic raised pavement markers | 2027-04-17 → 2027-04-24 (+7d) | 2027-04-21 → 2027-04-28 (+7d) |  |  |  |
| SDR-ST-CON-P1-5400 | Rumble strip | 2027-04-22 → 2027-04-29 (+7d) | 2027-04-27 → 2027-05-04 (+7d) |  |  |  |
| 7 | **Traffic Signage** | 2027-04-28 → 2027-05-05 (+7d) | 2027-05-11 → 2027-05-24 (+13d) |  |  |  |
| SDR-ST-CON-P1-5090 | Traffic signs, ground mounted, 1 Sheet Alumenium, (breakaway) Single post, with all accessories | 2027-04-28 → 2027-05-05 (+7d) | 2027-05-04 → 2027-05-11 (+7d) |  |  |  |
| SDR-ST-CON-P1-5160 | Traffic signs, ground mounted, 1 Sheet Aluminum, (breakaway) Double post, with all accessories | 2027-05-05 → 2027-05-12 (+7d) | 2027-05-11 → 2027-05-24 (+13d) |  |  |  |
| SDR-ST-CON-P1-5280 | Interlock speed table including interlock, flush kerb and marking |  |  |  |  | SDR-ST-CON-P1-5160 → SDR-ST-CON-P1-5160 SS |
| 9 | **ROAD-01 From 1125 to 1765 m (7)** |  | 2027-05-10 → 2027-05-24 (+14d) |  |  |  |
| 11 | **Subgrade** |  | 2026-10-22 → 2026-10-29 (+7d) |  |  |  |
| SDR-ST-CON-P1-3600 | Subgrade layer works |  | 2026-10-22 → 2026-10-29 (+7d) | 75% → 80% |  |  |
| 2 | **Base Course** | 2026-10-24 → 2026-10-17 (-7d) | 2026-11-02 → 2026-11-09 (+7d) |  |  |  |
| SDR-ST-CON-P1-4220 | Aggregate base course layer | 2026-10-24 → 2026-10-17 A (-7d) | 2026-11-02 → 2026-11-09 (+7d) | 0% → 60% |  |  |
| 3 | **Asphalt Works** | 2026-11-03 → 2026-11-10 (+7d) | 2027-02-02 → 2027-02-09 (+7d) |  |  |  |
| 1 | **Bituminous base course** | 2026-11-03 → 2026-11-10 (+7d) | 2026-11-15 → 2026-11-22 (+7d) |  |  |  |
| SDR-ST-CON-P1-4750 | Bituminous base course (Grading I - Class A 1st Layer with MC-01 | 2026-11-03 → 2026-11-10 (+7d) | 2026-11-09 → 2026-11-16 (+7d) |  |  |  |
| SDR-ST-CON-P1-5010 | Bituminous base course (Grading I - Class A 2nd layer with RC-02 | 2026-11-10 → 2026-11-17 (+7d) | 2026-11-15 → 2026-11-22 (+7d) |  |  |  |
| 2 | **Bituminous concrete wearing course** | 2027-01-10 → 2027-01-17 (+7d) | 2027-02-02 → 2027-02-09 (+7d) |  |  |  |
| SDR-ST-CON-P1-5200 | Bituminous concrete wearing course, (Grading I - Class A), including tack coat (RC2) | 2027-01-10 → 2027-01-17 (+7d) | 2027-02-02 → 2027-02-09 (+7d) |  |  |  |
| 4 | **Kerbstone Installation** | 2026-10-24 → 2026-10-31 (+7d) | 2026-12-13 → 2026-12-20 (+7d) |  |  |  |
| SDR-ST-CON-P1-4230 | Precast Concrete Curbstone, Type A2 | 2026-10-24 → 2026-10-31 (+7d) | 2026-11-15 → 2026-11-22 (+7d) |  |  |  |
| SDR-ST-CON-P1-4950 | Precast Concrete Curbstone, Type D | 2026-11-21 → 2026-11-28 (+7d) | 2026-12-13 → 2026-12-20 (+7d) |  |  |  |
| 5 | **Interlock Installation** | 2026-12-28 → 2027-01-04 (+7d) | 2027-02-13 → 2027-02-20 (+7d) |  |  |  |
| SDR-ST-CON-P1-4440 | Interlock Installation Part 1 | 2026-12-28 → 2027-01-04 (+7d) | 2027-01-20 → 2027-01-27 (+7d) |  |  |  |
| SDR-ST-CON-P1-4870 | Interlock Installation Part 2 | 2027-01-21 → 2027-01-28 (+7d) | 2027-02-13 → 2027-02-20 (+7d) |  |  |  |
| 6 | **Road Marking** | 2027-04-03 → 2027-04-11 (+8d) | 2027-04-25 → 2027-05-03 (+8d) |  |  |  |
| SDR-ST-CON-P1-5300 | Retroreflective Thermoplastic White Traffic lines | 2027-04-03 → 2027-04-11 (+8d) | 2027-04-07 → 2027-04-15 (+8d) |  |  |  |
| SDR-ST-CON-P1-5450 | Retroreflective Thermoplastic Yellow, Traffic lines | 2027-04-08 → 2027-04-17 (+9d) | 2027-04-13 → 2027-04-21 (+8d) |  |  |  |

| ID | Task | Start | Finish | Total float |
| --- | --- | --- | --- | --- |
| SDR-ST-CON-P1-5610 | Ceramic raised pavement markers | 2027-04-14 → 2027-04-22 (+8d) | 2027-04-19 → 2027-04-27 (+8d) |  |
| SDR-ST-CON-P1-5690 | Rumble strip | 2027-04-20 → 2027-04-28 (+8d) | 2027-04-25 → 2027-05-03 (+8d) |  |
| 7 | **Traffic Signage** | 2027-04-26 → 2027-05-04 (+8d) | 2027-05-08 → 2027-05-22 (+14d) |  |
| SDR-ST-CON-P1-5540 | Traffic signs, ground mounted, 1 Sheet Alumenium, (breakaway) Single post, with all accessories | 2027-04-26 → 2027-05-04 (+8d) | 2027-05-01 → 2027-05-09 (+8d) |  |
| SDR-ST-CON-P1-5680 | Traffic signs, ground mounted, 1 Sheet Aluminum, (breakaway) Double post, with all accessories | 2027-05-02 → 2027-05-10 (+8d) | 2027-05-08 → 2027-05-22 (+14d) |  |
| 8 | **Speed table** | 2027-05-02 → 2027-05-10 (+8d) | 2027-05-10 → 2027-05-24 (+14d) |  |
| SDR-ST-CON-P1-5460 | Interlock speed table including interlock, flush kerb and marking | 2027-05-02 → 2027-05-10 (+8d) | 2027-05-10 → 2027-05-24 (+14d) |  |
| 6 | **ROAD - 02** |  | 2027-05-23 → 2027-05-31 (+8d) |  |
| 1 | **ROAD-01 From 0 to 400 m (9)** |  | 2027-05-03 → 2027-05-10 (+7d) |  |
| 11 | **Subgrade** |  | 2026-10-26 → 2026-11-02 (+7d) |  |
| SDR-ST-CON-P1-3390 | Subgrade layer works |  | 2026-10-26 → 2026-11-02 (+7d) | 36d → 37d |
| 2 | **Base Course** | 2026-10-27 → 2026-11-03 (+7d) | 2026-11-03 → 2026-11-10 (+7d) |  |
| SDR-ST-CON-P1-3960 | Aggregate base course layer | 2026-10-27 → 2026-11-03 (+7d) | 2026-11-03 → 2026-11-10 (+7d) | 41d → 42d |
| 3 | **Asphalt Works** | 2026-11-04 → 2026-11-11 (+7d) | 2026-12-08 → 2026-12-15 (+7d) |  |
| 1 | **Bituminous base course** | 2026-11-04 → 2026-11-11 (+7d) | 2026-11-11 → 2026-11-18 (+7d) |  |
| SDR-ST-CON-P1-4540 | Bituminous base course (Grading I - Class A 1st Layer with MC-01 | 2026-11-04 → 2026-11-11 (+7d) | 2026-11-08 → 2026-11-15 (+7d) | 41d → 42d |
| SDR-ST-CON-P1-4890 | Bituminous base course (Grading I - Class A 2nd layer with RC-02 | 2026-11-09 → 2026-11-16 (+7d) | 2026-11-11 → 2026-11-18 (+7d) | 41d → 42d |
| 2 | **Bituminous concrete wearing course** | 2026-11-15 → 2026-11-22 (+7d) | 2026-12-08 → 2026-12-15 (+7d) |  |
| SDR-ST-CON-P1-5130 | Bituminous concrete wearing course, (Grading I - Class A), including tack coat (RC2) | 2026-11-15 → 2026-11-22 (+7d) | 2026-12-08 → 2026-12-15 (+7d) | 41d → 42d |
| 4 | **Kerbstone Installation** | 2026-10-27 → 2026-11-03 (+7d) | 2026-12-16 → 2026-12-23 (+7d) |  |
| SDR-ST-CON-P1-3970 | Precast Concrete Curbstone, Type A2 | 2026-10-27 → 2026-11-03 (+7d) | 2026-11-18 → 2026-11-25 (+7d) | 36d → 37d |
| SDR-ST-CON-P1-4690 | Precast Concrete Curbstone, Type D | 2026-11-24 → 2026-12-01 (+7d) | 2026-12-16 → 2026-12-23 (+7d) | 36d → 37d |
| 5 | **Interlock Installation** | 2026-12-17 → 2026-12-24 (+7d) | 2027-02-01 → 2027-02-08 (+7d) |  |
| SDR-ST-CON-P1-4200 | Interlock Installation Part 1 | 2026-12-17 → 2026-12-24 (+7d) | 2027-01-09 → 2027-01-16 (+7d) | 36d → 37d |
| SDR-ST-CON-P1-4780 | Interlock Installation Part 2 | 2027-01-10 → 2027-01-17 (+7d) | 2027-02-01 → 2027-02-08 (+7d) | 36d → 37d |
| 6 | **Road Marking** | 2027-03-14 → 2027-03-21 (+7d) | 2027-04-05 → 2027-04-12 (+7d) |  |
| SDR-ST-CON-P1-5250 | Retroreflective Thermoplastic White Traffic lines | 2027-03-14 → 2027-03-21 (+7d) | 2027-03-18 → 2027-03-25 (+7d) | 7d → 8d |
| SDR-ST-CON-P1-5370 | Retroreflective Thermoplastic Yellow, Traffic lines | 2027-03-20 → 2027-03-27 (+7d) | 2027-03-24 → 2027-03-31 (+7d) | 7d → 8d |
| SDR-ST-CON-P1-5550 | Ceramic raised pavement markers | 2027-03-25 → 2027-04-01 (+7d) | 2027-03-30 → 2027-04-06 (+7d) | 7d → 8d |
| SDR-ST-CON-P1-5630 | Rumble strip | 2027-03-31 → 2027-04-07 (+7d) | 2027-04-05 → 2027-04-12 (+7d) | 7d → 8d |
| 7 | **Traffic Signage** | 2027-04-06 → 2027-04-13 (+7d) | 2027-04-22 → 2027-04-29 (+7d) |  |
| SDR-ST-CON-P1-5260 | Traffic signs, ground mounted, 1 Sheet Alumenium, (breakaway) Single post, with all accessories | 2027-04-06 → 2027-04-13 (+7d) | 2027-04-11 → 2027-04-18 (+7d) | 7d → 8d |
| SDR-ST-CON-P1-5380 | Traffic signs, ground mounted, 1 Sheet Aluminum, (breakaway) Double post, with all accessories | 2027-04-12 → 2027-04-19 (+7d) | 2027-04-17 → 2027-04-24 (+7d) | 7d → 8d |
| SDR-ST-CON-P1-5560 | Traffic signs, ground mounted, 2 Sheet Aluminum, (breakaway) Single post, with all accessories | 2027-04-18 → 2027-04-25 (+7d) | 2027-04-22 → 2027-04-29 (+7d) | 7d → 8d |
| 8 | **Speed table** | 2027-04-25 → 2027-05-02 (+7d) | 2027-05-03 → 2027-05-10 (+7d) |  |
| SDR-ST-CON-P1-5390 | Interlock speed table including interlock, flush kerb and marking | 2027-04-25 → 2027-05-02 (+7d) | 2027-05-03 → 2027-05-10 (+7d) | 7d → 8d |
| 2 | **ROAD-01 From 400 to 900 m (10)** |  | 2027-05-23 → 2027-05-31 (+8d) |  |
| 11 | **Subgrade** |  | 2026-10-24 → 2026-10-31 (+7d) |  |
| SDR-ST-CON-P1-3540 | Subgrade layer works |  | 2026-10-24 → 2026-10-31 (+7d) | 40d → 41d |
| 2 | **Base Course** | 2026-10-25 → 2026-11-01 (+7d) | 2026-11-04 → 2026-11-11 (+7d) |  |
| SDR-ST-CON-P1-4130 | Aggregate base course layer | 2026-10-25 → 2026-11-01 (+7d) | 2026-11-04 → 2026-11-11 (+7d) | 40d → 41d |
| 3 | **Asphalt Works** | 2026-11-05 → 2026-11-12 (+7d) | 2026-12-09 → 2026-12-16 (+7d) |  |
| 1 | **Bituminous base course** | 2026-11-05 → 2026-11-12 (+7d) | 2026-11-15 → 2026-11-22 (+7d) |  |
| SDR-ST-CON-P1-4600 | Bituminous base course (Grading I - Class A 1st Layer with MC-01 | 2026-11-05 → 2026-11-12 (+7d) | 2026-11-10 → 2026-11-17 (+7d) | 40d → 41d |
| SDR-ST-CON-P1-4930 | Bituminous base course (Grading I - Class A 2nd layer with RC-02 | 2026-11-11 → 2026-11-18 (+7d) | 2026-11-15 → 2026-11-22 (+7d) | 40d → 41d |
| 2 | **Bituminous concrete wearing course** | 2026-11-16 → 2026-11-23 (+7d) | 2026-12-09 → 2026-12-16 (+7d) |  |
| SDR-ST-CON-P1-5180 | Bituminous concrete wearing course, (Grading I - Class A), including tack coat (RC2) | 2026-11-16 → 2026-11-23 (+7d) | 2026-12-09 → 2026-12-16 (+7d) | 40d → 41d |
| 4 | **Kerbstone Installation** | 2026-10-25 → 2026-11-01 (+7d) | 2026-12-14 → 2026-12-21 (+7d) |  |
| SDR-ST-CON-P1-4140 | Precast Concrete Curbstone, Type A2 | 2026-10-25 → 2026-11-01 (+7d) | 2026-11-16 → 2026-11-23 (+7d) | 43d → 52d |
| SDR-ST-CON-P1-4810 | Precast Concrete Curbstone, Type D | 2026-11-22 → 2026-11-29 (+7d) | 2026-12-14 → 2026-12-21 (+7d) | 43d → 52d |
| 5 | **Interlock Installation** | 2026-12-15 → 2026-12-22 (+7d) | 2027-01-31 → 2027-02-07 (+7d) |  |
| SDR-ST-CON-P1-4350 | Interlock Installation Part 1 | 2026-12-15 → 2026-12-22 (+7d) | 2027-01-06 → 2027-01-13 (+7d) | 43d → 52d |
| SDR-ST-CON-P1-4920 | Interlock Installation Part 2 | 2027-01-09 → 2027-01-16 (+7d) | 2027-01-31 → 2027-02-07 (+7d) | 43d → 52d |
| 6 | **Road Marking** | 2027-03-27 → 2027-04-04 (+8d) | 2027-04-22 → 2027-05-01 (+9d) |  |
| SDR-ST-CON-P1-5290 | Retroreflective Thermoplastic White Traffic lines | 2027-03-27 → 2027-04-04 (+8d) | 2027-04-01 → 2027-04-10 (+9d) | 2d → 10d |
| SDR-ST-CON-P1-5410 | Retroreflective Thermoplastic Yellow, Traffic lines | 2027-04-03 → 2027-04-11 (+8d) | 2027-04-08 → 2027-04-17 (+9d) | 2d → 10d |
| SDR-ST-CON-P1-5580 | Ceramic raised pavement markers | 2027-04-10 → 2027-04-18 (+8d) | 2027-04-15 → 2027-04-24 (+9d) | 2d → 10d |
| SDR-ST-CON-P1-5640 | Rumble strip | 2027-04-17 → 2027-04-25 (+8d) | 2027-04-22 → 2027-05-01 (+9d) | 2d → 10d |
| 7 | **Traffic Signage** | 2027-04-24 → 2027-05-02 (+8d) | 2027-05-06 → 2027-05-15 (+9d) |  |
| SDR-ST-CON-P1-5420 | Traffic signs, ground mounted, 1 Sheet Alumenium, (breakaway) Single post, with all accessories | 2027-04-24 → 2027-05-02 (+8d) | 2027-04-29 → 2027-05-08 (+9d) | 2d → 10d |
| SDR-ST-CON-P1-5590 | Traffic signs, ground mounted, 1 Sheet Aluminum, (breakaway) Double post, with all accessories | 2027-05-01 → 2027-05-09 (+8d) | 2027-05-06 → 2027-05-15 (+9d) | 2d → 10d |
| 8 | **Speed table** | 2027-05-08 → 2027-05-22 (+14d) | 2027-05-23 → 2027-05-31 (+8d) |  |
| SDR-ST-CON-P1-5430 | Interlock speed table including interlock, flush kerb and marking | 2027-05-08 → 2027-05-22 (+14d) | 2027-05-23 → 2027-05-31 (+8d) | 2d → 10d |
| 3 | **ROAD-01 From 900 to 1239 m (11)** |  | 2027-05-15 → 2027-05-27 (+12d) |  |
| 11 | **Subgrade** |  | 2026-10-20 → 2026-10-27 (+7d) |  |
| SDR-ST-CON-P1-3740 | Subgrade layer works |  | 2026-10-20 → 2026-10-27 (+7d) | 44d → 45d |
| 2 | **Base Course** | 2026-10-21 → 2026-10-28 (+7d) | 2026-10-28 → 2026-11-04 (+7d) |  |
| SDR-ST-CON-P1-4290 | Aggregate base course layer | 2026-10-21 → 2026-10-28 (+7d) | 2026-10-28 → 2026-11-04 (+7d) | 44d → 45d |
| 3 | **Asphalt Works** | 2026-10-29 → 2026-11-05 (+7d) | 2026-12-05 → 2026-12-12 (+7d) |  |
| 1 | **Bituminous base course** | 2026-10-29 → 2026-11-05 (+7d) | 2026-11-08 → 2026-11-15 (+7d) |  |

| ID | Task | Start | Finish | Total float | Predecessors |
| --- | --- | --- | --- | --- | --- |
| SDR-ST-CON-P1-4650 | Bituminous base course (Grading I - Class A 1st Layer with MC-01 | 2026-10-29 → 2026-11-05 (+7d) | 2026-11-03 → 2026-11-10 (+7d) | 44d → 45d |  |
| SDR-ST-CON-P1-4980 | Bituminous base course (Grading I - Class A 2nd layer with RC-02 | 2026-11-04 → 2026-11-11 (+7d) | 2026-11-08 → 2026-11-15 (+7d) | 44d → 45d |  |
| 2 | **Bituminous concrete wearing course** | 2026-11-11 → 2026-11-18 (+7d) | 2026-12-05 → 2026-12-12 (+7d) |  |  |
| SDR-ST-CON-P1-5230 | Bituminous concrete wearing course, (Grading I - Class A), including tack coat (RC2) | 2026-11-11 → 2026-11-18 (+7d) | 2026-12-05 → 2026-12-12 (+7d) | 44d → 45d |  |
| 4 | **Kerbstone Installation** | 2026-12-12 → 2026-12-19 (+7d) | 2027-01-31 → 2027-02-07 (+7d) |  |  |
| SDR-ST-CON-P1-4300 | Precast Concrete Curbstone, Type A2 | 2026-12-12 → 2026-12-19 (+7d) | 2027-01-03 → 2027-01-10 (+7d) | 2d → 9d |  |
| SDR-ST-CON-P1-4860 | Precast Concrete Curbstone, Type D | 2027-01-09 → 2027-01-16 (+7d) | 2027-01-31 → 2027-02-07 (+7d) | 2d → 9d |  |
| 5 | **Interlock Installation** | 2027-02-01 → 2027-02-08 (+7d) | 2027-03-24 → 2027-03-31 (+7d) |  |  |
| SDR-ST-CON-P1-4450 | Interlock Installation Part 1 | 2027-02-01 → 2027-02-08 (+7d) | 2027-02-24 → 2027-03-03 (+7d) | 2d → 9d |  |
| SDR-ST-CON-P1-4940 | Interlock Installation Part 2 | 2027-02-25 → 2027-03-04 (+7d) | 2027-03-24 → 2027-03-31 (+7d) | 2d → 9d |  |
| 6 | **Road Marking** | 2027-03-25 → 2027-04-01 (+7d) | 2027-04-21 → 2027-04-28 (+7d) |  |  |
| SDR-ST-CON-P1-5350 | Retroreflective Thermoplastic White Traffic lines | 2027-03-25 → 2027-04-01 (+7d) | 2027-03-31 → 2027-04-07 (+7d) | 2d → 9d |  |
| SDR-ST-CON-P1-5510 | Retroreflective Thermoplastic Yellow, Traffic lines | 2027-04-01 → 2027-04-08 (+7d) | 2027-04-07 → 2027-04-14 (+7d) | 2d → 9d |  |
| SDR-ST-CON-P1-5600 | Ceramic raised pavement markers | 2027-04-08 → 2027-04-15 (+7d) | 2027-04-14 → 2027-04-21 (+7d) | 2d → 9d |  |
| SDR-ST-CON-P1-5650 | Rumble strip | 2027-04-15 → 2027-04-22 (+7d) | 2027-04-21 → 2027-04-28 (+7d) | 2d → 9d |  |
| 7 | **Traffic Signage** | 2027-04-22 → 2027-04-29 (+7d) | 2027-05-09 → 2027-05-22 (+13d) |  |  |
| SDR-ST-CON-P1-5360 | Traffic signs, ground mounted, 1 Sheet Alumenium, (breakaway) Single post, with all accessories | 2027-04-22 → 2027-04-29 (+7d) | 2027-04-27 → 2027-05-04 (+7d) | 2d → 9d |  |
| SDR-ST-CON-P1-5520 | Traffic signs, ground mounted, 1 Sheet Aluminum, (breakaway) Double post, with all accessories | 2027-04-28 → 2027-05-05 (+7d) | 2027-05-03 → 2027-05-10 (+7d) | 2d → 9d |  |
| SDR-ST-CON-P1-5660 | Traffic signs, ground mounted, 2 Sheet Aluminum, (breakaway) Single post, with all accessories | 2027-05-04 → 2027-05-11 (+7d) | 2027-05-09 → 2027-05-22 (+13d) | 2d → 9d |  |
| 8 | **Speed table** | 2027-05-10 → 2027-05-23 (+13d) | 2027-05-15 → 2027-05-27 (+12d) |  |  |
| SDR-ST-CON-P1-5530 | Interlock speed table including interlock, flush kerb and marking | 2027-05-10 → 2027-05-23 (+13d) | 2027-05-15 → 2027-05-27 (+12d) | 2d → 9d |  |
| 12 | **ELECTRICAL WORKS** |  | 2027-07-22 → 2027-08-05 (+14d) |  |  |
| 2 | **MV Network** | 2026-10-12 → 2026-10-19 (+7d) | 2027-05-25 → 2027-05-26 (+1d) |  |  |
| 5 | **ROAD - 01** | 2026-10-12 → 2026-10-19 (+7d) | 2027-05-25 → 2027-05-12 (-13d) |  |  |
| 4 | **ROAD-01 From 1125 to 1765 m (7)** | 2026-10-12 → 2026-10-19 (+7d) | 2027-03-27 → 2027-04-03 (+7d) |  |  |
| 6 | **Excavation** | 2026-10-12 → 2026-10-19 (+7d) | 2026-12-23 → 2026-12-30 (+7d) |  |  |
| SDR-ST-CON-P1-1570 | Excavation Works Part 1 | 2026-10-12 → 2026-10-19 (+7d) | 2026-11-04 → 2026-11-11 (+7d) | 13d → 14d |  |
| SDR-ST-CON-P1-6090 | Excavation Works Part 2 | 2026-11-05 → 2026-11-12 (+7d) | 2026-11-29 → 2026-12-06 (+7d) | 37d → 41d |  |
| SDR-ST-CON-P1-6100 | Excavation Works Part 3 | 2026-11-30 → 2026-12-07 (+7d) | 2026-12-23 → 2026-12-30 (+7d) | 37d → 41d |  |
| 7 | **Pipe laying** | 2026-12-24 → 2026-12-31 (+7d) | 2027-01-17 → 2027-01-24 (+7d) |  |  |
| SDR-ST-CON-P1-2270 | Pipe Laying | 2026-12-24 → 2026-12-31 (+7d) | 2027-01-17 → 2027-01-24 (+7d) | 37d → 41d |  |
| 8 | **Backfilling** | 2027-01-18 → 2027-01-25 (+7d) | 2027-02-09 → 2027-02-16 (+7d) |  |  |
| SDR-ST-CON-P1-3000 | Backfilling Works | 2027-01-18 → 2027-01-25 (+7d) | 2027-02-09 → 2027-02-16 (+7d) | 37d → 41d |  |
| 9 | **Pulling Cable** | 2027-02-25 → 2027-03-04 (+7d) | 2027-03-27 → 2027-04-03 (+7d) |  |  |
| SDR-ST-CON-P1-3900 | Pulling Cable | 2027-02-25 → 2027-03-04 (+7d) | 2027-03-27 → 2027-04-03 (+7d) | 24.2d → 28.2d |  |
| 3 | **ROAD-01 From 470 to 1125 m (6)** | 2026-10-20 → 2026-10-27 (+7d) | 2027-03-25 → 2027-04-01 (+7d) |  |  |
| 6 | **Excavation** | 2026-10-20 → 2026-10-27 (+7d) | 2026-12-28 → 2027-01-04 (+7d) |  |  |
| SDR-ST-CON-P1-1720 | Excavation Works Part 1 | 2026-10-20 → 2026-10-27 (+7d) | 2026-11-12 → 2026-11-19 (+7d) | 13d → 14d |  |
| SDR-ST-CON-P1-6110 | Excavation Works Part2 | 2026-11-14 → 2026-11-21 (+7d) | 2026-12-07 → 2026-12-14 (+7d) | 29d → 30d |  |
| SDR-ST-CON-P1-6120 | Excavation Works Part 3 | 2026-12-08 → 2026-12-15 (+7d) | 2026-12-28 → 2027-01-04 (+7d) | 29d → 30d |  |
| 7 | **Pipe laying** | 2026-12-29 → 2027-01-05 (+7d) | 2027-01-21 → 2027-01-28 (+7d) |  |  |
| SDR-ST-CON-P1-2420 | Pipe Laying | 2026-12-29 → 2027-01-05 (+7d) | 2027-01-21 → 2027-01-28 (+7d) | 29d → 30d |  |
| 8 | **Backfilling** | 2027-01-23 → 2027-01-30 (+7d) | 2027-02-14 → 2027-02-21 (+7d) |  |  |
| SDR-ST-CON-P1-3150 | Backfilling Works | 2027-01-23 → 2027-01-30 (+7d) | 2027-02-14 → 2027-02-21 (+7d) | 29d → 30d |  |
| 9 | **Pulling Cable** | 2027-02-25 → 2027-03-04 (+7d) | 2027-03-25 → 2027-04-01 (+7d) |  |  |
| SDR-ST-CON-P1-4000 | Pulling Cable | 2027-02-25 → 2027-03-04 (+7d) | 2027-03-25 → 2027-04-01 (+7d) | 20.2d → 21.2d |  |
| 2 | **ROAD-01 N 03** | 2026-10-28 → 2026-11-04 (+7d) | 2027-05-25 → 2027-05-04 (-21d) |  |  |
| 6 | **Excavation** | 2026-10-28 → 2026-11-04 (+7d) | 2027-01-05 → 2027-01-12 (+7d) |  |  |
| SDR-ST-CON-P1-1770 | Excavation Works Part 1 | 2026-10-28 → 2026-11-04 (+7d) | 2026-11-21 → 2026-11-28 (+7d) | 13d → 14d |  |
| SDR-ST-CON-P1-6130 | Excavation Works Part 2 | 2026-11-22 → 2026-11-29 (+7d) | 2026-12-15 → 2026-12-22 (+7d) |  |  |
| SDR-ST-CON-P1-6140 | Excavation Works Part 3 | 2026-12-16 → 2026-12-23 (+7d) | 2027-01-05 → 2027-01-12 (+7d) |  |  |
| 7 | **Pipe laying** | 2027-01-06 → 2027-01-13 (+7d) | 2027-01-30 → 2027-02-06 (+7d) |  |  |
| SDR-ST-CON-P1-2500 | Pipe Laying | 2027-01-06 → 2027-01-13 (+7d) | 2027-01-30 → 2027-02-06 (+7d) |  |  |
| 8 | **Backfilling** | 2027-04-03 → 2027-04-11 (+8d) | 2027-04-25 → 2027-05-03 (+8d) |  |  |
| SDR-ST-CON-P1-3280 | Backfilling Works | 2027-04-03 → 2027-04-11 (+8d) | 2027-04-25 → 2027-05-03 (+8d) | 2.9d → 21.9d |  |
| 9 | **Pulling Cable** | 2027-04-26 → 2027-04-11 (-15d) | 2027-05-25 → 2027-05-04 (-21d) |  |  |
| SDR-ST-CON-P1-4250 | Pulling Cable | 2027-04-26 → 2027-04-11 (-15d) | 2027-05-25 → 2027-05-04 (-21d) | 2.9d → 21.9d | SDR-ST-CON-P1-2500, SDR-ST-CON-P1-3280, SDR-ST-PRO-MS-1220 → SDR-ST-CON-P1-2500, SDR-ST-CON-P1-3280 SS, SDR-ST-PRO-MS-1220 |
| 1 | **ROAD-01 N 01** | 2026-11-05 → 2026-11-12 (+7d) | 2027-05-05 → 2027-05-12 (+7d) |  |  |
| 6 | **Excavation** | 2026-11-05 → 2026-11-12 (+7d) | 2027-02-23 → 2027-03-02 (+7d) |  |  |
| SDR-ST-CON-P1-1730 | Excavation Works Part 1 | 2026-11-05 → 2026-11-12 (+7d) | 2026-11-29 → 2026-12-06 (+7d) | 13d → 14d |  |
| SDR-ST-CON-P1-6150 | Excavation Works Part 2 | 2027-01-14 → 2027-01-21 (+7d) | 2027-01-31 → 2027-02-07 (+7d) |  |  |
| SDR-ST-CON-P1-6160 | Excavation Works Part 3 | 2027-02-01 → 2027-02-08 (+7d) | 2027-02-23 → 2027-03-02 (+7d) |  |  |
| 7 | **Pipe laying** | 2027-02-24 → 2027-03-03 (+7d) | 2027-03-23 → 2027-03-30 (+7d) |  |  |
| SDR-ST-CON-P1-2430 | Pipe Laying | 2027-02-24 → 2027-03-03 (+7d) | 2027-03-23 → 2027-03-30 (+7d) |  |  |
| 8 | **Backfilling** | 2027-03-24 → 2027-03-31 (+7d) | 2027-04-14 → 2027-04-21 (+7d) |  |  |
| SDR-ST-CON-P1-3160 | Backfilling Works | 2027-03-24 → 2027-03-31 (+7d) | 2027-04-14 → 2027-04-21 (+7d) |  |  |
| 9 | **Pulling Cable** | 2027-04-15 → 2027-04-22 (+7d) | 2027-05-05 → 2027-05-12 (+7d) |  |  |
| SDR-ST-CON-P1-4010 | Pulling Cable | 2027-04-15 → 2027-04-22 (+7d) | 2027-05-05 → 2027-05-12 (+7d) |  |  |
| 6 | **ROAD - 02** | 2026-11-14 → 2026-11-21 (+7d) | 2027-05-06 → 2027-05-26 (+20d) |  |  |
| 3 | **ROAD-01 From 0 to 400 m (9) 2 Way 150 mm** | 2026-11-14 → 2026-11-21 (+7d) | 2027-04-26 → 2027-05-26 (+30d) |  |  |

| ID | Task | Start | Finish | Total float |
| --- | --- | --- | --- | --- |
| 6 | **Excavation** | 2026-11-14 → 2026-11-21 (+7d) | 2027-02-06 → 2027-03-15 (+37d) |  |
| SDR-ST-CON-P1-1920 | Excavation Works Part 1 | 2026-11-14 → 2026-11-21 (+7d) | 2026-12-07 → 2026-12-14 (+7d) | 13d → 14d |
| SDR-ST-CON-P1-6170 | Excavation Works Part 2 | 2026-12-08 → 2026-12-15 (+7d) | 2026-12-30 → 2027-01-06 (+7d) | 24d → 32d |
| SDR-ST-CON-P1-6180 | Excavation Works Part 3 | 2027-01-16 → 2027-02-16 (+31d) | 2027-02-06 → 2027-03-15 (+37d) | 11d → -2d |
| 7 | **Pipe laying** | 2027-02-14 → 2027-03-16 (+30d) | 2027-03-14 → 2027-04-07 (+24d) |  |
| SDR-ST-CON-P1-2660 | Pipe Laying | 2027-02-14 → 2027-03-16 (+30d) | 2027-03-14 → 2027-04-07 (+24d) | 5d → -2d |
| 8 | **Backfilling** | 2027-03-15 → 2027-04-08 (+24d) | 2027-04-05 → 2027-04-29 (+24d) |  |
| SDR-ST-CON-P1-3430 | Backfilling Works | 2027-03-15 → 2027-04-08 (+24d) | 2027-04-05 → 2027-04-29 (+24d) | 5d → -2d |
| 9 | **Pulling Cable** | 2027-04-06 → 2027-05-01 (+25d) | 2027-04-26 → 2027-05-26 (+30d) |  |
| SDR-ST-CON-P1-4320 | Pulling Cable | 2027-04-06 → 2027-05-01 (+25d) | 2027-04-26 → 2027-05-26 (+30d) | 5d → -2d |
| 2 | **ROAD-01 From 400 to 900 m (10) 2 Way 150 mm** | 2026-11-22 → 2026-11-29 (+7d) | 2027-05-06 → 2027-05-13 (+7d) |  |
| 6 | **Excavation** | 2026-11-22 → 2026-11-29 (+7d) | 2027-02-24 → 2027-03-03 (+7d) |  |
| SDR-ST-CON-P1-1840 | Excavation Works Part 1 | 2026-11-22 → 2026-11-29 (+7d) | 2026-12-15 → 2026-12-22 (+7d) | 13d → 14d |
| SDR-ST-CON-P1-6190 | Excavation Works Part 2 | 2027-01-14 → 2027-01-21 (+7d) | 2027-01-31 → 2027-02-07 (+7d) | 7.9d → 9d |
| SDR-ST-CON-P1-6200 | Excavation Works Part 3 | 2027-02-01 → 2027-02-08 (+7d) | 2027-02-24 → 2027-03-03 (+7d) | 7.9d → 9d |
| 7 | **Pipe laying** | 2027-02-25 → 2027-03-04 (+7d) | 2027-03-24 → 2027-03-31 (+7d) |  |
| SDR-ST-CON-P1-2590 | Pipe Laying | 2027-02-25 → 2027-03-04 (+7d) | 2027-03-24 → 2027-03-31 (+7d) |  |
| 8 | **Backfilling** | 2027-03-25 → 2027-04-01 (+7d) | 2027-04-15 → 2027-04-22 (+7d) |  |
| SDR-ST-CON-P1-3340 | Backfilling Works | 2027-03-25 → 2027-04-01 (+7d) | 2027-04-15 → 2027-04-22 (+7d) |  |
| 9 | **Pulling Cable** | 2027-04-17 → 2027-04-24 (+7d) | 2027-05-06 → 2027-05-13 (+7d) |  |
| SDR-ST-CON-P1-4050 | Pulling Cable | 2027-04-17 → 2027-04-24 (+7d) | 2027-05-06 → 2027-05-13 (+7d) |  |
| 1 | **ROAD-01 From 900 to 1239 m (11) 2 Way 150 mm** | 2026-11-30 → 2026-12-07 (+7d) | 2027-04-20 → 2027-04-27 (+7d) |  |
| 6 | **Excavation** | 2026-11-30 → 2026-12-07 (+7d) | 2027-02-07 → 2027-02-14 (+7d) |  |
| SDR-ST-CON-P1-2000 | Excavation Works Part 1 | 2026-11-30 → 2026-12-07 (+7d) | 2026-12-23 → 2026-12-30 (+7d) | 13d → 14d |
| SDR-ST-CON-P1-6210 | Excavation Works Part 2 | 2026-12-24 → 2026-12-31 (+7d) | 2027-01-16 → 2027-01-23 (+7d) | 13d → 14d |
| SDR-ST-CON-P1-6220 | Excavation Works Part 3 | 2027-01-17 → 2027-01-24 (+7d) | 2027-02-07 → 2027-02-14 (+7d) | 27d → 25d |
| 7 | **Pipe laying** | 2027-02-08 → 2027-02-15 (+7d) | 2027-03-03 → 2027-03-15 (+12d) |  |
| SDR-ST-CON-P1-2750 | Pipe Laying | 2027-02-08 → 2027-02-15 (+7d) | 2027-03-03 → 2027-03-15 (+12d) | 27d → 25d |
| 8 | **Backfilling** | 2027-03-04 → 2027-03-16 (+12d) | 2027-03-30 → 2027-04-06 (+7d) |  |
| SDR-ST-CON-P1-3460 | Backfilling Works | 2027-03-04 → 2027-03-16 (+12d) | 2027-03-30 → 2027-04-06 (+7d) | 27d → 25d |
| 9 | **Pulling Cable** | 2027-03-31 → 2027-04-07 (+7d) | 2027-04-20 → 2027-04-27 (+7d) |  |
| SDR-ST-CON-P1-3980 | Pulling Cable | 2027-03-31 → 2027-04-07 (+7d) | 2027-04-20 → 2027-04-27 (+7d) | 27d → 25d |
| 1 | **Earthing System** | 2027-01-17 → 2027-01-24 (+7d) | 2027-02-03 → 2027-02-10 (+7d) |  |
| SDR-ST-CON-P1-4840 | Installation of Earthing System Including lighting poles circuits | 2027-01-17 → 2027-01-24 (+7d) | 2027-02-03 → 2027-02-10 (+7d) | 13d → 14d |
| 16 | **Street Lighting Network** |  | 2027-07-22 → 2027-08-05 (+14d) |  |
| 7 | **ROAD - 01** |  | 2027-07-21 → 2027-08-05 (+15d) |  |
| 2 | **ROAD-01 From 470 to 1125 m (6)** |  | 2027-01-28 → 2027-02-04 (+7d) |  |
| 10 | **Excavation** |  | 2026-11-04 → 2026-11-11 (+7d) |  |
| SDR-ST-CON-P1-1180 | Excavation for LV Cable trench Section 1 |  | 2026-11-03 → 2026-11-10 (+7d) | 18d → 19d |
| SDR-ST-CON-P1-1560 | Excavation for LV Cable trench Section 2 | 2026-10-12 → 2026-10-19 (+7d) | 2026-11-04 → 2026-11-11 (+7d) | 18d → 19d |
| SDR-ST-CON-P1-2250 | Excavation for LV Cable trench Section 3 | 2026-10-12 → 2026-10-19 (+7d) | 2026-11-04 → 2026-11-11 (+7d) | 18d → 19d |
| 11 | **Install Footings** | 2026-11-05 → 2026-11-12 (+7d) | 2026-11-29 → 2026-12-06 (+7d) |  |
| SDR-ST-CON-P1-2980 | Install Footings | 2026-11-05 → 2026-11-12 (+7d) | 2026-11-29 → 2026-12-06 (+7d) | 18d → 19d |
| 12 | **Backfilling** | 2026-11-30 → 2026-12-07 (+7d) | 2026-12-10 → 2026-12-17 (+7d) |  |
| SDR-ST-CON-P1-3870 | Backfilling over LV Cables of Street lighting | 2026-11-30 → 2026-12-07 (+7d) | 2026-12-10 → 2026-12-17 (+7d) | 18d → 19d |
| 13 | **Install pole** | 2026-12-12 → 2026-12-19 (+7d) | 2027-01-28 → 2027-02-04 (+7d) |  |
| SDR-ST-CON-P1-4420 | Install Pole Part 1 | 2026-12-12 → 2026-12-19 (+7d) | 2027-01-04 → 2027-01-11 (+7d) | 18d → 19d |
| SDR-ST-CON-P1-5170 | Install Pole Part 2 | 2027-01-05 → 2027-01-12 (+7d) | 2027-01-28 → 2027-02-04 (+7d) | 18d → 19d |
| 3 | **ROAD-01 From 1125 to 1765 m (7)** |  | 2027-03-18 → 2027-03-25 (+7d) |  |
| 10 | **Excavation** |  | 2026-12-24 → 2026-12-31 (+7d) |  |
| SDR-ST-CON-P1-1590 | Excavation for LV Cable trench Section 1 |  | 2026-11-03 → 2026-11-10 (+7d) | 1d → 2d |
| SDR-ST-CON-P1-2390 | Excavation for LV Cable trench Section 2 | 2026-11-07 → 2026-11-14 (+7d) | 2026-11-30 → 2026-12-07 (+7d) | 1d → 2d |
| SDR-ST-CON-P1-3120 | Excavation for LV Cable trench Section 3 | 2026-12-01 → 2026-12-08 (+7d) | 2026-12-24 → 2026-12-31 (+7d) | 1d → 2d |
| 11 | **Install Footings** | 2026-12-26 → 2027-01-02 (+7d) | 2027-01-11 → 2027-01-18 (+7d) |  |
| SDR-ST-CON-P1-3990 | Install Footings | 2026-12-26 → 2027-01-02 (+7d) | 2027-01-11 → 2027-01-18 (+7d) | 1d → 2d |
| 12 | **Backfilling** | 2027-01-12 → 2027-01-19 (+7d) | 2027-01-23 → 2027-01-30 (+7d) |  |
| SDR-ST-CON-P1-4680 | Backfilling over LV Cables of Street lighting | 2027-01-12 → 2027-01-19 (+7d) | 2027-01-23 → 2027-01-30 (+7d) | 1d → 2d |
| 13 | **Install pole** | 2027-01-24 → 2027-01-31 (+7d) | 2027-03-18 → 2027-03-25 (+7d) |  |
| SDR-ST-CON-P1-5050 | Install Pole Part 1 | 2027-01-24 → 2027-01-31 (+7d) | 2027-02-16 → 2027-02-24 (+8d) | 1d → 2d |
| SDR-ST-CON-P1-5760 | Install Pole Part 2 | 2027-02-17 → 2027-02-25 (+8d) | 2027-03-18 → 2027-03-25 (+7d) | 1d → 2d |
| 1 | **ROAD-01 From 0 to 470 m (3)** |  | 2027-04-10 → 2027-04-18 (+8d) |  |
| 10 | **Excavation** |  | 2026-11-04 → 2026-11-11 (+7d) |  |
| SDR-ST-CON-P1-1500 | Excavation for LV Cable trench Section 1 |  | 2026-11-04 → 2026-11-11 (+7d) | 16d → 17d |
| SDR-ST-CON-P1-2320 | Excavation for LV Cable trench Section 2 | 2026-10-12 → 2026-10-19 (+7d) | 2026-11-04 → 2026-11-11 (+7d) | 16d → 17d |
| SDR-ST-CON-P1-3040 | Excavation for LV Cable trench Section 3 | 2026-10-12 → 2026-10-19 (+7d) | 2026-11-04 → 2026-11-11 (+7d) | 16d → 17d |
| 11 | **Install Footings** | 2026-11-05 → 2026-11-12 (+7d) | 2026-11-29 → 2026-12-06 (+7d) |  |
| SDR-ST-CON-P1-3920 | Install Footings | 2026-11-05 → 2026-11-12 (+7d) | 2026-11-29 → 2026-12-06 (+7d) | 16d → 17d |
| 12 | **Backfilling** | 2026-11-30 → 2026-12-07 (+7d) | 2026-12-13 → 2026-12-20 (+7d) |  |
| SDR-ST-CON-P1-4850 | Backfilling over LV Cables of Street lighting | 2026-11-30 → 2026-12-07 (+7d) | 2026-12-13 → 2026-12-20 (+7d) | 16d → 17d |
| 13 | **Install pole** | 2026-12-14 → 2026-12-21 (+7d) | 2027-04-10 → 2027-04-18 (+8d) |  |

| ID | Task | Start | Finish | Total float |
| --- | --- | --- | --- | --- |
| SDR-ST-CON-P1-5330 | Install Pole Part 1 | 2026-12-14 → 2026-12-21 (+7d) | 2027-01-06 → 2027-01-13 (+7d) | 16d → 17d |
| SDR-ST-CON-P1-5780 | Install Pole Part 2 | 2027-01-18 → 2027-01-25 (+7d) | 2027-02-10 → 2027-02-17 (+7d) | 7d → 8d |
| SDR-ST-CON-P1-6070 | Install Pole Part 3 | 2027-02-11 → 2027-02-18 (+7d) | 2027-03-08 → 2027-03-20 (+12d) | 7d → 8d |
| SDR-ST-CON-P1-6080 | Install Pole Part 4 | 2027-04-03 → 2027-04-11 (+8d) | 2027-04-10 → 2027-04-18 (+8d) | 16d → 15d |
| 4 | **ROAD-01 N (1)** | 2026-10-12 → 2026-10-19 (+7d) | 2027-01-30 → 2027-02-06 (+7d) |  |
| 10 | **Excavation** | 2026-10-12 → 2026-10-19 (+7d) | 2026-11-07 → 2026-11-14 (+7d) |  |
| SDR-ST-CON-P1-1700 | Excavation for LV Cable trench Section 1 | 2026-10-12 → 2026-10-19 (+7d) | 2026-11-04 → 2026-11-11 (+7d) | 17d → 18d |
| SDR-ST-CON-P1-2410 | Excavation for LV Cable trench Section 2 | 2026-10-14 → 2026-10-21 (+7d) | 2026-11-07 → 2026-11-14 (+7d) | 17d → 18d |
| SDR-ST-CON-P1-3190 | Excavation for LV Cable trench Section 3 | 2026-10-14 → 2026-10-21 (+7d) | 2026-11-07 → 2026-11-14 (+7d) | 17d → 18d |
| 11 | **Install Footings** | 2026-11-08 → 2026-11-15 (+7d) | 2026-12-01 → 2026-12-08 (+7d) |  |
| SDR-ST-CON-P1-4110 | Install Footings | 2026-11-08 → 2026-11-15 (+7d) | 2026-12-01 → 2026-12-08 (+7d) | 17d → 18d |
| 12 | **Backfilling** | 2026-12-02 → 2026-12-09 (+7d) | 2026-12-12 → 2026-12-19 (+7d) |  |
| SDR-ST-CON-P1-4960 | Backfilling over LV Cables of Street lighting | 2026-12-02 → 2026-12-09 (+7d) | 2026-12-12 → 2026-12-19 (+7d) | 17d → 18d |
| 13 | **Install pole** | 2026-12-13 → 2026-12-20 (+7d) | 2027-01-30 → 2027-02-06 (+7d) |  |
| SDR-ST-CON-P1-5340 | Install Pole Part 1 | 2026-12-13 → 2026-12-20 (+7d) | 2027-01-05 → 2027-01-12 (+7d) | 17d → 18d |
| SDR-ST-CON-P1-5790 | Install Pole Part 2 | 2027-01-06 → 2027-01-13 (+7d) | 2027-01-30 → 2027-02-06 (+7d) | 17d → 18d |
| 5 | **Road Crossing & Drawpits** | 2026-10-12 → 2026-10-19 (+7d) | 2027-01-03 → 2027-01-10 (+7d) |  |
| 1 | **ROAD - 01** | 2026-10-12 → 2026-10-19 (+7d) | 2027-01-03 → 2027-01-10 (+7d) |  |
| 1 | **ROAD-01 From 470 to 1125 m (6)** | 2026-10-12 → 2026-10-19 (+7d) | 2026-12-30 → 2027-01-06 (+7d) |  |
| 1 | **Road crossing Ducts & Drawpits** | 2026-10-12 → 2026-10-19 (+7d) | 2026-12-30 → 2027-01-06 (+7d) |  |
| 1 | **Excavation** | 2026-10-12 → 2026-10-19 (+7d) | 2026-11-04 → 2026-11-11 (+7d) |  |
| SDR-ST-CON-P1-1450 | Excavation for GRP Pipes Section 1 | 2026-10-12 → 2026-10-19 (+7d) | 2026-11-04 → 2026-11-11 (+7d) |  |
| 7 | **bedding Works** | 2026-11-05 → 2026-11-12 (+7d) | 2026-11-29 → 2026-12-06 (+7d) |  |
| SDR-ST-CON-P1-2160 | Sand bedding for GRP Pipes | 2026-11-05 → 2026-11-12 (+7d) | 2026-11-29 → 2026-12-06 (+7d) |  |
| 2 | **Pipes Laying** | 2026-11-30 → 2026-12-07 (+7d) | 2026-12-15 → 2026-12-22 (+7d) |  |
| SDR-ST-CON-P1-2890 | Install ST GRP Pipes | 2026-11-30 → 2026-12-07 (+7d) | 2026-12-15 → 2026-12-22 (+7d) |  |
| 6 | **Testing** | 2026-12-16 → 2026-12-23 (+7d) | 2026-12-23 → 2026-12-30 (+7d) |  |
| SDR-ST-CON-P1-3530 | Testing ST GRP Pipes | 2026-12-16 → 2026-12-23 (+7d) | 2026-12-23 → 2026-12-30 (+7d) |  |
| 3 | **Backfilling** | 2026-12-24 → 2026-12-31 (+7d) | 2026-12-30 → 2027-01-06 (+7d) |  |
| SDR-ST-CON-P1-3810 | Backfilling ST GRP Pipes | 2026-12-24 → 2026-12-31 (+7d) | 2026-12-30 → 2027-01-06 (+7d) |  |
| 2 | **ROAD-01 From 1125 to 1765 m (7)** | 2026-10-12 → 2026-10-19 (+7d) | 2026-12-30 → 2027-01-06 (+7d) |  |
| 1 | **Road crossing Ducts & Drawpits** | 2026-10-12 → 2026-10-19 (+7d) | 2026-12-30 → 2027-01-06 (+7d) |  |
| 1 | **Excavation** | 2026-10-12 → 2026-10-19 (+7d) | 2026-11-04 → 2026-11-11 (+7d) |  |
| SDR-ST-CON-P1-1600 | Excavation for GRP Pipes Section 1 | 2026-10-12 → 2026-10-19 (+7d) | 2026-11-04 → 2026-11-11 (+7d) | 24.9d → 25.9d |
| 7 | **bedding Works** | 2026-11-05 → 2026-11-12 (+7d) | 2026-11-22 → 2026-11-29 (+7d) |  |
| SDR-ST-CON-P1-2280 | Sand bedding for GRP Pipes | 2026-11-05 → 2026-11-12 (+7d) | 2026-11-22 → 2026-11-29 (+7d) | 24.9d → 25.9d |
| 2 | **Pipes Laying** | 2026-11-23 → 2026-11-30 (+7d) | 2026-12-06 → 2026-12-13 (+7d) |  |
| SDR-ST-CON-P1-2800 | Install ST GRP Pipes | 2026-11-23 → 2026-11-30 (+7d) | 2026-12-06 → 2026-12-13 (+7d) | 24.9d → 25.9d |
| 6 | **Testing** | 2026-12-07 → 2026-12-14 (+7d) | 2026-12-16 → 2026-12-23 (+7d) |  |
| SDR-ST-CON-P1-3250 | Testing ST GRP Pipes | 2026-12-07 → 2026-12-14 (+7d) | 2026-12-16 → 2026-12-23 (+7d) | 24.9d → 25.9d |
| 3 | **Backfilling** | 2026-12-17 → 2026-12-24 (+7d) | 2026-12-30 → 2027-01-06 (+7d) |  |
| SDR-ST-CON-P1-3670 | Backfilling ST GRP Pipes | 2026-12-17 → 2026-12-24 (+7d) | 2026-12-30 → 2027-01-06 (+7d) | 24.9d → 25.9d |
| 3 | **ROAD-01 From 0 to 470 m (3)** | 2026-10-12 → 2026-10-19 (+7d) | 2027-01-03 → 2027-01-10 (+7d) |  |
| 1 | **Road crossing Ducts & Drawpits** | 2026-10-12 → 2026-10-19 (+7d) | 2027-01-03 → 2027-01-10 (+7d) |  |
| 1 | **Excavation** | 2026-10-12 → 2026-10-19 (+7d) | 2026-11-04 → 2026-11-11 (+7d) |  |
| SDR-ST-CON-P1-1510 | Excavation for GRP Pipes Section 1 | 2026-10-12 → 2026-10-19 (+7d) | 2026-11-04 → 2026-11-11 (+7d) | 29d → 40d |
| 7 | **bedding Works** | 2026-11-05 → 2026-11-12 (+7d) | 2026-11-29 → 2026-12-06 (+7d) |  |
| SDR-ST-CON-P1-2180 | Sand bedding for GRP Pipes | 2026-11-05 → 2026-11-12 (+7d) | 2026-11-29 → 2026-12-06 (+7d) | 29d → 40d |
| 2 | **Pipes Laying** | 2026-11-30 → 2026-12-07 (+7d) | 2026-12-14 → 2026-12-21 (+7d) |  |
| SDR-ST-CON-P1-2930 | Install ST GRP Pipes | 2026-11-30 → 2026-12-07 (+7d) | 2026-12-14 → 2026-12-21 (+7d) | 29d → 40d |
| 6 | **Testing** | 2026-12-15 → 2026-12-22 (+7d) | 2026-12-21 → 2026-12-28 (+7d) |  |
| SDR-ST-CON-P1-3510 | Testing ST GRP Pipes | 2026-12-15 → 2026-12-22 (+7d) | 2026-12-21 → 2026-12-28 (+7d) | 29d → 40d |
| 3 | **Backfilling** | 2026-12-23 → 2026-12-30 (+7d) | 2027-01-03 → 2027-01-10 (+7d) |  |
| SDR-ST-CON-P1-3760 | Backfilling ST GRP Pipes | 2026-12-23 → 2026-12-30 (+7d) | 2027-01-03 → 2027-01-10 (+7d) | 29d → 40d |
| 4 | **ROAD-01 N (1)** | 2026-10-12 → 2026-10-19 (+7d) | 2026-12-31 → 2027-01-07 (+7d) |  |
| 1 | **Road crossing Ducts & Drawpits** | 2026-10-12 → 2026-10-19 (+7d) | 2026-12-31 → 2027-01-07 (+7d) |  |
| 1 | **Excavation** | 2026-10-12 → 2026-10-19 (+7d) | 2026-11-04 → 2026-11-11 (+7d) |  |
| SDR-ST-CON-P1-1710 | Excavation for GRP Pipes Section 1 | 2026-10-12 → 2026-10-19 (+7d) | 2026-11-04 → 2026-11-11 (+7d) | 31d → 42d |
| 7 | **bedding Works** | 2026-11-05 → 2026-11-12 (+7d) | 2026-11-29 → 2026-12-06 (+7d) |  |
| SDR-ST-CON-P1-2360 | Sand bedding for GRP Pipes | 2026-11-05 → 2026-11-12 (+7d) | 2026-11-29 → 2026-12-06 (+7d) | 31d → 42d |
| 2 | **Pipes Laying** | 2026-11-30 → 2026-12-07 (+7d) | 2026-12-10 → 2026-12-17 (+7d) |  |
| SDR-ST-CON-P1-3090 | Install ST GRP Pipes | 2026-11-30 → 2026-12-07 (+7d) | 2026-12-10 → 2026-12-17 (+7d) | 31d → 42d |
| 6 | **Testing** | 2026-12-12 → 2026-12-19 (+7d) | 2026-12-22 → 2026-12-29 (+7d) |  |
| SDR-ST-CON-P1-3520 | Testing ST GRP Pipes | 2026-12-12 → 2026-12-19 (+7d) | 2026-12-22 → 2026-12-29 (+7d) | 31d → 42d |
| 3 | **Backfilling** | 2026-12-24 → 2026-12-31 (+7d) | 2026-12-31 → 2027-01-07 (+7d) |  |
| SDR-ST-CON-P1-3930 | Backfilling ST GRP Pipes | 2026-12-24 → 2026-12-31 (+7d) | 2026-12-31 → 2027-01-07 (+7d) | 31d → 42d |
| 11 | **Ring Main Unit** | 2027-04-21 → 2027-04-28 (+7d) | 2027-07-11 → 2027-07-12 (+1d) |  |
| 1 | **Leveling** | 2027-04-21 → 2027-04-28 (+7d) | 2027-05-13 → 2027-05-26 (+13d) |  |
| SDR-ST-CON-P1-5840 | Ring Main Unit leveling | 2027-04-21 → 2027-04-28 (+7d) | 2027-05-13 → 2027-05-26 (+13d) |  |
| 2 | **Lean Concrete** | 2027-05-25 → 2027-05-27 (+2d) | 2027-06-17 → 2027-06-19 (+2d) |  |

| ID | Task | Start | Finish | Total float | Predecessors |
| --- | --- | --- | --- | --- | --- |
| SDR-ST-CON-P1-5890 | Ring Main Unit Lean Concrete | 2027-05-25 → 2027-05-27 (+2d) | 2027-06-17 → 2027-06-19 (+2d) | 2.9d → 7d |  |
| 3 | **Installation** | 2027-06-17 → 2027-06-20 (+3d) | 2027-07-11 → 2027-07-12 (+1d) |  |  |
| SDR-ST-CON-P1-5920 | Ring Main Unit installation for Street Lighting | 2027-06-17 → 2027-06-20 (+3d) | 2027-07-11 → 2027-07-12 (+1d) | 2.9d → 7d |  |
| 12 | **Feeder Pillars** | 2027-04-27 → 2027-05-27 (+30d) | 2027-07-12 → 2027-08-05 (+24d) |  |  |
| 1 | **Leveling** | 2027-04-27 → 2027-05-27 (+30d) | 2027-05-26 → 2027-06-20 (+25d) |  |  |
| SDR-ST-CON-P1-5880 | Feeder Pillars Leveling | 2027-04-27 → 2027-05-27 (+30d) | 2027-05-26 → 2027-06-20 (+25d) | 5d → -2d |  |
| 2 | **Lean Concrete** | 2027-05-27 → 2027-06-21 (+25d) | 2027-06-19 → 2027-07-13 (+24d) |  |  |
| SDR-ST-CON-P1-5930 | Feeder Pillars Lean Concrete | 2027-05-27 → 2027-06-21 (+25d) | 2027-06-19 → 2027-07-13 (+24d) | 5d → -2d |  |
| 3 | **Installation** | 2027-06-20 → 2027-07-14 (+24d) | 2027-07-12 → 2027-08-05 (+24d) |  |  |
| SDR-ST-CON-P1-6000 | Feeder Pillars Installation | 2027-06-20 → 2027-07-14 (+24d) | 2027-07-12 → 2027-08-05 (+24d) | 5d → -2d |  |
| 13 | **KWH Frame** | 2027-06-02 → 2027-06-03 (+1d) | 2027-07-21 → 2027-07-22 (+1d) |  |  |
| 1 | **Leveling** | 2027-06-02 → 2027-06-03 (+1d) | 2027-06-24 → 2027-06-26 (+2d) |  |  |
| SDR-ST-CON-P1-5940 | KWH meter mounting frame Leveling | 2027-06-02 → 2027-06-03 (+1d) | 2027-06-24 → 2027-06-26 (+2d) | 2d → 12d | SDR-ST-CON-P1-5880, SDR-ST-CO-1010 → SDR-ST-CON-P1-5880 SS, SDR-ST-CO-1010 SS |
| 2 | **Lean Concrete** | 2027-06-26 → 2027-06-27 (+1d) | 2027-07-12 → 2027-07-13 (+1d) |  |  |
| SDR-ST-CON-P1-6010 | KWH meter mounting frame Lean Concrete | 2027-06-26 → 2027-06-27 (+1d) | 2027-07-12 → 2027-07-13 (+1d) | 2d → 12d |  |
| 3 | **Installation** | 2027-07-13 → 2027-07-14 (+1d) | 2027-07-21 → 2027-07-22 (+1d) |  |  |
| SDR-ST-CON-P1-6040 | KWH meter mounting frame installation | 2027-07-13 → 2027-07-14 (+1d) | 2027-07-21 → 2027-07-22 (+1d) | 2d → 12d |  |
| 14 | **Street Lighting Sub-station** | 2027-06-02 → 2027-06-03 (+1d) | 2027-07-14 → 2027-07-10 (-4d) |  |  |
| 1 | **Leveling** | 2027-06-02 → 2027-06-03 (+1d) | 2027-06-24 → 2027-06-26 (+2d) |  |  |
| SDR-ST-CON-P1-5950 | Unit Substation Leveling Part 1 | 2027-06-02 → 2027-06-03 (+1d) | 2027-06-24 → 2027-06-26 (+2d) | 4d → 15d |  |
| SDR-ST-CON-P1-5960 | Unit Substation Leveling Part 2 | 2027-06-02 → 2027-06-03 (+1d) | 2027-06-24 → 2027-06-26 (+2d) | 4d → 15d |  |
| 2 | **Lean Concrete** | 2027-06-26 → 2027-06-27 (+1d) | 2027-07-08 → 2027-07-10 (+2d) |  |  |
| SDR-ST-CON-P1-6020 | Unit Substation Lean Concrete | 2027-06-26 → 2027-06-27 (+1d) | 2027-07-08 → 2027-07-10 (+2d) | 4d → 15d | SDR-ST-CON-P1-5950, SDR-ST-CON-P1-5960 → SDR-ST-CON-P1-5950 SS, SDR-ST-CON-P1-5960 |
| 3 | **Installation** | 2027-07-10 → 2027-06-27 (-13d) | 2027-07-14 → 2027-07-01 (-13d) |  |  |
| SDR-ST-CON-P1-6050 | Unit Substation Install for Street Lighting | 2027-07-10 → 2027-06-27 (-13d) | 2027-07-14 → 2027-07-01 (-13d) | 4d → 15d | SDR-ST-CON-P1-6020 → SDR-ST-CON-P1-6020 SS |
| 8 | **ROAD - 02** | 2026-10-12 → 2026-10-19 (+7d) | 2027-07-22 → 2027-07-26 (+4d) |  |  |
| 6 | **ROAD-01 From 0 to 400 m (9) 2 Way 110 mm** | 2026-10-12 → 2026-10-19 (+7d) | 2027-01-30 → 2027-02-06 (+7d) |  |  |
| 10 | **Excavation** | 2026-10-12 → 2026-10-19 (+7d) | 2026-12-06 → 2026-12-13 (+7d) |  |  |
| SDR-ST-CON-P1-1310 | Excavation for LV Cable trench Section 1 | 2026-10-12 → 2026-10-19 (+7d) | 2026-10-28 → 2026-11-04 (+7d) | 7d → 15d |  |
| SDR-ST-CON-P1-1780 | Excavation for LV Cable trench Section 2 | 2026-11-01 → 2026-11-08 (+7d) | 2026-11-17 → 2026-11-24 (+7d) | 7d → 15d |  |
| SDR-ST-CON-P1-2350 | Excavation for LV Cable trench Section 3 | 2026-11-18 → 2026-11-25 (+7d) | 2026-12-06 → 2026-12-13 (+7d) | 7d → 15d |  |
| 11 | **Install Footings** | 2026-12-07 → 2026-12-14 (+7d) | 2026-12-23 → 2026-12-30 (+7d) |  |  |
| SDR-ST-CON-P1-2860 | Install Footings | 2026-12-07 → 2026-12-14 (+7d) | 2026-12-23 → 2026-12-30 (+7d) | 7d → 15d |  |
| 12 | **Backfilling** | 2026-12-24 → 2026-12-31 (+7d) | 2027-01-11 → 2027-01-18 (+7d) |  |  |
| SDR-ST-CON-P1-3500 | Backfilling over LV Cables of Street lighting | 2026-12-24 → 2026-12-31 (+7d) | 2027-01-11 → 2027-01-18 (+7d) | 7d → 15d |  |
| 13 | **Install pole** | 2027-01-12 → 2027-01-19 (+7d) | 2027-01-30 → 2027-02-06 (+7d) |  |  |
| SDR-ST-CON-P1-4260 | Install Pole Part 1 | 2027-01-12 → 2027-01-19 (+7d) | 2027-01-20 → 2027-01-27 (+7d) | 7d → 15d |  |
| SDR-ST-CON-P1-4570 | Install Pole Part 2 | 2027-01-21 → 2027-01-28 (+7d) | 2027-01-30 → 2027-02-06 (+7d) | 7d → 15d |  |
| 5 | **ROAD-01 From 400 to 900 m (10) 4 Way 110 mm** | 2026-10-12 → 2026-10-19 (+7d) | 2027-01-24 → 2027-01-31 (+7d) |  |  |
| 10 | **Excavation** | 2026-10-12 → 2026-10-19 (+7d) | 2026-10-28 → 2026-11-04 (+7d) |  |  |
| SDR-ST-CON-P1-1260 | Excavation for LV Cable trench Section 1 | 2026-10-12 → 2026-10-19 (+7d) | 2026-10-28 → 2026-11-04 (+7d) | 7d → 8d |  |
| SDR-ST-CON-P1-1760 | Excavation for LV Cable trench Section 2 | 2026-10-12 → 2026-10-19 (+7d) | 2026-10-28 → 2026-11-04 (+7d) |  |  |
| SDR-ST-CON-P1-2260 | Excavation for LV Cable trench Section 3 | 2026-10-12 → 2026-10-19 (+7d) | 2026-10-28 → 2026-11-04 (+7d) |  |  |
| 11 | **Install Footings** | 2026-10-29 → 2026-11-05 (+7d) | 2026-11-14 → 2026-11-21 (+7d) |  |  |
| SDR-ST-CON-P1-2770 | Install Footings | 2026-10-29 → 2026-11-05 (+7d) | 2026-11-14 → 2026-11-21 (+7d) |  |  |
| 12 | **Backfilling** | 2026-11-15 → 2026-11-22 (+7d) | 2026-11-30 → 2026-12-07 (+7d) |  |  |
| SDR-ST-CON-P1-3350 | Backfilling over LV Cables of Street lighting | 2026-11-15 → 2026-11-22 (+7d) | 2026-11-30 → 2026-12-07 (+7d) |  |  |
| 13 | **Install pole** | 2026-12-01 → 2026-12-08 (+7d) | 2027-01-24 → 2027-01-31 (+7d) |  |  |
| SDR-ST-CON-P1-3940 | Install Pole Part 1 | 2026-12-01 → 2026-12-08 (+7d) | 2026-12-09 → 2026-12-16 (+7d) |  |  |
| SDR-ST-CON-P1-4400 | Install Pole Part 2 | 2027-01-16 → 2027-01-23 (+7d) | 2027-01-24 → 2027-01-31 (+7d) | 157d → 151d |  |
| 4 | **ROAD-01 From 900 to 1239 m (11) 2 Way 110 mm** | 2026-10-12 → 2026-10-19 (+7d) | 2027-02-03 → 2027-02-10 (+7d) |  |  |
| 10 | **Excavation** | 2026-10-12 → 2026-10-19 (+7d) | 2026-12-01 → 2026-12-08 (+7d) |  |  |
| SDR-ST-CON-P1-1360 | Excavation for LV Cable trench Section 1 | 2026-10-12 → 2026-10-19 (+7d) | 2026-10-27 → 2026-11-03 (+7d) | 12d → 13d |  |
| SDR-ST-CON-P1-1900 | Excavation for LV Cable trench Section 2 | 2026-10-31 → 2026-11-07 (+7d) | 2026-11-15 → 2026-11-22 (+7d) | 18d → 20d |  |
| SDR-ST-CON-P1-2400 | Excavation for LV Cable trench Section 3 | 2026-11-16 → 2026-11-23 (+7d) | 2026-12-01 → 2026-12-08 (+7d) | 18d → 20d |  |
| 11 | **Install Footings** | 2026-12-02 → 2026-12-09 (+7d) | 2026-12-17 → 2026-12-24 (+7d) |  |  |
| SDR-ST-CON-P1-2840 | Install Footings | 2026-12-02 → 2026-12-09 (+7d) | 2026-12-17 → 2026-12-24 (+7d) | 18d → 20d |  |
| 12 | **Backfilling** | 2026-12-19 → 2026-12-26 (+7d) | 2027-01-03 → 2027-01-10 (+7d) |  |  |
| SDR-ST-CON-P1-3470 | Backfilling over LV Cables of Street lighting | 2026-12-19 → 2026-12-26 (+7d) | 2027-01-03 → 2027-01-10 (+7d) | 18d → 20d |  |
| 13 | **Install pole** | 2027-01-04 → 2027-01-11 (+7d) | 2027-02-03 → 2027-02-10 (+7d) |  |  |
| SDR-ST-CON-P1-4080 | Install Pole Part 1 | 2027-01-04 → 2027-01-11 (+7d) | 2027-01-18 → 2027-01-25 (+7d) | 18d → 20d |  |
| SDR-ST-CON-P1-4610 | Install Pole Part 2 | 2027-01-19 → 2027-01-26 (+7d) | 2027-02-03 → 2027-02-10 (+7d) | 18d → 20d |  |
| 1 | **Road Crossing & Drawpits** | 2026-10-12 → 2026-10-19 (+7d) | 2027-01-10 → 2027-01-17 (+7d) |  |  |
| 2 | **ROAD - 02** | 2026-10-12 → 2026-10-19 (+7d) | 2027-01-10 → 2027-01-17 (+7d) |  |  |
| 1 | **ROAD-01 From 0 to 400 m (9) 2 Way 110 mm** | 2026-10-12 → 2026-10-19 (+7d) | 2027-01-10 → 2027-01-17 (+7d) |  |  |
| 1 | **Road crossing Ducts & Drawpits** | 2026-10-12 → 2026-10-19 (+7d) | 2027-01-10 → 2027-01-17 (+7d) |  |  |
| 1 | **Excavation** | 2026-10-12 → 2026-10-19 (+7d) | 2026-11-04 → 2026-11-11 (+7d) |  |  |
| SDR-ST-CON-P1-1320 | Excavation for GRP Pipes Section 1 | 2026-10-12 → 2026-10-19 (+7d) | 2026-11-04 → 2026-11-11 (+7d) |  |  |
| 7 | **bedding Works** | 2026-11-05 → 2026-11-12 (+7d) | 2026-11-25 → 2026-12-02 (+7d) |  |  |
| SDR-ST-CON-P1-1950 | Sand bedding for GRP Pipes | 2026-11-05 → 2026-11-12 (+7d) | 2026-11-25 → 2026-12-02 (+7d) |  |  |

| ID | Task | Start | Finish | Complete | Total float | Predecessors |
| --- | --- | --- | --- | --- | --- | --- |
| 2 | **Pipes Laying** | 2026-11-26 → 2026-12-03 (+7d) | 2026-12-14 → 2026-12-21 (+7d) |  |  |  |
| SDR-ST-CON-P1-2560 | Install ST GRP Pipes | 2026-11-26 → 2026-12-03 (+7d) | 2026-12-14 → 2026-12-21 (+7d) |  |  |  |
| 6 | **Testing** | 2026-12-15 → 2026-12-22 (+7d) | 2026-12-28 → 2027-01-04 (+7d) |  |  |  |
| SDR-ST-CON-P1-3200 | Testing ST GRP Pipes | 2026-12-15 → 2026-12-22 (+7d) | 2026-12-28 → 2027-01-04 (+7d) |  |  |  |
| 3 | **Backfilling** | 2026-12-29 → 2027-01-05 (+7d) | 2027-01-10 → 2027-01-17 (+7d) |  |  |  |
| SDR-ST-CON-P1-3700 | Backfilling ST GRP Pipes | 2026-12-29 → 2027-01-05 (+7d) | 2027-01-10 → 2027-01-17 (+7d) |  |  |  |
| 2 | **ROAD-01 From 400 to 900 m (10) 4 Way 110 mm** | 2026-10-12 → 2026-10-19 (+7d) | 2027-01-06 → 2027-01-13 (+7d) |  |  |  |
| 1 | **Road crossing Ducts & Drawpits** | 2026-10-12 → 2026-10-19 (+7d) | 2027-01-06 → 2027-01-13 (+7d) |  |  |  |
| 1 | **Excavation** | 2026-10-12 → 2026-10-19 (+7d) | 2026-11-04 → 2026-11-11 (+7d) |  |  |  |
| SDR-ST-CON-P1-1270 | Excavation for GRP Pipes Section 1 | 2026-10-12 → 2026-10-19 (+7d) | 2026-11-04 → 2026-11-11 (+7d) |  |  |  |
| 7 | **bedding Works** | 2026-11-05 → 2026-11-12 (+7d) | 2026-11-24 → 2026-12-01 (+7d) |  |  |  |
| SDR-ST-CON-P1-1870 | Sand bedding for GRP Pipes | 2026-11-05 → 2026-11-12 (+7d) | 2026-11-24 → 2026-12-01 (+7d) |  |  |  |
| 2 | **Pipes Laying** | 2026-11-25 → 2026-12-02 (+7d) | 2026-12-10 → 2026-12-17 (+7d) |  |  |  |
| SDR-ST-CON-P1-2470 | Install ST GRP Pipes | 2026-11-25 → 2026-12-02 (+7d) | 2026-12-10 → 2026-12-17 (+7d) |  |  |  |
| 6 | **Testing** | 2026-12-12 → 2026-12-19 (+7d) | 2026-12-21 → 2026-12-28 (+7d) |  |  |  |
| SDR-ST-CON-P1-2970 | Testing ST GRP Pipes | 2026-12-12 → 2026-12-19 (+7d) | 2026-12-21 → 2026-12-28 (+7d) |  |  |  |
| 3 | **Backfilling** | 2026-12-22 → 2026-12-29 (+7d) | 2027-01-06 → 2027-01-13 (+7d) |  |  |  |
| SDR-ST-CON-P1-3360 | Backfilling ST GRP Pipes | 2026-12-22 → 2026-12-29 (+7d) | 2027-01-06 → 2027-01-13 (+7d) |  |  |  |
| 3 | **ROAD-01 From 900 to 1239 m (11) 2 Way 110 mm** | 2026-10-12 → 2026-10-19 (+7d) | 2026-12-31 → 2027-01-07 (+7d) |  |  |  |
| 1 | **Road crossing Ducts & Drawpits** | 2026-10-12 → 2026-10-19 (+7d) | 2026-12-31 → 2027-01-07 (+7d) |  |  |  |
| 1 | **Excavation** | 2026-10-12 → 2026-10-19 (+7d) | 2026-11-04 → 2026-11-11 (+7d) |  |  |  |
| SDR-ST-CON-P1-1370 | Excavation for GRP Pipes Section 1 | 2026-10-12 → 2026-10-19 (+7d) | 2026-11-04 → 2026-11-11 (+7d) |  |  |  |
| 7 | **bedding Works** | 2026-11-05 → 2026-11-12 (+7d) | 2026-11-22 → 2026-11-29 (+7d) |  |  |  |
| SDR-ST-CON-P1-2060 | Sand bedding for GRP Pipes | 2026-11-05 → 2026-11-12 (+7d) | 2026-11-22 → 2026-11-29 (+7d) |  |  |  |
| 2 | **Pipes Laying** | 2026-11-23 → 2026-11-30 (+7d) | 2026-12-08 → 2026-12-15 (+7d) |  |  |  |
| SDR-ST-CON-P1-2600 | Install ST GRP Pipes | 2026-11-23 → 2026-11-30 (+7d) | 2026-12-08 → 2026-12-15 (+7d) |  |  |  |
| 6 | **Testing** | 2026-12-09 → 2026-12-16 (+7d) | 2026-12-17 → 2026-12-24 (+7d) |  |  |  |
| SDR-ST-CON-P1-3110 | Testing ST GRP Pipes | 2026-12-09 → 2026-12-16 (+7d) | 2026-12-17 → 2026-12-24 (+7d) |  |  |  |
| 3 | **Backfilling** | 2026-12-19 → 2026-12-26 (+7d) | 2026-12-31 → 2027-01-07 (+7d) |  |  |  |
| SDR-ST-CON-P1-3480 | Backfilling ST GRP Pipes | 2026-12-19 → 2026-12-26 (+7d) | 2026-12-31 → 2027-01-07 (+7d) |  |  |  |
| 11 | **Ring Main Unit** | 2027-04-18 → 2027-04-25 (+7d) | 2027-07-13 → 2027-07-20 (+7d) |  |  |  |
| 1 | **Leveling** | 2027-04-18 → 2027-04-25 (+7d) | 2027-05-10 → 2027-05-23 (+13d) |  |  |  |
| SDR-ST-CON-P1-5810 | Ring Main Unit leveling | 2027-04-18 → 2027-04-25 (+7d) | 2027-05-10 → 2027-05-23 (+13d) |  | 1d → 2d |  |
| 2 | **Lean Concrete** | 2027-05-11 → 2027-05-24 (+13d) | 2027-06-08 → 2027-06-15 (+7d) |  |  |  |
| SDR-ST-CON-P1-5850 | Ring Main Unit Lean Concrete | 2027-05-11 → 2027-05-24 (+13d) | 2027-06-08 → 2027-06-15 (+7d) |  | 1d → 2d |  |
| 3 | **Installation** | 2027-06-21 → 2027-06-28 (+7d) | 2027-07-13 → 2027-07-20 (+7d) |  |  |  |
| SDR-ST-CON-P1-5970 | Ring Main Unit installation for Street Lighting | 2027-06-21 → 2027-06-28 (+7d) | 2027-07-13 → 2027-07-20 (+7d) |  | 1d → 2d |  |
| 12 | **Feeder Pillars** | 2027-04-18 → 2027-04-25 (+7d) | 2027-07-19 → 2027-07-26 (+7d) |  |  |  |
| 1 | **Leveling** | 2027-04-18 → 2027-04-25 (+7d) | 2027-05-10 → 2027-05-23 (+13d) |  |  |  |
| SDR-ST-CON-P1-5820 | Feeder Pillars Leveling | 2027-04-18 → 2027-04-25 (+7d) | 2027-05-10 → 2027-05-23 (+13d) |  | 1d → 2d |  |
| 2 | **Lean Concrete** | 2027-05-11 → 2027-05-24 (+13d) | 2027-06-08 → 2027-06-15 (+7d) |  |  |  |
| SDR-ST-CON-P1-5860 | Feeder Pillars Lean Concrete | 2027-05-11 → 2027-05-24 (+13d) | 2027-06-08 → 2027-06-15 (+7d) |  | 4d → 2d |  |
| 3 | **Installation** | 2027-06-27 → 2027-07-04 (+7d) | 2027-07-19 → 2027-07-26 (+7d) |  |  |  |
| SDR-ST-CON-P1-5980 | Feeder Pillars Installation | 2027-06-27 → 2027-07-04 (+7d) | 2027-07-19 → 2027-07-26 (+7d) |  | 4d → 2d |  |
| 13 | **KWH Frame** | 2027-04-19 → 2027-04-26 (+7d) | 2027-07-03 → 2027-07-10 (+7d) |  |  |  |
| 1 | **Leveling** | 2027-04-19 → 2027-04-26 (+7d) | 2027-05-11 → 2027-05-24 (+13d) |  |  |  |
| SDR-ST-CON-P1-5830 | KWH meter mounting frame Leveling | 2027-04-19 → 2027-04-26 (+7d) | 2027-05-11 → 2027-05-24 (+13d) |  | 1d → 3d |  |
| 2 | **Lean Concrete** | 2027-05-12 → 2027-05-25 (+13d) | 2027-06-09 → 2027-06-16 (+7d) |  |  |  |
| SDR-ST-CON-P1-5870 | KWH meter mounting frame Lean Concrete | 2027-05-12 → 2027-05-25 (+13d) | 2027-06-09 → 2027-06-16 (+7d) |  | 2d → 3d |  |
| 3 | **Installation** | 2027-06-10 → 2027-06-17 (+7d) | 2027-07-03 → 2027-07-10 (+7d) |  |  |  |
| SDR-ST-CON-P1-5910 | KWH meter mounting frame installation | 2027-06-10 → 2027-06-17 (+7d) | 2027-07-03 → 2027-07-10 (+7d) |  | 2d → 3d |  |
| 14 | **Street Lighting Sub-station** | 2027-05-12 → 2027-05-25 (+13d) | 2027-07-22 → 2027-07-10 (-12d) |  |  |  |
| 1 | **Leveling** | 2027-05-12 → 2027-05-25 (+13d) | 2027-06-09 → 2027-06-16 (+7d) |  |  |  |
| SDR-ST-CON-P1-5900 | Unit Substation Leveling | 2027-05-12 → 2027-05-25 (+13d) | 2027-06-09 → 2027-06-16 (+7d) |  | 1d → 5d |  |
| 2 | **Lean Concrete** | 2027-06-10 → 2027-06-17 (+7d) | 2027-07-03 → 2027-07-10 (+7d) |  |  |  |
| SDR-ST-CON-P1-5990 | Unit Substation Lean Concrete | 2027-06-10 → 2027-06-17 (+7d) | 2027-07-03 → 2027-07-10 (+7d) |  | 1d → 24d |  |
| 3 | **Installation** | 2027-07-04 → 2027-06-17 (-17d) | 2027-07-22 → 2027-07-06 (-16d) |  |  |  |
| SDR-ST-CON-P1-6030 | Unit Substation Install for Street Lighting | 2027-07-04 → 2027-06-17 (-17d) | 2027-07-22 → 2027-07-06 (-16d) |  | 1d → 26d | SDR-ST-CON-P1-5990 → SDR-ST-CON-P1-5990 SS |
| 5 | **TELECOMMUNICATIONS WORKS** |  | 2027-02-13 → 2027-02-20 (+7d) |  |  |  |
| 3 | **ROAD - 01** |  | 2027-02-13 → 2027-02-20 (+7d) |  |  |  |
| 4 | **ROAD-01 N 1 (2X3)X50 mm MH-15 to MH-16** | 2026-08-20 → 2026-09-21 (+32d) | 2027-01-14 → 2027-02-15 (+32d) |  |  |  |
| 3 | **Ducts** | 2026-08-20 → 2026-10-19 (+60d) | 2027-01-14 → 2027-02-15 (+32d) |  |  |  |
| 2 | **Excavation** | 2026-08-20 → 2026-10-19 (+60d) | 2026-11-04 → 2026-12-06 (+32d) |  |  |  |
| SDR-ST-CON-P1-1690 | Excavation for telecom trench Section 1 | 2026-08-20 A → 2026-10-19 (+60d) | 2026-08-31 A → 2026-11-11 (+72d) | 100% → 0% | none → -2d |  |
| SDR-ST-CON-P1-2340 | Excavation for telecom trench Section 2 | 2026-10-12 → 2026-11-12 (+31d) | 2026-11-04 → 2026-12-06 (+32d) |  | 11d → -2d |  |
| 5 | **Pipe laying** | 2026-11-05 → 2026-12-07 (+32d) | 2026-11-28 → 2026-12-29 (+31d) |  |  |  |
| SDR-ST-CON-P1-3070 | HDPE Pipes for Telecom Installation | 2026-11-05 → 2026-12-07 (+32d) | 2026-11-28 → 2026-12-29 (+31d) |  | 11d → -2d |  |
| 6 | **Backfilling** | 2026-11-29 → 2026-12-30 (+31d) | 2026-12-21 → 2027-01-21 (+31d) |  |  |  |
| SDR-ST-CON-P1-3680 | Backfilling over HDPE Telecom Pipes | 2026-11-29 → 2026-12-30 (+31d) | 2026-12-21 → 2027-01-21 (+31d) |  | 11d → -2d |  |
| 7 | **Pulling Cable** | 2026-12-22 → 2027-01-23 (+32d) | 2027-01-14 → 2027-02-15 (+32d) |  |  |  |

| ID | Task | Start | Finish | Complete | Total float |
| --- | --- | --- | --- | --- | --- |
| SDR-ST-CON-P1-4310 | Pulling Cable | 2026-12-22 → 2027-01-23 (+32d) | 2027-01-14 → 2027-02-15 (+32d) |  | 11d → -2d |
| 4 | **Manholes** |  | 2027-01-13 → 2026-12-26 (-18d) |  |  |
| 1 | **Excavation** |  | 2026-11-29 → 2026-10-06 (-54d) |  |  |
| SDR-ST-CON-P1-1680 | Excavation for Telecom Manhole Section 1 |  | 2026-11-04 → 2026-10-03 A (-32d) | 50% → 100% | 31d → none |
| SDR-ST-CON-P1-2370 | Excavation for Telecom Manhole Section 2 | 2026-11-05 → 2026-10-04 A (-32d) | 2026-11-29 → 2026-10-06 A (-54d) | 0% → 100% | 31d → none |
| 2 | **Bedding Work** |  | 2026-11-29 → 2026-11-10 (-19d) |  |  |
| SDR-ST-CON-P1-3080 | Sand bedding for Telecom Manhole |  | 2026-11-29 → 2026-11-10 (-19d) |  | 31d → 61d |
| 3 | **Install Manholes** |  | 2026-11-29 → 2026-11-10 (-19d) |  |  |
| SDR-ST-CON-P1-3690 | Installation of Telecom Manhole |  | 2026-11-29 → 2026-11-10 (-19d) |  | 31d → 61d |
| 4 | **Testting** | 2026-11-30 → 2026-11-11 (-19d) | 2026-12-22 → 2026-12-03 (-19d) |  |  |
| SDR-ST-CON-P1-4360 | Telecom Manhole finishing works | 2026-11-30 → 2026-11-11 (-19d) | 2026-12-22 → 2026-12-03 (-19d) |  | 31d → 61d |
| 5 | **Backfilling** | 2026-12-23 → 2026-12-05 (-18d) | 2027-01-13 → 2026-12-26 (-18d) |  |  |
| SDR-ST-CON-P1-4880 | Backfilling over Telecom Manhole | 2026-12-23 → 2026-12-05 (-18d) | 2027-01-13 → 2026-12-26 (-18d) |  | 31d → 61d |
| 2 | **ROAD-01 From 0 to 470 m (3) (2X3)X50 mm MH-12 to MH-14** |  | 2027-02-13 → 2027-02-20 (+7d) |  |  |
| 3 | **Ducts** |  | 2027-01-17 → 2027-01-24 (+7d) |  |  |
| 2 | **Excavation** |  | 2026-11-04 → 2026-11-11 (+7d) |  |  |
| SDR-ST-CON-P1-2190 | Excavation for telecom trench Section 2 | 2026-10-12 → 2026-10-19 (+7d) | 2026-11-04 → 2026-11-11 (+7d) |  | 5d → 22d |
| 5 | **Pipe laying** | 2026-11-05 → 2026-11-12 (+7d) | 2026-11-29 → 2026-12-06 (+7d) |  |  |
| SDR-ST-CON-P1-2940 | HDPE Pipes for Telecom Installation | 2026-11-05 → 2026-11-12 (+7d) | 2026-11-29 → 2026-12-06 (+7d) |  | 5d → 22d |
| 6 | **Backfilling** | 2026-11-30 → 2026-12-07 (+7d) | 2026-12-23 → 2026-12-30 (+7d) |  |  |
| SDR-ST-CON-P1-3770 | Backfilling over HDPE Telecom Pipes | 2026-11-30 → 2026-12-07 (+7d) | 2026-12-23 → 2026-12-30 (+7d) |  | 5d → 22d |
| 7 | **Pulling Cable** | 2026-12-24 → 2026-12-31 (+7d) | 2027-01-17 → 2027-01-24 (+7d) |  |  |
| SDR-ST-CON-P1-4370 | Pulling Cable | 2026-12-24 → 2026-12-31 (+7d) | 2027-01-17 → 2027-01-24 (+7d) |  | 5d → 22d |
| 4 | **Manholes** |  | 2027-02-13 → 2027-02-20 (+7d) |  |  |
| 1 | **Excavation** |  | 2026-11-04 → 2026-10-19 (-16d) |  |  |
| SDR-ST-CON-P1-1520 | Excavation for Telecom Manhole Section 1 |  | 2026-11-04 → 2026-10-01 A (-34d) | 25% → 100% | 8d → none |
| SDR-ST-CON-P1-2200 | Excavation for Telecom Manhole Section 2 | 2026-10-12 → 2026-10-05 A (-7d) | 2026-11-04 → 2026-10-19 (-16d) | 0% → 70% | 8d → 40d |
| 2 | **Bedding Work** | 2026-11-11 → 2026-10-07 (-35d) | 2026-12-02 → 2026-12-09 (+7d) |  |  |
| SDR-ST-CON-P1-2950 | Sand bedding for Telecom Manhole | 2026-11-11 → 2026-10-07 A (-35d) | 2026-12-02 → 2026-12-09 (+7d) | 0% → 85% | 3d → 14d |
| 3 | **Install Manholes** | 2026-12-03 → 2026-10-13 (-51d) | 2026-12-26 → 2027-01-02 (+7d) |  |  |
| SDR-ST-CON-P1-3780 | Installation of Telecom Manhole | 2026-12-03 → 2026-10-13 A (-51d) | 2026-12-26 → 2027-01-02 (+7d) | 0% → 85% | 3d → 14d |
| 4 | **Testting** | 2026-12-27 → 2027-01-03 (+7d) | 2027-01-19 → 2027-01-26 (+7d) |  |  |
| SDR-ST-CON-P1-4630 | Telecom Manhole finishing works | 2026-12-27 → 2027-01-03 (+7d) | 2027-01-19 → 2027-01-26 (+7d) |  | 3d → 14d |
| 5 | **Backfilling** | 2027-01-20 → 2027-01-27 (+7d) | 2027-02-13 → 2027-02-20 (+7d) |  |  |
| SDR-ST-CON-P1-5140 | Backfilling over Telecom Manhole | 2027-01-20 → 2027-01-27 (+7d) | 2027-02-13 → 2027-02-20 (+7d) |  | 3d → 14d |
| 1 | **ROAD-01 From 470 to 1125 m (6) (2X3)X50 mm MH-10 to MH-11** |  | 2027-02-13 → 2027-01-20 (-24d) |  |  |
| 3 | **Ducts** |  | 2027-01-13 → 2027-01-20 (+7d) |  |  |
| 2 | **Excavation** |  | 2026-11-04 → 2026-11-11 (+7d) |  |  |
| SDR-ST-CON-P1-1790 | Excavation for telecom trench Section 2 | 2026-10-12 → 2026-10-19 (+7d) | 2026-11-04 → 2026-11-11 (+7d) |  | 12d → 15d |
| 5 | **Pipe laying** | 2026-11-05 → 2026-11-12 (+7d) | 2026-11-29 → 2026-12-06 (+7d) |  |  |
| SDR-ST-CON-P1-2510 | HDPE Pipes for Telecom Installation | 2026-11-05 → 2026-11-12 (+7d) | 2026-11-29 → 2026-12-06 (+7d) |  | 12d → 15d |
| 6 | **Backfilling** | 2026-11-30 → 2026-12-07 (+7d) | 2026-12-20 → 2026-12-27 (+7d) |  |  |
| SDR-ST-CON-P1-3230 | Backfilling over HDPE Telecom Pipes | 2026-11-30 → 2026-12-07 (+7d) | 2026-12-20 → 2026-12-27 (+7d) |  | 12d → 15d |
| 7 | **Pulling Cable** | 2026-12-21 → 2026-12-28 (+7d) | 2027-01-13 → 2027-01-20 (+7d) |  |  |
| SDR-ST-CON-P1-4020 | Pulling Cable | 2026-12-21 → 2026-12-28 (+7d) | 2027-01-13 → 2027-01-20 (+7d) |  | 12d → 15d |
| 4 | **Manholes** | 2026-10-12 → 2026-10-05 (-7d) | 2027-02-13 → 2027-01-05 (-39d) |  |  |
| 1 | **Excavation** | 2026-10-12 → 2026-10-05 (-7d) | 2026-11-04 → 2026-10-13 (-22d) |  |  |
| SDR-ST-CON-P1-1230 | Excavation for Telecom Manhole Section 1 | 2026-10-12 → 2026-10-05 A (-7d) | 2026-11-04 → 2026-10-12 A (-23d) | 0% → 100% | 10d → none |
| SDR-ST-CON-P1-1800 | Excavation for Telecom Manhole Section 2 | 2026-10-12 → 2026-10-07 A (-5d) | 2026-11-04 → 2026-10-13 A (-22d) | 0% → 100% | 10d → none |
| 2 | **Bedding Work** | 2026-11-11 → 2026-10-08 (-34d) | 2026-12-02 → 2026-10-15 (-48d) |  |  |
| SDR-ST-CON-P1-2520 | Sand bedding for Telecom Manhole | 2026-11-11 → 2026-10-08 A (-34d) | 2026-12-02 → 2026-10-15 A (-48d) | 0% → 100% | 5d → none |
| 3 | **Install Manholes** | 2026-12-03 → 2026-10-13 (-51d) | 2026-12-26 → 2026-10-17 (-70d) |  |  |
| SDR-ST-CON-P1-3240 | Installation of Telecom Manhole | 2026-12-03 → 2026-10-13 A (-51d) | 2026-12-26 → 2026-10-17 A (-70d) | 0% → 100% | 5d → none |
| 4 | **Testting** | 2026-12-27 → 2026-11-18 (-39d) | 2027-01-19 → 2026-12-12 (-38d) |  |  |
| SDR-ST-CON-P1-4150 | Telecom Manhole finishing works | 2026-12-27 → 2026-11-18 (-39d) | 2027-01-19 → 2026-12-12 (-38d) |  | 5d → 52d |
| 5 | **Backfilling** | 2027-01-20 → 2026-12-13 (-38d) | 2027-02-13 → 2027-01-05 (-39d) |  |  |
| SDR-ST-CON-P1-4740 | Backfilling over Telecom Manhole | 2027-01-20 → 2026-12-13 (-38d) | 2027-02-13 → 2027-01-05 (-39d) |  | 5d → 52d |
| 3 | **ROAD-01 From 1125 to 1765 m (7) (2X3)X50 mm MH-8 to MH-9** |  | 2027-02-02 → 2027-01-24 (-9d) |  |  |
| 3 | **Ducts** |  | 2027-01-17 → 2027-01-24 (+7d) |  |  |
| 2 | **Excavation** |  | 2026-11-04 → 2026-11-11 (+7d) |  |  |
| SDR-ST-CON-P1-2290 | Excavation for telecom trench Section 2 | 2026-10-12 → 2026-10-19 (+7d) | 2026-11-04 → 2026-11-11 (+7d) |  | 26d → 35d |
| 5 | **Pipe laying** | 2026-11-05 → 2026-11-12 (+7d) | 2026-11-29 → 2026-12-06 (+7d) |  |  |
| SDR-ST-CON-P1-3010 | HDPE Pipes for Telecom Installation | 2026-11-05 → 2026-11-12 (+7d) | 2026-11-29 → 2026-12-06 (+7d) |  | 26d → 35d |
| 6 | **Backfilling** | 2026-11-30 → 2026-12-07 (+7d) | 2026-12-23 → 2026-12-30 (+7d) |  |  |
| SDR-ST-CON-P1-3630 | Backfilling over HDPE Telecom Pipes | 2026-11-30 → 2026-12-07 (+7d) | 2026-12-23 → 2026-12-30 (+7d) |  | 26d → 35d |
| 7 | **Pulling Cable** | 2026-12-24 → 2026-12-31 (+7d) | 2027-01-17 → 2027-01-24 (+7d) |  |  |
| SDR-ST-CON-P1-4240 | Pulling Cable | 2026-12-24 → 2026-12-31 (+7d) | 2027-01-17 → 2027-01-24 (+7d) |  | 26d → 35d |
| 4 | **Manholes** | 2026-10-12 → 2026-10-01 (-11d) | 2027-02-02 → 2026-11-30 (-64d) |  |  |
| 1 | **Excavation** | 2026-10-12 → 2026-10-01 (-11d) | 2026-11-05 → 2026-10-10 (-26d) |  |  |
| SDR-ST-CON-P1-1610 | Excavation for Telecom Manhole Section 1 | 2026-10-12 → 2026-10-01 A (-11d) | 2026-11-04 → 2026-10-04 A (-31d) | 0% → 100% | 14d → none |

| ID | Task | Start | Finish | Complete | Total float |
| --- | --- | --- | --- | --- | --- |
| SDR-ST-CON-P1-2300 | Excavation for Telecom Manhole Section 2 | 2026-10-13 → 2026-10-04 A (-9d) | 2026-11-05 → 2026-10-10 A (-26d) | 0% → 100% | 14d → none |
| 2 | **Bedding Work** | 2026-11-07 → 2026-10-10 (-28d) | 2026-11-28 → 2026-10-14 (-45d) |  |  |
| SDR-ST-CON-P1-3020 | Sand bedding for Telecom Manhole | 2026-11-07 → 2026-10-10 A (-28d) | 2026-11-28 → 2026-10-14 A (-45d) | 0% → 100% | 14d → none |
| 3 | **Install Manholes** | 2026-11-29 → 2026-10-15 (-45d) | 2026-12-21 → 2026-10-18 (-64d) |  |  |
| SDR-ST-CON-P1-3820 | Installation of Telecom Manhole | 2026-11-29 → 2026-10-15 A (-45d) | 2026-12-21 → 2026-10-18 A (-64d) | 0% → 100% | 14d → none |
| 4 | **Testting** | 2026-12-22 → 2026-10-19 (-64d) | 2027-01-11 → 2026-11-08 (-64d) |  |  |
| SDR-ST-CON-P1-4720 | Telecom Manhole finishing works | 2026-12-22 → 2026-10-19 (-64d) | 2027-01-11 → 2026-11-08 (-64d) |  | 14d → 76d |
| 5 | **Backfilling** | 2027-01-12 → 2026-11-09 (-64d) | 2027-02-02 → 2026-11-30 (-64d) |  |  |
| SDR-ST-CON-P1-5240 | Backfilling over Telecom Manhole | 2027-01-12 → 2026-11-09 (-64d) | 2027-02-02 → 2026-11-30 (-64d) |  | 14d → 76d |
| 4 | **ROAD - 02** | 2026-10-12 → 2026-10-01 (-11d) | 2027-02-10 → 2027-02-17 (+7d) |  |  |
| 3 | **ROAD-01 From 0 to 400 m (9) (2X3)X50 mm MH-5 to MH-7** | 2026-10-12 → 2026-10-01 (-11d) | 2027-02-09 → 2026-12-30 (-41d) |  |  |
| 3 | **Ducts** | 2026-10-12 → 2026-10-19 (+7d) | 2026-12-23 → 2026-12-30 (+7d) |  |  |
| 2 | **Excavation** | 2026-10-12 → 2026-10-19 (+7d) | 2026-11-04 → 2026-11-11 (+7d) |  |  |
| SDR-ST-CON-P1-1340 | Excavation for telecom trench Section 1 | 2026-10-12 → 2026-10-19 (+7d) | 2026-11-04 → 2026-11-11 (+7d) |  | 8d → 29d |
| SDR-ST-CON-P1-1960 | Excavation for telecom trench Section 2 | 2026-10-12 → 2026-10-19 (+7d) | 2026-11-04 → 2026-11-11 (+7d) |  | 28d → 29d |
| 5 | **Pipe laying** | 2026-10-12 → 2026-10-19 (+7d) | 2026-11-04 → 2026-11-11 (+7d) |  |  |
| SDR-ST-CON-P1-2670 | HDPE Pipes for Telecom Installation | 2026-10-12 → 2026-10-19 (+7d) | 2026-11-04 → 2026-11-11 (+7d) |  | 28d → 29d |
| 6 | **Backfilling** | 2026-11-05 → 2026-11-12 (+7d) | 2026-11-29 → 2026-12-06 (+7d) |  |  |
| SDR-ST-CON-P1-3440 | Backfilling over HDPE Telecom Pipes | 2026-11-05 → 2026-11-12 (+7d) | 2026-11-29 → 2026-12-06 (+7d) |  | 28d → 29d |
| 7 | **Pulling Cable** | 2026-11-30 → 2026-12-07 (+7d) | 2026-12-23 → 2026-12-30 (+7d) |  |  |
| SDR-ST-CON-P1-4270 | Pulling Cable | 2026-11-30 → 2026-12-07 (+7d) | 2026-12-23 → 2026-12-30 (+7d) |  | 28d → 29d |
| 4 | **Manholes** | 2026-10-12 → 2026-10-01 (-11d) | 2027-02-09 → 2026-12-06 (-65d) |  |  |
| 1 | **Excavation** | 2026-10-12 → 2026-10-01 (-11d) | 2026-11-04 → 2026-10-05 (-30d) |  |  |
| SDR-ST-CON-P1-1330 | Excavation for Telecom Manhole Section 1 | 2026-10-12 → 2026-10-01 A (-11d) | 2026-11-04 → 2026-10-04 A (-31d) | 0% → 100% | 8d → none |
| SDR-ST-CON-P1-1970 | Excavation for Telecom Manhole Section 2 | 2026-10-12 → 2026-10-03 A (-9d) | 2026-11-04 → 2026-10-05 A (-30d) | 0% → 100% | 8d → none |
| 2 | **Bedding Work** | 2026-11-05 → 2026-10-05 (-31d) | 2026-11-29 → 2026-10-10 (-50d) |  |  |
| SDR-ST-CON-P1-2680 | Sand bedding for Telecom Manhole | 2026-11-05 → 2026-10-05 A (-31d) | 2026-11-29 → 2026-10-10 A (-50d) | 0% → 100% | 8d → none |
| 3 | **Install Manholes** | 2026-11-30 → 2026-10-11 (-50d) | 2026-12-22 → 2026-10-15 (-68d) |  |  |
| SDR-ST-CON-P1-3450 | Installation of Telecom Manhole | 2026-11-30 → 2026-10-11 A (-50d) | 2026-12-22 → 2026-10-15 A (-68d) | 0% → 100% | 8d → none |
| 4 | **Testting** | 2026-12-23 → 2026-10-19 (-65d) | 2027-01-16 → 2026-11-11 (-66d) |  |  |
| SDR-ST-CON-P1-4380 | Telecom Manhole finishing works | 2026-12-23 → 2026-10-19 (-65d) | 2027-01-16 → 2026-11-11 (-66d) |  | 8d → 71d |
| 5 | **Backfilling** | 2027-01-17 → 2026-11-12 (-66d) | 2027-02-09 → 2026-12-06 (-65d) |  |  |
| SDR-ST-CON-P1-4900 | Backfilling over Telecom Manhole | 2027-01-17 → 2026-11-12 (-66d) | 2027-02-09 → 2026-12-06 (-65d) |  | 8d → 71d |
| 1 | **ROAD-01 From 400 to 900 m (10) (2X3)X50 mm MH-1 to MH-4** | 2026-10-12 → 2026-10-05 (-7d) | 2027-02-07 → 2027-02-14 (+7d) |  |  |
| 3 | **Ducts** | 2026-10-12 → 2026-10-19 (+7d) | 2027-01-17 → 2027-01-24 (+7d) |  |  |
| 2 | **Excavation** | 2026-10-12 → 2026-10-19 (+7d) | 2026-11-04 → 2026-11-11 (+7d) |  |  |
| SDR-ST-CON-P1-1290 | Excavation for telecom trench Section 1 | 2026-10-12 → 2026-10-19 (+7d) | 2026-11-04 → 2026-11-11 (+7d) |  | 7d → 8d |
| SDR-ST-CON-P1-1880 | Excavation for telecom trench Section 2 | 2026-10-12 → 2026-10-19 (+7d) | 2026-11-04 → 2026-11-11 (+7d) |  | 7d → 8d |
| 5 | **Pipe laying** | 2026-11-05 → 2026-11-12 (+7d) | 2026-11-29 → 2026-12-06 (+7d) |  |  |
| SDR-ST-CON-P1-2640 | HDPE Pipes for Telecom Installation | 2026-11-05 → 2026-11-12 (+7d) | 2026-11-29 → 2026-12-06 (+7d) |  | 7d → 8d |
| 6 | **Backfilling** | 2026-11-30 → 2026-12-07 (+7d) | 2026-12-23 → 2026-12-30 (+7d) |  |  |
| SDR-ST-CON-P1-3370 | Backfilling over HDPE Telecom Pipes | 2026-11-30 → 2026-12-07 (+7d) | 2026-12-23 → 2026-12-30 (+7d) |  | 7d → 8d |
| 7 | **Pulling Cable** | 2026-12-24 → 2026-12-31 (+7d) | 2027-01-17 → 2027-01-24 (+7d) |  |  |
| SDR-ST-CON-P1-4160 | Pulling Cable | 2026-12-24 → 2026-12-31 (+7d) | 2027-01-17 → 2027-01-24 (+7d) |  | 7d → 8d |
| 4 | **Manholes** | 2026-10-12 → 2026-10-05 (-7d) | 2027-02-07 → 2027-02-14 (+7d) |  |  |
| 1 | **Excavation** | 2026-10-12 → 2026-10-05 (-7d) | 2026-11-04 → 2026-11-11 (+7d) |  |  |
| SDR-ST-CON-P1-1280 | Excavation for Telecom Manhole Section 1 | 2026-10-12 → 2026-10-05 A (-7d) | 2026-11-04 → 2026-10-08 A (-27d) | 0% → 100% | 10d → none |
| SDR-ST-CON-P1-1890 | Excavation for Telecom Manhole Section 2 | 2026-10-12 → 2026-10-07 A (-5d) | 2026-11-04 → 2026-11-11 (+7d) | 0% → 70% | 10d → 11d |
| 2 | **Bedding Work** | 2026-11-05 → 2026-10-10 (-26d) | 2026-11-26 → 2026-12-03 (+7d) |  |  |
| SDR-ST-CON-P1-2650 | Sand bedding for Telecom Manhole | 2026-11-05 → 2026-10-10 A (-26d) | 2026-11-26 → 2026-12-03 (+7d) | 0% → 85% | 10d → 11d |
| 3 | **Install Manholes** | 2026-11-28 → 2026-10-13 (-46d) | 2026-12-20 → 2026-12-27 (+7d) |  |  |
| SDR-ST-CON-P1-3380 | Installation of Telecom Manhole | 2026-11-28 → 2026-10-13 A (-46d) | 2026-12-20 → 2026-12-27 (+7d) | 0% → 85% | 10d → 11d |
| 4 | **Testting** | 2026-12-21 → 2026-12-28 (+7d) | 2027-01-13 → 2027-01-20 (+7d) |  |  |
| SDR-ST-CON-P1-4280 | Telecom Manhole finishing works | 2026-12-21 → 2026-12-28 (+7d) | 2027-01-13 → 2027-01-20 (+7d) |  | 10d → 11d |
| 5 | **Backfilling** | 2027-01-14 → 2027-01-21 (+7d) | 2027-02-07 → 2027-02-14 (+7d) |  |  |
| SDR-ST-CON-P1-4820 | Backfilling over Telecom Manhole | 2027-01-14 → 2027-01-21 (+7d) | 2027-02-07 → 2027-02-14 (+7d) |  | 10d → 11d |
| 2 | **ROAD-01 From 900 to 1239 m (11) (2)X32 mm MH-1** | 2026-10-12 → 2026-10-19 (+7d) | 2027-02-10 → 2027-02-17 (+7d) |  |  |
| 3 | **Ducts** | 2026-10-12 → 2026-10-19 (+7d) | 2027-02-10 → 2027-02-17 (+7d) |  |  |
| 2 | **Excavation** | 2026-10-12 → 2026-10-19 (+7d) | 2026-11-29 → 2026-12-06 (+7d) |  |  |
| SDR-ST-CON-P1-1390 | Excavation for telecom trench Section 1 | 2026-10-12 → 2026-10-19 (+7d) | 2026-11-04 → 2026-11-11 (+7d) |  | 12d → 13d |
| SDR-ST-CON-P1-2070 | Excavation for telecom trench Section 2 | 2026-11-05 → 2026-11-12 (+7d) | 2026-11-29 → 2026-12-06 (+7d) |  |  |
| 5 | **Pipe laying** | 2026-11-30 → 2026-12-07 (+7d) | 2026-12-23 → 2026-12-30 (+7d) |  |  |
| SDR-ST-CON-P1-2780 | HDPE Pipes for Telecom Installation | 2026-11-30 → 2026-12-07 (+7d) | 2026-12-23 → 2026-12-30 (+7d) |  |  |
| 6 | **Backfilling** | 2026-12-24 → 2026-12-31 (+7d) | 2027-01-17 → 2027-01-24 (+7d) |  |  |
| SDR-ST-CON-P1-3580 | Backfilling over HDPE Telecom Pipes | 2026-12-24 → 2026-12-31 (+7d) | 2027-01-17 → 2027-01-24 (+7d) |  |  |
| 7 | **Pulling Cable** | 2027-01-18 → 2027-01-25 (+7d) | 2027-02-10 → 2027-02-17 (+7d) |  |  |
| SDR-ST-CON-P1-4170 | Pulling Cable | 2027-01-18 → 2027-01-25 (+7d) | 2027-02-10 → 2027-02-17 (+7d) |  |  |
| 4 | **Manholes** | 2026-10-12 → 2026-10-19 (+7d) | 2027-02-04 → 2027-02-11 (+7d) |  |  |
| 1 | **Excavation** | 2026-10-12 → 2026-10-19 (+7d) | 2026-11-04 → 2026-11-11 (+7d) |  |  |
| SDR-ST-CON-P1-1380 | Excavation for Telecom Manhole Section 1 | 2026-10-12 → 2026-10-19 (+7d) | 2026-11-04 → 2026-11-11 (+7d) |  | 12d → 13d |

| ID | Task | Start | Finish | Total float |
| --- | --- | --- | --- | --- |
| SDR-ST-CON-P1-2080 | Excavation for Telecom Manhole Section 2 | 2026-10-12 → 2026-10-19 (+7d) | 2026-11-04 → 2026-11-11 (+7d) | 12d → 13d |
| 2 | **Bedding Work** | 2026-11-05 → 2026-11-12 (+7d) | 2026-11-26 → 2026-12-03 (+7d) |  |
| SDR-ST-CON-P1-2790 | Sand bedding for Telecom Manhole | 2026-11-05 → 2026-11-12 (+7d) | 2026-11-26 → 2026-12-03 (+7d) | 12d → 13d |
| 3 | **Install Manholes** | 2026-11-28 → 2026-12-05 (+7d) | 2026-12-21 → 2026-12-28 (+7d) |  |
| SDR-ST-CON-P1-3590 | Installation of Telecom Manhole | 2026-11-28 → 2026-12-05 (+7d) | 2026-12-21 → 2026-12-28 (+7d) | 12d → 13d |
| 4 | **Testting** | 2026-12-22 → 2026-12-29 (+7d) | 2027-01-14 → 2027-01-21 (+7d) |  |
| SDR-ST-CON-P1-4500 | Telecom Manhole finishing works | 2026-12-22 → 2026-12-29 (+7d) | 2027-01-14 → 2027-01-21 (+7d) | 12d → 13d |
| 5 | **Backfilling** | 2027-01-16 → 2027-01-23 (+7d) | 2027-02-04 → 2027-02-11 (+7d) |  |
| SDR-ST-CON-P1-5000 | Backfilling over Telecom Manhole | 2027-01-16 → 2027-01-23 (+7d) | 2027-02-04 → 2027-02-11 (+7d) | 12d → 13d |
| 13 | **LOW VOLTAGE** |  | 2027-04-08 → 2027-04-15 (+7d) |  |
| 1 | **ROAD - 01** |  | 2027-03-30 → 2027-04-06 (+7d) |  |
| 1 | **ROAD-01 From 470 to 1125 m (6)** |  | 2027-03-30 → 2027-04-06 (+7d) |  |
| 6 | **Excavation** |  | 2026-11-29 → 2026-12-06 (+7d) |  |
| SDR-ST-CON-P1-1670 | Excavation Works Part 1 |  | 2026-11-04 → 2026-11-11 (+7d) |  |
| SDR-ST-CON-P1-6230 | Excavation Works Part 2 | 2026-11-05 → 2026-11-12 (+7d) | 2026-11-29 → 2026-12-06 (+7d) |  |
| 7 | **Pipe laying** | 2026-11-30 → 2026-12-07 (+7d) | 2026-12-22 → 2026-12-29 (+7d) |  |
| SDR-ST-CON-P1-2330 | Pipe Laying | 2026-11-30 → 2026-12-07 (+7d) | 2026-12-22 → 2026-12-29 (+7d) |  |
| 8 | **Backfilling** | 2027-01-14 → 2026-12-30 (-15d) | 2027-02-07 → 2027-01-23 (-15d) |  |
| SDR-ST-CON-P1-2990 | Backfilling Works | 2027-01-14 → 2026-12-30 (-15d) | 2027-02-07 → 2027-01-23 (-15d) | 47d → 60d |
| 9 | **Pulling Cable** | 2027-03-02 → 2027-03-14 (+12d) | 2027-03-30 → 2027-04-06 (+7d) |  |
| SDR-ST-CON-P1-3880 | Pulling Cable | 2027-03-02 → 2027-03-14 (+12d) | 2027-03-30 → 2027-04-06 (+7d) | 29d → 23d |
| 2 | **ROAD - 02** |  | 2027-04-08 → 2027-04-15 (+7d) |  |
| 1 | **ROAD-01 From 400 to 900 m (10)** |  | 2027-04-08 → 2027-04-07 (-1d) |  |
| 6 | **Excavation** |  | 2026-11-29 → 2026-12-06 (+7d) |  |
| SDR-ST-CON-P1-1740 | Excavation Works Part 1 |  | 2026-11-04 → 2026-11-11 (+7d) | 58d → 59d |
| SDR-ST-CON-P1-6240 | Excavation Works Part 2 | 2026-11-05 → 2026-11-12 (+7d) | 2026-11-29 → 2026-12-06 (+7d) | 58d → 59d |
| 7 | **Pipe laying** | 2026-11-30 → 2026-12-07 (+7d) | 2026-12-22 → 2026-12-29 (+7d) |  |
| SDR-ST-CON-P1-2440 | Pipe Laying | 2026-11-30 → 2026-12-07 (+7d) | 2026-12-22 → 2026-12-29 (+7d) | 58d → 59d |
| 8 | **Backfilling** | 2026-12-23 → 2026-12-30 (+7d) | 2027-01-16 → 2027-01-23 (+7d) |  |
| SDR-ST-CON-P1-3170 | Backfilling Works | 2026-12-23 → 2026-12-30 (+7d) | 2027-01-16 → 2027-01-23 (+7d) | 58d → 59d |
| 9 | **Pulling Cable** | 2027-03-16 → 2027-03-15 (-1d) | 2027-04-08 → 2027-04-07 (-1d) |  |
| SDR-ST-CON-P1-4040 | Pulling Cable | 2027-03-16 → 2027-03-15 (-1d) | 2027-04-08 → 2027-04-07 (-1d) | 21d → 22d |
| 4 | **ROAD-01 From 900 to 1239 m (11)** |  | 2027-04-08 → 2027-04-15 (+7d) |  |
| 6 | **Excavation** |  | 2026-11-29 → 2026-12-06 (+7d) |  |
| SDR-ST-CON-P1-1750 | Excavation Works Part 1 |  | 2026-11-04 → 2026-11-11 (+7d) |  |
| SDR-ST-CON-P1-6250 | Excavation Works Part 2 | 2026-11-05 → 2026-11-12 (+7d) | 2026-11-29 → 2026-12-06 (+7d) |  |
| 7 | **Pipe laying** | 2026-11-30 → 2026-12-07 (+7d) | 2026-12-22 → 2026-12-29 (+7d) |  |
| SDR-ST-CON-P1-2450 | Pipe Laying | 2026-11-30 → 2026-12-07 (+7d) | 2026-12-22 → 2026-12-29 (+7d) |  |
| 8 | **Backfilling** | 2026-12-23 → 2026-12-30 (+7d) | 2027-01-16 → 2027-01-23 (+7d) |  |
| SDR-ST-CON-P1-3180 | Backfilling Works | 2026-12-23 → 2026-12-30 (+7d) | 2027-01-16 → 2027-01-23 (+7d) |  |
| 9 | **Pulling Cable** | 2027-03-16 → 2027-03-23 (+7d) | 2027-04-08 → 2027-04-15 (+7d) |  |
| SDR-ST-CON-P1-4070 | Pulling Cable | 2027-03-16 → 2027-03-23 (+7d) | 2027-04-08 → 2027-04-15 (+7d) | 33d → 27d |
| 10 | **PORTABLE WATER** |  | 2027-03-25 → 2027-04-11 (+17d) |  |
| 2 | **ROAD - 01** |  | 2027-03-25 → 2027-04-11 (+17d) |  |
| 2 | **ROAD-01 From 0 to 470 m (3)** |  | 2027-03-25 → 2027-04-11 (+17d) |  |
| 7 | **Pipes Work** |  | 2026-11-09 → 2026-11-16 (+7d) |  |
| 9 | **Backfilling** | 2026-10-17 → 2026-10-24 (+7d) | 2026-11-09 → 2026-11-16 (+7d) |  |
| SDR-ST-CON-P1-4800 | Backfilling of PW HDPE Pipe 315 mm. | 2026-10-17 → 2026-10-24 (+7d) | 2026-11-09 → 2026-11-16 (+7d) | 83d → 84d |
| 3 | **Valve Chambers & Valves & Fire Hydrant** | 2026-10-12 → 2026-10-19 (+7d) | 2027-03-25 → 2027-04-11 (+17d) |  |
| 3 | **Excavation** | 2026-10-12 → 2026-10-19 (+7d) | 2026-12-05 → 2026-12-12 (+7d) |  |
| SDR-ST-CON-P1-1490 | Excavation for Valve Chambers Section 1 | 2026-10-12 → 2026-10-19 (+7d) | 2026-11-04 → 2026-11-11 (+7d) | 18d → 29d |
| SDR-ST-CON-P1-2150 | Excavation for Valve Chambers Section 2 | 2026-11-11 → 2026-11-18 (+7d) | 2026-12-05 → 2026-12-12 (+7d) | 13d → 24d |
| 1 | **bedding Works** | 2026-12-06 → 2026-12-13 (+7d) | 2026-12-29 → 2027-01-05 (+7d) |  |
| SDR-ST-CON-P1-2850 | Sand bedding for Valve Chambers | 2026-12-06 → 2026-12-13 (+7d) | 2026-12-29 → 2027-01-05 (+7d) | 13d → 24d |
| 4 | **Install Chambers & Valves & Fire Hydrant** | 2026-12-30 → 2027-01-06 (+7d) | 2027-01-23 → 2027-01-30 (+7d) |  |
| SDR-ST-CON-P1-3560 | Install Chambers & Valves | 2026-12-30 → 2027-01-06 (+7d) | 2027-01-23 → 2027-01-30 (+7d) | 13d → 24d |
| 2 | **Testing** | 2027-01-31 → 2027-02-16 (+16d) | 2027-02-24 → 2027-03-17 (+21d) |  |
| SDR-ST-CON-P1-4470 | Testing for Chambers & Valves | 2027-01-31 → 2027-02-16 (+16d) | 2027-02-24 → 2027-03-17 (+21d) | 7d → 10d |
| 6 | **Backfilling** | 2027-02-25 → 2027-03-18 (+21d) | 2027-03-25 → 2027-04-11 (+17d) |  |
| SDR-ST-CON-P1-5030 | Backfilling for Chambers & Valves | 2027-02-25 → 2027-03-18 (+21d) | 2027-03-25 → 2027-04-11 (+17d) | 7d → 10d |
| 1 | **ROAD-01 From 470 to 1125 m (6)** |  | 2027-03-08 → 2027-03-20 (+12d) |  |
| 7 | **Pipes Work** |  | 2026-11-09 → 2026-11-16 (+7d) |  |
| 9 | **Backfilling** | 2026-10-17 → 2026-10-24 (+7d) | 2026-11-09 → 2026-11-16 (+7d) |  |
| SDR-ST-CON-P1-4700 | Backfilling of PW HDPE Pipe 315 mm. | 2026-10-17 → 2026-10-24 (+7d) | 2026-11-09 → 2026-11-16 (+7d) | 109.9d → 108d |
| 3 | **Valve Chambers & Valves & Fire Hydrant** | 2026-10-12 → 2026-10-19 (+7d) | 2027-03-08 → 2027-03-20 (+12d) |  |
| 3 | **Excavation** | 2026-10-12 → 2026-10-19 (+7d) | 2026-11-29 → 2026-12-06 (+7d) |  |
| SDR-ST-CON-P1-1420 | Excavation for Valve Chambers Section 1 | 2026-10-12 → 2026-10-19 (+7d) | 2026-11-04 → 2026-11-11 (+7d) |  |
| SDR-ST-CON-P1-2100 | Excavation for Valve Chambers Section 2 | 2026-11-05 → 2026-11-12 (+7d) | 2026-11-29 → 2026-12-06 (+7d) |  |
| 1 | **bedding Works** | 2026-11-30 → 2026-12-07 (+7d) | 2026-12-23 → 2026-12-30 (+7d) |  |
| SDR-ST-CON-P1-2820 | Sand bedding for Valve Chambers | 2026-11-30 → 2026-12-07 (+7d) | 2026-12-23 → 2026-12-30 (+7d) |  |

| ID | Task | Start | Finish | Complete | Total float |
| --- | --- | --- | --- | --- | --- |
| 4 | **Install Chambers & Valves & Fire Hydrant** | 2026-12-24 → 2026-12-31 (+7d) | 2027-01-17 → 2027-01-24 (+7d) |  |  |
| SDR-ST-CON-P1-3660 | Install Chambers & Valves | 2026-12-24 → 2026-12-31 (+7d) | 2027-01-17 → 2027-01-24 (+7d) |  |  |
| 2 | **Testing** | 2027-01-18 → 2027-01-25 (+7d) | 2027-02-10 → 2027-02-17 (+7d) |  |  |
| SDR-ST-CON-P1-4550 | Testing for Chambers & Valves | 2027-01-18 → 2027-01-25 (+7d) | 2027-02-10 → 2027-02-17 (+7d) |  |  |
| 6 | **Backfilling** | 2027-02-11 → 2027-02-18 (+7d) | 2027-03-08 → 2027-03-20 (+12d) |  |  |
| SDR-ST-CON-P1-5100 | Backfilling for Chambers & Valves | 2027-02-11 → 2027-02-18 (+7d) | 2027-03-08 → 2027-03-20 (+12d) |  |  |
| 3 | **ROAD-01 From 1125 to 1765 m (7)** |  | 2027-03-15 → 2027-03-22 (+7d) |  |  |
| 7 | **Pipes Work** |  | 2027-03-02 → 2027-03-14 (+12d) |  |  |
| 9 | **Backfilling** | 2027-02-06 → 2027-02-13 (+7d) | 2027-03-02 → 2027-03-14 (+12d) |  |  |
| SDR-ST-CON-P1-4520 | Backfilling of PW HDPE Pipe 315 mm. | 2027-02-06 → 2027-02-13 (+7d) | 2027-03-02 → 2027-03-14 (+12d) |  | 28d → 22d |
| 3 | **Valve Chambers & Valves & Fire Hydrant** | 2026-10-12 → 2026-10-19 (+7d) | 2027-03-15 → 2027-03-22 (+7d) |  |  |
| 3 | **Excavation** | 2026-10-12 → 2026-10-19 (+7d) | 2026-11-29 → 2026-12-06 (+7d) |  |  |
| SDR-ST-CON-P1-1640 | Excavation for Valve Chambers Section 1 | 2026-10-12 → 2026-10-19 (+7d) | 2026-11-04 → 2026-11-11 (+7d) |  | 5d → 18d |
| SDR-ST-CON-P1-2230 | Excavation for Valve Chambers Section 2 | 2026-11-05 → 2026-11-12 (+7d) | 2026-11-29 → 2026-12-06 (+7d) |  | 5d → 18d |
| 1 | **bedding Works** | 2026-11-30 → 2026-12-07 (+7d) | 2026-12-23 → 2026-12-30 (+7d) |  |  |
| SDR-ST-CON-P1-2900 | Sand bedding for Valve Chambers | 2026-11-30 → 2026-12-07 (+7d) | 2026-12-23 → 2026-12-30 (+7d) |  | 5d → 18d |
| 4 | **Install Chambers & Valves & Fire Hydrant** | 2026-12-24 → 2026-12-31 (+7d) | 2027-01-17 → 2027-01-24 (+7d) |  |  |
| SDR-ST-CON-P1-3640 | Install Chambers & Valves | 2026-12-24 → 2026-12-31 (+7d) | 2027-01-17 → 2027-01-24 (+7d) |  | 5d → 18d |
| 2 | **Testing** | 2027-01-18 → 2027-01-25 (+7d) | 2027-02-10 → 2027-02-17 (+7d) |  |  |
| SDR-ST-CON-P1-4510 | Testing for Chambers & Valves | 2027-01-18 → 2027-01-25 (+7d) | 2027-02-10 → 2027-02-17 (+7d) |  | 5d → 22d |
| 6 | **Backfilling** | 2027-02-14 → 2027-02-21 (+7d) | 2027-03-15 → 2027-03-22 (+7d) |  |  |
| SDR-ST-CON-P1-5070 | Backfilling for Chambers & Valves | 2027-02-14 → 2027-02-21 (+7d) | 2027-03-15 → 2027-03-22 (+7d) |  | 3d → 20d |
| 3 | **ROAD - 02** |  | 2027-03-15 → 2027-03-14 (-1d) |  |  |
| 3 | **ROAD-01 From 0 to 400 m (9)** |  | 2027-03-15 → 2027-03-14 (-1d) |  |  |
| 7 | **Pipes Work** |  | 2027-03-15 → 2027-02-27 (-16d) |  |  |
| 8 | **bedding Works** |  | 2026-11-04 → 2026-11-11 (+7d) |  |  |
| SDR-ST-CON-P1-3130 | Sand bedding for PW HDPE Pipes 315 mm |  | 2026-11-04 → 2026-11-11 (+7d) | 75% → 80% | 77.9d → 79d |
| 2 | **Pipes Laying** |  | 2026-11-04 → 2026-11-11 (+7d) |  |  |
| SDR-ST-CON-P1-3650 | Install PW 315 mm HDPE Pipe |  | 2026-11-04 → 2026-11-11 (+7d) | 75% → 80% | 77.9d → 79d |
| 5 | **Testing** | 2026-11-05 → 2026-11-12 (+7d) | 2026-11-29 → 2026-12-06 (+7d) |  |  |
| SDR-ST-CON-P1-4340 | Testing of PW HDPE Pipe 315 mm. | 2026-11-05 → 2026-11-12 (+7d) | 2026-11-29 → 2026-12-06 (+7d) |  | 77.9d → 79d |
| 9 | **Backfilling** | 2027-02-14 → 2027-02-02 (-12d) | 2027-03-15 → 2027-02-27 (-16d) |  |  |
| SDR-ST-CON-P1-4910 | Backfilling of PW HDPE Pipe 315 mm. | 2027-02-14 → 2027-02-02 (-12d) | 2027-03-15 → 2027-02-27 (-16d) |  | 14d → 30d |
| 3 | **Valve Chambers & Valves & Fire Hydrant** | 2026-10-12 → 2026-10-19 (+7d) | 2027-03-02 → 2027-03-14 (+12d) |  |  |
| 3 | **Excavation** | 2026-10-12 → 2026-10-19 (+7d) | 2026-11-26 → 2026-12-03 (+7d) |  |  |
| SDR-ST-CON-P1-1940 | Excavation for Valve Chambers Section 1 | 2026-10-12 → 2026-10-19 (+7d) | 2026-11-03 → 2026-11-10 (+7d) |  | 14d → 16d |
| SDR-ST-CON-P1-2630 | Excavation for Valve Chambers Section 2 | 2026-11-04 → 2026-11-11 (+7d) | 2026-11-26 → 2026-12-03 (+7d) |  | 14d → 16d |
| 1 | **bedding Works** | 2026-11-28 → 2026-12-05 (+7d) | 2026-12-20 → 2026-12-27 (+7d) |  |  |
| SDR-ST-CON-P1-3400 | Sand bedding for Valve Chambers | 2026-11-28 → 2026-12-05 (+7d) | 2026-12-20 → 2026-12-27 (+7d) |  | 14d → 16d |
| 4 | **Install Chambers & Valves & Fire Hydrant** | 2026-12-21 → 2026-12-28 (+7d) | 2027-01-12 → 2027-01-19 (+7d) |  |  |
| SDR-ST-CON-P1-4330 | Install Chambers & Valves | 2026-12-21 → 2026-12-28 (+7d) | 2027-01-12 → 2027-01-19 (+7d) |  | 14d → 16d |
| 2 | **Testing** | 2027-01-18 → 2027-01-25 (+7d) | 2027-02-02 → 2027-02-09 (+7d) |  |  |
| SDR-ST-CON-P1-5060 | Testing for Chambers & Valves | 2027-01-18 → 2027-01-25 (+7d) | 2027-02-02 → 2027-02-09 (+7d) |  |  |
| 6 | **Backfilling** | 2027-02-06 → 2027-02-13 (+7d) | 2027-03-02 → 2027-03-14 (+12d) |  |  |
| SDR-ST-CON-P1-5730 | Backfilling for Chambers & Valves | 2027-02-06 → 2027-02-13 (+7d) | 2027-03-02 → 2027-03-14 (+12d) |  |  |
| 2 | **ROAD-01 From 400 to 900 m (10)** |  | 2027-03-02 → 2027-03-14 (+12d) |  |  |
| 7 | **Pipes Work** |  | 2026-12-03 → 2026-12-10 (+7d) |  |  |
| 8 | **bedding Works** |  | 2026-10-25 → 2026-11-01 (+7d) |  |  |
| SDR-ST-CON-P1-3060 | Sand bedding for PW HDPE Pipes 315 mm |  | 2026-10-25 → 2026-11-01 (+7d) | 75% → 80% | 58d → 60d |
| 2 | **Pipes Laying** |  | 2026-10-24 → 2026-10-31 (+7d) |  |  |
| SDR-ST-CON-P1-3570 | Install PW 315 mm HDPE Pipe |  | 2026-10-24 → 2026-10-31 (+7d) | 75% → 80% | 58d → 60d |
| 5 | **Testing** | 2026-10-25 → 2026-11-01 (+7d) | 2026-11-09 → 2026-11-16 (+7d) |  |  |
| SDR-ST-CON-P1-4060 | Testing of PW HDPE Pipe 315 mm. | 2026-10-25 → 2026-11-01 (+7d) | 2026-11-09 → 2026-11-16 (+7d) |  | 58d → 60d |
| 9 | **Backfilling** | 2026-11-10 → 2026-11-17 (+7d) | 2026-12-03 → 2026-12-10 (+7d) |  |  |
| SDR-ST-CON-P1-4640 | Backfilling of PW HDPE Pipe 315 mm. | 2026-11-10 → 2026-11-17 (+7d) | 2026-12-03 → 2026-12-10 (+7d) |  | 58d → 60d |
| 3 | **Valve Chambers & Valves & Fire Hydrant** | 2026-10-12 → 2026-10-19 (+7d) | 2027-03-02 → 2027-03-14 (+12d) |  |  |
| 3 | **Excavation** | 2026-10-12 → 2026-10-19 (+7d) | 2026-12-03 → 2026-12-10 (+7d) |  |  |
| SDR-ST-CON-P1-1860 | Excavation for Valve Chambers Section 1 | 2026-10-12 → 2026-10-19 (+7d) | 2026-11-03 → 2026-11-10 (+7d) |  | 20d → 22d |
| SDR-ST-CON-P1-2550 | Excavation for Valve Chambers Section 2 | 2026-11-11 → 2026-11-18 (+7d) | 2026-12-03 → 2026-12-10 (+7d) |  | 14d → 16d |
| 1 | **bedding Works** | 2026-12-05 → 2026-12-12 (+7d) | 2026-12-27 → 2027-01-03 (+7d) |  |  |
| SDR-ST-CON-P1-3310 | Sand bedding for Valve Chambers | 2026-12-05 → 2026-12-12 (+7d) | 2026-12-27 → 2027-01-03 (+7d) |  | 14d → 16d |
| 4 | **Install Chambers & Valves & Fire Hydrant** | 2026-12-28 → 2027-01-04 (+7d) | 2027-01-19 → 2027-01-26 (+7d) |  |  |
| SDR-ST-CON-P1-4210 | Install Chambers & Valves | 2026-12-28 → 2027-01-04 (+7d) | 2027-01-19 → 2027-01-26 (+7d) |  | 14d → 16d |
| 2 | **Testing** | 2027-01-20 → 2027-01-27 (+7d) | 2027-02-04 → 2027-02-11 (+7d) |  |  |
| SDR-ST-CON-P1-4990 | Testing for Chambers & Valves | 2027-01-20 → 2027-01-27 (+7d) | 2027-02-04 → 2027-02-11 (+7d) |  |  |
| 6 | **Backfilling** | 2027-02-06 → 2027-02-13 (+7d) | 2027-03-02 → 2027-03-14 (+12d) |  |  |
| SDR-ST-CON-P1-5710 | Backfilling for Chambers & Valves | 2027-02-06 → 2027-02-13 (+7d) | 2027-03-02 → 2027-03-14 (+12d) |  |  |
| 1 | **ROAD-01 From 900 to 1239 m (11)** |  | 2027-03-01 → 2027-03-08 (+7d) |  |  |
| 7 | **Pipes Work** |  | 2026-12-01 → 2026-12-08 (+7d) |  |  |
| 8 | **bedding Works** |  | 2026-10-22 → 2026-10-29 (+7d) |  |  |

| ID | Task | Start | Finish | Complete | Total float |
| --- | --- | --- | --- | --- | --- |
| SDR-ST-CON-P1-3220 | Sand bedding for PW HDPE Pipes 315 mm |  | 2026-10-22 → 2026-10-29 (+7d) | 75% → 80% | 47d → 48d |
| 2 | **Pipes Laying** |  | 2026-10-22 → 2026-10-29 (+7d) |  |  |
| SDR-ST-CON-P1-3610 | Install PW 315 mm HDPE Pipe |  | 2026-10-22 → 2026-10-29 (+7d) | 75% → 80% | 47d → 48d |
| 5 | **Testing** | 2026-10-24 → 2026-10-31 (+7d) | 2026-11-08 → 2026-11-15 (+7d) |  |  |
| SDR-ST-CON-P1-4090 | Testing of PW HDPE Pipe 315 mm. | 2026-10-24 → 2026-10-31 (+7d) | 2026-11-08 → 2026-11-15 (+7d) |  | 47d → 48d |
| 9 | **Backfilling** | 2026-11-09 → 2026-11-16 (+7d) | 2026-12-01 → 2026-12-08 (+7d) |  |  |
| SDR-ST-CON-P1-4660 | Backfilling of PW HDPE Pipe 315 mm. | 2026-11-09 → 2026-11-16 (+7d) | 2026-12-01 → 2026-12-08 (+7d) |  | 47d → 48d |
| 3 | **Valve Chambers & Valves & Fire Hydrant** | 2026-10-12 → 2026-10-19 (+7d) | 2027-03-01 → 2027-03-08 (+7d) |  |  |
| 3 | **Excavation** | 2026-10-12 → 2026-10-19 (+7d) | 2026-11-26 → 2026-12-03 (+7d) |  |  |
| SDR-ST-CON-P1-2020 | Excavation for Valve Chambers Section 1 | 2026-10-12 → 2026-10-19 (+7d) | 2026-11-03 → 2026-11-10 (+7d) |  | 6d → 8d |
| SDR-ST-CON-P1-2740 | Excavation for Valve Chambers Section 2 | 2026-11-04 → 2026-11-11 (+7d) | 2026-11-26 → 2026-12-03 (+7d) |  | 6d → 8d |
| 1 | **bedding Works** | 2026-11-28 → 2026-12-05 (+7d) | 2026-12-20 → 2026-12-27 (+7d) |  |  |
| SDR-ST-CON-P1-3550 | Sand bedding for Valve Chambers | 2026-11-28 → 2026-12-05 (+7d) | 2026-12-20 → 2026-12-27 (+7d) |  | 6d → 8d |
| 4 | **Install Chambers & Valves & Fire Hydrant** | 2026-12-22 → 2026-12-29 (+7d) | 2027-01-13 → 2027-01-20 (+7d) |  |  |
| SDR-ST-CON-P1-4460 | Install Chambers & Valves | 2026-12-22 → 2026-12-29 (+7d) | 2027-01-13 → 2027-01-20 (+7d) |  | 6d → 8d |
| 2 | **Testing** | 2027-01-18 → 2027-01-25 (+7d) | 2027-02-02 → 2027-02-09 (+7d) |  |  |
| SDR-ST-CON-P1-5190 | Testing for Chambers & Valves | 2027-01-18 → 2027-01-25 (+7d) | 2027-02-02 → 2027-02-09 (+7d) |  | 19d → 24d |
| 6 | **Backfilling** | 2027-02-04 → 2027-02-11 (+7d) | 2027-03-01 → 2027-03-08 (+7d) |  |  |
| SDR-ST-CON-P1-5750 | Backfilling for Chambers & Valves | 2027-02-04 → 2027-02-11 (+7d) | 2027-03-01 → 2027-03-08 (+7d) |  | 18d → 23d |
| 7 | **SEWARAGE NETWORK** |  | 2027-03-15 → 2027-03-22 (+7d) |  |  |
| 6 | **ROAD - 01** |  | 2027-03-08 → 2027-03-20 (+12d) |  |  |
| 2 | **ROAD-01 From 0 to 470 m (3) 110 mm HDPE** |  | 2027-03-08 → 2027-03-20 (+12d) |  |  |
| 7 | **Pipes Work** |  | 2026-12-10 → 2026-12-17 (+7d) |  |  |
| 1 | **Excavation** |  | 2026-11-03 → 2026-10-17 (-17d) |  |  |
| SDR-ST-CON-P1-2380 | Excavation for GRP Pipe 200mm Diameter Section 2 |  | 2026-11-03 → 2026-10-17 A (-17d) | 50% → 100% | 40d → none |
| 5 | **bedding Works** |  | 2026-10-28 → 2026-11-04 (+7d) |  |  |
| SDR-ST-CON-P1-3050 | Sand bedding for GRP Pipe 200mm Diameter |  | 2026-10-28 → 2026-11-04 (+7d) | 50% → 60% |  |
| 2 | **Pipes Laying** |  | 2026-10-22 → 2026-10-29 (+7d) |  |  |
| SDR-ST-CON-P1-3710 | 200 mm GRP Pipe Laying |  | 2026-10-22 → 2026-10-29 (+7d) | 50% → 60% |  |
| 3 | **Testing** | 2026-10-24 → 2026-10-31 (+7d) | 2026-11-16 → 2026-11-23 (+7d) |  |  |
| SDR-ST-CON-P1-4590 | Testing of 200 mm GRP Pipe. | 2026-10-24 → 2026-10-31 (+7d) | 2026-11-16 → 2026-11-23 (+7d) |  |  |
| 6 | **Backfilling** | 2026-11-17 → 2026-11-24 (+7d) | 2026-12-10 → 2026-12-17 (+7d) |  |  |
| SDR-ST-CON-P1-5570 | Backfilling of 200 mm GRP Pipe. | 2026-11-17 → 2026-11-24 (+7d) | 2026-12-10 → 2026-12-17 (+7d) |  |  |
| 4 | **Manholes** | 2026-10-12 → 2026-10-19 (+7d) | 2027-03-08 → 2027-03-20 (+12d) |  |  |
| 1 | **Excavation** | 2026-10-12 → 2026-10-19 (+7d) | 2026-11-29 → 2026-12-06 (+7d) |  |  |
| SDR-ST-CON-P1-1550 | Excavation for manhole. Section 1 | 2026-10-12 → 2026-10-19 (+7d) | 2026-11-04 → 2026-11-11 (+7d) |  |  |
| SDR-ST-CON-P1-2210 | Excavation for manhole. Section 2 | 2026-11-05 → 2026-11-12 (+7d) | 2026-11-29 → 2026-12-06 (+7d) |  |  |
| 2 | **bedding Works** | 2026-11-30 → 2026-12-07 (+7d) | 2026-12-23 → 2026-12-30 (+7d) |  |  |
| SDR-ST-CON-P1-2960 | Sand bedding for manhole. | 2026-11-30 → 2026-12-07 (+7d) | 2026-12-23 → 2026-12-30 (+7d) |  |  |
| 3 | **Install Manholes** | 2026-12-24 → 2026-12-31 (+7d) | 2027-01-17 → 2027-01-24 (+7d) |  |  |
| SDR-ST-CON-P1-3840 | Manhole Installation | 2026-12-24 → 2026-12-31 (+7d) | 2027-01-17 → 2027-01-24 (+7d) |  |  |
| 4 | **Testing** | 2027-01-18 → 2027-01-25 (+7d) | 2027-02-10 → 2027-02-17 (+7d) |  |  |
| SDR-ST-CON-P1-4790 | Testing | 2027-01-18 → 2027-01-25 (+7d) | 2027-02-10 → 2027-02-17 (+7d) |  |  |
| 5 | **Backfilling** | 2027-02-11 → 2027-02-18 (+7d) | 2027-03-08 → 2027-03-20 (+12d) |  |  |
| SDR-ST-CON-P1-5720 | Backfilling | 2027-02-11 → 2027-02-18 (+7d) | 2027-03-08 → 2027-03-20 (+12d) |  |  |
| 1 | **ROAD-01 From 470 to 1125 m (6) 110 mm HDPE** |  | 2027-03-04 → 2027-03-16 (+12d) |  |  |
| 7 | **Pipes Work** |  | 2027-01-26 → 2027-01-31 (+5d) |  |  |
| 1 | **Excavation** |  | 2026-10-31 → 2026-11-07 (+7d) |  |  |
| SDR-ST-CON-P1-2110 | Excavation for GRP Pipe 200mm Diameter Section 2 |  | 2026-10-31 → 2026-11-07 (+7d) |  | 18d → 25d |
| 5 | **bedding Works** | 2026-11-01 → 2026-10-17 (-15d) | 2026-11-17 → 2026-11-24 (+7d) |  |  |
| SDR-ST-CON-P1-2720 | Sand bedding for GRP Pipe 200mm Diameter | 2026-11-01 → 2026-10-17 A (-15d) | 2026-11-17 → 2026-11-24 (+7d) | 0% → 10% | 18d → 25d |
| 2 | **Pipes Laying** | 2026-11-18 → 2026-10-17 (-32d) | 2026-12-08 → 2026-12-13 (+5d) |  |  |
| SDR-ST-CON-P1-3300 | 200 mm GRP Pipe Laying | 2026-11-18 → 2026-10-17 A (-32d) | 2026-12-08 → 2026-12-13 (+5d) | 0% → 10% | 18d → 25d |
| 3 | **Testing** | 2026-12-09 → 2026-12-14 (+5d) | 2027-01-02 → 2027-01-06 (+4d) |  |  |
| SDR-ST-CON-P1-4120 | Testing of 200 mm GRP Pipe. | 2026-12-09 → 2026-12-14 (+5d) | 2027-01-02 → 2027-01-06 (+4d) |  | 18d → 25d |
| 6 | **Backfilling** | 2027-01-03 → 2027-01-07 (+4d) | 2027-01-26 → 2027-01-31 (+5d) |  |  |
| SDR-ST-CON-P1-4970 | Backfilling of 200 mm GRP Pipe. | 2027-01-03 → 2027-01-07 (+4d) | 2027-01-26 → 2027-01-31 (+5d) |  | 18d → 25d |
| 4 | **Manholes** | 2026-10-12 → 2026-10-19 (+7d) | 2027-03-04 → 2027-03-16 (+12d) |  |  |
| 1 | **Excavation** | 2026-10-12 → 2026-10-19 (+7d) | 2026-11-04 → 2026-11-11 (+7d) |  |  |
| SDR-ST-CON-P1-1440 | Excavation for manhole. Section 1 | 2026-10-12 → 2026-10-19 (+7d) | 2026-11-04 → 2026-11-11 (+7d) |  | 41d → 43d |
| SDR-ST-CON-P1-2120 | Excavation for manhole. Section 2 | 2026-10-12 → 2026-10-19 (+7d) | 2026-11-04 → 2026-11-11 (+7d) |  | 41d → 43d |
| 2 | **bedding Works** | 2026-10-12 → 2026-10-19 (+7d) | 2026-11-04 → 2026-11-11 (+7d) |  |  |
| SDR-ST-CON-P1-2870 | Sand bedding for manhole. | 2026-10-12 → 2026-10-19 (+7d) | 2026-11-04 → 2026-11-11 (+7d) |  | 41d → 43d |
| 3 | **Install Manholes** | 2026-12-21 → 2026-12-28 (+7d) | 2027-01-13 → 2027-01-20 (+7d) |  |  |
| SDR-ST-CON-P1-3790 | Manhole Installation | 2026-12-21 → 2026-12-28 (+7d) | 2027-01-13 → 2027-01-20 (+7d) |  | 2d → 4d |
| 4 | **Testing** | 2027-01-14 → 2027-01-21 (+7d) | 2027-02-07 → 2027-02-14 (+7d) |  |  |
| SDR-ST-CON-P1-4710 | Testing | 2027-01-14 → 2027-01-21 (+7d) | 2027-02-07 → 2027-02-14 (+7d) |  | 2d → 4d |
| 5 | **Backfilling** | 2027-02-08 → 2027-02-15 (+7d) | 2027-03-04 → 2027-03-16 (+12d) |  |  |
| SDR-ST-CON-P1-5700 | Backfilling | 2027-02-08 → 2027-02-15 (+7d) | 2027-03-04 → 2027-03-16 (+12d) |  |  |
| 3 | **ROAD-01 From 1125 to 1765 m (7) 110 mm HDPE** |  | 2027-02-14 → 2027-02-21 (+7d) |  |  |

| ID | Task | Start | Finish | Complete | Total float |
| --- | --- | --- | --- | --- | --- |
| 7 | **Pipes Work** |  | 2027-01-25 → 2027-02-01 (+7d) |  |  |
| 1 | **Excavation** |  | 2026-10-31 → 2026-11-07 (+7d) |  |  |
| SDR-ST-CON-P1-2240 | Excavation for GRP Pipe 200mm Diameter Section 2 |  | 2026-10-31 → 2026-11-07 (+7d) |  | 19d → 24d |
| 5 | **bedding Works** | 2026-11-01 → 2026-11-08 (+7d) | 2026-11-16 → 2026-11-23 (+7d) |  |  |
| SDR-ST-CON-P1-2830 | Sand bedding for GRP Pipe 200mm Diameter | 2026-11-01 → 2026-11-08 (+7d) | 2026-11-16 → 2026-11-23 (+7d) |  | 19d → 24d |
| 2 | **Pipes Laying** | 2026-11-17 → 2026-11-24 (+7d) | 2026-12-07 → 2026-12-14 (+7d) |  |  |
| SDR-ST-CON-P1-3420 | 200 mm GRP Pipe Laying | 2026-11-17 → 2026-11-24 (+7d) | 2026-12-07 → 2026-12-14 (+7d) |  | 19d → 24d |
| 3 | **Testing** | 2026-12-08 → 2026-12-15 (+7d) | 2026-12-31 → 2027-01-07 (+7d) |  |  |
| SDR-ST-CON-P1-4180 | Testing of 200 mm GRP Pipe. | 2026-12-08 → 2026-12-15 (+7d) | 2026-12-31 → 2027-01-07 (+7d) |  | 19d → 24d |
| 6 | **Backfilling** | 2027-01-02 → 2027-01-09 (+7d) | 2027-01-25 → 2027-02-01 (+7d) |  |  |
| SDR-ST-CON-P1-5020 | Backfilling of 200 mm GRP Pipe. | 2027-01-02 → 2027-01-09 (+7d) | 2027-01-25 → 2027-02-01 (+7d) |  | 19d → 24d |
| 4 | **Manholes** | 2026-10-12 → 2026-10-19 (+7d) | 2027-02-14 → 2027-02-21 (+7d) |  |  |
| 1 | **Excavation** | 2026-10-12 → 2026-10-19 (+7d) | 2026-11-04 → 2026-11-11 (+7d) |  |  |
| SDR-ST-CON-P1-1660 | Excavation for manhole. Section 1 | 2026-10-12 → 2026-10-19 (+7d) | 2026-11-04 → 2026-11-11 (+7d) |  | 38.6d → 39.7d |
| SDR-ST-CON-P1-2310 | Excavation for manhole. Section 2 | 2026-10-12 → 2026-10-19 (+7d) | 2026-11-04 → 2026-11-11 (+7d) |  | 38.6d → 39.7d |
| 2 | **bedding Works** | 2026-11-05 → 2026-11-12 (+7d) | 2026-11-29 → 2026-12-06 (+7d) |  |  |
| SDR-ST-CON-P1-3030 | Sand bedding for manhole. | 2026-11-05 → 2026-11-12 (+7d) | 2026-11-29 → 2026-12-06 (+7d) |  | 38.6d → 39.7d |
| 3 | **Install Manholes** | 2026-12-21 → 2026-12-28 (+7d) | 2027-01-13 → 2027-01-20 (+7d) |  |  |
| SDR-ST-CON-P1-3910 | Manhole Installation | 2026-12-21 → 2026-12-28 (+7d) | 2027-01-13 → 2027-01-20 (+7d) |  | 20.6d → 21.7d |
| 4 | **Testing** | 2026-12-21 → 2026-12-28 (+7d) | 2027-01-13 → 2027-01-20 (+7d) |  |  |
| SDR-ST-CON-P1-4830 | Testing | 2026-12-21 → 2026-12-28 (+7d) | 2027-01-13 → 2027-01-20 (+7d) |  | 20.6d → 21.7d |
| 5 | **Backfilling** | 2027-01-20 → 2027-01-27 (+7d) | 2027-02-14 → 2027-02-21 (+7d) |  |  |
| SDR-ST-CON-P1-5740 | Backfilling | 2027-01-20 → 2027-01-27 (+7d) | 2027-02-14 → 2027-02-21 (+7d) |  | 20.6d → 21.7d |
| 1 | **ROAD - 02** |  | 2027-03-15 → 2027-03-22 (+7d) |  |  |
| 1 | **ROAD-01 From 400 to 900 m (10) 110 mm HDPE** |  | 2027-03-15 → 2027-03-22 (+7d) |  |  |
| 7 | **Pipes Work** |  | 2027-02-10 → 2027-02-17 (+7d) |  |  |
| 1 | **Excavation** |  | 2026-11-16 → 2026-11-23 (+7d) |  |  |
| SDR-ST-CON-P1-1810 | Excavation for GRP Pipe 200mm Diameter Section 1 |  | 2026-10-24 → 2026-10-31 (+7d) | 75% → 90% | 3d → 16d |
| SDR-ST-CON-P1-2530 | Excavation for GRP Pipe 200mm Diameter Section 2 | 2026-10-28 → 2026-11-04 (+7d) | 2026-11-16 → 2026-11-23 (+7d) |  | 14.9d → 16d |
| 5 | **bedding Works** | 2026-11-17 → 2026-11-24 (+7d) | 2026-12-02 → 2026-12-09 (+7d) |  |  |
| SDR-ST-CON-P1-3210 | Sand bedding for GRP Pipe 200mm Diameter | 2026-11-17 → 2026-11-24 (+7d) | 2026-12-02 → 2026-12-09 (+7d) |  | 14.9d → 16d |
| 2 | **Pipes Laying** | 2026-12-03 → 2026-12-10 (+7d) | 2026-12-23 → 2026-12-30 (+7d) |  |  |
| SDR-ST-CON-P1-3800 | 200 mm GRP Pipe Laying | 2026-12-03 → 2026-12-10 (+7d) | 2026-12-23 → 2026-12-30 (+7d) |  | 14.9d → 16d |
| 3 | **Testing** | 2026-12-24 → 2026-12-31 (+7d) | 2027-01-17 → 2027-01-24 (+7d) |  |  |
| SDR-ST-CON-P1-4580 | Testing of 200 mm GRP Pipe. | 2026-12-24 → 2026-12-31 (+7d) | 2027-01-17 → 2027-01-24 (+7d) |  | 14.9d → 16d |
| 6 | **Backfilling** | 2027-01-18 → 2027-01-25 (+7d) | 2027-02-10 → 2027-02-17 (+7d) |  |  |
| SDR-ST-CON-P1-5500 | Backfilling of 200 mm GRP Pipe. | 2027-01-18 → 2027-01-25 (+7d) | 2027-02-10 → 2027-02-17 (+7d) |  | 14.9d → 16d |
| 4 | **Manholes** | 2026-10-12 → 2026-10-19 (+7d) | 2027-03-15 → 2027-03-22 (+7d) |  |  |
| 1 | **Excavation** | 2026-10-12 → 2026-10-19 (+7d) | 2026-11-04 → 2026-11-11 (+7d) |  |  |
| SDR-ST-CON-P1-1820 | Excavation for manhole. Section 1 | 2026-10-12 → 2026-10-19 (+7d) | 2026-11-04 → 2026-11-11 (+7d) |  | 3d → 19d |
| SDR-ST-CON-P1-2580 | Excavation for manhole. Section 2 | 2026-10-12 → 2026-10-19 (+7d) | 2026-11-04 → 2026-11-11 (+7d) |  | 3d → 19d |
| 2 | **bedding Works** | 2026-11-05 → 2026-11-12 (+7d) | 2026-11-29 → 2026-12-06 (+7d) |  |  |
| SDR-ST-CON-P1-3410 | Sand bedding for manhole. | 2026-11-05 → 2026-11-12 (+7d) | 2026-11-29 → 2026-12-06 (+7d) |  | 3d → 19d |
| 3 | **Install Manholes** | 2026-11-30 → 2026-12-07 (+7d) | 2026-12-23 → 2026-12-30 (+7d) |  |  |
| SDR-ST-CON-P1-4390 | Manhole Installation | 2026-11-30 → 2026-12-07 (+7d) | 2026-12-23 → 2026-12-30 (+7d) |  | 3d → 19d |
| 4 | **Testing** | 2026-12-24 → 2026-12-31 (+7d) | 2027-01-17 → 2027-01-24 (+7d) |  |  |
| SDR-ST-CON-P1-5120 | Testing | 2026-12-24 → 2026-12-31 (+7d) | 2027-01-17 → 2027-01-24 (+7d) |  | 3d → 19d |
| 5 | **Backfilling** | 2027-02-14 → 2027-02-21 (+7d) | 2027-03-15 → 2027-03-22 (+7d) |  |  |
| SDR-ST-CON-P1-5770 | Backfilling | 2027-02-14 → 2027-02-21 (+7d) | 2027-03-15 → 2027-03-22 (+7d) |  |  |
| 3 | **ROAD-01 From 900 to 1239 m (11) 110 mm HDPE** |  | 2027-03-15 → 2027-03-22 (+7d) |  |  |
| 7 | **Pipes Work** |  | 2027-02-13 → 2027-02-20 (+7d) |  |  |
| 1 | **Excavation** |  | 2026-11-15 → 2026-11-22 (+7d) |  |  |
| SDR-ST-CON-P1-2030 | Excavation for GRP Pipe 200mm Diameter Section 1 |  | 2026-10-24 → 2026-10-31 (+7d) | 75% → 80% | 3d → 14d |
| SDR-ST-CON-P1-2700 | Excavation for GRP Pipe 200mm Diameter Section 2 | 2026-10-28 → 2026-11-04 (+7d) | 2026-11-15 → 2026-11-22 (+7d) |  | 12.9d → 14d |
| 5 | **bedding Works** | 2026-11-16 → 2026-11-23 (+7d) | 2026-11-26 → 2026-12-03 (+7d) |  |  |
| SDR-ST-CON-P1-3330 | Sand bedding for GRP Pipe 200mm Diameter | 2026-11-16 → 2026-11-23 (+7d) | 2026-11-26 → 2026-12-03 (+7d) |  | 12.9d → 14d |
| 2 | **Pipes Laying** | 2026-11-28 → 2026-12-05 (+7d) | 2026-12-21 → 2026-12-28 (+7d) |  |  |
| SDR-ST-CON-P1-3750 | 200 mm GRP Pipe Laying | 2026-11-28 → 2026-12-05 (+7d) | 2026-12-21 → 2026-12-28 (+7d) |  | 12.9d → 14d |
| 3 | **Testing** | 2026-12-22 → 2026-12-29 (+7d) | 2027-01-14 → 2027-01-21 (+7d) |  |  |
| SDR-ST-CON-P1-4670 | Testing of 200 mm GRP Pipe. | 2026-12-22 → 2026-12-29 (+7d) | 2027-01-14 → 2027-01-21 (+7d) |  | 12.9d → 14d |
| 6 | **Backfilling** | 2027-01-20 → 2027-01-27 (+7d) | 2027-02-13 → 2027-02-20 (+7d) |  |  |
| SDR-ST-CON-P1-5670 | Backfilling of 200 mm GRP Pipe. | 2027-01-20 → 2027-01-27 (+7d) | 2027-02-13 → 2027-02-20 (+7d) |  | 12.9d → 14d |
| 4 | **Manholes** | 2026-10-12 → 2026-10-19 (+7d) | 2027-03-15 → 2027-03-22 (+7d) |  |  |
| 1 | **Excavation** | 2026-10-12 → 2026-10-19 (+7d) | 2026-11-29 → 2026-12-06 (+7d) |  |  |
| SDR-ST-CON-P1-2040 | Excavation for manhole. Section 1 | 2026-10-12 → 2026-10-19 (+7d) | 2026-11-04 → 2026-11-11 (+7d) |  | 3d → 16d |
| SDR-ST-CON-P1-2760 | Excavation for manhole. Section 2 | 2026-11-05 → 2026-11-12 (+7d) | 2026-11-29 → 2026-12-06 (+7d) |  | 3d → 16d |
| 2 | **bedding Works** | 2026-11-30 → 2026-12-07 (+7d) | 2026-12-23 → 2026-12-30 (+7d) |  |  |
| SDR-ST-CON-P1-3620 | Sand bedding for manhole. | 2026-11-30 → 2026-12-07 (+7d) | 2026-12-23 → 2026-12-30 (+7d) |  | 3d → 16d |
| 3 | **Install Manholes** | 2026-12-24 → 2026-12-31 (+7d) | 2027-01-17 → 2027-01-24 (+7d) |  |  |
| SDR-ST-CON-P1-4560 | Manhole Installation | 2026-12-24 → 2026-12-31 (+7d) | 2027-01-17 → 2027-01-24 (+7d) |  | 3d → 19d |

| ID | Task | Start | Finish | Complete | Total float |
| --- | --- | --- | --- | --- | --- |
| 4 | **Testing** | 2027-01-18 → 2027-01-25 (+7d) | 2027-02-10 → 2027-02-17 (+7d) |  |  |
| SDR-ST-CON-P1-5440 | Testing | 2027-01-18 → 2027-01-25 (+7d) | 2027-02-10 → 2027-02-17 (+7d) |  | 3d → 19d |
| 5 | **Backfilling** | 2027-02-14 → 2027-02-21 (+7d) | 2027-03-15 → 2027-03-22 (+7d) |  |  |
| SDR-ST-CON-P1-5800 | Backfilling | 2027-02-14 → 2027-02-21 (+7d) | 2027-03-15 → 2027-03-22 (+7d) |  | 3d → 19d |
| 11 | **STORM WATER** |  | 2027-02-20 → 2027-02-28 (+8d) |  |  |
| 2 | **ROAD N...** |  | 2027-02-20 → 2027-02-28 (+8d) |  |  |
| 8 | **Pipes Works** |  | 2027-02-20 → 2027-02-28 (+8d) |  |  |
| 7 | **bedding Works** |  | 2026-11-04 → 2026-10-17 (-18d) |  |  |
| SDR-ST-CON-P1-2170 | Sand bedding for GRP Pipes |  | 2026-11-04 → 2026-10-17 A (-18d) | 75% → 100% | 41d → none |
| 2 | **Pipes Laying** |  | 2026-11-10 → 2026-10-17 (-24d) |  |  |
| SDR-ST-CON-P1-2910 | Install ST GRP Pipes |  | 2026-11-10 → 2026-10-17 A (-24d) | 75% → 100% | 36d → none |
| 6 | **Testing** | 2026-11-16 → 2026-11-22 (+6d) | 2026-12-09 → 2026-12-15 (+6d) |  |  |
| SDR-ST-CON-P1-3830 | Testing ST GRP Pipes | 2026-11-16 → 2026-11-22 (+6d) | 2026-12-09 → 2026-12-15 (+6d) |  | 36d → 39d |
| 3 | **Backfilling** | 2027-01-28 → 2027-02-04 (+7d) | 2027-02-20 → 2027-02-28 (+8d) |  |  |
| SDR-ST-CON-P1-4760 | Backfilling ST GRP Pipes | 2027-01-28 → 2027-02-04 (+7d) | 2027-02-20 → 2027-02-28 (+8d) |  | 13d → 24d |
| 3 | **Package-3** | 2026-10-12 → 2026-10-19 (+7d) | 2027-08-01 → 2027-08-08 (+7d) |  |  |
| 1 | **Site Works** | 2026-10-12 → 2026-10-19 (+7d) | 2026-11-03 → 2026-11-10 (+7d) |  |  |
| 1 | **Earthworks** | 2026-10-12 → 2026-10-19 (+7d) | 2026-11-03 → 2026-11-10 (+7d) |  |  |
| 2 | **Excavation** | 2026-10-12 → 2026-10-19 (+7d) | 2026-11-03 → 2026-11-10 (+7d) |  |  |
| SDR-ST-CON-P3-1000 | Excavation in all types of soil to the required depth includes removal of waste material | 2026-10-12 → 2026-10-19 (+7d) | 2026-11-03 → 2026-11-10 (+7d) |  | 6d → 8d |
| 1 | **Fill** | 2026-10-12 → 2026-10-19 (+7d) | 2026-10-28 → 2026-11-04 (+7d) |  |  |
| SDR-ST-CON-P3-1010 | Backfilling with improved and select fill material from the site or imported | 2026-10-12 → 2026-10-19 (+7d) | 2026-10-28 → 2026-11-04 (+7d) |  | 6d → 8d |
| 2 | **Platform Works** | 2026-10-12 → 2026-10-19 (+7d) | 2027-07-20 → 2027-07-21 (+1d) |  |  |
| 1 | **Platform** | 2026-10-12 → 2026-10-19 (+7d) | 2027-04-01 → 2027-04-10 (+9d) |  |  |
| 1 | **Earthworks** | 2026-10-12 → 2026-10-19 (+7d) | 2026-11-19 → 2026-11-26 (+7d) |  |  |
| 1 | **Excavation** | 2026-10-12 → 2026-10-19 (+7d) | 2026-10-29 → 2026-11-05 (+7d) |  |  |
| SDR-ST-CON-P3-1020 | Excavation in all types of soil to the required depth includes removal of waste material | 2026-10-12 → 2026-10-19 (+7d) | 2026-10-29 → 2026-11-05 (+7d) |  | 6d → 8d |
| 2 | **Fill** | 2026-10-31 → 2026-11-07 (+7d) | 2026-11-19 → 2026-11-26 (+7d) |  |  |
| SDR-ST-CON-P3-1030 | Backfilling with improved and select fill material from the site or imported Part 1 | 2026-10-31 → 2026-11-07 (+7d) | 2026-11-19 → 2026-11-26 (+7d) |  | 6d → 8d |
| SDR-ST-CON-P3-1040 | Backfilling with improved and select fill material from the site or imported Part 2 | 2026-10-31 → 2026-11-07 (+7d) | 2026-11-17 → 2026-11-24 (+7d) |  | 8d → 10d |
| 3 | **Concrete Works** | 2026-11-21 → 2026-11-28 (+7d) | 2027-04-01 → 2027-04-10 (+9d) |  |  |
| 1 | **Foundations** | 2026-11-21 → 2026-11-28 (+7d) | 2026-12-30 → 2027-01-06 (+7d) |  |  |
| SDR-ST-CON-P3-1060 | Pouring Concrete under Foundation 100 mm thickness lean | 2026-11-21 → 2026-11-28 (+7d) | 2026-12-01 → 2026-12-08 (+7d) |  | 6d → 8d |
| SDR-ST-CON-P3-1080 | Provide and lay 2 layers of waterproofing bitumenous membrane 4mm below footings | 2026-12-02 → 2026-12-09 (+7d) | 2026-12-10 → 2026-12-17 (+7d) |  | 6d → 8d |
| SDR-ST-CON-P3-1100 | Pouring Concrete for protecting waterproofing under the foundation 50 mm thickness | 2026-12-13 → 2026-12-20 (+7d) | 2026-12-23 → 2026-12-30 (+7d) |  | 6d → 8d |
| 1 | **Footings** | 2026-12-13 → 2026-12-20 (+7d) | 2026-12-30 → 2027-01-06 (+7d) |  |  |
| SDR-ST-CON-P3-1130 | Pouring concrete for footings Part 1 | 2026-12-13 → 2026-12-20 (+7d) | 2026-12-23 → 2026-12-30 (+7d) |  | 6d → 8d |
| SDR-ST-CON-P3-1150 | Pouring concrete for footings Part 2 | 2026-12-13 → 2026-12-20 (+7d) | 2026-12-23 → 2026-12-30 (+7d) |  | 6d → 8d |
| SDR-ST-CON-P3-1180 | Pouring concrete for footings Part 3 | 2026-12-13 → 2026-12-20 (+7d) | 2026-12-30 → 2027-01-06 (+7d) |  | 6d → 8d |
| 2 | **Substructure** | 2026-12-31 → 2027-01-07 (+7d) | 2027-01-28 → 2027-02-04 (+7d) |  |  |
| 1 | **Basement** | 2027-01-03 → 2027-01-10 (+7d) | 2027-01-17 → 2027-01-24 (+7d) |  |  |
| SDR-ST-CON-P3-1200 | Pouring concrete for Basement Part 1 | 2027-01-03 → 2027-01-10 (+7d) | 2027-01-13 → 2027-01-20 (+7d) |  | 6d → 8d |
| SDR-ST-CON-P3-1220 | Pouring concrete for Basement Part 2 | 2027-01-09 → 2027-01-16 (+7d) | 2027-01-17 → 2027-01-24 (+7d) |  | 17d → 25d |
| 2 | **Tank** | 2026-12-31 → 2027-01-07 (+7d) | 2027-01-13 → 2027-01-20 (+7d) |  |  |
| SDR-ST-CON-P3-1210 | Pouring concrete for Tank Part 1 | 2026-12-31 → 2027-01-07 (+7d) | 2027-01-06 → 2027-01-13 (+7d) |  | 20d → 28d |
| SDR-ST-CON-P3-1230 | Pouring concrete for Tank Part 2 | 2027-01-07 → 2027-01-14 (+7d) | 2027-01-13 → 2027-01-20 (+7d) |  | 20d → 28d |
| 3 | **Retaining Walls** | 2027-01-14 → 2027-01-21 (+7d) | 2027-01-28 → 2027-02-04 (+7d) |  |  |
| SDR-ST-CON-P3-1190 | Pouring concrete for Retaining Walls Part 1 | 2027-01-14 → 2027-01-21 (+7d) | 2027-01-21 → 2027-01-28 (+7d) |  | 6d → 8d |
| SDR-ST-CON-P3-1250 | Pouring concrete for Retaining Walls Part 2 | 2027-01-23 → 2027-01-30 (+7d) | 2027-01-28 → 2027-02-04 (+7d) |  | 6d → 8d |
| 3 | **Waterproofing Vertical** | 2027-01-30 → 2027-02-06 (+7d) | 2027-02-16 → 2027-02-25 (+9d) |  |  |
| SDR-ST-CON-P3-1300 | lay 2 layers of waterproofing bitumenous membrane 4mm including protection board for substructure vertical Part 1 | 2027-01-30 → 2027-02-06 (+7d) | 2027-02-02 → 2027-02-09 (+7d) |  | 6d → 8d |
| SDR-ST-CON-P3-1370 | lay 2 layers of waterproofing bitumenous membrane 4mm including protection board for substructure vertical Part 2 | 2027-02-08 → 2027-02-16 (+8d) | 2027-02-11 → 2027-02-20 (+9d) |  | 2d → 3d |
| SDR-ST-CON-P3-1430 | lay 2 layers of waterproofing bitumenous membrane 4mm including protection board for substructure vertical Part 3 | 2027-02-13 → 2027-02-21 (+8d) | 2027-02-16 → 2027-02-25 (+9d) |  | 2d → 3d |
| 4 | **Neck Walls** | 2027-02-18 → 2027-02-28 (+10d) | 2027-02-25 → 2027-03-06 (+9d) |  |  |
| SDR-ST-CON-P3-1270 | Pouring concrete for Neck Walls Part 1 | 2027-02-18 → 2027-02-28 (+10d) | 2027-02-24 → 2027-03-04 (+8d) |  | 2d → 3d |
| SDR-ST-CON-P3-1290 | Pouring concrete for Neck Walls Part 2 | 2027-02-20 → 2027-03-01 (+9d) | 2027-02-25 → 2027-03-06 (+9d) |  | 2d → 3d |
| 5 | **Preparation for Slab** | 2027-02-27 → 2027-03-07 (+8d) | 2027-03-07 → 2027-03-20 (+13d) |  |  |
| SDR-ST-CON-P3-1320 | Pouring Concrete under slab on grade and gound beams 50 mm thickness lean | 2027-02-27 → 2027-03-07 (+8d) | 2027-03-02 → 2027-03-15 (+13d) |  | 2.9d → 3d |
| SDR-ST-CON-P3-1360 | Supply and lay 250 micron thk polyethylene sheet below slab on grade and ground beams | 2027-03-03 → 2027-03-16 (+13d) | 2027-03-07 → 2027-03-20 (+13d) |  | 2.9d → 3d |
| 6 | **Slab on Grade** | 2027-03-08 → 2027-03-21 (+13d) | 2027-03-16 → 2027-03-24 (+8d) |  |  |
| SDR-ST-CON-P3-1380 | Pouring Concrete for Slab on grade | 2027-03-08 → 2027-03-21 (+13d) | 2027-03-16 → 2027-03-24 (+8d) |  | 2.9d → 3d |
| 7 | **Finishes** | 2027-03-21 → 2027-03-29 (+8d) | 2027-04-01 → 2027-04-10 (+9d) |  |  |
| 9 | **Troweled Finish** | 2027-03-21 → 2027-03-29 (+8d) | 2027-03-23 → 2027-03-31 (+8d) |  |  |
| SDR-ST-CON-P3-1400 | Pouring Concrete for Slab on grade with troweled finish Part 1 | 2027-03-21 → 2027-03-29 (+8d) | 2027-03-23 → 2027-03-31 (+8d) |  | 2.9d → 3d |
| SDR-ST-CON-P3-1500 | Pouring Concrete for Slab on grade with troweled finish Part 2 | 2027-03-21 → 2027-03-29 (+8d) | 2027-03-23 → 2027-03-31 (+8d) |  | 2.9d → 3d |
| 8 | **Exposed Aggregate Finish** | 2027-03-24 → 2027-04-01 (+8d) | 2027-04-01 → 2027-04-10 (+9d) |  |  |
| SDR-ST-CON-P3-1420 | Pouring Concrete for Slab on grade with exposed aggregate finish Part 1 | 2027-03-24 → 2027-04-01 (+8d) | 2027-03-27 → 2027-04-04 (+8d) |  | 2.9d → 3d |
| SDR-ST-CON-P3-1480 | Pouring Concrete for Slab on grade with exposed aggregate finish Part 2 | 2027-03-24 → 2027-04-01 (+8d) | 2027-03-27 → 2027-04-04 (+8d) |  | 2.9d → 3d |
| SDR-ST-CON-P3-1490 | Pouring Concrete for Slab on grade with exposed aggregate finish Part 3 | 2027-03-27 → 2027-04-04 (+8d) | 2027-04-01 → 2027-04-10 (+9d) |  | 2.9d → 3d |
| 3 | **Finishes & Architectural Works** | 2027-05-24 → 2027-06-01 (+8d) | 2027-07-20 → 2027-07-21 (+1d) |  |  |

| ID | Task | Start | Finish | Total float | Predecessors | Other |
| --- | --- | --- | --- | --- | --- | --- |
| SDR-ST-CON-P3-1540 | Installation of metal steel 1200mm railing including all accessories Part 1 | 2027-05-24 → 2027-06-01 (+8d) | 2027-06-09 → 2027-06-17 (+8d) | 12d → 10d |  |  |
| SDR-ST-CON-P3-1590 | Installation of metal steel 1200mm railing including all accessories Part 2 | 2027-06-10 → 2027-06-19 (+9d) | 2027-06-21 → 2027-06-29 (+8d) | 12d → 10d |  |  |
| SDR-ST-CON-P3-1640 | Installation of metal steel 1200mm railing including all accessories Part3 | 2027-06-22 → 2027-06-30 (+8d) | 2027-06-30 → 2027-07-08 (+8d) | 12d → 10d |  |  |
| SDR-ST-CON-P3-1710 | Platform Paving & warning tiles | 2027-07-11 → 2027-07-13 (+2d) | 2027-07-15 → 2027-07-17 (+2d) | 3.9d → 7d |  |  |
| SDR-ST-CON-P3-1760 | Painting Part 1 | 2027-07-15 → 2027-07-18 (+3d) | 2027-07-20 → 2027-07-21 (+1d) | 3.9d → 7d |  |  |
| SDR-ST-CON-P3-1840 | Painting Part 2 | 2027-07-15 → 2027-07-18 (+3d) | 2027-07-20 → 2027-07-21 (+1d) | 3.9d → 13d |  |  |
| 5 | **Platform Electrical Works** | 2027-02-27 → 2027-03-07 (+8d) | 2027-03-25 → 2027-04-03 (+9d) |  |  |  |
| SDR-ST-CON-P3-1310 | cable conduits | 2027-02-27 → 2027-03-07 (+8d) | 2027-03-25 → 2027-04-03 (+9d) | 2d → 9d |  |  |
| 3 | **Canopy works** | 2026-11-24 → 2026-12-01 (+7d) | 2027-08-01 → 2027-08-08 (+7d) |  |  |  |
| 1 | **Civil and Architectural Works** | 2026-11-24 → 2026-12-01 (+7d) | 2027-01-20 → 2027-01-27 (+7d) |  |  |  |
| 1 | **Concrete** | 2026-11-24 → 2026-12-01 (+7d) | 2027-01-20 → 2027-01-27 (+7d) |  |  |  |
| SDR-ST-CON-P3-1050 | Pouring Concrete under the foundation 100 mm thickness lean | 2026-11-24 → 2026-12-01 (+7d) | 2026-12-08 → 2026-12-15 (+7d) | 9d → 11d |  | resources SIC- Cost [11200]; Civil Forman [37.98 h]; Labor [37.98 h]; charpenter [37.98 h]; Supervisor [37.98 h]; Mason [37.98 h]; Mason Helper [37.98 h] → charpenter [37.98 h]; SIC- Cost [11200]; Civil Forman [37.98 h]; Labor [37.98 h]; Supervisor [37.98 h]; Mason [37.98 h]; Mason Helper [37.98 h] |
| SDR-ST-CON-P3-1090 | Pouring Concrete for protecting waterproofing under the foundation 50 mm thickness | 2026-12-15 → 2026-12-22 (+7d) | 2026-12-28 → 2027-01-04 (+7d) | 14d → 25d |  | resources SIC- Cost [6720.01]; Civil Forman [37.98 h]; Labor [37.98 h]; charpenter [37.98 h]; Supervisor [37.98 h]; Mason [37.98 h]; Mason Helper [37.98 h] → charpenter [37.98 h]; SIC- Cost [6720.01]; Civil Forman [37.98 h]; Labor [37.98 h]; Supervisor [37.98 h]; Mason [37.98 h]; Mason Helper [37.98 h] |
| SDR-ST-CON-P3-1110 | Pouring Concrete for Footings | 2026-12-29 → 2027-01-05 (+7d) | 2027-01-11 → 2027-01-18 (+7d) | 14d → 25d |  | resources SIC- Cost [95800.1]; Civil Forman [37.98 h]; Labor [37.98 h]; charpenter [37.98 h]; Supervisor [37.98 h]; Mason [37.98 h]; Mason Helper [37.98 h] → charpenter [37.98 h]; SIC- Cost [95800.1]; Civil Forman [37.98 h]; Labor [37.98 h]; Supervisor [37.98 h]; Mason [37.98 h]; Mason Helper [37.98 h] |
| SDR-ST-CON-P3-1140 | Pouring Concrete for Coulumns necks | 2027-01-12 → 2027-01-19 (+7d) | 2027-01-20 → 2027-01-27 (+7d) | 14d → 25d |  | resources SIC- Cost [52720]; Civil Forman [199.87 h]; Labor [199.87 h]; charpenter [199.87 h]; Supervisor [128.18 h]; Mason [199.87 h]; Mason Helper [199.87 h] → charpenter [199.87 h]; SIC- Cost [52720]; Civil Forman [199.87 h]; Labor [199.87 h]; Supervisor [128.18 h]; Mason [199.87 h]; Mason Helper [199.87 h] |
| 4 | **Metals** | 2026-12-09 → 2026-12-16 (+7d) | 2027-08-01 → 2027-08-08 (+7d) |  |  |  |
| 2 | **Structural Steel Framing** | 2027-01-11 → 2027-01-18 (+7d) | 2027-04-27 → 2027-05-02 (+5d) |  |  |  |
| SDR-ST-CON-P3-1120 | Anchor Bolt Verification | 2027-01-11 → 2027-01-18 (+7d) | 2027-01-28 → 2027-02-04 (+7d) |  |  |  |
| SDR-ST-CON-P3-1160 | Erection of Columns Part 1 | 2027-01-31 → 2027-02-07 (+7d) | 2027-02-23 → 2027-03-02 (+7d) |  |  | resources SIC- Cost [161728]; Surveyor [135.31 h]; Helper [135.31 h]; charpenter [135.31 h]; Supervisor [135.31 h]; Mason [135.31 h]; Mason Helper [135.31 h] → charpenter [135.31 h]; SIC- Cost [161728]; Surveyor [135.31 h]; Helper [135.31 h]; Supervisor [135.31 h]; Mason [135.31 h]; Mason Helper [135.31 h] |
| SDR-ST-CON-P3-1260 | Erection of Rafters Part 1 | 2027-02-10 → 2027-02-15 (+5d) | 2027-03-01 → 2027-03-06 (+5d) | 10d → 12d |  | resources SIC- Cost [125789]; Surveyor [128.18 h]; Helper [128.18 h]; charpenter [128.18 h]; Supervisor [128.18 h]; Mason [128.18 h]; Mason Helper [128.18 h] → charpenter [128.18 h]; SIC- Cost [125789]; Surveyor [128.18 h]; Helper [128.18 h]; Supervisor [128.18 h]; Mason [128.18 h]; Mason Helper [128.18 h] |
| SDR-ST-CON-P3-1280 | Erection of Rafters Part 2 | 2027-02-13 → 2027-02-17 (+4d) | 2027-03-03 → 2027-03-08 (+5d) | 10d → 12d |  | resources SIC- Cost [125789]; Surveyor [106.82 h]; Helper [106.82 h]; charpenter [106.82 h]; Supervisor [106.82 h]; Mason [106.82 h]; Mason Helper [106.82 h] → charpenter [106.82 h]; SIC- Cost [125789]; Surveyor [106.82 h]; Helper [106.82 h]; Supervisor [106.82 h]; Mason [106.82 h]; Mason Helper [106.82 h] |
| SDR-ST-CON-P3-1240 | Erection of Columns Part 2 | 2027-02-14 → 2027-02-21 (+7d) | 2027-02-27 → 2027-03-06 (+7d) |  |  | resources SIC- Cost [161728]; Surveyor [135.31 h]; Helper [135.31 h]; charpenter [135.31 h]; Supervisor [135.31 h]; Mason [135.31 h]; Mason Helper [135.31 h] → charpenter [135.31 h]; SIC- Cost [161728]; Surveyor [135.31 h]; Helper [135.31 h]; Supervisor [135.31 h]; Mason [135.31 h]; Mason Helper [135.31 h] |
| SDR-ST-CON-P3-1330 | Installation of Bracing System Part 1 | 2027-03-04 → 2027-03-14 (+10d) | 2027-03-25 → 2027-03-30 (+5d) | 17d → 13d |  | resources SIC- Cost [107819]; Surveyor [128.18 h]; Helper [128.18 h]; charpenter [128.18 h]; Supervisor [128.18 h]; Mason [128.18 h]; Mason Helper [128.18 h] → charpenter [128.18 h]; SIC- Cost [107819]; Surveyor [128.18 h]; Helper [128.18 h]; Supervisor [128.18 h]; Mason [128.18 h]; Mason Helper [128.18 h] |
| SDR-ST-CON-P3-1340 | Installation of Beams Part 1 | 2027-03-04 → 2027-03-14 (+10d) | 2027-03-20 → 2027-03-24 (+4d) | 10d → 12d |  | resources SIC- Cost [143758]; Surveyor [113.94 h]; Helper [113.94 h]; charpenter [113.94 h]; Supervisor [113.94 h]; Mason [2104.64 h]; Mason Helper [2104.64 h] → charpenter [113.94 h]; SIC- Cost [143758]; Surveyor [113.94 h]; Helper [113.94 h]; Supervisor [113.94 h]; Mason [2104.64 h]; Mason Helper [2104.64 h] |
| SDR-ST-CON-P3-1350 | Installation of Girders Part 1 | 2027-03-16 → 2027-03-23 (+7d) | 2027-04-07 → 2027-04-14 (+7d) | 13d → 24d |  | resources SIC- Cost [89849]; Surveyor [99.7 h]; Helper [99.7 h]; charpenter [99.7 h]; Supervisor [99.7 h]; Mason [99.7 h]; Mason Helper [99.7 h] → charpenter [99.7 h]; SIC- Cost [89849]; Surveyor [99.7 h]; Helper [99.7 h]; Supervisor [99.7 h]; Mason [99.7 h]; Mason Helper [99.7 h] |
| SDR-ST-CON-P3-1440 | Installation of Girders Part 2 | 2027-03-16 → 2027-03-23 (+7d) | 2027-03-29 → 2027-04-05 (+7d) | 13d → 24d |  | resources SIC- Cost [89849]; Surveyor [99.7 h]; Helper [99.7 h]; charpenter [99.7 h]; Supervisor [99.7 h]; Mason [99.7 h]; Mason Helper [99.7 h] → charpenter [99.7 h]; SIC- Cost [89849]; Surveyor [99.7 h]; Helper [99.7 h]; Supervisor [99.7 h]; Mason [99.7 h]; Mason Helper [99.7 h] |
| SDR-ST-CON-P3-1390 | Installation of Beams Part 2 | 2027-03-24 → 2027-03-31 (+7d) | 2027-04-06 → 2027-04-13 (+7d) |  |  | resources SIC- Cost [143758]; Surveyor [113.94 h]; Helper [113.94 h]; charpenter [113.94 h]; Supervisor [113.94 h]; Mason [113.94 h]; Mason Helper [113.94 h] → charpenter [113.94 h]; SIC- Cost [143758]; Surveyor [113.94 h]; Helper [113.94 h]; Supervisor [113.94 h]; Mason [113.94 h]; Mason Helper [113.94 h] |
| SDR-ST-CON-P3-1410 | Installation of Bracing System Part 2 | 2027-03-27 → 2027-03-31 (+4d) | 2027-04-13 → 2027-04-18 (+5d) | 17d → 13d |  | resources SIC- Cost [107819]; Surveyor [128.18 h]; Helper [128.18 h]; charpenter [128.18 h]; Supervisor [128.18 h]; Mason [128.18 h]; Mason Helper [128.18 h] → charpenter [128.18 h]; SIC- Cost [107819]; Surveyor [128.18 h]; Helper [128.18 h]; Supervisor [128.18 h]; Mason [128.18 h]; Mason Helper [128.18 h] |
| SDR-ST-CON-P3-1450 | Installation of Joists Part 1 | 2027-04-07 → 2027-04-14 (+7d) | 2027-04-20 → 2027-04-27 (+7d) | 23d → 17d |  | resources SIC- Cost [89849]; Surveyor [113.94 h]; Helper [113.94 h]; charpenter [113.94 h]; Supervisor [113.94 h]; Mason [113.94 h]; Mason Helper [113.94 h] → charpenter [113.94 h]; SIC- Cost [89849]; Surveyor [113.94 h]; Helper [113.94 h]; Supervisor [113.94 h]; Mason [113.94 h]; Mason Helper [113.94 h] |
| SDR-ST-CON-P3-1460 | Installation of Connections (Bolting) | 2027-04-07 → 2027-04-14 (+7d) | 2027-04-20 → 2027-04-27 (+7d) |  |  | resources SIC- Cost [53909.4]; Surveyor [142.43 h]; Helper [142.43 h]; charpenter [142.43 h]; Supervisor [142.43 h]; Mason [142.43 h]; Mason Helper [142.43 h] → charpenter [142.43 h]; SIC- Cost [53909.4]; Surveyor [142.43 h]; Helper [142.43 h]; Supervisor [142.43 h]; Mason [142.43 h]; Mason Helper [142.43 h] |
| SDR-ST-CON-P3-1470 | Installation of Joists Part 2 | 2027-04-14 → 2027-04-19 (+5d) | 2027-04-27 → 2027-05-02 (+5d) | 17d → 13d |  | resources SIC- Cost [89849]; Surveyor [113.94 h]; Helper [113.94 h]; charpenter [113.94 h]; Supervisor [113.94 h]; Mason [113.94 h]; Mason Helper [113.94 h] → charpenter [113.94 h]; SIC- Cost [89849]; Surveyor [113.94 h]; Helper [113.94 h]; Supervisor [113.94 h]; Mason [113.94 h]; Mason Helper [113.94 h] |
| 3 | **Aluminum Cladding Panels** | 2027-04-28 → 2027-05-03 (+5d) | 2027-08-01 → 2027-08-08 (+7d) |  |  |  |
| 1 | **Steel Subframe Installation** | 2027-04-28 → 2027-05-03 (+5d) | 2027-08-01 → 2027-08-04 (+3d) |  |  |  |
| SDR-ST-CON-P3-1530 | Survey & Setting Out for Cladding | 2027-04-28 → 2027-05-03 (+5d) | 2027-05-06 → 2027-05-11 (+5d) | 17d → 13d |  |  |
| SDR-ST-CON-P3-1560 | Install Steel Subframe Supports Part 1 |  |  |  | SDR-ST-CON-P3-1530, SDR-ST-MILS-1090, SDR-ST-MILS-1000, SDR-ST-CON-P1-4070, SDR-ST-CON-P1-5280, SDR-ST-CON-P1-5490, SDR-ST-CON-P1-3980 → SDR-ST-CON-P3-1530, SDR-ST-MILS-1090, SDR-ST-MILS-1000, SDR-ST-CON-P1-4070, SDR-ST-CON-P1-5280 SS, SDR-ST-CON-P1-5490, SDR-ST-CON-P1-3980, SDR-ST-CON-P1-5280 |  |
| SDR-ST-CON-P3-1770 | Alignment & Leveling of Subframe Part 2 | 2027-07-24 → 2027-07-27 (+3d) | 2027-08-01 → 2027-08-04 (+3d) | 5d → 2d |  |  |
| SDR-ST-CON-P3-1830 | Fixing & Tightening of Subframe Connections Part 1 | 2027-07-24 → 2027-07-27 (+3d) | 2027-08-01 → 2027-08-04 (+3d) | 5d → 2d |  |  |
| SDR-ST-CON-P3-1880 | Fixing & Tightening of Subframe Connections Part 2 | 2027-07-24 → 2027-07-27 (+3d) | 2027-07-31 → 2027-08-03 (+3d) | 6d → 3d |  |  |
| 2 | **Aluminum Cladding Installation** |  | 2027-07-21 → 2027-08-08 (+18d) |  |  |  |
| SDR-ST-CON-P3-1750 | Fix Panels with Snap Hooks & Fasteners Part 2 | 2027-07-11 → 2027-07-13 (+2d) | 2027-07-17 → 2027-07-18 (+1d) | 2.9d → 13d |  |  |
| SDR-ST-CON-P3-1810 | Install Drainage System Part 1 | 2027-07-11 → 2027-07-13 (+2d) | 2027-07-15 → 2027-07-17 (+2d) | 2.9d → 13d |  |  |
| SDR-ST-CON-P3-1820 | Install Drainage System Part 2 | 2027-07-11 → 2027-07-13 (+2d) | 2027-07-15 → 2027-07-18 (+3d) | 6.9d → 17.9d |  |  |
| SDR-ST-CON-P3-1890 | Sealant & Finishing Works | 2027-07-15 → 2027-08-02 (+18d) | 2027-07-21 → 2027-08-06 (+16d) | 2.9d → 0d | SDR-ST-CON-P3-1860 SS, SDR-ST-MILS-1000, SDR-ST-CON-P3-1810, SDR-ST-CON-P3-1850 SS → SDR-ST-CON-P3-1860 SS-4d, SDR-ST-MILS-1000, SDR-ST-CON-P3-1810, SDR-ST-CON-P3-1850 SS-5d |  |
| SDR-ST-CON-P3-1850 | Adjustment & Alignment of Panels Part 1 | 2027-07-13 → 2027-08-06 (+24d) | 2027-07-15 → 2027-08-08 (+24d) | 5d → -2d |  |  |
| SDR-ST-CON-P3-1860 | Adjustment & Alignment of Panels Part 2 | 2027-07-13 → 2027-08-06 (+24d) | 2027-07-15 → 2027-08-08 (+24d) | 5d → -2d |  |  |
| 1 | **THERMAL & MOISTURE PROTECTION** | 2026-12-09 → 2026-12-16 (+7d) | 2027-01-27 → 2027-02-03 (+7d) |  |  |  |
| 1 | **Bituminous Sheet Waterproofing** | 2026-12-09 → 2026-12-16 (+7d) | 2027-01-27 → 2027-02-03 (+7d) |  |  |  |
| SDR-ST-CON-P3-1070 | Provide and lay 2 layers of waterproofing bitumenous membrane 4mm below footings | 2026-12-09 → 2026-12-16 (+7d) | 2026-12-14 → 2026-12-21 (+7d) | 9d → 11d |  |  |
| SDR-ST-CON-P3-1170 | Provide and lay 2 layers of waterproofing bitumenous membrane 4mm in contact with soil | 2027-01-23 → 2027-01-30 (+7d) | 2027-01-27 → 2027-02-03 (+7d) | 13d → 24d |  |  |
| 4 | **Electrical Works** | 2027-01-02 → 2027-01-09 (+7d) |  |  |  |  |
| 1 | **Low-Voltage Electrical Power Conductors and Cables** | 2027-04-14 → 2027-05-01 (+17d) | 2027-05-03 → 2027-05-25 (+22d) |  |  |  |
| SDR-ST-CON-P3-1510 | Installtion and test low voltage cable including pulling of cable 600/1000V . | 2027-04-14 → 2027-05-01 (+17d) | 2027-05-03 → 2027-05-25 (+22d) | 7d → 20d |  |  |
| 2 | **Ondoor Lighting Points** | 2027-05-04 → 2027-05-26 (+22d) | 2027-06-02 → 2027-06-19 (+17d) |  |  |  |
| SDR-ST-CON-P3-1580 | Install, test, and commission all necessary components for outdoor lighting points. | 2027-05-04 → 2027-05-26 (+22d) | 2027-06-02 → 2027-06-19 (+17d) | 7d → 20d |  |  |
| 3 | **Outdoor Lighting Fixtures** | 2027-06-05 → 2027-05-27 (-9d) | 2027-06-27 → 2027-07-01 (+4d) |  |  |  |
| SDR-ST-CON-P3-1630 | Install of L10 recessed in ceiling light, lenght1535mmxwidth75mmxhieght105mm, LED 53.2w Part 1 | 2027-06-05 → 2027-05-27 (-9d) | 2027-06-27 → 2027-06-19 (-8d) | 7d → 20d | SDR-ST-CON-P3-1580 FS+1d, SDR-ST-MILS-1000, SDR-ST-CON-P1-4050, SDR-ST-PRO-MS-1170 → SDR-ST-CON-P3-1580 SS+1d, SDR-ST-MILS-1000, SDR-ST-CON-P1-4050, SDR-ST-PRO-MS-1170 |  |
| SDR-ST-CON-P3-1650 | Install of L10 recessed in ceiling light, lenght1535mmxwidth75mmxhieght105mm, LED 53.2w Part 2 | 2027-06-05 → 2027-06-09 (+4d) | 2027-06-27 → 2027-07-01 (+4d) | 7d → 9d | SDR-ST-CON-P3-1630 SS, SDR-ST-MILS-1000, SDR-ST-TC-1000, SDR-ST-PRO-MS-1170 → SDR-ST-CON-P3-1630 SS, SDR-ST-MILS-1000 SS, SDR-ST-TC-1000, SDR-ST-PRO-MS-1170 |  |
| 4 | **CCTV** | 2027-01-02 → 2027-01-09 (+7d) |  |  |  |  |
| SDR-ST-CON-P3-1780 | Install of 5MP IP PoE Bullet Camera, outdoor mounted on canopy ceiling Part 1. | 2027-01-02 → 2027-01-09 (+7d) | 2027-01-14 → 2027-01-21 (+7d) | 149d → 150d |  |  |
| SDR-ST-CON-P3-1520 | Install of Handhole (600x600x730mm) | 2027-04-11 → 2027-04-18 (+7d) | 2027-04-19 → 2027-04-26 (+7d) | 3d → 27d |  |  |
| SDR-ST-CON-P3-1550 | Install of 2 core 9/125um indoor -outdoor central tube | 2027-04-20 → 2027-04-26 (+6d) | 2027-05-02 → 2027-05-08 (+6d) | 3d → 20d | SDR-ST-CON-P3-1520, SDR-ST-CO-1030, SDR-ST-MILS-1000 → SDR-ST-CON-P3-1520 SS, SDR-ST-CO-1030, SDR-ST-MILS-1000 SS |  |
| SDR-ST-CON-P3-1570 | Install of 4 Port (2 duplex) LC/UPC OS2 fiber patch panel | 2027-05-03 → 2027-05-09 (+6d) | 2027-05-22 → 2027-05-27 (+5d) | 3d → 20d | SDR-ST-CON-P3-1550, SDR-ST-MILS-1000, SDR-ST-PRO-MS-1040 → SDR-ST-CON-P3-1550 SS, SDR-ST-MILS-1000 SS, SDR-ST-PRO-MS-1040, SDR-ST-CON-P3-1550, SDR-ST-MILS-1000 |  |
| SDR-ST-CON-P3-1600 | Install of Pole mounted Filed Equipment cabinet (FEC) , with fan and ventilation | 2027-05-24 → 2027-06-01 (+8d) | 2027-06-15 → 2027-06-23 (+8d) | 2d → 17d | SDR-ST-CON-P3-1570, SDR-ST-MILS-1000, SDR-ST-CON-P1-5430, SDR-ST-PRO-MS-1060 → SDR-ST-CON-P3-1570, SDR-ST-MILS-1000 SS, SDR-ST-CON-P1-5430 SS, SDR-ST-PRO-MS-1060, SDR-ST-CON-P1-5430 |  |
| SDR-ST-CON-P3-1670 | Install of 8 Port Industrial PoE Switch 10/1000BaseT | 2027-06-16 → 2027-06-24 (+8d) | 2027-07-01 → 2027-07-10 (+9d) | 4d → 17d |  |  |
| SDR-ST-CON-P3-1680 | Install of 1.2KVA Industrial type UPS located at FEC | 2027-06-16 → 2027-06-24 (+8d) | 2027-07-04 → 2027-07-12 (+8d) | 2d → 17d | SDR-ST-CON-P3-1600, SDR-ST-MILS-1000, SDR-ST-CO-1010 → SDR-ST-CON-P3-1600 SS, SDR-ST-MILS-1000 SS, SDR-ST-CO-1010, SDR-ST-CON-P3-1600, SDR-ST-MILS-1000 |  |
| SDR-ST-CON-P3-1740 | Install of UTP CAT6 Patch Cord , connect the industrial switch with the cameras |  |  | 2d → 8d | SDR-ST-CON-P3-1680, SDR-ST-CON-P3-1670, SDR-ST-CON-P3-1650 FS+1d, SDR-ST-MILS-1000, SDR-ST-CON-P1-5920 FF, SDR-ST-PRO-MS-1160 → SDR-ST-CON-P3-1680 SS, SDR-ST-CON-P3-1670 SS, SDR-ST-CON-P3-1650 SS+1d, SDR-ST-MILS-1000 SS, SDR-ST-CON-P1-5920 SS, SDR-ST-PRO-MS-1160, SDR-ST-CON-P3-1650 FS+1d, SDR-ST-MILS-1000, SDR-ST-CON-P1-5920 FF |  |
| 5 | **Voice Evacuation System** | 2027-07-05 → 2027-07-12 (+7d) | 2027-07-13 → 2027-07-20 (+7d) |  |  |  |
| SDR-ST-CON-P3-1800 | install, test of Suspended ceiling outdoor projector speaker, bi-directional, 20w Part 1 | 2027-07-05 → 2027-07-12 (+7d) | 2027-07-13 → 2027-07-20 (+7d) | 1d → 2d | SDR-ST-CON-P3-1740 FF, SDR-ST-CON-P1-5910, SDR-ST-CON-P1-5980 SS, SDR-ST-CON-P1-5970 FF, SDR-ST-MILS-1000, SDR-ST-PRO-MS-1150 → SDR-ST-CON-P3-1740 FF, SDR-ST-CON-P1-5910, SDR-ST-CON-P1-5980 SS, SDR-ST-CON-P1-5970 FF, SDR-ST-MILS-1000 SS, SDR-ST-PRO-MS-1150, SDR-ST-MILS-1000 |  |
| SDR-ST-CON-P3-1870 | install, test of Suspended ceiling outdoor projector speaker, bi-directional, 20w Part 2 | 2027-07-05 → 2027-07-12 (+7d) | 2027-07-13 → 2027-07-20 (+7d) | 1d → 2d | SDR-ST-CON-P3-1800 FF, SDR-ST-CON-P3-1780 SS, SDR-ST-CON-P3-1650, SDR-ST-MILS-1000, SDR-ST-PRO-MS-1150 → SDR-ST-CON-P3-1800 SS, SDR-ST-CON-P3-1780 SS, SDR-ST-CON-P3-1650 SS, SDR-ST-MILS-1000 SS, SDR-ST-PRO-MS-1150, SDR-ST-CON-P3-1650 |  |
| 6 | **Testing and Comissioning** | 2027-02-21 → 2027-03-01 (+8d) |  |  |  |  |

| ID | Task | Start | Finish | Duration | Total float | Predecessors |
| --- | --- | --- | --- | --- | --- | --- |
| 1 | **Civil Works** | 2027-05-23 → 2027-05-30 (+7d) | 2027-06-01 → 2027-06-08 (+7d) |  |  |  |
| SDR-ST-TC-1000 | Testing & Commissioning of road works | 2027-05-23 → 2027-05-30 (+7d) | 2027-06-01 → 2027-06-08 (+7d) |  |  |  |
| 2 | **Storm Water Drainage Network** | 2027-02-21 → 2027-03-01 (+8d) | 2027-03-15 → 2027-03-22 (+7d) |  |  |  |
| SDR-ST-TC-1010 | Testing & Commissioning of network work | 2027-02-21 → 2027-03-01 (+8d) | 2027-03-15 → 2027-03-22 (+7d) |  | 13d → 24d |  |
| 3 | **Sewerage Network** | 2027-03-22 → 2027-03-29 (+7d) | 2027-04-07 → 2027-04-14 (+7d) |  |  |  |
| SDR-ST-TC-1030 | Testing & Commissioning of Sewage Network | 2027-03-22 → 2027-03-29 (+7d) | 2027-04-07 → 2027-04-14 (+7d) |  | 13d → 19d |  |
| 5 | **Portable Water** | 2027-03-28 → 2027-04-13 (+16d) | 2027-04-13 → 2027-04-29 (+16d) |  |  |  |
| SDR-ST-TC-1020 | Testing & Commissioning of Potable Network | 2027-03-28 → 2027-04-13 (+16d) | 2027-04-13 → 2027-04-29 (+16d) |  | 7d → 15d |  |
| 6 | **Electrical Works** | 2027-07-15 → 2027-08-02 (+18d) |  |  |  |  |
| SDR-ST-TC-1050 | Testing & Commissioning of Electrical Network | 2027-07-15 → 2027-08-02 (+18d) |  | 15d → 1d | 4.9d → 4d | SDR-ST-CON-P1-6050, SDR-ST-CON-P3-1890 SS → SDR-ST-CON-P1-6050 SS, SDR-ST-CON-P3-1890 SS, SDR-ST-CON-P1-6050 |
| 7 | **Close Out** | 2027-03-16 → 2027-03-23 (+7d) |  |  |  |  |
| 1 | **As Built Drawings** | 2027-03-16 → 2027-03-23 (+7d) | 2027-08-01 → 2027-07-19 (-13d) |  |  |  |
| 1 | **Civil** | 2027-05-22 → 2027-05-29 (+7d) | 2027-06-01 → 2027-06-08 (+7d) |  |  |  |
| SDR-ST-CO-1000 | Civil As-Built Drawing Submission | 2027-05-22 → 2027-05-29 (+7d) | 2027-05-26 → 2027-06-02 (+7d) |  | 2d → 12d |  |
| SDR-ST-CO-1010 | Civil As-Built Drawing Approvals | 2027-05-27 → 2027-06-03 (+7d) | 2027-06-01 → 2027-06-08 (+7d) |  | 2d → 12d |  |
| 2 | **Mechanical** | 2027-03-16 → 2027-03-23 (+7d) | 2027-04-18 → 2027-04-25 (+7d) |  |  |  |
| SDR-ST-CO-1020 | Mechanical As-Built Drawing Submission | 2027-03-16 → 2027-03-23 (+7d) | 2027-03-23 → 2027-03-30 (+7d) |  | 3d → 20d |  |
| SDR-ST-CO-1030 | Mechanical As-Built Drawing Approvals | 2027-04-11 → 2027-04-18 (+7d) | 2027-04-18 → 2027-04-25 (+7d) |  | 3d → 20d |  |
| 3 | **Electrical** | 2027-07-10 → 2027-06-27 (-13d) | 2027-08-01 → 2027-07-19 (-13d) |  |  |  |
| SDR-ST-CO-1040 | Electrical As-Built Drawing Submission | 2027-07-10 → 2027-06-27 (-13d) | 2027-07-19 → 2027-07-06 (-13d) |  | 4d → 15d |  |
| SDR-ST-CO-1100 | Electrical As-Built Drawing Approvals | 2027-07-21 → 2027-07-08 (-13d) | 2027-08-01 → 2027-07-19 (-13d) |  | 4d → 15d |  |
| 2 | **Training and Manuals** | 2027-07-06 → 2027-07-13 (+7d) | 2027-08-05 → 2027-08-04 (-1d) |  |  |  |
| SDR-ST-CO-1050 | Training and Manuals | 2027-07-06 → 2027-07-13 (+7d) | 2027-08-05 → 2027-08-04 (-1d) | 27d → 20d | 1d → 2d | SDR-ST-CON-P3-1870 SS+1d, SDR-ST-CON-P3-1630 → SDR-ST-CON-P3-1870 SS+1d, SDR-ST-CON-P3-1630 SS, SDR-ST-CON-P3-1630 |
| 3 | **Demobilize Manpower** | 2027-07-06 → 2027-07-13 (+7d) | 2027-08-05 → 2027-08-04 (-1d) |  |  |  |
| SDR-ST-CO-1060 | Manpower Demobilize | 2027-07-06 → 2027-07-13 (+7d) | 2027-08-05 → 2027-08-04 (-1d) | 27d → 20d | 1d → 2d | SDR-ST-CO-1050 SS, SDR-ST-CO-1020 → SDR-ST-CO-1050 SS, SDR-ST-CO-1020 SS, SDR-ST-CO-1020 |
| 4 | **Demobilize Equipment** | 2027-07-06 → 2027-07-13 (+7d) | 2027-08-05 → 2027-08-04 (-1d) |  |  |  |
| SDR-ST-CO-1070 | Equipments Demobilize | 2027-07-06 → 2027-07-13 (+7d) | 2027-08-05 → 2027-08-04 (-1d) | 27d → 20d | 1d → 2d |  |
| 5 | **Removal of Site Offices and Structures** | 2027-07-06 → 2027-07-13 (+7d) | 2027-08-05 → 2027-08-04 (-1d) |  |  |  |
| SDR-ST-CO-1090 | Site Office Removal | 2027-07-06 → 2027-07-13 (+7d) | 2027-08-05 → 2027-08-04 (-1d) | 27d → 20d | 1d → 2d |  |
| 6 | **Handover** | 2027-07-24 → 2027-08-05 (+12d) |  |  |  |  |
| SDR-ST-CO-1080 | Project Handover | 2027-07-24 → 2027-08-05 (+12d) |  | 12d → 1d |  | SDR-ST-CO-1070 SS, SDR-ST-CO-1090 FF, SDR-ST-CON-P3-1890, SDR-ST-CON-P3-1880 FF, SDR-ST-CON-P3-1840, SDR-ST-CON-P1-6030, SDR-ST-CON-P1-6040 SS, SDR-ST-CON-P1-6000, SDR-ST-CO-1100 FF+1d, SDR-ST-TC-1050 FF, SDR-ST-MILS-1100, SDR-ST-MILS-1120 FF, SDR-ST-TC-1000 FF, SDR-ST-TC-1040 FF, SDR-ST-CON-P1-5980, SDR-ST-CON-P1-6040 → SDR-ST-CO-1070 SS, SDR-ST-CO-1090 SS, SDR-ST-CON-P3-1890 SS, SDR-ST-CON-P3-1880 FF, SDR-ST-CON-P3-1840, SDR-ST-CON-P1-6030 SS, SDR-ST-CON-P1-6040 SS, SDR-ST-CON-P1-6000 SS, SDR-ST-CO-1100 FF+1d, SDR-ST-TC-1050 SS, SDR-ST-MILS-1100, SDR-ST-MILS-1120 FF, SDR-ST-TC-1000 FF, SDR-ST-TC-1040 FF, SDR-ST-CON-P1-5980, SDR-ST-CON-P1-6040, SDR-ST-CO-1090 FF, SDR-ST-CON-P1-6030 |

## Version 5 (data date 2026-10-26, saved 2026-10-26, file SUD1-05-018-26-10-2026.xer)

Note of the change: Renumber project folders 01–23 in order (after removing projects 12 and 25)

Last finish 2027-08-08 → 2027-08-07 (-1d). Complete tasks 223 → 247.

Changed:

| ID | Task | Start | Finish | Total float |
| --- | --- | --- | --- | --- |
| 1 | **Milestone** |  | 2027-08-06 → 2027-08-07 (+1d) |  |
| SDR-ST-MILS-1070 | Completion of road and paving works | 2027-01-20 → 2027-01-27 (+7d) | 2027-01-20 → 2027-01-27 (+7d) | 7d → 0d |
| SDR-ST-MILS-1100 | Completion of site and platform works | 2027-04-10 → 2027-04-17 (+7d) | 2027-04-10 → 2027-04-17 (+7d) | 96d → 90d |
| SDR-ST-MILS-1140 | Project Finish | 2027-08-06 → 2027-08-07 (+1d) | 2027-08-06 → 2027-08-07 (+1d) | 0d → -0.48d |
| 1 | **Major Milestone** |  | 2027-08-05 → 2027-08-06 (+1d) |  |
| SDR-ST-MILS-1120 | Project Finish Milstone | 2027-08-05 → 2027-08-06 (+1d) | 2027-08-05 → 2027-08-06 (+1d) | 1d → -0.48d |
| 3 | **Contractual Milestone** |  | 2027-08-05 → 2027-08-06 (+1d) |  |
| SDR-ST-MILS-1080 | Completion of road works | 2027-01-21 → 2027-01-28 (+7d) | 2027-01-21 → 2027-01-28 (+7d) | 116d → 112d |
| SDR-ST-MILS-1130 | Completion of finishing works in the project | 2027-08-05 → 2027-08-06 (+1d) | 2027-08-05 → 2027-08-06 (+1d) | 1d → -0.48d |
| 2 | **Phases Milestone** | 2026-10-20 → 2026-10-27 (+7d) | 2027-08-02 → 2027-08-05 (+3d) |  |
| SDR-ST-MILS-1050 | Engineering Phase Finish Milestone | 2026-10-20 → 2026-10-27 (+7d) | 2026-10-20 → 2026-10-27 (+7d) | 65d → 59d |
| SDR-ST-MILS-1090 | Procurment Phase Finish Milestone | 2027-03-04 → 2027-03-16 (+12d) | 2027-03-04 → 2027-03-16 (+12d) | 59d → 53d |
| SDR-ST-MILS-1110 | Construction Phase Finish Milestone | 2027-08-02 → 2027-08-05 (+3d) | 2027-08-02 → 2027-08-05 (+3d) | 5d → 1.52d |
| 3 | **Engineering** |  | 2026-10-28 → 2026-11-04 (+7d) |  |
| 5 | **Shop Drawings Stage** |  | 2026-10-20 → 2026-10-27 (+7d) |  |
| 4 | **Approvals** |  | 2026-10-20 → 2026-10-27 (+7d) |  |
| 9 | **Electrical** |  | 2026-10-20 → 2026-10-27 (+7d) |  |
| SDR-ST-ENG-AP-1130 | Medium Voltage Network Approval | 2026-10-19 → 2026-10-26 (+7d) | 2026-10-20 → 2026-10-27 (+7d) | 27.2d → 23.2d |
| SDR-ST-ENG-AP-1140 | Standard Details Medium Voltage Approval | 2026-10-19 → 2026-10-26 (+7d) | 2026-10-20 → 2026-10-27 (+7d) | 27.2d → 23.2d |
| 6 | **Materials** |  | 2026-10-28 → 2026-11-04 (+7d) |  |
| 5 | **Materials Submission** |  | 2026-10-26 → 2026-11-02 (+7d) |  |
| 1 | **Long Lead Items** |  | 2026-10-26 → 2026-11-02 (+7d) |  |
| 3 | **Electrical** |  | 2026-10-26 → 2026-11-02 (+7d) |  |
| SDR-ST-PRO-S-1110 | MEDIUM VOLTAGE CABLES DUCT BANKS | 2026-10-19 → 2026-10-26 (+7d) | 2026-10-26 → 2026-11-02 (+7d) | 69d → 62d |
| SDR-ST-PRO-S-1120 | MEDIUM VOLTAGE CABLES | 2026-10-19 → 2026-10-26 (+7d) | 2026-10-26 → 2026-11-02 (+7d) | 22.2d → 18.2d |
| SDR-ST-PRO-S-1130 | SUB-STATION | 2026-10-19 → 2026-10-26 (+7d) | 2026-10-26 → 2026-11-02 (+7d) | 60d → 54d |
| 6 | **Materials Approval** |  | 2026-10-28 → 2026-11-04 (+7d) |  |
| 2 | **Short Lead Items** |  | 2026-10-25 → 2026-11-01 (+7d) |  |
| 3 | **Electrical** |  | 2026-10-25 → 2026-11-01 (+7d) |  |
| SDR-ST-PRO-A-1170 | CCTV :5MP IP PoE Bullet Camera |  | 2026-10-25 → 2026-11-01 (+7d) | 106d → 100d |
| SDR-ST-PRO-A-1180 | CCTV :Pole mounted Filed Equipment cabinet (FE |  | 2026-10-25 → 2026-11-01 (+7d) | 106d → 100d |
| 1 | **Long Lead Items** |  | 2026-10-28 → 2026-11-04 (+7d) |  |
| 3 | **Electrical** |  | 2026-10-28 → 2026-11-04 (+7d) |  |
| SDR-ST-PRO-A-1200 | MEDIUM VOLTAGE CABLES DUCT BANKS | 2026-10-27 → 2026-11-03 (+7d) | 2026-10-28 → 2026-11-04 (+7d) | 69d → 62d |
| SDR-ST-PRO-A-1210 | MEDIUM VOLTAGE CABLES | 2026-10-27 → 2026-11-03 (+7d) | 2026-10-27 → 2026-11-03 (+7d) | 22.2d → 18.2d |
| SDR-ST-PRO-A-1220 | SUB-STATION | 2026-10-27 → 2026-11-03 (+7d) | 2026-10-28 → 2026-11-04 (+7d) | 60d → 54d |
| 4 | **Procurement** |  | 2027-03-04 → 2027-03-16 (+12d) |  |
| 5 | **Purchase Order** |  | 2026-11-17 → 2026-11-24 (+7d) |  |
| 4 | **Short Lead Items** |  | 2026-11-10 → 2026-11-12 (+2d) |  |
| SDR-ST-PRO-PO-1260 | Steel Bars |  | 2026-10-19 → 2026-10-26 (+7d) | 34d → 31d |
| SDR-ST-PRO-PO-1040 | Interlock | 2026-10-19 → 2026-10-26 (+7d) | 2026-11-01 → 2026-11-08 (+7d) | 35d → 28d |
| 3 | **Electrical** |  | 2026-11-05 → 2026-11-12 (+7d) |  |
| SDR-ST-PRO-PO-1070 | STREET LIGHTING FEEDER Panel |  | 2026-10-19 → 2026-10-26 (+7d) | 28d → 22d |
| SDR-ST-PRO-PO-1130 | LOW VOLTAGE DISTRIBUTION Panel |  | 2026-10-19 → 2026-10-26 (+7d) | 136d → 130d |
| SDR-ST-PRO-PO-1110 | STREET LIGHTING CABLES |  | 2026-10-19 → 2026-10-26 (+7d) | 91d → 85d |
| SDR-ST-PRO-PO-1020 | Drawpits | 2026-10-19 → 2026-10-26 (+7d) | 2026-10-29 → 2026-11-05 (+7d) | 30d → 24d |
| SDR-ST-PRO-PO-1220 | VOICE EVACUATION SYSTEM | 2026-10-19 → 2026-10-26 (+7d) | 2026-10-29 → 2026-11-05 (+7d) | 112d → 106d |
| SDR-ST-PRO-PO-1050 | CCTV :Pole mounted Filed Equipment cabinet | 2026-10-26 → 2026-11-02 (+7d) | 2026-11-05 → 2026-11-12 (+7d) | 106d → 100d |
| SDR-ST-PRO-PO-1230 | CCTV :5MP IP PoE Bullet Camera | 2026-10-26 → 2026-11-02 (+7d) | 2026-11-05 → 2026-11-12 (+7d) | 106d → 100d |
| 2 | **Mechanical** |  | 2026-10-29 → 2026-11-05 (+7d) |  |
| SDR-ST-PRO-PO-1090 | GI GOOSENECK & VENT | 2026-10-19 → 2026-10-26 (+7d) | 2026-10-29 → 2026-11-05 (+7d) | 114d → 108d |
| SDR-ST-PRO-PO-1140 | MANHOLE, CATCH BASIN & VALVE BOX COVER | 2026-10-19 → 2026-10-26 (+7d) | 2026-10-29 → 2026-11-05 (+7d) | 54d → 66d |
| 5 | **Long Lead Items** |  | 2026-11-17 → 2026-11-24 (+7d) |  |
| 1 | **Civil** | 2026-10-19 → 2026-10-26 (+7d) | 2026-11-17 → 2026-11-24 (+7d) |  |
| SDR-ST-PRO-PO-1150 | Metal railing for platform | 2026-10-19 → 2026-10-26 (+7d) | 2026-11-17 → 2026-11-24 (+7d) | 64d → 58d |
| SDR-ST-PRO-PO-1240 | Canopy | 2026-10-19 → 2026-10-26 (+7d) | 2026-11-03 → 2026-11-10 (+7d) | 37d → 30d |
| 3 | **Electrical** |  | 2026-11-14 → 2026-11-21 (+7d) |  |
| SDR-ST-PRO-PO-1200 | LIGHTING POLES |  | 2026-10-19 → 2026-10-26 (+7d) | 68d → 62d |
| SDR-ST-PRO-PO-1180 | Outdoor Lighting Fixtures | 2026-10-19 → 2026-10-26 (+7d) | 2026-11-03 → 2026-11-10 (+7d) | 84d → 78d |
| SDR-ST-PRO-PO-1210 | STREET LIGHTING LUMINAIRE | 2026-10-19 → 2026-10-26 (+7d) | 2026-11-03 → 2026-11-10 (+7d) | 27d → 24d |
| SDR-ST-PRO-PO-1170 | MEDIUM VOLTAGE CABLES | 2026-10-28 → 2026-11-04 (+7d) | 2026-11-14 → 2026-11-21 (+7d) | 22.2d → 18.2d |
| SDR-ST-PRO-PO-1160 | MEDIUM VOLTAGE CABLES DUCT BANKS | 2026-10-29 → 2026-11-05 (+7d) | 2026-11-14 → 2026-11-21 (+7d) | 69d → 62d |
| SDR-ST-PRO-PO-1250 | SUB-STATION | 2026-10-29 → 2026-11-05 (+7d) | 2026-11-14 → 2026-11-21 (+7d) | 60d → 54d |
| 2 | **Mechanical** | 2026-10-19 → 2026-10-26 (+7d) | 2026-11-03 → 2026-11-10 (+7d) |  |
| SDR-ST-PRO-PO-1190 | WASHOUT & AIR VALVE, GATE VALVE, BUTTERFLY VALVE | 2026-10-19 → 2026-10-26 (+7d) | 2026-11-03 → 2026-11-10 (+7d) |  |
| 6 | **Delivery to Site** |  | 2027-02-28 → 2027-03-07 (+7d) |  |
| 2 | **Short Lead Items Delivery** |  | 2027-01-16 → 2027-01-23 (+7d) |  |
| 1 | **Civil** |  | 2027-01-16 → 2027-01-23 (+7d) |  |
| SDR-ST-PRO-DL-1030 | Waterproofing (Thermal & moisture Protection) |  | 2026-12-17 → 2026-12-24 (+7d) | 67d → 60d |
| SDR-ST-PRO-DL-1260 | Steel Bars |  | 2026-12-17 → 2026-12-24 (+7d) | 40d → 36d |

| ID | Task | Start | Finish | Total float |
| --- | --- | --- | --- | --- |
| SDR-ST-PRO-DL-1270 | Asphalt |  | 2027-01-16 → 2027-01-23 (+7d) | 6d → 0d |
| SDR-ST-PRO-DL-1060 | Kerbstone | 2026-10-19 → 2026-10-26 (+7d) | 2026-12-17 → 2026-12-24 (+7d) | 11d → 3d |
| SDR-ST-PRO-DL-1040 | Interlock | 2026-11-09 → 2026-11-16 (+7d) | 2026-12-30 → 2027-01-06 (+7d) | 41d → 33d |
| 3 | **Electrical** |  | 2027-01-04 → 2027-01-11 (+7d) |  |
| SDR-ST-PRO-DL-1100 | LOW VOLTAGE CABLES |  | 2026-12-08 → 2026-12-15 (+7d) | 112d → 105d |
| SDR-ST-PRO-DL-1010 | ROAD CROSSING DUCTS Ø110mm | 2026-10-19 → 2026-10-26 (+7d) | 2026-11-16 → 2026-11-23 (+7d) | 38.9d → 44.9d |
| SDR-ST-PRO-DL-1020 | Drawpits | 2026-10-19 → 2026-10-26 (+7d) | 2026-11-17 → 2026-11-24 (+7d) | 17d → 10d |
| SDR-ST-PRO-DL-1110 | STREET LIGHTING CABLES | 2026-10-22 → 2026-10-29 (+7d) | 2026-11-25 → 2026-12-02 (+7d) | 106d → 99d |
| SDR-ST-PRO-DL-1130 | LOW VOLTAGE DISTRIBUTION Panel | 2026-10-22 → 2026-10-29 (+7d) | 2026-11-30 → 2026-12-07 (+7d) | 159d → 152d |
| SDR-ST-PRO-DL-1070 | STREET LIGHTING FEEDER Panel | 2026-10-26 → 2026-11-02 (+7d) | 2026-12-04 → 2026-12-11 (+7d) | 32d → 25d |
| SDR-ST-PRO-DL-1200 | VOICE EVACUATION SYSTEM | 2026-10-30 → 2026-11-06 (+7d) | 2026-12-28 → 2027-01-04 (+7d) | 131d → 124d |
| SDR-ST-PRO-DL-1050 | CCTV :Pole mounted Filed Equipment cabinet | 2026-11-06 → 2026-11-13 (+7d) | 2027-01-04 → 2027-01-11 (+7d) | 124d → 117d |
| SDR-ST-PRO-DL-1230 | CCTV :5MP IP PoE Bullet Camera | 2026-11-06 → 2026-11-13 (+7d) | 2027-01-04 → 2027-01-11 (+7d) | 124d → 117d |
| 2 | **Mechanical** |  | 2026-12-27 → 2027-01-03 (+7d) |  |
| SDR-ST-PRO-DL-2000 | MANHOLE, CATCH BASIN & VALVE BOX COVER | 2026-10-19 → 2026-10-26 (+7d) | 2026-12-27 → 2027-01-03 (+7d) | 4d → 16d |
| SDR-ST-PRO-DL-1090 | GI GOOSENECK & VENT | 2026-10-30 → 2026-11-06 (+7d) | 2026-12-26 → 2027-01-02 (+7d) | 133d → 126d |
| 5 | **Long Lead Items Delivery** | 2026-10-19 → 2026-10-26 (+7d) | 2027-02-28 → 2027-03-07 (+7d) |  |
| 1 | **Civil** | 2026-11-16 → 2026-11-23 (+7d) | 2027-02-23 → 2027-03-02 (+7d) |  |
| SDR-ST-PRO-DL-1240 | Canopy | 2026-11-16 → 2026-11-23 (+7d) | 2027-01-14 → 2027-01-21 (+7d) | 43d → 35d |
| SDR-ST-PRO-DL-1150 | Metal railing for platform | 2026-11-18 → 2026-11-25 (+7d) | 2027-02-23 → 2027-03-02 (+7d) | 75d → 68d |
| 3 | **Electrical** | 2026-10-19 → 2026-10-26 (+7d) | 2027-02-28 → 2027-03-07 (+7d) |  |
| SDR-ST-PRO-DL-1210 | LIGHTING POLES | 2026-10-19 → 2026-10-26 (+7d) | 2027-01-31 → 2027-02-07 (+7d) | 79d → 72d |
| SDR-ST-PRO-DL-1180 | Outdoor Lighting Fixtures | 2026-11-04 → 2026-11-11 (+7d) | 2027-01-22 → 2027-01-29 (+7d) | 98d → 91d |
| SDR-ST-PRO-DL-1220 | STREET LIGHTING LUMINAIRE | 2026-11-04 → 2026-11-11 (+7d) | 2027-01-22 → 2027-01-29 (+7d) | 32d → 28d |
| SDR-ST-PRO-DL-1170 | MEDIUM VOLTAGE CABLES | 2026-11-14 → 2026-11-21 (+7d) | 2027-02-28 → 2027-03-07 (+7d) | 25.2d → 21.2d |
| SDR-ST-PRO-DL-1160 | MEDIUM VOLTAGE CABLES DUCT BANKS | 2026-11-15 → 2026-11-22 (+7d) | 2027-02-28 → 2027-03-07 (+7d) | 80d → 72d |
| SDR-ST-PRO-DL-1250 | SUB-STATION | 2026-11-15 → 2026-11-22 (+7d) | 2027-02-28 → 2027-03-07 (+7d) | 70d → 63d |
| 2 | **Mechanical** | 2026-10-23 → 2026-10-30 (+7d) | 2027-01-20 → 2027-01-27 (+7d) |  |
| SDR-ST-PRO-DL-1190 | WASHOUT & AIR VALVE, GATE VALVE, BUTTERFLY VALVE | 2026-10-23 → 2026-10-30 (+7d) | 2027-01-20 → 2027-01-27 (+7d) |  |
| 4 | **Materials Staging Time** | 2026-10-19 → 2026-10-26 (+7d) | 2027-03-04 → 2027-03-16 (+12d) |  |
| 4 | **Short Lead Items Delivery** | 2026-10-19 → 2026-10-26 (+7d) | 2027-01-16 → 2027-01-23 (+7d) |  |
| 1 | **Civil** | 2026-10-19 → 2026-10-26 (+7d) | 2027-01-16 → 2027-01-23 (+7d) |  |
| SDR-ST-PRO-MS-1260 | Steel Bars | 2026-10-19 → 2026-10-26 (+7d) | 2026-10-22 → 2026-10-29 (+7d) | 40d → 36d |
| SDR-ST-PRO-MS-1100 | Kerbstone | 2026-12-14 → 2026-12-21 (+7d) | 2026-12-17 → 2026-12-24 (+7d) | 11d → 3d |
| SDR-ST-PRO-MS-1070 | Waterproofing (Thermal & moisture Protection) | 2026-12-18 → 2026-12-25 (+7d) | 2026-12-21 → 2026-12-28 (+7d) | 67d → 60d |
| SDR-ST-PRO-MS-1080 | Interlock | 2026-12-31 → 2027-01-07 (+7d) | 2027-01-03 → 2027-01-10 (+7d) | 41d → 33d |
| SDR-ST-PRO-MS-1270 | Asphalt | 2027-01-13 → 2027-01-20 (+7d) | 2027-01-16 → 2027-01-23 (+7d) | 6d → 0d |
| 3 | **Electrical** | 2026-11-14 → 2026-11-21 (+7d) | 2027-01-08 → 2027-01-15 (+7d) |  |
| SDR-ST-PRO-MS-1010 | Drawpits | 2026-11-14 → 2026-11-21 (+7d) | 2026-11-17 → 2026-11-24 (+7d) | 17d → 10d |
| SDR-ST-PRO-MS-1000 | ROAD CROSSING DUCTS Ø110mm | 2026-11-17 → 2026-11-24 (+7d) | 2026-11-20 → 2026-11-27 (+7d) | 38.9d → 44.9d |
| SDR-ST-PRO-MS-1030 | STREET LIGHTING CABLES | 2026-11-26 → 2026-12-03 (+7d) | 2026-11-29 → 2026-12-06 (+7d) | 106d → 99d |
| SDR-ST-PRO-MS-1040 | LOW VOLTAGE DISTRIBUTION Panel | 2026-12-01 → 2026-12-08 (+7d) | 2026-12-04 → 2026-12-11 (+7d) | 159d → 152d |
| SDR-ST-PRO-MS-1020 | STREET LIGHTING FEEDER Panel | 2026-12-05 → 2026-12-12 (+7d) | 2026-12-08 → 2026-12-15 (+7d) | 32d → 25d |
| SDR-ST-PRO-MS-1120 | LOW VOLTAGE CABLES | 2026-12-09 → 2026-12-16 (+7d) | 2026-12-12 → 2026-12-19 (+7d) | 112d → 105d |
| SDR-ST-PRO-MS-1150 | VOICE EVACUATION SYSTEM | 2026-12-29 → 2027-01-05 (+7d) | 2027-01-01 → 2027-01-08 (+7d) | 131d → 124d |
| SDR-ST-PRO-MS-1090 | CCTV :Pole mounted Filed Equipment cabinet | 2027-01-05 → 2027-01-12 (+7d) | 2027-01-08 → 2027-01-15 (+7d) | 124d → 117d |
| SDR-ST-PRO-MS-1160 | CCTV :5MP IP PoE Bullet Camera | 2027-01-05 → 2027-01-12 (+7d) | 2027-01-08 → 2027-01-15 (+7d) | 124d → 117d |
| 2 | **Mechanical** | 2026-10-19 → 2026-10-26 (+7d) | 2026-12-30 → 2027-01-06 (+7d) |  |
| SDR-ST-PRO-MS-1050 | WARNING TAPE | 2026-10-19 → 2026-10-26 (+7d) | 2026-10-22 → 2026-10-29 (+7d) | 79d → 71d |
| SDR-ST-PRO-MS-1110 | HDPE PIPES & FITTINGS | 2026-10-19 → 2026-10-26 (+7d) | 2026-10-22 → 2026-10-29 (+7d) | 63d → 60d |
| SDR-ST-PRO-MS-1130 | CONCRETE PIPES AND FITTINGS | 2026-10-19 → 2026-10-26 (+7d) | 2026-10-22 → 2026-10-29 (+7d) | 54d → 46d |
| SDR-ST-PRO-MS-1140 | MANHOLE, CATCH BASIN & VALVE BOX COVER | 2026-12-24 → 2026-12-31 (+7d) | 2026-12-27 → 2027-01-03 (+7d) | 5d → 19d |
| SDR-ST-PRO-MS-1060 | GI GOOSENECK & VENT | 2026-12-27 → 2027-01-03 (+7d) | 2026-12-30 → 2027-01-06 (+7d) | 133d → 126d |
| 5 | **Long Lead Items Delivery** | 2026-10-19 → 2026-10-26 (+7d) | 2027-03-04 → 2027-03-16 (+12d) |  |
| 1 | **Civil** | 2027-01-15 → 2027-01-22 (+7d) | 2027-02-27 → 2027-03-06 (+7d) |  |
| SDR-ST-PRO-MS-1240 | Canopy | 2027-01-15 → 2027-01-22 (+7d) | 2027-01-18 → 2027-01-25 (+7d) | 43d → 35d |
| SDR-ST-PRO-MS-1200 | Metal railing for platform | 2027-02-24 → 2027-03-03 (+7d) | 2027-02-27 → 2027-03-06 (+7d) | 75d → 68d |
| 3 | **Electrical** | 2026-10-19 → 2026-10-26 (+7d) | 2027-03-04 → 2027-03-16 (+12d) |  |
| SDR-ST-PRO-MS-1230 | LIGHTING POLES | 2026-10-19 → 2026-10-26 (+7d) | 2026-10-22 → 2026-10-29 (+7d) | 79d → 72d |
| SDR-ST-PRO-MS-1210 | MEDIUM VOLTAGE CABLES DUCT BANKS | 2026-12-18 → 2026-12-25 (+7d) | 2026-12-21 → 2026-12-28 (+7d) | 47d → 39d |
| SDR-ST-PRO-MS-1180 | STREET LIGHTING LUMINAIRE | 2027-01-23 → 2027-01-30 (+7d) | 2027-01-26 → 2027-02-02 (+7d) | 32d → 28d |
| SDR-ST-PRO-MS-1170 | Outdoor Lighting Fixtures | 2027-01-31 → 2027-02-07 (+7d) | 2027-02-03 → 2027-02-10 (+7d) | 98d → 91d |
| SDR-ST-PRO-MS-1220 | MEDIUM VOLTAGE CABLES | 2027-02-28 → 2027-03-07 (+7d) | 2027-03-04 → 2027-03-16 (+12d) | 25.2d → 21.2d |
| SDR-ST-PRO-MS-1250 | SUB-STATION | 2027-03-01 → 2027-03-08 (+7d) | 2027-03-04 → 2027-03-16 (+12d) | 70d → 63d |
| 2 | **Mechanical** | 2026-10-23 → 2026-10-30 (+7d) | 2026-10-26 → 2026-11-02 (+7d) |  |
| SDR-ST-PRO-MS-1190 | WASHOUT & AIR VALVE, GATE VALVE, BUTTERFLY VALVE | 2026-10-23 → 2026-10-30 (+7d) | 2026-10-26 → 2026-11-02 (+7d) |  |
| 5 | **Construction** |  | 2027-08-08 → 2027-08-06 (-2d) |  |
| 15 | **ROAD WORKS 1** |  | 2027-05-31 → 2027-06-07 (+7d) |  |
| 8 | **ROAD - 01** |  | 2027-05-26 → 2027-06-01 (+6d) |  |
| 6 | **ROAD-01 From 0 to 470 m (3)** |  | 2027-05-12 → 2027-05-25 (+13d) |  |

| ID | Task | Start | Finish | Complete | Total float | Predecessors |
| --- | --- | --- | --- | --- | --- | --- |
| 3 | **Asphalt Works** |  | 2027-02-16 → 2027-02-24 (+8d) |  |  |  |
| 1 | **Bituminous base course** |  | 2027-01-20 → 2027-01-27 (+7d) |  |  |  |
| SDR-ST-CON-P1-4410 | Bituminous base course (Grading I - Class A 1st Layer with MC-01 |  | 2026-10-25 → 2026-11-01 (+7d) | 50% → 70% | 76d → 71d |  |
| SDR-ST-CON-P1-4770 | Bituminous base course (Grading I - Class A 2nd layer with RC-02 | 2027-01-17 → 2027-01-24 (+7d) | 2027-01-20 → 2027-01-27 (+7d) |  | 5d → 0d |  |
| 2 | **Bituminous concrete wearing course** | 2027-01-24 → 2027-01-31 (+7d) | 2027-02-16 → 2027-02-24 (+8d) |  |  |  |
| SDR-ST-CON-P1-5110 | Bituminous concrete wearing course, (Grading I - Class A), including tack coat (RC2) | 2027-01-24 → 2027-01-31 (+7d) | 2027-02-16 → 2027-02-24 (+8d) |  | 5d → 0d |  |
| 4 | **Kerbstone Installation** | 2026-10-19 → 2026-10-26 (+7d) | 2027-03-01 → 2027-03-08 (+7d) |  |  |  |
| SDR-ST-CON-P1-3860 | Precast Concrete Curbstone, Type A2 | 2026-10-19 → 2026-10-26 (+7d) | 2026-11-11 → 2026-11-18 (+7d) |  | 69d → 63d |  |
| SDR-ST-CON-P1-4530 | Precast Concrete Curbstone, Type D | 2027-02-17 → 2027-02-25 (+8d) | 2027-03-01 → 2027-03-08 (+7d) |  | 5d → 0d |  |
| 5 | **Interlock Installation** | 2027-03-03 → 2027-03-15 (+12d) | 2027-04-22 → 2027-04-29 (+7d) |  |  |  |
| SDR-ST-CON-P1-4100 | Interlock Installation Part 1 | 2027-03-03 → 2027-03-15 (+12d) | 2027-03-30 → 2027-04-06 (+7d) |  | 5d → 0d |  |
| SDR-ST-CON-P1-4620 | Interlock Installation Part 2 | 2027-03-31 → 2027-04-07 (+7d) | 2027-04-22 → 2027-04-29 (+7d) |  | 5d → 0d |  |
| 6 | **Road Marking** | 2027-04-24 → 2027-05-01 (+7d) | 2027-05-11 → 2027-05-24 (+13d) |  |  |  |
| SDR-ST-CON-P1-5210 | Retroreflective Thermoplastic White Traffic lines | 2027-04-24 → 2027-05-01 (+7d) | 2027-04-27 → 2027-05-04 (+7d) |  | 12d → 6d |  |
| SDR-ST-CON-P1-5310 | Retroreflective Thermoplastic Yellow, Traffic lines | 2027-04-28 → 2027-05-05 (+7d) | 2027-05-02 → 2027-05-09 (+7d) |  | 13d → 6d |  |
| SDR-ST-CON-P1-5470 | Ceramic raised pavement markers | 2027-05-03 → 2027-05-10 (+7d) | 2027-05-06 → 2027-05-13 (+7d) |  | 13d → 6d |  |
| SDR-ST-CON-P1-5620 | Rumble strip | 2027-05-08 → 2027-05-15 (+7d) | 2027-05-11 → 2027-05-24 (+13d) |  | 13d → 6d |  |
| 7 | **Traffic Signage** | 2027-04-24 → 2027-05-01 (+7d) | 2027-05-06 → 2027-05-13 (+7d) |  |  |  |
| SDR-ST-CON-P1-5220 | Traffic signs, ground mounted, 1 Sheet Alumenium, (breakaway) Single post, with all accessories | 2027-04-24 → 2027-05-01 (+7d) | 2027-04-27 → 2027-05-04 (+7d) |  | 12d → 6d |  |
| SDR-ST-CON-P1-5320 | Traffic signs, ground mounted, 1 Sheet Aluminum, (breakaway) Double post, with all accessories | 2027-04-28 → 2027-05-05 (+7d) | 2027-05-02 → 2027-05-09 (+7d) |  | 12d → 6d |  |
| SDR-ST-CON-P1-5480 | Traffic signs, ground mounted, 2 Sheet Aluminum, (breakaway) Single post, with all accessories | 2027-05-03 → 2027-05-10 (+7d) | 2027-05-06 → 2027-05-13 (+7d) |  | 12d → 6d |  |
| 8 | **Speed table** | 2027-05-08 → 2027-05-15 (+7d) | 2027-05-12 → 2027-05-25 (+13d) |  |  |  |
| SDR-ST-CON-P1-5490 | Interlock speed table including interlock, flush kerb and marking | 2027-05-08 → 2027-05-15 (+7d) | 2027-05-12 → 2027-05-25 (+13d) |  | 12d → 6d |  |
| 7 | **ROAD-01 From 470 to 1125 m (6)** |  | 2027-05-26 → 2027-06-01 (+6d) |  |  |  |
| 2 | **Base Course** |  | 2026-10-29 → 2026-11-05 (+7d) |  |  |  |
| SDR-ST-CON-P1-3720 | Aggregate base course layer |  | 2026-10-29 → 2026-11-05 (+7d) |  | 73d → 66d |  |
| 3 | **Asphalt Works** | 2026-10-31 → 2026-11-07 (+7d) | 2027-02-18 → 2027-02-27 (+9d) |  |  |  |
| 1 | **Bituminous base course** | 2026-10-31 → 2026-11-07 (+7d) | 2027-01-21 → 2027-01-28 (+7d) |  |  |  |
| SDR-ST-CON-P1-4430 | Bituminous base course (Grading I - Class A 1st Layer with MC-01 | 2026-10-31 → 2026-11-07 (+7d) | 2026-11-05 → 2026-11-12 (+7d) |  | 73d → 66d |  |
| SDR-ST-CON-P1-4730 | Bituminous base course (Grading I - Class A 2nd layer with RC-02 | 2027-01-17 → 2027-01-24 (+7d) | 2027-01-21 → 2027-01-28 (+7d) |  | 12d → 5d |  |
| 2 | **Bituminous concrete wearing course** | 2027-01-26 → 2027-02-02 (+7d) | 2027-02-18 → 2027-02-27 (+9d) |  |  |  |
| SDR-ST-CON-P1-5040 | Bituminous concrete wearing course, (Grading I - Class A), including tack coat (RC2) | 2027-01-26 → 2027-02-02 (+7d) | 2027-02-18 → 2027-02-27 (+9d) |  | 12d → 5d |  |
| 4 | **Kerbstone Installation** | 2026-10-19 → 2026-10-26 (+7d) | 2026-12-08 → 2026-12-15 (+7d) |  |  |  |
| SDR-ST-CON-P1-3730 | Precast Concrete Curbstone, Type A2 | 2026-10-19 → 2026-10-26 (+7d) | 2026-11-10 → 2026-11-17 (+7d) |  | 66d → 60d |  |
| SDR-ST-CON-P1-4480 | Precast Concrete Curbstone, Type D | 2026-11-16 → 2026-11-23 (+7d) | 2026-12-08 → 2026-12-15 (+7d) |  | 66d → 60d |  |
| 5 | **Interlock Installation** | 2027-01-04 → 2027-01-11 (+7d) | 2027-03-18 → 2027-03-25 (+7d) |  |  |  |
| SDR-ST-CON-P1-3890 | Interlock Installation Part 1 | 2027-01-04 → 2027-01-11 (+7d) | 2027-01-26 → 2027-02-02 (+7d) |  | 44d → 38d |  |
| SDR-ST-CON-P1-4490 | Interlock Installation Part 2 | 2027-02-18 → 2027-02-27 (+9d) | 2027-03-18 → 2027-03-25 (+7d) |  | 25d → 19d |  |
| 6 | **Road Marking** | 2027-03-20 → 2027-03-27 (+7d) | 2027-05-04 → 2027-05-10 (+6d) |  |  |  |
| SDR-ST-CON-P1-5080 | Retroreflective Thermoplastic White Traffic lines | 2027-03-20 → 2027-03-27 (+7d) | 2027-03-24 → 2027-03-31 (+7d) |  | 25d → 19d |  |
| SDR-ST-CON-P1-5150 | Retroreflective Thermoplastic Yellow, Traffic lines | 2027-04-12 → 2027-04-19 (+7d) | 2027-04-17 → 2027-04-24 (+7d) |  | 10d → 4d |  |
| SDR-ST-CON-P1-5270 | Ceramic raised pavement markers | 2027-04-24 → 2027-04-29 (+5d) | 2027-04-28 → 2027-05-04 (+6d) |  | 5d → 0d | SDR-ST-CON-P1-5150, SDR-ST-CON-P1-6070, SDR-ST-CON-P1-4620 → SDR-ST-CON-P1-5150, SDR-ST-CON-P1-6070, SDR-ST-CON-P1-4620 FS-1d |
| SDR-ST-CON-P1-5400 | Rumble strip | 2027-04-29 → 2027-05-05 (+6d) | 2027-05-04 → 2027-05-10 (+6d) |  | 5d → 0d |  |
| 7 | **Traffic Signage** | 2027-05-05 → 2027-05-11 (+6d) | 2027-05-24 → 2027-05-30 (+6d) |  |  |  |
| SDR-ST-CON-P1-5090 | Traffic signs, ground mounted, 1 Sheet Alumenium, (breakaway) Single post, with all accessories | 2027-05-05 → 2027-05-11 (+6d) | 2027-05-11 → 2027-05-23 (+12d) |  | 5d → 0d |  |
| SDR-ST-CON-P1-5160 | Traffic signs, ground mounted, 1 Sheet Aluminum, (breakaway) Double post, with all accessories | 2027-05-12 → 2027-05-24 (+12d) | 2027-05-24 → 2027-05-30 (+6d) |  | 5d → 0d |  |
| 8 | **Speed table** | 2027-05-12 → 2027-05-24 (+12d) | 2027-05-26 → 2027-06-01 (+6d) |  |  |  |
| SDR-ST-CON-P1-5280 | Interlock speed table including interlock, flush kerb and marking | 2027-05-12 → 2027-05-24 (+12d) | 2027-05-26 → 2027-06-01 (+6d) |  | 5d → 0d |  |
| 11 | **Subgrade** |  | 2026-10-29 → 2026-11-05 (+7d) |  |  |  |
| SDR-ST-CON-P1-3600 | Subgrade layer works |  | 2026-10-29 → 2026-11-05 (+7d) |  | 47d → 40d |  |
| 2 | **Base Course** |  | 2026-11-09 → 2026-11-16 (+7d) |  |  |  |
| SDR-ST-CON-P1-4220 | Aggregate base course layer |  | 2026-11-09 → 2026-11-16 (+7d) | 60% → 70% | 64d → 57d |  |
| 3 | **Asphalt Works** | 2026-11-10 → 2026-11-17 (+7d) | 2027-02-09 → 2027-02-16 (+7d) |  |  |  |
| 1 | **Bituminous base course** | 2026-11-10 → 2026-11-17 (+7d) | 2026-11-22 → 2026-11-29 (+7d) |  |  |  |
| SDR-ST-CON-P1-4750 | Bituminous base course (Grading I - Class A 1st Layer with MC-01 | 2026-11-10 → 2026-11-17 (+7d) | 2026-11-16 → 2026-11-23 (+7d) |  | 64d → 57d |  |
| SDR-ST-CON-P1-5010 | Bituminous base course (Grading I - Class A 2nd layer with RC-02 | 2026-11-17 → 2026-11-24 (+7d) | 2026-11-22 → 2026-11-29 (+7d) |  | 64d → 57d |  |
| 2 | **Bituminous concrete wearing course** | 2027-01-17 → 2027-01-24 (+7d) | 2027-02-09 → 2027-02-16 (+7d) |  |  |  |
| SDR-ST-CON-P1-5200 | Bituminous concrete wearing course, (Grading I - Class A), including tack coat (RC2) | 2027-01-17 → 2027-01-24 (+7d) | 2027-02-09 → 2027-02-16 (+7d) |  | 20d → 13d |  |
| 4 | **Kerbstone Installation** | 2026-10-31 → 2026-11-07 (+7d) | 2026-12-20 → 2026-12-27 (+7d) |  |  |  |
| SDR-ST-CON-P1-4230 | Precast Concrete Curbstone, Type A2 | 2026-10-31 → 2026-11-07 (+7d) | 2026-11-22 → 2026-11-29 (+7d) |  | 47d → 40d |  |
| SDR-ST-CON-P1-4950 | Precast Concrete Curbstone, Type D | 2026-11-28 → 2026-12-05 (+7d) | 2026-12-20 → 2026-12-27 (+7d) |  | 47d → 40d |  |
| 5 | **Interlock Installation** | 2027-01-04 → 2027-01-11 (+7d) | 2027-02-20 → 2027-02-28 (+8d) |  |  |  |
| SDR-ST-CON-P1-4440 | Interlock Installation Part 1 | 2027-01-04 → 2027-01-11 (+7d) | 2027-01-27 → 2027-02-03 (+7d) |  | 35d → 28d |  |
| SDR-ST-CON-P1-4870 | Interlock Installation Part 2 | 2027-01-28 → 2027-02-04 (+7d) | 2027-02-20 → 2027-02-28 (+8d) |  | 35d → 28d |  |
| SDR-ST-CON-P1-5300 | Retroreflective Thermoplastic White Traffic lines |  |  |  | 3d → 6d | SDR-ST-CON-P1-5200 SS, SDR-ST-CON-P1-4870, SDR-ST-CON-P3-1310, SDR-ST-CON-P3-1490, SDR-ST-CON-P1-6070 → SDR-ST-CON-P1-5200 SS, SDR-ST-CON-P1-4870, SDR-ST-CON-P3-1310, SDR-ST-CON-P3-1490 SS, SDR-ST-CON-P1-6070 |
| 6 | **ROAD - 02** |  | 2027-05-31 → 2027-06-07 (+7d) |  |  |  |
| 1 | **ROAD-01 From 0 to 400 m (9)** |  | 2027-05-10 → 2027-05-23 (+13d) |  |  |  |
| 11 | **Subgrade** |  | 2026-11-02 → 2026-11-09 (+7d) |  |  |  |
| SDR-ST-CON-P1-3390 | Subgrade layer works |  | 2026-11-02 → 2026-11-09 (+7d) |  | 37d → 34d |  |
| 2 | **Base Course** | 2026-11-03 → 2026-11-10 (+7d) | 2026-11-10 → 2026-11-17 (+7d) |  |  |  |

| ID | Task | Start | Finish | Total float |
| --- | --- | --- | --- | --- |
| SDR-ST-CON-P1-3960 | Aggregate base course layer | 2026-11-03 → 2026-11-10 (+7d) | 2026-11-10 → 2026-11-17 (+7d) | 42d → 39d |
| 3 | **Asphalt Works** | 2026-11-11 → 2026-11-18 (+7d) | 2026-12-15 → 2026-12-22 (+7d) |  |
| 1 | **Bituminous base course** | 2026-11-11 → 2026-11-18 (+7d) | 2026-11-18 → 2026-11-25 (+7d) |  |
| SDR-ST-CON-P1-4540 | Bituminous base course (Grading I - Class A 1st Layer with MC-01 | 2026-11-11 → 2026-11-18 (+7d) | 2026-11-15 → 2026-11-22 (+7d) | 42d → 39d |
| SDR-ST-CON-P1-4890 | Bituminous base course (Grading I - Class A 2nd layer with RC-02 | 2026-11-16 → 2026-11-23 (+7d) | 2026-11-18 → 2026-11-25 (+7d) | 42d → 39d |
| 2 | **Bituminous concrete wearing course** | 2026-11-22 → 2026-11-29 (+7d) | 2026-12-15 → 2026-12-22 (+7d) |  |
| SDR-ST-CON-P1-5130 | Bituminous concrete wearing course, (Grading I - Class A), including tack coat (RC2) | 2026-11-22 → 2026-11-29 (+7d) | 2026-12-15 → 2026-12-22 (+7d) | 42d → 39d |
| 4 | **Kerbstone Installation** | 2026-11-03 → 2026-11-10 (+7d) | 2026-12-23 → 2026-12-30 (+7d) |  |
| SDR-ST-CON-P1-3970 | Precast Concrete Curbstone, Type A2 | 2026-11-03 → 2026-11-10 (+7d) | 2026-11-25 → 2026-12-02 (+7d) | 37d → 34d |
| SDR-ST-CON-P1-4690 | Precast Concrete Curbstone, Type D | 2026-12-01 → 2026-12-08 (+7d) | 2026-12-23 → 2026-12-30 (+7d) | 37d → 34d |
| 5 | **Interlock Installation** | 2026-12-24 → 2026-12-31 (+7d) | 2027-02-08 → 2027-02-15 (+7d) |  |
| SDR-ST-CON-P1-4200 | Interlock Installation Part 1 | 2026-12-24 → 2026-12-31 (+7d) | 2027-01-16 → 2027-01-23 (+7d) | 37d → 34d |
| SDR-ST-CON-P1-4780 | Interlock Installation Part 2 | 2027-01-17 → 2027-01-24 (+7d) | 2027-02-08 → 2027-02-15 (+7d) | 37d → 34d |
| 6 | **Road Marking** | 2027-03-21 → 2027-03-28 (+7d) | 2027-04-12 → 2027-04-19 (+7d) |  |
| SDR-ST-CON-P1-5250 | Retroreflective Thermoplastic White Traffic lines | 2027-03-21 → 2027-03-28 (+7d) | 2027-03-25 → 2027-04-01 (+7d) | 8d → 5d |
| SDR-ST-CON-P1-5370 | Retroreflective Thermoplastic Yellow, Traffic lines | 2027-03-27 → 2027-04-03 (+7d) | 2027-03-31 → 2027-04-07 (+7d) | 8d → 5d |
| SDR-ST-CON-P1-5550 | Ceramic raised pavement markers | 2027-04-01 → 2027-04-08 (+7d) | 2027-04-06 → 2027-04-13 (+7d) | 8d → 5d |
| SDR-ST-CON-P1-5630 | Rumble strip | 2027-04-07 → 2027-04-14 (+7d) | 2027-04-12 → 2027-04-19 (+7d) | 8d → 5d |
| 7 | **Traffic Signage** | 2027-04-13 → 2027-04-20 (+7d) | 2027-04-29 → 2027-05-06 (+7d) |  |
| SDR-ST-CON-P1-5260 | Traffic signs, ground mounted, 1 Sheet Alumenium, (breakaway) Single post, with all accessories | 2027-04-13 → 2027-04-20 (+7d) | 2027-04-18 → 2027-04-25 (+7d) | 8d → 5d |
| SDR-ST-CON-P1-5380 | Traffic signs, ground mounted, 1 Sheet Aluminum, (breakaway) Double post, with all accessories | 2027-04-19 → 2027-04-26 (+7d) | 2027-04-24 → 2027-05-01 (+7d) | 8d → 5d |
| SDR-ST-CON-P1-5560 | Traffic signs, ground mounted, 2 Sheet Aluminum, (breakaway) Single post, with all accessories | 2027-04-25 → 2027-05-02 (+7d) | 2027-04-29 → 2027-05-06 (+7d) | 8d → 5d |
| 8 | **Speed table** | 2027-05-02 → 2027-05-09 (+7d) | 2027-05-10 → 2027-05-23 (+13d) |  |
| SDR-ST-CON-P1-5390 | Interlock speed table including interlock, flush kerb and marking | 2027-05-02 → 2027-05-09 (+7d) | 2027-05-10 → 2027-05-23 (+13d) | 8d → 5d |
| 2 | **ROAD-01 From 400 to 900 m (10)** |  | 2027-05-31 → 2027-06-07 (+7d) |  |
| 11 | **Subgrade** |  | 2026-10-31 → 2026-11-07 (+7d) |  |
| SDR-ST-CON-P1-3540 | Subgrade layer works |  | 2026-10-31 → 2026-11-07 (+7d) | 41d → 38d |
| 2 | **Base Course** | 2026-11-01 → 2026-11-08 (+7d) | 2026-11-11 → 2026-11-18 (+7d) |  |
| SDR-ST-CON-P1-4130 | Aggregate base course layer | 2026-11-01 → 2026-11-08 (+7d) | 2026-11-11 → 2026-11-18 (+7d) | 41d → 38d |
| 3 | **Asphalt Works** | 2026-11-12 → 2026-11-19 (+7d) | 2026-12-16 → 2026-12-23 (+7d) |  |
| 1 | **Bituminous base course** | 2026-11-12 → 2026-11-19 (+7d) | 2026-11-22 → 2026-11-29 (+7d) |  |
| SDR-ST-CON-P1-4600 | Bituminous base course (Grading I - Class A 1st Layer with MC-01 | 2026-11-12 → 2026-11-19 (+7d) | 2026-11-17 → 2026-11-24 (+7d) | 41d → 38d |
| SDR-ST-CON-P1-4930 | Bituminous base course (Grading I - Class A 2nd layer with RC-02 | 2026-11-18 → 2026-11-25 (+7d) | 2026-11-22 → 2026-11-29 (+7d) | 41d → 38d |
| 2 | **Bituminous concrete wearing course** | 2026-11-23 → 2026-11-30 (+7d) | 2026-12-16 → 2026-12-23 (+7d) |  |
| SDR-ST-CON-P1-5180 | Bituminous concrete wearing course, (Grading I - Class A), including tack coat (RC2) | 2026-11-23 → 2026-11-30 (+7d) | 2026-12-16 → 2026-12-23 (+7d) | 41d → 38d |
| 4 | **Kerbstone Installation** | 2026-11-01 → 2026-11-08 (+7d) | 2026-12-21 → 2026-12-28 (+7d) |  |
| SDR-ST-CON-P1-4140 | Precast Concrete Curbstone, Type A2 | 2026-11-01 → 2026-11-08 (+7d) | 2026-11-23 → 2026-11-30 (+7d) | 52d → 45d |
| SDR-ST-CON-P1-4810 | Precast Concrete Curbstone, Type D | 2026-11-29 → 2026-12-06 (+7d) | 2026-12-21 → 2026-12-28 (+7d) | 52d → 45d |
| 5 | **Interlock Installation** | 2026-12-22 → 2026-12-29 (+7d) | 2027-02-07 → 2027-02-14 (+7d) |  |
| SDR-ST-CON-P1-4350 | Interlock Installation Part 1 | 2026-12-22 → 2026-12-29 (+7d) | 2027-01-13 → 2027-01-20 (+7d) | 52d → 45d |
| SDR-ST-CON-P1-4920 | Interlock Installation Part 2 | 2027-01-16 → 2027-01-23 (+7d) | 2027-02-07 → 2027-02-14 (+7d) | 52d → 45d |
| 6 | **Road Marking** | 2027-04-04 → 2027-04-11 (+7d) | 2027-05-01 → 2027-05-08 (+7d) |  |
| SDR-ST-CON-P1-5290 | Retroreflective Thermoplastic White Traffic lines | 2027-04-04 → 2027-04-11 (+7d) | 2027-04-10 → 2027-04-17 (+7d) | 10d → 3d |
| SDR-ST-CON-P1-5410 | Retroreflective Thermoplastic Yellow, Traffic lines | 2027-04-11 → 2027-04-18 (+7d) | 2027-04-17 → 2027-04-24 (+7d) | 10d → 3d |
| SDR-ST-CON-P1-5580 | Ceramic raised pavement markers | 2027-04-18 → 2027-04-25 (+7d) | 2027-04-24 → 2027-05-01 (+7d) | 10d → 3d |
| SDR-ST-CON-P1-5640 | Rumble strip | 2027-04-25 → 2027-05-02 (+7d) | 2027-05-01 → 2027-05-08 (+7d) | 10d → 3d |
| 7 | **Traffic Signage** | 2027-05-02 → 2027-05-09 (+7d) | 2027-05-15 → 2027-05-27 (+12d) |  |
| SDR-ST-CON-P1-5420 | Traffic signs, ground mounted, 1 Sheet Alumenium, (breakaway) Single post, with all accessories | 2027-05-02 → 2027-05-09 (+7d) | 2027-05-08 → 2027-05-15 (+7d) | 10d → 3d |
| SDR-ST-CON-P1-5590 | Traffic signs, ground mounted, 1 Sheet Aluminum, (breakaway) Double post, with all accessories | 2027-05-09 → 2027-05-22 (+13d) | 2027-05-15 → 2027-05-27 (+12d) | 10d → 3d |
| 8 | **Speed table** | 2027-05-22 → 2027-05-29 (+7d) | 2027-05-31 → 2027-06-07 (+7d) |  |
| SDR-ST-CON-P1-5430 | Interlock speed table including interlock, flush kerb and marking | 2027-05-22 → 2027-05-29 (+7d) | 2027-05-31 → 2027-06-07 (+7d) | 10d → 3d |
| 3 | **ROAD-01 From 900 to 1239 m (11)** |  | 2027-05-27 → 2027-06-03 (+7d) |  |
| 11 | **Subgrade** |  | 2026-10-27 → 2026-11-03 (+7d) |  |
| SDR-ST-CON-P1-3740 | Subgrade layer works |  | 2026-10-27 → 2026-11-03 (+7d) | 45d → 42d |
| 2 | **Base Course** | 2026-10-28 → 2026-11-04 (+7d) | 2026-11-04 → 2026-11-11 (+7d) |  |
| SDR-ST-CON-P1-4290 | Aggregate base course layer | 2026-10-28 → 2026-11-04 (+7d) | 2026-11-04 → 2026-11-11 (+7d) | 45d → 42d |
| 3 | **Asphalt Works** | 2026-11-05 → 2026-11-12 (+7d) | 2026-12-12 → 2026-12-19 (+7d) |  |
| 1 | **Bituminous base course** | 2026-11-05 → 2026-11-12 (+7d) | 2026-11-15 → 2026-11-22 (+7d) |  |
| SDR-ST-CON-P1-4650 | Bituminous base course (Grading I - Class A 1st Layer with MC-01 | 2026-11-05 → 2026-11-12 (+7d) | 2026-11-10 → 2026-11-17 (+7d) | 45d → 42d |
| SDR-ST-CON-P1-4980 | Bituminous base course (Grading I - Class A 2nd layer with RC-02 | 2026-11-11 → 2026-11-18 (+7d) | 2026-11-15 → 2026-11-22 (+7d) | 45d → 42d |
| 2 | **Bituminous concrete wearing course** | 2026-11-18 → 2026-11-25 (+7d) | 2026-12-12 → 2026-12-19 (+7d) |  |
| SDR-ST-CON-P1-5230 | Bituminous concrete wearing course, (Grading I - Class A), including tack coat (RC2) | 2026-11-18 → 2026-11-25 (+7d) | 2026-12-12 → 2026-12-19 (+7d) | 45d → 42d |
| 4 | **Kerbstone Installation** | 2026-12-19 → 2026-12-26 (+7d) | 2027-02-07 → 2027-02-14 (+7d) |  |
| SDR-ST-CON-P1-4300 | Precast Concrete Curbstone, Type A2 | 2026-12-19 → 2026-12-26 (+7d) | 2027-01-10 → 2027-01-17 (+7d) | 9d → 2d |
| SDR-ST-CON-P1-4860 | Precast Concrete Curbstone, Type D | 2027-01-16 → 2027-01-23 (+7d) | 2027-02-07 → 2027-02-14 (+7d) | 9d → 2d |
| 5 | **Interlock Installation** | 2027-02-08 → 2027-02-15 (+7d) | 2027-03-31 → 2027-04-07 (+7d) |  |
| SDR-ST-CON-P1-4450 | Interlock Installation Part 1 | 2027-02-08 → 2027-02-15 (+7d) | 2027-03-03 → 2027-03-15 (+12d) | 9d → 2d |
| SDR-ST-CON-P1-4940 | Interlock Installation Part 2 | 2027-03-04 → 2027-03-16 (+12d) | 2027-03-31 → 2027-04-07 (+7d) | 9d → 2d |
| 6 | **Road Marking** | 2027-04-01 → 2027-04-08 (+7d) | 2027-04-28 → 2027-05-05 (+7d) |  |
| SDR-ST-CON-P1-5350 | Retroreflective Thermoplastic White Traffic lines | 2027-04-01 → 2027-04-08 (+7d) | 2027-04-07 → 2027-04-14 (+7d) | 9d → 2d |

| ID | Task | Start | Finish | Total float | Predecessors |
| --- | --- | --- | --- | --- | --- |
| SDR-ST-CON-P1-5510 | Retroreflective Thermoplastic Yellow, Traffic lines | 2027-04-08 → 2027-04-15 (+7d) | 2027-04-14 → 2027-04-21 (+7d) | 9d → 2d |  |
| SDR-ST-CON-P1-5600 | Ceramic raised pavement markers | 2027-04-15 → 2027-04-22 (+7d) | 2027-04-21 → 2027-04-28 (+7d) | 9d → 2d |  |
| SDR-ST-CON-P1-5650 | Rumble strip | 2027-04-22 → 2027-04-29 (+7d) | 2027-04-28 → 2027-05-05 (+7d) | 9d → 2d |  |
| 7 | **Traffic Signage** | 2027-04-29 → 2027-05-06 (+7d) | 2027-05-22 → 2027-05-29 (+7d) |  |  |
| SDR-ST-CON-P1-5360 | Traffic signs, ground mounted, 1 Sheet Alumenium, (breakaway) Single post, with all accessories | 2027-04-29 → 2027-05-06 (+7d) | 2027-05-04 → 2027-05-11 (+7d) | 9d → 2d |  |
| SDR-ST-CON-P1-5520 | Traffic signs, ground mounted, 1 Sheet Aluminum, (breakaway) Double post, with all accessories | 2027-05-05 → 2027-05-12 (+7d) | 2027-05-10 → 2027-05-23 (+13d) | 9d → 2d |  |
| SDR-ST-CON-P1-5660 | Traffic signs, ground mounted, 2 Sheet Aluminum, (breakaway) Single post, with all accessories | 2027-05-11 → 2027-05-24 (+13d) | 2027-05-22 → 2027-05-29 (+7d) | 9d → 2d |  |
| 8 | **Speed table** | 2027-05-23 → 2027-05-30 (+7d) | 2027-05-27 → 2027-06-03 (+7d) |  |  |
| SDR-ST-CON-P1-5530 | Interlock speed table including interlock, flush kerb and marking | 2027-05-23 → 2027-05-30 (+7d) | 2027-05-27 → 2027-06-03 (+7d) | 9d → 2d |  |
| 2 | **MV Network** | 2026-10-19 → 2026-10-26 (+7d) |  |  |  |
| 5 | **ROAD - 01** | 2026-10-19 → 2026-10-26 (+7d) | 2027-05-12 → 2027-05-25 (+13d) |  |  |
| 4 | **ROAD-01 From 1125 to 1765 m (7)** | 2026-10-19 → 2026-10-26 (+7d) | 2027-04-03 → 2027-04-10 (+7d) |  |  |
| 6 | **Excavation** | 2026-10-19 → 2026-10-26 (+7d) | 2026-12-30 → 2027-01-06 (+7d) |  |  |
| SDR-ST-CON-P1-1570 | Excavation Works Part 1 | 2026-10-19 → 2026-10-26 (+7d) | 2026-11-11 → 2026-11-18 (+7d) | 14d → 11d |  |
| SDR-ST-CON-P1-6090 | Excavation Works Part 2 | 2026-11-12 → 2026-11-19 (+7d) | 2026-12-06 → 2026-12-13 (+7d) | 41d → 34d |  |
| SDR-ST-CON-P1-6100 | Excavation Works Part 3 | 2026-12-07 → 2026-12-14 (+7d) | 2026-12-30 → 2027-01-06 (+7d) | 41d → 34d |  |
| 7 | **Pipe laying** | 2026-12-31 → 2027-01-07 (+7d) | 2027-01-24 → 2027-01-31 (+7d) |  |  |
| SDR-ST-CON-P1-2270 | Pipe Laying | 2026-12-31 → 2027-01-07 (+7d) | 2027-01-24 → 2027-01-31 (+7d) | 41d → 34d |  |
| 8 | **Backfilling** | 2027-01-25 → 2027-02-01 (+7d) | 2027-02-16 → 2027-02-24 (+8d) |  |  |
| SDR-ST-CON-P1-3000 | Backfilling Works | 2027-01-25 → 2027-02-01 (+7d) | 2027-02-16 → 2027-02-24 (+8d) | 41d → 34d |  |
| 9 | **Pulling Cable** | 2027-03-04 → 2027-03-16 (+12d) | 2027-04-03 → 2027-04-10 (+7d) |  |  |
| SDR-ST-CON-P1-3900 | Pulling Cable | 2027-03-04 → 2027-03-16 (+12d) | 2027-04-03 → 2027-04-10 (+7d) | 28.2d → 21.2d |  |
| 3 | **ROAD-01 From 470 to 1125 m (6)** | 2026-10-27 → 2026-11-03 (+7d) | 2027-04-01 → 2027-04-08 (+7d) |  |  |
| 6 | **Excavation** | 2026-10-27 → 2026-11-03 (+7d) | 2027-01-04 → 2027-01-11 (+7d) |  |  |
| SDR-ST-CON-P1-1720 | Excavation Works Part 1 | 2026-10-27 → 2026-11-03 (+7d) | 2026-11-19 → 2026-11-26 (+7d) | 14d → 11d |  |
| SDR-ST-CON-P1-6110 | Excavation Works Part2 | 2026-11-21 → 2026-11-28 (+7d) | 2026-12-14 → 2026-12-21 (+7d) | 30d → 27d |  |
| SDR-ST-CON-P1-6120 | Excavation Works Part 3 | 2026-12-15 → 2026-12-22 (+7d) | 2027-01-04 → 2027-01-11 (+7d) | 30d → 27d |  |
| 7 | **Pipe laying** | 2027-01-05 → 2027-01-12 (+7d) | 2027-01-28 → 2027-02-04 (+7d) |  |  |
| SDR-ST-CON-P1-2420 | Pipe Laying | 2027-01-05 → 2027-01-12 (+7d) | 2027-01-28 → 2027-02-04 (+7d) | 30d → 27d |  |
| 8 | **Backfilling** | 2027-01-30 → 2027-02-06 (+7d) | 2027-02-21 → 2027-03-01 (+8d) |  |  |
| SDR-ST-CON-P1-3150 | Backfilling Works | 2027-01-30 → 2027-02-06 (+7d) | 2027-02-21 → 2027-03-01 (+8d) | 30d → 27d |  |
| 9 | **Pulling Cable** | 2027-03-04 → 2027-03-16 (+12d) | 2027-04-01 → 2027-04-08 (+7d) |  |  |
| SDR-ST-CON-P1-4000 | Pulling Cable | 2027-03-04 → 2027-03-16 (+12d) | 2027-04-01 → 2027-04-08 (+7d) | 21.2d → 18.2d |  |
| 2 | **ROAD-01 N 03** | 2026-11-04 → 2026-11-11 (+7d) | 2027-05-04 → 2027-05-11 (+7d) |  |  |
| 6 | **Excavation** | 2026-11-04 → 2026-11-11 (+7d) | 2027-01-12 → 2027-01-19 (+7d) |  |  |
| SDR-ST-CON-P1-1770 | Excavation Works Part 1 | 2026-11-04 → 2026-11-11 (+7d) | 2026-11-28 → 2026-12-05 (+7d) | 14d → 11d |  |
| SDR-ST-CON-P1-6130 | Excavation Works Part 2 | 2026-11-29 → 2026-12-06 (+7d) | 2026-12-22 → 2026-12-29 (+7d) | 21d → 14d |  |
| SDR-ST-CON-P1-6140 | Excavation Works Part 3 | 2026-12-23 → 2026-12-30 (+7d) | 2027-01-12 → 2027-01-19 (+7d) | 21d → 14d |  |
| 7 | **Pipe laying** | 2027-01-13 → 2027-01-20 (+7d) | 2027-02-06 → 2027-02-13 (+7d) |  |  |
| SDR-ST-CON-P1-2500 | Pipe Laying | 2027-01-13 → 2027-01-20 (+7d) | 2027-02-06 → 2027-02-13 (+7d) | 21d → 14d |  |
| 8 | **Backfilling** | 2027-04-11 → 2027-04-18 (+7d) | 2027-05-03 → 2027-05-10 (+7d) |  |  |
| SDR-ST-CON-P1-3280 | Backfilling Works | 2027-04-11 → 2027-04-18 (+7d) | 2027-05-03 → 2027-05-10 (+7d) | 21.9d → 14.9d |  |
| 9 | **Pulling Cable** | 2027-04-11 → 2027-04-18 (+7d) | 2027-05-04 → 2027-05-11 (+7d) |  |  |
| SDR-ST-CON-P1-4250 | Pulling Cable | 2027-04-11 → 2027-04-18 (+7d) | 2027-05-04 → 2027-05-11 (+7d) | 21.9d → 14.9d |  |
| 1 | **ROAD-01 N 01** | 2026-11-12 → 2026-11-19 (+7d) | 2027-05-12 → 2027-05-25 (+13d) |  |  |
| 6 | **Excavation** | 2026-11-12 → 2026-11-19 (+7d) | 2027-03-02 → 2027-03-14 (+12d) |  |  |
| SDR-ST-CON-P1-1730 | Excavation Works Part 1 | 2026-11-12 → 2026-11-19 (+7d) | 2026-12-06 → 2026-12-13 (+7d) | 14d → 11d |  |
| SDR-ST-CON-P1-6150 | Excavation Works Part 2 | 2027-01-21 → 2027-01-28 (+7d) | 2027-02-07 → 2027-02-14 (+7d) | 7d → 0d |  |
| SDR-ST-CON-P1-6160 | Excavation Works Part 3 | 2027-02-08 → 2027-02-15 (+7d) | 2027-03-02 → 2027-03-14 (+12d) | 7d → 0d |  |
| 7 | **Pipe laying** | 2027-03-03 → 2027-03-15 (+12d) | 2027-03-30 → 2027-04-06 (+7d) |  |  |
| SDR-ST-CON-P1-2430 | Pipe Laying | 2027-03-03 → 2027-03-15 (+12d) | 2027-03-30 → 2027-04-06 (+7d) | 7d → 0d |  |
| 8 | **Backfilling** | 2027-03-31 → 2027-04-07 (+7d) | 2027-04-21 → 2027-04-28 (+7d) |  |  |
| SDR-ST-CON-P1-3160 | Backfilling Works | 2027-03-31 → 2027-04-07 (+7d) | 2027-04-21 → 2027-04-28 (+7d) | 14d → 7d |  |
| 9 | **Pulling Cable** | 2027-04-22 → 2027-04-29 (+7d) | 2027-05-12 → 2027-05-25 (+13d) |  |  |
| SDR-ST-CON-P1-4010 | Pulling Cable | 2027-04-22 → 2027-04-29 (+7d) | 2027-05-12 → 2027-05-25 (+13d) | 14d → 7d |  |
| 6 | **ROAD - 02** | 2026-11-21 → 2026-11-28 (+7d) |  |  |  |
| 3 | **ROAD-01 From 0 to 400 m (9) 2 Way 150 mm** | 2026-11-21 → 2026-11-28 (+7d) |  |  |  |
| 6 | **Excavation** | 2026-11-21 → 2026-11-28 (+7d) | 2027-03-15 → 2027-03-20 (+5d) |  |  |
| SDR-ST-CON-P1-1920 | Excavation Works Part 1 | 2026-11-21 → 2026-11-28 (+7d) | 2026-12-14 → 2026-12-21 (+7d) | 14d → 11d |  |
| SDR-ST-CON-P1-6170 | Excavation Works Part 2 | 2026-12-15 → 2026-12-22 (+7d) | 2027-01-06 → 2027-01-13 (+7d) |  |  |
| SDR-ST-CON-P1-6180 | Excavation Works Part 3 | 2027-02-16 → 2027-02-21 (+5d) | 2027-03-15 → 2027-03-20 (+5d) | -2d → 0d | SDR-ST-CON-P1-6170, SDR-ST-CON-P1-4020, SDR-ST-CON-P1-4310 → SDR-ST-CON-P1-6170, SDR-ST-CON-P1-4020, SDR-ST-CON-P1-4310 FS-2d |
| 7 | **Pipe laying** | 2027-03-16 → 2027-03-20 (+4d) | 2027-04-07 → 2027-04-11 (+4d) |  |  |
| SDR-ST-CON-P1-2660 | Pipe Laying | 2027-03-16 → 2027-03-20 (+4d) | 2027-04-07 → 2027-04-11 (+4d) | -2d → 0d | SDR-ST-CON-P1-6180, SDR-ST-CON-P1-4740, SDR-ST-CON-P1-4880, SDR-ST-PRO-MS-1210 → SDR-ST-CON-P1-6180 FS-1d, SDR-ST-CON-P1-4740, SDR-ST-CON-P1-4880, SDR-ST-PRO-MS-1210 |
| 8 | **Backfilling** | 2027-04-08 → 2027-04-11 (+3d) | 2027-04-29 → 2027-05-02 (+3d) |  |  |
| SDR-ST-CON-P1-3430 | Backfilling Works | 2027-04-08 → 2027-04-11 (+3d) | 2027-04-29 → 2027-05-02 (+3d) | -2d → 0d | SDR-ST-CON-P1-2660 → SDR-ST-CON-P1-2660 FS-1d |
| SDR-ST-CON-P1-4320 | Pulling Cable |  |  | -2d → 0d | SDR-ST-CON-P1-2660, SDR-ST-CON-P1-3430, SDR-ST-PRO-MS-1220 → SDR-ST-CON-P1-2660, SDR-ST-CON-P1-3430 FS-2d, SDR-ST-PRO-MS-1220 |
| 2 | **ROAD-01 From 400 to 900 m (10) 2 Way 150 mm** | 2026-11-29 → 2026-12-06 (+7d) | 2027-05-13 → 2027-05-26 (+13d) |  |  |
| 6 | **Excavation** | 2026-11-29 → 2026-12-06 (+7d) | 2027-03-03 → 2027-03-15 (+12d) |  |  |
| SDR-ST-CON-P1-1840 | Excavation Works Part 1 | 2026-11-29 → 2026-12-06 (+7d) | 2026-12-22 → 2026-12-29 (+7d) | 14d → 11d |  |
| SDR-ST-CON-P1-6190 | Excavation Works Part 2 | 2027-01-21 → 2027-01-28 (+7d) | 2027-02-07 → 2027-02-14 (+7d) | 9d → 6d |  |

| ID | Task | Start | Finish | Total float |
| --- | --- | --- | --- | --- |
| SDR-ST-CON-P1-6200 | Excavation Works Part 3 | 2027-02-08 → 2027-02-15 (+7d) | 2027-03-03 → 2027-03-15 (+12d) | 9d → 6d |
| 7 | **Pipe laying** | 2027-03-04 → 2027-03-16 (+12d) | 2027-03-31 → 2027-04-07 (+7d) |  |
| SDR-ST-CON-P1-2590 | Pipe Laying | 2027-03-04 → 2027-03-16 (+12d) | 2027-03-31 → 2027-04-07 (+7d) | 13d → 6d |
| 8 | **Backfilling** | 2027-04-01 → 2027-04-08 (+7d) | 2027-04-22 → 2027-04-29 (+7d) |  |
| SDR-ST-CON-P1-3340 | Backfilling Works | 2027-04-01 → 2027-04-08 (+7d) | 2027-04-22 → 2027-04-29 (+7d) | 13d → 6d |
| 9 | **Pulling Cable** | 2027-04-24 → 2027-05-01 (+7d) | 2027-05-13 → 2027-05-26 (+13d) |  |
| SDR-ST-CON-P1-4050 | Pulling Cable | 2027-04-24 → 2027-05-01 (+7d) | 2027-05-13 → 2027-05-26 (+13d) | 13d → 6d |
| 1 | **ROAD-01 From 900 to 1239 m (11) 2 Way 150 mm** | 2026-12-07 → 2026-12-14 (+7d) | 2027-04-27 → 2027-05-04 (+7d) |  |
| 6 | **Excavation** | 2026-12-07 → 2026-12-14 (+7d) | 2027-02-14 → 2027-02-21 (+7d) |  |
| SDR-ST-CON-P1-2000 | Excavation Works Part 1 | 2026-12-07 → 2026-12-14 (+7d) | 2026-12-30 → 2027-01-06 (+7d) | 14d → 11d |
| SDR-ST-CON-P1-6210 | Excavation Works Part 2 | 2026-12-31 → 2027-01-07 (+7d) | 2027-01-23 → 2027-01-30 (+7d) | 14d → 11d |
| SDR-ST-CON-P1-6220 | Excavation Works Part 3 | 2027-01-24 → 2027-01-31 (+7d) | 2027-02-14 → 2027-02-21 (+7d) | 25d → 19d |
| 7 | **Pipe laying** | 2027-02-15 → 2027-02-23 (+8d) | 2027-03-15 → 2027-03-22 (+7d) |  |
| SDR-ST-CON-P1-2750 | Pipe Laying | 2027-02-15 → 2027-02-23 (+8d) | 2027-03-15 → 2027-03-22 (+7d) | 25d → 19d |
| 8 | **Backfilling** | 2027-03-16 → 2027-03-23 (+7d) | 2027-04-06 → 2027-04-13 (+7d) |  |
| SDR-ST-CON-P1-3460 | Backfilling Works | 2027-03-16 → 2027-03-23 (+7d) | 2027-04-06 → 2027-04-13 (+7d) | 25d → 19d |
| 9 | **Pulling Cable** | 2027-04-07 → 2027-04-14 (+7d) | 2027-04-27 → 2027-05-04 (+7d) |  |
| SDR-ST-CON-P1-3980 | Pulling Cable | 2027-04-07 → 2027-04-14 (+7d) | 2027-04-27 → 2027-05-04 (+7d) | 25d → 19d |
| 1 | **Earthing System** | 2027-01-24 → 2027-01-31 (+7d) | 2027-02-10 → 2027-02-17 (+7d) |  |
| SDR-ST-CON-P1-4840 | Installation of Earthing System Including lighting poles circuits | 2027-01-24 → 2027-01-31 (+7d) | 2027-02-10 → 2027-02-17 (+7d) | 14d → 11d |
| 2 | **ROAD-01 From 470 to 1125 m (6)** |  | 2027-02-04 → 2027-02-11 (+7d) |  |
| 10 | **Excavation** |  | 2026-11-11 → 2026-11-18 (+7d) |  |
| SDR-ST-CON-P1-1180 | Excavation for LV Cable trench Section 1 |  | 2026-11-10 → 2026-11-17 (+7d) | 19d → 13d |
| SDR-ST-CON-P1-1560 | Excavation for LV Cable trench Section 2 | 2026-10-19 → 2026-10-26 (+7d) | 2026-11-11 → 2026-11-18 (+7d) | 19d → 13d |
| SDR-ST-CON-P1-2250 | Excavation for LV Cable trench Section 3 | 2026-10-19 → 2026-10-26 (+7d) | 2026-11-11 → 2026-11-18 (+7d) | 19d → 13d |
| 11 | **Install Footings** | 2026-11-12 → 2026-11-19 (+7d) | 2026-12-06 → 2026-12-13 (+7d) |  |
| SDR-ST-CON-P1-2980 | Install Footings | 2026-11-12 → 2026-11-19 (+7d) | 2026-12-06 → 2026-12-13 (+7d) | 19d → 13d |
| 12 | **Backfilling** | 2026-12-07 → 2026-12-14 (+7d) | 2026-12-17 → 2026-12-24 (+7d) |  |
| SDR-ST-CON-P1-3870 | Backfilling over LV Cables of Street lighting | 2026-12-07 → 2026-12-14 (+7d) | 2026-12-17 → 2026-12-24 (+7d) | 19d → 13d |
| 13 | **Install pole** | 2026-12-19 → 2026-12-26 (+7d) | 2027-02-04 → 2027-02-11 (+7d) |  |
| SDR-ST-CON-P1-4420 | Install Pole Part 1 | 2026-12-19 → 2026-12-26 (+7d) | 2027-01-11 → 2027-01-18 (+7d) | 19d → 13d |
| SDR-ST-CON-P1-5170 | Install Pole Part 2 | 2027-01-12 → 2027-01-19 (+7d) | 2027-02-04 → 2027-02-11 (+7d) | 19d → 13d |
| 3 | **ROAD-01 From 1125 to 1765 m (7)** |  | 2027-03-25 → 2027-04-01 (+7d) |  |
| 10 | **Excavation** |  | 2026-12-31 → 2027-01-07 (+7d) |  |
| SDR-ST-CON-P1-1590 | Excavation for LV Cable trench Section 1 |  | 2026-11-10 → 2026-11-17 (+7d) | 2d → 0d |
| SDR-ST-CON-P1-2390 | Excavation for LV Cable trench Section 2 | 2026-11-14 → 2026-11-21 (+7d) | 2026-12-07 → 2026-12-14 (+7d) | 2d → 0d |
| SDR-ST-CON-P1-3120 | Excavation for LV Cable trench Section 3 | 2026-12-08 → 2026-12-15 (+7d) | 2026-12-31 → 2027-01-07 (+7d) | 2d → 0d |
| 11 | **Install Footings** | 2027-01-02 → 2027-01-09 (+7d) | 2027-01-18 → 2027-01-25 (+7d) |  |
| SDR-ST-CON-P1-3990 | Install Footings | 2027-01-02 → 2027-01-09 (+7d) | 2027-01-18 → 2027-01-25 (+7d) | 2d → 0d |
| 12 | **Backfilling** | 2027-01-19 → 2027-01-26 (+7d) | 2027-01-30 → 2027-02-06 (+7d) |  |
| SDR-ST-CON-P1-4680 | Backfilling over LV Cables of Street lighting | 2027-01-19 → 2027-01-26 (+7d) | 2027-01-30 → 2027-02-06 (+7d) | 2d → 0d |
| 13 | **Install pole** | 2027-01-31 → 2027-02-07 (+7d) | 2027-03-25 → 2027-04-01 (+7d) |  |
| SDR-ST-CON-P1-5050 | Install Pole Part 1 | 2027-01-31 → 2027-02-07 (+7d) | 2027-02-24 → 2027-03-03 (+7d) | 2d → 0d |
| SDR-ST-CON-P1-5760 | Install Pole Part 2 | 2027-02-25 → 2027-03-04 (+7d) | 2027-03-25 → 2027-04-01 (+7d) | 2d → 0d |
| 1 | **ROAD-01 From 0 to 470 m (3)** |  | 2027-04-18 → 2027-04-25 (+7d) |  |
| 10 | **Excavation** |  | 2026-11-11 → 2026-11-18 (+7d) |  |
| SDR-ST-CON-P1-1500 | Excavation for LV Cable trench Section 1 |  | 2026-11-11 → 2026-11-18 (+7d) | 17d → 14d |
| SDR-ST-CON-P1-2320 | Excavation for LV Cable trench Section 2 | 2026-10-19 → 2026-10-26 (+7d) | 2026-11-11 → 2026-11-18 (+7d) | 17d → 14d |
| SDR-ST-CON-P1-3040 | Excavation for LV Cable trench Section 3 | 2026-10-19 → 2026-10-26 (+7d) | 2026-11-11 → 2026-11-18 (+7d) | 17d → 14d |
| 11 | **Install Footings** | 2026-11-12 → 2026-11-19 (+7d) | 2026-12-06 → 2026-12-13 (+7d) |  |
| SDR-ST-CON-P1-3920 | Install Footings | 2026-11-12 → 2026-11-19 (+7d) | 2026-12-06 → 2026-12-13 (+7d) | 17d → 14d |
| 12 | **Backfilling** | 2026-12-07 → 2026-12-14 (+7d) | 2026-12-20 → 2026-12-27 (+7d) |  |
| SDR-ST-CON-P1-4850 | Backfilling over LV Cables of Street lighting | 2026-12-07 → 2026-12-14 (+7d) | 2026-12-20 → 2026-12-27 (+7d) | 17d → 14d |
| 13 | **Install pole** | 2026-12-21 → 2026-12-28 (+7d) | 2027-04-18 → 2027-04-25 (+7d) |  |
| SDR-ST-CON-P1-5330 | Install Pole Part 1 | 2026-12-21 → 2026-12-28 (+7d) | 2027-01-13 → 2027-01-20 (+7d) | 17d → 14d |
| SDR-ST-CON-P1-5780 | Install Pole Part 2 | 2027-01-25 → 2027-02-01 (+7d) | 2027-02-17 → 2027-02-25 (+8d) | 8d → 5d |
| SDR-ST-CON-P1-6070 | Install Pole Part 3 | 2027-02-18 → 2027-02-27 (+9d) | 2027-03-20 → 2027-03-27 (+7d) | 8d → 5d |
| SDR-ST-CON-P1-6080 | Install Pole Part 4 | 2027-04-11 → 2027-04-18 (+7d) | 2027-04-18 → 2027-04-25 (+7d) | 15d → 8d |
| 4 | **ROAD-01 N (1)** | 2026-10-19 → 2026-10-26 (+7d) | 2027-02-06 → 2027-02-13 (+7d) |  |
| 10 | **Excavation** | 2026-10-19 → 2026-10-26 (+7d) | 2026-11-14 → 2026-11-21 (+7d) |  |
| SDR-ST-CON-P1-1700 | Excavation for LV Cable trench Section 1 | 2026-10-19 → 2026-10-26 (+7d) | 2026-11-11 → 2026-11-18 (+7d) | 18d → 15d |
| SDR-ST-CON-P1-2410 | Excavation for LV Cable trench Section 2 | 2026-10-21 → 2026-10-28 (+7d) | 2026-11-14 → 2026-11-21 (+7d) | 18d → 15d |
| SDR-ST-CON-P1-3190 | Excavation for LV Cable trench Section 3 | 2026-10-21 → 2026-10-28 (+7d) | 2026-11-14 → 2026-11-21 (+7d) | 18d → 15d |
| 11 | **Install Footings** | 2026-11-15 → 2026-11-22 (+7d) | 2026-12-08 → 2026-12-15 (+7d) |  |
| SDR-ST-CON-P1-4110 | Install Footings | 2026-11-15 → 2026-11-22 (+7d) | 2026-12-08 → 2026-12-15 (+7d) | 18d → 15d |
| 12 | **Backfilling** | 2026-12-09 → 2026-12-16 (+7d) | 2026-12-19 → 2026-12-26 (+7d) |  |
| SDR-ST-CON-P1-4960 | Backfilling over LV Cables of Street lighting | 2026-12-09 → 2026-12-16 (+7d) | 2026-12-19 → 2026-12-26 (+7d) | 18d → 15d |
| 13 | **Install pole** | 2026-12-20 → 2026-12-27 (+7d) | 2027-02-06 → 2027-02-13 (+7d) |  |
| SDR-ST-CON-P1-5340 | Install Pole Part 1 | 2026-12-20 → 2026-12-27 (+7d) | 2027-01-12 → 2027-01-19 (+7d) | 18d → 15d |
| SDR-ST-CON-P1-5790 | Install Pole Part 2 | 2027-01-13 → 2027-01-20 (+7d) | 2027-02-06 → 2027-02-13 (+7d) | 18d → 15d |

| ID | Task | Start | Finish | Complete | Total float |
| --- | --- | --- | --- | --- | --- |
| 5 | **Road Crossing & Drawpits** | 2026-10-19 → 2026-10-05 (-14d) | 2027-01-10 → 2027-01-14 (+4d) |  |  |
| 1 | **ROAD - 01** | 2026-10-19 → 2026-10-05 (-14d) | 2027-01-10 → 2027-01-14 (+4d) |  |  |
| 1 | **ROAD-01 From 470 to 1125 m (6)** | 2026-10-19 → 2026-10-05 (-14d) | 2027-01-06 → 2026-11-09 (-58d) |  |  |
| 1 | **Road crossing Ducts & Drawpits** | 2026-10-19 → 2026-10-05 (-14d) | 2027-01-06 → 2026-11-09 (-58d) |  |  |
| 1 | **Excavation** | 2026-10-19 → 2026-10-05 (-14d) | 2026-11-11 → 2026-10-07 (-35d) |  |  |
| SDR-ST-CON-P1-1450 | Excavation for GRP Pipes Section 1 | 2026-10-19 → 2026-10-05 A (-14d) | 2026-11-11 → 2026-10-07 A (-35d) | 0% → 100% | 25d → none |
| 7 | **bedding Works** | 2026-11-12 → 2026-10-08 (-35d) | 2026-12-06 → 2026-10-10 (-57d) |  |  |
| SDR-ST-CON-P1-2160 | Sand bedding for GRP Pipes | 2026-11-12 → 2026-10-08 A (-35d) | 2026-12-06 → 2026-10-10 A (-57d) | 0% → 100% | 25d → none |
| 2 | **Pipes Laying** | 2026-12-07 → 2026-10-11 (-57d) | 2026-12-22 → 2026-10-14 (-69d) |  |  |
| SDR-ST-CON-P1-2890 | Install ST GRP Pipes | 2026-12-07 → 2026-10-11 A (-57d) | 2026-12-22 → 2026-10-14 A (-69d) | 0% → 100% | 25d → none |
| 6 | **Testing** | 2026-12-23 → 2026-10-26 (-58d) | 2026-12-30 → 2026-11-02 (-58d) |  |  |
| SDR-ST-CON-P1-3530 | Testing ST GRP Pipes | 2026-12-23 → 2026-10-26 (-58d) | 2026-12-30 → 2026-11-02 (-58d) |  | 25d → 74d |
| 3 | **Backfilling** | 2026-12-31 → 2026-11-03 (-58d) | 2027-01-06 → 2026-11-09 (-58d) |  |  |
| SDR-ST-CON-P1-3810 | Backfilling ST GRP Pipes | 2026-12-31 → 2026-11-03 (-58d) | 2027-01-06 → 2026-11-09 (-58d) |  | 25d → 74d |
| 2 | **ROAD-01 From 1125 to 1765 m (7)** | 2026-10-19 → 2026-10-06 (-13d) | 2027-01-06 → 2026-12-21 (-16d) |  |  |
| 1 | **Road crossing Ducts & Drawpits** | 2026-10-19 → 2026-10-06 (-13d) | 2027-01-06 → 2026-12-21 (-16d) |  |  |
| 1 | **Excavation** | 2026-10-19 → 2026-10-06 (-13d) | 2026-11-11 → 2026-10-08 (-34d) |  |  |
| SDR-ST-CON-P1-1600 | Excavation for GRP Pipes Section 1 | 2026-10-19 → 2026-10-06 A (-13d) | 2026-11-11 → 2026-10-08 A (-34d) | 0% → 100% | 25.9d → none |
| 7 | **bedding Works** | 2026-11-12 → 2026-10-10 (-33d) | 2026-11-29 → 2026-10-12 (-48d) |  |  |
| SDR-ST-CON-P1-2280 | Sand bedding for GRP Pipes | 2026-11-12 → 2026-10-10 A (-33d) | 2026-11-29 → 2026-10-12 A (-48d) | 0% → 100% | 25.9d → none |
| 2 | **Pipes Laying** | 2026-11-30 → 2026-10-13 (-48d) | 2026-12-13 → 2026-10-17 (-57d) |  |  |
| SDR-ST-CON-P1-2800 | Install ST GRP Pipes | 2026-11-30 → 2026-10-13 A (-48d) | 2026-12-13 → 2026-10-17 A (-57d) | 0% → 100% | 25.9d → none |
| 6 | **Testing** | 2026-12-14 → 2026-11-28 (-16d) | 2026-12-23 → 2026-12-07 (-16d) |  |  |
| SDR-ST-CON-P1-3250 | Testing ST GRP Pipes | 2026-12-14 → 2026-11-28 (-16d) | 2026-12-23 → 2026-12-07 (-16d) |  | 25.9d → 38.9d |
| 3 | **Backfilling** | 2026-12-24 → 2026-12-08 (-16d) | 2027-01-06 → 2026-12-21 (-16d) |  |  |
| SDR-ST-CON-P1-3670 | Backfilling ST GRP Pipes | 2026-12-24 → 2026-12-08 (-16d) | 2027-01-06 → 2026-12-21 (-16d) |  | 25.9d → 38.9d |
| 3 | **ROAD-01 From 0 to 470 m (3)** | 2026-10-19 → 2026-10-10 (-9d) | 2027-01-10 → 2026-11-14 (-57d) |  |  |
| 1 | **Road crossing Ducts & Drawpits** | 2026-10-19 → 2026-10-10 (-9d) | 2027-01-10 → 2026-11-14 (-57d) |  |  |
| 1 | **Excavation** | 2026-10-19 → 2026-10-10 (-9d) | 2026-11-11 → 2026-10-12 (-30d) |  |  |
| SDR-ST-CON-P1-1510 | Excavation for GRP Pipes Section 1 | 2026-10-19 → 2026-10-10 A (-9d) | 2026-11-11 → 2026-10-12 A (-30d) | 0% → 100% | 40d → none |
| 7 | **bedding Works** | 2026-11-12 → 2026-10-13 (-30d) | 2026-12-06 → 2026-10-15 (-52d) |  |  |
| SDR-ST-CON-P1-2180 | Sand bedding for GRP Pipes | 2026-11-12 → 2026-10-13 A (-30d) | 2026-12-06 → 2026-10-15 A (-52d) | 0% → 100% | 40d → none |
| 2 | **Pipes Laying** | 2026-12-07 → 2026-10-17 (-51d) | 2026-12-21 → 2026-10-19 (-63d) |  |  |
| SDR-ST-CON-P1-2930 | Install ST GRP Pipes | 2026-12-07 → 2026-10-17 A (-51d) | 2026-12-21 → 2026-10-19 A (-63d) | 0% → 100% | 40d → none |
| 6 | **Testing** | 2026-12-22 → 2026-10-26 (-57d) | 2026-12-28 → 2026-11-01 (-57d) |  |  |
| SDR-ST-CON-P1-3510 | Testing ST GRP Pipes | 2026-12-22 → 2026-10-26 (-57d) | 2026-12-28 → 2026-11-01 (-57d) |  | 40d → 89d |
| 3 | **Backfilling** | 2026-12-30 → 2026-11-03 (-57d) | 2027-01-10 → 2026-11-14 (-57d) |  |  |
| SDR-ST-CON-P1-3760 | Backfilling ST GRP Pipes | 2026-12-30 → 2026-11-03 (-57d) | 2027-01-10 → 2026-11-14 (-57d) |  | 40d → 89d |
| 4 | **ROAD-01 N (1)** | 2026-10-19 → 2026-10-26 (+7d) | 2027-01-07 → 2027-01-14 (+7d) |  |  |
| 1 | **Road crossing Ducts & Drawpits** | 2026-10-19 → 2026-10-26 (+7d) | 2027-01-07 → 2027-01-14 (+7d) |  |  |
| 1 | **Excavation** | 2026-10-19 → 2026-10-26 (+7d) | 2026-11-11 → 2026-11-18 (+7d) |  |  |
| SDR-ST-CON-P1-1710 | Excavation for GRP Pipes Section 1 | 2026-10-19 → 2026-10-26 (+7d) | 2026-11-11 → 2026-11-18 (+7d) |  | 42d → 36d |
| 7 | **bedding Works** | 2026-11-12 → 2026-11-19 (+7d) | 2026-12-06 → 2026-12-13 (+7d) |  |  |
| SDR-ST-CON-P1-2360 | Sand bedding for GRP Pipes | 2026-11-12 → 2026-11-19 (+7d) | 2026-12-06 → 2026-12-13 (+7d) |  | 42d → 36d |
| 2 | **Pipes Laying** | 2026-12-07 → 2026-12-14 (+7d) | 2026-12-17 → 2026-12-24 (+7d) |  |  |
| SDR-ST-CON-P1-3090 | Install ST GRP Pipes | 2026-12-07 → 2026-12-14 (+7d) | 2026-12-17 → 2026-12-24 (+7d) |  | 42d → 36d |
| 6 | **Testing** | 2026-12-19 → 2026-12-26 (+7d) | 2026-12-29 → 2027-01-05 (+7d) |  |  |
| SDR-ST-CON-P1-3520 | Testing ST GRP Pipes | 2026-12-19 → 2026-12-26 (+7d) | 2026-12-29 → 2027-01-05 (+7d) |  | 42d → 36d |
| 3 | **Backfilling** | 2026-12-31 → 2027-01-07 (+7d) | 2027-01-07 → 2027-01-14 (+7d) |  |  |
| SDR-ST-CON-P1-3930 | Backfilling ST GRP Pipes | 2026-12-31 → 2027-01-07 (+7d) | 2027-01-07 → 2027-01-14 (+7d) |  | 42d → 36d |
| 11 | **Ring Main Unit** | 2027-04-28 → 2027-05-05 (+7d) | 2027-07-12 → 2027-07-20 (+8d) |  |  |
| 1 | **Leveling** | 2027-04-28 → 2027-05-05 (+7d) | 2027-05-26 → 2027-06-03 (+8d) |  |  |
| SDR-ST-CON-P1-5840 | Ring Main Unit leveling | 2027-04-28 → 2027-05-05 (+7d) | 2027-05-26 → 2027-06-03 (+8d) |  | 7d → -0.48d |
| 2 | **Lean Concrete** | 2027-05-27 → 2027-06-03 (+7d) | 2027-06-19 → 2027-06-27 (+8d) |  |  |
| SDR-ST-CON-P1-5890 | Ring Main Unit Lean Concrete | 2027-05-27 → 2027-06-03 (+7d) | 2027-06-19 → 2027-06-27 (+8d) |  | 7d → -0.48d |
| 3 | **Installation** | 2027-06-20 → 2027-06-27 (+7d) | 2027-07-12 → 2027-07-20 (+8d) |  |  |
| SDR-ST-CON-P1-5920 | Ring Main Unit installation for Street Lighting | 2027-06-20 → 2027-06-27 (+7d) | 2027-07-12 → 2027-07-20 (+8d) |  | 7d → -0.48d |
| 13 | **KWH Frame** | 2027-06-03 → 2027-06-10 (+7d) | 2027-07-22 → 2027-07-29 (+7d) |  |  |
| 1 | **Leveling** | 2027-06-03 → 2027-06-10 (+7d) | 2027-06-26 → 2027-07-03 (+7d) |  |  |
| SDR-ST-CON-P1-5940 | KWH meter mounting frame Leveling | 2027-06-03 → 2027-06-10 (+7d) | 2027-06-26 → 2027-07-03 (+7d) |  | 12d → 6d |
| 2 | **Lean Concrete** | 2027-06-27 → 2027-07-04 (+7d) | 2027-07-13 → 2027-07-20 (+7d) |  |  |
| SDR-ST-CON-P1-6010 | KWH meter mounting frame Lean Concrete | 2027-06-27 → 2027-07-04 (+7d) | 2027-07-13 → 2027-07-20 (+7d) |  | 12d → 6d |
| 3 | **Installation** | 2027-07-14 → 2027-07-21 (+7d) | 2027-07-22 → 2027-07-29 (+7d) |  |  |
| SDR-ST-CON-P1-6040 | KWH meter mounting frame installation | 2027-07-14 → 2027-07-21 (+7d) | 2027-07-22 → 2027-07-29 (+7d) |  | 12d → 6d |
| 14 | **Street Lighting Sub-station** | 2027-06-03 → 2027-06-10 (+7d) | 2027-07-10 → 2027-07-17 (+7d) |  |  |
| 1 | **Leveling** | 2027-06-03 → 2027-06-10 (+7d) | 2027-06-26 → 2027-07-03 (+7d) |  |  |
| SDR-ST-CON-P1-5950 | Unit Substation Leveling Part 1 | 2027-06-03 → 2027-06-10 (+7d) | 2027-06-26 → 2027-07-03 (+7d) |  | 15d → 9d |
| SDR-ST-CON-P1-5960 | Unit Substation Leveling Part 2 | 2027-06-03 → 2027-06-10 (+7d) | 2027-06-26 → 2027-07-03 (+7d) |  | 15d → 9d |
| 2 | **Lean Concrete** | 2027-06-27 → 2027-07-04 (+7d) | 2027-07-10 → 2027-07-17 (+7d) |  |  |
| SDR-ST-CON-P1-6020 | Unit Substation Lean Concrete | 2027-06-27 → 2027-07-04 (+7d) | 2027-07-10 → 2027-07-17 (+7d) |  | 15d → 9d |

| ID | Task | Start | Finish | Total float |
| --- | --- | --- | --- | --- |
| 3 | **Installation** | 2027-06-27 → 2027-07-04 (+7d) | 2027-07-01 → 2027-07-08 (+7d) |  |
| SDR-ST-CON-P1-6050 | Unit Substation Install for Street Lighting | 2027-06-27 → 2027-07-04 (+7d) | 2027-07-01 → 2027-07-08 (+7d) | 15d → 9d |
| 8 | **ROAD - 02** | 2026-10-19 → 2026-10-26 (+7d) | 2027-07-26 → 2027-07-28 (+2d) |  |
| 6 | **ROAD-01 From 0 to 400 m (9) 2 Way 110 mm** | 2026-10-19 → 2026-10-26 (+7d) | 2027-02-06 → 2027-02-13 (+7d) |  |
| 10 | **Excavation** | 2026-10-19 → 2026-10-26 (+7d) | 2026-12-13 → 2026-12-20 (+7d) |  |
| SDR-ST-CON-P1-1310 | Excavation for LV Cable trench Section 1 | 2026-10-19 → 2026-10-26 (+7d) | 2026-11-04 → 2026-11-11 (+7d) | 15d → 8d |
| SDR-ST-CON-P1-1780 | Excavation for LV Cable trench Section 2 | 2026-11-08 → 2026-11-15 (+7d) | 2026-11-24 → 2026-12-01 (+7d) | 15d → 8d |
| SDR-ST-CON-P1-2350 | Excavation for LV Cable trench Section 3 | 2026-11-25 → 2026-12-02 (+7d) | 2026-12-13 → 2026-12-20 (+7d) | 15d → 8d |
| 11 | **Install Footings** | 2026-12-14 → 2026-12-21 (+7d) | 2026-12-30 → 2027-01-06 (+7d) |  |
| SDR-ST-CON-P1-2860 | Install Footings | 2026-12-14 → 2026-12-21 (+7d) | 2026-12-30 → 2027-01-06 (+7d) | 15d → 8d |
| 12 | **Backfilling** | 2026-12-31 → 2027-01-07 (+7d) | 2027-01-18 → 2027-01-25 (+7d) |  |
| SDR-ST-CON-P1-3500 | Backfilling over LV Cables of Street lighting | 2026-12-31 → 2027-01-07 (+7d) | 2027-01-18 → 2027-01-25 (+7d) | 15d → 8d |
| 13 | **Install pole** | 2027-01-19 → 2027-01-26 (+7d) | 2027-02-06 → 2027-02-13 (+7d) |  |
| SDR-ST-CON-P1-4260 | Install Pole Part 1 | 2027-01-19 → 2027-01-26 (+7d) | 2027-01-27 → 2027-02-03 (+7d) | 15d → 8d |
| SDR-ST-CON-P1-4570 | Install Pole Part 2 | 2027-01-28 → 2027-02-04 (+7d) | 2027-02-06 → 2027-02-13 (+7d) | 15d → 8d |
| 5 | **ROAD-01 From 400 to 900 m (10) 4 Way 110 mm** | 2026-10-19 → 2026-10-26 (+7d) | 2027-01-31 → 2027-02-07 (+7d) |  |
| 10 | **Excavation** | 2026-10-19 → 2026-10-26 (+7d) | 2026-11-04 → 2026-11-11 (+7d) |  |
| SDR-ST-CON-P1-1260 | Excavation for LV Cable trench Section 1 | 2026-10-19 → 2026-10-26 (+7d) | 2026-11-04 → 2026-11-11 (+7d) | 8d → 5d |
| SDR-ST-CON-P1-1760 | Excavation for LV Cable trench Section 2 | 2026-10-19 → 2026-10-26 (+7d) | 2026-11-04 → 2026-11-11 (+7d) | 43d → 36d |
| SDR-ST-CON-P1-2260 | Excavation for LV Cable trench Section 3 | 2026-10-19 → 2026-10-26 (+7d) | 2026-11-04 → 2026-11-11 (+7d) | 43d → 36d |
| 11 | **Install Footings** | 2026-11-05 → 2026-11-12 (+7d) | 2026-11-21 → 2026-11-28 (+7d) |  |
| SDR-ST-CON-P1-2770 | Install Footings | 2026-11-05 → 2026-11-12 (+7d) | 2026-11-21 → 2026-11-28 (+7d) | 43d → 36d |
| 12 | **Backfilling** | 2026-11-22 → 2026-11-29 (+7d) | 2026-12-07 → 2026-12-14 (+7d) |  |
| SDR-ST-CON-P1-3350 | Backfilling over LV Cables of Street lighting | 2026-11-22 → 2026-11-29 (+7d) | 2026-12-07 → 2026-12-14 (+7d) | 43d → 36d |
| 13 | **Install pole** | 2026-12-08 → 2026-12-15 (+7d) | 2027-01-31 → 2027-02-07 (+7d) |  |
| SDR-ST-CON-P1-3940 | Install Pole Part 1 | 2026-12-08 → 2026-12-15 (+7d) | 2026-12-16 → 2026-12-23 (+7d) | 43d → 36d |
| SDR-ST-CON-P1-4400 | Install Pole Part 2 | 2027-01-23 → 2027-01-30 (+7d) | 2027-01-31 → 2027-02-07 (+7d) | 151d → 144d |
| 4 | **ROAD-01 From 900 to 1239 m (11) 2 Way 110 mm** | 2026-10-19 → 2026-10-26 (+7d) | 2027-02-10 → 2027-02-17 (+7d) |  |
| 10 | **Excavation** | 2026-10-19 → 2026-10-26 (+7d) | 2026-12-08 → 2026-12-15 (+7d) |  |
| SDR-ST-CON-P1-1360 | Excavation for LV Cable trench Section 1 | 2026-10-19 → 2026-10-26 (+7d) | 2026-11-03 → 2026-11-10 (+7d) | 13d → 7d |
| SDR-ST-CON-P1-1900 | Excavation for LV Cable trench Section 2 | 2026-11-07 → 2026-11-14 (+7d) | 2026-11-22 → 2026-11-29 (+7d) | 20d → 13d |
| SDR-ST-CON-P1-2400 | Excavation for LV Cable trench Section 3 | 2026-11-23 → 2026-11-30 (+7d) | 2026-12-08 → 2026-12-15 (+7d) | 20d → 13d |
| 11 | **Install Footings** | 2026-12-09 → 2026-12-16 (+7d) | 2026-12-24 → 2026-12-31 (+7d) |  |
| SDR-ST-CON-P1-2840 | Install Footings | 2026-12-09 → 2026-12-16 (+7d) | 2026-12-24 → 2026-12-31 (+7d) | 20d → 13d |
| 12 | **Backfilling** | 2026-12-26 → 2027-01-02 (+7d) | 2027-01-10 → 2027-01-17 (+7d) |  |
| SDR-ST-CON-P1-3470 | Backfilling over LV Cables of Street lighting | 2026-12-26 → 2027-01-02 (+7d) | 2027-01-10 → 2027-01-17 (+7d) | 20d → 13d |
| 13 | **Install pole** | 2027-01-11 → 2027-01-18 (+7d) | 2027-02-10 → 2027-02-17 (+7d) |  |
| SDR-ST-CON-P1-4080 | Install Pole Part 1 | 2027-01-11 → 2027-01-18 (+7d) | 2027-01-25 → 2027-02-01 (+7d) | 20d → 13d |
| SDR-ST-CON-P1-4610 | Install Pole Part 2 | 2027-01-26 → 2027-02-02 (+7d) | 2027-02-10 → 2027-02-17 (+7d) | 20d → 13d |
| 1 | **Road Crossing & Drawpits** | 2026-10-19 → 2026-10-26 (+7d) | 2027-01-17 → 2027-01-24 (+7d) |  |
| 2 | **ROAD - 02** | 2026-10-19 → 2026-10-26 (+7d) | 2027-01-17 → 2027-01-24 (+7d) |  |
| 1 | **ROAD-01 From 0 to 400 m (9) 2 Way 110 mm** | 2026-10-19 → 2026-10-26 (+7d) | 2027-01-17 → 2027-01-24 (+7d) |  |
| 1 | **Road crossing Ducts & Drawpits** | 2026-10-19 → 2026-10-26 (+7d) | 2027-01-17 → 2027-01-24 (+7d) |  |
| 1 | **Excavation** | 2026-10-19 → 2026-10-26 (+7d) | 2026-11-11 → 2026-11-18 (+7d) |  |
| SDR-ST-CON-P1-1320 | Excavation for GRP Pipes Section 1 | 2026-10-19 → 2026-10-26 (+7d) | 2026-11-11 → 2026-11-18 (+7d) | 16d → 9d |
| 7 | **bedding Works** | 2026-11-12 → 2026-11-19 (+7d) | 2026-12-02 → 2026-12-09 (+7d) |  |
| SDR-ST-CON-P1-1950 | Sand bedding for GRP Pipes | 2026-11-12 → 2026-11-19 (+7d) | 2026-12-02 → 2026-12-09 (+7d) | 16d → 9d |
| 2 | **Pipes Laying** | 2026-12-03 → 2026-12-10 (+7d) | 2026-12-21 → 2026-12-28 (+7d) |  |
| SDR-ST-CON-P1-2560 | Install ST GRP Pipes | 2026-12-03 → 2026-12-10 (+7d) | 2026-12-21 → 2026-12-28 (+7d) | 16d → 9d |
| 6 | **Testing** | 2026-12-22 → 2026-12-29 (+7d) | 2027-01-04 → 2027-01-11 (+7d) |  |
| SDR-ST-CON-P1-3200 | Testing ST GRP Pipes | 2026-12-22 → 2026-12-29 (+7d) | 2027-01-04 → 2027-01-11 (+7d) | 16d → 9d |
| 3 | **Backfilling** | 2027-01-05 → 2027-01-12 (+7d) | 2027-01-17 → 2027-01-24 (+7d) |  |
| SDR-ST-CON-P1-3700 | Backfilling ST GRP Pipes | 2027-01-05 → 2027-01-12 (+7d) | 2027-01-17 → 2027-01-24 (+7d) | 16d → 9d |
| 2 | **ROAD-01 From 400 to 900 m (10) 4 Way 110 mm** | 2026-10-19 → 2026-10-26 (+7d) | 2027-01-13 → 2027-01-20 (+7d) |  |
| 1 | **Road crossing Ducts & Drawpits** | 2026-10-19 → 2026-10-26 (+7d) | 2027-01-13 → 2027-01-20 (+7d) |  |
| 1 | **Excavation** | 2026-10-19 → 2026-10-26 (+7d) | 2026-11-11 → 2026-11-18 (+7d) |  |
| SDR-ST-CON-P1-1270 | Excavation for GRP Pipes Section 1 | 2026-10-19 → 2026-10-26 (+7d) | 2026-11-11 → 2026-11-18 (+7d) | 19d → 12d |
| 7 | **bedding Works** | 2026-11-12 → 2026-11-19 (+7d) | 2026-12-01 → 2026-12-08 (+7d) |  |
| SDR-ST-CON-P1-1870 | Sand bedding for GRP Pipes | 2026-11-12 → 2026-11-19 (+7d) | 2026-12-01 → 2026-12-08 (+7d) | 19d → 12d |
| 2 | **Pipes Laying** | 2026-12-02 → 2026-12-09 (+7d) | 2026-12-17 → 2026-12-24 (+7d) |  |
| SDR-ST-CON-P1-2470 | Install ST GRP Pipes | 2026-12-02 → 2026-12-09 (+7d) | 2026-12-17 → 2026-12-24 (+7d) | 19d → 12d |
| 6 | **Testing** | 2026-12-19 → 2026-12-26 (+7d) | 2026-12-28 → 2027-01-04 (+7d) |  |
| SDR-ST-CON-P1-2970 | Testing ST GRP Pipes | 2026-12-19 → 2026-12-26 (+7d) | 2026-12-28 → 2027-01-04 (+7d) | 19d → 12d |
| 3 | **Backfilling** | 2026-12-29 → 2027-01-05 (+7d) | 2027-01-13 → 2027-01-20 (+7d) |  |
| SDR-ST-CON-P1-3360 | Backfilling ST GRP Pipes | 2026-12-29 → 2027-01-05 (+7d) | 2027-01-13 → 2027-01-20 (+7d) | 19d → 12d |
| 3 | **ROAD-01 From 900 to 1239 m (11) 2 Way 110 mm** | 2026-10-19 → 2026-10-26 (+7d) | 2027-01-07 → 2027-01-14 (+7d) |  |
| 1 | **Road crossing Ducts & Drawpits** | 2026-10-19 → 2026-10-26 (+7d) | 2027-01-07 → 2027-01-14 (+7d) |  |
| 1 | **Excavation** | 2026-10-19 → 2026-10-26 (+7d) | 2026-11-11 → 2026-11-18 (+7d) |  |
| SDR-ST-CON-P1-1370 | Excavation for GRP Pipes Section 1 | 2026-10-19 → 2026-10-26 (+7d) | 2026-11-11 → 2026-11-18 (+7d) | 24d → 17d |
| 7 | **bedding Works** | 2026-11-12 → 2026-11-19 (+7d) | 2026-11-29 → 2026-12-06 (+7d) |  |

| ID | Task | Start | Finish | Complete | Total float | Predecessors |
| --- | --- | --- | --- | --- | --- | --- |
| SDR-ST-CON-P1-2060 | Sand bedding for GRP Pipes | 2026-11-12 → 2026-11-19 (+7d) | 2026-11-29 → 2026-12-06 (+7d) |  | 24d → 17d |  |
| 2 | **Pipes Laying** | 2026-11-30 → 2026-12-07 (+7d) | 2026-12-15 → 2026-12-22 (+7d) |  |  |  |
| SDR-ST-CON-P1-2600 | Install ST GRP Pipes | 2026-11-30 → 2026-12-07 (+7d) | 2026-12-15 → 2026-12-22 (+7d) |  | 24d → 17d |  |
| 6 | **Testing** | 2026-12-16 → 2026-12-23 (+7d) | 2026-12-24 → 2026-12-31 (+7d) |  |  |  |
| SDR-ST-CON-P1-3110 | Testing ST GRP Pipes | 2026-12-16 → 2026-12-23 (+7d) | 2026-12-24 → 2026-12-31 (+7d) |  | 24d → 17d |  |
| 3 | **Backfilling** | 2026-12-26 → 2027-01-02 (+7d) | 2027-01-07 → 2027-01-14 (+7d) |  |  |  |
| SDR-ST-CON-P1-3480 | Backfilling ST GRP Pipes | 2026-12-26 → 2027-01-02 (+7d) | 2027-01-07 → 2027-01-14 (+7d) |  | 24d → 17d |  |
| 11 | **Ring Main Unit** | 2027-04-25 → 2027-05-01 (+6d) | 2027-07-20 → 2027-07-26 (+6d) |  |  |  |
| 1 | **Leveling** | 2027-04-25 → 2027-05-01 (+6d) | 2027-05-23 → 2027-05-29 (+6d) |  |  |  |
| SDR-ST-CON-P1-5810 | Ring Main Unit leveling | 2027-04-25 → 2027-05-01 (+6d) | 2027-05-23 → 2027-05-29 (+6d) |  | 2d → 0d | SDR-ST-CON-P1-5760 FS+25d, SDR-ST-CON-P1-4000 → SDR-ST-CON-P1-5760 FS+24d, SDR-ST-CON-P1-4000 |
| 2 | **Lean Concrete** | 2027-05-24 → 2027-05-30 (+6d) | 2027-06-15 → 2027-06-21 (+6d) |  |  |  |
| SDR-ST-CON-P1-5850 | Ring Main Unit Lean Concrete | 2027-05-24 → 2027-05-30 (+6d) | 2027-06-15 → 2027-06-21 (+6d) |  | 2d → 0d |  |
| 3 | **Installation** | 2027-06-28 → 2027-07-04 (+6d) | 2027-07-20 → 2027-07-26 (+6d) |  |  |  |
| SDR-ST-CON-P1-5970 | Ring Main Unit installation for Street Lighting | 2027-06-28 → 2027-07-04 (+6d) | 2027-07-20 → 2027-07-26 (+6d) |  | 2d → 0d |  |
| 12 | **Feeder Pillars** | 2027-04-25 → 2027-05-01 (+6d) | 2027-07-26 → 2027-07-28 (+2d) |  |  |  |
| 1 | **Leveling** | 2027-04-25 → 2027-05-01 (+6d) | 2027-05-23 → 2027-05-29 (+6d) |  |  |  |
| SDR-ST-CON-P1-5820 | Feeder Pillars Leveling | 2027-04-25 → 2027-05-01 (+6d) | 2027-05-23 → 2027-05-29 (+6d) |  | 2d → 1d |  |
| 2 | **Lean Concrete** | 2027-05-24 → 2027-05-30 (+6d) | 2027-06-15 → 2027-06-21 (+6d) |  |  |  |
| SDR-ST-CON-P1-5860 | Feeder Pillars Lean Concrete | 2027-05-24 → 2027-05-30 (+6d) | 2027-06-15 → 2027-06-21 (+6d) |  |  |  |
| 3 | **Installation** | 2027-07-04 → 2027-07-06 (+2d) | 2027-07-26 → 2027-07-28 (+2d) |  |  |  |
| SDR-ST-CON-P1-5980 | Feeder Pillars Installation | 2027-07-04 → 2027-07-06 (+2d) | 2027-07-26 → 2027-07-28 (+2d) |  |  | SDR-ST-CON-P1-5860 FS+15d → SDR-ST-CON-P1-5860 FS+12d |
| 13 | **KWH Frame** | 2027-04-26 → 2027-05-02 (+6d) | 2027-07-10 → 2027-07-15 (+5d) |  |  |  |
| 1 | **Leveling** | 2027-04-26 → 2027-05-02 (+6d) | 2027-05-24 → 2027-05-30 (+6d) |  |  |  |
| SDR-ST-CON-P1-5830 | KWH meter mounting frame Leveling | 2027-04-26 → 2027-05-02 (+6d) | 2027-05-24 → 2027-05-30 (+6d) |  | 3d → 1d |  |
| 2 | **Lean Concrete** | 2027-05-25 → 2027-05-31 (+6d) | 2027-06-16 → 2027-06-22 (+6d) |  |  |  |
| SDR-ST-CON-P1-5870 | KWH meter mounting frame Lean Concrete | 2027-05-25 → 2027-05-31 (+6d) | 2027-06-16 → 2027-06-22 (+6d) |  | 3d → 1d |  |
| 3 | **Installation** | 2027-06-17 → 2027-06-23 (+6d) | 2027-07-10 → 2027-07-15 (+5d) |  |  |  |
| SDR-ST-CON-P1-5910 | KWH meter mounting frame installation | 2027-06-17 → 2027-06-23 (+6d) | 2027-07-10 → 2027-07-15 (+5d) |  | 3d → 1d |  |
| 14 | **Street Lighting Sub-station** | 2027-05-25 → 2027-05-31 (+6d) | 2027-07-10 → 2027-07-15 (+5d) |  |  |  |
| 1 | **Leveling** | 2027-05-25 → 2027-05-31 (+6d) | 2027-06-16 → 2027-06-22 (+6d) |  |  |  |
| SDR-ST-CON-P1-5900 | Unit Substation Leveling | 2027-05-25 → 2027-05-31 (+6d) | 2027-06-16 → 2027-06-22 (+6d) |  | 5d → 1d |  |
| 2 | **Lean Concrete** | 2027-06-17 → 2027-06-23 (+6d) | 2027-07-10 → 2027-07-15 (+5d) |  |  |  |
| SDR-ST-CON-P1-5990 | Unit Substation Lean Concrete | 2027-06-17 → 2027-06-23 (+6d) | 2027-07-10 → 2027-07-15 (+5d) |  | 24d → 19d |  |
| 3 | **Installation** | 2027-06-17 → 2027-06-23 (+6d) | 2027-07-06 → 2027-07-12 (+6d) |  |  |  |
| SDR-ST-CON-P1-6030 | Unit Substation Install for Street Lighting | 2027-06-17 → 2027-06-23 (+6d) | 2027-07-06 → 2027-07-12 (+6d) |  | 26d → 21d |  |
| 5 | **TELECOMMUNICATIONS WORKS** |  | 2027-02-20 → 2027-03-15 (+23d) |  |  |  |
| 3 | **ROAD - 01** |  | 2027-02-20 → 2027-03-15 (+23d) |  |  |  |
| 4 | **ROAD-01 N 1 (2X3)X50 mm MH-15 to MH-16** |  | 2027-02-15 → 2027-02-23 (+8d) |  |  |  |
| 3 | **Ducts** | 2026-10-19 → 2026-10-26 (+7d) | 2027-02-15 → 2027-02-23 (+8d) |  |  |  |
| 2 | **Excavation** | 2026-10-19 → 2026-10-26 (+7d) | 2026-12-06 → 2026-12-13 (+7d) |  |  |  |
| SDR-ST-CON-P1-1690 | Excavation for telecom trench Section 1 | 2026-10-19 → 2026-10-26 (+7d) | 2026-11-11 → 2026-11-18 (+7d) |  | -2d → 0d |  |
| SDR-ST-CON-P1-2340 | Excavation for telecom trench Section 2 | 2026-11-12 → 2026-11-19 (+7d) | 2026-12-06 → 2026-12-13 (+7d) |  | -2d → 0d |  |
| 5 | **Pipe laying** | 2026-12-07 → 2026-12-14 (+7d) | 2026-12-29 → 2027-01-05 (+7d) |  |  |  |
| SDR-ST-CON-P1-3070 | HDPE Pipes for Telecom Installation | 2026-12-07 → 2026-12-14 (+7d) | 2026-12-29 → 2027-01-05 (+7d) |  | -2d → 0d |  |
| 6 | **Backfilling** | 2026-12-30 → 2027-01-06 (+7d) | 2027-01-21 → 2027-01-28 (+7d) |  |  |  |
| SDR-ST-CON-P1-3680 | Backfilling over HDPE Telecom Pipes | 2026-12-30 → 2027-01-06 (+7d) | 2027-01-21 → 2027-01-28 (+7d) |  | -2d → 0d |  |
| 7 | **Pulling Cable** | 2027-01-23 → 2027-01-30 (+7d) | 2027-02-15 → 2027-02-23 (+8d) |  |  |  |
| SDR-ST-CON-P1-4310 | Pulling Cable | 2027-01-23 → 2027-01-30 (+7d) | 2027-02-15 → 2027-02-23 (+8d) |  | -2d → 0d |  |
| 4 | **Manholes** |  | 2026-12-26 → 2026-12-09 (-17d) |  |  |  |
| 2 | **Bedding Work** |  | 2026-11-10 → 2026-10-15 (-26d) |  |  |  |
| SDR-ST-CON-P1-3080 | Sand bedding for Telecom Manhole |  | 2026-11-10 → 2026-10-15 A (-26d) | 50% → 100% | 61d → none |  |
| 3 | **Install Manholes** |  | 2026-11-10 → 2026-10-17 (-24d) |  |  |  |
| SDR-ST-CON-P1-3690 | Installation of Telecom Manhole |  | 2026-11-10 → 2026-10-17 A (-24d) | 50% → 100% | 61d → none |  |
| 4 | **Testting** | 2026-11-11 → 2026-10-26 (-16d) | 2026-12-03 → 2026-11-17 (-16d) |  |  |  |
| SDR-ST-CON-P1-4360 | Telecom Manhole finishing works | 2026-11-11 → 2026-10-26 (-16d) | 2026-12-03 → 2026-11-17 (-16d) |  | 61d → 75d |  |
| 5 | **Backfilling** | 2026-12-05 → 2026-11-18 (-17d) | 2026-12-26 → 2026-12-09 (-17d) |  |  |  |
| SDR-ST-CON-P1-4880 | Backfilling over Telecom Manhole | 2026-12-05 → 2026-11-18 (-17d) | 2026-12-26 → 2026-12-09 (-17d) |  | 61d → 75d |  |
| 2 | **ROAD-01 From 0 to 470 m (3) (2X3)X50 mm MH-12 to MH-14** |  | 2027-02-20 → 2027-03-15 (+23d) |  |  |  |
| 3 | **Ducts** |  | 2027-01-24 → 2027-01-31 (+7d) |  |  |  |
| 2 | **Excavation** |  | 2026-11-11 → 2026-11-18 (+7d) |  |  |  |
| SDR-ST-CON-P1-2190 | Excavation for telecom trench Section 2 | 2026-10-19 A | 2026-11-11 → 2026-11-18 (+7d) | 0% → 20% | 22d → 15d |  |
| 5 | **Pipe laying** | 2026-11-12 → 2026-11-19 (+7d) | 2026-12-06 → 2026-12-13 (+7d) |  |  |  |
| SDR-ST-CON-P1-2940 | HDPE Pipes for Telecom Installation | 2026-11-12 → 2026-11-19 (+7d) | 2026-12-06 → 2026-12-13 (+7d) |  | 22d → 15d |  |
| 6 | **Backfilling** | 2026-12-07 → 2026-12-14 (+7d) | 2026-12-30 → 2027-01-06 (+7d) |  |  |  |
| SDR-ST-CON-P1-3770 | Backfilling over HDPE Telecom Pipes | 2026-12-07 → 2026-12-14 (+7d) | 2026-12-30 → 2027-01-06 (+7d) |  | 22d → 15d |  |
| 7 | **Pulling Cable** | 2026-12-31 → 2027-01-07 (+7d) | 2027-01-24 → 2027-01-31 (+7d) |  |  |  |
| SDR-ST-CON-P1-4370 | Pulling Cable | 2026-12-31 → 2027-01-07 (+7d) | 2027-01-24 → 2027-01-31 (+7d) |  | 22d → 15d |  |
| 4 | **Manholes** |  | 2027-02-20 → 2027-03-15 (+23d) |  |  |  |
| 1 | **Excavation** |  | 2026-10-19 → 2026-12-05 (+47d) |  |  |  |
| SDR-ST-CON-P1-2200 | Excavation for Telecom Manhole Section 2 |  | 2026-10-19 → 2026-12-05 (+47d) |  | 40d → -0.48d |  |

| ID | Task | Start | Finish | Total float |
| --- | --- | --- | --- | --- |
| 2 | **Bedding Work** |  | 2026-12-09 → 2026-12-27 (+18d) |  |
| SDR-ST-CON-P1-2950 | Sand bedding for Telecom Manhole |  | 2026-12-09 → 2026-12-27 (+18d) | 14d → -0.48d |
| 3 | **Install Manholes** |  | 2027-01-02 → 2027-01-19 (+17d) |  |
| SDR-ST-CON-P1-3780 | Installation of Telecom Manhole |  | 2027-01-02 → 2027-01-19 (+17d) | 14d → -0.48d |
| 4 | **Testting** | 2027-01-03 → 2027-01-19 (+16d) | 2027-01-26 → 2027-02-13 (+18d) |  |
| SDR-ST-CON-P1-4630 | Telecom Manhole finishing works | 2027-01-03 → 2027-01-19 (+16d) | 2027-01-26 → 2027-02-13 (+18d) | 14d → -0.48d |
| 5 | **Backfilling** | 2027-01-27 → 2027-02-13 (+17d) | 2027-02-20 → 2027-03-15 (+23d) |  |
| SDR-ST-CON-P1-5140 | Backfilling over Telecom Manhole | 2027-01-27 → 2027-02-13 (+17d) | 2027-02-20 → 2027-03-15 (+23d) | 14d → -0.48d |
| 1 | **ROAD-01 From 470 to 1125 m (6) (2X3)X50 mm MH-10 to MH-11** |  | 2027-01-20 → 2027-01-27 (+7d) |  |
| 3 | **Ducts** |  | 2027-01-20 → 2027-01-27 (+7d) |  |
| 2 | **Excavation** |  | 2026-11-11 → 2026-11-18 (+7d) |  |
| SDR-ST-CON-P1-1790 | Excavation for telecom trench Section 2 | 2026-10-19 → 2026-10-26 (+7d) | 2026-11-11 → 2026-11-18 (+7d) |  |
| 5 | **Pipe laying** | 2026-11-12 → 2026-11-19 (+7d) | 2026-12-06 → 2026-12-13 (+7d) |  |
| SDR-ST-CON-P1-2510 | HDPE Pipes for Telecom Installation | 2026-11-12 → 2026-11-19 (+7d) | 2026-12-06 → 2026-12-13 (+7d) |  |
| 6 | **Backfilling** | 2026-12-07 → 2026-12-14 (+7d) | 2026-12-27 → 2027-01-03 (+7d) |  |
| SDR-ST-CON-P1-3230 | Backfilling over HDPE Telecom Pipes | 2026-12-07 → 2026-12-14 (+7d) | 2026-12-27 → 2027-01-03 (+7d) |  |
| 7 | **Pulling Cable** | 2026-12-28 → 2027-01-04 (+7d) | 2027-01-20 → 2027-01-27 (+7d) |  |
| SDR-ST-CON-P1-4020 | Pulling Cable | 2026-12-28 → 2027-01-04 (+7d) | 2027-01-20 → 2027-01-27 (+7d) |  |
| 4 | **Manholes** |  | 2027-01-05 → 2027-01-12 (+7d) |  |
| 4 | **Testting** | 2026-11-18 → 2026-11-25 (+7d) | 2026-12-12 → 2026-12-19 (+7d) |  |
| SDR-ST-CON-P1-4150 | Telecom Manhole finishing works | 2026-11-18 → 2026-11-25 (+7d) | 2026-12-12 → 2026-12-19 (+7d) | 52d → 46d |
| 5 | **Backfilling** | 2026-12-13 → 2026-12-20 (+7d) | 2027-01-05 → 2027-01-12 (+7d) |  |
| SDR-ST-CON-P1-4740 | Backfilling over Telecom Manhole | 2026-12-13 → 2026-12-20 (+7d) | 2027-01-05 → 2027-01-12 (+7d) | 52d → 46d |
| 3 | **ROAD-01 From 1125 to 1765 m (7) (2X3)X50 mm MH-8 to MH-9** |  | 2027-01-24 → 2027-01-31 (+7d) |  |
| 3 | **Ducts** |  | 2027-01-24 → 2027-01-31 (+7d) |  |
| 2 | **Excavation** |  | 2026-11-11 → 2026-11-18 (+7d) |  |
| SDR-ST-CON-P1-2290 | Excavation for telecom trench Section 2 | 2026-10-19 → 2026-10-26 (+7d) | 2026-11-11 → 2026-11-18 (+7d) | 35d → 28d |
| 5 | **Pipe laying** | 2026-11-12 → 2026-11-19 (+7d) | 2026-12-06 → 2026-12-13 (+7d) |  |
| SDR-ST-CON-P1-3010 | HDPE Pipes for Telecom Installation | 2026-11-12 → 2026-11-19 (+7d) | 2026-12-06 → 2026-12-13 (+7d) | 35d → 28d |
| 6 | **Backfilling** | 2026-12-07 → 2026-12-14 (+7d) | 2026-12-30 → 2027-01-06 (+7d) |  |
| SDR-ST-CON-P1-3630 | Backfilling over HDPE Telecom Pipes | 2026-12-07 → 2026-12-14 (+7d) | 2026-12-30 → 2027-01-06 (+7d) | 35d → 28d |
| 7 | **Pulling Cable** | 2026-12-31 → 2027-01-07 (+7d) | 2027-01-24 → 2027-01-31 (+7d) |  |
| SDR-ST-CON-P1-4240 | Pulling Cable | 2026-12-31 → 2027-01-07 (+7d) | 2027-01-24 → 2027-01-31 (+7d) | 35d → 28d |
| 4 | **Manholes** |  | 2026-11-30 → 2026-12-07 (+7d) |  |
| 4 | **Testting** | 2026-10-19 → 2026-10-26 (+7d) | 2026-11-08 → 2026-11-15 (+7d) |  |
| SDR-ST-CON-P1-4720 | Telecom Manhole finishing works | 2026-10-19 → 2026-10-26 (+7d) | 2026-11-08 → 2026-11-15 (+7d) | 76d → 72d |
| 5 | **Backfilling** | 2026-11-09 → 2026-11-16 (+7d) | 2026-11-30 → 2026-12-07 (+7d) |  |
| SDR-ST-CON-P1-5240 | Backfilling over Telecom Manhole | 2026-11-09 → 2026-11-16 (+7d) | 2026-11-30 → 2026-12-07 (+7d) | 76d → 72d |
| 4 | **ROAD - 02** |  | 2027-02-17 → 2027-02-25 (+8d) |  |
| 3 | **ROAD-01 From 0 to 400 m (9) (2X3)X50 mm MH-5 to MH-7** |  | 2026-12-30 → 2027-01-06 (+7d) |  |
| 3 | **Ducts** | 2026-10-19 → 2026-10-26 (+7d) | 2026-12-30 → 2027-01-06 (+7d) |  |
| 2 | **Excavation** | 2026-10-19 → 2026-10-26 (+7d) | 2026-11-11 → 2026-11-18 (+7d) |  |
| SDR-ST-CON-P1-1340 | Excavation for telecom trench Section 1 | 2026-10-19 → 2026-10-26 (+7d) | 2026-11-11 → 2026-11-18 (+7d) | 29d → 26d |
| SDR-ST-CON-P1-1960 | Excavation for telecom trench Section 2 | 2026-10-19 → 2026-10-26 (+7d) | 2026-11-11 → 2026-11-18 (+7d) | 29d → 26d |
| 5 | **Pipe laying** | 2026-10-19 → 2026-10-26 (+7d) | 2026-11-11 → 2026-11-18 (+7d) |  |
| SDR-ST-CON-P1-2670 | HDPE Pipes for Telecom Installation | 2026-10-19 → 2026-10-26 (+7d) | 2026-11-11 → 2026-11-18 (+7d) | 29d → 26d |
| 6 | **Backfilling** | 2026-11-12 → 2026-11-19 (+7d) | 2026-12-06 → 2026-12-13 (+7d) |  |
| SDR-ST-CON-P1-3440 | Backfilling over HDPE Telecom Pipes | 2026-11-12 → 2026-11-19 (+7d) | 2026-12-06 → 2026-12-13 (+7d) | 29d → 26d |
| 7 | **Pulling Cable** | 2026-12-07 → 2026-12-14 (+7d) | 2026-12-30 → 2027-01-06 (+7d) |  |
| SDR-ST-CON-P1-4270 | Pulling Cable | 2026-12-07 → 2026-12-14 (+7d) | 2026-12-30 → 2027-01-06 (+7d) | 29d → 26d |
| 4 | **Manholes** |  | 2026-12-06 → 2026-12-13 (+7d) |  |
| 4 | **Testting** | 2026-10-19 → 2026-10-26 (+7d) | 2026-11-11 → 2026-11-18 (+7d) |  |
| SDR-ST-CON-P1-4380 | Telecom Manhole finishing works | 2026-10-19 → 2026-10-26 (+7d) | 2026-11-11 → 2026-11-18 (+7d) | 71d → 65d |
| 5 | **Backfilling** | 2026-11-12 → 2026-11-19 (+7d) | 2026-12-06 → 2026-12-13 (+7d) |  |
| SDR-ST-CON-P1-4900 | Backfilling over Telecom Manhole | 2026-11-12 → 2026-11-19 (+7d) | 2026-12-06 → 2026-12-13 (+7d) | 71d → 65d |
| 1 | **ROAD-01 From 400 to 900 m (10) (2X3)X50 mm MH-1 to MH-4** |  | 2027-02-14 → 2027-02-21 (+7d) |  |
| 3 | **Ducts** | 2026-10-19 → 2026-10-26 (+7d) | 2027-01-24 → 2027-01-31 (+7d) |  |
| 2 | **Excavation** | 2026-10-19 → 2026-10-26 (+7d) | 2026-11-11 → 2026-11-18 (+7d) |  |
| SDR-ST-CON-P1-1290 | Excavation for telecom trench Section 1 | 2026-10-19 → 2026-10-26 (+7d) | 2026-11-11 → 2026-11-18 (+7d) | 8d → 5d |
| SDR-ST-CON-P1-1880 | Excavation for telecom trench Section 2 | 2026-10-19 → 2026-10-26 (+7d) | 2026-11-11 → 2026-11-18 (+7d) | 8d → 5d |
| 5 | **Pipe laying** | 2026-11-12 → 2026-11-19 (+7d) | 2026-12-06 → 2026-12-13 (+7d) |  |
| SDR-ST-CON-P1-2640 | HDPE Pipes for Telecom Installation | 2026-11-12 → 2026-11-19 (+7d) | 2026-12-06 → 2026-12-13 (+7d) | 8d → 5d |
| 6 | **Backfilling** | 2026-12-07 → 2026-12-14 (+7d) | 2026-12-30 → 2027-01-06 (+7d) |  |
| SDR-ST-CON-P1-3370 | Backfilling over HDPE Telecom Pipes | 2026-12-07 → 2026-12-14 (+7d) | 2026-12-30 → 2027-01-06 (+7d) | 8d → 5d |
| 7 | **Pulling Cable** | 2026-12-31 → 2027-01-07 (+7d) | 2027-01-24 → 2027-01-31 (+7d) |  |
| SDR-ST-CON-P1-4160 | Pulling Cable | 2026-12-31 → 2027-01-07 (+7d) | 2027-01-24 → 2027-01-31 (+7d) | 8d → 5d |
| 4 | **Manholes** |  | 2027-02-14 → 2027-02-21 (+7d) |  |
| 1 | **Excavation** |  | 2026-11-11 → 2026-11-18 (+7d) |  |
| SDR-ST-CON-P1-1890 | Excavation for Telecom Manhole Section 2 |  | 2026-11-11 → 2026-11-18 (+7d) | 11d → 5d |
| 2 | **Bedding Work** |  | 2026-12-03 → 2026-12-10 (+7d) |  |

| ID | Task | Start | Finish | Complete | Total float |
| --- | --- | --- | --- | --- | --- |
| SDR-ST-CON-P1-2650 | Sand bedding for Telecom Manhole |  | 2026-12-03 → 2026-12-10 (+7d) |  | 11d → 5d |
| 3 | **Install Manholes** |  | 2026-12-27 → 2027-01-03 (+7d) |  |  |
| SDR-ST-CON-P1-3380 | Installation of Telecom Manhole |  | 2026-12-27 → 2027-01-03 (+7d) |  | 11d → 5d |
| 4 | **Testting** | 2026-12-28 → 2027-01-04 (+7d) | 2027-01-20 → 2027-01-27 (+7d) |  |  |
| SDR-ST-CON-P1-4280 | Telecom Manhole finishing works | 2026-12-28 → 2027-01-04 (+7d) | 2027-01-20 → 2027-01-27 (+7d) |  | 11d → 5d |
| 5 | **Backfilling** | 2027-01-21 → 2027-01-28 (+7d) | 2027-02-14 → 2027-02-21 (+7d) |  |  |
| SDR-ST-CON-P1-4820 | Backfilling over Telecom Manhole | 2027-01-21 → 2027-01-28 (+7d) | 2027-02-14 → 2027-02-21 (+7d) |  | 11d → 5d |
| 2 | **ROAD-01 From 900 to 1239 m (11) (2)X32 mm MH-1** | 2026-10-19 → 2026-10-26 (+7d) | 2027-02-17 → 2027-02-25 (+8d) |  |  |
| 3 | **Ducts** | 2026-10-19 → 2026-10-26 (+7d) | 2027-02-17 → 2027-02-25 (+8d) |  |  |
| 2 | **Excavation** | 2026-10-19 → 2026-10-26 (+7d) | 2026-12-06 → 2026-12-13 (+7d) |  |  |
| SDR-ST-CON-P1-1390 | Excavation for telecom trench Section 1 | 2026-10-19 → 2026-10-26 (+7d) | 2026-11-11 → 2026-11-18 (+7d) |  | 13d → 7d |
| SDR-ST-CON-P1-2070 | Excavation for telecom trench Section 2 | 2026-11-12 → 2026-11-19 (+7d) | 2026-12-06 → 2026-12-13 (+7d) |  | 14d → 7d |
| 5 | **Pipe laying** | 2026-12-07 → 2026-12-14 (+7d) | 2026-12-30 → 2027-01-06 (+7d) |  |  |
| SDR-ST-CON-P1-2780 | HDPE Pipes for Telecom Installation | 2026-12-07 → 2026-12-14 (+7d) | 2026-12-30 → 2027-01-06 (+7d) |  | 14d → 7d |
| 6 | **Backfilling** | 2026-12-31 → 2027-01-07 (+7d) | 2027-01-24 → 2027-01-31 (+7d) |  |  |
| SDR-ST-CON-P1-3580 | Backfilling over HDPE Telecom Pipes | 2026-12-31 → 2027-01-07 (+7d) | 2027-01-24 → 2027-01-31 (+7d) |  | 14d → 7d |
| 7 | **Pulling Cable** | 2027-01-25 → 2027-02-01 (+7d) | 2027-02-17 → 2027-02-25 (+8d) |  |  |
| SDR-ST-CON-P1-4170 | Pulling Cable | 2027-01-25 → 2027-02-01 (+7d) | 2027-02-17 → 2027-02-25 (+8d) |  | 14d → 7d |
| 4 | **Manholes** | 2026-10-19 → 2026-10-26 (+7d) | 2027-02-11 → 2027-02-18 (+7d) |  |  |
| 1 | **Excavation** | 2026-10-19 → 2026-10-26 (+7d) | 2026-11-11 → 2026-11-18 (+7d) |  |  |
| SDR-ST-CON-P1-1380 | Excavation for Telecom Manhole Section 1 | 2026-10-19 → 2026-10-26 (+7d) | 2026-11-11 → 2026-11-18 (+7d) |  | 13d → 7d |
| SDR-ST-CON-P1-2080 | Excavation for Telecom Manhole Section 2 | 2026-10-19 → 2026-10-26 (+7d) | 2026-11-11 → 2026-11-18 (+7d) |  | 13d → 7d |
| 2 | **Bedding Work** | 2026-11-12 → 2026-11-19 (+7d) | 2026-12-03 → 2026-12-10 (+7d) |  |  |
| SDR-ST-CON-P1-2790 | Sand bedding for Telecom Manhole | 2026-11-12 → 2026-11-19 (+7d) | 2026-12-03 → 2026-12-10 (+7d) |  | 13d → 7d |
| 3 | **Install Manholes** | 2026-12-05 → 2026-12-12 (+7d) | 2026-12-28 → 2027-01-04 (+7d) |  |  |
| SDR-ST-CON-P1-3590 | Installation of Telecom Manhole | 2026-12-05 → 2026-12-12 (+7d) | 2026-12-28 → 2027-01-04 (+7d) |  | 13d → 7d |
| 4 | **Testting** | 2026-12-29 → 2027-01-05 (+7d) | 2027-01-21 → 2027-01-28 (+7d) |  |  |
| SDR-ST-CON-P1-4500 | Telecom Manhole finishing works | 2026-12-29 → 2027-01-05 (+7d) | 2027-01-21 → 2027-01-28 (+7d) |  | 13d → 7d |
| 5 | **Backfilling** | 2027-01-23 → 2027-01-30 (+7d) | 2027-02-11 → 2027-02-18 (+7d) |  |  |
| SDR-ST-CON-P1-5000 | Backfilling over Telecom Manhole | 2027-01-23 → 2027-01-30 (+7d) | 2027-02-11 → 2027-02-18 (+7d) |  | 13d → 7d |
| 13 | **LOW VOLTAGE** |  | 2027-04-15 → 2027-05-03 (+18d) |  |  |
| 1 | **ROAD - 01** |  | 2027-04-06 → 2027-04-13 (+7d) |  |  |
| 1 | **ROAD-01 From 470 to 1125 m (6)** |  | 2027-04-06 → 2027-04-13 (+7d) |  |  |
| 6 | **Excavation** |  | 2026-12-06 → 2026-12-13 (+7d) |  |  |
| SDR-ST-CON-P1-1670 | Excavation Works Part 1 |  | 2026-11-11 → 2026-11-18 (+7d) |  | 52d → 45d |
| SDR-ST-CON-P1-6230 | Excavation Works Part 2 | 2026-11-12 → 2026-11-19 (+7d) | 2026-12-06 → 2026-12-13 (+7d) |  | 52d → 45d |
| 7 | **Pipe laying** | 2026-12-07 → 2026-12-14 (+7d) | 2026-12-29 → 2027-01-05 (+7d) |  |  |
| SDR-ST-CON-P1-2330 | Pipe Laying | 2026-12-07 → 2026-12-14 (+7d) | 2026-12-29 → 2027-01-05 (+7d) |  | 52d → 45d |
| 8 | **Backfilling** | 2026-12-30 → 2027-01-06 (+7d) | 2027-01-23 → 2027-01-30 (+7d) |  |  |
| SDR-ST-CON-P1-2990 | Backfilling Works | 2026-12-30 → 2027-01-06 (+7d) | 2027-01-23 → 2027-01-30 (+7d) |  | 60d → 54d |
| 9 | **Pulling Cable** | 2027-03-14 → 2027-03-21 (+7d) | 2027-04-06 → 2027-04-13 (+7d) |  |  |
| SDR-ST-CON-P1-3880 | Pulling Cable | 2027-03-14 → 2027-03-21 (+7d) | 2027-04-06 → 2027-04-13 (+7d) |  | 23d → 17d |
| 2 | **ROAD - 02** |  | 2027-04-15 → 2027-05-03 (+18d) |  |  |
| 1 | **ROAD-01 From 400 to 900 m (10)** |  | 2027-04-07 → 2027-04-14 (+7d) |  |  |
| 6 | **Excavation** |  | 2026-12-06 → 2026-12-13 (+7d) |  |  |
| SDR-ST-CON-P1-1740 | Excavation Works Part 1 |  | 2026-11-11 → 2026-11-18 (+7d) |  | 59d → 52d |
| SDR-ST-CON-P1-6240 | Excavation Works Part 2 | 2026-11-12 → 2026-11-19 (+7d) | 2026-12-06 → 2026-12-13 (+7d) |  | 59d → 52d |
| 7 | **Pipe laying** | 2026-12-07 → 2026-12-14 (+7d) | 2026-12-29 → 2027-01-05 (+7d) |  |  |
| SDR-ST-CON-P1-2440 | Pipe Laying | 2026-12-07 → 2026-12-14 (+7d) | 2026-12-29 → 2027-01-05 (+7d) |  | 59d → 52d |
| 8 | **Backfilling** | 2026-12-30 → 2027-01-06 (+7d) | 2027-01-23 → 2027-01-30 (+7d) |  |  |
| SDR-ST-CON-P1-3170 | Backfilling Works | 2026-12-30 → 2027-01-06 (+7d) | 2027-01-23 → 2027-01-30 (+7d) |  | 59d → 52d |
| 9 | **Pulling Cable** | 2027-03-15 → 2027-03-22 (+7d) | 2027-04-07 → 2027-04-14 (+7d) |  |  |
| SDR-ST-CON-P1-4040 | Pulling Cable | 2027-03-15 → 2027-03-22 (+7d) | 2027-04-07 → 2027-04-14 (+7d) |  | 22d → 16d |
| 4 | **ROAD-01 From 900 to 1239 m (11)** |  | 2027-04-15 → 2027-05-03 (+18d) |  |  |
| 6 | **Excavation** |  | 2026-12-06 → 2026-12-13 (+7d) |  |  |
| SDR-ST-CON-P1-1750 | Excavation Works Part 1 |  | 2026-11-11 → 2026-11-18 (+7d) |  | 59d → 52d |
| SDR-ST-CON-P1-6250 | Excavation Works Part 2 | 2026-11-12 → 2026-11-19 (+7d) | 2026-12-06 → 2026-12-13 (+7d) |  | 59d → 52d |
| 7 | **Pipe laying** | 2026-12-07 → 2026-12-14 (+7d) | 2026-12-29 → 2027-01-05 (+7d) |  |  |
| SDR-ST-CON-P1-2450 | Pipe Laying | 2026-12-07 → 2026-12-14 (+7d) | 2026-12-29 → 2027-01-05 (+7d) |  | 59d → 52d |
| 8 | **Backfilling** | 2026-12-30 → 2027-01-06 (+7d) | 2027-01-23 → 2027-01-30 (+7d) |  |  |
| SDR-ST-CON-P1-3180 | Backfilling Works | 2026-12-30 → 2027-01-06 (+7d) | 2027-01-23 → 2027-01-30 (+7d) |  | 59d → 52d |
| 9 | **Pulling Cable** | 2027-03-23 → 2027-04-08 (+16d) | 2027-04-15 → 2027-05-03 (+18d) |  |  |
| SDR-ST-CON-P1-4070 | Pulling Cable | 2027-03-23 → 2027-04-08 (+16d) | 2027-04-15 → 2027-05-03 (+18d) |  | 27d → 12.52d |
| 10 | **PORTABLE WATER** |  | 2027-04-11 → 2027-04-18 (+7d) |  |  |
| 2 | **ROAD - 01** |  | 2027-04-11 → 2027-04-18 (+7d) |  |  |
| 2 | **ROAD-01 From 0 to 470 m (3)** |  | 2027-04-11 → 2027-04-18 (+7d) |  |  |
| 7 | **Pipes Work** |  | 2026-11-16 → 2026-11-23 (+7d) |  |  |
| 9 | **Backfilling** | 2026-10-24 → 2026-10-22 (-2d) | 2026-11-16 → 2026-11-23 (+7d) |  |  |
| SDR-ST-CON-P1-4800 | Backfilling of PW HDPE Pipe 315 mm. | 2026-10-24 → 2026-10-22 A (-2d) | 2026-11-16 → 2026-11-23 (+7d) | 0% → 50% | 84d → 81d |
| 3 | **Valve Chambers & Valves & Fire Hydrant** | 2026-10-19 → 2026-10-26 (+7d) | 2027-04-11 → 2027-04-18 (+7d) |  |  |

| ID | Task | Start | Finish | Complete | Total float |
| --- | --- | --- | --- | --- | --- |
| 3 | **Excavation** | 2026-10-19 → 2026-10-26 (+7d) | 2026-12-12 → 2026-12-19 (+7d) |  |  |
| SDR-ST-CON-P1-1490 | Excavation for Valve Chambers Section 1 | 2026-10-19 → 2026-10-26 (+7d) | 2026-11-11 → 2026-11-18 (+7d) |  | 29d → 23d |
| SDR-ST-CON-P1-2150 | Excavation for Valve Chambers Section 2 | 2026-11-18 → 2026-11-25 (+7d) | 2026-12-12 → 2026-12-19 (+7d) |  | 24d → 18d |
| 1 | **bedding Works** | 2026-12-13 → 2026-12-20 (+7d) | 2027-01-05 → 2027-01-12 (+7d) |  |  |
| SDR-ST-CON-P1-2850 | Sand bedding for Valve Chambers | 2026-12-13 → 2026-12-20 (+7d) | 2027-01-05 → 2027-01-12 (+7d) |  | 24d → 18d |
| 4 | **Install Chambers & Valves & Fire Hydrant** | 2027-01-06 → 2027-01-13 (+7d) | 2027-01-30 → 2027-02-06 (+7d) |  |  |
| SDR-ST-CON-P1-3560 | Install Chambers & Valves | 2027-01-06 → 2027-01-13 (+7d) | 2027-01-30 → 2027-02-06 (+7d) |  | 24d → 18d |
| 2 | **Testing** | 2027-02-16 → 2027-02-24 (+8d) | 2027-03-17 → 2027-03-24 (+7d) |  |  |
| SDR-ST-CON-P1-4470 | Testing for Chambers & Valves | 2027-02-16 → 2027-02-24 (+8d) | 2027-03-17 → 2027-03-24 (+7d) |  | 10d → 4d |
| 6 | **Backfilling** | 2027-03-18 → 2027-03-25 (+7d) | 2027-04-11 → 2027-04-18 (+7d) |  |  |
| SDR-ST-CON-P1-5030 | Backfilling for Chambers & Valves | 2027-03-18 → 2027-03-25 (+7d) | 2027-04-11 → 2027-04-18 (+7d) |  | 10d → 4d |
| 1 | **ROAD-01 From 470 to 1125 m (6)** |  | 2027-03-20 → 2027-03-27 (+7d) |  |  |
| 7 | **Pipes Work** |  | 2026-11-16 → 2026-11-23 (+7d) |  |  |
| 9 | **Backfilling** | 2026-10-24 → 2026-10-25 (+1d) | 2026-11-16 → 2026-11-23 (+7d) |  |  |
| SDR-ST-CON-P1-4700 | Backfilling of PW HDPE Pipe 315 mm. | 2026-10-24 → 2026-10-25 A (+1d) | 2026-11-16 → 2026-11-23 (+7d) | 0% → 50% | 108d → 102d |
| 3 | **Valve Chambers & Valves & Fire Hydrant** | 2026-10-19 → 2026-10-26 (+7d) | 2027-03-20 → 2027-03-27 (+7d) |  |  |
| 3 | **Excavation** | 2026-10-19 → 2026-10-26 (+7d) | 2026-12-06 → 2026-12-13 (+7d) |  |  |
| SDR-ST-CON-P1-1420 | Excavation for Valve Chambers Section 1 | 2026-10-19 → 2026-10-26 (+7d) | 2026-11-11 → 2026-11-18 (+7d) |  | 16d → 9d |
| SDR-ST-CON-P1-2100 | Excavation for Valve Chambers Section 2 | 2026-11-12 → 2026-11-19 (+7d) | 2026-12-06 → 2026-12-13 (+7d) |  | 16d → 9d |
| 1 | **bedding Works** | 2026-12-07 → 2026-12-14 (+7d) | 2026-12-30 → 2027-01-06 (+7d) |  |  |
| SDR-ST-CON-P1-2820 | Sand bedding for Valve Chambers | 2026-12-07 → 2026-12-14 (+7d) | 2026-12-30 → 2027-01-06 (+7d) |  | 16d → 9d |
| 4 | **Install Chambers & Valves & Fire Hydrant** | 2026-12-31 → 2027-01-07 (+7d) | 2027-01-24 → 2027-01-31 (+7d) |  |  |
| SDR-ST-CON-P1-3660 | Install Chambers & Valves | 2026-12-31 → 2027-01-07 (+7d) | 2027-01-24 → 2027-01-31 (+7d) |  | 16d → 9d |
| 2 | **Testing** | 2027-01-25 → 2027-02-01 (+7d) | 2027-02-17 → 2027-02-25 (+8d) |  |  |
| SDR-ST-CON-P1-4550 | Testing for Chambers & Valves | 2027-01-25 → 2027-02-01 (+7d) | 2027-02-17 → 2027-02-25 (+8d) |  | 16d → 9d |
| 6 | **Backfilling** | 2027-02-18 → 2027-02-27 (+9d) | 2027-03-20 → 2027-03-27 (+7d) |  |  |
| SDR-ST-CON-P1-5100 | Backfilling for Chambers & Valves | 2027-02-18 → 2027-02-27 (+9d) | 2027-03-20 → 2027-03-27 (+7d) |  | 16d → 9d |
| 3 | **ROAD-01 From 1125 to 1765 m (7)** |  | 2027-03-22 → 2027-04-08 (+17d) |  |  |
| 7 | **Pipes Work** |  | 2027-03-14 → 2027-03-21 (+7d) |  |  |
| 9 | **Backfilling** | 2027-02-13 → 2026-10-25 (-111d) | 2027-03-14 → 2027-03-21 (+7d) |  |  |
| SDR-ST-CON-P1-4520 | Backfilling of PW HDPE Pipe 315 mm. | 2027-02-13 → 2026-10-25 A (-111d) | 2027-03-14 → 2027-03-21 (+7d) | 0% → 50% | 22d → 16d |
| 3 | **Valve Chambers & Valves & Fire Hydrant** | 2026-10-19 → 2026-10-26 (+7d) | 2027-03-22 → 2027-04-08 (+17d) |  |  |
| 3 | **Excavation** | 2026-10-19 → 2026-10-26 (+7d) | 2026-12-06 → 2026-12-13 (+7d) |  |  |
| SDR-ST-CON-P1-1640 | Excavation for Valve Chambers Section 1 | 2026-10-19 → 2026-10-26 (+7d) | 2026-11-11 → 2026-11-18 (+7d) |  | 18d → 15d |
| SDR-ST-CON-P1-2230 | Excavation for Valve Chambers Section 2 | 2026-11-12 → 2026-11-19 (+7d) | 2026-12-06 → 2026-12-13 (+7d) |  | 18d → 15d |
| 1 | **bedding Works** | 2026-12-07 → 2026-12-14 (+7d) | 2026-12-30 → 2027-01-06 (+7d) |  |  |
| SDR-ST-CON-P1-2900 | Sand bedding for Valve Chambers | 2026-12-07 → 2026-12-14 (+7d) | 2026-12-30 → 2027-01-06 (+7d) |  | 18d → 15d |
| 4 | **Install Chambers & Valves & Fire Hydrant** | 2026-12-31 → 2027-01-07 (+7d) | 2027-01-24 → 2027-01-31 (+7d) |  |  |
| SDR-ST-CON-P1-3640 | Install Chambers & Valves | 2026-12-31 → 2027-01-07 (+7d) | 2027-01-24 → 2027-01-31 (+7d) |  | 18d → 15d |
| 2 | **Testing** | 2027-01-25 → 2027-02-01 (+7d) | 2027-02-17 → 2027-02-25 (+8d) |  |  |
| SDR-ST-CON-P1-4510 | Testing for Chambers & Valves | 2027-01-25 → 2027-02-01 (+7d) | 2027-02-17 → 2027-02-25 (+8d) |  | 22d → 15d |
| 6 | **Backfilling** | 2027-02-21 → 2027-03-15 (+22d) | 2027-03-22 → 2027-04-08 (+17d) |  |  |
| SDR-ST-CON-P1-5070 | Backfilling for Chambers & Valves | 2027-02-21 → 2027-03-15 (+22d) | 2027-03-22 → 2027-04-08 (+17d) |  | 20d → 4.51d |
| 3 | **ROAD - 02** |  | 2027-03-14 → 2027-03-21 (+7d) |  |  |
| 3 | **ROAD-01 From 0 to 400 m (9)** |  | 2027-03-14 → 2027-03-21 (+7d) |  |  |
| 7 | **Pipes Work** |  | 2027-02-27 → 2027-03-06 (+7d) |  |  |
| 8 | **bedding Works** |  | 2026-11-11 → 2026-11-18 (+7d) |  |  |
| SDR-ST-CON-P1-3130 | Sand bedding for PW HDPE Pipes 315 mm |  | 2026-11-11 → 2026-11-18 (+7d) |  | 79d → 72d |
| 2 | **Pipes Laying** |  | 2026-11-11 → 2026-11-18 (+7d) |  |  |
| SDR-ST-CON-P1-3650 | Install PW 315 mm HDPE Pipe |  | 2026-11-11 → 2026-11-18 (+7d) |  | 79d → 72d |
| 5 | **Testing** | 2026-11-12 → 2026-11-19 (+7d) | 2026-12-06 → 2026-12-13 (+7d) |  |  |
| SDR-ST-CON-P1-4340 | Testing of PW HDPE Pipe 315 mm. | 2026-11-12 → 2026-11-19 (+7d) | 2026-12-06 → 2026-12-13 (+7d) |  | 79d → 72d |
| 9 | **Backfilling** | 2027-02-02 → 2027-02-09 (+7d) | 2027-02-27 → 2027-03-06 (+7d) |  |  |
| SDR-ST-CON-P1-4910 | Backfilling of PW HDPE Pipe 315 mm. | 2027-02-02 → 2027-02-09 (+7d) | 2027-02-27 → 2027-03-06 (+7d) |  | 30d → 23d |
| 3 | **Valve Chambers & Valves & Fire Hydrant** | 2026-10-19 → 2026-10-26 (+7d) | 2027-03-14 → 2027-03-21 (+7d) |  |  |
| 3 | **Excavation** | 2026-10-19 → 2026-10-26 (+7d) | 2026-12-03 → 2026-12-10 (+7d) |  |  |
| SDR-ST-CON-P1-1940 | Excavation for Valve Chambers Section 1 | 2026-10-19 → 2026-10-26 (+7d) | 2026-11-10 → 2026-11-17 (+7d) |  |  |
| SDR-ST-CON-P1-2630 | Excavation for Valve Chambers Section 2 | 2026-11-11 → 2026-11-18 (+7d) | 2026-12-03 → 2026-12-10 (+7d) |  |  |
| 1 | **bedding Works** | 2026-12-05 → 2026-12-12 (+7d) | 2026-12-27 → 2027-01-03 (+7d) |  |  |
| SDR-ST-CON-P1-3400 | Sand bedding for Valve Chambers | 2026-12-05 → 2026-12-12 (+7d) | 2026-12-27 → 2027-01-03 (+7d) |  |  |
| 4 | **Install Chambers & Valves & Fire Hydrant** | 2026-12-28 → 2027-01-04 (+7d) | 2027-01-19 → 2027-01-26 (+7d) |  |  |
| SDR-ST-CON-P1-4330 | Install Chambers & Valves | 2026-12-28 → 2027-01-04 (+7d) | 2027-01-19 → 2027-01-26 (+7d) |  |  |
| 2 | **Testing** | 2027-01-25 → 2027-02-01 (+7d) | 2027-02-09 → 2027-02-16 (+7d) |  |  |
| SDR-ST-CON-P1-5060 | Testing for Chambers & Valves | 2027-01-25 → 2027-02-01 (+7d) | 2027-02-09 → 2027-02-16 (+7d) |  | 23d → 16d |
| 6 | **Backfilling** | 2027-02-13 → 2027-02-20 (+7d) | 2027-03-14 → 2027-03-21 (+7d) |  |  |
| SDR-ST-CON-P1-5730 | Backfilling for Chambers & Valves | 2027-02-13 → 2027-02-20 (+7d) | 2027-03-14 → 2027-03-21 (+7d) |  | 21d → 14d |
| 2 | **ROAD-01 From 400 to 900 m (10)** |  | 2027-03-14 → 2027-03-21 (+7d) |  |  |
| 7 | **Pipes Work** |  | 2026-12-10 → 2026-12-17 (+7d) |  |  |
| 8 | **bedding Works** |  | 2026-11-01 → 2026-11-08 (+7d) |  |  |
| SDR-ST-CON-P1-3060 | Sand bedding for PW HDPE Pipes 315 mm |  | 2026-11-01 → 2026-11-08 (+7d) |  |  |

| ID | Task | Start | Finish | Complete | Total float |
| --- | --- | --- | --- | --- | --- |
| 2 | **Pipes Laying** |  | 2026-10-31 → 2026-11-07 (+7d) |  |  |
| SDR-ST-CON-P1-3570 | Install PW 315 mm HDPE Pipe |  | 2026-10-31 → 2026-11-07 (+7d) |  |  |
| 5 | **Testing** | 2026-11-01 → 2026-11-08 (+7d) | 2026-11-16 → 2026-11-23 (+7d) |  |  |
| SDR-ST-CON-P1-4060 | Testing of PW HDPE Pipe 315 mm. | 2026-11-01 → 2026-11-08 (+7d) | 2026-11-16 → 2026-11-23 (+7d) |  |  |
| 9 | **Backfilling** | 2026-11-17 → 2026-11-24 (+7d) | 2026-12-10 → 2026-12-17 (+7d) |  |  |
| SDR-ST-CON-P1-4640 | Backfilling of PW HDPE Pipe 315 mm. | 2026-11-17 → 2026-11-24 (+7d) | 2026-12-10 → 2026-12-17 (+7d) |  |  |
| 3 | **Valve Chambers & Valves & Fire Hydrant** | 2026-10-19 → 2026-10-26 (+7d) | 2027-03-14 → 2027-03-21 (+7d) |  |  |
| 3 | **Excavation** | 2026-10-19 → 2026-10-26 (+7d) | 2026-12-10 → 2026-12-17 (+7d) |  |  |
| SDR-ST-CON-P1-1860 | Excavation for Valve Chambers Section 1 | 2026-10-19 → 2026-10-26 (+7d) | 2026-11-10 → 2026-11-17 (+7d) |  | 22d → 20d |
| SDR-ST-CON-P1-2550 | Excavation for Valve Chambers Section 2 | 2026-11-18 → 2026-11-25 (+7d) | 2026-12-10 → 2026-12-17 (+7d) |  | 16d → 14d |
| 1 | **bedding Works** | 2026-12-12 → 2026-12-19 (+7d) | 2027-01-03 → 2027-01-10 (+7d) |  |  |
| SDR-ST-CON-P1-3310 | Sand bedding for Valve Chambers | 2026-12-12 → 2026-12-19 (+7d) | 2027-01-03 → 2027-01-10 (+7d) |  | 16d → 14d |
| 4 | **Install Chambers & Valves & Fire Hydrant** | 2027-01-04 → 2027-01-11 (+7d) | 2027-01-26 → 2027-02-02 (+7d) |  |  |
| SDR-ST-CON-P1-4210 | Install Chambers & Valves | 2027-01-04 → 2027-01-11 (+7d) | 2027-01-26 → 2027-02-02 (+7d) |  | 16d → 14d |
| 2 | **Testing** | 2027-01-27 → 2027-02-03 (+7d) | 2027-02-11 → 2027-02-18 (+7d) |  |  |
| SDR-ST-CON-P1-4990 | Testing for Chambers & Valves | 2027-01-27 → 2027-02-03 (+7d) | 2027-02-11 → 2027-02-18 (+7d) |  | 21d → 14d |
| 6 | **Backfilling** | 2027-02-13 → 2027-02-20 (+7d) | 2027-03-14 → 2027-03-21 (+7d) |  |  |
| SDR-ST-CON-P1-5710 | Backfilling for Chambers & Valves | 2027-02-13 → 2027-02-20 (+7d) | 2027-03-14 → 2027-03-21 (+7d) |  | 28d → 21d |
| 1 | **ROAD-01 From 900 to 1239 m (11)** |  | 2027-03-08 → 2027-03-20 (+12d) |  |  |
| 7 | **Pipes Work** |  | 2026-12-08 → 2026-12-15 (+7d) |  |  |
| 8 | **bedding Works** |  | 2026-10-29 → 2026-11-05 (+7d) |  |  |
| SDR-ST-CON-P1-3220 | Sand bedding for PW HDPE Pipes 315 mm |  | 2026-10-29 → 2026-11-05 (+7d) |  | 48d → 45d |
| 2 | **Pipes Laying** |  | 2026-10-29 → 2026-11-05 (+7d) |  |  |
| SDR-ST-CON-P1-3610 | Install PW 315 mm HDPE Pipe |  | 2026-10-29 → 2026-11-05 (+7d) |  | 48d → 45d |
| 5 | **Testing** | 2026-10-31 → 2026-11-07 (+7d) | 2026-11-15 → 2026-11-22 (+7d) |  |  |
| SDR-ST-CON-P1-4090 | Testing of PW HDPE Pipe 315 mm. | 2026-10-31 → 2026-11-07 (+7d) | 2026-11-15 → 2026-11-22 (+7d) |  | 48d → 45d |
| 9 | **Backfilling** | 2026-11-16 → 2026-11-23 (+7d) | 2026-12-08 → 2026-12-15 (+7d) |  |  |
| SDR-ST-CON-P1-4660 | Backfilling of PW HDPE Pipe 315 mm. | 2026-11-16 → 2026-11-23 (+7d) | 2026-12-08 → 2026-12-15 (+7d) |  | 48d → 45d |
| 3 | **Valve Chambers & Valves & Fire Hydrant** | 2026-10-19 → 2026-10-26 (+7d) | 2027-03-08 → 2027-03-20 (+12d) |  |  |
| 3 | **Excavation** | 2026-10-19 → 2026-10-26 (+7d) | 2026-12-03 → 2026-12-10 (+7d) |  |  |
| SDR-ST-CON-P1-2020 | Excavation for Valve Chambers Section 1 | 2026-10-19 → 2026-10-26 (+7d) | 2026-11-10 → 2026-11-17 (+7d) |  |  |
| SDR-ST-CON-P1-2740 | Excavation for Valve Chambers Section 2 | 2026-11-11 → 2026-11-18 (+7d) | 2026-12-03 → 2026-12-10 (+7d) |  |  |
| 1 | **bedding Works** | 2026-12-05 → 2026-12-12 (+7d) | 2026-12-27 → 2027-01-03 (+7d) |  |  |
| SDR-ST-CON-P1-3550 | Sand bedding for Valve Chambers | 2026-12-05 → 2026-12-12 (+7d) | 2026-12-27 → 2027-01-03 (+7d) |  |  |
| 4 | **Install Chambers & Valves & Fire Hydrant** | 2026-12-29 → 2027-01-05 (+7d) | 2027-01-20 → 2027-01-27 (+7d) |  |  |
| SDR-ST-CON-P1-4460 | Install Chambers & Valves | 2026-12-29 → 2027-01-05 (+7d) | 2027-01-20 → 2027-01-27 (+7d) |  |  |
| 2 | **Testing** | 2027-01-25 → 2027-02-01 (+7d) | 2027-02-09 → 2027-02-16 (+7d) |  |  |
| SDR-ST-CON-P1-5190 | Testing for Chambers & Valves | 2027-01-25 → 2027-02-01 (+7d) | 2027-02-09 → 2027-02-16 (+7d) |  | 24d → 18d |
| 6 | **Backfilling** | 2027-02-11 → 2027-02-18 (+7d) | 2027-03-08 → 2027-03-20 (+12d) |  |  |
| SDR-ST-CON-P1-5750 | Backfilling for Chambers & Valves | 2027-02-11 → 2027-02-18 (+7d) | 2027-03-08 → 2027-03-20 (+12d) |  | 23d → 17d |
| 7 | **SEWARAGE NETWORK** |  | 2027-03-22 → 2027-04-07 (+16d) |  |  |
| 6 | **ROAD - 01** |  | 2027-03-20 → 2027-03-01 (-19d) |  |  |
| 2 | **ROAD-01 From 0 to 470 m (3) 110 mm HDPE** |  | 2027-03-20 → 2027-02-21 (-27d) |  |  |
| 7 | **Pipes Work** |  | 2026-12-17 → 2026-12-24 (+7d) |  |  |
| 5 | **bedding Works** |  | 2026-11-04 → 2026-11-11 (+7d) |  |  |
| SDR-ST-CON-P1-3050 | Sand bedding for GRP Pipe 200mm Diameter |  | 2026-11-04 → 2026-11-11 (+7d) |  | 40d → 33d |
| 2 | **Pipes Laying** |  | 2026-10-29 → 2026-11-05 (+7d) |  |  |
| SDR-ST-CON-P1-3710 | 200 mm GRP Pipe Laying |  | 2026-10-29 → 2026-11-05 (+7d) |  | 40d → 33d |
| 3 | **Testing** | 2026-10-31 → 2026-11-07 (+7d) | 2026-11-23 → 2026-11-30 (+7d) |  |  |
| SDR-ST-CON-P1-4590 | Testing of 200 mm GRP Pipe. | 2026-10-31 → 2026-11-07 (+7d) | 2026-11-23 → 2026-11-30 (+7d) |  | 40d → 33d |
| 6 | **Backfilling** | 2026-11-24 → 2026-12-01 (+7d) | 2026-12-17 → 2026-12-24 (+7d) |  |  |
| SDR-ST-CON-P1-5570 | Backfilling of 200 mm GRP Pipe. | 2026-11-24 → 2026-12-01 (+7d) | 2026-12-17 → 2026-12-24 (+7d) |  | 40d → 33d |
| 4 | **Manholes** | 2026-10-19 → 2026-10-01 (-18d) | 2027-03-20 → 2027-02-21 (-27d) |  |  |
| 1 | **Excavation** | 2026-10-19 → 2026-10-01 (-18d) | 2026-12-06 → 2026-10-03 (-64d) |  |  |
| SDR-ST-CON-P1-1550 | Excavation for manhole. Section 1 | 2026-10-19 → 2026-10-01 A (-18d) | 2026-11-11 → 2026-10-03 A (-39d) | 0% → 100% | 23d → none |
| SDR-ST-CON-P1-2210 | Excavation for manhole. Section 2 | 2026-11-12 → 2026-10-01 A (-42d) | 2026-12-06 → 2026-10-03 A (-64d) | 0% → 100% | 23d → none |
| 2 | **bedding Works** | 2026-12-07 → 2026-10-05 (-63d) | 2026-12-30 → 2026-10-07 (-84d) |  |  |
| SDR-ST-CON-P1-2960 | Sand bedding for manhole. | 2026-12-07 → 2026-10-05 A (-63d) | 2026-12-30 → 2026-10-07 A (-84d) | 0% → 100% | 23d → none |
| 3 | **Install Manholes** | 2026-12-31 → 2026-10-08 (-84d) | 2027-01-24 → 2026-10-11 (-105d) |  |  |
| SDR-ST-CON-P1-3840 | Manhole Installation | 2026-12-31 → 2026-10-08 A (-84d) | 2027-01-24 → 2026-10-11 A (-105d) | 0% → 100% | 23d → none |
| 4 | **Testing** | 2027-01-25 → 2027-01-04 (-21d) | 2027-02-17 → 2027-01-27 (-21d) |  |  |
| SDR-ST-CON-P1-4790 | Testing | 2027-01-25 → 2027-01-04 (-21d) | 2027-02-17 → 2027-01-27 (-21d) |  | 23d → 40d |
| 5 | **Backfilling** | 2027-02-18 → 2027-01-28 (-21d) | 2027-03-20 → 2027-02-21 (-27d) |  |  |
| SDR-ST-CON-P1-5720 | Backfilling | 2027-02-18 → 2027-01-28 (-21d) | 2027-03-20 → 2027-02-21 (-27d) |  | 23d → 40d |
| 1 | **ROAD-01 From 470 to 1125 m (6) 110 mm HDPE** |  | 2027-03-16 → 2027-02-21 (-23d) |  |  |
| 7 | **Pipes Work** |  | 2027-01-31 → 2027-02-06 (+6d) |  |  |
| 1 | **Excavation** |  | 2026-11-07 → 2026-11-14 (+7d) |  |  |
| SDR-ST-CON-P1-2110 | Excavation for GRP Pipe 200mm Diameter Section 2 |  | 2026-11-07 → 2026-11-14 (+7d) |  | 25d → 26d |
| 5 | **bedding Works** |  | 2026-11-24 → 2026-12-01 (+7d) |  |  |
| SDR-ST-CON-P1-2720 | Sand bedding for GRP Pipe 200mm Diameter |  | 2026-11-24 → 2026-12-01 (+7d) |  | 25d → 26d |

| ID | Task | Start | Finish | Complete | Total float | Predecessors |
| --- | --- | --- | --- | --- | --- | --- |
| 2 | **Pipes Laying** |  | 2026-12-13 → 2026-12-19 (+6d) |  |  |  |
| SDR-ST-CON-P1-3300 | 200 mm GRP Pipe Laying |  | 2026-12-13 → 2026-12-19 (+6d) |  | 25d → 26d |  |
| 3 | **Testing** | 2026-12-14 → 2026-12-20 (+6d) | 2027-01-06 → 2027-01-12 (+6d) |  |  |  |
| SDR-ST-CON-P1-4120 | Testing of 200 mm GRP Pipe. | 2026-12-14 → 2026-12-20 (+6d) | 2027-01-06 → 2027-01-12 (+6d) |  | 25d → 26d |  |
| 6 | **Backfilling** | 2027-01-07 → 2027-01-13 (+6d) | 2027-01-31 → 2027-02-06 (+6d) |  |  |  |
| SDR-ST-CON-P1-4970 | Backfilling of 200 mm GRP Pipe. | 2027-01-07 → 2027-01-13 (+6d) | 2027-01-31 → 2027-02-06 (+6d) |  | 25d → 26d |  |
| 4 | **Manholes** | 2026-10-19 → 2026-10-01 (-18d) | 2027-03-16 → 2027-02-21 (-23d) |  |  |  |
| 1 | **Excavation** | 2026-10-19 → 2026-10-01 (-18d) | 2026-11-11 → 2026-10-06 (-36d) |  |  |  |
| SDR-ST-CON-P1-1440 | Excavation for manhole. Section 1 | 2026-10-19 → 2026-10-01 A (-18d) | 2026-11-11 → 2026-10-06 A (-36d) | 0% → 100% | 43d → none |  |
| SDR-ST-CON-P1-2120 | Excavation for manhole. Section 2 | 2026-10-19 → 2026-10-01 A (-18d) | 2026-11-11 → 2026-10-03 A (-39d) | 0% → 100% | 43d → none |  |
| 2 | **bedding Works** | 2026-10-19 → 2026-10-07 (-12d) | 2026-11-11 → 2026-10-10 (-32d) |  |  |  |
| SDR-ST-CON-P1-2870 | Sand bedding for manhole. | 2026-10-19 → 2026-10-07 A (-12d) | 2026-11-11 → 2026-10-10 A (-32d) | 0% → 100% | 43d → none |  |
| 3 | **Install Manholes** | 2026-12-28 → 2026-10-08 (-81d) | 2027-01-20 → 2026-10-13 (-99d) |  |  |  |
| SDR-ST-CON-P1-3790 | Manhole Installation | 2026-12-28 → 2026-10-08 A (-81d) | 2027-01-20 → 2026-10-13 A (-99d) | 0% → 100% | 4d → none |  |
| 4 | **Testing** | 2027-01-21 → 2027-01-04 (-17d) | 2027-02-14 → 2027-01-27 (-18d) |  |  |  |
| SDR-ST-CON-P1-4710 | Testing | 2027-01-21 → 2027-01-04 (-17d) | 2027-02-14 → 2027-01-27 (-18d) |  | 4d → 25d |  |
| 5 | **Backfilling** | 2027-02-15 → 2027-01-28 (-18d) | 2027-03-16 → 2027-02-21 (-23d) |  |  |  |
| SDR-ST-CON-P1-5700 | Backfilling | 2027-02-15 → 2027-01-28 (-18d) | 2027-03-16 → 2027-02-21 (-23d) |  | 19d → 33d |  |
| 3 | **ROAD-01 From 1125 to 1765 m (7) 110 mm HDPE** |  | 2027-02-21 → 2027-03-01 (+8d) |  |  |  |
| 7 | **Pipes Work** |  | 2027-02-01 → 2027-02-08 (+7d) |  |  |  |
| 1 | **Excavation** |  | 2026-11-07 → 2026-11-14 (+7d) |  |  |  |
| SDR-ST-CON-P1-2240 | Excavation for GRP Pipe 200mm Diameter Section 2 |  | 2026-11-07 → 2026-11-14 (+7d) |  | 24d → 23d |  |
| 5 | **bedding Works** | 2026-11-08 → 2026-11-15 (+7d) | 2026-11-23 → 2026-11-30 (+7d) |  |  |  |
| SDR-ST-CON-P1-2830 | Sand bedding for GRP Pipe 200mm Diameter | 2026-11-08 → 2026-11-15 (+7d) | 2026-11-23 → 2026-11-30 (+7d) |  | 24d → 23d |  |
| 2 | **Pipes Laying** | 2026-11-24 → 2026-12-01 (+7d) | 2026-12-14 → 2026-12-21 (+7d) |  |  |  |
| SDR-ST-CON-P1-3420 | 200 mm GRP Pipe Laying | 2026-11-24 → 2026-12-01 (+7d) | 2026-12-14 → 2026-12-21 (+7d) |  | 24d → 23d |  |
| 3 | **Testing** | 2026-12-15 → 2026-12-22 (+7d) | 2027-01-07 → 2027-01-14 (+7d) |  |  |  |
| SDR-ST-CON-P1-4180 | Testing of 200 mm GRP Pipe. | 2026-12-15 → 2026-12-22 (+7d) | 2027-01-07 → 2027-01-14 (+7d) |  | 24d → 23d |  |
| 6 | **Backfilling** | 2027-01-09 → 2027-01-16 (+7d) | 2027-02-01 → 2027-02-08 (+7d) |  |  |  |
| SDR-ST-CON-P1-5020 | Backfilling of 200 mm GRP Pipe. | 2027-01-09 → 2027-01-16 (+7d) | 2027-02-01 → 2027-02-08 (+7d) |  | 24d → 23d |  |
| 4 | **Manholes** | 2026-10-19 → 2026-10-26 (+7d) | 2027-02-21 → 2027-03-01 (+8d) |  |  |  |
| 1 | **Excavation** | 2026-10-19 → 2026-10-26 (+7d) | 2026-11-11 → 2026-11-18 (+7d) |  |  |  |
| SDR-ST-CON-P1-1660 | Excavation for manhole. Section 1 | 2026-10-19 → 2026-10-26 (+7d) | 2026-11-11 → 2026-11-18 (+7d) |  | 39.7d → 42.7d |  |
| SDR-ST-CON-P1-2310 | Excavation for manhole. Section 2 | 2026-10-19 → 2026-10-26 (+7d) | 2026-11-11 → 2026-11-18 (+7d) |  | 39.7d → 42.7d |  |
| 2 | **bedding Works** | 2026-11-12 → 2026-11-19 (+7d) | 2026-12-06 → 2026-12-13 (+7d) |  |  |  |
| SDR-ST-CON-P1-3030 | Sand bedding for manhole. | 2026-11-12 → 2026-11-19 (+7d) | 2026-12-06 → 2026-12-13 (+7d) |  | 39.7d → 42.7d |  |
| 3 | **Install Manholes** | 2026-12-28 → 2027-01-04 (+7d) | 2027-01-20 → 2027-01-27 (+7d) |  |  |  |
| SDR-ST-CON-P1-3910 | Manhole Installation | 2026-12-28 → 2027-01-04 (+7d) | 2027-01-20 → 2027-01-27 (+7d) |  | 21.7d → 24.7d |  |
| 4 | **Testing** | 2026-12-28 → 2027-01-04 (+7d) | 2027-01-20 → 2027-01-27 (+7d) |  |  |  |
| SDR-ST-CON-P1-4830 | Testing | 2026-12-28 → 2027-01-04 (+7d) | 2027-01-20 → 2027-01-27 (+7d) |  | 21.7d → 24.7d |  |
| 5 | **Backfilling** | 2027-01-27 → 2027-02-03 (+7d) | 2027-02-21 → 2027-03-01 (+8d) |  |  |  |
| SDR-ST-CON-P1-5740 | Backfilling | 2027-01-27 → 2027-02-03 (+7d) | 2027-02-21 → 2027-03-01 (+8d) |  | 21.7d → 24.7d |  |
| 1 | **ROAD - 02** |  | 2027-03-22 → 2027-04-07 (+16d) |  |  |  |
| 1 | **ROAD-01 From 400 to 900 m (10) 110 mm HDPE** |  | 2027-03-22 → 2027-04-07 (+16d) |  |  |  |
| 7 | **Pipes Work** |  | 2027-02-17 → 2027-02-25 (+8d) |  |  |  |
| 1 | **Excavation** |  | 2026-11-23 → 2026-11-30 (+7d) |  |  |  |
| SDR-ST-CON-P1-1810 | Excavation for GRP Pipe 200mm Diameter Section 1 |  | 2026-10-31 → 2026-11-07 (+7d) |  | 16d → 19d |  |
| SDR-ST-CON-P1-2530 | Excavation for GRP Pipe 200mm Diameter Section 2 | 2026-11-04 → 2026-11-11 (+7d) | 2026-11-23 → 2026-11-30 (+7d) |  | 16d → 19d |  |
| 5 | **bedding Works** | 2026-11-24 → 2026-12-01 (+7d) | 2026-12-09 → 2026-12-16 (+7d) |  |  |  |
| SDR-ST-CON-P1-3210 | Sand bedding for GRP Pipe 200mm Diameter | 2026-11-24 → 2026-12-01 (+7d) | 2026-12-09 → 2026-12-16 (+7d) |  | 16d → 19d |  |
| 2 | **Pipes Laying** | 2026-12-10 → 2026-12-17 (+7d) | 2026-12-30 → 2027-01-06 (+7d) |  |  |  |
| SDR-ST-CON-P1-3800 | 200 mm GRP Pipe Laying | 2026-12-10 → 2026-12-17 (+7d) | 2026-12-30 → 2027-01-06 (+7d) |  | 16d → 19d |  |
| 3 | **Testing** | 2026-12-31 → 2027-01-07 (+7d) | 2027-01-24 → 2027-01-31 (+7d) |  |  |  |
| SDR-ST-CON-P1-4580 | Testing of 200 mm GRP Pipe. | 2026-12-31 → 2027-01-07 (+7d) | 2027-01-24 → 2027-01-31 (+7d) |  | 16d → 19d |  |
| 6 | **Backfilling** | 2027-01-25 → 2027-02-01 (+7d) | 2027-02-17 → 2027-02-25 (+8d) |  |  |  |
| SDR-ST-CON-P1-5500 | Backfilling of 200 mm GRP Pipe. | 2027-01-25 → 2027-02-01 (+7d) | 2027-02-17 → 2027-02-25 (+8d) |  | 16d → 19d |  |
| 4 | **Manholes** | 2026-10-19 → 2026-10-01 (-18d) | 2027-03-22 → 2027-04-07 (+16d) |  |  |  |
| 1 | **Excavation** | 2026-10-19 → 2026-10-01 (-18d) | 2026-11-11 → 2026-10-03 (-39d) |  |  |  |
| SDR-ST-CON-P1-1820 | Excavation for manhole. Section 1 | 2026-10-19 → 2026-10-01 A (-18d) | 2026-11-11 → 2026-10-03 A (-39d) | 0% → 100% | 19d → none |  |
| SDR-ST-CON-P1-2580 | Excavation for manhole. Section 2 | 2026-10-19 → 2026-10-01 A (-18d) | 2026-11-11 → 2026-10-03 A (-39d) | 0% → 100% | 19d → none |  |
| 2 | **bedding Works** | 2026-11-12 → 2026-10-04 (-39d) | 2026-12-06 → 2026-10-05 (-62d) |  |  |  |
| SDR-ST-CON-P1-3410 | Sand bedding for manhole. | 2026-11-12 → 2026-10-04 A (-39d) | 2026-12-06 → 2026-10-05 A (-62d) | 0% → 100% | 19d → none |  |
| 3 | **Install Manholes** | 2026-12-07 → 2026-10-10 (-58d) | 2026-12-30 → 2026-10-13 (-78d) |  |  |  |
| SDR-ST-CON-P1-4390 | Manhole Installation | 2026-12-07 → 2026-10-10 A (-58d) | 2026-12-30 → 2026-10-13 A (-78d) | 0% → 100% | 19d → none |  |
| 4 | **Testing** | 2026-12-31 → 2027-01-04 (+4d) | 2027-01-24 → 2027-01-27 (+3d) |  |  |  |
| SDR-ST-CON-P1-5120 | Testing | 2026-12-31 → 2027-01-04 (+4d) | 2027-01-24 → 2027-01-27 (+3d) |  | 19d → 16d |  |
| 5 | **Backfilling** | 2027-02-21 → 2027-03-14 (+21d) | 2027-03-22 → 2027-04-07 (+16d) |  |  |  |
| SDR-ST-CON-P1-5770 | Backfilling | 2027-02-21 → 2027-03-14 (+21d) | 2027-03-22 → 2027-04-07 (+16d) |  | 14d → -0.48d | SDR-ST-CON-P1-5120, SDR-ST-CON-P1-5140, SDR-ST-PRO-MS-1050 → SDR-ST-CON-P1-5120, SDR-ST-CON-P1-5140 FS-1d, SDR-ST-PRO-MS-1050 |
| 3 | **ROAD-01 From 900 to 1239 m (11) 110 mm HDPE** |  | 2027-03-22 → 2027-03-25 (+3d) |  |  |  |
| 7 | **Pipes Work** |  | 2027-02-20 → 2027-02-28 (+8d) |  |  |  |

| ID | Task | Start | Finish | Complete | Total float |
| --- | --- | --- | --- | --- | --- |
| 1 | **Excavation** |  | 2026-11-22 → 2026-11-29 (+7d) |  |  |
| SDR-ST-CON-P1-2030 | Excavation for GRP Pipe 200mm Diameter Section 1 |  | 2026-10-31 → 2026-11-07 (+7d) |  | 14d → 17d |
| SDR-ST-CON-P1-2700 | Excavation for GRP Pipe 200mm Diameter Section 2 | 2026-11-04 → 2026-11-11 (+7d) | 2026-11-22 → 2026-11-29 (+7d) |  | 14d → 17d |
| 5 | **bedding Works** | 2026-11-23 → 2026-11-30 (+7d) | 2026-12-03 → 2026-12-10 (+7d) |  |  |
| SDR-ST-CON-P1-3330 | Sand bedding for GRP Pipe 200mm Diameter | 2026-11-23 → 2026-11-30 (+7d) | 2026-12-03 → 2026-12-10 (+7d) |  | 14d → 17d |
| 2 | **Pipes Laying** | 2026-12-05 → 2026-12-12 (+7d) | 2026-12-28 → 2027-01-04 (+7d) |  |  |
| SDR-ST-CON-P1-3750 | 200 mm GRP Pipe Laying | 2026-12-05 → 2026-12-12 (+7d) | 2026-12-28 → 2027-01-04 (+7d) |  | 14d → 17d |
| 3 | **Testing** | 2026-12-29 → 2027-01-05 (+7d) | 2027-01-21 → 2027-01-28 (+7d) |  |  |
| SDR-ST-CON-P1-4670 | Testing of 200 mm GRP Pipe. | 2026-12-29 → 2027-01-05 (+7d) | 2027-01-21 → 2027-01-28 (+7d) |  | 14d → 17d |
| 6 | **Backfilling** | 2027-01-27 → 2027-02-03 (+7d) | 2027-02-20 → 2027-02-28 (+8d) |  |  |
| SDR-ST-CON-P1-5670 | Backfilling of 200 mm GRP Pipe. | 2027-01-27 → 2027-02-03 (+7d) | 2027-02-20 → 2027-02-28 (+8d) |  | 14d → 17d |
| 4 | **Manholes** |  | 2027-03-22 → 2027-03-25 (+3d) |  |  |
| 1 | **Excavation** |  | 2026-12-06 → 2026-11-18 (-18d) |  |  |
| SDR-ST-CON-P1-2040 | Excavation for manhole. Section 1 | 2026-10-19 A | 2026-11-11 → 2026-10-24 A (-18d) | 0% → 100% | 16d → none |
| SDR-ST-CON-P1-2760 | Excavation for manhole. Section 2 | 2026-11-12 → 2026-10-25 A (-18d) | 2026-12-06 → 2026-11-18 (-18d) | 0% → 80% | 16d → 34d |
| 2 | **bedding Works** | 2026-12-07 → 2026-11-19 (-18d) | 2026-12-30 → 2026-12-13 (-17d) |  |  |
| SDR-ST-CON-P1-3620 | Sand bedding for manhole. | 2026-12-07 → 2026-11-19 (-18d) | 2026-12-30 → 2026-12-13 (-17d) |  | 16d → 34d |
| 3 | **Install Manholes** | 2026-12-31 → 2027-01-04 (+4d) | 2027-01-24 → 2027-01-27 (+3d) |  |  |
| SDR-ST-CON-P1-4560 | Manhole Installation | 2026-12-31 → 2027-01-04 (+4d) | 2027-01-24 → 2027-01-27 (+3d) |  | 19d → 16d |
| 4 | **Testing** | 2027-01-25 → 2027-01-28 (+3d) | 2027-02-17 → 2027-02-21 (+4d) |  |  |
| SDR-ST-CON-P1-5440 | Testing | 2027-01-25 → 2027-01-28 (+3d) | 2027-02-17 → 2027-02-21 (+4d) |  | 19d → 16d |
| 5 | **Backfilling** | 2027-02-21 → 2027-02-25 (+4d) | 2027-03-22 → 2027-03-25 (+3d) |  |  |
| SDR-ST-CON-P1-5800 | Backfilling | 2027-02-21 → 2027-02-25 (+4d) | 2027-03-22 → 2027-03-25 (+3d) |  | 19d → 16d |
| 11 | **STORM WATER** |  | 2027-02-28 → 2027-03-07 (+7d) |  |  |
| 2 | **ROAD N...** |  | 2027-02-28 → 2027-03-07 (+7d) |  |  |
| 8 | **Pipes Works** |  | 2027-02-28 → 2027-03-07 (+7d) |  |  |
| 6 | **Testing** | 2026-11-22 → 2026-10-25 (-28d) | 2026-12-15 → 2026-12-19 (+4d) |  |  |
| SDR-ST-CON-P1-3830 | Testing ST GRP Pipes | 2026-11-22 → 2026-10-25 A (-28d) | 2026-12-15 → 2026-12-19 (+4d) | 0% → 70% | 39d → 42d |
| 3 | **Backfilling** | 2027-02-04 → 2026-10-26 (-101d) | 2027-02-28 → 2027-03-07 (+7d) |  |  |
| SDR-ST-CON-P1-4760 | Backfilling ST GRP Pipes | 2027-02-04 → 2026-10-26 A (-101d) | 2027-02-28 → 2027-03-07 (+7d) | 0% → 70% | 24d → 18d |
| 3 | **Package-3** | 2026-10-19 → 2026-10-26 (+7d) | 2027-08-08 → 2027-08-06 (-2d) |  |  |
| 1 | **Site Works** | 2026-10-19 → 2026-10-26 (+7d) | 2026-11-10 → 2026-11-17 (+7d) |  |  |
| 1 | **Earthworks** | 2026-10-19 → 2026-10-26 (+7d) | 2026-11-10 → 2026-11-17 (+7d) |  |  |
| 2 | **Excavation** | 2026-10-19 → 2026-10-26 (+7d) | 2026-11-10 → 2026-11-17 (+7d) |  |  |
| SDR-ST-CON-P3-1000 | Excavation in all types of soil to the required depth includes removal of waste material | 2026-10-19 → 2026-10-26 (+7d) | 2026-11-10 → 2026-11-17 (+7d) |  |  |
| 1 | **Fill** | 2026-10-19 → 2026-10-26 (+7d) | 2026-11-04 → 2026-11-11 (+7d) |  |  |
| SDR-ST-CON-P3-1010 | Backfilling with improved and select fill material from the site or imported | 2026-10-19 → 2026-10-26 (+7d) | 2026-11-04 → 2026-11-11 (+7d) |  |  |
| 2 | **Platform Works** | 2026-10-19 → 2026-10-26 (+7d) | 2027-07-21 → 2027-07-29 (+8d) |  |  |
| 1 | **Platform** | 2026-10-19 → 2026-10-26 (+7d) | 2027-04-10 → 2027-04-17 (+7d) |  |  |
| 1 | **Earthworks** | 2026-10-19 → 2026-10-26 (+7d) | 2026-11-26 → 2026-12-03 (+7d) |  |  |
| 1 | **Excavation** | 2026-10-19 → 2026-10-26 (+7d) | 2026-11-05 → 2026-11-12 (+7d) |  |  |
| SDR-ST-CON-P3-1020 | Excavation in all types of soil to the required depth includes removal of waste material | 2026-10-19 → 2026-10-26 (+7d) | 2026-11-05 → 2026-11-12 (+7d) |  |  |
| 2 | **Fill** | 2026-11-07 → 2026-11-14 (+7d) | 2026-11-26 → 2026-12-03 (+7d) |  |  |
| SDR-ST-CON-P3-1030 | Backfilling with improved and select fill material from the site or imported Part 1 | 2026-11-07 → 2026-11-14 (+7d) | 2026-11-26 → 2026-12-03 (+7d) |  |  |
| SDR-ST-CON-P3-1040 | Backfilling with improved and select fill material from the site or imported Part 2 | 2026-11-07 → 2026-11-14 (+7d) | 2026-11-24 → 2026-12-01 (+7d) |  |  |
| 3 | **Concrete Works** | 2026-11-28 → 2026-12-05 (+7d) | 2027-04-10 → 2027-04-17 (+7d) |  |  |
| 1 | **Foundations** | 2026-11-28 → 2026-12-05 (+7d) | 2027-01-06 → 2027-01-13 (+7d) |  |  |
| SDR-ST-CON-P3-1060 | Pouring Concrete under Foundation 100 mm thickness lean | 2026-11-28 → 2026-12-05 (+7d) | 2026-12-08 → 2026-12-15 (+7d) |  |  |
| SDR-ST-CON-P3-1080 | Provide and lay 2 layers of waterproofing bitumenous membrane 4mm below footings | 2026-12-09 → 2026-12-16 (+7d) | 2026-12-17 → 2026-12-24 (+7d) |  |  |
| SDR-ST-CON-P3-1100 | Pouring Concrete for protecting waterproofing under the foundation 50 mm thickness | 2026-12-20 → 2026-12-27 (+7d) | 2026-12-30 → 2027-01-06 (+7d) |  |  |
| 1 | **Footings** | 2026-12-20 → 2026-12-27 (+7d) | 2027-01-06 → 2027-01-13 (+7d) |  |  |
| SDR-ST-CON-P3-1130 | Pouring concrete for footings Part 1 | 2026-12-20 → 2026-12-27 (+7d) | 2026-12-30 → 2027-01-06 (+7d) |  |  |
| SDR-ST-CON-P3-1150 | Pouring concrete for footings Part 2 | 2026-12-20 → 2026-12-27 (+7d) | 2026-12-30 → 2027-01-06 (+7d) |  |  |
| SDR-ST-CON-P3-1180 | Pouring concrete for footings Part 3 | 2026-12-20 → 2026-12-27 (+7d) | 2027-01-06 → 2027-01-13 (+7d) |  |  |
| 2 | **Substructure** | 2027-01-07 → 2027-01-14 (+7d) | 2027-02-04 → 2027-02-11 (+7d) |  |  |
| 1 | **Basement** | 2027-01-10 → 2027-01-17 (+7d) | 2027-01-24 → 2027-01-31 (+7d) |  |  |
| SDR-ST-CON-P3-1200 | Pouring concrete for Basement Part 1 | 2027-01-10 → 2027-01-17 (+7d) | 2027-01-20 → 2027-01-27 (+7d) |  |  |
| SDR-ST-CON-P3-1220 | Pouring concrete for Basement Part 2 | 2027-01-16 → 2027-01-23 (+7d) | 2027-01-24 → 2027-01-31 (+7d) |  | 25d → 20d |
| 2 | **Tank** | 2027-01-07 → 2027-01-14 (+7d) | 2027-01-20 → 2027-01-27 (+7d) |  |  |
| SDR-ST-CON-P3-1210 | Pouring concrete for Tank Part 1 | 2027-01-07 → 2027-01-14 (+7d) | 2027-01-13 → 2027-01-20 (+7d) |  | 28d → 23d |
| SDR-ST-CON-P3-1230 | Pouring concrete for Tank Part 2 | 2027-01-14 → 2027-01-21 (+7d) | 2027-01-20 → 2027-01-27 (+7d) |  | 28d → 23d |
| 3 | **Retaining Walls** | 2027-01-21 → 2027-01-28 (+7d) | 2027-02-04 → 2027-02-11 (+7d) |  |  |
| SDR-ST-CON-P3-1190 | Pouring concrete for Retaining Walls Part 1 | 2027-01-21 → 2027-01-28 (+7d) | 2027-01-28 → 2027-02-04 (+7d) |  |  |
| SDR-ST-CON-P3-1250 | Pouring concrete for Retaining Walls Part 2 | 2027-01-30 → 2027-02-06 (+7d) | 2027-02-04 → 2027-02-11 (+7d) |  |  |
| 3 | **Waterproofing Vertical** | 2027-02-06 → 2027-02-13 (+7d) | 2027-02-25 → 2027-03-04 (+7d) |  |  |
| SDR-ST-CON-P3-1300 | lay 2 layers of waterproofing bitumenous membrane 4mm including protection board for substructure vertical Part 1 | 2027-02-06 → 2027-02-13 (+7d) | 2027-02-09 → 2027-02-16 (+7d) |  |  |
| SDR-ST-CON-P3-1370 | lay 2 layers of waterproofing bitumenous membrane 4mm including protection board for substructure vertical Part 2 | 2027-02-16 → 2027-02-24 (+8d) | 2027-02-20 → 2027-02-28 (+8d) |  |  |
| SDR-ST-CON-P3-1430 | lay 2 layers of waterproofing bitumenous membrane 4mm including protection board for substructure vertical Part 3 | 2027-02-21 → 2027-03-01 (+8d) | 2027-02-25 → 2027-03-04 (+7d) |  |  |
| 4 | **Neck Walls** | 2027-02-28 → 2027-03-07 (+7d) | 2027-03-06 → 2027-03-17 (+11d) |  |  |
| SDR-ST-CON-P3-1270 | Pouring concrete for Neck Walls Part 1 | 2027-02-28 → 2027-03-07 (+7d) | 2027-03-04 → 2027-03-16 (+12d) |  |  |

| ID | Task | Start | Finish | Total float | Predecessors |
| --- | --- | --- | --- | --- | --- |
| SDR-ST-CON-P3-1290 | Pouring concrete for Neck Walls Part 2 | 2027-03-01 → 2027-03-08 (+7d) | 2027-03-06 → 2027-03-17 (+11d) |  |  |
| 5 | **Preparation for Slab** | 2027-03-07 → 2027-03-18 (+11d) | 2027-03-20 → 2027-03-27 (+7d) |  |  |
| SDR-ST-CON-P3-1320 | Pouring Concrete under slab on grade and gound beams 50 mm thickness lean | 2027-03-07 → 2027-03-18 (+11d) | 2027-03-15 → 2027-03-22 (+7d) | 3d → 6d |  |
| SDR-ST-CON-P3-1360 | Supply and lay 250 micron thk polyethylene sheet below slab on grade and ground beams | 2027-03-16 → 2027-03-23 (+7d) | 2027-03-20 → 2027-03-27 (+7d) | 3d → 6d |  |
| 6 | **Slab on Grade** | 2027-03-21 → 2027-03-28 (+7d) | 2027-03-24 → 2027-03-31 (+7d) |  |  |
| SDR-ST-CON-P3-1380 | Pouring Concrete for Slab on grade | 2027-03-21 → 2027-03-28 (+7d) | 2027-03-24 → 2027-03-31 (+7d) | 3d → 6d |  |
| 7 | **Finishes** | 2027-03-29 → 2027-04-05 (+7d) | 2027-04-10 → 2027-04-17 (+7d) |  |  |
| 9 | **Troweled Finish** | 2027-03-29 → 2027-04-05 (+7d) | 2027-03-31 → 2027-04-07 (+7d) |  |  |
| SDR-ST-CON-P3-1400 | Pouring Concrete for Slab on grade with troweled finish Part 1 | 2027-03-29 → 2027-04-05 (+7d) | 2027-03-31 → 2027-04-07 (+7d) | 3d → 6d |  |
| SDR-ST-CON-P3-1500 | Pouring Concrete for Slab on grade with troweled finish Part 2 | 2027-03-29 → 2027-04-05 (+7d) | 2027-03-31 → 2027-04-07 (+7d) | 3d → 6d |  |
| 8 | **Exposed Aggregate Finish** | 2027-04-01 → 2027-04-08 (+7d) | 2027-04-10 → 2027-04-17 (+7d) |  |  |
| SDR-ST-CON-P3-1420 | Pouring Concrete for Slab on grade with exposed aggregate finish Part 1 | 2027-04-01 → 2027-04-08 (+7d) | 2027-04-04 → 2027-04-11 (+7d) | 3d → 6d |  |
| SDR-ST-CON-P3-1480 | Pouring Concrete for Slab on grade with exposed aggregate finish Part 2 | 2027-04-01 → 2027-04-08 (+7d) | 2027-04-04 → 2027-04-11 (+7d) | 3d → 6d |  |
| SDR-ST-CON-P3-1490 | Pouring Concrete for Slab on grade with exposed aggregate finish Part 3 | 2027-04-04 → 2027-04-11 (+7d) | 2027-04-10 → 2027-04-17 (+7d) | 3d → 6d |  |
| 3 | **Finishes & Architectural Works** | 2027-06-01 → 2027-06-08 (+7d) | 2027-07-21 → 2027-07-29 (+8d) |  |  |
| SDR-ST-CON-P3-1540 | Installation of metal steel 1200mm railing including all accessories Part 1 | 2027-06-01 → 2027-06-08 (+7d) | 2027-06-17 → 2027-06-24 (+7d) | 10d → 3d |  |
| SDR-ST-CON-P3-1590 | Installation of metal steel 1200mm railing including all accessories Part 2 | 2027-06-19 → 2027-06-26 (+7d) | 2027-06-29 → 2027-07-06 (+7d) | 10d → 3d |  |
| SDR-ST-CON-P3-1640 | Installation of metal steel 1200mm railing including all accessories Part3 | 2027-06-30 → 2027-07-07 (+7d) | 2027-07-08 → 2027-07-15 (+7d) | 10d → 3d |  |
| SDR-ST-CON-P3-1710 | Platform Paving & warning tiles | 2027-07-13 → 2027-07-20 (+7d) | 2027-07-17 → 2027-07-25 (+8d) | 7d → -0.48d |  |
| SDR-ST-CON-P3-1760 | Painting Part 1 | 2027-07-18 → 2027-07-25 (+7d) | 2027-07-21 → 2027-07-29 (+8d) | 7d → -0.48d |  |
| SDR-ST-CON-P3-1840 | Painting Part 2 | 2027-07-18 → 2027-07-25 (+7d) | 2027-07-21 → 2027-07-29 (+8d) | 13d → 6.52d |  |
| 5 | **Platform Electrical Works** | 2027-03-07 → 2027-03-18 (+11d) | 2027-04-03 → 2027-04-10 (+7d) |  |  |
| SDR-ST-CON-P3-1310 | cable conduits | 2027-03-07 → 2027-03-18 (+11d) | 2027-04-03 → 2027-04-10 (+7d) | 9d → 3d |  |
| 3 | **Canopy works** | 2026-12-01 → 2026-12-08 (+7d) | 2027-08-08 → 2027-08-06 (-2d) |  |  |
| 1 | **Civil and Architectural Works** | 2026-12-01 → 2026-12-08 (+7d) | 2027-01-27 → 2027-02-03 (+7d) |  |  |
| 1 | **Concrete** | 2026-12-01 → 2026-12-08 (+7d) | 2027-01-27 → 2027-02-03 (+7d) |  |  |
| SDR-ST-CON-P3-1050 | Pouring Concrete under the foundation 100 mm thickness lean | 2026-12-01 → 2026-12-08 (+7d) | 2026-12-15 → 2026-12-22 (+7d) |  |  |
| SDR-ST-CON-P3-1090 | Pouring Concrete for protecting waterproofing under the foundation 50 mm thickness | 2026-12-22 → 2026-12-29 (+7d) | 2027-01-04 → 2027-01-11 (+7d) | 25d → 19d |  |
| SDR-ST-CON-P3-1110 | Pouring Concrete for Footings | 2027-01-05 → 2027-01-12 (+7d) | 2027-01-18 → 2027-01-25 (+7d) | 25d → 19d |  |
| SDR-ST-CON-P3-1140 | Pouring Concrete for Coulumns necks | 2027-01-19 → 2027-01-26 (+7d) | 2027-01-27 → 2027-02-03 (+7d) | 25d → 19d |  |
| 4 | **Metals** | 2026-12-16 → 2026-12-23 (+7d) | 2027-08-08 → 2027-08-06 (-2d) |  |  |
| 2 | **Structural Steel Framing** | 2027-01-18 → 2027-01-25 (+7d) | 2027-05-02 → 2027-05-09 (+7d) |  |  |
| SDR-ST-CON-P3-1120 | Anchor Bolt Verification | 2027-01-18 → 2027-01-25 (+7d) | 2027-02-04 → 2027-02-11 (+7d) | 16d → 9d |  |
| SDR-ST-CON-P3-1160 | Erection of Columns Part 1 | 2027-02-07 → 2027-02-14 (+7d) | 2027-03-02 → 2027-03-14 (+12d) | 15d → 8d |  |
| SDR-ST-CON-P3-1260 | Erection of Rafters Part 1 | 2027-02-15 → 2027-02-23 (+8d) | 2027-03-06 → 2027-03-17 (+11d) | 12d → 5d |  |
| SDR-ST-CON-P3-1280 | Erection of Rafters Part 2 | 2027-02-17 → 2027-02-25 (+8d) | 2027-03-08 → 2027-03-20 (+12d) | 12d → 5d |  |
| SDR-ST-CON-P3-1240 | Erection of Columns Part 2 | 2027-02-21 → 2027-03-01 (+8d) | 2027-03-06 → 2027-03-17 (+11d) | 12d → 5d |  |
| SDR-ST-CON-P3-1330 | Installation of Bracing System Part 1 | 2027-03-14 → 2027-03-21 (+7d) | 2027-03-30 → 2027-04-06 (+7d) | 13d → 7d |  |
| SDR-ST-CON-P3-1340 | Installation of Beams Part 1 | 2027-03-14 → 2027-03-21 (+7d) | 2027-03-24 → 2027-03-31 (+7d) | 12d → 5d |  |
| SDR-ST-CON-P3-1350 | Installation of Girders Part 1 | 2027-03-23 → 2027-03-30 (+7d) | 2027-04-14 → 2027-04-21 (+7d) | 24d → 18d |  |
| SDR-ST-CON-P3-1440 | Installation of Girders Part 2 | 2027-03-23 → 2027-03-30 (+7d) | 2027-04-05 → 2027-04-12 (+7d) | 24d → 18d |  |
| SDR-ST-CON-P3-1410 | Installation of Bracing System Part 2 | 2027-03-31 → 2027-04-07 (+7d) | 2027-04-18 → 2027-04-25 (+7d) | 13d → 7d |  |
| SDR-ST-CON-P3-1390 | Installation of Beams Part 2 | 2027-03-31 → 2027-04-07 (+7d) | 2027-04-13 → 2027-04-21 (+8d) | 7d → -0.48d |  |
| SDR-ST-CON-P3-1450 | Installation of Joists Part 1 | 2027-04-14 → 2027-04-21 (+7d) | 2027-04-27 → 2027-05-05 (+8d) | 17d → 10.52d |  |
| SDR-ST-CON-P3-1460 | Installation of Connections (Bolting) | 2027-04-14 → 2027-04-21 (+7d) | 2027-04-27 → 2027-05-05 (+8d) | 7d → -0.48d |  |
| SDR-ST-CON-P3-1470 | Installation of Joists Part 2 | 2027-04-19 → 2027-04-26 (+7d) | 2027-05-02 → 2027-05-09 (+7d) | 13d → 7d |  |
| 3 | **Aluminum Cladding Panels** | 2027-05-03 → 2027-05-10 (+7d) | 2027-08-08 → 2027-08-06 (-2d) |  |  |
| 1 | **Steel Subframe Installation** | 2027-05-03 → 2027-05-10 (+7d) | 2027-08-04 → 2027-08-06 (+2d) |  |  |
| SDR-ST-CON-P3-1530 | Survey & Setting Out for Cladding | 2027-05-03 → 2027-05-10 (+7d) | 2027-05-11 → 2027-05-24 (+13d) | 13d → 7d |  |
| SDR-ST-CON-P3-1560 | Install Steel Subframe Supports Part 1 | 2027-05-27 → 2027-06-02 (+6d) | 2027-06-16 → 2027-06-22 (+6d) | 5d → 0d |  |
| SDR-ST-CON-P3-1620 | Install Steel Subframe Supports Part 2 | 2027-06-17 → 2027-06-23 (+6d) | 2027-07-07 → 2027-07-13 (+6d) | 5d → 0d | SDR-ST-CON-P3-1560, SDR-ST-MILS-1000, SDR-ST-CON-P1-5460, SDR-ST-CON-P1-3980, SDR-ST-CON-P1-4050, SDR-ST-CON-P1-5900 → SDR-ST-CON-P3-1560, SDR-ST-MILS-1000, SDR-ST-CON-P1-5460, SDR-ST-CON-P1-3980, SDR-ST-CON-P1-4050, SDR-ST-CON-P1-5900 FS-1d |
| SDR-ST-CON-P3-1690 | Install Steel Subframe Supports Part 3 | 2027-07-08 → 2027-07-14 (+6d) | 2027-07-22 → 2027-07-28 (+6d) | 5d → 0d |  |
| SDR-ST-CON-P3-1720 | Alignment & Leveling of Subframe Part 1 | 2027-07-08 → 2027-07-14 (+6d) | 2027-07-20 → 2027-07-26 (+6d) | 7d → 2d |  |
| SDR-ST-CON-P3-1830 | Fixing & Tightening of Subframe Connections Part 1 |  |  |  | SDR-ST-CON-P3-1770 SS, SDR-ST-MILS-1000 → SDR-ST-CON-P3-1770 SS-2d, SDR-ST-MILS-1000 FS-2d |
| SDR-ST-CON-P3-1770 | Alignment & Leveling of Subframe Part 2 | 2027-07-27 → 2027-07-29 (+2d) | 2027-08-04 → 2027-08-06 (+2d) | 2d → 0d | SDR-ST-CON-P3-1720, SDR-ST-MILS-1000, SDR-ST-CON-P1-5980, SDR-ST-CON-P3-1690 → SDR-ST-CON-P3-1720, SDR-ST-MILS-1000, SDR-ST-CON-P1-5980 FS-2d, SDR-ST-CON-P3-1690 |
| SDR-ST-CON-P3-1880 | Fixing & Tightening of Subframe Connections Part 2 | 2027-07-27 → 2027-07-29 (+2d) | 2027-08-03 → 2027-08-06 (+3d) | 3d → -0.48d |  |
| 2 | **Aluminum Cladding Installation** | 2027-06-17 → 2027-06-23 (+6d) | 2027-08-08 → 2027-07-31 (-8d) |  |  |
| SDR-ST-CON-P3-1610 | Install Aluminum Panels (4mm Thick Part 1 | 2027-06-17 → 2027-06-23 (+6d) | 2027-07-04 → 2027-07-10 (+6d) | 20d → 15d |  |
| SDR-ST-CON-P3-1660 | Install Aluminum Panels (4mm Thick Part 2 | 2027-06-21 → 2027-06-27 (+6d) | 2027-07-04 → 2027-07-10 (+6d) | 20d → 15d |  |
| SDR-ST-CON-P3-1700 | Install Aluminum Panels (4mm Thick Part 3 | 2027-07-05 → 2027-07-11 (+6d) | 2027-07-12 → 2027-07-18 (+6d) | 20d → 15d |  |
| SDR-ST-CON-P3-1730 | Fix Panels with Snap Hooks & Fasteners Part 1 | 2027-07-05 → 2027-07-11 (+6d) | 2027-07-11 → 2027-07-17 (+6d) | 20d → 15d |  |
| SDR-ST-CON-P3-1750 | Fix Panels with Snap Hooks & Fasteners Part 2 | 2027-07-13 → 2027-07-20 (+7d) | 2027-07-18 → 2027-07-26 (+8d) | 13d → 6.52d |  |
| SDR-ST-CON-P3-1810 | Install Drainage System Part 1 | 2027-07-13 → 2027-07-20 (+7d) | 2027-07-17 → 2027-07-25 (+8d) | 13d → 6.52d |  |
| SDR-ST-CON-P3-1820 | Install Drainage System Part 2 | 2027-07-13 → 2027-07-20 (+7d) | 2027-07-18 → 2027-07-25 (+7d) | 17.9d → 11.42d |  |
| SDR-ST-CON-P3-1850 | Adjustment & Alignment of Panels Part 1 | 2027-08-06 → 2027-07-20 (-17d) | 2027-08-08 → 2027-07-24 (-15d) | -2d → 12.52d | SDR-ST-CON-P3-1820 SS, SDR-ST-CON-P1-6000, SDR-ST-MILS-1000, SDR-ST-CON-P3-1730 → SDR-ST-CON-P3-1820 SS, SDR-ST-CON-P1-6000 SS, SDR-ST-MILS-1000, SDR-ST-CON-P3-1730 |
| SDR-ST-CON-P3-1860 | Adjustment & Alignment of Panels Part 2 | 2027-08-06 → 2027-07-20 (-17d) | 2027-08-08 → 2027-07-24 (-15d) | -2d → 12.52d |  |
| SDR-ST-CON-P3-1890 | Sealant & Finishing Works | 2027-08-02 → 2027-07-25 (-8d) | 2027-08-06 → 2027-07-31 (-6d) | 0d → 6.52d |  |
| 1 | **THERMAL & MOISTURE PROTECTION** | 2026-12-16 → 2026-12-23 (+7d) | 2027-02-03 → 2027-02-10 (+7d) |  |  |
| 1 | **Bituminous Sheet Waterproofing** | 2026-12-16 → 2026-12-23 (+7d) | 2027-02-03 → 2027-02-10 (+7d) |  |  |
| SDR-ST-CON-P3-1070 | Provide and lay 2 layers of waterproofing bitumenous membrane 4mm below footings | 2026-12-16 → 2026-12-23 (+7d) | 2026-12-21 → 2026-12-28 (+7d) |  |  |

| ID | Task | Start | Finish | Total float | Predecessors |
| --- | --- | --- | --- | --- | --- |
| SDR-ST-CON-P3-1170 | Provide and lay 2 layers of waterproofing bitumenous membrane 4mm in contact with soil | 2027-01-30 → 2027-02-06 (+7d) | 2027-02-03 → 2027-02-10 (+7d) | 24d → 18d |  |
| 4 | **Electrical Works** | 2027-01-09 → 2027-01-16 (+7d) | 2027-07-28 → 2027-08-05 (+8d) |  |  |
| 1 | **Low-Voltage Electrical Power Conductors and Cables** | 2027-05-01 → 2027-05-08 (+7d) | 2027-05-25 → 2027-06-01 (+7d) |  |  |
| SDR-ST-CON-P3-1510 | Installtion and test low voltage cable including pulling of cable 600/1000V . | 2027-05-01 → 2027-05-08 (+7d) | 2027-05-25 → 2027-06-01 (+7d) | 20d → 13d |  |
| 2 | **Ondoor Lighting Points** | 2027-05-26 → 2027-06-02 (+7d) | 2027-06-19 → 2027-06-26 (+7d) |  |  |
| SDR-ST-CON-P3-1580 | Install, test, and commission all necessary components for outdoor lighting points. | 2027-05-26 → 2027-06-02 (+7d) | 2027-06-19 → 2027-06-26 (+7d) | 20d → 13d |  |
| 3 | **Outdoor Lighting Fixtures** | 2027-05-27 → 2027-06-03 (+7d) | 2027-07-01 → 2027-07-08 (+7d) |  |  |
| SDR-ST-CON-P3-1630 | Install of L10 recessed in ceiling light, lenght1535mmxwidth75mmxhieght105mm, LED 53.2w Part 1 | 2027-05-27 → 2027-06-03 (+7d) | 2027-06-19 → 2027-06-26 (+7d) | 20d → 13d |  |
| SDR-ST-CON-P3-1650 | Install of L10 recessed in ceiling light, lenght1535mmxwidth75mmxhieght105mm, LED 53.2w Part 2 | 2027-06-09 → 2027-06-16 (+7d) | 2027-07-01 → 2027-07-08 (+7d) | 9d → 2d |  |
| 4 | **CCTV** | 2027-01-09 → 2027-01-16 (+7d) | 2027-07-28 → 2027-08-05 (+8d) |  |  |
| SDR-ST-CON-P3-1780 | Install of 5MP IP PoE Bullet Camera, outdoor mounted on canopy ceiling Part 1. | 2027-01-09 → 2027-01-16 (+7d) | 2027-01-21 → 2027-01-28 (+7d) | 150d → 143d |  |
| SDR-ST-CON-P3-1520 | Install of Handhole (600x600x730mm) | 2027-04-18 → 2027-05-04 (+16d) | 2027-04-26 → 2027-05-13 (+17d) | 27d → 11.52d |  |
| SDR-ST-CON-P3-1550 | Install of 2 core 9/125um indoor -outdoor central tube | 2027-04-26 → 2027-05-12 (+16d) | 2027-05-08 → 2027-05-31 (+23d) | 20d → 4.51d |  |
| SDR-ST-CON-P3-1570 | Install of 4 Port (2 duplex) LC/UPC OS2 fiber patch panel | 2027-05-09 → 2027-05-31 (+22d) | 2027-05-27 → 2027-06-14 (+18d) | 20d → 4.51d |  |
| SDR-ST-CON-P3-1600 | Install of Pole mounted Filed Equipment cabinet (FEC) , with fan and ventilation | 2027-06-01 → 2027-06-14 (+13d) | 2027-06-23 → 2027-07-07 (+14d) | 17d → 4.51d |  |
| SDR-ST-CON-P3-1670 | Install of 8 Port Industrial PoE Switch 10/1000BaseT | 2027-06-24 → 2027-07-07 (+13d) | 2027-07-10 → 2027-07-24 (+14d) | 17d → 4.51d |  |
| SDR-ST-CON-P3-1680 | Install of 1.2KVA Industrial type UPS located at FEC | 2027-06-24 → 2027-07-07 (+13d) | 2027-07-12 → 2027-07-26 (+14d) | 17d → 4.51d |  |
| SDR-ST-CON-P3-1740 | Install of UTP CAT6 Patch Cord , connect the industrial switch with the cameras | 2027-07-05 → 2027-07-12 (+7d) | 2027-07-12 → 2027-07-20 (+8d) | 8d → 0.52d |  |
| SDR-ST-CON-P3-1790 | Install of 5MP IP PoE Bullet Camera, outdoor mounted on canopy ceiling Part 2. | 2027-07-13 → 2027-07-20 (+7d) | 2027-07-28 → 2027-08-05 (+8d) | 8d → 0.52d |  |
| 5 | **Voice Evacuation System** | 2027-07-12 → 2027-07-13 (+1d) | 2027-07-20 → 2027-07-25 (+5d) |  |  |
| SDR-ST-CON-P3-1870 | install, test of Suspended ceiling outdoor projector speaker, bi-directional, 20w Part 2 | 2027-07-12 → 2027-07-13 (+1d) | 2027-07-20 → 2027-07-21 (+1d) | 2d → 0d | SDR-ST-CON-P3-1800 SS, SDR-ST-CON-P3-1780 SS, SDR-ST-CON-P3-1650 SS, SDR-ST-MILS-1000 SS, SDR-ST-PRO-MS-1150, SDR-ST-CON-P3-1650 → SDR-ST-CON-P3-1800 SS-2d, SDR-ST-CON-P3-1780 SS, SDR-ST-CON-P3-1650 SS, SDR-ST-MILS-1000 SS-2d, SDR-ST-PRO-MS-1150, SDR-ST-CON-P3-1650 |
| SDR-ST-CON-P3-1800 | install, test of Suspended ceiling outdoor projector speaker, bi-directional, 20w Part 1 | 2027-07-12 → 2027-07-15 (+3d) | 2027-07-20 → 2027-07-25 (+5d) | 2d → 0d | SDR-ST-CON-P3-1740 FF, SDR-ST-CON-P1-5910, SDR-ST-CON-P1-5980 SS, SDR-ST-CON-P1-5970 FF, SDR-ST-MILS-1000 SS, SDR-ST-PRO-MS-1150, SDR-ST-MILS-1000 → SDR-ST-CON-P3-1740 FF, SDR-ST-CON-P1-5910 FS-2d, SDR-ST-CON-P1-5980 SS, SDR-ST-CON-P1-5970 FF-2d, SDR-ST-MILS-1000 SS-2d, SDR-ST-PRO-MS-1150, SDR-ST-MILS-1000 FS-2d |
| 6 | **Testing and Comissioning** | 2027-03-01 → 2027-03-08 (+7d) | 2027-08-02 → 2027-08-05 (+3d) |  |  |
| 1 | **Civil Works** | 2027-05-30 → 2027-06-06 (+7d) | 2027-06-08 → 2027-06-15 (+7d) |  |  |
| SDR-ST-TC-1000 | Testing & Commissioning of road works | 2027-05-30 → 2027-06-06 (+7d) | 2027-06-08 → 2027-06-15 (+7d) | 9d → 2d |  |
| 2 | **Storm Water Drainage Network** | 2027-03-01 → 2027-03-08 (+7d) | 2027-03-22 → 2027-03-29 (+7d) |  |  |
| SDR-ST-TC-1010 | Testing & Commissioning of network work | 2027-03-01 → 2027-03-08 (+7d) | 2027-03-22 → 2027-03-29 (+7d) | 24d → 18d |  |
| 3 | **Sewerage Network** | 2027-03-29 → 2027-04-01 (+3d) | 2027-04-14 → 2027-04-18 (+4d) |  |  |
| SDR-ST-TC-1030 | Testing & Commissioning of Sewage Network | 2027-03-29 → 2027-04-01 (+3d) | 2027-04-14 → 2027-04-18 (+4d) | 19d → 16d |  |
| 5 | **Portable Water** | 2027-04-13 → 2027-04-20 (+7d) | 2027-04-29 → 2027-05-06 (+7d) |  |  |
| SDR-ST-TC-1020 | Testing & Commissioning of Potable Network | 2027-04-13 → 2027-04-20 (+7d) | 2027-04-29 → 2027-05-06 (+7d) | 15d → 9d |  |
| 6 | **Electrical Works** | 2027-08-02 → 2027-07-25 (-8d) | 2027-08-02 → 2027-07-26 (-7d) |  |  |
| SDR-ST-TC-1050 | Testing & Commissioning of Electrical Network | 2027-08-02 → 2027-07-25 (-8d) | 2027-08-02 → 2027-07-26 (-7d) | 4d → 10.52d |  |
| 8 | **CCTV Works** | 2027-07-13 → 2027-07-20 (+7d) | 2027-07-28 → 2027-08-05 (+8d) |  |  |
| SDR-ST-TC-1040 | Testing & Commissioning of medium voltage works | 2027-07-13 → 2027-07-20 (+7d) | 2027-07-28 → 2027-08-05 (+8d) | 8d → 1.52d |  |
| 7 | **Close Out** | 2027-03-23 → 2027-04-08 (+16d) | 2027-08-05 → 2027-08-07 (+2d) |  |  |
| 1 | **As Built Drawings** | 2027-03-23 → 2027-04-08 (+16d) | 2027-07-19 → 2027-07-26 (+7d) |  |  |
| 1 | **Civil** | 2027-05-29 → 2027-06-05 (+7d) | 2027-06-08 → 2027-06-15 (+7d) |  |  |
| SDR-ST-CO-1000 | Civil As-Built Drawing Submission | 2027-05-29 → 2027-06-05 (+7d) | 2027-06-02 → 2027-06-09 (+7d) | 12d → 6d |  |
| SDR-ST-CO-1010 | Civil As-Built Drawing Approvals | 2027-06-03 → 2027-06-10 (+7d) | 2027-06-08 → 2027-06-15 (+7d) | 12d → 6d |  |
| 2 | **Mechanical** | 2027-03-23 → 2027-04-08 (+16d) | 2027-04-25 → 2027-05-12 (+17d) |  |  |
| SDR-ST-CO-1020 | Mechanical As-Built Drawing Submission | 2027-03-23 → 2027-04-08 (+16d) | 2027-03-30 → 2027-04-17 (+18d) | 20d → 4.51d |  |
| SDR-ST-CO-1030 | Mechanical As-Built Drawing Approvals | 2027-04-18 → 2027-05-04 (+16d) | 2027-04-25 → 2027-05-12 (+17d) | 20d → 4.51d |  |
| 3 | **Electrical** | 2027-06-27 → 2027-07-04 (+7d) | 2027-07-19 → 2027-07-26 (+7d) |  |  |
| SDR-ST-CO-1040 | Electrical As-Built Drawing Submission | 2027-06-27 → 2027-07-04 (+7d) | 2027-07-06 → 2027-07-13 (+7d) | 15d → 9d |  |
| SDR-ST-CO-1100 | Electrical As-Built Drawing Approvals | 2027-07-08 → 2027-07-15 (+7d) | 2027-07-19 → 2027-07-26 (+7d) | 15d → 9d |  |
| 2 | **Training and Manuals** | 2027-07-13 → 2027-07-14 (+1d) | 2027-08-04 → 2027-08-05 (+1d) |  |  |
| SDR-ST-CO-1050 | Training and Manuals | 2027-07-13 → 2027-07-14 (+1d) | 2027-08-04 → 2027-08-05 (+1d) | 2d → 0d | SDR-ST-CON-P3-1870 SS+1d, SDR-ST-CON-P3-1630 SS, SDR-ST-CON-P3-1630 → SDR-ST-CON-P3-1870 SS+1d, SDR-ST-CON-P3-1630 SS+2d, SDR-ST-CON-P3-1630 |
| 3 | **Demobilize Manpower** | 2027-07-13 → 2027-07-14 (+1d) | 2027-08-04 → 2027-08-05 (+1d) |  |  |
| SDR-ST-CO-1060 | Manpower Demobilize | 2027-07-13 → 2027-07-14 (+1d) | 2027-08-04 → 2027-08-05 (+1d) | 2d → 0d | SDR-ST-CO-1050 SS, SDR-ST-CO-1020 SS, SDR-ST-CO-1020 → SDR-ST-CO-1050 SS, SDR-ST-CO-1020 SS+2d, SDR-ST-CO-1020 |
| 4 | **Demobilize Equipment** | 2027-07-13 → 2027-07-14 (+1d) | 2027-08-04 → 2027-08-05 (+1d) |  |  |
| SDR-ST-CO-1070 | Equipments Demobilize | 2027-07-13 → 2027-07-14 (+1d) | 2027-08-04 → 2027-08-05 (+1d) | 2d → 1d |  |
| 5 | **Removal of Site Offices and Structures** | 2027-07-13 → 2027-07-14 (+1d) | 2027-08-04 → 2027-08-05 (+1d) |  |  |
| SDR-ST-CO-1090 | Site Office Removal | 2027-07-13 → 2027-07-14 (+1d) | 2027-08-04 → 2027-08-05 (+1d) | 2d → 1d |  |
| 6 | **Handover** | 2027-08-05 → 2027-08-06 (+1d) | 2027-08-05 → 2027-08-07 (+2d) |  |  |
| SDR-ST-CO-1080 | Project Handover | 2027-08-05 → 2027-08-06 (+1d) | 2027-08-05 → 2027-08-07 (+2d) | 1d → -0.48d | SDR-ST-CO-1070 SS, SDR-ST-CO-1090 SS, SDR-ST-CON-P3-1890 SS, SDR-ST-CON-P3-1880 FF, SDR-ST-CON-P3-1840, SDR-ST-CON-P1-6030 SS, SDR-ST-CON-P1-6040 SS, SDR-ST-CON-P1-6000 SS, SDR-ST-CO-1100 FF+1d, SDR-ST-TC-1050 SS, SDR-ST-MILS-1100, SDR-ST-MILS-1120 FF, SDR-ST-TC-1000 FF, SDR-ST-TC-1040 FF, SDR-ST-CON-P1-5980, SDR-ST-CON-P1-6040, SDR-ST-CO-1090 FF, SDR-ST-CON-P1-6030 → SDR-ST-CO-1070 SS, SDR-ST-CO-1090 SS, SDR-ST-CON-P3-1890 SS, SDR-ST-CON-P3-1880 FF, SDR-ST-CON-P3-1840, SDR-ST-CON-P1-6030 SS, SDR-ST-CON-P1-6040 SS, SDR-ST-CON-P1-6000 SS, SDR-ST-CO-1100 FF+1d, SDR-ST-TC-1050 SS, SDR-ST-MILS-1100, SDR-ST-MILS-1120 FF+1d, SDR-ST-TC-1000 FF, SDR-ST-TC-1040 FF, SDR-ST-CON-P1-5980, SDR-ST-CON-P1-6040, SDR-ST-CO-1090 FF, SDR-ST-CON-P1-6030 |

## Version 6 (data date 2026-11-01, saved 2026-11-04, file Sudair SAR Railway Update 4 Nov 26-.xer)

Note of the change: Renumber project folders 01–23 in order (after removing projects 12 and 25)

Last finish 2027-08-07 → 2027-08-06 (-1d). Complete tasks 247 → 258.

Changed:

| ID | Task | Start | Finish | Complete | Total float | Predecessors |
| --- | --- | --- | --- | --- | --- | --- |
| 1 | **Milestone** | 2026-02-05 → 2026-04-07 (+61d) | 2027-08-07 → 2027-08-06 (-1d) |  |  |  |
| SDR-ST-MILS-1070 | Completion of road and paving works | 2027-01-27 → 2027-02-02 (+6d) | 2027-01-27 → 2027-02-02 (+6d) |  | 0d → 6d |  |
| SDR-ST-MILS-1100 | Completion of site and platform works | 2027-04-17 → 2027-04-22 (+5d) | 2027-04-17 → 2027-04-22 (+5d) |  | 90d → 85d |  |
| SDR-ST-MILS-1140 | Project Finish | 2027-08-07 → 2027-08-06 (-1d) | 2027-08-07 → 2027-08-06 (-1d) |  | -0.48d → 0d |  |
| 3 | **Contractual Milestone** | 2026-02-05 → 2026-05-06 (+90d) |  |  |  |  |
| SDR-ST-MILS-1040 | Submission and approval of plans and materials Finish Milestone | 2026-02-05 A → 2026-05-06 A (+90d) | 2026-02-05 A → 2026-05-06 A (+90d) |  |  |  |
| SDR-ST-MILS-1080 | Completion of road works | 2027-01-28 → 2027-02-03 (+6d) | 2027-01-28 → 2027-02-03 (+6d) |  | 112d → 113d |  |
| SDR-ST-MILS-1060 | Completion of medium voltage works | 2027-05-26 → 2027-06-01 (+6d) | 2027-05-26 → 2027-06-01 (+6d) |  | 6d → 7d |  |
| 2 | **Phases Milestone** | 2026-10-27 → 2026-11-02 (+6d) | 2027-08-05 → 2027-08-06 (+1d) |  |  |  |
| SDR-ST-MILS-1050 | Engineering Phase Finish Milestone | 2026-10-27 → 2026-11-02 (+6d) | 2026-10-27 → 2026-11-02 (+6d) |  |  |  |
| SDR-ST-MILS-1090 | Procurment Phase Finish Milestone | 2027-03-16 → 2027-03-21 (+5d) | 2027-03-16 → 2027-03-21 (+5d) |  | 53d → 54d |  |
| SDR-ST-MILS-1110 | Construction Phase Finish Milestone | 2027-08-05 → 2027-08-06 (+1d) | 2027-08-05 → 2027-08-06 (+1d) |  | 1.52d → 0.52d |  |
| 3 | **Engineering** |  | 2026-11-04 → 2026-11-10 (+6d) |  |  |  |
| 5 | **Shop Drawings Stage** |  | 2026-10-27 → 2026-11-02 (+6d) |  |  |  |
| 4 | **Approvals** |  | 2026-10-27 → 2026-11-02 (+6d) |  |  |  |
| 9 | **Electrical** |  | 2026-10-27 → 2026-11-02 (+6d) |  |  |  |
| SDR-ST-ENG-AP-1130 | Medium Voltage Network Approval | 2026-10-26 → 2026-11-01 (+6d) | 2026-10-27 → 2026-11-02 (+6d) |  |  |  |
| SDR-ST-ENG-AP-1140 | Standard Details Medium Voltage Approval | 2026-10-26 → 2026-11-01 (+6d) | 2026-10-27 → 2026-11-02 (+6d) |  |  |  |
| 6 | **Materials** |  | 2026-11-04 → 2026-11-10 (+6d) |  |  |  |
| 5 | **Materials Submission** |  | 2026-11-02 → 2026-11-08 (+6d) |  |  |  |
| 1 | **Long Lead Items** |  | 2026-11-02 → 2026-11-08 (+6d) |  |  |  |
| 3 | **Electrical** |  | 2026-11-02 → 2026-11-08 (+6d) |  |  |  |
| SDR-ST-PRO-S-1110 | MEDIUM VOLTAGE CABLES DUCT BANKS | 2026-10-26 → 2026-11-01 (+6d) | 2026-11-02 → 2026-11-08 (+6d) |  | 62d → 63d |  |
| SDR-ST-PRO-S-1120 | MEDIUM VOLTAGE CABLES | 2026-10-26 → 2026-11-01 (+6d) | 2026-11-02 → 2026-11-08 (+6d) |  |  |  |
| SDR-ST-PRO-S-1130 | SUB-STATION | 2026-10-26 → 2026-11-01 (+6d) | 2026-11-02 → 2026-11-08 (+6d) |  |  |  |
| 6 | **Materials Approval** |  | 2026-11-04 → 2026-11-10 (+6d) |  |  |  |
| 2 | **Short Lead Items** |  | 2026-11-01 → 2026-11-07 (+6d) |  |  |  |
| 3 | **Electrical** |  | 2026-11-01 → 2026-11-07 (+6d) |  |  |  |
| SDR-ST-PRO-A-1170 | CCTV :5MP IP PoE Bullet Camera |  | 2026-11-01 → 2026-11-07 (+6d) |  |  |  |
| SDR-ST-PRO-A-1180 | CCTV :Pole mounted Filed Equipment cabinet (FE |  | 2026-11-01 → 2026-11-07 (+6d) |  |  |  |
| 1 | **Long Lead Items** |  | 2026-11-04 → 2026-11-10 (+6d) |  |  |  |
| 3 | **Electrical** |  | 2026-11-04 → 2026-11-10 (+6d) |  |  |  |
| SDR-ST-PRO-A-1200 | MEDIUM VOLTAGE CABLES DUCT BANKS | 2026-11-03 → 2026-11-09 (+6d) | 2026-11-04 → 2026-11-10 (+6d) |  | 62d → 63d |  |
| SDR-ST-PRO-A-1210 | MEDIUM VOLTAGE CABLES | 2026-11-03 → 2026-11-09 (+6d) | 2026-11-03 → 2026-11-09 (+6d) |  |  |  |
| SDR-ST-PRO-A-1220 | SUB-STATION | 2026-11-03 → 2026-11-09 (+6d) | 2026-11-04 → 2026-11-10 (+6d) |  |  |  |
| 4 | **Procurement** |  | 2027-03-16 → 2027-03-21 (+5d) |  |  |  |
| 5 | **Purchase Order** |  | 2026-11-24 → 2026-11-30 (+6d) |  |  |  |
| 4 | **Short Lead Items** |  | 2026-11-12 → 2026-11-18 (+6d) |  |  |  |
| 1 | **Civil** |  | 2026-11-10 → 2026-11-14 (+4d) |  |  |  |
| SDR-ST-PRO-PO-1260 | Steel Bars |  | 2026-10-26 → 2026-11-01 (+6d) | 25% → 50% | 31d → 32d |  |
| SDR-ST-PRO-PO-1040 | Interlock | 2026-10-26 → 2026-10-25 A (-1d) | 2026-11-08 → 2026-11-14 (+6d) | 0% → 80% | 28d → 29d |  |
| 3 | **Electrical** |  | 2026-11-12 → 2026-11-18 (+6d) |  |  |  |
| SDR-ST-PRO-PO-1070 | STREET LIGHTING FEEDER Panel |  | 2026-10-26 → 2026-11-01 (+6d) |  | 22d → 23d |  |
| SDR-ST-PRO-PO-1130 | LOW VOLTAGE DISTRIBUTION Panel |  | 2026-10-26 → 2026-11-01 (+6d) |  |  |  |
| SDR-ST-PRO-PO-1110 | STREET LIGHTING CABLES |  | 2026-10-26 → 2026-11-01 (+6d) | 50% → 70% | 85d → 86d |  |
| SDR-ST-PRO-PO-1050 | CCTV :Pole mounted Filed Equipment cabinet | 2026-11-02 → 2026-10-29 A (-4d) | 2026-11-12 → 2026-11-18 (+6d) | 0% → 25% |  |  |
| SDR-ST-PRO-PO-1230 | CCTV :5MP IP PoE Bullet Camera | 2026-11-02 → 2026-10-29 A (-4d) | 2026-11-12 → 2026-11-18 (+6d) | 0% → 25% |  |  |
| SDR-ST-PRO-PO-1020 | Drawpits | 2026-10-26 → 2026-10-31 A (+5d) | 2026-11-05 → 2026-11-11 (+6d) | 0% → 25% | 24d → 25d |  |
| SDR-ST-PRO-PO-1220 | VOICE EVACUATION SYSTEM | 2026-10-26 → 2026-10-31 A (+5d) | 2026-11-05 → 2026-11-11 (+6d) | 0% → 25% |  |  |
| 2 | **Mechanical** |  | 2026-11-05 → 2026-11-11 (+6d) |  |  |  |
| SDR-ST-PRO-PO-1000 | WARNING TAPE |  |  |  |  | SDR-ST-PRO-A-1080, SDR-ST-MILS-1020, SDR-ST-PREL-1100, SDR-ST-PREL-1090, SDR-ST-PREL-1080, SDR-ST-PREL-1060, SDR-ST-PREL-1070, SDR-ST-MILS-1000 SS+76d → SDR-ST-PRO-A-1080, SDR-ST-MILS-1020, SDR-ST-PREL-1100, SDR-ST-PREL-1090, SDR-ST-PREL-1080, SDR-ST-PREL-1060, SDR-ST-PREL-1070, SDR-ST-MILS-1000 SS+76d, SDR-ST-MILS-1030, SDR-ST-MILS-1040 |
| SDR-ST-PRO-PO-1140 | MANHOLE, CATCH BASIN & VALVE BOX COVER | 2026-10-26 → 2026-10-27 A (+1d) | 2026-11-05 → 2026-11-11 (+6d) | 0% → 50% | 66d → 65d |  |
| SDR-ST-PRO-PO-1090 | GI GOOSENECK & VENT | 2026-10-26 → 2026-10-31 A (+5d) | 2026-11-05 → 2026-11-11 (+6d) | 0% → 25% |  |  |
| 5 | **Long Lead Items** |  | 2026-11-24 → 2026-11-30 (+6d) |  |  |  |
| 1 | **Civil** | 2026-10-26 → 2026-11-01 (+6d) | 2026-11-24 → 2026-11-30 (+6d) |  |  |  |
| SDR-ST-PRO-PO-1150 | Metal railing for platform | 2026-10-26 → 2026-11-01 (+6d) | 2026-11-24 → 2026-11-30 (+6d) |  |  |  |
| SDR-ST-PRO-PO-1240 | Canopy | 2026-10-26 → 2026-11-01 (+6d) | 2026-11-10 → 2026-11-16 (+6d) |  | 30d → 31d |  |
| 3 | **Electrical** |  | 2026-11-21 → 2026-11-26 (+5d) |  |  |  |
| SDR-ST-PRO-PO-1200 | LIGHTING POLES |  | 2026-10-26 → 2026-11-01 (+6d) | 50% → 60% | 62d → 63d |  |
| SDR-ST-PRO-PO-1180 | Outdoor Lighting Fixtures | 2026-10-26 → 2026-11-01 (+6d) | 2026-11-10 → 2026-11-16 (+6d) |  |  |  |
| SDR-ST-PRO-PO-1210 | STREET LIGHTING LUMINAIRE | 2026-10-26 → 2026-11-01 (+6d) | 2026-11-10 → 2026-11-16 (+6d) |  | 24d → 25d |  |
| SDR-ST-PRO-PO-1170 | MEDIUM VOLTAGE CABLES | 2026-11-04 → 2026-11-10 (+6d) | 2026-11-21 → 2026-11-26 (+5d) |  |  |  |
| SDR-ST-PRO-PO-1160 | MEDIUM VOLTAGE CABLES DUCT BANKS | 2026-11-05 → 2026-11-11 (+6d) | 2026-11-21 → 2026-11-26 (+5d) |  | 62d → 63d |  |
| SDR-ST-PRO-PO-1250 | SUB-STATION | 2026-11-05 → 2026-11-11 (+6d) | 2026-11-21 → 2026-11-26 (+5d) |  |  |  |
| 2 | **Mechanical** | 2026-10-26 → 2026-11-01 (+6d) | 2026-11-10 → 2026-11-16 (+6d) |  |  |  |
| SDR-ST-PRO-PO-1190 | WASHOUT & AIR VALVE, GATE VALVE, BUTTERFLY VALVE | 2026-10-26 → 2026-11-01 (+6d) | 2026-11-10 → 2026-11-16 (+6d) |  | 61d → 64d |  |
| 6 | **Delivery to Site** |  | 2027-03-07 → 2027-03-17 (+10d) |  |  |  |
| 2 | **Short Lead Items Delivery** |  | 2027-01-23 → 2027-01-29 (+6d) |  |  |  |
| 1 | **Civil** |  | 2027-01-23 → 2027-01-29 (+6d) |  |  |  |
| SDR-ST-PRO-DL-1030 | Waterproofing (Thermal & moisture Protection) |  | 2026-12-24 → 2026-12-30 (+6d) | 75% → 85% | 60d → 63d |  |

| ID | Task | Start | Finish | Complete | Total float |
| --- | --- | --- | --- | --- | --- |
| SDR-ST-PRO-DL-1260 | Steel Bars |  | 2026-12-24 → 2026-12-30 (+6d) | 25% → 30% | 36d → 37d |
| SDR-ST-PRO-DL-1270 | Asphalt |  | 2027-01-23 → 2027-01-29 (+6d) | 10% → 15% | 0d → 3d |
| SDR-ST-PRO-DL-1060 | Kerbstone | 2026-10-26 → 2026-10-25 A (-1d) | 2026-12-24 → 2026-12-30 (+6d) | 0% → 25% | 3d → 2d |
| SDR-ST-PRO-DL-1040 | Interlock | 2026-11-16 → 2026-10-31 A (-16d) | 2027-01-06 → 2027-01-12 (+6d) | 0% → 15% | 33d → 34d |
| 3 | **Electrical** |  | 2027-01-11 → 2027-01-17 (+6d) |  |  |
| SDR-ST-PRO-DL-1100 | LOW VOLTAGE CABLES |  | 2026-12-15 → 2026-12-21 (+6d) | 25% → 50% | 105d → 108d |
| SDR-ST-PRO-DL-1010 | ROAD CROSSING DUCTS Ø110mm | 2026-10-26 → 2026-10-25 A (-1d) | 2026-11-23 → 2026-11-29 (+6d) | 0% → 25% | 44.9d → 45.9d |
| SDR-ST-PRO-DL-1070 | STREET LIGHTING FEEDER Panel | 2026-11-02 → 2026-10-25 A (-8d) | 2026-12-11 → 2026-12-17 (+6d) | 0% → 15% | 25d → 26d |
| SDR-ST-PRO-DL-1110 | STREET LIGHTING CABLES | 2026-10-29 → 2026-10-25 A (-4d) | 2026-12-02 → 2026-12-08 (+6d) | 0% → 15% | 99d → 101d |
| SDR-ST-PRO-DL-1130 | LOW VOLTAGE DISTRIBUTION Panel | 2026-10-29 → 2026-10-25 A (-4d) | 2026-12-07 → 2026-12-13 (+6d) | 0% → 15% |  |
| SDR-ST-PRO-DL-1020 | Drawpits | 2026-10-26 → 2026-11-01 (+6d) | 2026-11-24 → 2026-11-30 (+6d) |  | 10d → 11d |
| SDR-ST-PRO-DL-1200 | VOICE EVACUATION SYSTEM | 2026-11-06 → 2026-11-12 (+6d) | 2027-01-04 → 2027-01-10 (+6d) |  |  |
| SDR-ST-PRO-DL-1050 | CCTV :Pole mounted Filed Equipment cabinet | 2026-11-13 → 2026-11-19 (+6d) | 2027-01-11 → 2027-01-17 (+6d) |  |  |
| SDR-ST-PRO-DL-1230 | CCTV :5MP IP PoE Bullet Camera | 2026-11-13 → 2026-11-19 (+6d) | 2027-01-11 → 2027-01-17 (+6d) |  |  |
| 2 | **Mechanical** |  | 2027-01-03 → 2027-01-09 (+6d) |  |  |
| SDR-ST-PRO-DL-2000 | MANHOLE, CATCH BASIN & VALVE BOX COVER | 2026-10-26 → 2026-10-31 A (+5d) | 2027-01-03 → 2027-01-09 (+6d) | 0% → 15% | 16d → 15d |
| SDR-ST-PRO-DL-1090 | GI GOOSENECK & VENT | 2026-11-06 → 2026-11-12 (+6d) | 2027-01-02 → 2027-01-08 (+6d) |  |  |
| 5 | **Long Lead Items Delivery** | 2026-10-26 → 2026-11-01 (+6d) | 2027-03-07 → 2027-03-17 (+10d) |  |  |
| 1 | **Civil** | 2026-11-23 → 2026-11-29 (+6d) | 2027-03-02 → 2027-03-08 (+6d) |  |  |
| SDR-ST-PRO-DL-1240 | Canopy | 2026-11-23 → 2026-11-29 (+6d) | 2027-01-21 → 2027-01-27 (+6d) |  | 35d → 36d |
| SDR-ST-PRO-DL-1150 | Metal railing for platform | 2026-11-25 → 2026-12-01 (+6d) | 2027-03-02 → 2027-03-08 (+6d) |  |  |
| 3 | **Electrical** | 2026-10-26 → 2026-11-01 (+6d) | 2027-03-07 → 2027-03-17 (+10d) |  |  |
| SDR-ST-PRO-DL-1210 | LIGHTING POLES | 2026-10-26 → 2026-11-01 (+6d) | 2027-02-07 → 2027-02-13 (+6d) |  | 72d → 73d |
| SDR-ST-PRO-DL-1180 | Outdoor Lighting Fixtures | 2026-11-11 → 2026-11-17 (+6d) | 2027-01-29 → 2027-02-04 (+6d) |  |  |
| SDR-ST-PRO-DL-1220 | STREET LIGHTING LUMINAIRE | 2026-11-11 → 2026-11-17 (+6d) | 2027-01-29 → 2027-02-04 (+6d) |  | 28d → 29d |
| SDR-ST-PRO-DL-1170 | MEDIUM VOLTAGE CABLES | 2026-11-21 → 2026-11-26 (+5d) | 2027-03-07 → 2027-03-17 (+10d) |  | 21.2d → 22.2d |
| SDR-ST-PRO-DL-1160 | MEDIUM VOLTAGE CABLES DUCT BANKS | 2026-11-22 → 2026-11-27 (+5d) | 2027-03-07 → 2027-03-17 (+10d) |  | 72d → 74d |
| SDR-ST-PRO-DL-1250 | SUB-STATION | 2026-11-22 → 2026-11-27 (+5d) | 2027-03-07 → 2027-03-17 (+10d) |  | 63d → 64d |
| 2 | **Mechanical** | 2026-10-30 → 2026-11-05 (+6d) | 2027-01-27 → 2027-02-02 (+6d) |  |  |
| SDR-ST-PRO-DL-1190 | WASHOUT & AIR VALVE, GATE VALVE, BUTTERFLY VALVE | 2026-10-30 → 2026-11-05 (+6d) | 2027-01-27 → 2027-02-02 (+6d) |  | 72d → 75d |
| 4 | **Materials Staging Time** | 2026-10-26 → 2026-11-01 (+6d) | 2027-03-16 → 2027-03-21 (+5d) |  |  |
| 4 | **Short Lead Items Delivery** | 2026-10-26 → 2026-11-01 (+6d) | 2027-01-23 → 2027-01-29 (+6d) |  |  |
| 1 | **Civil** | 2026-10-26 → 2026-11-01 (+6d) | 2027-01-23 → 2027-01-29 (+6d) |  |  |
| SDR-ST-PRO-MS-1260 | Steel Bars | 2026-10-26 → 2026-11-01 (+6d) | 2026-10-29 → 2026-11-04 (+6d) |  | 36d → 37d |
| SDR-ST-PRO-MS-1100 | Kerbstone | 2026-12-21 → 2026-12-27 (+6d) | 2026-12-24 → 2026-12-30 (+6d) |  | 3d → 2d |
| SDR-ST-PRO-MS-1070 | Waterproofing (Thermal & moisture Protection) | 2026-12-25 → 2026-12-31 (+6d) | 2026-12-28 → 2027-01-03 (+6d) |  | 60d → 63d |
| SDR-ST-PRO-MS-1080 | Interlock | 2027-01-07 → 2027-01-13 (+6d) | 2027-01-10 → 2027-01-16 (+6d) |  | 33d → 34d |
| SDR-ST-PRO-MS-1270 | Asphalt | 2027-01-20 → 2027-01-26 (+6d) | 2027-01-23 → 2027-01-29 (+6d) |  | 0d → 3d |
| 3 | **Electrical** | 2026-11-21 → 2026-11-27 (+6d) | 2027-01-15 → 2027-01-21 (+6d) |  |  |
| SDR-ST-PRO-MS-1010 | Drawpits | 2026-11-21 → 2026-11-27 (+6d) | 2026-11-24 → 2026-11-30 (+6d) |  | 10d → 11d |
| SDR-ST-PRO-MS-1000 | ROAD CROSSING DUCTS Ø110mm | 2026-11-24 → 2026-11-30 (+6d) | 2026-11-27 → 2026-12-03 (+6d) |  | 44.9d → 45.9d |
| SDR-ST-PRO-MS-1030 | STREET LIGHTING CABLES | 2026-12-03 → 2026-12-09 (+6d) | 2026-12-06 → 2026-12-12 (+6d) |  | 99d → 101d |
| SDR-ST-PRO-MS-1040 | LOW VOLTAGE DISTRIBUTION Panel | 2026-12-08 → 2026-12-14 (+6d) | 2026-12-11 → 2026-12-17 (+6d) |  |  |
| SDR-ST-PRO-MS-1020 | STREET LIGHTING FEEDER Panel | 2026-12-12 → 2026-12-18 (+6d) | 2026-12-15 → 2026-12-21 (+6d) |  | 25d → 26d |
| SDR-ST-PRO-MS-1120 | LOW VOLTAGE CABLES | 2026-12-16 → 2026-12-22 (+6d) | 2026-12-19 → 2026-12-25 (+6d) |  | 105d → 108d |
| SDR-ST-PRO-MS-1150 | VOICE EVACUATION SYSTEM | 2027-01-05 → 2027-01-11 (+6d) | 2027-01-08 → 2027-01-14 (+6d) |  |  |
| SDR-ST-PRO-MS-1090 | CCTV :Pole mounted Filed Equipment cabinet | 2027-01-12 → 2027-01-18 (+6d) | 2027-01-15 → 2027-01-21 (+6d) |  |  |
| SDR-ST-PRO-MS-1160 | CCTV :5MP IP PoE Bullet Camera | 2027-01-12 → 2027-01-18 (+6d) | 2027-01-15 → 2027-01-21 (+6d) |  |  |
| 2 | **Mechanical** | 2026-10-26 → 2026-11-01 (+6d) | 2027-01-06 → 2027-01-12 (+6d) |  |  |
| SDR-ST-PRO-MS-1050 | WARNING TAPE | 2026-10-26 → 2026-11-01 (+6d) | 2026-10-29 → 2026-11-04 (+6d) |  | 71d → 72d |
| SDR-ST-PRO-MS-1110 | HDPE PIPES & FITTINGS | 2026-10-26 → 2026-11-01 (+6d) | 2026-10-29 → 2026-11-04 (+6d) |  | 60d → 61d |
| SDR-ST-PRO-MS-1130 | CONCRETE PIPES AND FITTINGS | 2026-10-26 → 2026-11-01 (+6d) | 2026-10-29 → 2026-11-04 (+6d) |  | 46d → 47d |
| SDR-ST-PRO-MS-1140 | MANHOLE, CATCH BASIN & VALVE BOX COVER | 2026-12-31 → 2027-01-06 (+6d) | 2027-01-03 → 2027-01-09 (+6d) |  | 19d → 17d |
| SDR-ST-PRO-MS-1060 | GI GOOSENECK & VENT | 2027-01-03 → 2027-01-09 (+6d) | 2027-01-06 → 2027-01-12 (+6d) |  |  |
| 5 | **Long Lead Items Delivery** | 2026-10-26 → 2026-11-01 (+6d) | 2027-03-16 → 2027-03-21 (+5d) |  |  |
| 1 | **Civil** | 2027-01-22 → 2027-01-28 (+6d) | 2027-03-06 → 2027-03-17 (+11d) |  |  |
| SDR-ST-PRO-MS-1240 | Canopy | 2027-01-22 → 2027-01-28 (+6d) | 2027-01-25 → 2027-01-31 (+6d) |  | 35d → 36d |
| SDR-ST-PRO-MS-1200 | Metal railing for platform | 2027-03-03 → 2027-03-14 (+11d) | 2027-03-06 → 2027-03-17 (+11d) |  |  |
| 3 | **Electrical** | 2026-10-26 → 2026-11-01 (+6d) | 2027-03-16 → 2027-03-21 (+5d) |  |  |
| SDR-ST-PRO-MS-1230 | LIGHTING POLES | 2026-10-26 → 2026-11-01 (+6d) | 2026-10-29 → 2026-11-04 (+6d) |  | 72d → 73d |
| SDR-ST-PRO-MS-1210 | MEDIUM VOLTAGE CABLES DUCT BANKS | 2026-12-25 → 2026-12-31 (+6d) | 2026-12-28 → 2027-01-03 (+6d) |  | 39d → 40d |
| SDR-ST-PRO-MS-1180 | STREET LIGHTING LUMINAIRE | 2027-01-30 → 2027-02-05 (+6d) | 2027-02-02 → 2027-02-08 (+6d) |  | 28d → 29d |
| SDR-ST-PRO-MS-1170 | Outdoor Lighting Fixtures | 2027-02-07 → 2027-02-13 (+6d) | 2027-02-10 → 2027-02-16 (+6d) |  |  |
| SDR-ST-PRO-MS-1220 | MEDIUM VOLTAGE CABLES | 2027-03-07 → 2027-03-17 (+10d) | 2027-03-16 → 2027-03-21 (+5d) |  | 21.2d → 22.2d |
| SDR-ST-PRO-MS-1250 | SUB-STATION | 2027-03-08 → 2027-03-18 (+10d) | 2027-03-16 → 2027-03-21 (+5d) |  | 63d → 64d |
| 2 | **Mechanical** | 2026-10-30 → 2026-11-05 (+6d) | 2026-11-02 → 2026-11-08 (+6d) |  |  |
| SDR-ST-PRO-MS-1190 | WASHOUT & AIR VALVE, GATE VALVE, BUTTERFLY VALVE | 2026-10-30 → 2026-11-05 (+6d) | 2026-11-02 → 2026-11-08 (+6d) |  | 72d → 75d |
| 15 | **ROAD WORKS 1** |  | 2027-06-07 → 2027-06-13 (+6d) |  |  |
| 8 | **ROAD - 01** |  | 2027-06-01 → 2027-06-07 (+6d) |  |  |
| 6 | **ROAD-01 From 0 to 470 m (3)** |  | 2027-05-25 → 2027-05-31 (+6d) |  |  |

| ID | Task | Start | Finish | Complete | Total float | Predecessors | Other |
| --- | --- | --- | --- | --- | --- | --- | --- |
| SDR-ST-CON-P1-1000 | Cleaning and removal of organic materials Part 1 |  |  |  |  | SDR-ST-MOBL-1060 → SDR-ST-MOBL-1060, SDR-ST-MILS-1030, SDR-ST-MILS-1040 |  |
| 3 | **Asphalt Works** |  | 2027-02-24 → 2027-03-02 (+6d) |  |  |  |  |
| 1 | **Bituminous base course** |  | 2027-01-27 → 2027-02-02 (+6d) |  |  |  |  |
| SDR-ST-CON-P1-4410 | Bituminous base course (Grading I - Class A 1st Layer with MC-01 |  | 2026-11-01 → 2026-11-07 (+6d) |  | 71d → 74d |  |  |
| SDR-ST-CON-P1-4770 | Bituminous base course (Grading I - Class A 2nd layer with RC-02 | 2027-01-24 → 2027-01-30 (+6d) | 2027-01-27 → 2027-02-02 (+6d) |  | 0d → 3d |  |  |
| 2 | **Bituminous concrete wearing course** | 2027-01-31 → 2027-02-06 (+6d) | 2027-02-24 → 2027-03-02 (+6d) |  |  |  |  |
| SDR-ST-CON-P1-5110 | Bituminous concrete wearing course, (Grading I - Class A), including tack coat (RC2) | 2027-01-31 → 2027-02-06 (+6d) | 2027-02-24 → 2027-03-02 (+6d) |  | 0d → 3d |  |  |
| 4 | **Kerbstone Installation** | 2026-10-26 → 2026-11-01 (+6d) | 2027-03-08 → 2027-03-18 (+10d) |  |  |  |  |
| SDR-ST-CON-P1-3860 | Precast Concrete Curbstone, Type A2 | 2026-10-26 → 2026-11-01 (+6d) | 2026-11-18 → 2026-11-24 (+6d) |  | 63d → 66d |  |  |
| SDR-ST-CON-P1-4530 | Precast Concrete Curbstone, Type D | 2027-02-25 → 2027-03-03 (+6d) | 2027-03-08 → 2027-03-18 (+10d) |  | 0d → 3d |  |  |
| 5 | **Interlock Installation** | 2027-03-15 → 2027-03-21 (+6d) | 2027-04-29 → 2027-05-05 (+6d) |  |  |  |  |
| SDR-ST-CON-P1-4100 | Interlock Installation Part 1 | 2027-03-15 → 2027-03-21 (+6d) | 2027-04-06 → 2027-04-12 (+6d) |  | 0d → 3d |  |  |
| SDR-ST-CON-P1-4620 | Interlock Installation Part 2 | 2027-04-07 → 2027-04-13 (+6d) | 2027-04-29 → 2027-05-05 (+6d) |  | 0d → 3d |  |  |
| 6 | **Road Marking** | 2027-05-01 → 2027-05-06 (+5d) | 2027-05-24 → 2027-05-30 (+6d) |  |  |  |  |
| SDR-ST-CON-P1-5210 | Retroreflective Thermoplastic White Traffic lines | 2027-05-01 → 2027-05-06 (+5d) | 2027-05-04 → 2027-05-10 (+6d) |  | 6d → 5d |  | resources SIC- Cost [19365.7]; Supervisor [7.12 h]; Painter [28.49 h]; Painter Helper [28.49 h] → SIC- Cost [19365.7]; Painter [28.49 h]; Supervisor [7.12 h]; Painter Helper [28.49 h] |
| SDR-ST-CON-P1-5310 | Retroreflective Thermoplastic Yellow, Traffic lines | 2027-05-05 → 2027-05-11 (+6d) | 2027-05-09 → 2027-05-15 (+6d) |  | 6d → 5d |  | resources SIC- Cost [13725.2]; Supervisor [7.12 h]; Painter [28.49 h]; Painter Helper [28.49 h] → SIC- Cost [13725.2]; Painter [28.49 h]; Supervisor [7.12 h]; Painter Helper [28.49 h] |
| SDR-ST-CON-P1-5470 | Ceramic raised pavement markers | 2027-05-10 → 2027-05-22 (+12d) | 2027-05-13 → 2027-05-25 (+12d) |  | 6d → 5d |  |  |
| SDR-ST-CON-P1-5620 | Rumble strip | 2027-05-15 → 2027-05-26 (+11d) | 2027-05-24 → 2027-05-30 (+6d) |  | 6d → 5d |  |  |
| 7 | **Traffic Signage** | 2027-05-01 → 2027-05-06 (+5d) | 2027-05-13 → 2027-05-25 (+12d) |  |  |  |  |
| SDR-ST-CON-P1-5220 | Traffic signs, ground mounted, 1 Sheet Alumenium, (breakaway) Single post, with all accessories | 2027-05-01 → 2027-05-06 (+5d) | 2027-05-04 → 2027-05-10 (+6d) |  | 6d → 9d |  |  |
| SDR-ST-CON-P1-5320 | Traffic signs, ground mounted, 1 Sheet Aluminum, (breakaway) Double post, with all accessories | 2027-05-05 → 2027-05-11 (+6d) | 2027-05-09 → 2027-05-15 (+6d) |  | 6d → 9d |  |  |
| SDR-ST-CON-P1-5480 | Traffic signs, ground mounted, 2 Sheet Aluminum, (breakaway) Single post, with all accessories | 2027-05-10 → 2027-05-22 (+12d) | 2027-05-13 → 2027-05-25 (+12d) |  | 6d → 9d |  |  |
| 8 | **Speed table** | 2027-05-15 → 2027-05-26 (+11d) | 2027-05-25 → 2027-05-31 (+6d) |  |  |  |  |
| SDR-ST-CON-P1-5490 | Interlock speed table including interlock, flush kerb and marking | 2027-05-15 → 2027-05-26 (+11d) | 2027-05-25 → 2027-05-31 (+6d) |  | 6d → 9d |  |  |
| 7 | **ROAD-01 From 470 to 1125 m (6)** |  | 2027-06-01 → 2027-06-07 (+6d) |  |  |  |  |
| 2 | **Base Course** |  | 2026-11-05 → 2026-10-29 (-7d) |  |  |  |  |
| SDR-ST-CON-P1-3720 | Aggregate base course layer |  | 2026-11-05 → 2026-10-29 A (-7d) | 50% → 100% | 66d → none |  |  |
| 3 | **Asphalt Works** | 2026-11-07 → 2026-11-01 (-6d) | 2027-02-27 → 2027-03-04 (+5d) |  |  |  |  |
| 1 | **Bituminous base course** | 2026-11-07 → 2026-11-01 (-6d) | 2027-01-28 → 2027-02-03 (+6d) |  |  |  |  |
| SDR-ST-CON-P1-4430 | Bituminous base course (Grading I - Class A 1st Layer with MC-01 | 2026-11-07 → 2026-11-01 (-6d) | 2026-11-12 → 2026-11-07 (-5d) |  | 66d → 77d |  |  |
| SDR-ST-CON-P1-4730 | Bituminous base course (Grading I - Class A 2nd layer with RC-02 | 2027-01-24 → 2027-01-30 (+6d) | 2027-01-28 → 2027-02-03 (+6d) |  | 5d → 6d |  |  |
| 2 | **Bituminous concrete wearing course** | 2027-02-02 → 2027-02-08 (+6d) | 2027-02-27 → 2027-03-04 (+5d) |  |  |  |  |
| SDR-ST-CON-P1-5040 | Bituminous concrete wearing course, (Grading I - Class A), including tack coat (RC2) | 2027-02-02 → 2027-02-08 (+6d) | 2027-02-27 → 2027-03-04 (+5d) |  | 5d → 6d |  |  |
| 4 | **Kerbstone Installation** | 2026-10-26 → 2026-11-01 (+6d) | 2026-12-15 → 2026-12-21 (+6d) |  |  |  |  |
| SDR-ST-CON-P1-3730 | Precast Concrete Curbstone, Type A2 | 2026-10-26 → 2026-11-01 (+6d) | 2026-11-17 → 2026-11-23 (+6d) |  | 60d → 63d |  |  |
| SDR-ST-CON-P1-4480 | Precast Concrete Curbstone, Type D | 2026-11-23 → 2026-11-29 (+6d) | 2026-12-15 → 2026-12-21 (+6d) |  | 60d → 63d |  |  |
| 5 | **Interlock Installation** | 2027-01-11 → 2027-01-17 (+6d) | 2027-03-25 → 2027-03-31 (+6d) |  |  |  |  |
| SDR-ST-CON-P1-3890 | Interlock Installation Part 1 | 2027-01-11 → 2027-01-17 (+6d) | 2027-02-02 → 2027-02-08 (+6d) |  | 38d → 41d |  |  |
| SDR-ST-CON-P1-4490 | Interlock Installation Part 2 | 2027-02-27 → 2027-03-04 (+5d) | 2027-03-25 → 2027-03-31 (+6d) |  | 19d → 22d |  |  |
| 6 | **Road Marking** | 2027-03-27 → 2027-04-01 (+5d) | 2027-05-10 → 2027-05-22 (+12d) |  |  |  |  |
| SDR-ST-CON-P1-5080 | Retroreflective Thermoplastic White Traffic lines | 2027-03-27 → 2027-04-01 (+5d) | 2027-03-31 → 2027-04-06 (+6d) |  | 19d → 22d |  |  |
| SDR-ST-CON-P1-5150 | Retroreflective Thermoplastic Yellow, Traffic lines | 2027-04-19 → 2027-04-25 (+6d) | 2027-04-24 → 2027-04-29 (+5d) |  | 4d → 7d |  |  |
| SDR-ST-CON-P1-5270 | Ceramic raised pavement markers | 2027-04-29 → 2027-05-05 (+6d) | 2027-05-04 → 2027-05-10 (+6d) |  | 0d → 3d |  |  |
| SDR-ST-CON-P1-5400 | Rumble strip | 2027-05-05 → 2027-05-11 (+6d) | 2027-05-10 → 2027-05-22 (+12d) |  | 0d → 3d |  |  |
| 7 | **Traffic Signage** | 2027-05-11 → 2027-05-23 (+12d) | 2027-05-30 → 2027-06-05 (+6d) |  |  |  |  |
| SDR-ST-CON-P1-5090 | Traffic signs, ground mounted, 1 Sheet Alumenium, (breakaway) Single post, with all accessories | 2027-05-11 → 2027-05-23 (+12d) | 2027-05-23 → 2027-05-29 (+6d) |  | 0d → 3d |  |  |
| SDR-ST-CON-P1-5160 | Traffic signs, ground mounted, 1 Sheet Aluminum, (breakaway) Double post, with all accessories | 2027-05-24 → 2027-05-30 (+6d) | 2027-05-30 → 2027-06-05 (+6d) |  | 0d → 3d |  |  |
| 8 | **Speed table** | 2027-05-24 → 2027-05-30 (+6d) | 2027-06-01 → 2027-06-07 (+6d) |  |  |  |  |
| SDR-ST-CON-P1-5280 | Interlock speed table including interlock, flush kerb and marking | 2027-05-24 → 2027-05-30 (+6d) | 2027-06-01 → 2027-06-07 (+6d) |  | 0d → 3d |  |  |
| 9 | **ROAD-01 From 1125 to 1765 m (7)** |  | 2027-05-24 → 2027-05-30 (+6d) |  |  |  |  |
| 11 | **Subgrade** |  | 2026-11-05 → 2026-10-29 (-7d) |  |  |  |  |
| SDR-ST-CON-P1-3600 | Subgrade layer works |  | 2026-11-05 → 2026-10-29 A (-7d) | 80% → 100% | 40d → none |  |  |
| 2 | **Base Course** |  | 2026-11-16 → 2026-11-10 (-6d) |  |  |  |  |
| SDR-ST-CON-P1-4220 | Aggregate base course layer |  | 2026-11-16 → 2026-11-10 (-6d) | 70% → 85% | 57d → 68d |  |  |
| 3 | **Asphalt Works** | 2026-11-17 → 2026-11-11 (-6d) | 2027-02-16 → 2027-02-23 (+7d) |  |  |  |  |
| 1 | **Bituminous base course** | 2026-11-17 → 2026-11-11 (-6d) | 2026-11-29 → 2026-11-23 (-6d) |  |  |  |  |
| SDR-ST-CON-P1-4750 | Bituminous base course (Grading I - Class A 1st Layer with MC-01 | 2026-11-17 → 2026-11-11 (-6d) | 2026-11-23 → 2026-11-17 (-6d) |  | 57d → 68d |  |  |
| SDR-ST-CON-P1-5010 | Bituminous base course (Grading I - Class A 2nd layer with RC-02 | 2026-11-24 → 2026-11-18 (-6d) | 2026-11-29 → 2026-11-23 (-6d) |  | 57d → 68d |  |  |
| 2 | **Bituminous concrete wearing course** | 2027-01-24 → 2027-01-30 (+6d) | 2027-02-16 → 2027-02-23 (+7d) |  |  |  |  |
| SDR-ST-CON-P1-5200 | Bituminous concrete wearing course, (Grading I - Class A), including tack coat (RC2) | 2027-01-24 → 2027-01-30 (+6d) | 2027-02-16 → 2027-02-23 (+7d) |  | 13d → 14d |  |  |
| 4 | **Kerbstone Installation** | 2026-11-07 → 2026-11-01 (-6d) | 2026-12-27 → 2026-12-21 (-6d) |  |  |  |  |
| SDR-ST-CON-P1-4230 | Precast Concrete Curbstone, Type A2 | 2026-11-07 → 2026-11-01 (-6d) | 2026-11-29 → 2026-11-23 (-6d) |  | 40d → 51d |  |  |
| SDR-ST-CON-P1-4950 | Precast Concrete Curbstone, Type D | 2026-12-05 → 2026-11-29 (-6d) | 2026-12-27 → 2026-12-21 (-6d) |  | 40d → 51d |  |  |
| 5 | **Interlock Installation** | 2027-01-11 → 2027-01-17 (+6d) | 2027-02-28 → 2027-03-06 (+6d) |  |  |  |  |
| SDR-ST-CON-P1-4440 | Interlock Installation Part 1 | 2027-01-11 → 2027-01-17 (+6d) | 2027-02-03 → 2027-02-09 (+6d) |  | 28d → 29d |  |  |
| SDR-ST-CON-P1-4870 | Interlock Installation Part 2 | 2027-02-04 → 2027-02-10 (+6d) | 2027-02-28 → 2027-03-06 (+6d) |  | 28d → 29d |  |  |
| 6 | **Road Marking** | 2027-04-11 → 2027-04-17 (+6d) | 2027-05-03 → 2027-05-09 (+6d) |  |  |  |  |
| SDR-ST-CON-P1-5300 | Retroreflective Thermoplastic White Traffic lines | 2027-04-11 → 2027-04-17 (+6d) | 2027-04-15 → 2027-04-21 (+6d) |  | 6d → 5d |  |  |
| SDR-ST-CON-P1-5450 | Retroreflective Thermoplastic Yellow, Traffic lines | 2027-04-17 → 2027-04-22 (+5d) | 2027-04-21 → 2027-04-27 (+6d) |  | 6d → 5d |  |  |
| SDR-ST-CON-P1-5610 | Ceramic raised pavement markers | 2027-04-22 → 2027-04-28 (+6d) | 2027-04-27 → 2027-05-03 (+6d) |  | 6d → 5d |  |  |

| ID | Task | Start | Finish | Complete | Total float |
| --- | --- | --- | --- | --- | --- |
| SDR-ST-CON-P1-5690 | Rumble strip | 2027-04-28 → 2027-05-04 (+6d) | 2027-05-03 → 2027-05-09 (+6d) |  | 6d → 5d |
| 7 | **Traffic Signage** | 2027-05-04 → 2027-05-10 (+6d) | 2027-05-22 → 2027-05-27 (+5d) |  |  |
| SDR-ST-CON-P1-5540 | Traffic signs, ground mounted, 1 Sheet Alumenium, (breakaway) Single post, with all accessories | 2027-05-04 → 2027-05-10 (+6d) | 2027-05-09 → 2027-05-15 (+6d) |  | 6d → 5d |
| SDR-ST-CON-P1-5680 | Traffic signs, ground mounted, 1 Sheet Aluminum, (breakaway) Double post, with all accessories | 2027-05-10 → 2027-05-22 (+12d) | 2027-05-22 → 2027-05-27 (+5d) |  | 6d → 5d |
| 8 | **Speed table** | 2027-05-10 → 2027-05-22 (+12d) | 2027-05-24 → 2027-05-30 (+6d) |  |  |
| SDR-ST-CON-P1-5460 | Interlock speed table including interlock, flush kerb and marking | 2027-05-10 → 2027-05-22 (+12d) | 2027-05-24 → 2027-05-30 (+6d) |  | 6d → 5d |
| 6 | **ROAD - 02** |  | 2027-06-07 → 2027-06-13 (+6d) |  |  |
| 1 | **ROAD-01 From 0 to 400 m (9)** |  | 2027-05-23 → 2027-05-29 (+6d) |  |  |
| 11 | **Subgrade** |  | 2026-11-09 → 2026-11-15 (+6d) |  |  |
| SDR-ST-CON-P1-3390 | Subgrade layer works |  | 2026-11-09 → 2026-11-15 (+6d) |  | 34d → 35d |
| 2 | **Base Course** | 2026-11-10 → 2026-11-16 (+6d) | 2026-11-17 → 2026-11-23 (+6d) |  |  |
| SDR-ST-CON-P1-3960 | Aggregate base course layer | 2026-11-10 → 2026-11-16 (+6d) | 2026-11-17 → 2026-11-23 (+6d) |  | 39d → 40d |
| 3 | **Asphalt Works** | 2026-11-18 → 2026-11-24 (+6d) | 2026-12-22 → 2026-12-28 (+6d) |  |  |
| 1 | **Bituminous base course** | 2026-11-18 → 2026-11-24 (+6d) | 2026-11-25 → 2026-12-01 (+6d) |  |  |
| SDR-ST-CON-P1-4540 | Bituminous base course (Grading I - Class A 1st Layer with MC-01 | 2026-11-18 → 2026-11-24 (+6d) | 2026-11-22 → 2026-11-28 (+6d) |  | 39d → 40d |
| SDR-ST-CON-P1-4890 | Bituminous base course (Grading I - Class A 2nd layer with RC-02 | 2026-11-23 → 2026-11-29 (+6d) | 2026-11-25 → 2026-12-01 (+6d) |  | 39d → 40d |
| 2 | **Bituminous concrete wearing course** | 2026-11-29 → 2026-12-05 (+6d) | 2026-12-22 → 2026-12-28 (+6d) |  |  |
| SDR-ST-CON-P1-5130 | Bituminous concrete wearing course, (Grading I - Class A), including tack coat (RC2) | 2026-11-29 → 2026-12-05 (+6d) | 2026-12-22 → 2026-12-28 (+6d) |  | 39d → 40d |
| 4 | **Kerbstone Installation** | 2026-11-10 → 2026-11-16 (+6d) | 2026-12-30 → 2027-01-05 (+6d) |  |  |
| SDR-ST-CON-P1-3970 | Precast Concrete Curbstone, Type A2 | 2026-11-10 → 2026-11-16 (+6d) | 2026-12-02 → 2026-12-08 (+6d) |  | 34d → 35d |
| SDR-ST-CON-P1-4690 | Precast Concrete Curbstone, Type D | 2026-12-08 → 2026-12-14 (+6d) | 2026-12-30 → 2027-01-05 (+6d) |  | 34d → 35d |
| 5 | **Interlock Installation** | 2026-12-31 → 2027-01-06 (+6d) | 2027-02-15 → 2027-02-21 (+6d) |  |  |
| SDR-ST-CON-P1-4200 | Interlock Installation Part 1 | 2026-12-31 → 2027-01-06 (+6d) | 2027-01-23 → 2027-01-28 (+5d) |  | 34d → 35d |
| SDR-ST-CON-P1-4780 | Interlock Installation Part 2 | 2027-01-24 → 2027-01-30 (+6d) | 2027-02-15 → 2027-02-21 (+6d) |  | 34d → 35d |
| 6 | **Road Marking** | 2027-03-28 → 2027-04-03 (+6d) | 2027-04-19 → 2027-04-25 (+6d) |  |  |
| SDR-ST-CON-P1-5250 | Retroreflective Thermoplastic White Traffic lines | 2027-03-28 → 2027-04-03 (+6d) | 2027-04-01 → 2027-04-07 (+6d) |  | 5d → 6d |
| SDR-ST-CON-P1-5370 | Retroreflective Thermoplastic Yellow, Traffic lines | 2027-04-03 → 2027-04-08 (+5d) | 2027-04-07 → 2027-04-13 (+6d) |  | 5d → 6d |
| SDR-ST-CON-P1-5550 | Ceramic raised pavement markers | 2027-04-08 → 2027-04-14 (+6d) | 2027-04-13 → 2027-04-19 (+6d) |  | 5d → 6d |
| SDR-ST-CON-P1-5630 | Rumble strip | 2027-04-14 → 2027-04-20 (+6d) | 2027-04-19 → 2027-04-25 (+6d) |  | 5d → 6d |
| 7 | **Traffic Signage** | 2027-04-20 → 2027-04-26 (+6d) | 2027-05-06 → 2027-05-12 (+6d) |  |  |
| SDR-ST-CON-P1-5260 | Traffic signs, ground mounted, 1 Sheet Alumenium, (breakaway) Single post, with all accessories | 2027-04-20 → 2027-04-26 (+6d) | 2027-04-25 → 2027-05-01 (+6d) |  | 5d → 6d |
| SDR-ST-CON-P1-5380 | Traffic signs, ground mounted, 1 Sheet Aluminum, (breakaway) Double post, with all accessories | 2027-04-26 → 2027-05-02 (+6d) | 2027-05-01 → 2027-05-06 (+5d) |  | 5d → 6d |
| SDR-ST-CON-P1-5560 | Traffic signs, ground mounted, 2 Sheet Aluminum, (breakaway) Single post, with all accessories | 2027-05-02 → 2027-05-08 (+6d) | 2027-05-06 → 2027-05-12 (+6d) |  | 5d → 6d |
| 8 | **Speed table** | 2027-05-09 → 2027-05-15 (+6d) | 2027-05-23 → 2027-05-29 (+6d) |  |  |
| SDR-ST-CON-P1-5390 | Interlock speed table including interlock, flush kerb and marking | 2027-05-09 → 2027-05-15 (+6d) | 2027-05-23 → 2027-05-29 (+6d) |  | 5d → 6d |
| 2 | **ROAD-01 From 400 to 900 m (10)** |  | 2027-06-07 → 2027-06-13 (+6d) |  |  |
| 11 | **Subgrade** |  | 2026-11-07 → 2026-11-12 (+5d) |  |  |
| SDR-ST-CON-P1-3540 | Subgrade layer works |  | 2026-11-07 → 2026-11-12 (+5d) | 50% → 60% | 38d → 39d |
| 2 | **Base Course** | 2026-11-08 → 2026-11-14 (+6d) | 2026-11-18 → 2026-11-24 (+6d) |  |  |
| SDR-ST-CON-P1-4130 | Aggregate base course layer | 2026-11-08 → 2026-11-14 (+6d) | 2026-11-18 → 2026-11-24 (+6d) |  | 38d → 39d |
| 3 | **Asphalt Works** | 2026-11-19 → 2026-11-25 (+6d) | 2026-12-23 → 2026-12-29 (+6d) |  |  |
| 1 | **Bituminous base course** | 2026-11-19 → 2026-11-25 (+6d) | 2026-11-29 → 2026-12-05 (+6d) |  |  |
| SDR-ST-CON-P1-4600 | Bituminous base course (Grading I - Class A 1st Layer with MC-01 | 2026-11-19 → 2026-11-25 (+6d) | 2026-11-24 → 2026-11-30 (+6d) |  | 38d → 39d |
| SDR-ST-CON-P1-4930 | Bituminous base course (Grading I - Class A 2nd layer with RC-02 | 2026-11-25 → 2026-12-01 (+6d) | 2026-11-29 → 2026-12-05 (+6d) |  | 38d → 39d |
| 2 | **Bituminous concrete wearing course** | 2026-11-30 → 2026-12-06 (+6d) | 2026-12-23 → 2026-12-29 (+6d) |  |  |
| SDR-ST-CON-P1-5180 | Bituminous concrete wearing course, (Grading I - Class A), including tack coat (RC2) | 2026-11-30 → 2026-12-06 (+6d) | 2026-12-23 → 2026-12-29 (+6d) |  | 38d → 39d |
| 4 | **Kerbstone Installation** | 2026-11-08 → 2026-11-14 (+6d) | 2026-12-28 → 2027-01-03 (+6d) |  |  |
| SDR-ST-CON-P1-4140 | Precast Concrete Curbstone, Type A2 | 2026-11-08 → 2026-11-14 (+6d) | 2026-11-30 → 2026-12-06 (+6d) |  | 45d → 49d |
| SDR-ST-CON-P1-4810 | Precast Concrete Curbstone, Type D | 2026-12-06 → 2026-12-12 (+6d) | 2026-12-28 → 2027-01-03 (+6d) |  | 45d → 49d |
| 5 | **Interlock Installation** | 2026-12-29 → 2027-01-04 (+6d) | 2027-02-14 → 2027-02-20 (+6d) |  |  |
| SDR-ST-CON-P1-4350 | Interlock Installation Part 1 | 2026-12-29 → 2027-01-04 (+6d) | 2027-01-20 → 2027-01-26 (+6d) |  | 45d → 49d |
| SDR-ST-CON-P1-4920 | Interlock Installation Part 2 | 2027-01-23 → 2027-01-28 (+5d) | 2027-02-14 → 2027-02-20 (+6d) |  | 45d → 49d |
| 6 | **Road Marking** | 2027-04-11 → 2027-04-17 (+6d) | 2027-05-08 → 2027-05-13 (+5d) |  |  |
| SDR-ST-CON-P1-5290 | Retroreflective Thermoplastic White Traffic lines | 2027-04-11 → 2027-04-17 (+6d) | 2027-04-17 → 2027-04-22 (+5d) |  | 3d → 7d |
| SDR-ST-CON-P1-5410 | Retroreflective Thermoplastic Yellow, Traffic lines | 2027-04-18 → 2027-04-24 (+6d) | 2027-04-24 → 2027-04-29 (+5d) |  | 3d → 7d |
| SDR-ST-CON-P1-5580 | Ceramic raised pavement markers | 2027-04-25 → 2027-05-01 (+6d) | 2027-05-01 → 2027-05-06 (+5d) |  | 3d → 7d |
| SDR-ST-CON-P1-5640 | Rumble strip | 2027-05-02 → 2027-05-08 (+6d) | 2027-05-08 → 2027-05-13 (+5d) |  | 3d → 7d |
| 7 | **Traffic Signage** | 2027-05-09 → 2027-05-15 (+6d) | 2027-05-27 → 2027-06-02 (+6d) |  |  |
| SDR-ST-CON-P1-5420 | Traffic signs, ground mounted, 1 Sheet Alumenium, (breakaway) Single post, with all accessories | 2027-05-09 → 2027-05-15 (+6d) | 2027-05-15 → 2027-05-26 (+11d) |  | 3d → 7d |
| SDR-ST-CON-P1-5590 | Traffic signs, ground mounted, 1 Sheet Aluminum, (breakaway) Double post, with all accessories | 2027-05-22 → 2027-05-27 (+5d) | 2027-05-27 → 2027-06-02 (+6d) |  | 3d → 7d |
| 8 | **Speed table** | 2027-05-29 → 2027-06-03 (+5d) | 2027-06-07 → 2027-06-13 (+6d) |  |  |
| SDR-ST-CON-P1-5430 | Interlock speed table including interlock, flush kerb and marking | 2027-05-29 → 2027-06-03 (+5d) | 2027-06-07 → 2027-06-13 (+6d) |  | 3d → 7d |
| 3 | **ROAD-01 From 900 to 1239 m (11)** |  | 2027-06-03 → 2027-06-09 (+6d) |  |  |
| 11 | **Subgrade** |  | 2026-11-03 → 2026-11-09 (+6d) |  |  |
| SDR-ST-CON-P1-3740 | Subgrade layer works |  | 2026-11-03 → 2026-11-09 (+6d) | 50% → 60% | 42d → 43d |
| 2 | **Base Course** | 2026-11-04 → 2026-11-10 (+6d) | 2026-11-11 → 2026-11-17 (+6d) |  |  |
| SDR-ST-CON-P1-4290 | Aggregate base course layer | 2026-11-04 → 2026-11-10 (+6d) | 2026-11-11 → 2026-11-17 (+6d) |  | 42d → 43d |
| 3 | **Asphalt Works** | 2026-11-12 → 2026-11-18 (+6d) | 2026-12-19 → 2026-12-24 (+5d) |  |  |
| 1 | **Bituminous base course** | 2026-11-12 → 2026-11-18 (+6d) | 2026-11-22 → 2026-11-28 (+6d) |  |  |
| SDR-ST-CON-P1-4650 | Bituminous base course (Grading I - Class A 1st Layer with MC-01 | 2026-11-12 → 2026-11-18 (+6d) | 2026-11-17 → 2026-11-23 (+6d) |  | 42d → 43d |

| ID | Task | Start | Finish | Total float | Predecessors |
| --- | --- | --- | --- | --- | --- |
| SDR-ST-CON-P1-4980 | Bituminous base course (Grading I - Class A 2nd layer with RC-02 | 2026-11-18 → 2026-11-24 (+6d) | 2026-11-22 → 2026-11-28 (+6d) | 42d → 43d |  |
| 2 | **Bituminous concrete wearing course** | 2026-11-25 → 2026-12-01 (+6d) | 2026-12-19 → 2026-12-24 (+5d) |  |  |
| SDR-ST-CON-P1-5230 | Bituminous concrete wearing course, (Grading I - Class A), including tack coat (RC2) | 2026-11-25 → 2026-12-01 (+6d) | 2026-12-19 → 2026-12-24 (+5d) | 42d → 43d |  |
| 4 | **Kerbstone Installation** | 2026-12-26 → 2026-12-31 (+5d) | 2027-02-14 → 2027-02-20 (+6d) |  |  |
| SDR-ST-CON-P1-4300 | Precast Concrete Curbstone, Type A2 | 2026-12-26 → 2026-12-31 (+5d) | 2027-01-17 → 2027-01-23 (+6d) | 2d → 1d |  |
| SDR-ST-CON-P1-4860 | Precast Concrete Curbstone, Type D | 2027-01-23 → 2027-01-28 (+5d) | 2027-02-14 → 2027-02-20 (+6d) | 2d → 1d |  |
| 5 | **Interlock Installation** | 2027-02-15 → 2027-02-21 (+6d) | 2027-04-07 → 2027-04-13 (+6d) |  |  |
| SDR-ST-CON-P1-4450 | Interlock Installation Part 1 | 2027-02-15 → 2027-02-21 (+6d) | 2027-03-15 → 2027-03-21 (+6d) | 2d → 1d |  |
| SDR-ST-CON-P1-4940 | Interlock Installation Part 2 | 2027-03-16 → 2027-03-22 (+6d) | 2027-04-07 → 2027-04-13 (+6d) | 2d → 1d |  |
| 6 | **Road Marking** | 2027-04-08 → 2027-04-14 (+6d) | 2027-05-05 → 2027-05-11 (+6d) |  |  |
| SDR-ST-CON-P1-5350 | Retroreflective Thermoplastic White Traffic lines | 2027-04-08 → 2027-04-14 (+6d) | 2027-04-14 → 2027-04-20 (+6d) | 2d → 1d |  |
| SDR-ST-CON-P1-5510 | Retroreflective Thermoplastic Yellow, Traffic lines | 2027-04-15 → 2027-04-21 (+6d) | 2027-04-21 → 2027-04-27 (+6d) | 2d → 1d |  |
| SDR-ST-CON-P1-5600 | Ceramic raised pavement markers | 2027-04-22 → 2027-04-28 (+6d) | 2027-04-28 → 2027-05-04 (+6d) | 2d → 1d |  |
| SDR-ST-CON-P1-5650 | Rumble strip | 2027-04-29 → 2027-05-05 (+6d) | 2027-05-05 → 2027-05-11 (+6d) | 2d → 1d |  |
| 7 | **Traffic Signage** | 2027-05-06 → 2027-05-12 (+6d) | 2027-05-29 → 2027-06-03 (+5d) |  |  |
| SDR-ST-CON-P1-5360 | Traffic signs, ground mounted, 1 Sheet Alumenium, (breakaway) Single post, with all accessories | 2027-05-06 → 2027-05-12 (+6d) | 2027-05-11 → 2027-05-23 (+12d) | 2d → 1d |  |
| SDR-ST-CON-P1-5520 | Traffic signs, ground mounted, 1 Sheet Aluminum, (breakaway) Double post, with all accessories | 2027-05-12 → 2027-05-24 (+12d) | 2027-05-23 → 2027-05-29 (+6d) | 2d → 1d |  |
| SDR-ST-CON-P1-5660 | Traffic signs, ground mounted, 2 Sheet Aluminum, (breakaway) Single post, with all accessories | 2027-05-24 → 2027-05-30 (+6d) | 2027-05-29 → 2027-06-03 (+5d) | 2d → 1d |  |
| 8 | **Speed table** | 2027-05-30 → 2027-06-05 (+6d) | 2027-06-03 → 2027-06-09 (+6d) |  |  |
| SDR-ST-CON-P1-5530 | Interlock speed table including interlock, flush kerb and marking | 2027-05-30 → 2027-06-05 (+6d) | 2027-06-03 → 2027-06-09 (+6d) | 2d → 1d |  |
| 2 | **MV Network** | 2026-10-26 → 2026-11-01 (+6d) | 2027-05-26 → 2027-06-01 (+6d) |  |  |
| 5 | **ROAD - 01** | 2026-10-26 → 2026-11-01 (+6d) |  |  |  |
| 4 | **ROAD-01 From 1125 to 1765 m (7)** | 2026-10-26 → 2026-11-01 (+6d) | 2027-04-10 → 2027-04-14 (+4d) |  |  |
| 6 | **Excavation** | 2026-10-26 → 2026-11-01 (+6d) | 2027-01-06 → 2027-01-12 (+6d) |  |  |
| SDR-ST-CON-P1-1570 | Excavation Works Part 1 | 2026-10-26 → 2026-11-01 (+6d) | 2026-11-18 → 2026-11-24 (+6d) | 11d → 12d |  |
| SDR-ST-CON-P1-6090 | Excavation Works Part 2 | 2026-11-19 → 2026-11-25 (+6d) | 2026-12-13 → 2026-12-19 (+6d) | 34d → 35d |  |
| SDR-ST-CON-P1-6100 | Excavation Works Part 3 | 2026-12-14 → 2026-12-20 (+6d) | 2027-01-06 → 2027-01-12 (+6d) | 34d → 35d |  |
| 7 | **Pipe laying** | 2027-01-07 → 2027-01-13 (+6d) | 2027-01-31 → 2027-02-06 (+6d) |  |  |
| SDR-ST-CON-P1-2270 | Pipe Laying | 2027-01-07 → 2027-01-13 (+6d) | 2027-01-31 → 2027-02-06 (+6d) | 34d → 35d |  |
| 8 | **Backfilling** | 2027-02-01 → 2027-02-07 (+6d) | 2027-02-24 → 2027-03-02 (+6d) |  |  |
| SDR-ST-CON-P1-3000 | Backfilling Works | 2027-02-01 → 2027-02-07 (+6d) | 2027-02-24 → 2027-03-02 (+6d) | 34d → 35d |  |
| 9 | **Pulling Cable** | 2027-03-16 → 2027-03-21 (+5d) | 2027-04-10 → 2027-04-14 (+4d) |  |  |
| SDR-ST-CON-P1-3900 | Pulling Cable | 2027-03-16 → 2027-03-21 (+5d) | 2027-04-10 → 2027-04-14 (+4d) | 21.2d → 23.2d |  |
| 3 | **ROAD-01 From 470 to 1125 m (6)** | 2026-11-03 → 2026-11-09 (+6d) | 2027-04-08 → 2027-04-13 (+5d) |  |  |
| 6 | **Excavation** | 2026-11-03 → 2026-11-09 (+6d) | 2027-01-11 → 2027-01-17 (+6d) |  |  |
| SDR-ST-CON-P1-1720 | Excavation Works Part 1 | 2026-11-03 → 2026-11-09 (+6d) | 2026-11-26 → 2026-12-02 (+6d) | 11d → 12d |  |
| SDR-ST-CON-P1-6110 | Excavation Works Part2 | 2026-11-28 → 2026-12-03 (+5d) | 2026-12-21 → 2026-12-27 (+6d) |  |  |
| SDR-ST-CON-P1-6120 | Excavation Works Part 3 | 2026-12-22 → 2026-12-28 (+6d) | 2027-01-11 → 2027-01-17 (+6d) |  |  |
| 7 | **Pipe laying** | 2027-01-12 → 2027-01-18 (+6d) | 2027-02-04 → 2027-02-10 (+6d) |  |  |
| SDR-ST-CON-P1-2420 | Pipe Laying | 2027-01-12 → 2027-01-18 (+6d) | 2027-02-04 → 2027-02-10 (+6d) |  |  |
| 8 | **Backfilling** | 2027-02-06 → 2027-02-11 (+5d) | 2027-03-01 → 2027-03-07 (+6d) |  |  |
| SDR-ST-CON-P1-3150 | Backfilling Works | 2027-02-06 → 2027-02-11 (+5d) | 2027-03-01 → 2027-03-07 (+6d) |  |  |
| 9 | **Pulling Cable** | 2027-03-16 → 2027-03-21 (+5d) | 2027-04-08 → 2027-04-13 (+5d) |  |  |
| SDR-ST-CON-P1-4000 | Pulling Cable | 2027-03-16 → 2027-03-21 (+5d) | 2027-04-08 → 2027-04-13 (+5d) | 18.2d → 19.2d |  |
| 2 | **ROAD-01 N 03** | 2026-11-11 → 2026-11-17 (+6d) | 2027-05-11 → 2027-05-23 (+12d) |  |  |
| 6 | **Excavation** | 2026-11-11 → 2026-11-17 (+6d) | 2027-01-19 → 2027-01-25 (+6d) |  |  |
| SDR-ST-CON-P1-1770 | Excavation Works Part 1 | 2026-11-11 → 2026-11-17 (+6d) | 2026-12-05 → 2026-12-10 (+5d) | 11d → 12d |  |
| SDR-ST-CON-P1-6130 | Excavation Works Part 2 | 2026-12-06 → 2026-12-12 (+6d) | 2026-12-29 → 2027-01-04 (+6d) | 14d → 15d |  |
| SDR-ST-CON-P1-6140 | Excavation Works Part 3 | 2026-12-30 → 2027-01-05 (+6d) | 2027-01-19 → 2027-01-25 (+6d) | 14d → 15d |  |
| 7 | **Pipe laying** | 2027-01-20 → 2027-01-26 (+6d) | 2027-02-13 → 2027-02-18 (+5d) |  |  |
| SDR-ST-CON-P1-2500 | Pipe Laying | 2027-01-20 → 2027-01-26 (+6d) | 2027-02-13 → 2027-02-18 (+5d) | 14d → 15d |  |
| 8 | **Backfilling** | 2027-04-18 → 2027-04-24 (+6d) | 2027-05-10 → 2027-05-22 (+12d) |  |  |
| SDR-ST-CON-P1-3280 | Backfilling Works | 2027-04-18 → 2027-04-24 (+6d) | 2027-05-10 → 2027-05-22 (+12d) | 14.9d → 15.9d |  |
| 9 | **Pulling Cable** | 2027-04-18 → 2027-04-24 (+6d) | 2027-05-11 → 2027-05-23 (+12d) |  |  |
| SDR-ST-CON-P1-4250 | Pulling Cable | 2027-04-18 → 2027-04-24 (+6d) | 2027-05-11 → 2027-05-23 (+12d) | 14.9d → 15.9d |  |
| 1 | **ROAD-01 N 01** | 2026-11-19 → 2026-11-25 (+6d) |  |  |  |
| 6 | **Excavation** | 2026-11-19 → 2026-11-25 (+6d) |  |  |  |
| SDR-ST-CON-P1-1730 | Excavation Works Part 1 | 2026-11-19 → 2026-11-25 (+6d) | 2026-12-13 → 2026-12-19 (+6d) | 11d → 12d |  |
| SDR-ST-CON-P1-6150 | Excavation Works Part 2 | 2027-01-28 → 2027-02-03 (+6d) | 2027-02-14 → 2027-02-20 (+6d) | 0d → 6d |  |
| SDR-ST-CON-P1-6160 | Excavation Works Part 3 |  |  | 0d → 6d | SDR-ST-CON-P1-6150 → SDR-ST-CON-P1-6150 SS+10d |
| 6 | **ROAD - 02** | 2026-11-28 → 2026-12-03 (+5d) | 2027-05-26 → 2027-06-01 (+6d) |  |  |
| 3 | **ROAD-01 From 0 to 400 m (9) 2 Way 150 mm** | 2026-11-28 → 2026-12-03 (+5d) | 2027-05-26 → 2027-06-01 (+6d) |  |  |
| 6 | **Excavation** | 2026-11-28 → 2026-12-03 (+5d) | 2027-03-20 → 2027-03-25 (+5d) |  |  |
| SDR-ST-CON-P1-1920 | Excavation Works Part 1 | 2026-11-28 → 2026-12-03 (+5d) | 2026-12-21 → 2026-12-27 (+6d) | 11d → 12d |  |
| SDR-ST-CON-P1-6170 | Excavation Works Part 2 | 2026-12-22 → 2026-12-28 (+6d) | 2027-01-13 → 2027-01-19 (+6d) | 32d → 33d |  |
| SDR-ST-CON-P1-6180 | Excavation Works Part 3 | 2027-02-21 → 2027-02-28 (+7d) | 2027-03-20 → 2027-03-25 (+5d) | 0d → 1d |  |
| 7 | **Pipe laying** | 2027-03-20 → 2027-03-25 (+5d) | 2027-04-11 → 2027-04-17 (+6d) |  |  |
| SDR-ST-CON-P1-2660 | Pipe Laying | 2027-03-20 → 2027-03-25 (+5d) | 2027-04-11 → 2027-04-17 (+6d) | 0d → 1d |  |
| 8 | **Backfilling** | 2027-04-11 → 2027-04-17 (+6d) | 2027-05-02 → 2027-05-08 (+6d) |  |  |
| SDR-ST-CON-P1-3430 | Backfilling Works | 2027-04-11 → 2027-04-17 (+6d) | 2027-05-02 → 2027-05-08 (+6d) | 0d → 1d |  |

| ID | Task | Start | Finish | Total float |
| --- | --- | --- | --- | --- |
| 9 | **Pulling Cable** | 2027-05-01 → 2027-05-06 (+5d) | 2027-05-26 → 2027-06-01 (+6d) |  |
| SDR-ST-CON-P1-4320 | Pulling Cable | 2027-05-01 → 2027-05-06 (+5d) | 2027-05-26 → 2027-06-01 (+6d) | 0d → 1d |
| 2 | **ROAD-01 From 400 to 900 m (10) 2 Way 150 mm** | 2026-12-06 → 2026-12-12 (+6d) | 2027-05-26 → 2027-06-01 (+6d) |  |
| 6 | **Excavation** | 2026-12-06 → 2026-12-12 (+6d) | 2027-03-15 → 2027-03-21 (+6d) |  |
| SDR-ST-CON-P1-1840 | Excavation Works Part 1 | 2026-12-06 → 2026-12-12 (+6d) | 2026-12-29 → 2027-01-04 (+6d) | 11d → 12d |
| SDR-ST-CON-P1-6190 | Excavation Works Part 2 | 2027-01-28 → 2027-02-03 (+6d) | 2027-02-14 → 2027-02-20 (+6d) | 6d → 7d |
| SDR-ST-CON-P1-6200 | Excavation Works Part 3 | 2027-02-15 → 2027-02-21 (+6d) | 2027-03-15 → 2027-03-21 (+6d) | 6d → 7d |
| 7 | **Pipe laying** | 2027-03-16 → 2027-03-22 (+6d) | 2027-04-07 → 2027-04-13 (+6d) |  |
| SDR-ST-CON-P1-2590 | Pipe Laying | 2027-03-16 → 2027-03-22 (+6d) | 2027-04-07 → 2027-04-13 (+6d) | 6d → 7d |
| 8 | **Backfilling** | 2027-04-08 → 2027-04-14 (+6d) | 2027-04-29 → 2027-05-05 (+6d) |  |
| SDR-ST-CON-P1-3340 | Backfilling Works | 2027-04-08 → 2027-04-14 (+6d) | 2027-04-29 → 2027-05-05 (+6d) | 6d → 7d |
| 9 | **Pulling Cable** | 2027-05-01 → 2027-05-06 (+5d) | 2027-05-26 → 2027-06-01 (+6d) |  |
| SDR-ST-CON-P1-4050 | Pulling Cable | 2027-05-01 → 2027-05-06 (+5d) | 2027-05-26 → 2027-06-01 (+6d) | 6d → 7d |
| 1 | **ROAD-01 From 900 to 1239 m (11) 2 Way 150 mm** | 2026-12-14 → 2026-12-20 (+6d) | 2027-05-04 → 2027-05-10 (+6d) |  |
| 6 | **Excavation** | 2026-12-14 → 2026-12-20 (+6d) | 2027-02-21 → 2027-02-28 (+7d) |  |
| SDR-ST-CON-P1-2000 | Excavation Works Part 1 | 2026-12-14 → 2026-12-20 (+6d) | 2027-01-06 → 2027-01-12 (+6d) | 11d → 12d |
| SDR-ST-CON-P1-6210 | Excavation Works Part 2 | 2027-01-07 → 2027-01-13 (+6d) | 2027-01-30 → 2027-02-04 (+5d) | 11d → 12d |
| SDR-ST-CON-P1-6220 | Excavation Works Part 3 | 2027-01-31 → 2027-02-06 (+6d) | 2027-02-21 → 2027-02-28 (+7d) | 19d → 21d |
| 7 | **Pipe laying** | 2027-02-23 → 2027-03-01 (+6d) | 2027-03-22 → 2027-03-28 (+6d) |  |
| SDR-ST-CON-P1-2750 | Pipe Laying | 2027-02-23 → 2027-03-01 (+6d) | 2027-03-22 → 2027-03-28 (+6d) | 19d → 21d |
| 8 | **Backfilling** | 2027-03-23 → 2027-03-29 (+6d) | 2027-04-13 → 2027-04-19 (+6d) |  |
| SDR-ST-CON-P1-3460 | Backfilling Works | 2027-03-23 → 2027-03-29 (+6d) | 2027-04-13 → 2027-04-19 (+6d) | 19d → 21d |
| 9 | **Pulling Cable** | 2027-04-14 → 2027-04-20 (+6d) | 2027-05-04 → 2027-05-10 (+6d) |  |
| SDR-ST-CON-P1-3980 | Pulling Cable | 2027-04-14 → 2027-04-20 (+6d) | 2027-05-04 → 2027-05-10 (+6d) | 19d → 21d |
| 1 | **Earthing System** | 2027-01-31 → 2027-02-06 (+6d) | 2027-02-17 → 2027-02-24 (+7d) |  |
| SDR-ST-CON-P1-4840 | Installation of Earthing System Including lighting poles circuits | 2027-01-31 → 2027-02-06 (+6d) | 2027-02-17 → 2027-02-24 (+7d) | 11d → 12d |
| 2 | **ROAD-01 From 470 to 1125 m (6)** |  | 2027-02-11 → 2027-02-17 (+6d) |  |
| 10 | **Excavation** |  | 2026-11-18 → 2026-11-24 (+6d) |  |
| SDR-ST-CON-P1-1180 | Excavation for LV Cable trench Section 1 |  | 2026-11-17 → 2026-11-23 (+6d) | 13d → 14d |
| SDR-ST-CON-P1-1560 | Excavation for LV Cable trench Section 2 | 2026-10-26 → 2026-11-01 (+6d) | 2026-11-18 → 2026-11-24 (+6d) | 13d → 14d |
| SDR-ST-CON-P1-2250 | Excavation for LV Cable trench Section 3 | 2026-10-26 → 2026-11-01 (+6d) | 2026-11-18 → 2026-11-24 (+6d) | 13d → 14d |
| 11 | **Install Footings** | 2026-11-19 → 2026-11-25 (+6d) | 2026-12-13 → 2026-12-19 (+6d) |  |
| SDR-ST-CON-P1-2980 | Install Footings | 2026-11-19 → 2026-11-25 (+6d) | 2026-12-13 → 2026-12-19 (+6d) | 13d → 14d |
| 12 | **Backfilling** | 2026-12-14 → 2026-12-20 (+6d) | 2026-12-24 → 2026-12-30 (+6d) |  |
| SDR-ST-CON-P1-3870 | Backfilling over LV Cables of Street lighting | 2026-12-14 → 2026-12-20 (+6d) | 2026-12-24 → 2026-12-30 (+6d) | 13d → 14d |
| 13 | **Install pole** | 2026-12-26 → 2026-12-31 (+5d) | 2027-02-11 → 2027-02-17 (+6d) |  |
| SDR-ST-CON-P1-4420 | Install Pole Part 1 | 2026-12-26 → 2026-12-31 (+5d) | 2027-01-18 → 2027-01-24 (+6d) | 13d → 14d |
| SDR-ST-CON-P1-5170 | Install Pole Part 2 | 2027-01-19 → 2027-01-25 (+6d) | 2027-02-11 → 2027-02-17 (+6d) | 13d → 14d |
| 3 | **ROAD-01 From 1125 to 1765 m (7)** |  | 2027-04-01 → 2027-04-07 (+6d) |  |
| 10 | **Excavation** |  | 2027-01-07 → 2027-01-13 (+6d) |  |
| SDR-ST-CON-P1-1590 | Excavation for LV Cable trench Section 1 |  | 2026-11-17 → 2026-11-23 (+6d) |  |
| SDR-ST-CON-P1-2390 | Excavation for LV Cable trench Section 2 | 2026-11-21 → 2026-11-26 (+5d) | 2026-12-14 → 2026-12-20 (+6d) |  |
| SDR-ST-CON-P1-3120 | Excavation for LV Cable trench Section 3 | 2026-12-15 → 2026-12-21 (+6d) | 2027-01-07 → 2027-01-13 (+6d) |  |
| 11 | **Install Footings** | 2027-01-09 → 2027-01-14 (+5d) | 2027-01-25 → 2027-01-31 (+6d) |  |
| SDR-ST-CON-P1-3990 | Install Footings | 2027-01-09 → 2027-01-14 (+5d) | 2027-01-25 → 2027-01-31 (+6d) |  |
| 12 | **Backfilling** | 2027-01-26 → 2027-02-01 (+6d) | 2027-02-06 → 2027-02-11 (+5d) |  |
| SDR-ST-CON-P1-4680 | Backfilling over LV Cables of Street lighting | 2027-01-26 → 2027-02-01 (+6d) | 2027-02-06 → 2027-02-11 (+5d) |  |
| 13 | **Install pole** | 2027-02-07 → 2027-02-13 (+6d) | 2027-04-01 → 2027-04-07 (+6d) |  |
| SDR-ST-CON-P1-5050 | Install Pole Part 1 | 2027-02-07 → 2027-02-13 (+6d) | 2027-03-03 → 2027-03-14 (+11d) |  |
| SDR-ST-CON-P1-5760 | Install Pole Part 2 | 2027-03-04 → 2027-03-15 (+11d) | 2027-04-01 → 2027-04-07 (+6d) |  |
| 1 | **ROAD-01 From 0 to 470 m (3)** |  | 2027-04-25 → 2027-05-01 (+6d) |  |
| 10 | **Excavation** |  | 2026-11-18 → 2026-11-24 (+6d) |  |
| SDR-ST-CON-P1-1500 | Excavation for LV Cable trench Section 1 |  | 2026-11-18 → 2026-11-24 (+6d) | 14d → 1d |
| SDR-ST-CON-P1-2320 | Excavation for LV Cable trench Section 2 | 2026-10-26 → 2026-11-01 (+6d) | 2026-11-18 → 2026-11-24 (+6d) | 14d → 15d |
| SDR-ST-CON-P1-3040 | Excavation for LV Cable trench Section 3 | 2026-10-26 → 2026-11-01 (+6d) | 2026-11-18 → 2026-11-24 (+6d) | 14d → 15d |
| 11 | **Install Footings** | 2026-11-19 → 2026-11-25 (+6d) | 2026-12-13 → 2026-12-19 (+6d) |  |
| SDR-ST-CON-P1-3920 | Install Footings | 2026-11-19 → 2026-11-25 (+6d) | 2026-12-13 → 2026-12-19 (+6d) | 14d → 15d |
| 12 | **Backfilling** | 2026-12-14 → 2026-12-20 (+6d) | 2026-12-27 → 2027-01-02 (+6d) |  |
| SDR-ST-CON-P1-4850 | Backfilling over LV Cables of Street lighting | 2026-12-14 → 2026-12-20 (+6d) | 2026-12-27 → 2027-01-02 (+6d) | 14d → 15d |
| 13 | **Install pole** | 2026-12-28 → 2027-01-03 (+6d) | 2027-04-25 → 2027-05-01 (+6d) |  |
| SDR-ST-CON-P1-5330 | Install Pole Part 1 | 2026-12-28 → 2027-01-03 (+6d) | 2027-01-20 → 2027-01-26 (+6d) | 14d → 15d |
| SDR-ST-CON-P1-5780 | Install Pole Part 2 | 2027-02-01 → 2027-02-07 (+6d) | 2027-02-25 → 2027-03-03 (+6d) | 5d → 6d |
| SDR-ST-CON-P1-6070 | Install Pole Part 3 | 2027-02-27 → 2027-03-04 (+5d) | 2027-03-27 → 2027-04-01 (+5d) | 5d → 6d |
| SDR-ST-CON-P1-6080 | Install Pole Part 4 | 2027-04-18 → 2027-04-24 (+6d) | 2027-04-25 → 2027-05-01 (+6d) | 8d → 9d |
| 4 | **ROAD-01 N (1)** | 2026-10-26 → 2026-11-01 (+6d) | 2027-02-13 → 2027-02-18 (+5d) |  |
| 10 | **Excavation** | 2026-10-26 → 2026-11-01 (+6d) | 2026-11-21 → 2026-11-26 (+5d) |  |
| SDR-ST-CON-P1-1700 | Excavation for LV Cable trench Section 1 | 2026-10-26 → 2026-11-01 (+6d) | 2026-11-18 → 2026-11-24 (+6d) | 15d → 1d |
| SDR-ST-CON-P1-2410 | Excavation for LV Cable trench Section 2 | 2026-10-28 → 2026-11-03 (+6d) | 2026-11-21 → 2026-11-26 (+5d) | 15d → 16d |
| SDR-ST-CON-P1-3190 | Excavation for LV Cable trench Section 3 | 2026-10-28 → 2026-11-03 (+6d) | 2026-11-21 → 2026-11-26 (+5d) | 15d → 16d |
| 11 | **Install Footings** | 2026-11-22 → 2026-11-28 (+6d) | 2026-12-15 → 2026-12-21 (+6d) |  |

| ID | Task | Start | Finish | Total float | Predecessors |
| --- | --- | --- | --- | --- | --- |
| SDR-ST-CON-P1-4110 | Install Footings | 2026-11-22 → 2026-11-28 (+6d) | 2026-12-15 → 2026-12-21 (+6d) | 15d → 16d |  |
| 12 | **Backfilling** | 2026-12-16 → 2026-12-22 (+6d) | 2026-12-26 → 2026-12-31 (+5d) |  |  |
| SDR-ST-CON-P1-4960 | Backfilling over LV Cables of Street lighting | 2026-12-16 → 2026-12-22 (+6d) | 2026-12-26 → 2026-12-31 (+5d) | 15d → 16d |  |
| 13 | **Install pole** | 2026-12-27 → 2027-01-02 (+6d) | 2027-02-13 → 2027-02-18 (+5d) |  |  |
| SDR-ST-CON-P1-5340 | Install Pole Part 1 | 2026-12-27 → 2027-01-02 (+6d) | 2027-01-19 → 2027-01-25 (+6d) | 15d → 16d |  |
| SDR-ST-CON-P1-5790 | Install Pole Part 2 | 2027-01-20 → 2027-01-26 (+6d) | 2027-02-13 → 2027-02-18 (+5d) | 15d → 16d |  |
| 5 | **Road Crossing & Drawpits** |  | 2027-01-14 → 2027-01-20 (+6d) |  |  |
| 1 | **ROAD - 01** |  | 2027-01-14 → 2027-01-20 (+6d) |  |  |
| 1 | **ROAD-01 From 470 to 1125 m (6)** |  | 2026-11-09 → 2026-11-15 (+6d) |  |  |
| 1 | **Road crossing Ducts & Drawpits** |  | 2026-11-09 → 2026-11-15 (+6d) |  |  |
| 6 | **Testing** | 2026-10-26 → 2026-11-01 (+6d) | 2026-11-02 → 2026-11-08 (+6d) |  |  |
| SDR-ST-CON-P1-3530 | Testing ST GRP Pipes | 2026-10-26 → 2026-11-01 (+6d) | 2026-11-02 → 2026-11-08 (+6d) | 74d → 75d |  |
| 3 | **Backfilling** | 2026-11-03 → 2026-11-09 (+6d) | 2026-11-09 → 2026-11-15 (+6d) |  |  |
| SDR-ST-CON-P1-3810 | Backfilling ST GRP Pipes | 2026-11-03 → 2026-11-09 (+6d) | 2026-11-09 → 2026-11-15 (+6d) | 74d → 75d |  |
| 2 | **ROAD-01 From 1125 to 1765 m (7)** |  | 2026-12-21 → 2026-12-28 (+7d) |  |  |
| 1 | **Road crossing Ducts & Drawpits** |  | 2026-12-21 → 2026-12-28 (+7d) |  |  |
| 6 | **Testing** | 2026-11-28 → 2026-12-05 (+7d) | 2026-12-07 → 2026-12-14 (+7d) |  |  |
| SDR-ST-CON-P1-3250 | Testing ST GRP Pipes | 2026-11-28 → 2026-12-05 (+7d) | 2026-12-07 → 2026-12-14 (+7d) |  |  |
| 3 | **Backfilling** | 2026-12-08 → 2026-12-15 (+7d) | 2026-12-21 → 2026-12-28 (+7d) |  |  |
| SDR-ST-CON-P1-3670 | Backfilling ST GRP Pipes | 2026-12-08 → 2026-12-15 (+7d) | 2026-12-21 → 2026-12-28 (+7d) |  |  |
| 3 | **ROAD-01 From 0 to 470 m (3)** |  | 2026-11-14 → 2026-11-19 (+5d) |  |  |
| 1 | **Road crossing Ducts & Drawpits** |  | 2026-11-14 → 2026-11-19 (+5d) |  |  |
| 6 | **Testing** | 2026-10-26 → 2026-11-01 (+6d) | 2026-11-01 → 2026-11-07 (+6d) |  |  |
| SDR-ST-CON-P1-3510 | Testing ST GRP Pipes | 2026-10-26 → 2026-11-01 (+6d) | 2026-11-01 → 2026-11-07 (+6d) | 89d → 92d |  |
| 3 | **Backfilling** | 2026-11-03 → 2026-11-09 (+6d) | 2026-11-14 → 2026-11-19 (+5d) |  |  |
| SDR-ST-CON-P1-3760 | Backfilling ST GRP Pipes | 2026-11-03 → 2026-11-09 (+6d) | 2026-11-14 → 2026-11-19 (+5d) | 89d → 92d |  |
| 4 | **ROAD-01 N (1)** | 2026-10-26 → 2026-11-01 (+6d) | 2027-01-14 → 2027-01-20 (+6d) |  |  |
| 1 | **Road crossing Ducts & Drawpits** | 2026-10-26 → 2026-11-01 (+6d) | 2027-01-14 → 2027-01-20 (+6d) |  |  |
| 1 | **Excavation** | 2026-10-26 → 2026-11-01 (+6d) | 2026-11-18 → 2026-11-24 (+6d) |  |  |
| SDR-ST-CON-P1-1710 | Excavation for GRP Pipes Section 1 | 2026-10-26 → 2026-11-01 (+6d) | 2026-11-18 → 2026-11-24 (+6d) | 36d → 39d |  |
| 7 | **bedding Works** | 2026-11-19 → 2026-11-25 (+6d) | 2026-12-13 → 2026-12-19 (+6d) |  |  |
| SDR-ST-CON-P1-2360 | Sand bedding for GRP Pipes | 2026-11-19 → 2026-11-25 (+6d) | 2026-12-13 → 2026-12-19 (+6d) | 36d → 39d |  |
| 2 | **Pipes Laying** | 2026-12-14 → 2026-12-20 (+6d) | 2026-12-24 → 2026-12-30 (+6d) |  |  |
| SDR-ST-CON-P1-3090 | Install ST GRP Pipes | 2026-12-14 → 2026-12-20 (+6d) | 2026-12-24 → 2026-12-30 (+6d) | 36d → 39d |  |
| 6 | **Testing** | 2026-12-26 → 2026-12-31 (+5d) | 2027-01-05 → 2027-01-11 (+6d) |  |  |
| SDR-ST-CON-P1-3520 | Testing ST GRP Pipes | 2026-12-26 → 2026-12-31 (+5d) | 2027-01-05 → 2027-01-11 (+6d) | 36d → 39d |  |
| 3 | **Backfilling** | 2027-01-07 → 2027-01-13 (+6d) | 2027-01-14 → 2027-01-20 (+6d) |  |  |
| SDR-ST-CON-P1-3930 | Backfilling ST GRP Pipes | 2027-01-07 → 2027-01-13 (+6d) | 2027-01-14 → 2027-01-20 (+6d) | 36d → 39d |  |
| 11 | **Ring Main Unit** | 2027-05-05 → 2027-05-11 (+6d) | 2027-07-20 → 2027-07-26 (+6d) |  |  |
| 1 | **Leveling** | 2027-05-05 → 2027-05-11 (+6d) | 2027-06-03 → 2027-06-09 (+6d) |  |  |
| SDR-ST-CON-P1-5840 | Ring Main Unit leveling | 2027-05-05 → 2027-05-11 (+6d) | 2027-06-03 → 2027-06-09 (+6d) | -0.48d → 0.52d |  |
| 2 | **Lean Concrete** | 2027-06-03 → 2027-06-09 (+6d) | 2027-06-27 → 2027-07-03 (+6d) |  |  |
| SDR-ST-CON-P1-5890 | Ring Main Unit Lean Concrete | 2027-06-03 → 2027-06-09 (+6d) | 2027-06-27 → 2027-07-03 (+6d) | -0.48d → 0.52d |  |
| 3 | **Installation** | 2027-06-27 → 2027-07-03 (+6d) | 2027-07-20 → 2027-07-26 (+6d) |  |  |
| SDR-ST-CON-P1-5920 | Ring Main Unit installation for Street Lighting | 2027-06-27 → 2027-07-03 (+6d) | 2027-07-20 → 2027-07-26 (+6d) | -0.48d → 0.52d |  |
| 12 | **Feeder Pillars** | 2027-05-27 → 2027-06-02 (+6d) |  |  |  |
| 1 | **Leveling** | 2027-05-27 → 2027-06-02 (+6d) | 2027-06-20 → 2027-06-26 (+6d) |  |  |
| SDR-ST-CON-P1-5880 | Feeder Pillars Leveling | 2027-05-27 → 2027-06-02 (+6d) | 2027-06-20 → 2027-06-26 (+6d) | 0d → 1d |  |
| 2 | **Lean Concrete** | 2027-06-21 → 2027-06-27 (+6d) | 2027-07-13 → 2027-07-19 (+6d) |  |  |
| SDR-ST-CON-P1-5930 | Feeder Pillars Lean Concrete | 2027-06-21 → 2027-06-27 (+6d) | 2027-07-13 → 2027-07-19 (+6d) | 0d → 1d |  |
| SDR-ST-CON-P1-6000 | Feeder Pillars Installation |  |  | 0d → 1d | SDR-ST-CON-P1-5930 → SDR-ST-CON-P1-5930 SS+15d |
| 13 | **KWH Frame** | 2027-06-10 → 2027-06-16 (+6d) | 2027-07-29 → 2027-08-04 (+6d) |  |  |
| 1 | **Leveling** | 2027-06-10 → 2027-06-16 (+6d) | 2027-07-03 → 2027-07-08 (+5d) |  |  |
| SDR-ST-CON-P1-5940 | KWH meter mounting frame Leveling | 2027-06-10 → 2027-06-16 (+6d) | 2027-07-03 → 2027-07-08 (+5d) | 6d → 1d |  |
| 2 | **Lean Concrete** | 2027-07-04 → 2027-07-10 (+6d) | 2027-07-20 → 2027-07-26 (+6d) |  |  |
| SDR-ST-CON-P1-6010 | KWH meter mounting frame Lean Concrete | 2027-07-04 → 2027-07-10 (+6d) | 2027-07-20 → 2027-07-26 (+6d) | 6d → 1d |  |
| 3 | **Installation** | 2027-07-21 → 2027-07-27 (+6d) | 2027-07-29 → 2027-08-04 (+6d) |  |  |
| SDR-ST-CON-P1-6040 | KWH meter mounting frame installation | 2027-07-21 → 2027-07-27 (+6d) | 2027-07-29 → 2027-08-04 (+6d) | 6d → 1d |  |
| 14 | **Street Lighting Sub-station** | 2027-06-10 → 2027-06-16 (+6d) | 2027-07-17 → 2027-07-22 (+5d) |  |  |
| 1 | **Leveling** | 2027-06-10 → 2027-06-16 (+6d) | 2027-07-03 → 2027-07-08 (+5d) |  |  |
| SDR-ST-CON-P1-5950 | Unit Substation Leveling Part 1 | 2027-06-10 → 2027-06-16 (+6d) | 2027-07-03 → 2027-07-08 (+5d) | 9d → 4d |  |
| SDR-ST-CON-P1-5960 | Unit Substation Leveling Part 2 | 2027-06-10 → 2027-06-16 (+6d) | 2027-07-03 → 2027-07-08 (+5d) | 9d → 4d |  |
| 2 | **Lean Concrete** | 2027-07-04 → 2027-07-10 (+6d) | 2027-07-17 → 2027-07-22 (+5d) |  |  |
| SDR-ST-CON-P1-6020 | Unit Substation Lean Concrete | 2027-07-04 → 2027-07-10 (+6d) | 2027-07-17 → 2027-07-22 (+5d) | 9d → 4d |  |
| 3 | **Installation** | 2027-07-04 → 2027-07-10 (+6d) | 2027-07-08 → 2027-07-14 (+6d) |  |  |
| SDR-ST-CON-P1-6050 | Unit Substation Install for Street Lighting | 2027-07-04 → 2027-07-10 (+6d) | 2027-07-08 → 2027-07-14 (+6d) | 9d → 4d |  |
| 8 | **ROAD - 02** | 2026-10-26 → 2026-11-01 (+6d) | 2027-07-28 → 2027-07-29 (+1d) |  |  |
| 6 | **ROAD-01 From 0 to 400 m (9) 2 Way 110 mm** | 2026-10-26 → 2026-11-01 (+6d) | 2027-02-13 → 2027-02-18 (+5d) |  |  |
| 10 | **Excavation** | 2026-10-26 → 2026-11-01 (+6d) | 2026-12-20 → 2026-12-26 (+6d) |  |  |
| SDR-ST-CON-P1-1310 | Excavation for LV Cable trench Section 1 | 2026-10-26 → 2026-11-01 (+6d) | 2026-11-11 → 2026-11-17 (+6d) | 8d → 9d |  |

| ID | Task | Start | Finish | Total float |
| --- | --- | --- | --- | --- |
| SDR-ST-CON-P1-1780 | Excavation for LV Cable trench Section 2 | 2026-11-15 → 2026-11-21 (+6d) | 2026-12-01 → 2026-12-07 (+6d) | 8d → 9d |
| SDR-ST-CON-P1-2350 | Excavation for LV Cable trench Section 3 | 2026-12-02 → 2026-12-08 (+6d) | 2026-12-20 → 2026-12-26 (+6d) | 8d → 9d |
| 11 | **Install Footings** | 2026-12-21 → 2026-12-27 (+6d) | 2027-01-06 → 2027-01-12 (+6d) |  |
| SDR-ST-CON-P1-2860 | Install Footings | 2026-12-21 → 2026-12-27 (+6d) | 2027-01-06 → 2027-01-12 (+6d) | 8d → 9d |
| 12 | **Backfilling** | 2027-01-07 → 2027-01-13 (+6d) | 2027-01-25 → 2027-01-31 (+6d) |  |
| SDR-ST-CON-P1-3500 | Backfilling over LV Cables of Street lighting | 2027-01-07 → 2027-01-13 (+6d) | 2027-01-25 → 2027-01-31 (+6d) | 8d → 9d |
| 13 | **Install pole** | 2027-01-26 → 2027-02-01 (+6d) | 2027-02-13 → 2027-02-18 (+5d) |  |
| SDR-ST-CON-P1-4260 | Install Pole Part 1 | 2027-01-26 → 2027-02-01 (+6d) | 2027-02-03 → 2027-02-09 (+6d) | 8d → 9d |
| SDR-ST-CON-P1-4570 | Install Pole Part 2 | 2027-02-04 → 2027-02-10 (+6d) | 2027-02-13 → 2027-02-18 (+5d) | 8d → 9d |
| 5 | **ROAD-01 From 400 to 900 m (10) 4 Way 110 mm** | 2026-10-26 → 2026-11-01 (+6d) | 2027-02-07 → 2027-02-13 (+6d) |  |
| 10 | **Excavation** | 2026-10-26 → 2026-11-01 (+6d) | 2026-11-11 → 2026-11-17 (+6d) |  |
| SDR-ST-CON-P1-1260 | Excavation for LV Cable trench Section 1 | 2026-10-26 → 2026-11-01 (+6d) | 2026-11-11 → 2026-11-17 (+6d) | 5d → 6d |
| SDR-ST-CON-P1-1760 | Excavation for LV Cable trench Section 2 | 2026-10-26 → 2026-11-01 (+6d) | 2026-11-11 → 2026-11-17 (+6d) | 36d → 37d |
| SDR-ST-CON-P1-2260 | Excavation for LV Cable trench Section 3 | 2026-10-26 → 2026-11-01 (+6d) | 2026-11-11 → 2026-11-17 (+6d) | 36d → 37d |
| 11 | **Install Footings** | 2026-11-12 → 2026-11-18 (+6d) | 2026-11-28 → 2026-12-03 (+5d) |  |
| SDR-ST-CON-P1-2770 | Install Footings | 2026-11-12 → 2026-11-18 (+6d) | 2026-11-28 → 2026-12-03 (+5d) | 36d → 37d |
| 12 | **Backfilling** | 2026-11-29 → 2026-12-05 (+6d) | 2026-12-14 → 2026-12-20 (+6d) |  |
| SDR-ST-CON-P1-3350 | Backfilling over LV Cables of Street lighting | 2026-11-29 → 2026-12-05 (+6d) | 2026-12-14 → 2026-12-20 (+6d) | 36d → 37d |
| 13 | **Install pole** | 2026-12-15 → 2026-12-21 (+6d) | 2027-02-07 → 2027-02-13 (+6d) |  |
| SDR-ST-CON-P1-3940 | Install Pole Part 1 | 2026-12-15 → 2026-12-21 (+6d) | 2026-12-23 → 2026-12-29 (+6d) | 36d → 37d |
| SDR-ST-CON-P1-4400 | Install Pole Part 2 | 2027-01-30 → 2027-02-04 (+5d) | 2027-02-07 → 2027-02-13 (+6d) | 144d → 140d |
| 4 | **ROAD-01 From 900 to 1239 m (11) 2 Way 110 mm** | 2026-10-26 → 2026-11-01 (+6d) | 2027-02-17 → 2027-02-24 (+7d) |  |
| 10 | **Excavation** | 2026-10-26 → 2026-11-01 (+6d) | 2026-12-15 → 2026-12-21 (+6d) |  |
| SDR-ST-CON-P1-1360 | Excavation for LV Cable trench Section 1 | 2026-10-26 → 2026-11-01 (+6d) | 2026-11-10 → 2026-11-16 (+6d) | 7d → 8d |
| SDR-ST-CON-P1-1900 | Excavation for LV Cable trench Section 2 | 2026-11-14 → 2026-11-19 (+5d) | 2026-11-29 → 2026-12-05 (+6d) | 13d → 14d |
| SDR-ST-CON-P1-2400 | Excavation for LV Cable trench Section 3 | 2026-11-30 → 2026-12-06 (+6d) | 2026-12-15 → 2026-12-21 (+6d) | 13d → 14d |
| 11 | **Install Footings** | 2026-12-16 → 2026-12-22 (+6d) | 2026-12-31 → 2027-01-06 (+6d) |  |
| SDR-ST-CON-P1-2840 | Install Footings | 2026-12-16 → 2026-12-22 (+6d) | 2026-12-31 → 2027-01-06 (+6d) | 13d → 14d |
| 12 | **Backfilling** | 2027-01-02 → 2027-01-07 (+5d) | 2027-01-17 → 2027-01-23 (+6d) |  |
| SDR-ST-CON-P1-3470 | Backfilling over LV Cables of Street lighting | 2027-01-02 → 2027-01-07 (+5d) | 2027-01-17 → 2027-01-23 (+6d) | 13d → 14d |
| 13 | **Install pole** | 2027-01-18 → 2027-01-24 (+6d) | 2027-02-17 → 2027-02-24 (+7d) |  |
| SDR-ST-CON-P1-4080 | Install Pole Part 1 | 2027-01-18 → 2027-01-24 (+6d) | 2027-02-01 → 2027-02-07 (+6d) | 13d → 14d |
| SDR-ST-CON-P1-4610 | Install Pole Part 2 | 2027-02-02 → 2027-02-08 (+6d) | 2027-02-17 → 2027-02-24 (+7d) | 13d → 14d |
| 1 | **Road Crossing & Drawpits** | 2026-10-26 → 2026-11-01 (+6d) | 2027-01-24 → 2027-01-30 (+6d) |  |
| 2 | **ROAD - 02** | 2026-10-26 → 2026-11-01 (+6d) | 2027-01-24 → 2027-01-30 (+6d) |  |
| 1 | **ROAD-01 From 0 to 400 m (9) 2 Way 110 mm** | 2026-10-26 → 2026-11-01 (+6d) | 2027-01-24 → 2027-01-30 (+6d) |  |
| 1 | **Road crossing Ducts & Drawpits** | 2026-10-26 → 2026-11-01 (+6d) | 2027-01-24 → 2027-01-30 (+6d) |  |
| 1 | **Excavation** | 2026-10-26 → 2026-11-01 (+6d) | 2026-11-18 → 2026-11-24 (+6d) |  |
| SDR-ST-CON-P1-1320 | Excavation for GRP Pipes Section 1 | 2026-10-26 → 2026-11-01 (+6d) | 2026-11-18 → 2026-11-24 (+6d) | 9d → 10d |
| 7 | **bedding Works** | 2026-11-19 → 2026-11-25 (+6d) | 2026-12-09 → 2026-12-15 (+6d) |  |
| SDR-ST-CON-P1-1950 | Sand bedding for GRP Pipes | 2026-11-19 → 2026-11-25 (+6d) | 2026-12-09 → 2026-12-15 (+6d) | 9d → 10d |
| 2 | **Pipes Laying** | 2026-12-10 → 2026-12-16 (+6d) | 2026-12-28 → 2027-01-03 (+6d) |  |
| SDR-ST-CON-P1-2560 | Install ST GRP Pipes | 2026-12-10 → 2026-12-16 (+6d) | 2026-12-28 → 2027-01-03 (+6d) | 9d → 10d |
| 6 | **Testing** | 2026-12-29 → 2027-01-04 (+6d) | 2027-01-11 → 2027-01-17 (+6d) |  |
| SDR-ST-CON-P1-3200 | Testing ST GRP Pipes | 2026-12-29 → 2027-01-04 (+6d) | 2027-01-11 → 2027-01-17 (+6d) | 9d → 10d |
| 3 | **Backfilling** | 2027-01-12 → 2027-01-18 (+6d) | 2027-01-24 → 2027-01-30 (+6d) |  |
| SDR-ST-CON-P1-3700 | Backfilling ST GRP Pipes | 2027-01-12 → 2027-01-18 (+6d) | 2027-01-24 → 2027-01-30 (+6d) | 9d → 10d |
| 2 | **ROAD-01 From 400 to 900 m (10) 4 Way 110 mm** | 2026-10-26 → 2026-11-01 (+6d) | 2027-01-20 → 2027-01-26 (+6d) |  |
| 1 | **Road crossing Ducts & Drawpits** | 2026-10-26 → 2026-11-01 (+6d) | 2027-01-20 → 2027-01-26 (+6d) |  |
| 1 | **Excavation** | 2026-10-26 → 2026-11-01 (+6d) | 2026-11-18 → 2026-11-24 (+6d) |  |
| SDR-ST-CON-P1-1270 | Excavation for GRP Pipes Section 1 | 2026-10-26 → 2026-11-01 (+6d) | 2026-11-18 → 2026-11-24 (+6d) | 12d → 13d |
| 7 | **bedding Works** | 2026-11-19 → 2026-11-25 (+6d) | 2026-12-08 → 2026-12-14 (+6d) |  |
| SDR-ST-CON-P1-1870 | Sand bedding for GRP Pipes | 2026-11-19 → 2026-11-25 (+6d) | 2026-12-08 → 2026-12-14 (+6d) | 12d → 13d |
| 2 | **Pipes Laying** | 2026-12-09 → 2026-12-15 (+6d) | 2026-12-24 → 2026-12-30 (+6d) |  |
| SDR-ST-CON-P1-2470 | Install ST GRP Pipes | 2026-12-09 → 2026-12-15 (+6d) | 2026-12-24 → 2026-12-30 (+6d) | 12d → 13d |
| 6 | **Testing** | 2026-12-26 → 2026-12-31 (+5d) | 2027-01-04 → 2027-01-10 (+6d) |  |
| SDR-ST-CON-P1-2970 | Testing ST GRP Pipes | 2026-12-26 → 2026-12-31 (+5d) | 2027-01-04 → 2027-01-10 (+6d) | 12d → 13d |
| 3 | **Backfilling** | 2027-01-05 → 2027-01-11 (+6d) | 2027-01-20 → 2027-01-26 (+6d) |  |
| SDR-ST-CON-P1-3360 | Backfilling ST GRP Pipes | 2027-01-05 → 2027-01-11 (+6d) | 2027-01-20 → 2027-01-26 (+6d) | 12d → 13d |
| 3 | **ROAD-01 From 900 to 1239 m (11) 2 Way 110 mm** | 2026-10-26 → 2026-11-01 (+6d) | 2027-01-14 → 2027-01-20 (+6d) |  |
| 1 | **Road crossing Ducts & Drawpits** | 2026-10-26 → 2026-11-01 (+6d) | 2027-01-14 → 2027-01-20 (+6d) |  |
| 1 | **Excavation** | 2026-10-26 → 2026-11-01 (+6d) | 2026-11-18 → 2026-11-24 (+6d) |  |
| SDR-ST-CON-P1-1370 | Excavation for GRP Pipes Section 1 | 2026-10-26 → 2026-11-01 (+6d) | 2026-11-18 → 2026-11-24 (+6d) | 17d → 18d |
| 7 | **bedding Works** | 2026-11-19 → 2026-11-25 (+6d) | 2026-12-06 → 2026-12-12 (+6d) |  |
| SDR-ST-CON-P1-2060 | Sand bedding for GRP Pipes | 2026-11-19 → 2026-11-25 (+6d) | 2026-12-06 → 2026-12-12 (+6d) | 17d → 18d |
| 2 | **Pipes Laying** | 2026-12-07 → 2026-12-13 (+6d) | 2026-12-22 → 2026-12-28 (+6d) |  |
| SDR-ST-CON-P1-2600 | Install ST GRP Pipes | 2026-12-07 → 2026-12-13 (+6d) | 2026-12-22 → 2026-12-28 (+6d) | 17d → 18d |
| 6 | **Testing** | 2026-12-23 → 2026-12-29 (+6d) | 2026-12-31 → 2027-01-06 (+6d) |  |
| SDR-ST-CON-P1-3110 | Testing ST GRP Pipes | 2026-12-23 → 2026-12-29 (+6d) | 2026-12-31 → 2027-01-06 (+6d) | 17d → 18d |
| 3 | **Backfilling** | 2027-01-02 → 2027-01-07 (+5d) | 2027-01-14 → 2027-01-20 (+6d) |  |

| ID | Task | Start | Finish | Total float | Predecessors |
| --- | --- | --- | --- | --- | --- |
| SDR-ST-CON-P1-3480 | Backfilling ST GRP Pipes | 2027-01-02 → 2027-01-07 (+5d) | 2027-01-14 → 2027-01-20 (+6d) | 17d → 18d |  |
| 11 | **Ring Main Unit** | 2027-05-01 → 2027-05-06 (+5d) | 2027-07-26 → 2027-07-29 (+3d) |  |  |
| 1 | **Leveling** | 2027-05-01 → 2027-05-06 (+5d) | 2027-05-29 → 2027-06-03 (+5d) |  |  |
| SDR-ST-CON-P1-5810 | Ring Main Unit leveling | 2027-05-01 → 2027-05-06 (+5d) | 2027-05-29 → 2027-06-03 (+5d) |  |  |
| 2 | **Lean Concrete** | 2027-05-30 → 2027-06-05 (+6d) | 2027-06-21 → 2027-06-27 (+6d) |  |  |
| SDR-ST-CON-P1-5850 | Ring Main Unit Lean Concrete | 2027-05-30 → 2027-06-05 (+6d) | 2027-06-21 → 2027-06-27 (+6d) | 0d → 1d |  |
| 3 | **Installation** | 2027-07-04 → 2027-07-07 (+3d) | 2027-07-26 → 2027-07-29 (+3d) |  |  |
| SDR-ST-CON-P1-5970 | Ring Main Unit installation for Street Lighting | 2027-07-04 → 2027-07-07 (+3d) | 2027-07-26 → 2027-07-29 (+3d) | 0d → 1d | SDR-ST-CON-P1-5850 FS+10d → SDR-ST-CON-P1-5850 FS+8d |
| 12 | **Feeder Pillars** | 2027-05-01 → 2027-05-06 (+5d) | 2027-07-28 → 2027-07-29 (+1d) |  |  |
| 1 | **Leveling** | 2027-05-01 → 2027-05-06 (+5d) | 2027-05-29 → 2027-06-03 (+5d) |  |  |
| SDR-ST-CON-P1-5820 | Feeder Pillars Leveling | 2027-05-01 → 2027-05-06 (+5d) | 2027-05-29 → 2027-06-03 (+5d) | 1d → 0d |  |
| 2 | **Lean Concrete** | 2027-05-30 → 2027-06-05 (+6d) | 2027-06-21 → 2027-06-27 (+6d) |  |  |
| SDR-ST-CON-P1-5860 | Feeder Pillars Lean Concrete | 2027-05-30 → 2027-06-05 (+6d) | 2027-06-21 → 2027-06-27 (+6d) | 2d → 1d |  |
| 3 | **Installation** | 2027-07-06 → 2027-07-07 (+1d) | 2027-07-28 → 2027-07-29 (+1d) |  |  |
| SDR-ST-CON-P1-5980 | Feeder Pillars Installation | 2027-07-06 → 2027-07-07 (+1d) | 2027-07-28 → 2027-07-29 (+1d) | 2d → 1d | SDR-ST-CON-P1-5860 FS+12d → SDR-ST-CON-P1-5860 FS+8d |
| 13 | **KWH Frame** | 2027-05-02 → 2027-05-08 (+6d) | 2027-07-15 → 2027-07-21 (+6d) |  |  |
| 1 | **Leveling** | 2027-05-02 → 2027-05-08 (+6d) | 2027-05-30 → 2027-06-05 (+6d) |  |  |
| SDR-ST-CON-P1-5830 | KWH meter mounting frame Leveling | 2027-05-02 → 2027-05-08 (+6d) | 2027-05-30 → 2027-06-05 (+6d) | 1d → 0d |  |
| 2 | **Lean Concrete** | 2027-05-31 → 2027-06-06 (+6d) | 2027-06-22 → 2027-06-28 (+6d) |  |  |
| SDR-ST-CON-P1-5870 | KWH meter mounting frame Lean Concrete | 2027-05-31 → 2027-06-06 (+6d) | 2027-06-22 → 2027-06-28 (+6d) | 1d → 0d |  |
| 3 | **Installation** | 2027-06-23 → 2027-06-29 (+6d) | 2027-07-15 → 2027-07-21 (+6d) |  |  |
| SDR-ST-CON-P1-5910 | KWH meter mounting frame installation | 2027-06-23 → 2027-06-29 (+6d) | 2027-07-15 → 2027-07-21 (+6d) | 1d → 0d |  |
| 14 | **Street Lighting Sub-station** | 2027-05-31 → 2027-06-06 (+6d) | 2027-07-15 → 2027-07-21 (+6d) |  |  |
| 1 | **Leveling** | 2027-05-31 → 2027-06-06 (+6d) | 2027-06-22 → 2027-06-28 (+6d) |  |  |
| SDR-ST-CON-P1-5900 | Unit Substation Leveling | 2027-05-31 → 2027-06-06 (+6d) | 2027-06-22 → 2027-06-28 (+6d) | 1d → 4d |  |
| 2 | **Lean Concrete** | 2027-06-23 → 2027-06-29 (+6d) | 2027-07-15 → 2027-07-21 (+6d) |  |  |
| SDR-ST-CON-P1-5990 | Unit Substation Lean Concrete | 2027-06-23 → 2027-06-29 (+6d) | 2027-07-15 → 2027-07-21 (+6d) | 19d → 14d |  |
| 3 | **Installation** | 2027-06-23 → 2027-06-29 (+6d) | 2027-07-12 → 2027-07-18 (+6d) |  |  |
| SDR-ST-CON-P1-6030 | Unit Substation Install for Street Lighting | 2027-06-23 → 2027-06-29 (+6d) | 2027-07-12 → 2027-07-18 (+6d) | 21d → 16d |  |
| 5 | **TELECOMMUNICATIONS WORKS** |  | 2027-03-15 → 2027-03-21 (+6d) |  |  |
| 3 | **ROAD - 01** |  | 2027-03-15 → 2027-03-21 (+6d) |  |  |
| 4 | **ROAD-01 N 1 (2X3)X50 mm MH-15 to MH-16** |  | 2027-02-23 → 2027-03-01 (+6d) |  |  |
| 3 | **Ducts** | 2026-10-26 → 2026-11-01 (+6d) | 2027-02-23 → 2027-03-01 (+6d) |  |  |
| 2 | **Excavation** | 2026-10-26 → 2026-11-01 (+6d) | 2026-12-13 → 2026-12-19 (+6d) |  |  |
| SDR-ST-CON-P1-1690 | Excavation for telecom trench Section 1 | 2026-10-26 → 2026-11-01 (+6d) | 2026-11-18 → 2026-11-24 (+6d) | 0d → 1d | none → SDR-ST-CON-P1-1700 SS |
| SDR-ST-CON-P1-2340 | Excavation for telecom trench Section 2 | 2026-11-19 → 2026-11-25 (+6d) | 2026-12-13 → 2026-12-19 (+6d) | 0d → 1d |  |
| 5 | **Pipe laying** | 2026-12-14 → 2026-12-20 (+6d) | 2027-01-05 → 2027-01-11 (+6d) |  |  |
| SDR-ST-CON-P1-3070 | HDPE Pipes for Telecom Installation | 2026-12-14 → 2026-12-20 (+6d) | 2027-01-05 → 2027-01-11 (+6d) | 0d → 1d |  |
| 6 | **Backfilling** | 2027-01-06 → 2027-01-12 (+6d) | 2027-01-28 → 2027-02-03 (+6d) |  |  |
| SDR-ST-CON-P1-3680 | Backfilling over HDPE Telecom Pipes | 2027-01-06 → 2027-01-12 (+6d) | 2027-01-28 → 2027-02-03 (+6d) | 0d → 1d |  |
| 7 | **Pulling Cable** | 2027-01-30 → 2027-02-04 (+5d) | 2027-02-23 → 2027-03-01 (+6d) |  |  |
| SDR-ST-CON-P1-4310 | Pulling Cable | 2027-01-30 → 2027-02-04 (+5d) | 2027-02-23 → 2027-03-01 (+6d) | 0d → 1d |  |
| 4 | **Manholes** |  | 2026-12-09 → 2026-12-15 (+6d) |  |  |
| 4 | **Testting** | 2026-10-26 → 2026-11-01 (+6d) | 2026-11-17 → 2026-11-23 (+6d) |  |  |
| SDR-ST-CON-P1-4360 | Telecom Manhole finishing works | 2026-10-26 → 2026-11-01 (+6d) | 2026-11-17 → 2026-11-23 (+6d) | 75d → 76d |  |
| 5 | **Backfilling** | 2026-11-18 → 2026-11-24 (+6d) | 2026-12-09 → 2026-12-15 (+6d) |  |  |
| SDR-ST-CON-P1-4880 | Backfilling over Telecom Manhole | 2026-11-18 → 2026-11-24 (+6d) | 2026-12-09 → 2026-12-15 (+6d) | 75d → 76d |  |
| 2 | **ROAD-01 From 0 to 470 m (3) (2X3)X50 mm MH-12 to MH-14** |  | 2027-03-15 → 2027-03-21 (+6d) |  |  |
| 3 | **Ducts** |  | 2027-01-31 → 2027-02-06 (+6d) |  |  |
| 2 | **Excavation** |  | 2026-11-18 → 2026-11-24 (+6d) |  |  |
| SDR-ST-CON-P1-1530 | Excavation for telecom trench Section 1 |  |  |  | none → SDR-ST-CON-P1-1500 SS |
| SDR-ST-CON-P1-2190 | Excavation for telecom trench Section 2 |  | 2026-11-18 → 2026-11-24 (+6d) |  |  |
| 5 | **Pipe laying** | 2026-11-19 → 2026-11-25 (+6d) | 2026-12-13 → 2026-12-19 (+6d) |  |  |
| SDR-ST-CON-P1-2940 | HDPE Pipes for Telecom Installation | 2026-11-19 → 2026-11-25 (+6d) | 2026-12-13 → 2026-12-19 (+6d) |  |  |
| 6 | **Backfilling** | 2026-12-14 → 2026-12-20 (+6d) | 2027-01-06 → 2027-01-12 (+6d) |  |  |
| SDR-ST-CON-P1-3770 | Backfilling over HDPE Telecom Pipes | 2026-12-14 → 2026-12-20 (+6d) | 2027-01-06 → 2027-01-12 (+6d) |  |  |
| 7 | **Pulling Cable** | 2027-01-07 → 2027-01-13 (+6d) | 2027-01-31 → 2027-02-06 (+6d) |  |  |
| SDR-ST-CON-P1-4370 | Pulling Cable | 2027-01-07 → 2027-01-13 (+6d) | 2027-01-31 → 2027-02-06 (+6d) |  |  |
| 4 | **Manholes** |  | 2027-03-15 → 2027-03-21 (+6d) |  |  |
| 1 | **Excavation** |  | 2026-12-05 → 2026-12-10 (+5d) |  |  |
| SDR-ST-CON-P1-2200 | Excavation for Telecom Manhole Section 2 |  | 2026-12-05 → 2026-12-10 (+5d) | -0.48d → 0.52d |  |
| 2 | **Bedding Work** |  | 2026-12-27 → 2027-01-02 (+6d) |  |  |
| SDR-ST-CON-P1-2950 | Sand bedding for Telecom Manhole |  | 2026-12-27 → 2027-01-02 (+6d) | -0.48d → 0.52d |  |
| 3 | **Install Manholes** |  | 2027-01-19 → 2027-01-25 (+6d) |  |  |
| SDR-ST-CON-P1-3780 | Installation of Telecom Manhole |  | 2027-01-19 → 2027-01-25 (+6d) | -0.48d → 0.52d |  |
| 4 | **Testting** | 2027-01-19 → 2027-01-25 (+6d) | 2027-02-13 → 2027-02-18 (+5d) |  |  |
| SDR-ST-CON-P1-4630 | Telecom Manhole finishing works | 2027-01-19 → 2027-01-25 (+6d) | 2027-02-13 → 2027-02-18 (+5d) | -0.48d → 0.52d |  |
| 5 | **Backfilling** | 2027-02-13 → 2027-02-18 (+5d) | 2027-03-15 → 2027-03-21 (+6d) |  |  |
| SDR-ST-CON-P1-5140 | Backfilling over Telecom Manhole | 2027-02-13 → 2027-02-18 (+5d) | 2027-03-15 → 2027-03-21 (+6d) | -0.48d → 0.52d |  |
| 1 | **ROAD-01 From 470 to 1125 m (6) (2X3)X50 mm MH-10 to MH-11** |  | 2027-01-27 → 2027-02-02 (+6d) |  |  |

| ID | Task | Start | Finish | Total float | Predecessors |
| --- | --- | --- | --- | --- | --- |
| 3 | **Ducts** |  | 2027-01-27 → 2027-02-02 (+6d) |  |  |
| 2 | **Excavation** |  | 2026-11-18 → 2026-11-24 (+6d) |  |  |
| SDR-ST-CON-P1-1240 | Excavation for telecom trench Section 1 |  |  |  | none → SDR-ST-CON-P1-1180 SS |
| SDR-ST-CON-P1-1790 | Excavation for telecom trench Section 2 | 2026-10-26 → 2026-11-01 (+6d) | 2026-11-18 → 2026-11-24 (+6d) | 15d → 17d |  |
| 5 | **Pipe laying** | 2026-11-19 → 2026-11-25 (+6d) | 2026-12-13 → 2026-12-19 (+6d) |  |  |
| SDR-ST-CON-P1-2510 | HDPE Pipes for Telecom Installation | 2026-11-19 → 2026-11-25 (+6d) | 2026-12-13 → 2026-12-19 (+6d) | 15d → 17d |  |
| 6 | **Backfilling** | 2026-12-14 → 2026-12-20 (+6d) | 2027-01-03 → 2027-01-09 (+6d) |  |  |
| SDR-ST-CON-P1-3230 | Backfilling over HDPE Telecom Pipes | 2026-12-14 → 2026-12-20 (+6d) | 2027-01-03 → 2027-01-09 (+6d) | 15d → 17d |  |
| 7 | **Pulling Cable** | 2027-01-04 → 2027-01-10 (+6d) | 2027-01-27 → 2027-02-02 (+6d) |  |  |
| SDR-ST-CON-P1-4020 | Pulling Cable | 2027-01-04 → 2027-01-10 (+6d) | 2027-01-27 → 2027-02-02 (+6d) | 15d → 17d |  |
| 4 | **Manholes** |  | 2027-01-12 → 2027-01-18 (+6d) |  |  |
| 4 | **Testting** | 2026-11-25 → 2026-12-01 (+6d) | 2026-12-19 → 2026-12-24 (+5d) |  |  |
| SDR-ST-CON-P1-4150 | Telecom Manhole finishing works | 2026-11-25 → 2026-12-01 (+6d) | 2026-12-19 → 2026-12-24 (+5d) | 46d → 47d |  |
| 5 | **Backfilling** | 2026-12-20 → 2026-12-26 (+6d) | 2027-01-12 → 2027-01-18 (+6d) |  |  |
| SDR-ST-CON-P1-4740 | Backfilling over Telecom Manhole | 2026-12-20 → 2026-12-26 (+6d) | 2027-01-12 → 2027-01-18 (+6d) | 46d → 47d |  |
| 3 | **ROAD-01 From 1125 to 1765 m (7) (2X3)X50 mm MH-8 to MH-9** |  | 2027-01-31 → 2027-02-06 (+6d) |  |  |
| 3 | **Ducts** |  | 2027-01-31 → 2027-02-06 (+6d) |  |  |
| 2 | **Excavation** |  | 2026-11-18 → 2026-11-24 (+6d) |  |  |
| SDR-ST-CON-P1-1620 | Excavation for telecom trench Section 1 |  |  |  | none → SDR-ST-CON-P1-1590 SS |
| SDR-ST-CON-P1-2290 | Excavation for telecom trench Section 2 | 2026-10-26 → 2026-11-01 (+6d) | 2026-11-18 → 2026-11-24 (+6d) | 28d → 29d |  |
| 5 | **Pipe laying** | 2026-11-19 → 2026-11-25 (+6d) | 2026-12-13 → 2026-12-19 (+6d) |  |  |
| SDR-ST-CON-P1-3010 | HDPE Pipes for Telecom Installation | 2026-11-19 → 2026-11-25 (+6d) | 2026-12-13 → 2026-12-19 (+6d) | 28d → 29d |  |
| 6 | **Backfilling** | 2026-12-14 → 2026-12-20 (+6d) | 2027-01-06 → 2027-01-12 (+6d) |  |  |
| SDR-ST-CON-P1-3630 | Backfilling over HDPE Telecom Pipes | 2026-12-14 → 2026-12-20 (+6d) | 2027-01-06 → 2027-01-12 (+6d) | 28d → 29d |  |
| 7 | **Pulling Cable** | 2027-01-07 → 2027-01-13 (+6d) | 2027-01-31 → 2027-02-06 (+6d) |  |  |
| SDR-ST-CON-P1-4240 | Pulling Cable | 2027-01-07 → 2027-01-13 (+6d) | 2027-01-31 → 2027-02-06 (+6d) | 28d → 29d |  |
| 4 | **Manholes** |  | 2026-12-07 → 2026-12-13 (+6d) |  |  |
| 4 | **Testting** | 2026-10-26 → 2026-11-01 (+6d) | 2026-11-15 → 2026-11-21 (+6d) |  |  |
| SDR-ST-CON-P1-4720 | Telecom Manhole finishing works | 2026-10-26 → 2026-11-01 (+6d) | 2026-11-15 → 2026-11-21 (+6d) | 72d → 73d |  |
| 5 | **Backfilling** | 2026-11-16 → 2026-11-22 (+6d) | 2026-12-07 → 2026-12-13 (+6d) |  |  |
| SDR-ST-CON-P1-5240 | Backfilling over Telecom Manhole | 2026-11-16 → 2026-11-22 (+6d) | 2026-12-07 → 2026-12-13 (+6d) | 72d → 73d |  |
| 4 | **ROAD - 02** |  | 2027-02-25 → 2027-03-03 (+6d) |  |  |
| 3 | **ROAD-01 From 0 to 400 m (9) (2X3)X50 mm MH-5 to MH-7** |  | 2027-01-06 → 2027-01-12 (+6d) |  |  |
| 3 | **Ducts** | 2026-10-26 → 2026-11-01 (+6d) | 2027-01-06 → 2027-01-12 (+6d) |  |  |
| 2 | **Excavation** | 2026-10-26 → 2026-11-01 (+6d) | 2026-11-18 → 2026-11-24 (+6d) |  |  |
| SDR-ST-CON-P1-1340 | Excavation for telecom trench Section 1 | 2026-10-26 → 2026-11-01 (+6d) | 2026-11-18 → 2026-11-24 (+6d) | 26d → 27d |  |
| SDR-ST-CON-P1-1960 | Excavation for telecom trench Section 2 | 2026-10-26 → 2026-11-01 (+6d) | 2026-11-18 → 2026-11-24 (+6d) | 26d → 27d |  |
| 5 | **Pipe laying** | 2026-10-26 → 2026-11-01 (+6d) | 2026-11-18 → 2026-11-24 (+6d) |  |  |
| SDR-ST-CON-P1-2670 | HDPE Pipes for Telecom Installation | 2026-10-26 → 2026-11-01 (+6d) | 2026-11-18 → 2026-11-24 (+6d) | 26d → 27d |  |
| 6 | **Backfilling** | 2026-11-19 → 2026-11-25 (+6d) | 2026-12-13 → 2026-12-19 (+6d) |  |  |
| SDR-ST-CON-P1-3440 | Backfilling over HDPE Telecom Pipes | 2026-11-19 → 2026-11-25 (+6d) | 2026-12-13 → 2026-12-19 (+6d) | 26d → 27d |  |
| 7 | **Pulling Cable** | 2026-12-14 → 2026-12-20 (+6d) | 2027-01-06 → 2027-01-12 (+6d) |  |  |
| SDR-ST-CON-P1-4270 | Pulling Cable | 2026-12-14 → 2026-12-20 (+6d) | 2027-01-06 → 2027-01-12 (+6d) | 26d → 27d |  |
| 4 | **Manholes** |  | 2026-12-13 → 2026-12-19 (+6d) |  |  |
| 4 | **Testting** | 2026-10-26 → 2026-11-01 (+6d) | 2026-11-18 → 2026-11-24 (+6d) |  |  |
| SDR-ST-CON-P1-4380 | Telecom Manhole finishing works | 2026-10-26 → 2026-11-01 (+6d) | 2026-11-18 → 2026-11-24 (+6d) | 65d → 66d |  |
| 5 | **Backfilling** | 2026-11-19 → 2026-11-25 (+6d) | 2026-12-13 → 2026-12-19 (+6d) |  |  |
| SDR-ST-CON-P1-4900 | Backfilling over Telecom Manhole | 2026-11-19 → 2026-11-25 (+6d) | 2026-12-13 → 2026-12-19 (+6d) | 65d → 66d |  |
| 1 | **ROAD-01 From 400 to 900 m (10) (2X3)X50 mm MH-1 to MH-4** |  | 2027-02-21 → 2027-02-28 (+7d) |  |  |
| 3 | **Ducts** | 2026-10-26 → 2026-11-01 (+6d) | 2027-01-31 → 2027-02-06 (+6d) |  |  |
| 2 | **Excavation** | 2026-10-26 → 2026-11-01 (+6d) | 2026-11-18 → 2026-11-24 (+6d) |  |  |
| SDR-ST-CON-P1-1290 | Excavation for telecom trench Section 1 | 2026-10-26 → 2026-11-01 (+6d) | 2026-11-18 → 2026-11-24 (+6d) | 5d → 6d |  |
| SDR-ST-CON-P1-1880 | Excavation for telecom trench Section 2 | 2026-10-26 → 2026-11-01 (+6d) | 2026-11-18 → 2026-11-24 (+6d) | 5d → 6d |  |
| 5 | **Pipe laying** | 2026-11-19 → 2026-11-25 (+6d) | 2026-12-13 → 2026-12-19 (+6d) |  |  |
| SDR-ST-CON-P1-2640 | HDPE Pipes for Telecom Installation | 2026-11-19 → 2026-11-25 (+6d) | 2026-12-13 → 2026-12-19 (+6d) | 5d → 6d |  |
| 6 | **Backfilling** | 2026-12-14 → 2026-12-20 (+6d) | 2027-01-06 → 2027-01-12 (+6d) |  |  |
| SDR-ST-CON-P1-3370 | Backfilling over HDPE Telecom Pipes | 2026-12-14 → 2026-12-20 (+6d) | 2027-01-06 → 2027-01-12 (+6d) | 5d → 6d |  |
| 7 | **Pulling Cable** | 2027-01-07 → 2027-01-13 (+6d) | 2027-01-31 → 2027-02-06 (+6d) |  |  |
| SDR-ST-CON-P1-4160 | Pulling Cable | 2027-01-07 → 2027-01-13 (+6d) | 2027-01-31 → 2027-02-06 (+6d) | 5d → 6d |  |
| 4 | **Manholes** |  | 2027-02-21 → 2027-02-28 (+7d) |  |  |
| 1 | **Excavation** |  | 2026-11-18 → 2026-11-24 (+6d) |  |  |
| SDR-ST-CON-P1-1890 | Excavation for Telecom Manhole Section 2 |  | 2026-11-18 → 2026-11-24 (+6d) | 5d → 6d |  |
| 2 | **Bedding Work** |  | 2026-12-10 → 2026-12-16 (+6d) |  |  |
| SDR-ST-CON-P1-2650 | Sand bedding for Telecom Manhole |  | 2026-12-10 → 2026-12-16 (+6d) | 5d → 6d |  |
| 3 | **Install Manholes** |  | 2027-01-03 → 2027-01-09 (+6d) |  |  |
| SDR-ST-CON-P1-3380 | Installation of Telecom Manhole |  | 2027-01-03 → 2027-01-09 (+6d) | 5d → 6d |  |
| 4 | **Testting** | 2027-01-04 → 2027-01-10 (+6d) | 2027-01-27 → 2027-02-02 (+6d) |  |  |
| SDR-ST-CON-P1-4280 | Telecom Manhole finishing works | 2027-01-04 → 2027-01-10 (+6d) | 2027-01-27 → 2027-02-02 (+6d) | 5d → 6d |  |
| 5 | **Backfilling** | 2027-01-28 → 2027-02-03 (+6d) | 2027-02-21 → 2027-02-28 (+7d) |  |  |
| SDR-ST-CON-P1-4820 | Backfilling over Telecom Manhole | 2027-01-28 → 2027-02-03 (+6d) | 2027-02-21 → 2027-02-28 (+7d) | 5d → 6d |  |

| ID | Task | Start | Finish | Complete | Total float |
| --- | --- | --- | --- | --- | --- |
| 2 | **ROAD-01 From 900 to 1239 m (11) (2)X32 mm MH-1** | 2026-10-26 → 2026-11-01 (+6d) | 2027-02-25 → 2027-03-03 (+6d) |  |  |
| 3 | **Ducts** | 2026-10-26 → 2026-11-01 (+6d) | 2027-02-25 → 2027-03-03 (+6d) |  |  |
| 2 | **Excavation** | 2026-10-26 → 2026-11-01 (+6d) | 2026-12-13 → 2026-12-19 (+6d) |  |  |
| SDR-ST-CON-P1-1390 | Excavation for telecom trench Section 1 | 2026-10-26 → 2026-11-01 (+6d) | 2026-11-18 → 2026-11-24 (+6d) |  | 7d → 8d |
| SDR-ST-CON-P1-2070 | Excavation for telecom trench Section 2 | 2026-11-19 → 2026-11-25 (+6d) | 2026-12-13 → 2026-12-19 (+6d) |  | 7d → 8d |
| 5 | **Pipe laying** | 2026-12-14 → 2026-12-20 (+6d) | 2027-01-06 → 2027-01-12 (+6d) |  |  |
| SDR-ST-CON-P1-2780 | HDPE Pipes for Telecom Installation | 2026-12-14 → 2026-12-20 (+6d) | 2027-01-06 → 2027-01-12 (+6d) |  | 7d → 8d |
| 6 | **Backfilling** | 2027-01-07 → 2027-01-13 (+6d) | 2027-01-31 → 2027-02-06 (+6d) |  |  |
| SDR-ST-CON-P1-3580 | Backfilling over HDPE Telecom Pipes | 2027-01-07 → 2027-01-13 (+6d) | 2027-01-31 → 2027-02-06 (+6d) |  | 7d → 8d |
| 7 | **Pulling Cable** | 2027-02-01 → 2027-02-07 (+6d) | 2027-02-25 → 2027-03-03 (+6d) |  |  |
| SDR-ST-CON-P1-4170 | Pulling Cable | 2027-02-01 → 2027-02-07 (+6d) | 2027-02-25 → 2027-03-03 (+6d) |  | 7d → 8d |
| 4 | **Manholes** | 2026-10-26 → 2026-11-01 (+6d) | 2027-02-18 → 2027-02-25 (+7d) |  |  |
| 1 | **Excavation** | 2026-10-26 → 2026-11-01 (+6d) | 2026-11-18 → 2026-11-24 (+6d) |  |  |
| SDR-ST-CON-P1-1380 | Excavation for Telecom Manhole Section 1 | 2026-10-26 → 2026-11-01 (+6d) | 2026-11-18 → 2026-11-24 (+6d) |  | 7d → 8d |
| SDR-ST-CON-P1-2080 | Excavation for Telecom Manhole Section 2 | 2026-10-26 → 2026-11-01 (+6d) | 2026-11-18 → 2026-11-24 (+6d) |  | 7d → 8d |
| 2 | **Bedding Work** | 2026-11-19 → 2026-11-25 (+6d) | 2026-12-10 → 2026-12-16 (+6d) |  |  |
| SDR-ST-CON-P1-2790 | Sand bedding for Telecom Manhole | 2026-11-19 → 2026-11-25 (+6d) | 2026-12-10 → 2026-12-16 (+6d) |  | 7d → 8d |
| 3 | **Install Manholes** | 2026-12-12 → 2026-12-17 (+5d) | 2027-01-04 → 2027-01-10 (+6d) |  |  |
| SDR-ST-CON-P1-3590 | Installation of Telecom Manhole | 2026-12-12 → 2026-12-17 (+5d) | 2027-01-04 → 2027-01-10 (+6d) |  | 7d → 8d |
| 4 | **Testting** | 2027-01-05 → 2027-01-11 (+6d) | 2027-01-28 → 2027-02-03 (+6d) |  |  |
| SDR-ST-CON-P1-4500 | Telecom Manhole finishing works | 2027-01-05 → 2027-01-11 (+6d) | 2027-01-28 → 2027-02-03 (+6d) |  | 7d → 8d |
| 5 | **Backfilling** | 2027-01-30 → 2027-02-04 (+5d) | 2027-02-18 → 2027-02-25 (+7d) |  |  |
| SDR-ST-CON-P1-5000 | Backfilling over Telecom Manhole | 2027-01-30 → 2027-02-04 (+5d) | 2027-02-18 → 2027-02-25 (+7d) |  | 7d → 8d |
| 13 | **LOW VOLTAGE** |  | 2027-05-03 → 2027-05-09 (+6d) |  |  |
| 1 | **ROAD - 01** |  | 2027-04-13 → 2027-04-19 (+6d) |  |  |
| 1 | **ROAD-01 From 470 to 1125 m (6)** |  | 2027-04-13 → 2027-04-19 (+6d) |  |  |
| 6 | **Excavation** |  | 2026-12-13 → 2026-12-19 (+6d) |  |  |
| SDR-ST-CON-P1-1670 | Excavation Works Part 1 |  | 2026-11-18 → 2026-11-24 (+6d) |  | 45d → 46d |
| SDR-ST-CON-P1-6230 | Excavation Works Part 2 | 2026-11-19 → 2026-11-25 (+6d) | 2026-12-13 → 2026-12-19 (+6d) |  | 45d → 46d |
| 7 | **Pipe laying** | 2026-12-14 → 2026-12-20 (+6d) | 2027-01-05 → 2027-01-11 (+6d) |  |  |
| SDR-ST-CON-P1-2330 | Pipe Laying | 2026-12-14 → 2026-12-20 (+6d) | 2027-01-05 → 2027-01-11 (+6d) |  | 45d → 46d |
| 8 | **Backfilling** | 2027-01-06 → 2027-01-12 (+6d) | 2027-01-30 → 2027-02-04 (+5d) |  |  |
| SDR-ST-CON-P1-2990 | Backfilling Works | 2027-01-06 → 2027-01-12 (+6d) | 2027-01-30 → 2027-02-04 (+5d) |  | 54d → 57d |
| 9 | **Pulling Cable** | 2027-03-21 → 2027-03-27 (+6d) | 2027-04-13 → 2027-04-19 (+6d) |  |  |
| SDR-ST-CON-P1-3880 | Pulling Cable | 2027-03-21 → 2027-03-27 (+6d) | 2027-04-13 → 2027-04-19 (+6d) |  | 17d → 20d |
| 2 | **ROAD - 02** |  | 2027-05-03 → 2027-05-09 (+6d) |  |  |
| 1 | **ROAD-01 From 400 to 900 m (10)** |  | 2027-04-14 → 2027-04-05 (-9d) |  |  |
| 6 | **Excavation** |  | 2026-12-13 → 2026-12-19 (+6d) |  |  |
| SDR-ST-CON-P1-1740 | Excavation Works Part 1 |  | 2026-11-18 → 2026-11-24 (+6d) |  | 52d → 53d |
| SDR-ST-CON-P1-6240 | Excavation Works Part 2 | 2026-11-19 → 2026-11-25 (+6d) | 2026-12-13 → 2026-12-19 (+6d) |  | 52d → 53d |
| 7 | **Pipe laying** | 2026-12-14 → 2026-12-20 (+6d) | 2027-01-05 → 2027-01-11 (+6d) |  |  |
| SDR-ST-CON-P1-2440 | Pipe Laying | 2026-12-14 → 2026-12-20 (+6d) | 2027-01-05 → 2027-01-11 (+6d) |  | 52d → 53d |
| 8 | **Backfilling** | 2027-01-06 → 2027-01-12 (+6d) | 2027-01-30 → 2027-02-04 (+5d) |  |  |
| SDR-ST-CON-P1-3170 | Backfilling Works | 2027-01-06 → 2027-01-12 (+6d) | 2027-01-30 → 2027-02-04 (+5d) |  | 52d → 53d |
| 9 | **Pulling Cable** | 2027-03-22 → 2027-03-08 (-14d) | 2027-04-14 → 2027-04-05 (-9d) |  |  |
| SDR-ST-CON-P1-4040 | Pulling Cable | 2027-03-22 → 2027-03-08 (-14d) | 2027-04-14 → 2027-04-05 (-9d) |  | 16d → 32d |
| 4 | **ROAD-01 From 900 to 1239 m (11)** |  | 2027-05-03 → 2027-05-09 (+6d) |  |  |
| 6 | **Excavation** |  | 2026-12-13 → 2026-12-19 (+6d) |  |  |
| SDR-ST-CON-P1-1750 | Excavation Works Part 1 |  | 2026-11-18 → 2026-11-24 (+6d) |  | 52d → 53d |
| SDR-ST-CON-P1-6250 | Excavation Works Part 2 | 2026-11-19 → 2026-11-25 (+6d) | 2026-12-13 → 2026-12-19 (+6d) |  | 52d → 53d |
| 7 | **Pipe laying** | 2026-12-14 → 2026-12-20 (+6d) | 2027-01-05 → 2027-01-11 (+6d) |  |  |
| SDR-ST-CON-P1-2450 | Pipe Laying | 2026-12-14 → 2026-12-20 (+6d) | 2027-01-05 → 2027-01-11 (+6d) |  | 52d → 53d |
| 8 | **Backfilling** | 2027-01-06 → 2027-01-12 (+6d) | 2027-01-30 → 2027-02-04 (+5d) |  |  |
| SDR-ST-CON-P1-3180 | Backfilling Works | 2027-01-06 → 2027-01-12 (+6d) | 2027-01-30 → 2027-02-04 (+5d) |  | 52d → 53d |
| 9 | **Pulling Cable** | 2027-04-08 → 2027-04-14 (+6d) | 2027-05-03 → 2027-05-09 (+6d) |  |  |
| SDR-ST-CON-P1-4070 | Pulling Cable | 2027-04-08 → 2027-04-14 (+6d) | 2027-05-03 → 2027-05-09 (+6d) |  | 12.52d → 15.52d |
| 10 | **PORTABLE WATER** |  | 2027-04-18 → 2027-04-24 (+6d) |  |  |
| 2 | **ROAD - 01** |  | 2027-04-18 → 2027-04-24 (+6d) |  |  |
| 2 | **ROAD-01 From 0 to 470 m (3)** |  | 2027-04-18 → 2027-04-24 (+6d) |  |  |
| 7 | **Pipes Work** |  | 2026-11-23 → 2026-11-26 (+3d) |  |  |
| 9 | **Backfilling** |  | 2026-11-23 → 2026-11-26 (+3d) |  |  |
| SDR-ST-CON-P1-4800 | Backfilling of PW HDPE Pipe 315 mm. |  | 2026-11-23 → 2026-11-26 A (+3d) | 50% → 100% | 81d → none |
| 3 | **Valve Chambers & Valves & Fire Hydrant** | 2026-10-26 → 2026-11-01 (+6d) | 2027-04-18 → 2027-04-24 (+6d) |  |  |
| 3 | **Excavation** | 2026-10-26 → 2026-11-01 (+6d) | 2026-12-19 → 2026-12-24 (+5d) |  |  |
| SDR-ST-CON-P1-1490 | Excavation for Valve Chambers Section 1 | 2026-10-26 → 2026-11-01 (+6d) | 2026-11-18 → 2026-11-24 (+6d) |  | 23d → 26d |
| SDR-ST-CON-P1-2150 | Excavation for Valve Chambers Section 2 | 2026-11-25 → 2026-12-01 (+6d) | 2026-12-19 → 2026-12-24 (+5d) |  | 18d → 21d |
| 1 | **bedding Works** | 2026-12-20 → 2026-12-26 (+6d) | 2027-01-12 → 2027-01-18 (+6d) |  |  |
| SDR-ST-CON-P1-2850 | Sand bedding for Valve Chambers | 2026-12-20 → 2026-12-26 (+6d) | 2027-01-12 → 2027-01-18 (+6d) |  | 18d → 21d |
| 4 | **Install Chambers & Valves & Fire Hydrant** | 2027-01-13 → 2027-01-19 (+6d) | 2027-02-06 → 2027-02-11 (+5d) |  |  |
| SDR-ST-CON-P1-3560 | Install Chambers & Valves | 2027-01-13 → 2027-01-19 (+6d) | 2027-02-06 → 2027-02-11 (+5d) |  | 18d → 21d |

| ID | Task | Start | Finish | Complete | Total float |
| --- | --- | --- | --- | --- | --- |
| 2 | **Testing** | 2027-02-24 → 2027-03-02 (+6d) | 2027-03-24 → 2027-03-30 (+6d) |  |  |
| SDR-ST-CON-P1-4470 | Testing for Chambers & Valves | 2027-02-24 → 2027-03-02 (+6d) | 2027-03-24 → 2027-03-30 (+6d) |  | 4d → 7d |
| 6 | **Backfilling** | 2027-03-25 → 2027-03-31 (+6d) | 2027-04-18 → 2027-04-24 (+6d) |  |  |
| SDR-ST-CON-P1-5030 | Backfilling for Chambers & Valves | 2027-03-25 → 2027-03-31 (+6d) | 2027-04-18 → 2027-04-24 (+6d) |  | 4d → 7d |
| 1 | **ROAD-01 From 470 to 1125 m (6)** |  | 2027-03-27 → 2027-04-01 (+5d) |  |  |
| 7 | **Pipes Work** |  | 2026-11-23 → 2026-10-28 (-26d) |  |  |
| 9 | **Backfilling** |  | 2026-11-23 → 2026-10-28 (-26d) |  |  |
| SDR-ST-CON-P1-4700 | Backfilling of PW HDPE Pipe 315 mm. |  | 2026-11-23 → 2026-10-28 A (-26d) | 50% → 100% | 102d → none |
| 3 | **Valve Chambers & Valves & Fire Hydrant** | 2026-10-26 → 2026-11-01 (+6d) | 2027-03-27 → 2027-04-01 (+5d) |  |  |
| 3 | **Excavation** | 2026-10-26 → 2026-11-01 (+6d) | 2026-12-13 → 2026-12-19 (+6d) |  |  |
| SDR-ST-CON-P1-1420 | Excavation for Valve Chambers Section 1 | 2026-10-26 → 2026-11-01 (+6d) | 2026-11-18 → 2026-11-24 (+6d) |  | 9d → 10d |
| SDR-ST-CON-P1-2100 | Excavation for Valve Chambers Section 2 | 2026-11-19 → 2026-11-25 (+6d) | 2026-12-13 → 2026-12-19 (+6d) |  | 9d → 10d |
| 1 | **bedding Works** | 2026-12-14 → 2026-12-20 (+6d) | 2027-01-06 → 2027-01-12 (+6d) |  |  |
| SDR-ST-CON-P1-2820 | Sand bedding for Valve Chambers | 2026-12-14 → 2026-12-20 (+6d) | 2027-01-06 → 2027-01-12 (+6d) |  | 9d → 10d |
| 4 | **Install Chambers & Valves & Fire Hydrant** | 2027-01-07 → 2027-01-13 (+6d) | 2027-01-31 → 2027-02-06 (+6d) |  |  |
| SDR-ST-CON-P1-3660 | Install Chambers & Valves | 2027-01-07 → 2027-01-13 (+6d) | 2027-01-31 → 2027-02-06 (+6d) |  | 9d → 10d |
| 2 | **Testing** | 2027-02-01 → 2027-02-07 (+6d) | 2027-02-25 → 2027-03-03 (+6d) |  |  |
| SDR-ST-CON-P1-4550 | Testing for Chambers & Valves | 2027-02-01 → 2027-02-07 (+6d) | 2027-02-25 → 2027-03-03 (+6d) |  | 9d → 10d |
| 6 | **Backfilling** | 2027-02-27 → 2027-03-04 (+5d) | 2027-03-27 → 2027-04-01 (+5d) |  |  |
| SDR-ST-CON-P1-5100 | Backfilling for Chambers & Valves | 2027-02-27 → 2027-03-04 (+5d) | 2027-03-27 → 2027-04-01 (+5d) |  | 9d → 10d |
| 3 | **ROAD-01 From 1125 to 1765 m (7)** |  | 2027-04-08 → 2027-04-14 (+6d) |  |  |
| 7 | **Pipes Work** |  | 2027-03-21 → 2026-10-25 (-147d) |  |  |
| 9 | **Backfilling** |  | 2027-03-21 → 2026-10-25 (-147d) |  |  |
| SDR-ST-CON-P1-4520 | Backfilling of PW HDPE Pipe 315 mm. |  | 2027-03-21 → 2026-10-25 A (-147d) | 50% → 100% | 16d → none |
| 3 | **Valve Chambers & Valves & Fire Hydrant** | 2026-10-26 → 2026-11-01 (+6d) | 2027-04-08 → 2027-04-14 (+6d) |  |  |
| 3 | **Excavation** | 2026-10-26 → 2026-11-01 (+6d) | 2026-12-13 → 2026-12-19 (+6d) |  |  |
| SDR-ST-CON-P1-1640 | Excavation for Valve Chambers Section 1 | 2026-10-26 → 2026-11-01 (+6d) | 2026-11-18 → 2026-11-24 (+6d) |  |  |
| SDR-ST-CON-P1-2230 | Excavation for Valve Chambers Section 2 | 2026-11-19 → 2026-11-25 (+6d) | 2026-12-13 → 2026-12-19 (+6d) |  |  |
| 1 | **bedding Works** | 2026-12-14 → 2026-12-20 (+6d) | 2027-01-06 → 2027-01-12 (+6d) |  |  |
| SDR-ST-CON-P1-2900 | Sand bedding for Valve Chambers | 2026-12-14 → 2026-12-20 (+6d) | 2027-01-06 → 2027-01-12 (+6d) |  |  |
| 4 | **Install Chambers & Valves & Fire Hydrant** | 2027-01-07 → 2027-01-13 (+6d) | 2027-01-31 → 2027-02-06 (+6d) |  |  |
| SDR-ST-CON-P1-3640 | Install Chambers & Valves | 2027-01-07 → 2027-01-13 (+6d) | 2027-01-31 → 2027-02-06 (+6d) |  |  |
| 2 | **Testing** | 2027-02-01 → 2027-02-07 (+6d) | 2027-02-25 → 2027-03-03 (+6d) |  |  |
| SDR-ST-CON-P1-4510 | Testing for Chambers & Valves | 2027-02-01 → 2027-02-07 (+6d) | 2027-02-25 → 2027-03-03 (+6d) |  |  |
| 6 | **Backfilling** | 2027-03-15 → 2027-03-21 (+6d) | 2027-04-08 → 2027-04-14 (+6d) |  |  |
| SDR-ST-CON-P1-5070 | Backfilling for Chambers & Valves | 2027-03-15 → 2027-03-21 (+6d) | 2027-04-08 → 2027-04-14 (+6d) |  |  |
| 3 | **ROAD - 02** |  | 2027-03-21 → 2027-03-27 (+6d) |  |  |
| 3 | **ROAD-01 From 0 to 400 m (9)** |  | 2027-03-21 → 2027-03-27 (+6d) |  |  |
| 7 | **Pipes Work** |  | 2027-03-06 → 2027-03-07 (+1d) |  |  |
| 8 | **bedding Works** |  | 2026-11-18 → 2026-10-24 (-25d) |  |  |
| SDR-ST-CON-P1-3130 | Sand bedding for PW HDPE Pipes 315 mm |  | 2026-11-18 → 2026-10-24 A (-25d) | 80% → 100% | 72d → none |
| 2 | **Pipes Laying** |  | 2026-11-18 → 2026-11-24 (+6d) |  |  |
| SDR-ST-CON-P1-3650 | Install PW 315 mm HDPE Pipe |  | 2026-11-18 → 2026-11-24 A (+6d) | 80% → 100% | 72d → none |
| 5 | **Testing** | 2026-11-19 → 2026-10-24 (-26d) | 2026-12-13 → 2026-11-29 (-14d) |  |  |
| SDR-ST-CON-P1-4340 | Testing of PW HDPE Pipe 315 mm. | 2026-11-19 → 2026-10-24 A (-26d) | 2026-12-13 → 2026-11-29 (-14d) | 0% → 50% | 72d → 90d |
| 9 | **Backfilling** | 2027-02-09 → 2026-10-24 (-108d) | 2027-03-06 → 2027-03-07 (+1d) |  |  |
| SDR-ST-CON-P1-4910 | Backfilling of PW HDPE Pipe 315 mm. | 2027-02-09 → 2026-10-24 A (-108d) | 2027-03-06 → 2027-03-07 (+1d) | 0% → 95% | 23d → 28d |
| 3 | **Valve Chambers & Valves & Fire Hydrant** | 2026-10-26 → 2026-11-01 (+6d) | 2027-03-21 → 2027-03-27 (+6d) |  |  |
| 3 | **Excavation** | 2026-10-26 → 2026-11-01 (+6d) | 2026-12-10 → 2026-12-16 (+6d) |  |  |
| SDR-ST-CON-P1-1940 | Excavation for Valve Chambers Section 1 | 2026-10-26 → 2026-11-01 (+6d) | 2026-11-17 → 2026-11-23 (+6d) |  | 16d → 18d |
| SDR-ST-CON-P1-2630 | Excavation for Valve Chambers Section 2 | 2026-11-18 → 2026-11-24 (+6d) | 2026-12-10 → 2026-12-16 (+6d) |  | 16d → 18d |
| 1 | **bedding Works** | 2026-12-12 → 2026-12-17 (+5d) | 2027-01-03 → 2027-01-09 (+6d) |  |  |
| SDR-ST-CON-P1-3400 | Sand bedding for Valve Chambers | 2026-12-12 → 2026-12-17 (+5d) | 2027-01-03 → 2027-01-09 (+6d) |  | 16d → 18d |
| 4 | **Install Chambers & Valves & Fire Hydrant** | 2027-01-04 → 2027-01-10 (+6d) | 2027-01-26 → 2027-02-01 (+6d) |  |  |
| SDR-ST-CON-P1-4330 | Install Chambers & Valves | 2027-01-04 → 2027-01-10 (+6d) | 2027-01-26 → 2027-02-01 (+6d) |  | 16d → 18d |
| 2 | **Testing** | 2027-02-01 → 2027-02-07 (+6d) | 2027-02-16 → 2027-02-23 (+7d) |  |  |
| SDR-ST-CON-P1-5060 | Testing for Chambers & Valves | 2027-02-01 → 2027-02-07 (+6d) | 2027-02-16 → 2027-02-23 (+7d) |  | 16d → 17d |
| 6 | **Backfilling** | 2027-02-20 → 2027-02-27 (+7d) | 2027-03-21 → 2027-03-27 (+6d) |  |  |
| SDR-ST-CON-P1-5730 | Backfilling for Chambers & Valves | 2027-02-20 → 2027-02-27 (+7d) | 2027-03-21 → 2027-03-27 (+6d) |  | 14d → 15d |
| 2 | **ROAD-01 From 400 to 900 m (10)** |  | 2027-03-21 → 2027-03-27 (+6d) |  |  |
| 7 | **Pipes Work** |  | 2026-12-17 → 2026-11-21 (-26d) |  |  |
| 8 | **bedding Works** |  | 2026-11-08 → 2026-10-24 (-15d) |  |  |
| SDR-ST-CON-P1-3060 | Sand bedding for PW HDPE Pipes 315 mm |  | 2026-11-08 → 2026-10-24 A (-15d) | 80% → 100% | 60d → none |
| 2 | **Pipes Laying** |  | 2026-11-07 → 2026-10-24 (-14d) |  |  |
| SDR-ST-CON-P1-3570 | Install PW 315 mm HDPE Pipe |  | 2026-11-07 → 2026-10-24 A (-14d) | 80% → 100% | 60d → none |
| 5 | **Testing** | 2026-11-08 → 2026-10-25 (-14d) | 2026-11-23 → 2026-11-21 (-2d) |  |  |
| SDR-ST-CON-P1-4060 | Testing of PW HDPE Pipe 315 mm. | 2026-11-08 → 2026-10-25 A (-14d) | 2026-11-23 → 2026-11-21 (-2d) | 0% → 50% | 60d → 90d |
| 9 | **Backfilling** | 2026-11-24 → 2026-10-23 (-32d) | 2026-12-17 → 2026-11-01 (-46d) |  |  |
| SDR-ST-CON-P1-4640 | Backfilling of PW HDPE Pipe 315 mm. | 2026-11-24 → 2026-10-23 A (-32d) | 2026-12-17 → 2026-11-01 A (-46d) | 0% → 100% | 60d → none |
| 3 | **Valve Chambers & Valves & Fire Hydrant** | 2026-10-26 → 2026-11-01 (+6d) | 2027-03-21 → 2027-03-27 (+6d) |  |  |

| ID | Task | Start | Finish | Complete | Total float |
| --- | --- | --- | --- | --- | --- |
| 3 | **Excavation** | 2026-10-26 → 2026-11-01 (+6d) | 2026-12-17 → 2026-12-23 (+6d) |  |  |
| SDR-ST-CON-P1-1860 | Excavation for Valve Chambers Section 1 | 2026-10-26 → 2026-11-01 (+6d) | 2026-11-17 → 2026-11-23 (+6d) |  | 20d → 21d |
| SDR-ST-CON-P1-2550 | Excavation for Valve Chambers Section 2 | 2026-11-25 → 2026-12-01 (+6d) | 2026-12-17 → 2026-12-23 (+6d) |  | 14d → 15d |
| 1 | **bedding Works** | 2026-12-19 → 2026-12-24 (+5d) | 2027-01-10 → 2027-01-16 (+6d) |  |  |
| SDR-ST-CON-P1-3310 | Sand bedding for Valve Chambers | 2026-12-19 → 2026-12-24 (+5d) | 2027-01-10 → 2027-01-16 (+6d) |  | 14d → 15d |
| 4 | **Install Chambers & Valves & Fire Hydrant** | 2027-01-11 → 2027-01-17 (+6d) | 2027-02-02 → 2027-02-08 (+6d) |  |  |
| SDR-ST-CON-P1-4210 | Install Chambers & Valves | 2027-01-11 → 2027-01-17 (+6d) | 2027-02-02 → 2027-02-08 (+6d) |  | 14d → 15d |
| 2 | **Testing** | 2027-02-03 → 2027-02-09 (+6d) | 2027-02-18 → 2027-02-25 (+7d) |  |  |
| SDR-ST-CON-P1-4990 | Testing for Chambers & Valves | 2027-02-03 → 2027-02-09 (+6d) | 2027-02-18 → 2027-02-25 (+7d) |  | 14d → 15d |
| 6 | **Backfilling** | 2027-02-20 → 2027-02-27 (+7d) | 2027-03-21 → 2027-03-27 (+6d) |  |  |
| SDR-ST-CON-P1-5710 | Backfilling for Chambers & Valves | 2027-02-20 → 2027-02-27 (+7d) | 2027-03-21 → 2027-03-27 (+6d) |  | 21d → 22d |
| 1 | **ROAD-01 From 900 to 1239 m (11)** |  | 2027-03-20 → 2027-03-25 (+5d) |  |  |
| 7 | **Pipes Work** |  | 2026-12-15 → 2026-12-21 (+6d) |  |  |
| 8 | **bedding Works** |  | 2026-11-05 → 2026-11-11 (+6d) |  |  |
| SDR-ST-CON-P1-3220 | Sand bedding for PW HDPE Pipes 315 mm |  | 2026-11-05 → 2026-11-11 (+6d) |  | 45d → 46d |
| 2 | **Pipes Laying** |  | 2026-11-05 → 2026-11-11 (+6d) |  |  |
| SDR-ST-CON-P1-3610 | Install PW 315 mm HDPE Pipe |  | 2026-11-05 → 2026-11-11 (+6d) |  | 45d → 46d |
| 5 | **Testing** | 2026-11-07 → 2026-11-12 (+5d) | 2026-11-22 → 2026-11-28 (+6d) |  |  |
| SDR-ST-CON-P1-4090 | Testing of PW HDPE Pipe 315 mm. | 2026-11-07 → 2026-11-12 (+5d) | 2026-11-22 → 2026-11-28 (+6d) |  | 45d → 46d |
| 9 | **Backfilling** | 2026-11-23 → 2026-11-29 (+6d) | 2026-12-15 → 2026-12-21 (+6d) |  |  |
| SDR-ST-CON-P1-4660 | Backfilling of PW HDPE Pipe 315 mm. | 2026-11-23 → 2026-11-29 (+6d) | 2026-12-15 → 2026-12-21 (+6d) |  | 45d → 46d |
| 3 | **Valve Chambers & Valves & Fire Hydrant** | 2026-10-26 → 2026-11-01 (+6d) | 2027-03-20 → 2027-03-25 (+5d) |  |  |
| 3 | **Excavation** | 2026-10-26 → 2026-11-01 (+6d) | 2026-12-10 → 2026-12-16 (+6d) |  |  |
| SDR-ST-CON-P1-2020 | Excavation for Valve Chambers Section 1 | 2026-10-26 → 2026-11-01 (+6d) | 2026-11-17 → 2026-11-23 (+6d) |  | 8d → 10d |
| SDR-ST-CON-P1-2740 | Excavation for Valve Chambers Section 2 | 2026-11-18 → 2026-11-24 (+6d) | 2026-12-10 → 2026-12-16 (+6d) |  | 8d → 10d |
| 1 | **bedding Works** | 2026-12-12 → 2026-12-17 (+5d) | 2027-01-03 → 2027-01-09 (+6d) |  |  |
| SDR-ST-CON-P1-3550 | Sand bedding for Valve Chambers | 2026-12-12 → 2026-12-17 (+5d) | 2027-01-03 → 2027-01-09 (+6d) |  | 8d → 10d |
| 4 | **Install Chambers & Valves & Fire Hydrant** | 2027-01-05 → 2027-01-11 (+6d) | 2027-01-27 → 2027-02-02 (+6d) |  |  |
| SDR-ST-CON-P1-4460 | Install Chambers & Valves | 2027-01-05 → 2027-01-11 (+6d) | 2027-01-27 → 2027-02-02 (+6d) |  | 8d → 10d |
| 2 | **Testing** | 2027-02-01 → 2027-02-07 (+6d) | 2027-02-16 → 2027-02-23 (+7d) |  |  |
| SDR-ST-CON-P1-5190 | Testing for Chambers & Valves | 2027-02-01 → 2027-02-07 (+6d) | 2027-02-16 → 2027-02-23 (+7d) |  |  |
| 6 | **Backfilling** | 2027-02-18 → 2027-02-25 (+7d) | 2027-03-20 → 2027-03-25 (+5d) |  |  |
| SDR-ST-CON-P1-5750 | Backfilling for Chambers & Valves | 2027-02-18 → 2027-02-25 (+7d) | 2027-03-20 → 2027-03-25 (+5d) |  |  |
| 7 | **SEWARAGE NETWORK** |  | 2027-04-07 → 2027-04-13 (+6d) |  |  |
| 6 | **ROAD - 01** |  | 2027-03-01 → 2027-03-07 (+6d) |  |  |
| 2 | **ROAD-01 From 0 to 470 m (3) 110 mm HDPE** |  | 2027-02-21 → 2027-02-28 (+7d) |  |  |
| 7 | **Pipes Work** |  | 2026-12-24 → 2026-12-30 (+6d) |  |  |
| 5 | **bedding Works** |  | 2026-11-11 → 2026-11-17 (+6d) |  |  |
| SDR-ST-CON-P1-3050 | Sand bedding for GRP Pipe 200mm Diameter |  | 2026-11-11 → 2026-11-17 (+6d) | 60% → 95% | 33d → 34d |
| 2 | **Pipes Laying** |  | 2026-11-05 → 2026-11-11 (+6d) |  |  |
| SDR-ST-CON-P1-3710 | 200 mm GRP Pipe Laying |  | 2026-11-05 → 2026-11-11 (+6d) | 60% → 95% | 33d → 34d |
| 3 | **Testing** | 2026-11-07 → 2026-11-12 (+5d) | 2026-11-30 → 2026-12-06 (+6d) |  |  |
| SDR-ST-CON-P1-4590 | Testing of 200 mm GRP Pipe. | 2026-11-07 → 2026-11-12 (+5d) | 2026-11-30 → 2026-12-06 (+6d) |  | 33d → 34d |
| 6 | **Backfilling** | 2026-12-01 → 2026-12-07 (+6d) | 2026-12-24 → 2026-12-30 (+6d) |  |  |
| SDR-ST-CON-P1-5570 | Backfilling of 200 mm GRP Pipe. | 2026-12-01 → 2026-12-07 (+6d) | 2026-12-24 → 2026-12-30 (+6d) |  | 33d → 34d |
| 4 | **Manholes** |  | 2027-02-21 → 2027-02-28 (+7d) |  |  |
| 4 | **Testing** | 2027-01-04 → 2027-01-10 (+6d) | 2027-01-27 → 2027-02-02 (+6d) |  |  |
| SDR-ST-CON-P1-4790 | Testing | 2027-01-04 → 2027-01-10 (+6d) | 2027-01-27 → 2027-02-02 (+6d) |  | 40d → 41d |
| 5 | **Backfilling** | 2027-01-28 → 2027-02-03 (+6d) | 2027-02-21 → 2027-02-28 (+7d) |  |  |
| SDR-ST-CON-P1-5720 | Backfilling | 2027-01-28 → 2027-02-03 (+6d) | 2027-02-21 → 2027-02-28 (+7d) |  | 40d → 41d |
| 1 | **ROAD-01 From 470 to 1125 m (6) 110 mm HDPE** |  | 2027-02-21 → 2027-02-28 (+7d) |  |  |
| 7 | **Pipes Work** |  | 2027-02-06 → 2027-01-23 (-14d) |  |  |
| 1 | **Excavation** |  | 2026-11-14 → 2026-10-24 (-21d) |  |  |
| SDR-ST-CON-P1-2110 | Excavation for GRP Pipe 200mm Diameter Section 2 |  | 2026-11-14 → 2026-10-24 A (-21d) | 50% → 100% | 26d → none |
| 5 | **bedding Works** |  | 2026-12-01 → 2026-11-17 (-14d) |  |  |
| SDR-ST-CON-P1-2720 | Sand bedding for GRP Pipe 200mm Diameter |  | 2026-12-01 → 2026-11-17 (-14d) | 10% → 95% | 26d → 45d |
| 2 | **Pipes Laying** |  | 2026-12-19 → 2026-12-05 (-14d) |  |  |
| SDR-ST-CON-P1-3300 | 200 mm GRP Pipe Laying |  | 2026-12-19 → 2026-12-05 (-14d) | 10% → 95% | 26d → 45d |
| 3 | **Testing** | 2026-12-20 → 2026-12-06 (-14d) | 2027-01-12 → 2026-12-29 (-14d) |  |  |
| SDR-ST-CON-P1-4120 | Testing of 200 mm GRP Pipe. | 2026-12-20 → 2026-12-06 (-14d) | 2027-01-12 → 2026-12-29 (-14d) |  | 26d → 45d |
| 6 | **Backfilling** | 2027-01-13 → 2026-12-30 (-14d) | 2027-02-06 → 2027-01-23 (-14d) |  |  |
| SDR-ST-CON-P1-4970 | Backfilling of 200 mm GRP Pipe. | 2027-01-13 → 2026-12-30 (-14d) | 2027-02-06 → 2027-01-23 (-14d) |  | 26d → 45d |
| 4 | **Manholes** |  | 2027-02-21 → 2027-02-28 (+7d) |  |  |
| 4 | **Testing** | 2027-01-04 → 2027-01-10 (+6d) | 2027-01-27 → 2027-02-02 (+6d) |  |  |
| SDR-ST-CON-P1-4710 | Testing | 2027-01-04 → 2027-01-10 (+6d) | 2027-01-27 → 2027-02-02 (+6d) |  | 25d → 27d |
| 5 | **Backfilling** | 2027-01-28 → 2027-02-03 (+6d) | 2027-02-21 → 2027-02-28 (+7d) |  |  |
| SDR-ST-CON-P1-5700 | Backfilling | 2027-01-28 → 2027-02-03 (+6d) | 2027-02-21 → 2027-02-28 (+7d) |  | 33d → 34d |
| 3 | **ROAD-01 From 1125 to 1765 m (7) 110 mm HDPE** |  | 2027-03-01 → 2027-03-07 (+6d) |  |  |
| 7 | **Pipes Work** |  | 2027-02-08 → 2027-02-09 (+1d) |  |  |
| 1 | **Excavation** |  | 2026-11-14 → 2026-11-19 (+5d) |  |  |

| ID | Task | Start | Finish | Complete | Total float |
| --- | --- | --- | --- | --- | --- |
| SDR-ST-CON-P1-2240 | Excavation for GRP Pipe 200mm Diameter Section 2 |  | 2026-11-14 → 2026-11-19 (+5d) | 50% → 95% | 23d → 28d |
| 5 | **bedding Works** | 2026-11-15 → 2026-10-24 (-22d) | 2026-11-30 → 2026-12-06 (+6d) |  |  |
| SDR-ST-CON-P1-2830 | Sand bedding for GRP Pipe 200mm Diameter | 2026-11-15 → 2026-10-24 A (-22d) | 2026-11-30 → 2026-12-06 (+6d) | 0% → 95% | 23d → 28d |
| 2 | **Pipes Laying** | 2026-12-01 → 2026-10-24 (-38d) | 2026-12-21 → 2026-12-22 (+1d) |  |  |
| SDR-ST-CON-P1-3420 | 200 mm GRP Pipe Laying | 2026-12-01 → 2026-10-24 A (-38d) | 2026-12-21 → 2026-12-22 (+1d) | 0% → 95% | 23d → 28d |
| 3 | **Testing** | 2026-12-22 → 2026-12-23 (+1d) | 2027-01-14 → 2027-01-16 (+2d) |  |  |
| SDR-ST-CON-P1-4180 | Testing of 200 mm GRP Pipe. | 2026-12-22 → 2026-12-23 (+1d) | 2027-01-14 → 2027-01-16 (+2d) |  | 23d → 28d |
| 6 | **Backfilling** | 2027-01-16 → 2027-01-17 (+1d) | 2027-02-08 → 2027-02-09 (+1d) |  |  |
| SDR-ST-CON-P1-5020 | Backfilling of 200 mm GRP Pipe. | 2027-01-16 → 2027-01-17 (+1d) | 2027-02-08 → 2027-02-09 (+1d) |  | 23d → 28d |
| 4 | **Manholes** | 2026-10-26 → 2026-11-01 (+6d) | 2027-03-01 → 2027-03-07 (+6d) |  |  |
| 1 | **Excavation** | 2026-10-26 → 2026-11-01 (+6d) | 2026-11-18 → 2026-11-24 (+6d) |  |  |
| SDR-ST-CON-P1-1660 | Excavation for manhole. Section 1 | 2026-10-26 → 2026-11-01 (+6d) | 2026-11-18 → 2026-11-24 (+6d) |  | 42.7d → 41.7d |
| SDR-ST-CON-P1-2310 | Excavation for manhole. Section 2 | 2026-10-26 → 2026-11-01 (+6d) | 2026-11-18 → 2026-11-24 (+6d) |  | 42.7d → 41.7d |
| 2 | **bedding Works** | 2026-11-19 → 2026-11-25 (+6d) | 2026-12-13 → 2026-12-19 (+6d) |  |  |
| SDR-ST-CON-P1-3030 | Sand bedding for manhole. | 2026-11-19 → 2026-11-25 (+6d) | 2026-12-13 → 2026-12-19 (+6d) |  | 42.7d → 41.7d |
| 3 | **Install Manholes** | 2027-01-04 → 2027-01-10 (+6d) | 2027-01-27 → 2027-02-02 (+6d) |  |  |
| SDR-ST-CON-P1-3910 | Manhole Installation | 2027-01-04 → 2027-01-10 (+6d) | 2027-01-27 → 2027-02-02 (+6d) |  | 24.7d → 23.7d |
| 4 | **Testing** | 2027-01-04 → 2027-01-10 (+6d) | 2027-01-27 → 2027-02-02 (+6d) |  |  |
| SDR-ST-CON-P1-4830 | Testing | 2027-01-04 → 2027-01-10 (+6d) | 2027-01-27 → 2027-02-02 (+6d) |  | 24.7d → 23.7d |
| 5 | **Backfilling** | 2027-02-03 → 2027-02-09 (+6d) | 2027-03-01 → 2027-03-07 (+6d) |  |  |
| SDR-ST-CON-P1-5740 | Backfilling | 2027-02-03 → 2027-02-09 (+6d) | 2027-03-01 → 2027-03-07 (+6d) |  | 24.7d → 23.7d |
| 1 | **ROAD - 02** |  | 2027-04-07 → 2027-04-13 (+6d) |  |  |
| 1 | **ROAD-01 From 400 to 900 m (10) 110 mm HDPE** |  | 2027-04-07 → 2027-04-13 (+6d) |  |  |
| 7 | **Pipes Work** |  | 2027-02-25 → 2027-03-03 (+6d) |  |  |
| 1 | **Excavation** |  | 2026-11-30 → 2026-12-06 (+6d) |  |  |
| SDR-ST-CON-P1-1810 | Excavation for GRP Pipe 200mm Diameter Section 1 |  | 2026-11-07 → 2026-11-12 (+5d) | 90% → 95% | 19d → 18d |
| SDR-ST-CON-P1-2530 | Excavation for GRP Pipe 200mm Diameter Section 2 | 2026-11-11 → 2026-10-24 A (-18d) | 2026-11-30 → 2026-12-06 (+6d) | 0% → 95% | 19d → 18d |
| 5 | **bedding Works** | 2026-12-01 → 2026-10-24 (-38d) | 2026-12-16 → 2026-12-22 (+6d) |  |  |
| SDR-ST-CON-P1-3210 | Sand bedding for GRP Pipe 200mm Diameter | 2026-12-01 → 2026-10-24 A (-38d) | 2026-12-16 → 2026-12-22 (+6d) | 0% → 95% | 19d → 18d |
| 2 | **Pipes Laying** | 2026-12-17 → 2026-11-24 (-23d) | 2027-01-06 → 2027-01-12 (+6d) |  |  |
| SDR-ST-CON-P1-3800 | 200 mm GRP Pipe Laying | 2026-12-17 → 2026-11-24 A (-23d) | 2027-01-06 → 2027-01-12 (+6d) | 0% → 95% | 19d → 18d |
| 3 | **Testing** | 2027-01-07 → 2027-01-13 (+6d) | 2027-01-31 → 2027-02-06 (+6d) |  |  |
| SDR-ST-CON-P1-4580 | Testing of 200 mm GRP Pipe. | 2027-01-07 → 2027-01-13 (+6d) | 2027-01-31 → 2027-02-06 (+6d) |  | 19d → 18d |
| 6 | **Backfilling** | 2027-02-01 → 2027-02-07 (+6d) | 2027-02-25 → 2027-03-03 (+6d) |  |  |
| SDR-ST-CON-P1-5500 | Backfilling of 200 mm GRP Pipe. | 2027-02-01 → 2027-02-07 (+6d) | 2027-02-25 → 2027-03-03 (+6d) |  | 19d → 18d |
| 4 | **Manholes** |  | 2027-04-07 → 2027-04-13 (+6d) |  |  |
| 4 | **Testing** | 2027-01-04 → 2027-01-10 (+6d) | 2027-01-27 → 2027-02-02 (+6d) |  |  |
| SDR-ST-CON-P1-5120 | Testing | 2027-01-04 → 2027-01-10 (+6d) | 2027-01-27 → 2027-02-02 (+6d) |  | 16d → 15d |
| 5 | **Backfilling** | 2027-03-14 → 2027-03-20 (+6d) | 2027-04-07 → 2027-04-13 (+6d) |  |  |
| SDR-ST-CON-P1-5770 | Backfilling | 2027-03-14 → 2027-03-20 (+6d) | 2027-04-07 → 2027-04-13 (+6d) |  | -0.48d → 0.52d |
| 3 | **ROAD-01 From 900 to 1239 m (11) 110 mm HDPE** |  | 2027-03-25 → 2027-03-31 (+6d) |  |  |
| 7 | **Pipes Work** |  | 2027-02-28 → 2027-03-06 (+6d) |  |  |
| 1 | **Excavation** |  | 2026-11-29 → 2026-12-05 (+6d) |  |  |
| SDR-ST-CON-P1-2030 | Excavation for GRP Pipe 200mm Diameter Section 1 |  | 2026-11-07 → 2026-11-12 (+5d) |  | 17d → 16d |
| SDR-ST-CON-P1-2700 | Excavation for GRP Pipe 200mm Diameter Section 2 | 2026-11-11 → 2026-11-17 (+6d) | 2026-11-29 → 2026-12-05 (+6d) |  | 17d → 16d |
| 5 | **bedding Works** | 2026-11-30 → 2026-12-06 (+6d) | 2026-12-10 → 2026-12-16 (+6d) |  |  |
| SDR-ST-CON-P1-3330 | Sand bedding for GRP Pipe 200mm Diameter | 2026-11-30 → 2026-12-06 (+6d) | 2026-12-10 → 2026-12-16 (+6d) |  | 17d → 16d |
| 2 | **Pipes Laying** | 2026-12-12 → 2026-12-17 (+5d) | 2027-01-04 → 2027-01-10 (+6d) |  |  |
| SDR-ST-CON-P1-3750 | 200 mm GRP Pipe Laying | 2026-12-12 → 2026-12-17 (+5d) | 2027-01-04 → 2027-01-10 (+6d) |  | 17d → 16d |
| 3 | **Testing** | 2027-01-05 → 2027-01-11 (+6d) | 2027-01-28 → 2027-02-03 (+6d) |  |  |
| SDR-ST-CON-P1-4670 | Testing of 200 mm GRP Pipe. | 2027-01-05 → 2027-01-11 (+6d) | 2027-01-28 → 2027-02-03 (+6d) |  | 17d → 16d |
| 6 | **Backfilling** | 2027-02-03 → 2027-02-09 (+6d) | 2027-02-28 → 2027-03-06 (+6d) |  |  |
| SDR-ST-CON-P1-5670 | Backfilling of 200 mm GRP Pipe. | 2027-02-03 → 2027-02-09 (+6d) | 2027-02-28 → 2027-03-06 (+6d) |  | 17d → 16d |
| 4 | **Manholes** |  | 2027-03-25 → 2027-03-31 (+6d) |  |  |
| 1 | **Excavation** |  | 2026-11-18 → 2026-11-24 (+6d) |  |  |
| SDR-ST-CON-P1-2760 | Excavation for manhole. Section 2 |  | 2026-11-18 → 2026-11-24 (+6d) |  | 34d → 33d |
| 2 | **bedding Works** | 2026-11-19 → 2026-11-25 (+6d) | 2026-12-13 → 2026-12-19 (+6d) |  |  |
| SDR-ST-CON-P1-3620 | Sand bedding for manhole. | 2026-11-19 → 2026-11-25 (+6d) | 2026-12-13 → 2026-12-19 (+6d) |  | 34d → 33d |
| 3 | **Install Manholes** | 2027-01-04 → 2027-01-10 (+6d) | 2027-01-27 → 2027-02-02 (+6d) |  |  |
| SDR-ST-CON-P1-4560 | Manhole Installation | 2027-01-04 → 2027-01-10 (+6d) | 2027-01-27 → 2027-02-02 (+6d) |  | 16d → 15d |
| 4 | **Testing** | 2027-01-28 → 2027-02-03 (+6d) | 2027-02-21 → 2027-02-28 (+7d) |  |  |
| SDR-ST-CON-P1-5440 | Testing | 2027-01-28 → 2027-02-03 (+6d) | 2027-02-21 → 2027-02-28 (+7d) |  | 16d → 15d |
| 5 | **Backfilling** | 2027-02-25 → 2027-03-03 (+6d) | 2027-03-25 → 2027-03-31 (+6d) |  |  |
| SDR-ST-CON-P1-5800 | Backfilling | 2027-02-25 → 2027-03-03 (+6d) | 2027-03-25 → 2027-03-31 (+6d) |  | 16d → 15d |
| 11 | **STORM WATER** |  | 2027-03-07 → 2027-03-17 (+10d) |  |  |
| 2 | **ROAD N...** |  | 2027-03-07 → 2027-03-17 (+10d) |  |  |
| 8 | **Pipes Works** |  | 2027-03-07 → 2027-03-17 (+10d) |  |  |
| 6 | **Testing** |  | 2026-12-19 → 2026-12-24 (+5d) |  |  |
| SDR-ST-CON-P1-3830 | Testing ST GRP Pipes |  | 2026-12-19 → 2026-12-24 (+5d) | 70% → 95% | 42d → 44d |
| 3 | **Backfilling** |  | 2027-03-07 → 2027-03-17 (+10d) |  |  |

| ID | Task | Start | Finish | Complete | Total float | Predecessors | Other |
| --- | --- | --- | --- | --- | --- | --- | --- |
| SDR-ST-CON-P1-4760 | Backfilling ST GRP Pipes |  | 2027-03-07 → 2027-03-17 (+10d) | 70% → 95% | 18d → 21d |  |  |
| 3 | **Package-3** | 2026-10-26 → 2026-11-01 (+6d) |  |  |  |  |  |
| 1 | **Site Works** | 2026-10-26 → 2026-11-01 (+6d) | 2026-11-17 → 2026-11-23 (+6d) |  |  |  |  |
| 1 | **Earthworks** | 2026-10-26 → 2026-11-01 (+6d) | 2026-11-17 → 2026-11-23 (+6d) |  |  |  |  |
| 2 | **Excavation** | 2026-10-26 → 2026-11-01 (+6d) | 2026-11-17 → 2026-11-23 (+6d) |  |  |  |  |
| SDR-ST-CON-P3-1000 | Excavation in all types of soil to the required depth includes removal of waste material | 2026-10-26 → 2026-11-01 (+6d) | 2026-11-17 → 2026-11-23 (+6d) |  | 8d → 10d |  |  |
| 1 | **Fill** | 2026-10-26 → 2026-11-01 (+6d) | 2026-11-11 → 2026-11-17 (+6d) |  |  |  |  |
| SDR-ST-CON-P3-1010 | Backfilling with improved and select fill material from the site or imported | 2026-10-26 → 2026-11-01 (+6d) | 2026-11-11 → 2026-11-17 (+6d) |  | 8d → 10d |  |  |
| 2 | **Platform Works** | 2026-10-26 → 2026-11-01 (+6d) | 2027-07-29 → 2027-07-31 (+2d) |  |  |  |  |
| 1 | **Platform** | 2026-10-26 → 2026-11-01 (+6d) | 2027-04-17 → 2027-04-22 (+5d) |  |  |  |  |
| 1 | **Earthworks** | 2026-10-26 → 2026-11-01 (+6d) | 2026-12-03 → 2026-12-09 (+6d) |  |  |  |  |
| 1 | **Excavation** | 2026-10-26 → 2026-11-01 (+6d) | 2026-11-12 → 2026-11-18 (+6d) |  |  |  |  |
| SDR-ST-CON-P3-1020 | Excavation in all types of soil to the required depth includes removal of waste material | 2026-10-26 → 2026-11-01 (+6d) | 2026-11-12 → 2026-11-18 (+6d) |  | 8d → 10d |  | resources SIC- Cost [48000]; Excavator [15 h]; Excavator Operator [94.95 h]; Dumper Operator [94.95 h]; Dumper Truck [100 h]; Loader [100 h]; Loader Operator [94.95 h]; Supervisor [37.98 h]; Mason [94.95 h]; Mason Helper [94.95 h] → SIC- Cost [48000]; Mason [94.95 h]; Mason Helper [94.95 h]; Excavator [15 h]; Excavator Operator [94.95 h]; Dumper Operator [94.95 h]; Dumper Truck [100 h]; Loader [100 h]; Loader Operator [94.95 h]; Supervisor [37.98 h] |
| 2 | **Fill** | 2026-11-14 → 2026-11-19 (+5d) | 2026-12-03 → 2026-12-09 (+6d) |  |  |  |  |
| SDR-ST-CON-P3-1030 | Backfilling with improved and select fill material from the site or imported Part 1 | 2026-11-14 → 2026-11-19 (+5d) | 2026-12-03 → 2026-12-09 (+6d) |  | 8d → 10d |  | resources SIC- Cost [53100]; Excavator [37.86 h]; Excavator Operator [94.95 h]; Dumper Operator [94.95 h]; Dumper Truck [100 h]; Loader [100 h]; Loader Operator [94.95 h]; Supervisor [37.98 h]; Mason [94.95 h]; Mason Helper [94.95 h] → SIC- Cost [53100]; Mason [94.95 h]; Mason Helper [94.95 h]; Excavator [37.86 h]; Excavator Operator [94.95 h]; Dumper Operator [94.95 h]; Dumper Truck [100 h]; Loader [100 h]; Loader Operator [94.95 h]; Supervisor [37.98 h] |
| SDR-ST-CON-P3-1040 | Backfilling with improved and select fill material from the site or imported Part 2 | 2026-11-14 → 2026-11-19 (+5d) | 2026-12-01 → 2026-12-07 (+6d) |  | 10d → 12d |  | resources SIC- Cost [53100]; Excavator [16.25 h]; Excavator Operator [94.95 h]; Dumper Operator [94.95 h]; Dumper Truck [100 h]; Loader [100 h]; Loader Operator [94.95 h]; Supervisor [37.98 h]; Mason [94.95 h]; Mason Helper [94.95 h] → SIC- Cost [53100]; Mason [94.95 h]; Mason Helper [94.95 h]; Excavator [16.25 h]; Excavator Operator [94.95 h]; Dumper Operator [94.95 h]; Dumper Truck [100 h]; Loader [100 h]; Loader Operator [94.95 h]; Supervisor [37.98 h] |
| 3 | **Concrete Works** | 2026-12-05 → 2026-12-10 (+5d) | 2027-04-17 → 2027-04-22 (+5d) |  |  |  |  |
| 1 | **Foundations** | 2026-12-05 → 2026-12-10 (+5d) | 2027-01-13 → 2027-01-19 (+6d) |  |  |  |  |
| SDR-ST-CON-P3-1060 | Pouring Concrete under Foundation 100 mm thickness lean | 2026-12-05 → 2026-12-10 (+5d) | 2026-12-15 → 2026-12-21 (+6d) |  | 8d → 10d |  | resources SIC- Cost [82000.1]; Helper [94.95 h]; Supervisor [37.98 h]; Mason [94.95 h]; Mason Helper [94.95 h]; Carpenter [94.95 h] → SIC- Cost [82000.1]; Supervisor [37.98 h]; Mason [94.95 h]; Mason Helper [94.95 h]; Helper [94.95 h]; Carpenter [94.95 h] |
| SDR-ST-CON-P3-1080 | Provide and lay 2 layers of waterproofing bitumenous membrane 4mm below footings | 2026-12-16 → 2026-12-22 (+6d) | 2026-12-24 → 2026-12-30 (+6d) |  | 8d → 10d |  | resources SIC- Cost [135300]; Plumbing Helper [94.95 h]; Plumber [94.95 h]; Mason [94.95 h]; Mason Helper [94.95 h] → SIC- Cost [135300]; Mason [94.95 h]; Mason Helper [94.95 h]; Plumbing Helper [94.95 h]; Plumber [94.95 h] |
| SDR-ST-CON-P3-1100 | Pouring Concrete for protecting waterproofing under the foundation 50 mm thickness | 2026-12-27 → 2027-01-02 (+6d) | 2027-01-06 → 2027-01-12 (+6d) |  | 8d → 10d |  | resources SIC- Cost [45100]; Helper [37.98 h]; Supervisor [37.98 h]; Mason [37.98 h]; Mason Helper [37.98 h]; Carpenter [37.98 h] → SIC- Cost [45100]; Supervisor [37.98 h]; Mason [37.98 h]; Mason Helper [37.98 h]; Helper [37.98 h]; Carpenter [37.98 h] |
| 1 | **Footings** | 2026-12-27 → 2027-01-02 (+6d) | 2027-01-13 → 2027-01-19 (+6d) |  |  |  |  |
| SDR-ST-CON-P3-1130 | Pouring concrete for footings Part 1 | 2026-12-27 → 2027-01-02 (+6d) | 2027-01-06 → 2027-01-12 (+6d) |  | 8d → 10d |  | resources SIC- Cost [309753]; Helper [37.98 h]; Supervisor [37.98 h]; Mason [37.98 h]; Mason Helper [37.98 h]; Carpenter [37.98 h] → SIC- Cost [309753]; Supervisor [37.98 h]; Mason [37.98 h]; Mason Helper [37.98 h]; Helper [37.98 h]; Carpenter [37.98 h] |
| SDR-ST-CON-P3-1150 | Pouring concrete for footings Part 2 | 2026-12-27 → 2027-01-02 (+6d) | 2027-01-06 → 2027-01-12 (+6d) |  | 8d → 10d |  | resources SIC- Cost [309753]; Helper [128.18 h]; Supervisor [128.18 h]; Mason [128.18 h]; Mason Helper [128.18 h]; Carpenter [128.18 h] → SIC- Cost [309753]; Supervisor [128.18 h]; Mason [128.18 h]; Mason Helper [128.18 h]; Helper [128.18 h]; Carpenter [128.18 h] |
| SDR-ST-CON-P3-1180 | Pouring concrete for footings Part 3 | 2026-12-27 → 2027-01-02 (+6d) | 2027-01-13 → 2027-01-19 (+6d) |  | 8d → 10d |  | resources SIC- Cost [309754]; Helper [128.18 h]; Supervisor [128.18 h]; Mason [128.18 h]; Mason Helper [128.18 h]; Carpenter [128.18 h] → SIC- Cost [309754]; Supervisor [128.18 h]; Mason [128.18 h]; Mason Helper [128.18 h]; Helper [128.18 h]; Carpenter [128.18 h] |
| 2 | **Substructure** | 2027-01-14 → 2027-01-20 (+6d) | 2027-02-11 → 2027-02-17 (+6d) |  |  |  |  |
| 1 | **Basement** | 2027-01-17 → 2027-01-23 (+6d) | 2027-01-31 → 2027-02-06 (+6d) |  |  |  |  |
| SDR-ST-CON-P3-1200 | Pouring concrete for Basement Part 1 | 2027-01-17 → 2027-01-23 (+6d) | 2027-01-27 → 2027-02-02 (+6d) |  | 8d → 10d |  | resources SIC- Cost [214175]; Helper [199.87 h]; Supervisor [199.87 h]; Mason [199.87 h]; Mason Helper [199.87 h]; Carpenter [199.87 h] → SIC- Cost [214175]; Supervisor [199.87 h]; Mason [199.87 h]; Mason Helper [199.87 h]; Helper [199.87 h]; Carpenter [199.87 h] |
| SDR-ST-CON-P3-1220 | Pouring concrete for Basement Part 2 | 2027-01-23 → 2027-01-28 (+5d) | 2027-01-31 → 2027-02-06 (+6d) |  | 20d → 23d |  | resources SIC- Cost [200]; Helper [199.87 h]; Supervisor [128.18 h]; Mason [199.87 h]; Mason Helper [199.87 h]; Carpenter [199.87 h] → SIC- Cost [200]; Supervisor [128.18 h]; Mason [199.87 h]; Mason Helper [199.87 h]; Helper [199.87 h]; Carpenter [199.87 h] |
| 2 | **Tank** | 2027-01-14 → 2027-01-20 (+6d) | 2027-01-27 → 2027-02-02 (+6d) |  |  |  |  |
| SDR-ST-CON-P3-1210 | Pouring concrete for Tank Part 1 | 2027-01-14 → 2027-01-20 (+6d) | 2027-01-20 → 2027-01-26 (+6d) |  | 23d → 26d |  | resources SIC- Cost [214175]; Helper [199.87 h]; Supervisor [199.87 h]; Mason [199.87 h]; Mason Helper [199.87 h]; Carpenter [199.87 h] → SIC- Cost [214175]; Supervisor [199.87 h]; Mason [199.87 h]; Mason Helper [199.87 h]; Helper [199.87 h]; Carpenter [199.87 h] |
| SDR-ST-CON-P3-1230 | Pouring concrete for Tank Part 2 | 2027-01-21 → 2027-01-27 (+6d) | 2027-01-27 → 2027-02-02 (+6d) |  | 23d → 26d |  | resources SIC- Cost [214175]; Helper [199.87 h]; Supervisor [199.87 h]; Mason [199.87 h]; Mason Helper [199.87 h]; Carpenter [199.87 h] → SIC- Cost [214175]; Supervisor [199.87 h]; Mason [199.87 h]; Mason Helper [199.87 h]; Helper [199.87 h]; Carpenter [199.87 h] |
| 3 | **Retaining Walls** | 2027-01-28 → 2027-02-03 (+6d) | 2027-02-11 → 2027-02-17 (+6d) |  |  |  |  |
| SDR-ST-CON-P3-1190 | Pouring concrete for Retaining Walls Part 1 | 2027-01-28 → 2027-02-03 (+6d) | 2027-02-04 → 2027-02-10 (+6d) |  | 8d → 10d |  | resources SIC- Cost [214175]; Helper [39.97 h]; Supervisor [39.97 h]; Mason [39.97 h]; Mason Helper [39.97 h]; Carpenter [39.97 h] → SIC- Cost [214175]; Supervisor [39.97 h]; Mason [39.97 h]; Mason Helper [39.97 h]; Helper [39.97 h]; Carpenter [39.97 h] |
| SDR-ST-CON-P3-1250 | Pouring concrete for Retaining Walls Part 2 | 2027-02-06 → 2027-02-11 (+5d) | 2027-02-11 → 2027-02-17 (+6d) |  | 8d → 10d |  | resources SIC- Cost [214175]; Helper [199.87 h]; Supervisor [199.87 h]; Mason [199.87 h]; Mason Helper [199.87 h]; Carpenter [199.87 h] → SIC- Cost [214175]; Supervisor [199.87 h]; Mason [199.87 h]; Mason Helper [199.87 h]; Helper [199.87 h]; Carpenter [199.87 h] |
| 3 | **Waterproofing Vertical** | 2027-02-13 → 2027-02-18 (+5d) | 2027-03-04 → 2027-03-15 (+11d) |  |  |  |  |
| SDR-ST-CON-P3-1300 | lay 2 layers of waterproofing bitumenous membrane 4mm including protection board for substructure vertical Part 1 | 2027-02-13 → 2027-02-18 (+5d) | 2027-02-16 → 2027-02-23 (+7d) |  | 8d → 10d |  | resources SIC- Cost [263720]; Plumbing Helper [1144.9 h]; Plumber [1144.9 h]; Mason [149.55 h]; Mason Helper [149.55 h] → SIC- Cost [263720]; Mason [149.55 h]; Mason Helper [149.55 h]; Plumbing Helper [1144.9 h]; Plumber [1144.9 h] |
| SDR-ST-CON-P3-1370 | lay 2 layers of waterproofing bitumenous membrane 4mm including protection board for substructure vertical Part 2 | 2027-02-24 → 2027-03-02 (+6d) | 2027-02-28 → 2027-03-06 (+6d) |  | 3d → 5d |  | resources SIC- Cost [263720]; Plumbing Helper [39.97 h]; Plumber [39.97 h]; Mason [39.97 h]; Mason Helper [39.97 h] → SIC- Cost [263720]; Mason [39.97 h]; Mason Helper [39.97 h]; Plumbing Helper [39.97 h]; Plumber [39.97 h] |
| SDR-ST-CON-P3-1430 | lay 2 layers of waterproofing bitumenous membrane 4mm including protection board for substructure vertical Part 3 | 2027-03-01 → 2027-03-07 (+6d) | 2027-03-04 → 2027-03-15 (+11d) |  | 3d → 5d |  | resources SIC- Cost [263720]; Plumbing Helper [128.18 h]; Plumber [128.18 h]; Mason [128.18 h]; Mason Helper [128.18 h] → SIC- Cost [263720]; Mason [128.18 h]; Mason Helper [128.18 h]; Plumbing Helper [128.18 h]; Plumber [128.18 h] |
| 4 | **Neck Walls** | 2027-03-07 → 2027-03-17 (+10d) | 2027-03-17 → 2027-03-23 (+6d) |  |  |  |  |
| SDR-ST-CON-P3-1270 | Pouring concrete for Neck Walls Part 1 | 2027-03-07 → 2027-03-17 (+10d) | 2027-03-16 → 2027-03-22 (+6d) |  | 3d → 5d |  | resources SIC- Cost [214175]; Helper [39.97 h]; Supervisor [39.97 h]; Mason [39.97 h]; Mason Helper [39.97 h]; Carpenter [39.97 h] → SIC- Cost [214175]; Supervisor [39.97 h]; Mason [39.97 h]; Mason Helper [39.97 h]; Helper [39.97 h]; Carpenter [39.97 h] |
| SDR-ST-CON-P3-1290 | Pouring concrete for Neck Walls Part 2 | 2027-03-08 → 2027-03-18 (+10d) | 2027-03-17 → 2027-03-23 (+6d) |  | 3d → 5d |  | resources SIC- Cost [214175]; Helper [39.97 h]; Supervisor [1998.7 h]; Mason [4477.08 h]; Mason Helper [39.97 h]; Carpenter [39.97 h] → SIC- Cost [214175]; Supervisor [1998.7 h]; Mason [4477.08 h]; Mason Helper [39.97 h]; Helper [39.97 h]; Carpenter [39.97 h] |
| 5 | **Preparation for Slab** | 2027-03-18 → 2027-03-24 (+6d) | 2027-03-27 → 2027-04-01 (+5d) |  |  |  |  |
| SDR-ST-CON-P3-1320 | Pouring Concrete under slab on grade and gound beams 50 mm thickness lean | 2027-03-18 → 2027-03-24 (+6d) | 2027-03-22 → 2027-03-28 (+6d) |  | 6d → 5d |  | resources SIC- Cost [79800.1]; Helper [128.18 h]; Supervisor [128.18 h]; Mason [128.18 h]; Mason Helper [128.18 h]; Carpenter [128.18 h] → SIC- Cost [79800.1]; Supervisor [128.18 h]; Mason [128.18 h]; Mason Helper [128.18 h]; Helper [128.18 h]; Carpenter [128.18 h] |
| SDR-ST-CON-P3-1360 | Supply and lay 250 micron thk polyethylene sheet below slab on grade and ground beams | 2027-03-23 → 2027-03-29 (+6d) | 2027-03-27 → 2027-04-01 (+5d) |  | 6d → 5d |  | resources SIC- Cost [21000]; Plumbing Helper [128.18 h]; Plumber [28.49 h]; Mason [49.77 h]; Mason Helper [49.77 h] → SIC- Cost [21000]; Mason [49.77 h]; Mason Helper [49.77 h]; Plumbing Helper [128.18 h]; Plumber [28.49 h] |
| 6 | **Slab on Grade** | 2027-03-28 → 2027-04-03 (+6d) | 2027-03-31 → 2027-04-06 (+6d) |  |  |  |  |
| SDR-ST-CON-P3-1380 | Pouring Concrete for Slab on grade | 2027-03-28 → 2027-04-03 (+6d) | 2027-03-31 → 2027-04-06 (+6d) |  | 6d → 5d |  | resources SIC- Cost [44900]; Helper [128.18 h]; Supervisor [128.18 h]; Mason [4462.72 h]; Mason Helper [4462.72 h]; Carpenter [128.18 h] → SIC- Cost [44900]; Supervisor [128.18 h]; Mason [4462.72 h]; Mason Helper [4462.72 h]; Helper [128.18 h]; Carpenter [128.18 h] |
| 7 | **Finishes** | 2027-04-05 → 2027-04-11 (+6d) | 2027-04-17 → 2027-04-22 (+5d) |  |  |  |  |
| 9 | **Troweled Finish** | 2027-04-05 → 2027-04-11 (+6d) | 2027-04-07 → 2027-04-13 (+6d) |  |  |  |  |
| SDR-ST-CON-P3-1400 | Pouring Concrete for Slab on grade with troweled finish Part 1 | 2027-04-05 → 2027-04-11 (+6d) | 2027-04-07 → 2027-04-13 (+6d) |  | 6d → 5d |  | resources SIC- Cost [112030]; Helper [128.18 h]; Supervisor [128.18 h]; Mason [89.58 h]; Mason Helper [89.58 h]; Carpenter [128.18 h] → SIC- Cost [112030]; Supervisor [128.18 h]; Mason [89.58 h]; Mason Helper [89.58 h]; Helper [128.18 h]; Carpenter [128.18 h] |
| SDR-ST-CON-P3-1500 | Pouring Concrete for Slab on grade with troweled finish Part 2 | 2027-04-05 → 2027-04-11 (+6d) | 2027-04-07 → 2027-04-13 (+6d) |  | 6d → 5d |  | resources SIC- Cost [112030]; Helper [128.18 h]; Supervisor [128.18 h]; Mason [128.18 h]; Mason Helper [128.18 h]; Carpenter [128.18 h] → SIC- Cost [112030]; Supervisor [128.18 h]; Mason [128.18 h]; Mason Helper [128.18 h]; Helper [128.18 h]; Carpenter [128.18 h] |
| 8 | **Exposed Aggregate Finish** | 2027-04-08 → 2027-04-14 (+6d) | 2027-04-17 → 2027-04-22 (+5d) |  |  |  |  |
| SDR-ST-CON-P3-1420 | Pouring Concrete for Slab on grade with exposed aggregate finish Part 1 | 2027-04-08 → 2027-04-14 (+6d) | 2027-04-11 → 2027-04-17 (+6d) |  | 6d → 5d |  | resources SIC- Cost [272386]; Helper [1123.53 h]; Supervisor [128.18 h]; Mason [2118.88 h]; Mason Helper [2118.88 h]; Carpenter [684.8 h] → SIC- Cost [272386]; Supervisor [128.18 h]; Mason [2118.88 h]; Mason Helper [2118.88 h]; Helper [1123.53 h]; Carpenter [684.8 h] |
| SDR-ST-CON-P3-1480 | Pouring Concrete for Slab on grade with exposed aggregate finish Part 2 | 2027-04-08 → 2027-04-14 (+6d) | 2027-04-11 → 2027-04-17 (+6d) |  | 6d → 5d |  | resources SIC- Cost [272387]; Helper [1123.53 h]; Supervisor [128.18 h]; Mason [2118.88 h]; Mason Helper [2118.88 h]; Carpenter [128.18 h] → SIC- Cost [272387]; Supervisor [128.18 h]; Mason [2118.88 h]; Mason Helper [2118.88 h]; Helper [1123.53 h]; Carpenter [128.18 h] |
| SDR-ST-CON-P3-1490 | Pouring Concrete for Slab on grade with exposed aggregate finish Part 3 | 2027-04-11 → 2027-04-17 (+6d) | 2027-04-17 → 2027-04-22 (+5d) |  | 6d → 5d |  | resources SIC- Cost [272387]; Helper [128.18 h]; Supervisor [28.49 h]; Mason [2118.88 h]; Mason Helper [2118.88 h]; Carpenter [128.18 h] → SIC- Cost [272387]; Supervisor [28.49 h]; Mason [2118.88 h]; Mason Helper [2118.88 h]; Helper [128.18 h]; Carpenter [128.18 h] |
| 3 | **Finishes & Architectural Works** | 2027-06-08 → 2027-06-14 (+6d) | 2027-07-29 → 2027-07-31 (+2d) |  |  |  |  |
| SDR-ST-CON-P3-1540 | Installation of metal steel 1200mm railing including all accessories Part 1 | 2027-06-08 → 2027-06-14 (+6d) | 2027-06-24 → 2027-06-30 (+6d) |  | 3d → 7d |  |  |
| SDR-ST-CON-P3-1590 | Installation of metal steel 1200mm railing including all accessories Part 2 | 2027-06-26 → 2027-07-01 (+5d) | 2027-07-06 → 2027-07-12 (+6d) |  | 3d → 7d |  |  |
| SDR-ST-CON-P3-1640 | Installation of metal steel 1200mm railing including all accessories Part3 | 2027-07-07 → 2027-07-13 (+6d) | 2027-07-15 → 2027-07-21 (+6d) |  | 3d → 7d |  |  |
| SDR-ST-CON-P3-1710 | Platform Paving & warning tiles | 2027-07-20 → 2027-07-26 (+6d) | 2027-07-25 → 2027-07-31 (+6d) |  | -0.48d → 3.51d |  |  |
| SDR-ST-CON-P3-1760 | Painting Part 1 | 2027-07-25 → 2027-07-26 (+1d) | 2027-07-29 → 2027-07-31 (+2d) |  | -0.48d → 3.51d | SDR-ST-CON-P3-1710, SDR-ST-MILS-1000 → SDR-ST-CON-P3-1710 SS, SDR-ST-MILS-1000 | resources SIC- Cost [143758]; Helper [149.55 h]; Supervisor [149.55 h]; Painter [149.55 h] → SIC- Cost [143758]; Supervisor [149.55 h]; Helper [149.55 h]; Painter [149.55 h] |
| SDR-ST-CON-P3-1840 | Painting Part 2 | 2027-07-25 → 2027-07-26 (+1d) | 2027-07-29 → 2027-07-31 (+2d) |  | 6.52d → 5.51d |  | resources SIC- Cost [143758]; Helper [149.55 h]; Supervisor [149.55 h]; Painter [149.55 h] → SIC- Cost [143758]; Supervisor [149.55 h]; Helper [149.55 h]; Painter [149.55 h] |
| 5 | **Platform Electrical Works** | 2027-03-18 → 2027-03-24 (+6d) | 2027-04-10 → 2027-04-15 (+5d) |  |  |  |  |
| SDR-ST-CON-P3-1310 | cable conduits | 2027-03-18 → 2027-03-24 (+6d) | 2027-04-10 → 2027-04-15 (+5d) |  | 3d → 5d |  |  |
| 3 | **Canopy works** | 2026-12-08 → 2026-12-14 (+6d) | 2027-08-06 → 2027-08-05 (-1d) |  |  |  |  |
| 1 | **Civil and Architectural Works** | 2026-12-08 → 2026-12-14 (+6d) | 2027-02-03 → 2027-02-09 (+6d) |  |  |  |  |
| 1 | **Concrete** | 2026-12-08 → 2026-12-14 (+6d) | 2027-02-03 → 2027-02-09 (+6d) |  |  |  |  |
| SDR-ST-CON-P3-1050 | Pouring Concrete under the foundation 100 mm thickness lean | 2026-12-08 → 2026-12-14 (+6d) | 2026-12-22 → 2026-12-28 (+6d) |  | 11d → 13d |  | resources charpenter [37.98 h]; SIC- Cost [11200]; Civil Forman [37.98 h]; Labor [37.98 h]; Supervisor [37.98 h]; Mason [37.98 h]; Mason Helper [37.98 h] → charpenter [37.98 h]; SIC- Cost [11200]; Supervisor [37.98 h]; Civil Forman [37.98 h]; Mason [37.98 h]; Mason Helper [37.98 h]; Labor [37.98 h] |
| SDR-ST-CON-P3-1090 | Pouring Concrete for protecting waterproofing under the foundation 50 mm thickness | 2026-12-29 → 2027-01-04 (+6d) | 2027-01-11 → 2027-01-17 (+6d) |  | 19d → 21d |  | resources charpenter [37.98 h]; SIC- Cost [6720.01]; Civil Forman [37.98 h]; Labor [37.98 h]; Supervisor [37.98 h]; Mason [37.98 h]; Mason Helper [37.98 h] → charpenter [37.98 h]; SIC- Cost [6720.01]; Supervisor [37.98 h]; Civil Forman [37.98 h]; Mason [37.98 h]; Mason Helper [37.98 h]; Labor [37.98 h] |
| SDR-ST-CON-P3-1110 | Pouring Concrete for Footings | 2027-01-12 → 2027-01-18 (+6d) | 2027-01-25 → 2027-01-31 (+6d) |  | 19d → 21d |  | resources charpenter [37.98 h]; SIC- Cost [95800.1]; Civil Forman [37.98 h]; Labor [37.98 h]; Supervisor [37.98 h]; Mason [37.98 h]; Mason Helper [37.98 h] → charpenter [37.98 h]; SIC- Cost [95800.1]; Supervisor [37.98 h]; Civil Forman [37.98 h]; Mason [37.98 h]; Mason Helper [37.98 h]; Labor [37.98 h] |

| ID | Task | Start | Finish | Total float | Predecessors | Other |
| --- | --- | --- | --- | --- | --- | --- |
| SDR-ST-CON-P3-1140 | Pouring Concrete for Coulumns necks | 2027-01-26 → 2027-02-01 (+6d) | 2027-02-03 → 2027-02-09 (+6d) | 19d → 22d |  | resources charpenter [199.87 h]; SIC- Cost [52720]; Civil Forman [199.87 h]; Labor [199.87 h]; Supervisor [128.18 h]; Mason [199.87 h]; Mason Helper [199.87 h] → charpenter [199.87 h]; SIC- Cost [52720]; Supervisor [128.18 h]; Civil Forman [199.87 h]; Mason [199.87 h]; Mason Helper [199.87 h]; Labor [199.87 h] |
| 4 | **Metals** | 2026-12-23 → 2026-12-29 (+6d) | 2027-08-06 → 2027-08-05 (-1d) |  |  |  |
| 2 | **Structural Steel Framing** | 2027-01-25 → 2027-01-31 (+6d) | 2027-05-09 → 2027-05-15 (+6d) |  |  |  |
| SDR-ST-CON-P3-1120 | Anchor Bolt Verification | 2027-01-25 → 2027-01-31 (+6d) | 2027-02-11 → 2027-02-17 (+6d) | 9d → 10d |  |  |
| SDR-ST-CON-P3-1160 | Erection of Columns Part 1 | 2027-02-14 → 2027-02-20 (+6d) | 2027-03-14 → 2027-03-20 (+6d) | 8d → 9d |  | resources charpenter [135.31 h]; SIC- Cost [161728]; Surveyor [135.31 h]; Helper [135.31 h]; Supervisor [135.31 h]; Mason [135.31 h]; Mason Helper [135.31 h] → charpenter [135.31 h]; SIC- Cost [161728]; Supervisor [135.31 h]; Mason [135.31 h]; Mason Helper [135.31 h]; Surveyor [135.31 h]; Helper [135.31 h] |
| SDR-ST-CON-P3-1260 | Erection of Rafters Part 1 | 2027-02-23 → 2027-03-01 (+6d) | 2027-03-17 → 2027-03-23 (+6d) | 5d → 6d |  | resources charpenter [128.18 h]; SIC- Cost [125789]; Surveyor [128.18 h]; Helper [128.18 h]; Supervisor [128.18 h]; Mason [128.18 h]; Mason Helper [128.18 h] → charpenter [128.18 h]; SIC- Cost [125789]; Supervisor [128.18 h]; Mason [128.18 h]; Mason Helper [128.18 h]; Surveyor [128.18 h]; Helper [128.18 h] |
| SDR-ST-CON-P3-1280 | Erection of Rafters Part 2 | 2027-02-25 → 2027-03-03 (+6d) | 2027-03-20 → 2027-03-25 (+5d) | 5d → 6d |  | resources charpenter [106.82 h]; SIC- Cost [125789]; Surveyor [106.82 h]; Helper [106.82 h]; Supervisor [106.82 h]; Mason [106.82 h]; Mason Helper [106.82 h] → charpenter [106.82 h]; SIC- Cost [125789]; Supervisor [106.82 h]; Mason [106.82 h]; Mason Helper [106.82 h]; Surveyor [106.82 h]; Helper [106.82 h] |
| SDR-ST-CON-P3-1240 | Erection of Columns Part 2 | 2027-03-01 → 2027-03-07 (+6d) | 2027-03-17 → 2027-03-23 (+6d) | 5d → 6d |  | resources charpenter [135.31 h]; SIC- Cost [161728]; Surveyor [135.31 h]; Helper [135.31 h]; Supervisor [135.31 h]; Mason [135.31 h]; Mason Helper [135.31 h] → charpenter [135.31 h]; SIC- Cost [161728]; Supervisor [135.31 h]; Mason [135.31 h]; Mason Helper [135.31 h]; Surveyor [135.31 h]; Helper [135.31 h] |
| SDR-ST-CON-P3-1330 | Installation of Bracing System Part 1 | 2027-03-21 → 2027-03-27 (+6d) | 2027-04-06 → 2027-04-12 (+6d) | 7d → 10d |  | resources charpenter [128.18 h]; SIC- Cost [107819]; Surveyor [128.18 h]; Helper [128.18 h]; Supervisor [128.18 h]; Mason [128.18 h]; Mason Helper [128.18 h] → charpenter [128.18 h]; SIC- Cost [107819]; Supervisor [128.18 h]; Mason [128.18 h]; Mason Helper [128.18 h]; Surveyor [128.18 h]; Helper [128.18 h] |
| SDR-ST-CON-P3-1340 | Installation of Beams Part 1 | 2027-03-21 → 2027-03-27 (+6d) | 2027-03-31 → 2027-04-06 (+6d) | 5d → 6d |  | resources charpenter [113.94 h]; SIC- Cost [143758]; Surveyor [113.94 h]; Helper [113.94 h]; Supervisor [113.94 h]; Mason [2104.64 h]; Mason Helper [2104.64 h] → charpenter [113.94 h]; SIC- Cost [143758]; Supervisor [113.94 h]; Mason [2104.64 h]; Mason Helper [2104.64 h]; Surveyor [113.94 h]; Helper [113.94 h] |
| SDR-ST-CON-P3-1350 | Installation of Girders Part 1 | 2027-03-30 → 2027-04-05 (+6d) | 2027-04-21 → 2027-04-27 (+6d) | 18d → 21d |  | resources charpenter [99.7 h]; SIC- Cost [89849]; Surveyor [99.7 h]; Helper [99.7 h]; Supervisor [99.7 h]; Mason [99.7 h]; Mason Helper [99.7 h] → charpenter [99.7 h]; SIC- Cost [89849]; Supervisor [99.7 h]; Mason [99.7 h]; Mason Helper [99.7 h]; Surveyor [99.7 h]; Helper [99.7 h] |
| SDR-ST-CON-P3-1440 | Installation of Girders Part 2 | 2027-03-30 → 2027-04-05 (+6d) | 2027-04-12 → 2027-04-18 (+6d) | 18d → 21d |  | resources charpenter [99.7 h]; SIC- Cost [89849]; Surveyor [99.7 h]; Helper [99.7 h]; Supervisor [99.7 h]; Mason [99.7 h]; Mason Helper [99.7 h] → charpenter [99.7 h]; SIC- Cost [89849]; Supervisor [99.7 h]; Mason [99.7 h]; Mason Helper [99.7 h]; Surveyor [99.7 h]; Helper [99.7 h] |
| SDR-ST-CON-P3-1410 | Installation of Bracing System Part 2 | 2027-04-07 → 2027-04-13 (+6d) | 2027-04-25 → 2027-05-01 (+6d) | 7d → 10d |  | resources charpenter [128.18 h]; SIC- Cost [107819]; Surveyor [128.18 h]; Helper [128.18 h]; Supervisor [128.18 h]; Mason [128.18 h]; Mason Helper [128.18 h] → charpenter [128.18 h]; SIC- Cost [107819]; Supervisor [128.18 h]; Mason [128.18 h]; Mason Helper [128.18 h]; Surveyor [128.18 h]; Helper [128.18 h] |
| SDR-ST-CON-P3-1390 | Installation of Beams Part 2 | 2027-04-07 → 2027-04-13 (+6d) | 2027-04-21 → 2027-04-27 (+6d) | -0.48d → 0.52d |  | resources charpenter [113.94 h]; SIC- Cost [143758]; Surveyor [113.94 h]; Helper [113.94 h]; Supervisor [113.94 h]; Mason [113.94 h]; Mason Helper [113.94 h] → charpenter [113.94 h]; SIC- Cost [143758]; Supervisor [113.94 h]; Mason [113.94 h]; Mason Helper [113.94 h]; Surveyor [113.94 h]; Helper [113.94 h] |
| SDR-ST-CON-P3-1450 | Installation of Joists Part 1 | 2027-04-21 → 2027-04-27 (+6d) | 2027-05-05 → 2027-05-11 (+6d) | 10.52d → 13.52d |  | resources charpenter [113.94 h]; SIC- Cost [89849]; Surveyor [113.94 h]; Helper [113.94 h]; Supervisor [113.94 h]; Mason [113.94 h]; Mason Helper [113.94 h] → charpenter [113.94 h]; SIC- Cost [89849]; Supervisor [113.94 h]; Mason [113.94 h]; Mason Helper [113.94 h]; Surveyor [113.94 h]; Helper [113.94 h] |
| SDR-ST-CON-P3-1460 | Installation of Connections (Bolting) | 2027-04-21 → 2027-04-27 (+6d) | 2027-05-05 → 2027-05-11 (+6d) | -0.48d → 0.52d |  | resources charpenter [142.43 h]; SIC- Cost [53909.4]; Surveyor [142.43 h]; Helper [142.43 h]; Supervisor [142.43 h]; Mason [142.43 h]; Mason Helper [142.43 h] → charpenter [142.43 h]; SIC- Cost [53909.4]; Supervisor [142.43 h]; Mason [142.43 h]; Mason Helper [142.43 h]; Surveyor [142.43 h]; Helper [142.43 h] |
| SDR-ST-CON-P3-1470 | Installation of Joists Part 2 | 2027-04-26 → 2027-05-02 (+6d) | 2027-05-09 → 2027-05-15 (+6d) | 7d → 10d |  | resources charpenter [113.94 h]; SIC- Cost [89849]; Surveyor [113.94 h]; Helper [113.94 h]; Supervisor [113.94 h]; Mason [113.94 h]; Mason Helper [113.94 h] → charpenter [113.94 h]; SIC- Cost [89849]; Supervisor [113.94 h]; Mason [113.94 h]; Mason Helper [113.94 h]; Surveyor [113.94 h]; Helper [113.94 h] |
| 3 | **Aluminum Cladding Panels** | 2027-05-10 → 2027-05-22 (+12d) | 2027-08-06 → 2027-08-05 (-1d) |  |  |  |
| 1 | **Steel Subframe Installation** | 2027-05-10 → 2027-05-22 (+12d) | 2027-08-06 → 2027-08-05 (-1d) |  |  |  |
| SDR-ST-CON-P3-1530 | Survey & Setting Out for Cladding | 2027-05-10 → 2027-05-22 (+12d) | 2027-05-24 → 2027-05-30 (+6d) | 7d → 10d |  |  |
| SDR-ST-CON-P3-1560 | Install Steel Subframe Supports Part 1 | 2027-06-02 → 2027-06-08 (+6d) | 2027-06-22 → 2027-06-28 (+6d) | 0d → 3d |  |  |
| SDR-ST-CON-P3-1620 | Install Steel Subframe Supports Part 2 | 2027-06-23 → 2027-06-29 (+6d) | 2027-07-13 → 2027-07-19 (+6d) | 0d → 3d |  |  |
| SDR-ST-CON-P3-1690 | Install Steel Subframe Supports Part 3 | 2027-07-14 → 2027-07-20 (+6d) | 2027-07-28 → 2027-08-03 (+6d) | 0d → 3d |  |  |
| SDR-ST-CON-P3-1720 | Alignment & Leveling of Subframe Part 1 | 2027-07-14 → 2027-07-20 (+6d) | 2027-07-26 → 2027-08-01 (+6d) | 2d → 5d |  |  |
| SDR-ST-CON-P3-1770 | Alignment & Leveling of Subframe Part 2 | 2027-07-29 → 2027-07-28 (-1d) | 2027-08-06 → 2027-08-05 (-1d) | 0d → 1d | SDR-ST-CON-P3-1720, SDR-ST-MILS-1000, SDR-ST-CON-P1-5980 FS-2d, SDR-ST-CON-P3-1690 → SDR-ST-CON-P3-1720 SS, SDR-ST-MILS-1000, SDR-ST-CON-P1-5980 FS-2d, SDR-ST-CON-P3-1690 SS |  |
| SDR-ST-CON-P3-1830 | Fixing & Tightening of Subframe Connections Part 1 | 2027-07-27 → 2027-07-28 (+1d) | 2027-08-04 → 2027-08-05 (+1d) | 2d → 1d | SDR-ST-CON-P3-1770 SS-2d, SDR-ST-MILS-1000 FS-2d → SDR-ST-CON-P3-1770 SS, SDR-ST-MILS-1000 FS-2d |  |
| SDR-ST-CON-P3-1880 | Fixing & Tightening of Subframe Connections Part 2 | 2027-07-29 → 2027-07-28 (-1d) | 2027-08-06 → 2027-08-04 (-2d) | -0.48d → 2d | SDR-ST-CON-P3-1830 SS, SDR-ST-MILS-1000 SS, SDR-ST-CON-P3-1760 → SDR-ST-CON-P3-1830 SS, SDR-ST-MILS-1000 SS, SDR-ST-CON-P3-1760 SS |  |
| 2 | **Aluminum Cladding Installation** | 2027-06-23 → 2027-06-29 (+6d) | 2027-07-31 → 2027-08-05 (+5d) |  |  |  |
| SDR-ST-CON-P3-1610 | Install Aluminum Panels (4mm Thick Part 1 | 2027-06-23 → 2027-06-29 (+6d) | 2027-07-10 → 2027-07-15 (+5d) | 15d → 6d |  |  |
| SDR-ST-CON-P3-1660 | Install Aluminum Panels (4mm Thick Part 2 | 2027-06-27 → 2027-07-03 (+6d) | 2027-07-10 → 2027-07-15 (+5d) | 15d → 6d |  |  |
| SDR-ST-CON-P3-1700 | Install Aluminum Panels (4mm Thick Part 3 | 2027-07-11 → 2027-07-17 (+6d) | 2027-07-18 → 2027-07-24 (+6d) | 15d → 6d |  |  |
| SDR-ST-CON-P3-1730 | Fix Panels with Snap Hooks & Fasteners Part 1 | 2027-07-11 → 2027-07-17 (+6d) | 2027-07-17 → 2027-07-22 (+5d) | 15d → 6d |  |  |
| SDR-ST-CON-P3-1750 | Fix Panels with Snap Hooks & Fasteners Part 2 | 2027-07-20 → 2027-07-26 (+6d) | 2027-07-26 → 2027-08-01 (+6d) | 6.52d → 1.52d |  |  |
| SDR-ST-CON-P3-1810 | Install Drainage System Part 1 | 2027-07-20 → 2027-07-26 (+6d) | 2027-07-25 → 2027-07-31 (+6d) | 6.52d → 1.52d |  |  |
| SDR-ST-CON-P3-1820 | Install Drainage System Part 2 | 2027-07-20 → 2027-07-26 (+6d) | 2027-07-25 → 2027-07-31 (+6d) | 11.42d → 3.51d |  |  |
| SDR-ST-CON-P3-1850 | Adjustment & Alignment of Panels Part 1 | 2027-07-20 → 2027-07-26 (+6d) | 2027-07-24 → 2027-07-29 (+5d) | 12.52d → 3.51d |  |  |
| SDR-ST-CON-P3-1860 | Adjustment & Alignment of Panels Part 2 | 2027-07-20 → 2027-07-26 (+6d) | 2027-07-24 → 2027-07-29 (+5d) | 12.52d → 3.51d |  |  |
| SDR-ST-CON-P3-1890 | Sealant & Finishing Works | 2027-07-25 → 2027-07-31 (+6d) | 2027-07-31 → 2027-08-05 (+5d) | 6.52d → 1.52d | SDR-ST-CON-P3-1860 SS-4d, SDR-ST-MILS-1000, SDR-ST-CON-P3-1810, SDR-ST-CON-P3-1850 SS-5d → SDR-ST-CON-P3-1860 SS+2d, SDR-ST-MILS-1000, SDR-ST-CON-P3-1810, SDR-ST-CON-P3-1850 SS |  |
| 1 | **THERMAL & MOISTURE PROTECTION** | 2026-12-23 → 2026-12-29 (+6d) | 2027-02-10 → 2027-02-16 (+6d) |  |  |  |
| 1 | **Bituminous Sheet Waterproofing** | 2026-12-23 → 2026-12-29 (+6d) | 2027-02-10 → 2027-02-16 (+6d) |  |  |  |
| SDR-ST-CON-P3-1070 | Provide and lay 2 layers of waterproofing bitumenous membrane 4mm below footings | 2026-12-23 → 2026-12-29 (+6d) | 2026-12-28 → 2027-01-03 (+6d) | 11d → 13d |  |  |
| SDR-ST-CON-P3-1170 | Provide and lay 2 layers of waterproofing bitumenous membrane 4mm in contact with soil | 2027-02-06 → 2027-02-11 (+5d) | 2027-02-10 → 2027-02-16 (+6d) | 18d → 21d |  |  |
| 4 | **Electrical Works** | 2027-01-16 → 2027-01-23 (+7d) | 2027-08-05 → 2027-08-06 (+1d) |  |  |  |
| 1 | **Low-Voltage Electrical Power Conductors and Cables** | 2027-05-08 → 2027-05-13 (+5d) | 2027-06-01 → 2027-06-07 (+6d) |  |  |  |
| SDR-ST-CON-P3-1510 | Installtion and test low voltage cable including pulling of cable 600/1000V . | 2027-05-08 → 2027-05-13 (+5d) | 2027-06-01 → 2027-06-07 (+6d) | 13d → 11d |  |  |
| 2 | **Ondoor Lighting Points** | 2027-06-02 → 2027-06-08 (+6d) | 2027-06-26 → 2027-07-01 (+5d) |  |  |  |
| SDR-ST-CON-P3-1580 | Install, test, and commission all necessary components for outdoor lighting points. | 2027-06-02 → 2027-06-08 (+6d) | 2027-06-26 → 2027-07-01 (+5d) | 13d → 11d |  |  |
| 3 | **Outdoor Lighting Fixtures** | 2027-06-03 → 2027-06-09 (+6d) | 2027-07-08 → 2027-07-14 (+6d) |  |  |  |
| SDR-ST-CON-P3-1630 | Install of L10 recessed in ceiling light, lenght1535mmxwidth75mmxhieght105mm, LED 53.2w Part 1 | 2027-06-03 → 2027-06-09 (+6d) | 2027-06-26 → 2027-07-01 (+5d) | 13d → 11d |  |  |
| SDR-ST-CON-P3-1650 | Install of L10 recessed in ceiling light, lenght1535mmxwidth75mmxhieght105mm, LED 53.2w Part 2 | 2027-06-16 → 2027-06-22 (+6d) | 2027-07-08 → 2027-07-14 (+6d) |  |  |  |
| 4 | **CCTV** | 2027-01-16 → 2027-01-23 (+7d) | 2027-08-05 → 2027-08-06 (+1d) |  |  |  |
| SDR-ST-CON-P3-1780 | Install of 5MP IP PoE Bullet Camera, outdoor mounted on canopy ceiling Part 1. | 2027-01-16 → 2027-01-23 (+7d) | 2027-01-28 → 2027-02-04 (+7d) | 143d → 141d |  |  |
| SDR-ST-CON-P3-1520 | Install of Handhole (600x600x730mm) | 2027-05-04 → 2027-05-10 (+6d) | 2027-05-13 → 2027-05-25 (+12d) |  |  |  |
| SDR-ST-CON-P3-1550 | Install of 2 core 9/125um indoor -outdoor central tube | 2027-05-12 → 2027-05-24 (+12d) | 2027-05-31 → 2027-06-06 (+6d) |  |  |  |
| SDR-ST-CON-P3-1570 | Install of 4 Port (2 duplex) LC/UPC OS2 fiber patch panel | 2027-05-31 → 2027-06-06 (+6d) | 2027-06-14 → 2027-06-20 (+6d) |  |  |  |
| SDR-ST-CON-P3-1600 | Install of Pole mounted Filed Equipment cabinet (FEC) , with fan and ventilation | 2027-06-14 → 2027-06-20 (+6d) | 2027-07-07 → 2027-07-13 (+6d) |  |  |  |
| SDR-ST-CON-P3-1670 | Install of 8 Port Industrial PoE Switch 10/1000BaseT | 2027-07-07 → 2027-07-13 (+6d) | 2027-07-24 → 2027-07-29 (+5d) |  |  |  |
| SDR-ST-CON-P3-1680 | Install of 1.2KVA Industrial type UPS located at FEC | 2027-07-07 → 2027-07-13 (+6d) | 2027-07-26 → 2027-08-01 (+6d) |  |  |  |
| SDR-ST-CON-P3-1740 | Install of UTP CAT6 Patch Cord , connect the industrial switch with the cameras | 2027-07-12 → 2027-07-18 (+6d) | 2027-07-20 → 2027-07-26 (+6d) |  |  |  |
| SDR-ST-CON-P3-1790 | Install of 5MP IP PoE Bullet Camera, outdoor mounted on canopy ceiling Part 2. | 2027-07-20 → 2027-07-21 (+1d) | 2027-08-05 → 2027-08-06 (+1d) |  | SDR-ST-CON-P3-1740, SDR-ST-MILS-1000, SDR-ST-PRO-MS-1160 → SDR-ST-CON-P3-1740 SS+3d, SDR-ST-MILS-1000, SDR-ST-PRO-MS-1160 |  |
| 5 | **Voice Evacuation System** | 2027-07-13 → 2027-07-18 (+5d) | 2027-07-25 → 2027-07-28 (+3d) |  |  |  |
| SDR-ST-CON-P3-1870 | install, test of Suspended ceiling outdoor projector speaker, bi-directional, 20w Part 2 | 2027-07-13 → 2027-07-18 (+5d) | 2027-07-21 → 2027-07-26 (+5d) |  |  |  |
| SDR-ST-CON-P3-1800 | install, test of Suspended ceiling outdoor projector speaker, bi-directional, 20w Part 1 | 2027-07-15 → 2027-07-20 (+5d) | 2027-07-25 → 2027-07-28 (+3d) |  |  |  |
| 6 | **Testing and Comissioning** | 2027-03-08 → 2027-03-18 (+10d) | 2027-08-05 → 2027-08-06 (+1d) |  |  |  |
| 1 | **Civil Works** | 2027-06-06 → 2027-06-12 (+6d) | 2027-06-15 → 2027-06-21 (+6d) |  |  |  |
| SDR-ST-TC-1000 | Testing & Commissioning of road works | 2027-06-06 → 2027-06-12 (+6d) | 2027-06-15 → 2027-06-21 (+6d) |  |  |  |
| 2 | **Storm Water Drainage Network** | 2027-03-08 → 2027-03-18 (+10d) | 2027-03-29 → 2027-04-04 (+6d) |  |  |  |
| SDR-ST-TC-1010 | Testing & Commissioning of network work | 2027-03-08 → 2027-03-18 (+10d) | 2027-03-29 → 2027-04-04 (+6d) | 18d → 21d |  |  |
| 3 | **Sewerage Network** | 2027-04-01 → 2027-04-07 (+6d) | 2027-04-18 → 2027-04-24 (+6d) |  |  |  |
| SDR-ST-TC-1030 | Testing & Commissioning of Sewage Network | 2027-04-01 → 2027-04-07 (+6d) | 2027-04-18 → 2027-04-24 (+6d) | 16d → 15d |  |  |

| ID | Task | Start | Finish | Total float | Predecessors |
| --- | --- | --- | --- | --- | --- |
| 5 | **Portable Water** | 2027-04-20 → 2027-04-26 (+6d) | 2027-05-06 → 2027-05-12 (+6d) |  |  |
| SDR-ST-TC-1020 | Testing & Commissioning of Potable Network | 2027-04-20 → 2027-04-26 (+6d) | 2027-05-06 → 2027-05-12 (+6d) | 9d → 11d |  |
| 6 | **Electrical Works** | 2027-07-25 → 2027-07-31 (+6d) | 2027-07-26 → 2027-08-01 (+6d) |  |  |
| SDR-ST-TC-1050 | Testing & Commissioning of Electrical Network | 2027-07-25 → 2027-07-31 (+6d) | 2027-07-26 → 2027-08-01 (+6d) | 10.52d → 5.51d |  |
| 8 | **CCTV Works** | 2027-07-20 → 2027-07-21 (+1d) | 2027-08-05 → 2027-08-06 (+1d) |  |  |
| SDR-ST-TC-1040 | Testing & Commissioning of medium voltage works | 2027-07-20 → 2027-07-21 (+1d) | 2027-08-05 → 2027-08-06 (+1d) | 1.52d → 0.52d |  |
| 7 | **Close Out** | 2027-04-08 → 2027-04-14 (+6d) | 2027-08-07 → 2027-08-06 (-1d) |  |  |
| 1 | **As Built Drawings** | 2027-04-08 → 2027-04-14 (+6d) | 2027-07-26 → 2027-08-01 (+6d) |  |  |
| 1 | **Civil** | 2027-06-05 → 2027-06-10 (+5d) | 2027-06-15 → 2027-06-21 (+6d) |  |  |
| SDR-ST-CO-1000 | Civil As-Built Drawing Submission | 2027-06-05 → 2027-06-10 (+5d) | 2027-06-09 → 2027-06-15 (+6d) | 6d → 1d |  |
| SDR-ST-CO-1010 | Civil As-Built Drawing Approvals | 2027-06-10 → 2027-06-16 (+6d) | 2027-06-15 → 2027-06-21 (+6d) | 6d → 1d |  |
| 2 | **Mechanical** | 2027-04-08 → 2027-04-14 (+6d) | 2027-05-12 → 2027-05-24 (+12d) |  |  |
| SDR-ST-CO-1020 | Mechanical As-Built Drawing Submission | 2027-04-08 → 2027-04-14 (+6d) | 2027-04-17 → 2027-04-22 (+5d) |  |  |
| SDR-ST-CO-1030 | Mechanical As-Built Drawing Approvals | 2027-05-04 → 2027-05-10 (+6d) | 2027-05-12 → 2027-05-24 (+12d) |  |  |
| 3 | **Electrical** | 2027-07-04 → 2027-07-10 (+6d) | 2027-07-26 → 2027-08-01 (+6d) |  |  |
| SDR-ST-CO-1040 | Electrical As-Built Drawing Submission | 2027-07-04 → 2027-07-10 (+6d) | 2027-07-13 → 2027-07-19 (+6d) | 9d → 4d |  |
| SDR-ST-CO-1100 | Electrical As-Built Drawing Approvals | 2027-07-15 → 2027-07-21 (+6d) | 2027-07-26 → 2027-08-01 (+6d) | 9d → 4d |  |
| 2 | **Training and Manuals** | 2027-07-14 → 2027-07-15 (+1d) | 2027-08-05 → 2027-08-06 (+1d) |  |  |
| SDR-ST-CO-1050 | Training and Manuals | 2027-07-14 → 2027-07-15 (+1d) | 2027-08-05 → 2027-08-06 (+1d) |  | SDR-ST-CON-P3-1870 SS+1d, SDR-ST-CON-P3-1630 SS+2d, SDR-ST-CON-P3-1630 → SDR-ST-CON-P3-1870 SS-2d, SDR-ST-CON-P3-1630 SS+2d, SDR-ST-CON-P3-1630 |
| 3 | **Demobilize Manpower** | 2027-07-14 → 2027-07-15 (+1d) | 2027-08-05 → 2027-08-06 (+1d) |  |  |
| SDR-ST-CO-1060 | Manpower Demobilize | 2027-07-14 → 2027-07-15 (+1d) | 2027-08-05 → 2027-08-06 (+1d) |  |  |
| 4 | **Demobilize Equipment** | 2027-07-14 → 2027-07-15 (+1d) | 2027-08-05 → 2027-08-06 (+1d) |  |  |
| SDR-ST-CO-1070 | Equipments Demobilize | 2027-07-14 → 2027-07-15 (+1d) | 2027-08-05 → 2027-08-06 (+1d) | 1d → 0d |  |
| 5 | **Removal of Site Offices and Structures** | 2027-07-14 → 2027-07-15 (+1d) | 2027-08-05 → 2027-08-06 (+1d) |  |  |
| SDR-ST-CO-1090 | Site Office Removal | 2027-07-14 → 2027-07-15 (+1d) | 2027-08-05 → 2027-08-06 (+1d) | 1d → 0d |  |
| 6 | **Handover** |  | 2027-08-07 → 2027-08-06 (-1d) |  |  |
| SDR-ST-CO-1080 | Project Handover |  | 2027-08-07 → 2027-08-06 (-1d) | -0.48d → 0d | SDR-ST-CO-1070 SS, SDR-ST-CO-1090 SS, SDR-ST-CON-P3-1890 SS, SDR-ST-CON-P3-1880 FF, SDR-ST-CON-P3-1840, SDR-ST-CON-P1-6030 SS, SDR-ST-CON-P1-6040 SS, SDR-ST-CON-P1-6000 SS, SDR-ST-CO-1100 FF+1d, SDR-ST-TC-1050 SS, SDR-ST-MILS-1100, SDR-ST-MILS-1120 FF+1d, SDR-ST-TC-1000 FF, SDR-ST-TC-1040 FF, SDR-ST-CON-P1-5980, SDR-ST-CON-P1-6040, SDR-ST-CO-1090 FF, SDR-ST-CON-P1-6030 → SDR-ST-CO-1070 SS, SDR-ST-CO-1090 SS, SDR-ST-CON-P3-1890 SS, SDR-ST-CON-P3-1880 FF, SDR-ST-CON-P3-1840, SDR-ST-CON-P1-6030 SS, SDR-ST-CON-P1-6040 SS, SDR-ST-CON-P1-6000 SS, SDR-ST-CO-1100 FF+1d, SDR-ST-TC-1050 SS, SDR-ST-MILS-1100, SDR-ST-MILS-1120 FF, SDR-ST-TC-1000 FF, SDR-ST-TC-1040 FF, SDR-ST-CON-P1-5980, SDR-ST-CON-P1-6040, SDR-ST-CO-1090 FF, SDR-ST-CON-P1-6030 |

## Version 7 (data date 2026-11-09, saved 2026-11-12, file SUD1-05-018-NEW - 9-11-26.xer)

Note of the change: Renumber project folders 01–23 in order (after removing projects 12 and 25)

Last finish 2027-08-06 → 2027-12-15 (+131d). Complete tasks 258 → 279.

Changed:

| ID | Task | Start | Finish | Duration | Total float | Predecessors | Other |
| --- | --- | --- | --- | --- | --- | --- | --- |
| 1 | **Milestone** |  | 2027-08-06 → 2027-12-15 (+131d) |  |  |  |  |
| SDR-ST-MILS-1070 | Completion of road and paving works | 2027-02-02 → 2027-02-21 (+19d) | 2027-02-02 → 2027-02-21 (+19d) |  | 6d → -55d |  |  |
| SDR-ST-MILS-1100 | Completion of site and platform works | 2027-04-22 → 2027-07-04 (+73d) | 2027-04-22 → 2027-07-04 (+73d) |  | 85d → 17d |  |  |
| SDR-ST-MILS-1140 | Project Finish | 2027-08-06 → 2027-12-15 (+131d) | 2027-08-06 → 2027-12-15 (+131d) |  | 0d → -113d | SDR-ST-CO-1080 SS, SDR-ST-CO-1090 SS, SDR-ST-CON-P1-4790, SDR-ST-CON-P1-4710, SDR-ST-CON-P1-4830, SDR-ST-CON-P1-5120, SDR-ST-CON-P1-5440, SDR-ST-CON-P3-1890, SDR-ST-MILS-1110 FF, SDR-ST-TC-1040, SDR-ST-CO-1050 SS, SDR-ST-CO-1070 SS, SDR-ST-TC-1050 SS, SDR-ST-CON-P3-1780, SDR-ST-CO-1080, SDR-ST-CO-1090, SDR-ST-CO-1050, SDR-ST-CO-1070, SDR-ST-TC-1050 → SDR-ST-MILS-1110 FF, SDR-ST-TC-1040, SDR-ST-CO-1050, SDR-ST-CO-1070, SDR-ST-TC-1050, SDR-ST-CON-P3-1780, SDR-ST-CO-1080, SDR-ST-CO-1090, SDR-ST-CON-P1-4790, SDR-ST-CON-P1-4710, SDR-ST-CON-P1-4830, SDR-ST-CON-P1-5120, SDR-ST-CON-P1-5440, SDR-ST-CON-P3-1890 |  |
| 1 | **Major Milestone** |  | 2027-08-06 → 2027-12-12 (+128d) |  |  |  |  |
| SDR-ST-MILS-1120 | Project Finish Milstone | 2027-08-06 → 2027-12-12 (+128d) | 2027-08-06 → 2027-12-12 (+128d) |  | 0d → -110d | SDR-ST-MILS-1130, SDR-ST-CO-1060 SS, SDR-ST-CO-1060 FF → SDR-ST-CO-1060, SDR-ST-MILS-1130 |  |
| 3 | **Contractual Milestone** |  | 2027-08-06 → 2027-12-05 (+121d) |  |  |  |  |
| SDR-ST-MILS-1080 | Completion of road works | 2027-02-03 → 2027-02-21 (+18d) | 2027-02-03 → 2027-02-21 (+18d) |  | 113d → -18d |  |  |
| SDR-ST-MILS-1060 | Completion of medium voltage works | 2027-06-01 → 2027-08-18 (+78d) | 2027-06-01 → 2027-08-18 (+78d) |  | 7d → -84d | SDR-ST-CON-P1-3900 FF, SDR-ST-CON-P1-4000 FF, SDR-ST-CON-P1-4250 SS, SDR-ST-CON-P1-4010 FF, SDR-ST-CON-P1-4320 FF, SDR-ST-CON-P1-4050 FF, SDR-ST-CON-P1-3980 FF, SDR-ST-CON-P1-4250 FF → SDR-ST-CON-P1-3900 FF, SDR-ST-CON-P1-4000 FF, SDR-ST-CON-P1-4250 FF, SDR-ST-CON-P1-4010 FF, SDR-ST-CON-P1-4320 FF, SDR-ST-CON-P1-4050 FF, SDR-ST-CON-P1-3980 FF |  |
| SDR-ST-MILS-1130 | Completion of finishing works in the project | 2027-08-06 → 2027-12-05 (+121d) | 2027-08-06 → 2027-12-05 (+121d) |  | 0.52d → -104d | SDR-ST-CON-P1-5490 FF, SDR-ST-CON-P1-5280 FF, SDR-ST-CON-P1-5460 FF, SDR-ST-CON-P1-5390 FF, SDR-ST-CON-P1-5430 FF, SDR-ST-CON-P1-5530 FF, SDR-ST-CON-P1-3900 FF, SDR-ST-CON-P1-4000 FF, SDR-ST-CON-P1-4250 FF, SDR-ST-CON-P1-4010 FF, SDR-ST-CON-P1-4320 FF, SDR-ST-CON-P1-4050 FF, SDR-ST-CON-P1-3980 FF, SDR-ST-CON-P1-5170 FF, SDR-ST-CON-P1-5760 FF, SDR-ST-CON-P1-6080 FF, SDR-ST-CON-P1-5790 FF, SDR-ST-CON-P1-3810 FF, SDR-ST-CON-P1-3670 FF, SDR-ST-CON-P1-3760 FF, SDR-ST-CON-P1-3930 FF, SDR-ST-CON-P1-5920 FF, SDR-ST-CON-P1-6000 FF, SDR-ST-CON-P1-6040 FF, SDR-ST-CON-P1-6050 FF, SDR-ST-CON-P1-4570 FF, SDR-ST-CON-P1-4400 FF, SDR-ST-CON-P1-4610 FF, SDR-ST-CON-P1-3700 FF, SDR-ST-CON-P1-3360 FF, SDR-ST-CON-P1-3480 FF, SDR-ST-CON-P1-5970 FF, SDR-ST-CON-P1-5980 FF, SDR-ST-CON-P1-5910 FF, SDR-ST-CON-P1-6030 FF, SDR-ST-CON-P1-4310 FF, SDR-ST-CON-P1-4880 FF, SDR-ST-CON-P1-4370 FF, SDR-ST-CON-P1-5140 FF, SDR-ST-CON-P1-4020 FF, SDR-ST-CON-P1-4740 FF, SDR-ST-CON-P1-4240 FF, SDR-ST-CON-P1-5240 FF, SDR-ST-CON-P1-4270 FF, SDR-ST-CON-P1-4900 FF, SDR-ST-CON-P1-4160 FF, SDR-ST-CON-P1-4820 FF, SDR-ST-CON-P1-4170 FF, SDR-ST-CON-P1-5000 FF, SDR-ST-CON-P1-3880 FF, SDR-ST-CON-P1-4040 FF, SDR-ST-CON-P1-4070 FF, SDR-ST-CON-P1-4800 FF, SDR-ST-CON-P1-5030 FF, SDR-ST-CON-P1-4700 FF, SDR-ST-CON-P1-5100 FF, SDR-ST-CON-P1-4520 FF, SDR-ST-CON-P1-5070 FF, SDR-ST-CON-P1-4910 FF, SDR-ST-CON-P1-5730 FF, SDR-ST-CON-P1-4640 FF, SDR-ST-CON-P1-5710 FF, SDR-ST-CON-P1-4660 FF, SDR-ST-CON-P1-5750 FF, SDR-ST-CON-P1-5570 FF, SDR-ST-CON-P1-5720 FF, SDR-ST-CON-P1-4970 FF, SDR-ST-CON-P1-5700 FF, SDR-ST-CON-P1-5020 FF, SDR-ST-CON-P1-5740 FF, SDR-ST-CON-P1-5500 FF, SDR-ST-CON-P1-5770 FF, SDR-ST-CON-P1-5670 FF, SDR-ST-CON-P1-5800 FF, SDR-ST-CON-P1-4760 FF, SDR-ST-CON-P3-1840 FF, SDR-ST-CON-P3-1140 FF, SDR-ST-CON-P3-1450 FF, SDR-ST-CON-P3-1880 FF, SDR-ST-CON-P3-1890 SS, SDR-ST-CON-P3-1170 FF, SDR-ST-CON-P3-1790 FF, SDR-ST-CON-P3-1870 FF → SDR-ST-CON-P1-5490 FF, SDR-ST-CON-P1-5280 FF, SDR-ST-CON-P1-5460 FF, SDR-ST-CON-P1-5390 FF, SDR-ST-CON-P1-5430 FF, SDR-ST-CON-P1-5530 FF, SDR-ST-CON-P1-3900 FF, SDR-ST-CON-P1-4000 FF, SDR-ST-CON-P1-4250 FF, SDR-ST-CON-P1-4010 FF, SDR-ST-CON-P1-4320 FF, SDR-ST-CON-P1-4050 FF, SDR-ST-CON-P1-3980 FF, SDR-ST-CON-P1-5170 FF, SDR-ST-CON-P1-5760 FF, SDR-ST-CON-P1-6080 FF, SDR-ST-CON-P1-5790 FF, SDR-ST-CON-P1-3810 FF, SDR-ST-CON-P1-3670 FF, SDR-ST-CON-P1-3760 FF, SDR-ST-CON-P1-3930 FF, SDR-ST-CON-P1-5920 FF, SDR-ST-CON-P1-6000 FF, SDR-ST-CON-P1-6040 FF, SDR-ST-CON-P1-6050 FF, SDR-ST-CON-P1-4570 FF, SDR-ST-CON-P1-4400 FF, SDR-ST-CON-P1-4610 FF, SDR-ST-CON-P1-3700 FF, SDR-ST-CON-P1-3360 FF, SDR-ST-CON-P1-3480 FF, SDR-ST-CON-P1-5970 FF, SDR-ST-CON-P1-5980 FF, SDR-ST-CON-P1-5910 FF, SDR-ST-CON-P1-6030 FF, SDR-ST-CON-P1-4310 FF, SDR-ST-CON-P1-4880 FF, SDR-ST-CON-P1-4370 FF, SDR-ST-CON-P1-5140 FF, SDR-ST-CON-P1-4020 FF, SDR-ST-CON-P1-4740 FF, SDR-ST-CON-P1-4240 FF, SDR-ST-CON-P1-5240 FF, SDR-ST-CON-P1-4270 FF, SDR-ST-CON-P1-4900 FF, SDR-ST-CON-P1-4160 FF, SDR-ST-CON-P1-4820 FF, SDR-ST-CON-P1-4170 FF, SDR-ST-CON-P1-5000 FF, SDR-ST-CON-P1-3880 FF, SDR-ST-CON-P1-4040 FF, SDR-ST-CON-P1-4070 FF, SDR-ST-CON-P1-4800 FF, SDR-ST-CON-P1-5030 FF, SDR-ST-CON-P1-4700 FF, SDR-ST-CON-P1-5100 FF, SDR-ST-CON-P1-4520 FF, SDR-ST-CON-P1-5070 FF, SDR-ST-CON-P1-4910 FF, SDR-ST-CON-P1-5730 FF, SDR-ST-CON-P1-4640 FF, SDR-ST-CON-P1-5710 FF, SDR-ST-CON-P1-4660 FF, SDR-ST-CON-P1-5750 FF, SDR-ST-CON-P1-5570 FF, SDR-ST-CON-P1-5720 FF, SDR-ST-CON-P1-4970 FF, SDR-ST-CON-P1-5700 FF, SDR-ST-CON-P1-5020 FF, SDR-ST-CON-P1-5740 FF, SDR-ST-CON-P1-5500 FF, SDR-ST-CON-P1-5770 FF, SDR-ST-CON-P1-5670 FF, SDR-ST-CON-P1-5800 FF, SDR-ST-CON-P1-4760 FF, SDR-ST-CON-P3-1840 FF, SDR-ST-CON-P3-1140 FF, SDR-ST-CON-P3-1450 FF, SDR-ST-CON-P3-1880 FF, SDR-ST-CON-P3-1890 FF, SDR-ST-CON-P3-1170 FF, SDR-ST-CON-P3-1790 FF, SDR-ST-CON-P3-1870 FF |  |
| 2 | **Phases Milestone** | 2026-11-02 → 2026-11-21 (+19d) | 2027-08-06 → 2027-12-05 (+121d) |  |  |  |  |
| SDR-ST-MILS-1050 | Engineering Phase Finish Milestone | 2026-11-02 → 2026-11-21 (+19d) | 2026-11-02 → 2026-11-21 (+19d) |  | 59d → -113d |  |  |
| SDR-ST-MILS-1090 | Procurment Phase Finish Milestone | 2027-03-21 → 2027-04-20 (+30d) | 2027-03-21 → 2027-04-20 (+30d) |  | 54d → -8d |  |  |
| SDR-ST-MILS-1110 | Construction Phase Finish Milestone | 2027-08-06 → 2027-12-05 (+121d) | 2027-08-06 → 2027-12-05 (+121d) |  | 0.52d → -104d | SDR-ST-CON-P1-6050, SDR-ST-CON-P1-6040, SDR-ST-CON-P3-1890 SS, SDR-ST-CON-P3-1790 → SDR-ST-CON-P3-1890 FF, SDR-ST-CON-P3-1790, SDR-ST-CON-P1-6050, SDR-ST-CON-P1-6040 |  |
| 5 | **Project Execution Plan** | 2026-08-12 → 2026-04-30 (-104d) |  |  |  |  |  |
| SDR-ST-PREL-1040 | Project Execution Plan Submission | 2026-08-12 A → 2026-04-30 A (-104d) |  |  |  |  |  |
| SDR-ST-PREL-1100 | Project Execution Plan Approvals | 2026-08-16 A → 2026-05-04 A (-104d) |  |  |  |  |  |
| 3 | **Engineering** | 2026-04-16 → 2026-04-07 (-9d) | 2026-11-10 → 2026-11-30 (+20d) |  |  |  |  |
| 5 | **Shop Drawings Stage** | 2026-04-16 → 2026-04-07 (-9d) | 2026-11-02 → 2026-11-21 (+19d) |  |  |  |  |
| 1 | **Submission** | 2026-04-16 → 2026-04-07 (-9d) |  |  |  |  |  |
| 4 | **Civil** | 2026-04-16 → 2026-04-07 (-9d) |  |  |  |  |  |
| SDR-ST-ENG-SUB-1080 | STRUCTURAL STEEL GENERAL NOTES Submission | 2026-04-16 A → 2026-04-07 A (-9d) |  |  |  |  | resources Civil Engineer [274.9 h]; Civil Drafman [274.9 h] → Suppliers [274.9 h]; Civil Drafman [274.9 h] |
| SDR-ST-ENG-SUB-1090 | REINFORCED CONCRETE GENERAL NOTES - 01 Submission | 2026-04-16 A → 2026-04-07 A (-9d) |  |  |  |  | resources Civil Engineer [274.9 h]; Civil Drafman [274.9 h] → Suppliers [274.9 h]; Civil Drafman [274.9 h] |
| SDR-ST-ENG-SUB-1100 | EXTERNAL CANOPY PLANS Submission | 2026-05-19 A → 2026-04-07 A (-42d) |  |  |  |  | resources Civil Engineer [274.9 h]; Civil Drafman [274.9 h] → Suppliers [274.9 h]; Civil Drafman [274.9 h] |
| SDR-ST-ENG-SUB-1110 | CANOPY FRAMING Submission | 2026-06-22 A → 2026-04-07 A (-76d) |  |  |  |  | resources Civil Engineer [274.9 h]; Civil Drafman [274.9 h] → Suppliers [274.9 h]; Civil Drafman [274.9 h] |
| SDR-ST-ENG-SUB-1120 | RC DETAILS Submission | 2026-04-16 A → 2026-04-07 A (-9d) |  |  |  |  | resources Civil Engineer [274.9 h]; Civil Drafman [274.9 h] → Suppliers [274.9 h]; Civil Drafman [274.9 h] |
| 6 | **Sewerage Network** | 2026-04-16 → 2026-04-07 (-9d) |  |  |  |  |  |
| SDR-ST-ENG-SUB-1000 | Sewage Layout Master Plan Submission | 2026-04-16 A → 2026-04-07 A (-9d) |  |  |  |  |  |
| SDR-ST-ENG-SUB-1010 | Sewage Network Profile Submission | 2026-04-16 A → 2026-04-07 A (-9d) |  |  |  |  |  |
| SDR-ST-ENG-SUB-1020 | Sewage Network Standard Details Submission | 2026-04-16 A → 2026-04-07 A (-9d) |  |  |  |  |  |
| SDR-ST-ENG-SUB-1030 | Sewage Network Section Submission | 2026-04-16 A → 2026-04-07 A (-9d) |  |  |  |  |  |
| 8 | **Portable Water** | 2026-04-16 → 2026-04-07 (-9d) |  |  |  |  |  |
| SDR-ST-ENG-SUB-1040 | Potable Water Piping Layout Master Plan Submission | 2026-04-16 A → 2026-04-07 A (-9d) |  |  |  |  |  |
| SDR-ST-ENG-SUB-1050 | Potable Water Piping Layout Submission | 2026-04-16 A → 2026-04-07 A (-9d) |  |  |  |  |  |
| SDR-ST-ENG-SUB-1060 | Potable Water Standard Details Submission | 2026-04-16 A → 2026-04-07 A (-9d) |  |  |  |  |  |
| SDR-ST-ENG-SUB-1070 | Potable Water Section Submission | 2026-04-16 A → 2026-04-07 A (-9d) |  |  |  |  |  |
| 9 | **Electrical** | 2026-04-16 → 2026-04-07 (-9d) |  |  |  |  |  |
| SDR-ST-ENG-SUB-1130 | Medium Voltage Network Submission | 2026-06-21 A → 2026-04-07 A (-75d) |  |  |  |  |  |
| SDR-ST-ENG-SUB-1140 | Standard Details Medium Voltage Submission | 2026-06-21 A → 2026-04-07 A (-75d) |  |  |  |  |  |
| SDR-ST-ENG-SUB-1150 | Low Voltage Network Submission | 2026-04-16 A → 2026-04-07 A (-9d) |  |  |  |  |  |
| SDR-ST-ENG-SUB-1160 | Standard Details_Low Voltage Submission | 2026-04-16 A → 2026-04-07 A (-9d) |  |  |  |  |  |
| SDR-ST-ENG-SUB-1170 | Street Lighting Network Submission | 2026-04-16 A → 2026-04-07 A (-9d) |  |  |  |  |  |
| SDR-ST-ENG-SUB-1180 | Standard Details_Street Lighting Submission | 2026-04-16 A → 2026-04-07 A (-9d) |  |  |  |  |  |
| SDR-ST-ENG-SUB-1190 | Telecommunication Network Submission | 2026-04-16 A → 2026-04-07 A (-9d) |  |  |  |  |  |
| SDR-ST-ENG-SUB-1200 | Telecommunication Standard Details Submission | 2026-04-16 A → 2026-04-07 A (-9d) |  |  |  |  |  |
| SDR-ST-ENG-SUB-1210 | Canopy:Ground Floor Lighting Plan Submission | 2026-04-16 A → 2026-04-07 A (-9d) |  |  |  |  |  |
| SDR-ST-ENG-SUB-1220 | Canopy:Ground Floor CCTV Plan Submission | 2026-04-16 A → 2026-04-07 A (-9d) |  |  |  |  |  |
| SDR-ST-ENG-SUB-1230 | Canopy:Ground Floor Voice Evacuation Plan Submission | 2026-04-16 A → 2026-04-07 A (-9d) |  |  |  |  |  |
| 4 | **Approvals** | 2026-04-25 → 2026-04-15 (-10d) | 2026-11-02 → 2026-11-21 (+19d) |  |  |  |  |
| 4 | **Civil** | 2026-04-25 → 2026-04-15 (-10d) |  |  |  |  |  |
| SDR-ST-ENG-AP-1100 | EXTERNAL CANOPY PLANS Approval | 2026-06-03 A → 2026-04-15 A (-49d) |  |  |  |  | resources Civil Engineer [412.35 h]; Civil Forman [412.35 h] → Suppliers [412.35 h]; Civil Forman [412.35 h] |
| SDR-ST-ENG-AP-1110 | CANOPY FRAMING Approval | 2026-07-01 A → 2026-04-15 A (-77d) |  |  |  |  | resources Civil Engineer [412.35 h]; Civil Forman [412.35 h] → Suppliers [412.35 h]; Civil Forman [412.35 h] |
| SDR-ST-ENG-AP-1080 | STRUCTURAL STEEL GENERAL NOTES Approval |  |  |  |  |  | resources Civil Engineer [412.35 h]; Civil Forman [412.35 h] → Suppliers [412.35 h]; Civil Forman [412.35 h] |
| SDR-ST-ENG-AP-1090 | REINFORCED CONCRETE GENERAL NOTES - 01 Approval |  |  |  |  |  | resources Civil Engineer [412.35 h]; Civil Forman [412.35 h] → Suppliers [412.35 h]; Civil Forman [412.35 h] |
| SDR-ST-ENG-AP-1120 | RC DETAILS Approval |  |  |  |  |  | resources Civil Engineer [412.35 h]; Civil Forman [412.35 h] → Suppliers [412.35 h]; Civil Forman [412.35 h] |
| 6 | **Sewerage Network** | 2026-04-25 → 2026-04-15 (-10d) |  |  |  |  |  |
| SDR-ST-ENG-AP-1000 | Sewage Layout Master Plan Approval | 2026-05-02 A → 2026-04-15 A (-17d) |  |  |  |  |  |
| 8 | **Portable Water** | 2026-04-25 → 2026-04-15 (-10d) |  |  |  |  |  |
| SDR-ST-ENG-AP-1040 | Potable Water Piping Layout Master Plan Approval | 2026-05-02 A → 2026-04-15 A (-17d) |  |  |  |  |  |
| SDR-ST-ENG-AP-1050 | Potable Water Piping Layout Approval | 2026-05-02 A → 2026-04-15 A (-17d) |  |  |  |  |  |
| 9 | **Electrical** | 2026-04-25 → 2026-04-15 (-10d) | 2026-11-02 → 2026-11-21 (+19d) |  |  |  |  |
| SDR-ST-ENG-AP-1150 | Low Voltage Network Approval | 2026-05-02 A → 2026-04-15 A (-17d) |  |  |  |  |  |
| SDR-ST-ENG-AP-1170 | Street Lighting Network Approval | 2026-05-02 A → 2026-04-15 A (-17d) |  |  |  |  |  |
| SDR-ST-ENG-AP-1180 | Standard Details_Street Lighting Approval | 2026-05-02 A → 2026-04-15 A (-17d) |  |  |  |  |  |
| SDR-ST-ENG-AP-1190 | Telecommunication Network Approval | 2026-05-02 A → 2026-04-15 A (-17d) |  |  |  |  |  |
| SDR-ST-ENG-AP-1200 | Telecommunication Standard Details Approval | 2026-05-02 A → 2026-04-15 A (-17d) |  |  |  |  |  |
| SDR-ST-ENG-AP-1210 | Canopy:Ground Floor Lighting Plan Approval | 2026-05-02 A → 2026-04-15 A (-17d) |  |  |  |  |  |
| SDR-ST-ENG-AP-1220 | Canopy:Ground Floor CCTV Plan Approval | 2026-05-02 A → 2026-04-15 A (-17d) |  |  |  |  |  |
| SDR-ST-ENG-AP-1130 | Medium Voltage Network Approval | 2026-11-01 → 2026-11-09 (+8d) | 2026-11-02 → 2026-11-21 (+19d) | 2d → 11d | 23.2d → -113d |  |  |
| SDR-ST-ENG-AP-1140 | Standard Details Medium Voltage Approval | 2026-11-01 → 2026-11-09 (+8d) | 2026-11-02 → 2026-11-21 (+19d) | 2d → 11d | 23.2d → -113d |  |  |

| ID | Task | Start | Finish | Duration | Total float | Predecessors | Other |
| --- | --- | --- | --- | --- | --- | --- | --- |
| 6 | **Materials** |  | 2026-11-10 → 2026-11-30 (+20d) |  |  |  |  |
| 5 | **Materials Submission** |  | 2026-11-08 → 2026-11-17 (+9d) |  |  |  |  |
| SDR-ST-PRO-S-1010 | Waterproofing (Thermal & moisture Protection) |  |  |  |  |  | resources SIC- Cost; Civil Engineer → Suppliers; SIC- Cost |
| SDR-ST-PRO-S-1030 | Interlock |  |  |  |  |  | resources SIC- Cost; Civil Engineer → Suppliers; SIC- Cost |
| SDR-ST-PRO-S-1060 | Kerbstone |  |  |  |  |  | resources SIC- Cost; Civil Engineer → Suppliers; SIC- Cost |
| SDR-ST-PRO-S-1260 | Steel Bars |  |  |  |  |  | resources SIC- Cost; Civil Engineer → Suppliers; SIC- Cost |
| SDR-ST-PRO-S-1270 | Asphalt |  |  |  |  |  | resources SIC- Cost; Civil Engineer → Suppliers; SIC- Cost |
| SDR-ST-PRO-S-1230 | CCTV :5MP IP PoE Bullet Camera | 2026-06-14 A → 2026-04-16 A (-59d) |  |  |  |  |  |
| 1 | **Long Lead Items** |  | 2026-11-08 → 2026-11-17 (+9d) |  |  |  |  |
| SDR-ST-PRO-S-1000 | Metal railing for platform |  |  |  |  |  | resources SIC- Cost; Civil Engineer → Suppliers; SIC- Cost |
| SDR-ST-PRO-S-1020 | Canopy |  |  |  |  |  | resources SIC- Cost; Civil Engineer → Suppliers; SIC- Cost |
| 3 | **Electrical** |  | 2026-11-08 → 2026-11-17 (+9d) |  |  |  |  |
| SDR-ST-PRO-S-1220 | Outdoor Lighting Fixtures | 2026-06-04 A → 2026-04-16 A (-49d) |  |  |  |  |  |
| SDR-ST-PRO-S-1110 | MEDIUM VOLTAGE CABLES DUCT BANKS | 2026-11-01 → 2026-11-10 (+9d) | 2026-11-08 → 2026-11-17 (+9d) |  | 63d → -66d | SDR-ST-MILS-1000, SDR-ST-ENG-AP-1130 FF → SDR-ST-ENG-AP-1130 SS+1d, SDR-ST-MILS-1000 |  |
| SDR-ST-PRO-S-1120 | MEDIUM VOLTAGE CABLES | 2026-11-01 → 2026-11-10 (+9d) | 2026-11-08 → 2026-11-17 (+9d) |  | 18.2d → -27d | SDR-ST-MILS-1000, SDR-ST-ENG-AP-1140 FF, SDR-ST-ENG-AP-1130 FF → SDR-ST-ENG-AP-1140 SS+1d, SDR-ST-ENG-AP-1130 SS+1d, SDR-ST-MILS-1000 |  |
| SDR-ST-PRO-S-1130 | SUB-STATION | 2026-11-01 → 2026-11-10 (+9d) | 2026-11-08 → 2026-11-17 (+9d) |  | 54d → -8d | SDR-ST-MILS-1000, SDR-ST-ENG-AP-1190 SS+1d, SDR-ST-ENG-AP-1170 SS+1d, SDR-ST-ENG-AP-1130 FF → SDR-ST-ENG-AP-1130 SS+1d, SDR-ST-ENG-AP-1190 SS+1d, SDR-ST-ENG-AP-1170 SS+1d, SDR-ST-MILS-1000 |  |
| 6 | **Materials Approval** | 2026-04-22 → 2026-04-16 (-6d) | 2026-11-10 → 2026-11-30 (+20d) |  |  |  |  |
| 2 | **Short Lead Items** | 2026-04-22 → 2026-04-16 (-6d) | 2026-11-07 → 2026-11-15 (+8d) |  |  |  |  |
| SDR-ST-PRO-A-1010 | Waterproofing (Thermal & moisture Protection) |  |  |  |  |  | resources SIC- Cost; Civil Engineer → Suppliers; SIC- Cost |
| SDR-ST-PRO-A-1270 | Asphalt |  |  |  |  |  | resources SIC- Cost; Civil Engineer → Suppliers; SIC- Cost |
| SDR-ST-PRO-A-1030 | Interlock |  |  |  |  |  | resources SIC- Cost; Civil Engineer → Suppliers; SIC- Cost |
| SDR-ST-PRO-A-1060 | Kerbstone |  |  |  |  |  | resources SIC- Cost; Civil Engineer → Suppliers; SIC- Cost |
| SDR-ST-PRO-A-1260 | Steel Bars |  |  |  |  |  | resources SIC- Cost; Civil Engineer → Suppliers; SIC- Cost |
| 3 | **Electrical** | 2026-04-22 → 2026-04-16 (-6d) | 2026-11-07 → 2026-11-15 (+8d) |  |  |  |  |
| SDR-ST-PRO-A-1110 | LOW VOLTAGE CABLES | 2026-05-02 A → 2026-04-16 A (-16d) |  |  |  |  |  |
| SDR-ST-PRO-A-1190 | VOICE EVACUATION SYSTEM | 2026-06-14 A → 2026-04-25 A (-50d) |  |  |  |  |  |
| SDR-ST-PRO-A-1170 | CCTV :5MP IP PoE Bullet Camera |  | 2026-11-07 → 2026-11-15 (+8d) |  | 100d → 55d |  |  |
| SDR-ST-PRO-A-1180 | CCTV :Pole mounted Filed Equipment cabinet (FE |  | 2026-11-07 → 2026-11-15 (+8d) |  | 100d → 57d |  |  |
| 1 | **Long Lead Items** |  | 2026-11-10 → 2026-11-30 (+20d) |  |  |  |  |
| 1 | **Civil** | 2026-05-02 → 2026-04-25 (-7d) |  |  |  |  |  |
| SDR-ST-PRO-A-1000 | Metal railing for platform | 2026-06-21 A → 2026-04-25 A (-57d) |  |  |  |  | resources SIC- Cost; Civil Engineer → Suppliers; SIC- Cost |
| SDR-ST-PRO-A-1020 | Canopy |  |  |  |  |  | resources SIC- Cost; Civil Engineer → Suppliers; SIC- Cost |
| 3 | **Electrical** |  | 2026-11-10 → 2026-11-30 (+20d) |  |  |  |  |
| SDR-ST-PRO-A-1250 | Outdoor Lighting Fixtures | 2026-06-08 A → 2026-04-25 A (-44d) |  |  |  |  |  |
| SDR-ST-PRO-A-1200 | MEDIUM VOLTAGE CABLES DUCT BANKS | 2026-11-09 → 2026-11-18 (+9d) | 2026-11-10 → 2026-11-30 (+20d) | 2d → 11d | 63d → -66d |  |  |
| SDR-ST-PRO-A-1210 | MEDIUM VOLTAGE CABLES | 2026-11-09 → 2026-11-18 (+9d) | 2026-11-09 → 2026-11-30 (+21d) | 1d → 11d | 18.2d → -27d |  |  |
| SDR-ST-PRO-A-1220 | SUB-STATION | 2026-11-09 → 2026-11-18 (+9d) | 2026-11-10 → 2026-11-30 (+20d) | 2d → 11d | 54d → -8d | SDR-ST-PRO-S-1130, SDR-ST-MILS-1050 → SDR-ST-PRO-S-1130 |  |
| 4 | **Procurement** |  | 2027-03-21 → 2027-04-20 (+30d) |  |  |  |  |
| 5 | **Purchase Order** |  | 2026-11-30 → 2026-12-17 (+17d) |  |  |  |  |
| 4 | **Short Lead Items** |  | 2026-11-18 → 2026-11-23 (+5d) |  |  |  |  |
| 1 | **Civil** | 2026-09-28 → 2026-07-22 (-68d) |  |  |  |  |  |
| SDR-ST-PRO-PO-1060 | Kerbstone | 2026-10-19 A → 2026-07-22 A (-89d) |  |  |  |  | resources Civil Engineer [471.26 h] → Suppliers [471.26 h] |
| SDR-ST-PRO-PO-1030 | Waterproofing (Thermal & moisture Protection) | 2026-10-19 A → 2026-08-10 A (-70d) | 2026-11-10 A → 2026-11-08 A (-2d) |  |  |  | resources Civil Engineer [471.26 h] → Suppliers [471.26 h] |
| SDR-ST-PRO-PO-1270 | Asphalt | 2026-10-19 A → 2026-09-06 A (-43d) |  |  |  |  | resources Civil Engineer [471.26 h] → Suppliers [471.26 h] |
| SDR-ST-PRO-PO-1260 | Steel Bars |  | 2026-11-01 → 2026-11-14 (+13d) |  | 32d → -56d |  | resources Civil Engineer [471.26 h] → Suppliers [471.26 h] |
| SDR-ST-PRO-PO-1040 | Interlock |  | 2026-11-14 → 2026-11-12 (-2d) |  | 29d → -3d |  | resources Civil Engineer [471.26 h] → Suppliers [471.26 h] |
| 3 | **Electrical** |  | 2026-11-18 → 2026-11-23 (+5d) |  |  |  |  |
| SDR-ST-PRO-PO-1070 | STREET LIGHTING FEEDER Panel |  | 2026-11-01 → 2026-11-14 (+13d) |  | 23d → -12d |  |  |
| SDR-ST-PRO-PO-1130 | LOW VOLTAGE DISTRIBUTION Panel |  | 2026-11-01 → 2026-11-14 (+13d) |  | 130d → 81d |  |  |
| SDR-ST-PRO-PO-1110 | STREET LIGHTING CABLES |  | 2026-11-01 → 2026-11-12 (+11d) |  | 86d → 26.7d |  |  |
| SDR-ST-PRO-PO-1050 | CCTV :Pole mounted Filed Equipment cabinet |  | 2026-11-18 → 2026-11-23 (+5d) |  | 100d → 57d |  |  |
| SDR-ST-PRO-PO-1230 | CCTV :5MP IP PoE Bullet Camera |  | 2026-11-18 → 2026-11-23 (+5d) |  | 100d → 55d |  |  |
| SDR-ST-PRO-PO-1020 | Drawpits |  | 2026-11-11 → 2026-11-16 (+5d) |  | 25d → -51d |  |  |
| SDR-ST-PRO-PO-1220 | VOICE EVACUATION SYSTEM |  | 2026-11-11 → 2026-11-15 (+4d) |  | 106d → 62d |  |  |
| 2 | **Mechanical** |  | 2026-11-11 → 2026-11-15 (+4d) |  |  |  |  |
| SDR-ST-PRO-PO-1000 | WARNING TAPE |  |  |  |  | SDR-ST-PRO-A-1080, SDR-ST-MILS-1020, SDR-ST-PREL-1100, SDR-ST-PREL-1090, SDR-ST-PREL-1080, SDR-ST-PREL-1060, SDR-ST-PREL-1070, SDR-ST-MILS-1000 SS+76d, SDR-ST-MILS-1030, SDR-ST-MILS-1040 → SDR-ST-MILS-1000 SS+76d, SDR-ST-PRO-A-1080, SDR-ST-MILS-1050, SDR-ST-MILS-1040, SDR-ST-MILS-1030, SDR-ST-MILS-1020, SDR-ST-PREL-1100, SDR-ST-PREL-1090, SDR-ST-PREL-1080, SDR-ST-PREL-1060, SDR-ST-PREL-1070 |  |
| SDR-ST-PRO-PO-1140 | MANHOLE, CATCH BASIN & VALVE BOX COVER |  | 2026-11-11 → 2026-11-15 (+4d) |  | 65d → -48d |  |  |
| SDR-ST-PRO-PO-1090 | GI GOOSENECK & VENT |  | 2026-11-11 → 2026-11-15 (+4d) |  | 108d → 67d |  |  |
| 5 | **Long Lead Items** |  | 2026-11-30 → 2026-12-17 (+17d) |  |  |  |  |
| 1 | **Civil** | 2026-11-01 → 2026-11-09 (+8d) | 2026-11-30 → 2026-12-08 (+8d) |  |  |  |  |
| SDR-ST-PRO-PO-1150 | Metal railing for platform | 2026-11-01 → 2026-11-09 (+8d) | 2026-11-30 → 2026-12-08 (+8d) |  | 58d → 14d |  | resources Civil Engineer [471.26 h] → Suppliers [471.26 h] |
| SDR-ST-PRO-PO-1240 | Canopy | 2026-11-01 → 2026-11-09 (+8d) | 2026-11-16 → 2026-11-24 (+8d) |  | 31d → -32d |  | resources Civil Engineer [471.26 h] → Suppliers [471.26 h] |
| 3 | **Electrical** |  | 2026-11-26 → 2026-12-17 (+21d) |  |  |  |  |
| SDR-ST-PRO-PO-1200 | LIGHTING POLES |  | 2026-11-01 → 2026-11-15 (+14d) |  | 63d → -49.6d |  |  |
| SDR-ST-PRO-PO-1180 | Outdoor Lighting Fixtures | 2026-11-01 → 2026-11-09 (+8d) | 2026-11-16 → 2026-11-24 (+8d) |  | 78d → 32d |  |  |
| SDR-ST-PRO-PO-1210 | STREET LIGHTING LUMINAIRE | 2026-11-01 → 2026-11-09 (+8d) | 2026-11-16 → 2026-11-24 (+8d) |  | 25d → 21d |  |  |
| SDR-ST-PRO-PO-1160 | MEDIUM VOLTAGE CABLES DUCT BANKS | 2026-11-11 → 2026-12-01 (+20d) | 2026-11-26 → 2026-12-16 (+20d) |  | 63d → -66d |  |  |
| SDR-ST-PRO-PO-1170 | MEDIUM VOLTAGE CABLES | 2026-11-10 → 2026-12-01 (+21d) | 2026-11-26 → 2026-12-17 (+21d) | 14.8d → 15d | 18.2d → -27d |  |  |
| SDR-ST-PRO-PO-1250 | SUB-STATION | 2026-11-11 → 2026-12-01 (+20d) | 2026-11-26 → 2026-12-16 (+20d) |  | 54d → -8d |  |  |
| 2 | **Mechanical** | 2026-11-01 → 2026-11-09 (+8d) | 2026-11-16 → 2026-11-24 (+8d) |  |  |  |  |

| ID | Task | Start | Finish | Duration | Total float | Predecessors |
| --- | --- | --- | --- | --- | --- | --- |
| SDR-ST-PRO-PO-1190 | WASHOUT & AIR VALVE, GATE VALVE, BUTTERFLY VALVE | 2026-11-01 → 2026-11-09 (+8d) | 2026-11-16 → 2026-11-24 (+8d) |  | 64d → -23d |  |
| 6 | **Delivery to Site** |  | 2027-03-17 → 2027-04-16 (+30d) |  |  |  |
| 2 | **Short Lead Items Delivery** |  | 2027-01-29 → 2027-02-06 (+8d) |  |  |  |
| 1 | **Civil** |  | 2027-01-29 → 2027-02-06 (+8d) |  |  |  |
| SDR-ST-PRO-DL-1030 | Waterproofing (Thermal & moisture Protection) |  | 2026-12-30 → 2027-01-07 (+8d) | 60d → 61d | 63d → 25d |  |
| SDR-ST-PRO-DL-1260 | Steel Bars |  | 2026-12-30 → 2026-12-24 (-6d) |  | 37d → -66d |  |
| SDR-ST-PRO-DL-1270 | Asphalt |  | 2027-01-29 → 2027-02-06 (+8d) | 90d → 19d | 3d → -60d | SDR-ST-PRO-PO-1270 FF → SDR-ST-PRO-PO-1270 FS+1d |
| SDR-ST-PRO-DL-1060 | Kerbstone |  | 2026-12-30 → 2027-01-07 (+8d) | 60d → 52d | 2d → -51d | SDR-ST-PRO-PO-1060 FF → SDR-ST-PRO-PO-1060 FS+1d |
| SDR-ST-PRO-DL-1040 | Interlock |  | 2027-01-12 → 2027-01-10 (-2d) | 52d → 55d | 34d → -3d |  |
| 3 | **Electrical** |  | 2027-01-17 → 2027-01-25 (+8d) |  |  |  |
| SDR-ST-PRO-DL-1100 | LOW VOLTAGE CABLES |  | 2026-12-21 → 2026-12-29 (+8d) | 60d → 62d | 108d → 73d |  |
| SDR-ST-PRO-DL-1010 | ROAD CROSSING DUCTS Ø110mm |  | 2026-11-29 → 2026-12-07 (+8d) | 29d → 17d | 45.9d → -19d |  |
| SDR-ST-PRO-DL-1070 | STREET LIGHTING FEEDER Panel |  | 2026-12-17 → 2026-12-31 (+14d) | 40d → 41d | 26d → -14d |  |
| SDR-ST-PRO-DL-1110 | STREET LIGHTING CABLES |  | 2026-12-08 → 2026-12-21 (+13d) | 35d → 26d | 101d → 30.7d |  |
| SDR-ST-PRO-DL-1130 | LOW VOLTAGE DISTRIBUTION Panel |  | 2026-12-13 → 2026-12-27 (+14d) | 40d → 42d | 152d → 95d |  |
| SDR-ST-PRO-DL-1200 | VOICE EVACUATION SYSTEM | 2026-11-12 → 2026-11-16 (+4d) | 2027-01-10 → 2027-01-17 (+7d) | 60d → 63d | 124d → 72d |  |
| SDR-ST-PRO-DL-1020 | Drawpits | 2026-11-01 → 2026-11-17 (+16d) | 2026-11-30 → 2026-12-18 (+18d) | 30d → 32d | 11d → -60d | SDR-ST-PRO-PO-1020 FF → SDR-ST-PRO-PO-1020 |
| SDR-ST-PRO-DL-1050 | CCTV :Pole mounted Filed Equipment cabinet | 2026-11-19 → 2026-11-24 (+5d) | 2027-01-17 → 2027-01-25 (+8d) | 60d → 63d | 117d → 66d |  |
| SDR-ST-PRO-DL-1230 | CCTV :5MP IP PoE Bullet Camera | 2026-11-19 → 2026-11-24 (+5d) | 2027-01-17 → 2027-01-25 (+8d) | 60d → 63d | 117d → 64d |  |
| 2 | **Mechanical** |  | 2027-01-09 → 2027-01-13 (+4d) |  |  |  |
| SDR-ST-PRO-DL-1120 | CONCRETE PIPES AND FITTINGS |  |  | 79d → 80d |  |  |
| SDR-ST-PRO-DL-2000 | MANHOLE, CATCH BASIN & VALVE BOX COVER |  | 2027-01-09 → 2027-01-13 (+4d) |  | 15d → -48d | SDR-ST-PRO-PO-1140 FF → SDR-ST-PRO-PO-1140 |
| SDR-ST-PRO-DL-1090 | GI GOOSENECK & VENT | 2026-11-12 → 2026-11-16 (+4d) | 2027-01-08 → 2027-01-13 (+5d) | 58d → 59d | 126d → 78d |  |
| 5 | **Long Lead Items Delivery** | 2026-11-01 → 2026-11-15 (+14d) | 2027-03-17 → 2027-04-16 (+30d) |  |  |  |
| 1 | **Civil** | 2026-11-29 → 2026-12-07 (+8d) | 2027-03-08 → 2027-03-22 (+14d) |  |  |  |
| SDR-ST-PRO-DL-1240 | Canopy | 2026-11-29 → 2026-12-07 (+8d) | 2027-01-27 → 2027-03-22 (+54d) | 60d → 100d | 36d → -38d |  |
| SDR-ST-PRO-DL-1150 | Metal railing for platform | 2026-12-01 → 2026-12-09 (+8d) | 2027-03-08 → 2027-03-22 (+14d) | 97d → 98d | 68d → 16d |  |
| 3 | **Electrical** | 2026-11-01 → 2026-11-15 (+14d) | 2027-03-17 → 2027-04-16 (+30d) |  |  |  |
| SDR-ST-PRO-DL-1210 | LIGHTING POLES | 2026-11-01 → 2026-11-15 (+14d) | 2027-02-13 → 2027-02-14 (+1d) | 105d → 91d | 73d → -58.6d |  |
| SDR-ST-PRO-DL-1180 | Outdoor Lighting Fixtures | 2026-11-17 → 2026-11-25 (+8d) | 2027-02-04 → 2027-02-12 (+8d) |  | 91d → 37d |  |
| SDR-ST-PRO-DL-1220 | STREET LIGHTING LUMINAIRE | 2026-11-17 → 2026-11-25 (+8d) | 2027-02-04 → 2027-01-15 (-20d) | 80d → 52d | 29d → 25d |  |
| SDR-ST-PRO-DL-1160 | MEDIUM VOLTAGE CABLES DUCT BANKS | 2026-11-27 → 2026-12-17 (+20d) | 2027-03-17 → 2027-04-03 (+17d) | 105d → 102d | 74d → -77d |  |
| SDR-ST-PRO-DL-1250 | SUB-STATION | 2026-11-27 → 2026-12-17 (+20d) | 2027-03-17 → 2027-04-16 (+30d) | 105d → 115d | 64d → -9d |  |
| SDR-ST-PRO-DL-1170 | MEDIUM VOLTAGE CABLES | 2026-11-26 → 2026-12-18 (+22d) | 2027-03-17 → 2027-04-07 (+21d) |  | 22.2d → -31d |  |
| 2 | **Mechanical** | 2026-11-05 → 2026-11-30 (+25d) | 2027-02-02 → 2026-12-16 (-48d) |  |  |  |
| SDR-ST-PRO-DL-1190 | WASHOUT & AIR VALVE, GATE VALVE, BUTTERFLY VALVE | 2026-11-05 → 2026-11-30 (+25d) | 2027-02-02 → 2026-12-16 (-48d) | 90d → 17d | 75d → -27d | SDR-ST-PRO-PO-1190 SS+4d → SDR-ST-PRO-PO-1190 FS+4d |
| 4 | **Materials Staging Time** | 2026-11-01 → 2026-11-09 (+8d) | 2027-03-21 → 2027-04-20 (+30d) |  |  |  |
| 4 | **Short Lead Items Delivery** | 2026-11-01 → 2026-11-09 (+8d) | 2027-01-29 → 2027-02-10 (+12d) |  |  |  |
| 1 | **Civil** | 2026-11-01 → 2026-12-25 (+54d) | 2027-01-29 → 2027-02-10 (+12d) |  |  |  |
| SDR-ST-PRO-MS-1260 | Steel Bars | 2026-11-01 → 2026-12-25 (+54d) | 2026-11-04 → 2026-12-28 (+54d) |  | 37d → -66d | SDR-ST-PRO-DL-1260 SS → SDR-ST-PRO-DL-1260 |
| SDR-ST-PRO-MS-1070 | Waterproofing (Thermal & moisture Protection) | 2026-12-31 → 2027-01-08 (+8d) | 2027-01-03 → 2027-01-11 (+8d) |  | 63d → 25d |  |
| SDR-ST-PRO-MS-1100 | Kerbstone | 2026-12-27 → 2027-01-08 (+12d) | 2026-12-30 → 2027-01-12 (+13d) | 4d → 5d | 2d → -51d | SDR-ST-PRO-DL-1060 FF → SDR-ST-PRO-DL-1060 |
| SDR-ST-PRO-MS-1080 | Interlock | 2027-01-13 → 2027-01-11 (-2d) | 2027-01-16 → 2027-01-14 (-2d) |  | 34d → -3d |  |
| SDR-ST-PRO-MS-1270 | Asphalt | 2027-01-26 → 2027-02-07 (+12d) | 2027-01-29 → 2027-02-10 (+12d) |  | 3d → -60d | SDR-ST-PRO-DL-1270 FF → SDR-ST-PRO-DL-1270 |
| 3 | **Electrical** | 2026-11-27 → 2026-12-08 (+11d) | 2027-01-21 → 2027-01-31 (+10d) |  |  |  |
| SDR-ST-PRO-MS-1000 | ROAD CROSSING DUCTS Ø110mm | 2026-11-30 → 2026-12-08 (+8d) | 2026-12-03 → 2026-12-11 (+8d) |  | 45.9d → -19d |  |
| SDR-ST-PRO-MS-1010 | Drawpits | 2026-11-27 → 2026-12-19 (+22d) | 2026-11-30 → 2026-12-22 (+22d) |  | 11d → -60d | SDR-ST-PRO-DL-1020 FF → SDR-ST-PRO-DL-1020 |
| SDR-ST-PRO-MS-1030 | STREET LIGHTING CABLES | 2026-12-09 → 2026-12-21 (+12d) | 2026-12-12 → 2026-12-25 (+13d) |  | 101d → 30.7d |  |
| SDR-ST-PRO-MS-1040 | LOW VOLTAGE DISTRIBUTION Panel | 2026-12-14 → 2026-12-28 (+14d) | 2026-12-17 → 2026-12-31 (+14d) |  | 152d → 95d |  |
| SDR-ST-PRO-MS-1120 | LOW VOLTAGE CABLES | 2026-12-22 → 2026-12-30 (+8d) | 2026-12-25 → 2027-01-02 (+8d) |  | 108d → 73d |  |
| SDR-ST-PRO-MS-1020 | STREET LIGHTING FEEDER Panel | 2026-12-18 → 2027-01-01 (+14d) | 2026-12-21 → 2027-01-04 (+14d) |  | 26d → -14d |  |
| SDR-ST-PRO-MS-1150 | VOICE EVACUATION SYSTEM | 2027-01-11 → 2027-01-18 (+7d) | 2027-01-14 → 2027-01-23 (+9d) | 4d → 6d | 124d → 72d |  |
| SDR-ST-PRO-MS-1090 | CCTV :Pole mounted Filed Equipment cabinet | 2027-01-18 → 2027-01-26 (+8d) | 2027-01-21 → 2027-01-29 (+8d) |  | 117d → 66d |  |
| SDR-ST-PRO-MS-1160 | CCTV :5MP IP PoE Bullet Camera | 2027-01-18 → 2027-01-26 (+8d) | 2027-01-21 → 2027-01-31 (+10d) | 4d → 6d | 117d → 64d |  |
| 2 | **Mechanical** | 2026-11-01 → 2026-11-09 (+8d) | 2027-01-12 → 2027-01-17 (+5d) |  |  |  |
| SDR-ST-PRO-MS-1110 | HDPE PIPES & FITTINGS | 2026-11-01 → 2026-11-09 (+8d) | 2026-11-04 → 2026-11-12 (+8d) |  | 61d → 24d |  |
| SDR-ST-PRO-MS-1130 | CONCRETE PIPES AND FITTINGS | 2026-11-01 → 2026-11-09 (+8d) | 2026-11-04 → 2026-11-12 (+8d) |  | 47d → 1d |  |
| SDR-ST-PRO-MS-1050 | WARNING TAPE | 2026-11-01 → 2026-11-22 (+21d) | 2026-11-04 → 2026-11-25 (+21d) |  | 72d → 21d |  |
| SDR-ST-PRO-MS-1060 | GI GOOSENECK & VENT | 2027-01-09 → 2027-01-14 (+5d) | 2027-01-12 → 2027-01-17 (+5d) |  | 126d → 78d |  |
| SDR-ST-PRO-MS-1140 | MANHOLE, CATCH BASIN & VALVE BOX COVER | 2027-01-06 → 2027-01-14 (+8d) | 2027-01-09 → 2027-01-17 (+8d) |  | 17d → -56d | SDR-ST-PRO-DL-2000 FF → SDR-ST-PRO-DL-2000 |
| 5 | **Long Lead Items Delivery** | 2026-11-01 → 2026-12-17 (+46d) | 2027-03-21 → 2027-04-20 (+30d) |  |  |  |
| 1 | **Civil** | 2027-01-28 → 2027-03-23 (+54d) | 2027-03-17 → 2027-03-26 (+9d) |  |  |  |
| SDR-ST-PRO-MS-1200 | Metal railing for platform | 2027-03-14 → 2027-03-23 (+9d) | 2027-03-17 → 2027-03-26 (+9d) |  | 68d → 16d |  |
| SDR-ST-PRO-MS-1240 | Canopy | 2027-01-28 → 2027-03-23 (+54d) | 2027-01-31 → 2027-03-26 (+54d) |  | 36d → -38d |  |
| 3 | **Electrical** | 2026-11-01 → 2027-01-16 (+76d) | 2027-03-21 → 2027-04-20 (+30d) |  |  |  |
| SDR-ST-PRO-MS-1180 | STREET LIGHTING LUMINAIRE | 2027-02-05 → 2027-01-16 (-20d) | 2027-02-08 → 2027-01-20 (-19d) | 4d → 5d | 29d → 25d |  |
| SDR-ST-PRO-MS-1230 | LIGHTING POLES | 2026-11-01 → 2027-02-14 (+105d) | 2026-11-04 → 2027-02-18 (+106d) |  | 73d → -58.6d | SDR-ST-PRO-DL-1210 SS → SDR-ST-PRO-DL-1210 |
| SDR-ST-PRO-MS-1170 | Outdoor Lighting Fixtures | 2027-02-13 → 2027-02-21 (+8d) | 2027-02-16 → 2027-02-28 (+12d) | 4d → 7d | 91d → 37d |  |
| SDR-ST-PRO-MS-1210 | MEDIUM VOLTAGE CABLES DUCT BANKS | 2026-12-31 → 2027-04-04 (+94d) | 2027-01-03 → 2027-04-09 (+96d) | 4d → 6d | 40d → -77d | SDR-ST-PRO-DL-1160 SS, SDR-ST-CON-P1-5570 → SDR-ST-CON-P1-5570, SDR-ST-PRO-DL-1160 |
| SDR-ST-PRO-MS-1220 | MEDIUM VOLTAGE CABLES | 2027-03-17 → 2027-04-08 (+22d) | 2027-03-21 → 2027-04-11 (+21d) |  | 22.2d → -31d |  |

| ID | Task | Start | Finish | Duration | Complete | Total float | Predecessors | Other |
| --- | --- | --- | --- | --- | --- | --- | --- | --- |
| SDR-ST-PRO-MS-1250 | SUB-STATION | 2027-03-18 → 2027-04-17 (+30d) | 2027-03-21 → 2027-04-20 (+30d) |  |  | 64d → -9d |  |  |
| 2 | **Mechanical** | 2026-11-05 → 2026-12-17 (+42d) | 2026-11-08 → 2026-12-21 (+43d) |  |  |  |  |  |
| SDR-ST-PRO-MS-1190 | WASHOUT & AIR VALVE, GATE VALVE, BUTTERFLY VALVE | 2026-11-05 → 2026-12-17 (+42d) | 2026-11-08 → 2026-12-21 (+43d) | 4d → 5d |  | 75d → -27d | SDR-ST-PRO-DL-1190 SS → SDR-ST-PRO-DL-1190 |  |
| 5 | **Construction** |  | 2027-08-06 → 2027-12-05 (+121d) |  |  |  |  |  |
| 1 | **Package-1** |  | 2027-08-05 → 2027-11-21 (+108d) |  |  |  |  |  |
| 15 | **ROAD WORKS 1** |  | 2027-06-13 → 2027-09-23 (+102d) |  |  |  |  |  |
| 8 | **ROAD - 01** |  | 2027-06-07 → 2027-09-05 (+90d) |  |  |  |  |  |
| 6 | **ROAD-01 From 0 to 470 m (3)** |  | 2027-05-31 → 2027-08-01 (+62d) |  |  |  |  |  |
| SDR-ST-CON-P1-1000 | Cleaning and removal of organic materials Part 1 |  |  | 18d → 16d |  |  | SDR-ST-MOBL-1060, SDR-ST-MILS-1030, SDR-ST-MILS-1040 → SDR-ST-MOBL-1060 |  |
| SDR-ST-CON-P1-1050 | Cleaning and removal of organic materials Part 2 |  |  | 20d → 18d |  |  | SDR-ST-CON-P1-1000, SDR-ST-MILS-1020, SDR-ST-PREL-1060, SDR-ST-PREL-1070, SDR-ST-PREL-1010, SDR-ST-PREL-1080, SDR-ST-PREL-1020, SDR-ST-PREL-1090, SDR-ST-PREL-1030, SDR-ST-PREL-1100, SDR-ST-PREL-1040 → SDR-ST-CON-P1-1000, SDR-ST-MILS-1040, SDR-ST-MILS-1030, SDR-ST-MILS-1020, SDR-ST-MILS-1050, SDR-ST-PREL-1060, SDR-ST-PREL-1070, SDR-ST-PREL-1010, SDR-ST-PREL-1080, SDR-ST-PREL-1020, SDR-ST-PREL-1090, SDR-ST-PREL-1030, SDR-ST-PREL-1100, SDR-ST-PREL-1040 |  |
| SDR-ST-CON-P1-1200 | Embankments to the Road 1 Layer |  |  | 20d → 18d |  |  |  |  |
| SDR-ST-CON-P1-3260 | Subgrade layer works |  |  |  |  |  | SDR-ST-CON-P1-2710 → SDR-ST-CON-P1-2710, SDR-ST-CON-P3-1040 |  |
| 3 | **Asphalt Works** |  | 2027-03-02 → 2027-03-25 (+23d) |  |  |  |  |  |
| 1 | **Bituminous base course** |  | 2027-02-02 → 2027-02-21 (+19d) |  |  |  |  |  |
| SDR-ST-CON-P1-4410 | Bituminous base course (Grading I - Class A 1st Layer with RC-01 |  | 2026-11-07 → 2027-02-14 (+99d) | 6d → 8d |  | 74d → -55d |  | was named Bituminous base course (Grading I - Class A 1st Layer with MC-01 |
| SDR-ST-CON-P1-4770 | Bituminous base course (Grading I - Class A 2nd layer with RC-02 | 2027-01-30 → 2027-02-15 (+16d) | 2027-02-02 → 2027-02-21 (+19d) | 4d → 6d |  | 3d → -55d |  |  |
| 2 | **Bituminous concrete wearing course** | 2027-02-06 → 2027-02-25 (+19d) | 2027-03-02 → 2027-03-25 (+23d) |  |  |  |  |  |
| SDR-ST-CON-P1-5110 | Bituminous concrete wearing course, (Grading I - Class A), including tack coat (RC2) | 2027-02-06 → 2027-02-25 (+19d) | 2027-03-02 → 2027-03-25 (+23d) |  |  | 3d → -55d |  |  |
| 4 | **Kerbstone Installation** | 2026-11-01 → 2027-02-08 (+99d) | 2027-03-18 → 2027-05-25 (+68d) |  |  |  |  |  |
| SDR-ST-CON-P1-3860 | Precast Concrete Curbstone, Type A2 | 2026-11-01 → 2027-02-08 (+99d) | 2026-11-24 → 2027-03-04 (+100d) |  |  | 66d → -64d |  |  |
| SDR-ST-CON-P1-4530 | Precast Concrete Curbstone, Type D | 2027-03-03 → 2027-05-09 (+67d) | 2027-03-18 → 2027-05-25 (+68d) |  |  | 3d → -92d |  |  |
| 5 | **Interlock Installation** | 2027-03-21 → 2027-05-27 (+67d) | 2027-05-05 → 2027-07-12 (+68d) |  |  |  |  |  |
| SDR-ST-CON-P1-4100 | Interlock Installation Part 1 | 2027-03-21 → 2027-05-27 (+67d) | 2027-04-12 → 2027-06-19 (+68d) |  |  | 3d → -92d |  |  |
| SDR-ST-CON-P1-4620 | Interlock Installation Part 2 | 2027-04-13 → 2027-06-20 (+68d) | 2027-05-05 → 2027-07-12 (+68d) |  |  | 3d → -92d |  |  |
| 6 | **Road Marking** | 2027-05-06 → 2027-07-13 (+68d) | 2027-05-30 → 2027-07-31 (+62d) |  |  |  |  |  |
| SDR-ST-CON-P1-5210 | Retroreflective Thermoplastic White Traffic lines | 2027-05-06 → 2027-07-13 (+68d) | 2027-05-10 → 2027-07-17 (+68d) |  |  | 5d → -73d |  | resources SIC- Cost [19365.7]; Painter [28.49 h]; Supervisor [7.12 h]; Painter Helper [28.49 h] → SIC- Cost [19365.7]; Supervisor [7.12 h]; Painter [28.49 h]; Painter Helper [28.49 h] |
| SDR-ST-CON-P1-5310 | Retroreflective Thermoplastic Yellow, Traffic lines | 2027-05-11 → 2027-07-18 (+68d) | 2027-05-15 → 2027-07-21 (+67d) |  |  | 5d → -73d |  | resources SIC- Cost [13725.2]; Painter [28.49 h]; Supervisor [7.12 h]; Painter Helper [28.49 h] → SIC- Cost [13725.2]; Supervisor [7.12 h]; Painter [28.49 h]; Painter Helper [28.49 h] |
| SDR-ST-CON-P1-5470 | Ceramic raised pavement markers | 2027-05-22 → 2027-07-22 (+61d) | 2027-05-25 → 2027-07-26 (+62d) |  |  | 5d → -73d |  |  |
| SDR-ST-CON-P1-5620 | Rumble strip | 2027-05-26 → 2027-07-27 (+62d) | 2027-05-30 → 2027-07-31 (+62d) |  |  | 5d → -73d |  |  |
| 7 | **Traffic Signage** | 2027-05-06 → 2027-07-13 (+68d) | 2027-05-25 → 2027-07-26 (+62d) |  |  |  |  |  |
| SDR-ST-CON-P1-5220 | Traffic signs, ground mounted, 1 Sheet Alumenium, (breakaway) Single post, with all accessories | 2027-05-06 → 2027-07-13 (+68d) | 2027-05-10 → 2027-07-17 (+68d) |  |  | 9d → -71d |  |  |
| SDR-ST-CON-P1-5320 | Traffic signs, ground mounted, 1 Sheet Aluminum, (breakaway) Double post, with all accessories | 2027-05-11 → 2027-07-18 (+68d) | 2027-05-15 → 2027-07-21 (+67d) |  |  | 9d → -71d |  |  |
| SDR-ST-CON-P1-5480 | Traffic signs, ground mounted, 2 Sheet Aluminum, (breakaway) Single post, with all accessories | 2027-05-22 → 2027-07-22 (+61d) | 2027-05-25 → 2027-07-26 (+62d) |  |  | 9d → -71d |  |  |
| 8 | **Speed table** | 2027-05-26 → 2027-07-27 (+62d) | 2027-05-31 → 2027-08-01 (+62d) |  |  |  |  |  |
| SDR-ST-CON-P1-5490 | Interlock speed table including interlock, flush kerb and marking | 2027-05-26 → 2027-07-27 (+62d) | 2027-05-31 → 2027-08-01 (+62d) |  |  | 9d → -71d |  |  |
| 7 | **ROAD-01 From 470 to 1125 m (6)** |  | 2027-06-07 → 2027-09-01 (+86d) |  |  |  |  |  |
| SDR-ST-CON-P1-2090 | Embankments to the Road 3 Layer |  |  | 10d → 15d |  |  |  |  |
| SDR-ST-CON-P1-2570 | Embankments to the Road 4 Layer |  |  | 10d → 15d |  |  |  |  |
| SDR-ST-CON-P1-3140 | Subgrade layer works |  |  | 11d → 20d |  |  |  |  |
| SDR-ST-CON-P1-3720 | Aggregate base course layer |  |  | 10d → 11d |  |  |  |  |
| 3 | **Asphalt Works** | 2026-11-01 → 2026-11-22 (+21d) | 2027-03-04 → 2027-03-24 (+20d) |  |  |  |  |  |
| 1 | **Bituminous base course** | 2026-11-01 → 2026-11-22 (+21d) | 2027-02-03 → 2027-02-18 (+15d) |  |  |  |  |  |
| SDR-ST-CON-P1-4430 | Bituminous base course (Grading I - Class A 1st Layer with RC-01 | 2026-11-01 → 2026-11-22 (+21d) | 2026-11-07 → 2026-11-28 (+21d) |  |  | 77d → 19d |  | was named Bituminous base course (Grading I - Class A 1st Layer with MC-01 |
| SDR-ST-CON-P1-4730 | Bituminous base course (Grading I - Class A 2nd layer with RC-02 | 2027-01-30 → 2027-02-11 (+12d) | 2027-02-03 → 2027-02-18 (+15d) | 5d → 7d |  | 6d → -45d |  |  |
| 2 | **Bituminous concrete wearing course** | 2027-02-08 → 2027-02-24 (+16d) | 2027-03-04 → 2027-03-24 (+20d) |  |  |  |  |  |
| SDR-ST-CON-P1-5040 | Bituminous concrete wearing course, (Grading I - Class A), including tack coat (RC2) | 2027-02-08 → 2027-02-24 (+16d) | 2027-03-04 → 2027-03-24 (+20d) |  |  | 6d → -45d |  |  |
| 4 | **Kerbstone Installation** | 2026-11-01 → 2026-11-22 (+21d) | 2026-12-21 → 2027-04-01 (+101d) |  |  |  |  |  |
| SDR-ST-CON-P1-3730 | Precast Concrete Curbstone, Type A2 | 2026-11-01 → 2026-11-22 (+21d) | 2026-11-23 → 2026-12-14 (+21d) |  |  | 63d → 0d |  |  |
| SDR-ST-CON-P1-4480 | Precast Concrete Curbstone, Type D | 2026-11-29 → 2027-03-06 (+97d) | 2026-12-21 → 2027-04-01 (+101d) |  |  | 63d → -64d |  |  |
| 5 | **Interlock Installation** | 2027-01-17 → 2027-04-03 (+76d) | 2027-03-31 → 2027-05-24 (+54d) |  |  |  |  |  |
| SDR-ST-CON-P1-3890 | Interlock Installation Part 1 | 2027-01-17 → 2027-04-03 (+76d) | 2027-02-08 → 2027-04-25 (+76d) |  |  | 41d → -64d |  |  |
| SDR-ST-CON-P1-4490 | Interlock Installation Part 2 | 2027-03-04 → 2027-04-26 (+53d) | 2027-03-31 → 2027-05-24 (+54d) |  |  | 22d → -64d |  |  |
| 6 | **Road Marking** | 2027-04-01 → 2027-05-25 (+54d) | 2027-05-22 → 2027-08-05 (+75d) |  |  |  |  |  |
| SDR-ST-CON-P1-5080 | Retroreflective Thermoplastic White Traffic lines | 2027-04-01 → 2027-05-25 (+54d) | 2027-04-06 → 2027-06-01 (+56d) | 5d → 7d |  | 22d → -64d |  |  |
| SDR-ST-CON-P1-5150 | Retroreflective Thermoplastic Yellow, Traffic lines | 2027-04-25 → 2027-07-13 (+79d) | 2027-04-29 → 2027-07-20 (+82d) | 5d → 7d |  | 7d → -99d |  |  |
| SDR-ST-CON-P1-5270 | Ceramic raised pavement markers | 2027-05-05 → 2027-07-21 (+77d) | 2027-05-10 → 2027-07-28 (+79d) | 5d → 7d |  | 3d → -99d | SDR-ST-CON-P1-5150, SDR-ST-CON-P1-6070, SDR-ST-CON-P1-4620 FS-1d → SDR-ST-CON-P1-6070, SDR-ST-CON-P1-4620, SDR-ST-CON-P1-5150 |  |
| SDR-ST-CON-P1-5400 | Rumble strip | 2027-05-11 → 2027-07-29 (+79d) | 2027-05-22 → 2027-08-05 (+75d) | 5d → 7d |  | 3d → -99d |  |  |
| 7 | **Traffic Signage** | 2027-05-23 → 2027-08-06 (+75d) | 2027-06-05 → 2027-08-21 (+77d) |  |  |  |  |  |
| SDR-ST-CON-P1-5090 | Traffic signs, ground mounted, 1 Sheet Alumenium, (breakaway) Single post, with all accessories | 2027-05-23 → 2027-08-06 (+75d) | 2027-05-29 → 2027-08-14 (+77d) | 6d → 8d |  | 3d → -99d |  |  |
| SDR-ST-CON-P1-5160 | Traffic signs, ground mounted, 1 Sheet Aluminum, (breakaway) Double post, with all accessories | 2027-05-30 → 2027-08-15 (+77d) | 2027-06-05 → 2027-08-21 (+77d) |  |  | 3d → -99d |  |  |
| 8 | **Speed table** | 2027-05-30 → 2027-08-22 (+84d) | 2027-06-07 → 2027-09-01 (+86d) |  |  |  |  |  |
| SDR-ST-CON-P1-5280 | Interlock speed table including interlock, flush kerb and marking | 2027-05-30 → 2027-08-22 (+84d) | 2027-06-07 → 2027-09-01 (+86d) | 8d → 10d |  | 3d → -99d | SDR-ST-CON-P1-5160 SS → SDR-ST-CON-P1-5160 |  |
| 9 | **ROAD-01 From 1125 to 1765 m (7)** |  | 2027-05-30 → 2027-09-05 (+98d) |  |  |  |  |  |
| SDR-ST-CON-P1-2220 | Embankments to the Road 3 Layer |  |  | 12d → 13d |  |  |  |  |
| SDR-ST-CON-P1-2880 | Embankments to the Road 4 Layer |  |  | 9d → 13d |  |  |  |  |
| SDR-ST-CON-P1-3600 | Subgrade layer works |  |  | 10d → 15d |  |  |  |  |
| 2 | **Base Course** |  | 2026-11-10 → 2026-11-05 (-5d) |  |  |  |  |  |
| SDR-ST-CON-P1-4220 | Aggregate base course layer |  | 2026-11-10 → 2026-11-05 A (-5d) | 9d → 15d | 85% → 100% | 68d → none |  |  |
| 3 | **Asphalt Works** | 2026-11-11 → 2026-11-22 (+11d) | 2027-02-23 → 2027-03-08 (+13d) |  |  |  |  |  |
| 1 | **Bituminous base course** | 2026-11-11 → 2026-11-22 (+11d) | 2026-11-23 → 2026-12-10 (+17d) |  |  |  |  |  |

| ID | Task | Start | Finish | Duration | Complete | Total float | Predecessors | Other |
| --- | --- | --- | --- | --- | --- | --- | --- | --- |
| SDR-ST-CON-P1-4750 | Bituminous base course (Grading I - Class A 1st Layer with RC-01 | 2026-11-11 → 2026-11-22 (+11d) | 2026-11-17 → 2026-11-30 (+13d) | 6d → 8d |  | 68d → 15d |  | was named Bituminous base course (Grading I - Class A 1st Layer with MC-01 |
| SDR-ST-CON-P1-5010 | Bituminous base course (Grading I - Class A 2nd layer with RC-02 | 2026-11-18 → 2026-12-01 (+13d) | 2026-11-23 → 2026-12-10 (+17d) | 5d → 9d |  | 68d → 15d |  |  |
| 2 | **Bituminous concrete wearing course** | 2027-01-30 → 2027-02-11 (+12d) | 2027-02-23 → 2027-03-08 (+13d) |  |  |  |  |  |
| SDR-ST-CON-P1-5200 | Bituminous concrete wearing course, (Grading I - Class A), including tack coat (RC2) | 2027-01-30 → 2027-02-11 (+12d) | 2027-02-23 → 2027-03-08 (+13d) |  |  | 14d → -35d |  |  |
| 4 | **Kerbstone Installation** | 2026-11-01 → 2026-11-22 (+21d) | 2026-12-21 → 2027-01-11 (+21d) |  |  |  |  |  |
| SDR-ST-CON-P1-4230 | Precast Concrete Curbstone, Type A2 | 2026-11-01 → 2026-11-22 (+21d) | 2026-11-23 → 2026-12-14 (+21d) |  |  | 51d → 0d |  |  |
| SDR-ST-CON-P1-4950 | Precast Concrete Curbstone, Type D | 2026-11-29 → 2026-12-20 (+21d) | 2026-12-21 → 2027-01-11 (+21d) |  |  | 51d → 0d |  |  |
| 5 | **Interlock Installation** | 2027-01-17 → 2027-01-16 (-1d) | 2027-03-06 → 2027-03-04 (-2d) |  |  |  |  |  |
| SDR-ST-CON-P1-4440 | Interlock Installation Part 1 | 2027-01-17 → 2027-01-16 (-1d) | 2027-02-09 → 2027-02-08 (-1d) |  |  | 29d → -3d |  |  |
| SDR-ST-CON-P1-4870 | Interlock Installation Part 2 | 2027-02-10 → 2027-02-09 (-1d) | 2027-03-06 → 2027-03-04 (-2d) |  |  | 29d → -3d |  |  |
| 6 | **Road Marking** | 2027-04-17 → 2027-07-13 (+87d) | 2027-05-09 → 2027-08-14 (+97d) |  |  |  |  |  |
| SDR-ST-CON-P1-5300 | Retroreflective Thermoplastic White Traffic lines | 2027-04-17 → 2027-07-13 (+87d) | 2027-04-21 → 2027-07-20 (+90d) | 5d → 7d |  | 5d → -105d | SDR-ST-CON-P1-5200 SS, SDR-ST-CON-P1-4870, SDR-ST-CON-P3-1310, SDR-ST-CON-P3-1490 SS, SDR-ST-CON-P1-6070 → SDR-ST-CON-P3-1310, SDR-ST-CON-P3-1490, SDR-ST-CON-P1-6070, SDR-ST-CON-P1-5200 SS, SDR-ST-CON-P1-4870 |  |
| SDR-ST-CON-P1-5450 | Retroreflective Thermoplastic Yellow, Traffic lines | 2027-04-22 → 2027-07-21 (+90d) | 2027-04-27 → 2027-07-28 (+92d) | 5d → 7d |  | 5d → -105d |  |  |
| SDR-ST-CON-P1-5610 | Ceramic raised pavement markers | 2027-04-28 → 2027-07-29 (+92d) | 2027-05-03 → 2027-08-05 (+94d) | 5d → 7d |  | 5d → -105d |  |  |
| SDR-ST-CON-P1-5690 | Rumble strip | 2027-05-04 → 2027-08-06 (+94d) | 2027-05-09 → 2027-08-14 (+97d) | 5d → 8d |  | 5d → -105d |  |  |
| 7 | **Traffic Signage** | 2027-05-10 → 2027-08-15 (+97d) | 2027-05-27 → 2027-08-26 (+91d) |  |  |  |  |  |
| SDR-ST-CON-P1-5540 | Traffic signs, ground mounted, 1 Sheet Alumenium, (breakaway) Single post, with all accessories | 2027-05-10 → 2027-08-15 (+97d) | 2027-05-15 → 2027-08-19 (+96d) |  |  | 5d → -105d |  |  |
| SDR-ST-CON-P1-5680 | Traffic signs, ground mounted, 1 Sheet Aluminum, (breakaway) Double post, with all accessories | 2027-05-22 → 2027-08-21 (+91d) | 2027-05-27 → 2027-08-26 (+91d) |  |  | 5d → -105d |  |  |
| 8 | **Speed table** | 2027-05-22 → 2027-08-28 (+98d) | 2027-05-30 → 2027-09-05 (+98d) |  |  |  |  |  |
| SDR-ST-CON-P1-5460 | Interlock speed table including interlock, flush kerb and marking | 2027-05-22 → 2027-08-28 (+98d) | 2027-05-30 → 2027-09-05 (+98d) |  |  | 5d → -105d | SDR-ST-CON-P1-5680 SS → SDR-ST-CON-P1-5680 |  |
| 6 | **ROAD - 02** |  | 2027-06-13 → 2027-09-23 (+102d) |  |  |  |  |  |
| 1 | **ROAD-01 From 0 to 400 m (9)** |  | 2027-05-29 → 2027-09-12 (+106d) |  |  |  |  |  |
| SDR-ST-CON-P1-2620 | Embankments to the Road 3 Layer |  |  | 12d → 13d |  |  |  |  |
| SDR-ST-CON-P1-2920 | Embankments to the Road 4 Layer |  |  | 10d → 13d |  |  |  |  |
| 11 | **Subgrade** |  | 2026-11-15 → 2026-11-28 (+13d) |  |  |  |  |  |
| SDR-ST-CON-P1-3390 | Subgrade layer works |  | 2026-11-15 → 2026-11-28 (+13d) |  | 75% → 80% | 35d → -5d |  |  |
| 2 | **Base Course** | 2026-11-16 → 2026-11-08 (-8d) | 2026-11-23 → 2026-12-06 (+13d) |  |  |  |  |  |
| SDR-ST-CON-P1-3960 | Aggregate base course layer | 2026-11-16 → 2026-11-08 A (-8d) | 2026-11-23 → 2026-12-06 (+13d) | 7d → 13d | 0% → 15% | 40d → -3d |  |  |
| 3 | **Asphalt Works** | 2026-11-24 → 2026-12-07 (+13d) | 2026-12-28 → 2027-01-24 (+27d) |  |  |  |  |  |
| 1 | **Bituminous base course** | 2026-11-24 → 2026-12-07 (+13d) | 2026-12-01 → 2026-12-28 (+27d) |  |  |  |  |  |
| SDR-ST-CON-P1-4540 | Bituminous base course (Grading I - Class A 1st Layer with RC-01 | 2026-11-24 → 2026-12-07 (+13d) | 2026-11-28 → 2026-12-17 (+19d) | 4d → 10d |  | 40d → -3d |  | was named Bituminous base course (Grading I - Class A 1st Layer with MC-01 |
| SDR-ST-CON-P1-4890 | Bituminous base course (Grading I - Class A 2nd layer with RC-02 | 2026-11-29 → 2026-12-19 (+20d) | 2026-12-01 → 2026-12-28 (+27d) | 3d → 9d |  | 40d → -3d |  |  |
| 2 | **Bituminous concrete wearing course** | 2026-12-05 → 2026-12-31 (+26d) | 2026-12-28 → 2027-01-24 (+27d) |  |  |  |  |  |
| SDR-ST-CON-P1-5130 | Bituminous concrete wearing course, (Grading I - Class A), including tack coat (RC2) | 2026-12-05 → 2026-12-31 (+26d) | 2026-12-28 → 2027-01-24 (+27d) |  |  | 40d → -3d |  |  |
| 4 | **Kerbstone Installation** | 2026-11-16 → 2026-11-29 (+13d) | 2027-01-05 → 2027-01-18 (+13d) |  |  |  |  |  |
| SDR-ST-CON-P1-3970 | Precast Concrete Curbstone, Type A2 | 2026-11-16 → 2026-11-29 (+13d) | 2026-12-08 → 2026-12-21 (+13d) |  |  | 35d → -5d |  |  |
| SDR-ST-CON-P1-4690 | Precast Concrete Curbstone, Type D | 2026-12-14 → 2026-12-27 (+13d) | 2027-01-05 → 2027-01-18 (+13d) |  |  | 35d → -5d |  |  |
| 5 | **Interlock Installation** | 2027-01-06 → 2027-01-19 (+13d) | 2027-02-21 → 2027-03-07 (+14d) |  |  |  |  |  |
| SDR-ST-CON-P1-4200 | Interlock Installation Part 1 | 2027-01-06 → 2027-01-19 (+13d) | 2027-01-28 → 2027-02-10 (+13d) |  |  | 35d → -5d |  |  |
| SDR-ST-CON-P1-4780 | Interlock Installation Part 2 | 2027-01-30 → 2027-02-11 (+12d) | 2027-02-21 → 2027-03-07 (+14d) |  |  | 35d → -5d |  |  |
| 6 | **Road Marking** | 2027-04-03 → 2027-07-13 (+101d) | 2027-04-25 → 2027-08-12 (+109d) |  |  |  |  |  |
| SDR-ST-CON-P1-5250 | Retroreflective Thermoplastic White Traffic lines | 2027-04-03 → 2027-07-13 (+101d) | 2027-04-07 → 2027-07-20 (+104d) | 5d → 7d |  | 6d → -105d | SDR-ST-CON-P1-4780, SDR-ST-CON-P1-6070, SDR-ST-CON-P1-6070 FF → SDR-ST-CON-P3-1310, SDR-ST-CON-P1-6070, SDR-ST-CON-P1-6070 FF, SDR-ST-CON-P1-4780 |  |
| SDR-ST-CON-P1-5370 | Retroreflective Thermoplastic Yellow, Traffic lines | 2027-04-08 → 2027-07-21 (+104d) | 2027-04-13 → 2027-07-28 (+106d) | 5d → 7d |  | 6d → -105d |  |  |
| SDR-ST-CON-P1-5550 | Ceramic raised pavement markers | 2027-04-14 → 2027-07-29 (+106d) | 2027-04-19 → 2027-08-05 (+108d) | 5d → 7d |  | 6d → -105d |  |  |
| SDR-ST-CON-P1-5630 | Rumble strip | 2027-04-20 → 2027-08-06 (+108d) | 2027-04-25 → 2027-08-12 (+109d) | 5d → 7d |  | 6d → -105d |  |  |
| 7 | **Traffic Signage** | 2027-04-26 → 2027-08-14 (+110d) | 2027-05-12 → 2027-09-01 (+112d) |  |  |  |  |  |
| SDR-ST-CON-P1-5260 | Traffic signs, ground mounted, 1 Sheet Alumenium, (breakaway) Single post, with all accessories | 2027-04-26 → 2027-08-14 (+110d) | 2027-05-01 → 2027-08-19 (+110d) | 5d → 6d |  | 6d → -105d |  |  |
| SDR-ST-CON-P1-5380 | Traffic signs, ground mounted, 1 Sheet Aluminum, (breakaway) Double post, with all accessories | 2027-05-02 → 2027-08-21 (+111d) | 2027-05-06 → 2027-08-26 (+112d) | 5d → 6d |  | 6d → -105d |  |  |
| SDR-ST-CON-P1-5560 | Traffic signs, ground mounted, 2 Sheet Aluminum, (breakaway) Single post, with all accessories | 2027-05-08 → 2027-08-28 (+112d) | 2027-05-12 → 2027-09-01 (+112d) |  |  | 6d → -105d |  |  |
| 8 | **Speed table** | 2027-05-15 → 2027-09-04 (+112d) | 2027-05-29 → 2027-09-12 (+106d) |  |  |  |  |  |
| SDR-ST-CON-P1-5390 | Interlock speed table including interlock, flush kerb and marking | 2027-05-15 → 2027-09-04 (+112d) | 2027-05-29 → 2027-09-12 (+106d) |  |  | 6d → -105d |  |  |
| 2 | **ROAD-01 From 400 to 900 m (10)** |  | 2027-06-13 → 2027-09-23 (+102d) |  |  |  |  |  |
| SDR-ST-CON-P1-1250 | Embankments to the Road 1 Layer |  |  | 12d → 14d |  |  |  |  |
| SDR-ST-CON-P1-1830 | Embankments to the Road 2 Layer |  |  | 11d → 14d |  |  |  |  |
| SDR-ST-CON-P1-2540 | Embankments to the Road 3 Layer |  |  | 11d → 14d |  |  |  |  |
| SDR-ST-CON-P1-3100 | Embankments to the Road 4 Layer |  |  | 11d → 14d |  |  |  |  |
| 11 | **Subgrade** |  | 2026-11-12 → 2026-12-03 (+21d) |  |  |  |  |  |
| SDR-ST-CON-P1-3540 | Subgrade layer works |  | 2026-11-12 → 2026-12-03 (+21d) | 11d → 14d | 60% → 75% | 39d → -24d |  |  |
| 2 | **Base Course** | 2026-11-14 → 2026-12-05 (+21d) | 2026-11-24 → 2026-12-20 (+26d) |  |  |  |  |  |
| SDR-ST-CON-P1-4130 | Aggregate base course layer | 2026-11-14 → 2026-12-05 (+21d) | 2026-11-24 → 2026-12-20 (+26d) | 10d → 14d |  | 39d → -24d |  |  |
| 3 | **Asphalt Works** | 2026-11-25 → 2026-12-21 (+26d) | 2026-12-29 → 2027-01-30 (+32d) |  |  |  |  |  |
| 1 | **Bituminous base course** | 2026-11-25 → 2026-12-21 (+26d) | 2026-12-05 → 2027-01-05 (+31d) |  |  |  |  |  |
| SDR-ST-CON-P1-4600 | Bituminous base course (Grading I - Class A 1st Layer with RC-01 | 2026-11-25 → 2026-12-21 (+26d) | 2026-11-30 → 2026-12-29 (+29d) | 5d → 8d |  | 39d → -24d |  | was named Bituminous base course (Grading I - Class A 1st Layer with MC-01 |
| SDR-ST-CON-P1-4930 | Bituminous base course (Grading I - Class A 2nd layer with RC-02 | 2026-12-01 → 2026-12-30 (+29d) | 2026-12-05 → 2027-01-05 (+31d) | 4d → 6d |  | 39d → -24d |  |  |
| 2 | **Bituminous concrete wearing course** | 2026-12-06 → 2027-01-06 (+31d) | 2026-12-29 → 2027-01-30 (+32d) |  |  |  |  |  |
| SDR-ST-CON-P1-5180 | Bituminous concrete wearing course, (Grading I - Class A), including tack coat (RC2) | 2026-12-06 → 2027-01-06 (+31d) | 2026-12-29 → 2027-01-30 (+32d) |  |  | 39d → -24d |  |  |
| 4 | **Kerbstone Installation** | 2026-11-14 → 2026-12-05 (+21d) | 2027-01-03 → 2027-01-24 (+21d) |  |  |  |  |  |
| SDR-ST-CON-P1-4140 | Precast Concrete Curbstone, Type A2 | 2026-11-14 → 2026-12-05 (+21d) | 2026-12-06 → 2026-12-27 (+21d) |  |  | 49d → -19d |  |  |
| SDR-ST-CON-P1-4810 | Precast Concrete Curbstone, Type D | 2026-12-12 → 2027-01-02 (+21d) | 2027-01-03 → 2027-01-24 (+21d) |  |  | 49d → -19d |  |  |
| 5 | **Interlock Installation** | 2027-01-04 → 2027-01-31 (+27d) | 2027-02-20 → 2027-03-24 (+32d) |  |  |  |  |  |

| ID | Task | Start | Finish | Duration | Complete | Total float | Predecessors | Other |
| --- | --- | --- | --- | --- | --- | --- | --- | --- |
| SDR-ST-CON-P1-4350 | Interlock Installation Part 1 | 2027-01-04 → 2027-01-31 (+27d) | 2027-01-26 → 2027-02-23 (+28d) |  |  | 49d → -24d |  |  |
| SDR-ST-CON-P1-4920 | Interlock Installation Part 2 | 2027-01-28 → 2027-02-25 (+28d) | 2027-02-20 → 2027-03-24 (+32d) |  |  | 49d → -24d |  |  |
| 6 | **Road Marking** | 2027-04-17 → 2027-07-13 (+87d) | 2027-05-13 → 2027-08-23 (+102d) |  |  |  |  |  |
| SDR-ST-CON-P1-5290 | Retroreflective Thermoplastic White Traffic lines | 2027-04-17 → 2027-07-13 (+87d) | 2027-04-22 → 2027-07-24 (+93d) | 6d → 10d |  | 7d → -113d | SDR-ST-CON-P1-5180 SS, SDR-ST-CON-P1-4920, SDR-ST-CON-P3-1310 → SDR-ST-CON-P3-1310, SDR-ST-CON-P3-1490, SDR-ST-CON-P1-5180 SS, SDR-ST-CON-P1-4920 |  |
| SDR-ST-CON-P1-5410 | Retroreflective Thermoplastic Yellow, Traffic lines | 2027-04-24 → 2027-07-25 (+92d) | 2027-04-29 → 2027-08-03 (+96d) | 6d → 9d |  | 7d → -113d |  |  |
| SDR-ST-CON-P1-5580 | Ceramic raised pavement markers | 2027-05-01 → 2027-08-04 (+95d) | 2027-05-06 → 2027-08-12 (+98d) | 6d → 9d |  | 7d → -113d |  |  |
| SDR-ST-CON-P1-5640 | Rumble strip | 2027-05-08 → 2027-08-14 (+98d) | 2027-05-13 → 2027-08-23 (+102d) | 6d → 9d |  | 7d → -113d |  |  |
| 7 | **Traffic Signage** | 2027-05-15 → 2027-08-24 (+101d) | 2027-06-02 → 2027-09-13 (+103d) |  |  |  |  |  |
| SDR-ST-CON-P1-5420 | Traffic signs, ground mounted, 1 Sheet Alumenium, (breakaway) Single post, with all accessories | 2027-05-15 → 2027-08-24 (+101d) | 2027-05-26 → 2027-09-02 (+99d) | 6d → 9d |  | 7d → -113d |  |  |
| SDR-ST-CON-P1-5590 | Traffic signs, ground mounted, 1 Sheet Aluminum, (breakaway) Double post, with all accessories | 2027-05-27 → 2027-09-04 (+100d) | 2027-06-02 → 2027-09-13 (+103d) | 6d → 9d |  | 7d → -113d |  |  |
| 8 | **Speed table** | 2027-06-03 → 2027-09-14 (+103d) | 2027-06-13 → 2027-09-23 (+102d) |  |  |  |  |  |
| SDR-ST-CON-P1-5430 | Interlock speed table including interlock, flush kerb and marking | 2027-06-03 → 2027-09-14 (+103d) | 2027-06-13 → 2027-09-23 (+102d) |  |  | 7d → -113d |  |  |
| 3 | **ROAD-01 From 900 to 1239 m (11)** |  | 2027-06-09 → 2027-09-15 (+98d) |  |  |  |  |  |
| SDR-ST-CON-P1-1130 | Surveying works Zone A |  |  | 18d → 19d |  |  |  |  |
| SDR-ST-CON-P1-1220 | Roadway Excavation and cuttings |  |  | 13d → 16d |  |  |  |  |
| 11 | **Subgrade** |  | 2026-11-09 → 2026-11-30 (+21d) |  |  |  |  |  |
| SDR-ST-CON-P1-3740 | Subgrade layer works |  | 2026-11-09 → 2026-11-30 (+21d) | 8d → 11d |  | 43d → -11d |  |  |
| 2 | **Base Course** | 2026-11-10 → 2026-12-01 (+21d) | 2026-11-17 → 2026-12-10 (+23d) |  |  |  |  |  |
| SDR-ST-CON-P1-4290 | Aggregate base course layer | 2026-11-10 → 2026-12-01 (+21d) | 2026-11-17 → 2026-12-10 (+23d) | 7d → 9d |  | 43d → -11d |  |  |
| 3 | **Asphalt Works** | 2026-11-18 → 2026-12-12 (+24d) | 2026-12-24 → 2027-02-02 (+40d) |  |  |  |  |  |
| 1 | **Bituminous base course** | 2026-11-18 → 2026-12-12 (+24d) | 2026-11-28 → 2027-01-06 (+39d) |  |  |  |  |  |
| SDR-ST-CON-P1-4650 | Bituminous base course (Grading I - Class A 1st Layer with RC-01 | 2026-11-18 → 2026-12-12 (+24d) | 2026-11-23 → 2026-12-23 (+30d) | 5d → 11d |  | 43d → -11d |  | was named Bituminous base course (Grading I - Class A 1st Layer with MC-01 |
| SDR-ST-CON-P1-4980 | Bituminous base course (Grading I - Class A 2nd layer with RC-02 | 2026-11-24 → 2026-12-24 (+30d) | 2026-11-28 → 2027-01-06 (+39d) | 4d → 12d |  | 43d → -11d |  |  |
| 2 | **Bituminous concrete wearing course** | 2026-12-01 → 2027-01-10 (+40d) | 2026-12-24 → 2027-02-02 (+40d) |  |  |  |  |  |
| SDR-ST-CON-P1-5230 | Bituminous concrete wearing course, (Grading I - Class A), including tack coat (RC2) | 2026-12-01 → 2027-01-10 (+40d) | 2026-12-24 → 2027-02-02 (+40d) |  |  | 43d → -11d |  |  |
| 4 | **Kerbstone Installation** | 2026-12-31 → 2027-01-13 (+13d) | 2027-02-20 → 2027-03-06 (+14d) |  |  |  |  |  |
| SDR-ST-CON-P1-4300 | Precast Concrete Curbstone, Type A2 | 2026-12-31 → 2027-01-13 (+13d) | 2027-01-23 → 2027-02-04 (+12d) |  |  | 1d → -44d |  |  |
| SDR-ST-CON-P1-4860 | Precast Concrete Curbstone, Type D | 2027-01-28 → 2027-02-10 (+13d) | 2027-02-20 → 2027-03-06 (+14d) |  |  | 1d → -44d |  |  |
| 5 | **Interlock Installation** | 2027-02-21 → 2027-03-07 (+14d) | 2027-04-13 → 2027-04-26 (+13d) |  |  |  |  |  |
| SDR-ST-CON-P1-4450 | Interlock Installation Part 1 | 2027-02-21 → 2027-03-07 (+14d) | 2027-03-21 → 2027-04-03 (+13d) |  |  | 1d → -44d |  |  |
| SDR-ST-CON-P1-4940 | Interlock Installation Part 2 | 2027-03-22 → 2027-04-04 (+13d) | 2027-04-13 → 2027-04-26 (+13d) |  |  | 1d → -44d |  |  |
| 6 | **Road Marking** | 2027-04-14 → 2027-05-11 (+27d) | 2027-05-11 → 2027-06-22 (+42d) |  |  |  |  |  |
| SDR-ST-CON-P1-5350 | Retroreflective Thermoplastic White Traffic lines | 2027-04-14 → 2027-05-11 (+27d) | 2027-04-20 → 2027-05-25 (+35d) | 6d → 8d |  | 1d → -56d |  |  |
| SDR-ST-CON-P1-5510 | Retroreflective Thermoplastic Yellow, Traffic lines | 2027-04-21 → 2027-05-26 (+35d) | 2027-04-27 → 2027-06-03 (+37d) | 6d → 8d |  | 1d → -56d |  |  |
| SDR-ST-CON-P1-5600 | Ceramic raised pavement markers | 2027-04-28 → 2027-06-05 (+38d) | 2027-05-04 → 2027-06-13 (+40d) | 6d → 8d |  | 1d → -56d |  |  |
| SDR-ST-CON-P1-5650 | Rumble strip | 2027-05-05 → 2027-06-14 (+40d) | 2027-05-11 → 2027-06-22 (+42d) | 6d → 8d |  | 1d → -56d |  |  |
| 7 | **Traffic Signage** | 2027-05-12 → 2027-06-23 (+42d) | 2027-06-03 → 2027-07-11 (+38d) |  |  |  |  |  |
| SDR-ST-CON-P1-5360 | Traffic signs, ground mounted, 1 Sheet Alumenium, (breakaway) Single post, with all accessories | 2027-05-12 → 2027-06-23 (+42d) | 2027-05-23 → 2027-06-29 (+37d) | 5d → 6d |  | 1d → -56d |  |  |
| SDR-ST-CON-P1-5520 | Traffic signs, ground mounted, 1 Sheet Aluminum, (breakaway) Double post, with all accessories | 2027-05-24 → 2027-06-30 (+37d) | 2027-05-29 → 2027-07-05 (+37d) |  |  | 1d → -56d |  |  |
| SDR-ST-CON-P1-5660 | Traffic signs, ground mounted, 2 Sheet Aluminum, (breakaway) Single post, with all accessories | 2027-05-30 → 2027-07-06 (+37d) | 2027-06-03 → 2027-07-11 (+38d) |  |  | 1d → -56d |  |  |
| 8 | **Speed table** | 2027-06-05 → 2027-09-06 (+93d) | 2027-06-09 → 2027-09-15 (+98d) |  |  |  |  |  |
| SDR-ST-CON-P1-5530 | Interlock speed table including interlock, flush kerb and marking | 2027-06-05 → 2027-09-06 (+93d) | 2027-06-09 → 2027-09-15 (+98d) | 5d → 9d |  | 1d → -105d | SDR-ST-CON-P1-5350, SDR-ST-CON-P1-5660, SDR-ST-CON-P1-5620, SDR-ST-CON-P1-5460 SS → SDR-ST-CON-P1-5460, SDR-ST-CON-P1-5350, SDR-ST-CON-P1-5660, SDR-ST-CON-P1-5620 |  |
| 12 | **ELECTRICAL WORKS** |  | 2027-08-05 → 2027-11-21 (+108d) |  |  |  |  |  |
| 2 | **MV Network** |  | 2027-06-01 → 2027-08-18 (+78d) |  |  |  |  |  |
| 5 | **ROAD - 01** |  | 2027-05-25 → 2027-08-18 (+85d) |  |  |  |  |  |
| 4 | **ROAD-01 From 1125 to 1765 m (7)** |  | 2027-04-14 → 2027-06-26 (+73d) |  |  |  |  |  |
| 6 | **Excavation** |  | 2027-01-12 → 2026-12-23 (-20d) |  |  |  |  |  |
| SDR-ST-CON-P1-1570 | Excavation Works Part 1 | 2026-11-01 A | 2026-11-24 → 2026-11-07 A (-17d) |  | 0% → 100% | 12d → none |  |  |
| SDR-ST-CON-P1-6090 | Excavation Works Part 2 | 2026-11-25 → 2026-11-08 A (-17d) | 2026-12-19 → 2026-11-29 (-20d) |  | 0% → 72% | 35d → 20d |  |  |
| SDR-ST-CON-P1-6100 | Excavation Works Part 3 | 2026-12-20 → 2026-11-30 (-20d) | 2027-01-12 → 2026-12-23 (-20d) |  |  | 35d → 20d |  |  |
| 7 | **Pipe laying** | 2027-01-13 → 2027-04-10 (+87d) | 2027-02-06 → 2027-05-03 (+86d) |  |  |  |  |  |
| SDR-ST-CON-P1-2270 | Pipe Laying | 2027-01-13 → 2027-04-10 (+87d) | 2027-02-06 → 2027-05-03 (+86d) |  |  | 35d → -66d |  |  |
| 8 | **Backfilling** | 2027-02-07 → 2027-05-04 (+86d) | 2027-03-02 → 2027-06-01 (+91d) |  |  |  |  |  |
| SDR-ST-CON-P1-3000 | Backfilling Works | 2027-02-07 → 2027-05-04 (+86d) | 2027-03-02 → 2027-06-01 (+91d) |  |  | 35d → -66d |  |  |
| 9 | **Pulling Cable** | 2027-03-21 → 2027-06-02 (+73d) | 2027-04-14 → 2027-06-26 (+73d) |  |  |  |  |  |
| SDR-ST-CON-P1-3900 | Pulling Cable | 2027-03-21 → 2027-06-02 (+73d) | 2027-04-14 → 2027-06-26 (+73d) |  |  | 23.2d → -66d |  |  |
| 3 | **ROAD-01 From 470 to 1125 m (6)** | 2026-11-09 → 2026-11-01 (-8d) | 2027-04-13 → 2027-06-24 (+72d) |  |  |  |  |  |
| 6 | **Excavation** | 2026-11-09 → 2026-11-01 (-8d) | 2027-01-17 → 2026-12-26 (-22d) |  |  |  |  |  |
| SDR-ST-CON-P1-1720 | Excavation Works Part 1 | 2026-11-09 → 2026-11-01 A (-8d) | 2026-12-02 → 2026-11-07 A (-25d) |  | 0% → 100% | 12d → none |  |  |
| SDR-ST-CON-P1-6110 | Excavation Works Part2 | 2026-12-03 → 2026-11-09 A (-24d) | 2026-12-27 → 2026-12-05 (-22d) |  | 0% → 39% | 27d → 18d |  |  |
| SDR-ST-CON-P1-6120 | Excavation Works Part 3 | 2026-12-28 → 2026-12-06 (-22d) | 2027-01-17 → 2026-12-26 (-22d) |  |  | 27d → 18d |  |  |
| 7 | **Pipe laying** | 2027-01-18 → 2027-04-10 (+82d) | 2027-02-10 → 2027-05-03 (+82d) |  |  |  |  |  |
| SDR-ST-CON-P1-2420 | Pipe Laying | 2027-01-18 → 2027-04-10 (+82d) | 2027-02-10 → 2027-05-03 (+82d) |  |  | 27d → -66d |  |  |
| 8 | **Backfilling** | 2027-02-11 → 2027-05-04 (+82d) | 2027-03-07 → 2027-06-01 (+86d) |  |  |  |  |  |
| SDR-ST-CON-P1-3150 | Backfilling Works | 2027-02-11 → 2027-05-04 (+82d) | 2027-03-07 → 2027-06-01 (+86d) |  |  | 27d → -66d |  |  |
| 9 | **Pulling Cable** | 2027-03-21 → 2027-06-02 (+73d) | 2027-04-13 → 2027-06-24 (+72d) |  |  |  |  |  |
| SDR-ST-CON-P1-4000 | Pulling Cable | 2027-03-21 → 2027-06-02 (+73d) | 2027-04-13 → 2027-06-24 (+72d) |  |  | 19.2d → -66d |  |  |
| 2 | **ROAD-01 N 03** | 2026-11-17 → 2026-11-04 (-13d) | 2027-05-23 → 2027-08-18 (+87d) |  |  |  |  |  |
| 6 | **Excavation** | 2026-11-17 → 2026-11-04 (-13d) | 2027-01-25 → 2026-12-29 (-27d) |  |  |  |  |  |
| SDR-ST-CON-P1-1770 | Excavation Works Part 1 | 2026-11-17 → 2026-11-04 A (-13d) | 2026-12-10 → 2026-11-07 A (-33d) |  | 0% → 100% | 12d → none |  |  |

| ID | Task | Start | Finish | Duration | Complete | Total float | Predecessors |
| --- | --- | --- | --- | --- | --- | --- | --- |
| SDR-ST-CON-P1-6130 | Excavation Works Part 2 | 2026-12-12 → 2026-11-05 A (-37d) | 2027-01-04 → 2026-12-08 (-27d) |  | 0% → 5% | 15d → 16d |  |
| SDR-ST-CON-P1-6140 | Excavation Works Part 3 | 2027-01-05 → 2026-12-09 (-27d) | 2027-01-25 → 2026-12-29 (-27d) |  |  | 15d → 16d |  |
| 7 | **Pipe laying** | 2027-01-26 → 2027-04-10 (+74d) | 2027-02-18 → 2027-05-03 (+74d) |  |  |  |  |
| SDR-ST-CON-P1-2500 | Pipe Laying | 2027-01-26 → 2027-04-10 (+74d) | 2027-02-18 → 2027-05-03 (+74d) |  |  | 15d → -65d |  |
| 8 | **Backfilling** | 2027-04-24 → 2027-07-05 (+72d) | 2027-05-22 → 2027-07-27 (+66d) |  |  |  |  |
| SDR-ST-CON-P1-3280 | Backfilling Works | 2027-04-24 → 2027-07-05 (+72d) | 2027-05-22 → 2027-07-27 (+66d) |  |  | 15.9d → -95d |  |
| 9 | **Pulling Cable** | 2027-04-24 → 2027-07-28 (+95d) | 2027-05-23 → 2027-08-18 (+87d) |  |  |  |  |
| SDR-ST-CON-P1-4250 | Pulling Cable | 2027-04-24 → 2027-07-28 (+95d) | 2027-05-23 → 2027-08-18 (+87d) | 20.1d → 20d |  | 15.9d → -95d | SDR-ST-CON-P1-2500, SDR-ST-CON-P1-3280 SS, SDR-ST-PRO-MS-1220 → SDR-ST-PRO-MS-1220, SDR-ST-CON-P1-2500, SDR-ST-CON-P1-3280 |
| 1 | **ROAD-01 N 01** | 2026-11-25 → 2026-11-03 (-22d) | 2027-05-25 → 2027-06-24 (+30d) |  |  |  |  |
| 6 | **Excavation** | 2026-11-25 → 2026-11-03 (-22d) | 2027-03-14 → 2027-04-13 (+30d) |  |  |  |  |
| SDR-ST-CON-P1-1730 | Excavation Works Part 1 | 2026-11-25 → 2026-11-03 A (-22d) | 2026-12-19 → 2026-12-03 (-16d) |  | 0% → 72% | 12d → 1d |  |
| SDR-ST-CON-P1-6150 | Excavation Works Part 2 | 2027-02-03 → 2027-02-23 (+20d) | 2027-02-20 → 2027-03-22 (+30d) | 15d → 20d |  | 6d → -42d |  |
| SDR-ST-CON-P1-6160 | Excavation Works Part 3 | 2027-02-15 → 2027-03-23 (+36d) | 2027-03-14 → 2027-04-13 (+30d) |  |  | 6d → -42d | SDR-ST-CON-P1-6150 SS+10d → SDR-ST-CON-P1-6150 |
| 7 | **Pipe laying** | 2027-03-15 → 2027-04-14 (+30d) | 2027-04-06 → 2027-05-06 (+30d) |  |  |  |  |
| SDR-ST-CON-P1-2430 | Pipe Laying | 2027-03-15 → 2027-04-14 (+30d) | 2027-04-06 → 2027-05-06 (+30d) |  |  | 6d → -42d |  |
| 8 | **Backfilling** | 2027-04-07 → 2027-05-08 (+31d) | 2027-04-28 → 2027-06-03 (+36d) |  |  |  |  |
| SDR-ST-CON-P1-3160 | Backfilling Works | 2027-04-07 → 2027-05-08 (+31d) | 2027-04-28 → 2027-06-03 (+36d) |  |  | 13d → -41d |  |
| 9 | **Pulling Cable** | 2027-04-29 → 2027-06-05 (+37d) | 2027-05-25 → 2027-06-24 (+30d) |  |  |  |  |
| SDR-ST-CON-P1-4010 | Pulling Cable | 2027-04-29 → 2027-06-05 (+37d) | 2027-05-25 → 2027-06-24 (+30d) |  |  | 13d → -41d |  |
| 6 | **ROAD - 02** | 2026-12-03 → 2026-11-03 (-30d) | 2027-06-01 → 2027-06-26 (+25d) |  |  |  |  |
| 3 | **ROAD-01 From 0 to 400 m (9) 2 Way 150 mm** | 2026-12-03 → 2026-11-03 (-30d) | 2027-06-01 → 2027-06-20 (+19d) |  |  |  |  |
| 6 | **Excavation** | 2026-12-03 → 2026-11-03 (-30d) | 2027-03-25 → 2027-03-24 (-1d) |  |  |  |  |
| SDR-ST-CON-P1-1920 | Excavation Works Part 1 | 2026-12-03 → 2026-11-03 A (-30d) | 2026-12-27 → 2026-12-14 (-13d) |  | 0% → 39% | 12d → 1d |  |
| SDR-ST-CON-P1-6170 | Excavation Works Part 2 | 2026-12-28 → 2026-12-15 (-13d) | 2027-01-19 → 2027-01-06 (-13d) |  |  | 33d → 18d |  |
| SDR-ST-CON-P1-6180 | Excavation Works Part 3 | 2027-02-28 → 2027-02-27 (-1d) | 2027-03-25 → 2027-03-24 (-1d) |  |  | 1d → -24d | SDR-ST-CON-P1-6170, SDR-ST-CON-P1-4020, SDR-ST-CON-P1-4310 FS-2d → SDR-ST-CON-P1-4020, SDR-ST-CON-P1-4310, SDR-ST-CON-P1-6170 |
| 7 | **Pipe laying** | 2027-03-25 → 2027-04-10 (+16d) | 2027-04-17 → 2027-05-02 (+15d) |  |  |  |  |
| SDR-ST-CON-P1-2660 | Pipe Laying | 2027-03-25 → 2027-04-10 (+16d) | 2027-04-17 → 2027-05-02 (+15d) |  |  | 1d → -37d | SDR-ST-CON-P1-6180 FS-1d, SDR-ST-CON-P1-4740, SDR-ST-CON-P1-4880, SDR-ST-PRO-MS-1210 → SDR-ST-CON-P1-4740, SDR-ST-CON-P1-4880, SDR-ST-PRO-MS-1210, SDR-ST-CON-P1-6180 |
| 8 | **Backfilling** | 2027-04-17 → 2027-05-03 (+16d) | 2027-05-08 → 2027-05-30 (+22d) |  |  |  |  |
| SDR-ST-CON-P1-3430 | Backfilling Works | 2027-04-17 → 2027-05-03 (+16d) | 2027-05-08 → 2027-05-30 (+22d) |  |  | 1d → -37d | SDR-ST-CON-P1-2660 FS-1d → SDR-ST-CON-P1-2660 |
| 9 | **Pulling Cable** | 2027-05-06 → 2027-05-31 (+25d) | 2027-06-01 → 2027-06-20 (+19d) |  |  |  |  |
| SDR-ST-CON-P1-4320 | Pulling Cable | 2027-05-06 → 2027-05-31 (+25d) | 2027-06-01 → 2027-06-20 (+19d) |  |  | 1d → -37d | SDR-ST-CON-P1-2660, SDR-ST-CON-P1-3430 FS-2d, SDR-ST-PRO-MS-1220 → SDR-ST-PRO-MS-1220, SDR-ST-CON-P1-2660, SDR-ST-CON-P1-3430 |
| 2 | **ROAD-01 From 400 to 900 m (10) 2 Way 150 mm** | 2026-12-12 → 2026-11-03 (-39d) | 2027-06-01 → 2027-06-26 (+25d) |  |  |  |  |
| 6 | **Excavation** | 2026-12-12 → 2026-11-03 (-39d) | 2027-03-21 → 2027-04-14 (+24d) |  |  |  |  |
| SDR-ST-CON-P1-1840 | Excavation Works Part 1 | 2026-12-12 → 2026-11-03 A (-39d) | 2027-01-04 → 2026-12-17 (-18d) |  | 0% → 5% | 12d → 1d |  |
| SDR-ST-CON-P1-6190 | Excavation Works Part 2 | 2027-02-03 → 2027-02-23 (+20d) | 2027-02-20 → 2027-03-22 (+30d) | 15d → 20d |  | 7d → -55d |  |
| SDR-ST-CON-P1-6200 | Excavation Works Part 3 | 2027-02-21 → 2027-03-23 (+30d) | 2027-03-21 → 2027-04-14 (+24d) |  |  | 7d → -55d |  |
| 7 | **Pipe laying** | 2027-03-22 → 2027-04-15 (+24d) | 2027-04-13 → 2027-05-08 (+25d) |  |  |  |  |
| SDR-ST-CON-P1-2590 | Pipe Laying | 2027-03-22 → 2027-04-15 (+24d) | 2027-04-13 → 2027-05-08 (+25d) |  |  | 7d → -37d |  |
| 8 | **Backfilling** | 2027-04-14 → 2027-05-09 (+25d) | 2027-05-05 → 2027-06-05 (+31d) |  |  |  |  |
| SDR-ST-CON-P1-3340 | Backfilling Works | 2027-04-14 → 2027-05-09 (+25d) | 2027-05-05 → 2027-06-05 (+31d) |  |  | 7d → -37d |  |
| 9 | **Pulling Cable** | 2027-05-06 → 2027-06-06 (+31d) | 2027-06-01 → 2027-06-26 (+25d) |  |  |  |  |
| SDR-ST-CON-P1-4050 | Pulling Cable | 2027-05-06 → 2027-06-06 (+31d) | 2027-06-01 → 2027-06-26 (+25d) |  |  | 7d → -37d |  |
| 1 | **ROAD-01 From 900 to 1239 m (11) 2 Way 150 mm** | 2026-12-20 → 2026-12-02 (-18d) | 2027-05-10 → 2027-06-20 (+41d) |  |  |  |  |
| 6 | **Excavation** | 2026-12-20 → 2026-12-02 (-18d) | 2027-02-28 → 2027-02-09 (-19d) |  |  |  |  |
| SDR-ST-CON-P1-2000 | Excavation Works Part 1 | 2026-12-20 → 2026-12-02 (-18d) | 2027-01-12 → 2026-12-26 (-17d) |  |  | 12d → 7d |  |
| SDR-ST-CON-P1-6210 | Excavation Works Part 2 | 2027-01-13 → 2026-12-27 (-17d) | 2027-02-04 → 2027-01-18 (-17d) |  |  | 12d → 7d |  |
| SDR-ST-CON-P1-6220 | Excavation Works Part 3 | 2027-02-06 → 2027-01-19 (-18d) | 2027-02-28 → 2027-02-09 (-19d) |  |  | 21d → 10d |  |
| 7 | **Pipe laying** | 2027-03-01 → 2027-04-10 (+40d) | 2027-03-28 → 2027-05-02 (+35d) |  |  |  |  |
| SDR-ST-CON-P1-2750 | Pipe Laying | 2027-03-01 → 2027-04-10 (+40d) | 2027-03-28 → 2027-05-02 (+35d) |  |  | 21d → -35d |  |
| 8 | **Backfilling** | 2027-03-29 → 2027-05-03 (+35d) | 2027-04-19 → 2027-05-30 (+41d) |  |  |  |  |
| SDR-ST-CON-P1-3460 | Backfilling Works | 2027-03-29 → 2027-05-03 (+35d) | 2027-04-19 → 2027-05-30 (+41d) |  |  | 21d → -35d |  |
| 9 | **Pulling Cable** | 2027-04-20 → 2027-05-31 (+41d) | 2027-05-10 → 2027-06-20 (+41d) |  |  |  |  |
| SDR-ST-CON-P1-3980 | Pulling Cable | 2027-04-20 → 2027-05-31 (+41d) | 2027-05-10 → 2027-06-20 (+41d) |  |  | 21d → -35d |  |
| 1 | **Earthing System** | 2027-02-06 → 2027-01-19 (-18d) | 2027-02-24 → 2027-02-06 (-18d) |  |  |  |  |
| SDR-ST-CON-P1-4840 | Installation of Earthing System Including lighting poles circuits | 2027-02-06 → 2027-01-19 (-18d) | 2027-02-24 → 2027-02-06 (-18d) |  |  | 12d → 7d |  |
| 16 | **Street Lighting Network** |  | 2027-08-05 → 2027-11-21 (+108d) |  |  |  |  |
| 7 | **ROAD - 01** |  | 2027-08-05 → 2027-11-21 (+108d) |  |  |  |  |
| 2 | **ROAD-01 From 470 to 1125 m (6)** |  | 2027-02-17 → 2027-04-26 (+68d) |  |  |  |  |
| 10 | **Excavation** |  | 2026-11-24 → 2027-01-25 (+62d) |  |  |  |  |
| SDR-ST-CON-P1-1180 | Excavation for LV Cable trench Section 1 |  | 2026-11-23 → 2026-12-14 (+21d) |  | 50% → 70% | 14d → -61d |  |
| SDR-ST-CON-P1-1560 | Excavation for LV Cable trench Section 2 | 2026-11-01 → 2026-11-05 A (+4d) | 2026-11-24 → 2027-01-04 (+41d) |  | 0% → 50% | 14d → -61d | SDR-ST-CON-P1-1180 SS → SDR-ST-CON-P1-1180 FS+2d |
| SDR-ST-CON-P1-2250 | Excavation for LV Cable trench Section 3 | 2026-11-01 → 2026-11-05 A (+4d) | 2026-11-24 → 2027-01-25 (+62d) |  | 0% → 50% | 14d → -61d | SDR-ST-CON-P1-1560 SS → SDR-ST-CON-P1-1560 |
| 11 | **Install Footings** | 2026-11-25 → 2027-01-26 (+62d) | 2026-12-19 → 2027-02-18 (+61d) |  |  |  |  |
| SDR-ST-CON-P1-2980 | Install Footings | 2026-11-25 → 2027-01-26 (+62d) | 2026-12-19 → 2027-02-18 (+61d) |  |  | 14d → -61d |  |
| 12 | **Backfilling** | 2026-12-20 → 2027-02-20 (+62d) | 2026-12-30 → 2027-03-03 (+63d) |  |  |  |  |
| SDR-ST-CON-P1-3870 | Backfilling over LV Cables of Street lighting | 2026-12-20 → 2027-02-20 (+62d) | 2026-12-30 → 2027-03-03 (+63d) |  |  | 14d → -61d |  |
| 13 | **Install pole** | 2026-12-31 → 2027-03-04 (+63d) | 2027-02-17 → 2027-04-26 (+68d) |  |  |  |  |
| SDR-ST-CON-P1-4420 | Install Pole Part 1 | 2026-12-31 → 2027-03-04 (+63d) | 2027-01-24 → 2027-04-01 (+67d) |  |  | 14d → -61d |  |
| SDR-ST-CON-P1-5170 | Install Pole Part 2 | 2027-01-25 → 2027-04-03 (+68d) | 2027-02-17 → 2027-04-26 (+68d) |  |  | 14d → -61d |  |
| 3 | **ROAD-01 From 1125 to 1765 m (7)** |  | 2027-04-07 → 2027-04-19 (+12d) |  |  |  |  |

| ID | Task | Start | Finish | Duration | Complete | Total float | Predecessors |
| --- | --- | --- | --- | --- | --- | --- | --- |
| 10 | **Excavation** |  | 2027-01-13 → 2027-01-10 (-3d) |  |  |  |  |
| SDR-ST-CON-P1-1590 | Excavation for LV Cable trench Section 1 |  | 2026-11-23 → 2026-12-14 (+21d) |  | 50% → 70% | 0d → -39d |  |
| SDR-ST-CON-P1-2390 | Excavation for LV Cable trench Section 2 | 2026-11-26 → 2026-11-04 A (-22d) | 2026-12-20 → 2026-12-29 (+9d) |  | 0% → 50% | 0d → -39d |  |
| SDR-ST-CON-P1-3120 | Excavation for LV Cable trench Section 3 | 2026-12-21 → 2026-11-04 A (-47d) | 2027-01-13 → 2027-01-10 (-3d) |  | 0% → 50% | 0d → -39d |  |
| 11 | **Install Footings** | 2027-01-14 → 2027-01-11 (-3d) | 2027-01-31 → 2027-02-02 (+2d) |  |  |  |  |
| SDR-ST-CON-P1-3990 | Install Footings | 2027-01-14 → 2027-01-11 (-3d) | 2027-01-31 → 2027-02-02 (+2d) | 15d → 20d |  | 0d → -39d |  |
| 12 | **Backfilling** | 2027-02-01 → 2027-02-03 (+2d) | 2027-02-11 → 2027-02-24 (+13d) |  |  |  |  |
| SDR-ST-CON-P1-4680 | Backfilling over LV Cables of Street lighting | 2027-02-01 → 2027-02-03 (+2d) | 2027-02-11 → 2027-02-24 (+13d) | 10d → 18d |  | 0d → -39d |  |
| 13 | **Install pole** | 2027-02-13 → 2027-02-25 (+12d) | 2027-04-07 → 2027-04-19 (+12d) |  |  |  |  |
| SDR-ST-CON-P1-5050 | Install Pole Part 1 | 2027-02-13 → 2027-02-25 (+12d) | 2027-03-14 → 2027-03-25 (+11d) |  |  | 0d → -39d |  |
| SDR-ST-CON-P1-5760 | Install Pole Part 2 | 2027-03-15 → 2027-03-27 (+12d) | 2027-04-07 → 2027-04-19 (+12d) |  |  | 0d → -39d |  |
| 1 | **ROAD-01 From 0 to 470 m (3)** |  | 2027-05-01 → 2027-07-12 (+72d) |  |  |  |  |
| 10 | **Excavation** |  | 2026-11-24 → 2026-12-26 (+32d) |  |  |  |  |
| SDR-ST-CON-P1-1500 | Excavation for LV Cable trench Section 1 |  | 2026-11-24 → 2026-12-02 (+8d) |  | 25% → 70% | 1d → -42d |  |
| SDR-ST-CON-P1-3040 | Excavation for LV Cable trench Section 3 | 2026-11-01 → 2026-11-03 A (+2d) | 2026-11-24 → 2026-12-26 (+32d) |  | 0% → 50% | 15d → -35d | SDR-ST-CON-P1-2320 FF → SDR-ST-CON-P1-2320 |
| SDR-ST-CON-P1-2320 | Excavation for LV Cable trench Section 2 | 2026-11-01 → 2026-11-04 A (+3d) | 2026-11-24 → 2026-12-14 (+20d) |  | 0% → 50% | 15d → -35d | SDR-ST-CON-P1-1500 FF → SDR-ST-CON-P1-1500 |
| 11 | **Install Footings** | 2026-11-25 → 2026-12-29 (+34d) | 2026-12-19 → 2027-01-21 (+33d) |  |  |  |  |
| SDR-ST-CON-P1-3920 | Install Footings | 2026-11-25 → 2026-12-29 (+34d) | 2026-12-19 → 2027-01-21 (+33d) |  |  | 15d → -37d |  |
| 12 | **Backfilling** | 2026-12-20 → 2027-01-23 (+34d) | 2027-01-02 → 2027-02-08 (+37d) |  |  |  |  |
| SDR-ST-CON-P1-4850 | Backfilling over LV Cables of Street lighting | 2026-12-20 → 2027-01-23 (+34d) | 2027-01-02 → 2027-02-08 (+37d) | 12d → 15d |  | 15d → -37d |  |
| 13 | **Install pole** | 2027-01-03 → 2027-02-18 (+46d) | 2027-05-01 → 2027-07-12 (+72d) |  |  |  |  |
| SDR-ST-CON-P1-5330 | Install Pole Part 1 | 2027-01-03 → 2027-02-18 (+46d) | 2027-01-26 → 2027-03-21 (+54d) |  |  | 15d → -45.6d |  |
| SDR-ST-CON-P1-5780 | Install Pole Part 2 | 2027-02-07 → 2027-03-30 (+51d) | 2027-03-03 → 2027-04-22 (+50d) |  |  | 6d → -53d |  |
| SDR-ST-CON-P1-6070 | Install Pole Part 3 | 2027-03-04 → 2027-04-27 (+54d) | 2027-04-01 → 2027-05-10 (+39d) | 21d → 12d |  | 6d → -56d |  |
| SDR-ST-CON-P1-6080 | Install Pole Part 4 | 2027-04-24 → 2027-07-05 (+72d) | 2027-05-01 → 2027-07-12 (+72d) |  |  | 9d → -70d |  |
| 4 | **ROAD-01 N (1)** | 2026-11-01 → 2026-11-04 (+3d) | 2027-02-18 → 2027-04-14 (+55d) |  |  |  |  |
| 10 | **Excavation** | 2026-11-01 → 2026-11-04 (+3d) | 2026-11-26 → 2026-12-30 (+34d) |  |  |  |  |
| SDR-ST-CON-P1-3190 | Excavation for LV Cable trench Section 3 | 2026-11-03 → 2026-11-04 A (+1d) | 2026-11-26 → 2026-12-30 (+34d) |  | 0% → 50% | 16d → -37d | SDR-ST-CON-P1-2410 FF → SDR-ST-CON-P1-2410 |
| SDR-ST-CON-P1-1700 | Excavation for LV Cable trench Section 1 | 2026-11-01 → 2026-11-05 A (+4d) | 2026-11-24 → 2026-12-03 (+9d) |  | 0% → 50% | 1d → -42d |  |
| SDR-ST-CON-P1-2410 | Excavation for LV Cable trench Section 2 | 2026-11-03 → 2026-11-05 A (+2d) | 2026-11-26 → 2026-12-17 (+21d) |  | 0% → 50% | 16d → -37d | SDR-ST-CON-P1-1700 FF+2d → SDR-ST-CON-P1-1700 FS+2d |
| 11 | **Install Footings** | 2026-11-28 → 2026-12-31 (+33d) | 2026-12-21 → 2027-01-24 (+34d) |  |  |  |  |
| SDR-ST-CON-P1-4110 | Install Footings | 2026-11-28 → 2026-12-31 (+33d) | 2026-12-21 → 2027-01-24 (+34d) |  |  | 16d → -37d |  |
| 12 | **Backfilling** | 2026-12-22 → 2027-01-25 (+34d) | 2026-12-31 → 2027-02-08 (+39d) |  |  |  |  |
| SDR-ST-CON-P1-4960 | Backfilling over LV Cables of Street lighting | 2026-12-22 → 2027-01-25 (+34d) | 2026-12-31 → 2027-02-08 (+39d) | 9d → 13d |  | 16d → -37d |  |
| 13 | **Install pole** | 2027-01-02 → 2027-02-18 (+47d) | 2027-02-18 → 2027-04-14 (+55d) |  |  |  |  |
| SDR-ST-CON-P1-5340 | Install Pole Part 1 | 2027-01-02 → 2027-02-18 (+47d) | 2027-01-25 → 2027-03-21 (+55d) |  |  | 16d → -45.6d |  |
| SDR-ST-CON-P1-5790 | Install Pole Part 2 | 2027-01-26 → 2027-03-21 (+54d) | 2027-02-18 → 2027-04-14 (+55d) |  |  | 16d → -45.6d |  |
| 5 | **Road Crossing & Drawpits** | 2026-10-05 → 2026-08-27 (-39d) | 2027-01-20 → 2027-02-21 (+32d) |  |  |  |  |
| 1 | **ROAD - 01** | 2026-10-05 → 2026-08-27 (-39d) | 2027-01-20 → 2027-02-21 (+32d) |  |  |  |  |
| 1 | **ROAD-01 From 470 to 1125 m (6)** | 2026-10-05 → 2026-08-27 (-39d) | 2026-11-15 → 2026-12-29 (+44d) |  |  |  |  |
| 1 | **Road crossing Ducts & Drawpits** | 2026-10-05 → 2026-08-27 (-39d) | 2026-11-15 → 2026-12-29 (+44d) |  |  |  |  |
| 1 | **Excavation** | 2026-10-05 → 2026-08-27 (-39d) |  |  |  |  |  |
| SDR-ST-CON-P1-1450 | Excavation for GRP Pipes Section 1 | 2026-10-05 A → 2026-08-27 A (-39d) |  |  |  |  | SDR-ST-CON-P1-1180 SS → SDR-ST-CON-P1-1180 |
| 6 | **Testing** | 2026-11-01 → 2026-12-15 (+44d) | 2026-11-08 → 2026-12-22 (+44d) |  |  |  |  |
| SDR-ST-CON-P1-3530 | Testing ST GRP Pipes | 2026-11-01 → 2026-12-15 (+44d) | 2026-11-08 → 2026-12-22 (+44d) |  |  | 75d → -12d |  |
| 3 | **Backfilling** | 2026-11-09 → 2026-12-23 (+44d) | 2026-11-15 → 2026-12-29 (+44d) |  |  |  |  |
| SDR-ST-CON-P1-3810 | Backfilling ST GRP Pipes | 2026-11-09 → 2026-12-23 (+44d) | 2026-11-15 → 2026-12-29 (+44d) |  |  | 75d → -12d |  |
| 2 | **ROAD-01 From 1125 to 1765 m (7)** | 2026-10-06 → 2026-08-27 (-40d) | 2026-12-28 → 2027-01-03 (+6d) |  |  |  |  |
| 1 | **Road crossing Ducts & Drawpits** | 2026-10-06 → 2026-08-27 (-40d) | 2026-12-28 → 2027-01-03 (+6d) |  |  |  |  |
| 1 | **Excavation** | 2026-10-06 → 2026-08-27 (-40d) |  |  |  |  |  |
| SDR-ST-CON-P1-1600 | Excavation for GRP Pipes Section 1 | 2026-10-06 A → 2026-08-27 A (-40d) |  |  |  |  |  |
| 7 | **bedding Works** | 2026-10-10 → 2026-09-21 (-19d) |  |  |  |  |  |
| SDR-ST-CON-P1-2280 | Sand bedding for GRP Pipes | 2026-10-10 A → 2026-09-21 A (-19d) |  |  |  |  |  |
| 6 | **Testing** | 2026-12-05 → 2026-12-12 (+7d) | 2026-12-14 → 2026-12-21 (+7d) |  |  |  |  |
| SDR-ST-CON-P1-3250 | Testing ST GRP Pipes | 2026-12-05 → 2026-12-12 (+7d) | 2026-12-14 → 2026-12-21 (+7d) |  |  | 38.9d → -16d |  |
| 3 | **Backfilling** | 2026-12-15 → 2026-12-22 (+7d) | 2026-12-28 → 2027-01-03 (+6d) |  |  |  |  |
| SDR-ST-CON-P1-3670 | Backfilling ST GRP Pipes | 2026-12-15 → 2026-12-22 (+7d) | 2026-12-28 → 2027-01-03 (+6d) | 11.1d → 11d |  | 38.9d → -16d |  |
| 3 | **ROAD-01 From 0 to 470 m (3)** | 2026-10-10 → 2026-08-27 (-44d) | 2026-11-19 → 2026-12-19 (+30d) |  |  |  |  |
| 1 | **Road crossing Ducts & Drawpits** | 2026-10-10 → 2026-08-27 (-44d) | 2026-11-19 → 2026-12-19 (+30d) |  |  |  |  |
| 1 | **Excavation** | 2026-10-10 → 2026-08-27 (-44d) |  |  |  |  |  |
| SDR-ST-CON-P1-1510 | Excavation for GRP Pipes Section 1 | 2026-10-10 A → 2026-08-27 A (-44d) |  |  |  |  |  |
| 6 | **Testing** | 2026-11-01 → 2026-11-22 (+21d) | 2026-11-07 → 2026-12-02 (+25d) |  |  |  |  |
| SDR-ST-CON-P1-3510 | Testing ST GRP Pipes | 2026-11-01 → 2026-11-22 (+21d) | 2026-11-07 → 2026-12-02 (+25d) | 6d → 10d |  | 92d → 41d |  |
| 3 | **Backfilling** | 2026-11-09 → 2026-12-05 (+26d) | 2026-11-19 → 2026-12-19 (+30d) |  |  |  |  |
| SDR-ST-CON-P1-3760 | Backfilling ST GRP Pipes | 2026-11-09 → 2026-12-05 (+26d) | 2026-11-19 → 2026-12-19 (+30d) | 10d → 13d |  | 92d → 41d |  |
| 4 | **ROAD-01 N (1)** | 2026-11-01 → 2026-11-22 (+21d) | 2027-01-20 → 2027-02-21 (+32d) |  |  |  |  |
| 1 | **Road crossing Ducts & Drawpits** | 2026-11-01 → 2026-11-22 (+21d) | 2027-01-20 → 2027-02-21 (+32d) |  |  |  |  |
| 1 | **Excavation** | 2026-11-01 → 2026-11-22 (+21d) | 2026-11-24 → 2026-12-15 (+21d) |  |  |  |  |
| SDR-ST-CON-P1-1710 | Excavation for GRP Pipes Section 1 | 2026-11-01 → 2026-11-22 (+21d) | 2026-11-24 → 2026-12-15 (+21d) |  |  | 39d → -14d |  |
| 7 | **bedding Works** | 2026-11-25 → 2026-12-16 (+21d) | 2026-12-19 → 2027-01-09 (+21d) |  |  |  |  |

| ID | Task | Start | Finish | Duration | Complete | Total float | Predecessors |
| --- | --- | --- | --- | --- | --- | --- | --- |
| SDR-ST-CON-P1-2360 | Sand bedding for GRP Pipes | 2026-11-25 → 2026-12-16 (+21d) | 2026-12-19 → 2027-01-09 (+21d) |  |  | 39d → -14d |  |
| 2 | **Pipes Laying** | 2026-12-20 → 2027-01-10 (+21d) | 2026-12-30 → 2027-01-23 (+24d) |  |  |  |  |
| SDR-ST-CON-P1-3090 | Install ST GRP Pipes | 2026-12-20 → 2027-01-10 (+21d) | 2026-12-30 → 2027-01-23 (+24d) | 10d → 12d |  | 39d → -14d |  |
| 6 | **Testing** | 2026-12-31 → 2027-01-24 (+24d) | 2027-01-11 → 2027-02-08 (+28d) |  |  |  |  |
| SDR-ST-CON-P1-3520 | Testing ST GRP Pipes | 2026-12-31 → 2027-01-24 (+24d) | 2027-01-11 → 2027-02-08 (+28d) | 10d → 14d |  | 39d → -14d |  |
| 3 | **Backfilling** | 2027-01-13 → 2027-02-10 (+28d) | 2027-01-20 → 2027-02-21 (+32d) |  |  |  |  |
| SDR-ST-CON-P1-3930 | Backfilling ST GRP Pipes | 2027-01-13 → 2027-02-10 (+28d) | 2027-01-20 → 2027-02-21 (+32d) | 7d → 10d |  | 39d → -14d |  |
| 11 | **Ring Main Unit** | 2027-05-11 → 2027-07-26 (+76d) | 2027-07-26 → 2027-10-04 (+70d) |  |  |  |  |
| 1 | **Leveling** | 2027-05-11 → 2027-07-26 (+76d) | 2027-06-09 → 2027-08-09 (+61d) |  |  |  |  |
| SDR-ST-CON-P1-5840 | Ring Main Unit leveling | 2027-05-11 → 2027-07-26 (+76d) | 2027-06-09 → 2027-08-09 (+61d) | 20d → 14d |  | 0.52d → -81d |  |
| 2 | **Lean Concrete** | 2027-06-09 → 2027-08-19 (+71d) | 2027-07-03 → 2027-09-11 (+70d) |  |  |  |  |
| SDR-ST-CON-P1-5890 | Ring Main Unit Lean Concrete | 2027-06-09 → 2027-08-19 (+71d) | 2027-07-03 → 2027-09-11 (+70d) |  |  | 0.52d → -84d |  |
| 3 | **Installation** | 2027-07-03 → 2027-09-12 (+71d) | 2027-07-26 → 2027-10-04 (+70d) |  |  |  |  |
| SDR-ST-CON-P1-5920 | Ring Main Unit installation for Street Lighting | 2027-07-03 → 2027-09-12 (+71d) | 2027-07-26 → 2027-10-04 (+70d) |  |  | 0.52d → -84d |  |
| 12 | **Feeder Pillars** | 2027-06-02 → 2027-08-19 (+78d) | 2027-08-05 → 2027-10-23 (+79d) |  |  |  |  |
| 1 | **Leveling** | 2027-06-02 → 2027-08-19 (+78d) | 2027-06-26 → 2027-09-12 (+78d) |  |  |  |  |
| SDR-ST-CON-P1-5880 | Feeder Pillars Leveling | 2027-06-02 → 2027-08-19 (+78d) | 2027-06-26 → 2027-09-12 (+78d) |  |  | 1d → -89d | SDR-ST-CON-P1-5840 FF, SDR-ST-CON-P1-4320, SDR-ST-CON-P1-4010 FF, SDR-ST-CON-P1-4250 FF, SDR-ST-CON-P1-4000 FF → SDR-ST-CON-P1-4320, SDR-ST-CON-P1-4010, SDR-ST-CON-P1-4250, SDR-ST-CON-P1-4000, SDR-ST-CON-P1-5840 |
| 2 | **Lean Concrete** | 2027-06-27 → 2027-09-13 (+78d) | 2027-07-19 → 2027-10-05 (+78d) |  |  |  |  |
| SDR-ST-CON-P1-5930 | Feeder Pillars Lean Concrete | 2027-06-27 → 2027-09-13 (+78d) | 2027-07-19 → 2027-10-05 (+78d) |  |  | 1d → -87d |  |
| 3 | **Installation** | 2027-07-14 → 2027-10-06 (+84d) | 2027-08-05 → 2027-10-23 (+79d) |  |  |  |  |
| SDR-ST-CON-P1-6000 | Feeder Pillars Installation | 2027-07-14 → 2027-10-06 (+84d) | 2027-08-05 → 2027-10-23 (+79d) | 20d → 15d |  | 1d → -87d | SDR-ST-CON-P1-5930 SS+15d → SDR-ST-CON-P1-5930 |
| 13 | **KWH Frame** | 2027-06-16 → 2027-09-30 (+106d) | 2027-08-04 → 2027-11-21 (+109d) |  |  |  |  |
| 1 | **Leveling** | 2027-06-16 → 2027-09-30 (+106d) | 2027-07-08 → 2027-10-21 (+105d) |  |  |  |  |
| SDR-ST-CON-P1-5940 | KWH meter mounting frame Leveling | 2027-06-16 → 2027-09-30 (+106d) | 2027-07-08 → 2027-10-21 (+105d) | 20d → 19d |  | 1d → -104d | SDR-ST-CON-P1-5880 SS, SDR-ST-CO-1010 SS → SDR-ST-CO-1010, SDR-ST-CON-P1-5880 |
| 2 | **Lean Concrete** | 2027-07-10 → 2027-10-23 (+105d) | 2027-07-26 → 2027-11-08 (+105d) |  |  |  |  |
| SDR-ST-CON-P1-6010 | KWH meter mounting frame Lean Concrete | 2027-07-10 → 2027-10-23 (+105d) | 2027-07-26 → 2027-11-08 (+105d) |  |  | 1d → -104d |  |
| 3 | **Installation** | 2027-07-27 → 2027-11-09 (+105d) | 2027-08-04 → 2027-11-21 (+109d) |  |  |  |  |
| SDR-ST-CON-P1-6040 | KWH meter mounting frame installation | 2027-07-27 → 2027-11-09 (+105d) | 2027-08-04 → 2027-11-21 (+109d) | 8d → 11d |  | 1d → -104d |  |
| 14 | **Street Lighting Sub-station** | 2027-06-16 → 2027-10-05 (+111d) | 2027-07-22 → 2027-11-16 (+117d) |  |  |  |  |
| 1 | **Leveling** | 2027-06-16 → 2027-10-05 (+111d) | 2027-07-08 → 2027-10-27 (+111d) |  |  |  |  |
| SDR-ST-CON-P1-5950 | Unit Substation Leveling Part 1 | 2027-06-16 → 2027-10-05 (+111d) | 2027-07-08 → 2027-10-27 (+111d) |  |  | 4d → -104d | SDR-ST-CON-P1-5940 SS → SDR-ST-CON-P1-5940 SS+4d |
| SDR-ST-CON-P1-5960 | Unit Substation Leveling Part 2 | 2027-06-16 → 2027-10-05 (+111d) | 2027-07-08 → 2027-10-27 (+111d) |  |  | 4d → -104d |  |
| 2 | **Lean Concrete** | 2027-07-10 → 2027-10-28 (+110d) | 2027-07-22 → 2027-11-10 (+111d) |  |  |  |  |
| SDR-ST-CON-P1-6020 | Unit Substation Lean Concrete | 2027-07-10 → 2027-10-28 (+110d) | 2027-07-22 → 2027-11-10 (+111d) |  |  | 4d → -104d | SDR-ST-CON-P1-5950 SS, SDR-ST-CON-P1-5960 → SDR-ST-CON-P1-5950, SDR-ST-CON-P1-5960 |
| 3 | **Installation** | 2027-07-10 → 2027-11-11 (+124d) | 2027-07-14 → 2027-11-16 (+125d) |  |  |  |  |
| SDR-ST-CON-P1-6050 | Unit Substation Install for Street Lighting | 2027-07-10 → 2027-11-11 (+124d) | 2027-07-14 → 2027-11-16 (+125d) |  |  | 4d → -104d | SDR-ST-CON-P1-6020 SS → SDR-ST-CON-P1-6020 |
| 8 | **ROAD - 02** | 2026-11-01 → 2026-08-15 (-78d) | 2027-07-29 → 2027-11-11 (+105d) |  |  |  |  |
| 6 | **ROAD-01 From 0 to 400 m (9) 2 Way 110 mm** | 2026-11-01 → 2026-11-02 (+1d) | 2027-02-18 → 2027-02-25 (+7d) |  |  |  |  |
| 10 | **Excavation** | 2026-11-01 → 2026-11-02 (+1d) | 2026-12-26 → 2026-12-31 (+5d) |  |  |  |  |
| SDR-ST-CON-P1-1780 | Excavation for LV Cable trench Section 2 | 2026-11-21 → 2026-11-02 A (-19d) | 2026-12-07 → 2026-12-17 (+10d) |  | 0% → 30% | 9d → -45d |  |
| SDR-ST-CON-P1-1310 | Excavation for LV Cable trench Section 1 | 2026-11-01 → 2026-11-04 A (+3d) | 2026-11-17 → 2026-12-03 (+16d) |  | 0% → 30% | 9d → -75d |  |
| SDR-ST-CON-P1-2350 | Excavation for LV Cable trench Section 3 | 2026-12-08 → 2026-11-04 A (-34d) | 2026-12-26 → 2026-12-31 (+5d) |  | 0% → 30% | 9d → -45d |  |
| 11 | **Install Footings** | 2026-12-27 → 2027-01-02 (+6d) | 2027-01-12 → 2027-01-18 (+6d) |  |  |  |  |
| SDR-ST-CON-P1-2860 | Install Footings | 2026-12-27 → 2027-01-02 (+6d) | 2027-01-12 → 2027-01-18 (+6d) |  |  | 9d → -45d |  |
| 12 | **Backfilling** | 2027-01-13 → 2027-01-19 (+6d) | 2027-01-31 → 2027-02-06 (+6d) |  |  |  |  |
| SDR-ST-CON-P1-3500 | Backfilling over LV Cables of Street lighting | 2027-01-13 → 2027-01-19 (+6d) | 2027-01-31 → 2027-02-06 (+6d) |  |  | 9d → -45d |  |
| 13 | **Install pole** | 2027-02-01 → 2027-02-07 (+6d) | 2027-02-18 → 2027-02-25 (+7d) |  |  |  |  |
| SDR-ST-CON-P1-4260 | Install Pole Part 1 | 2027-02-01 → 2027-02-07 (+6d) | 2027-02-09 → 2027-02-15 (+6d) |  |  | 9d → -45d |  |
| SDR-ST-CON-P1-4570 | Install Pole Part 2 | 2027-02-10 → 2027-02-16 (+6d) | 2027-02-18 → 2027-02-25 (+7d) |  |  | 9d → -45d |  |
| 5 | **ROAD-01 From 400 to 900 m (10) 4 Way 110 mm** |  | 2027-02-13 → 2027-03-03 (+18d) |  |  |  |  |
| 10 | **Excavation** |  | 2026-11-17 → 2026-12-26 (+39d) |  |  |  |  |
| SDR-ST-CON-P1-1260 | Excavation for LV Cable trench Section 1 | 2026-11-01 A | 2026-11-17 → 2026-11-30 (+13d) |  | 0% → 30% | 6d → -69d |  |
| SDR-ST-CON-P1-1760 | Excavation for LV Cable trench Section 2 | 2026-11-01 A | 2026-11-17 → 2026-12-14 (+27d) |  | 0% → 30% | 37d → -45d | SDR-ST-CON-P1-1260 FF → SDR-ST-CON-P1-1260 FS+2d |
| SDR-ST-CON-P1-2260 | Excavation for LV Cable trench Section 3 | 2026-11-01 A | 2026-11-17 → 2026-12-26 (+39d) |  | 0% → 30% | 37d → -45d | SDR-ST-CON-P1-1760 FF → SDR-ST-CON-P1-1760 |
| 11 | **Install Footings** | 2026-11-18 → 2026-12-27 (+39d) | 2026-12-03 → 2027-01-11 (+39d) |  |  |  |  |
| SDR-ST-CON-P1-2770 | Install Footings | 2026-11-18 → 2026-12-27 (+39d) | 2026-12-03 → 2027-01-11 (+39d) |  |  | 37d → -45d |  |
| 12 | **Backfilling** | 2026-12-05 → 2027-01-12 (+38d) | 2026-12-20 → 2027-01-27 (+38d) |  |  |  |  |
| SDR-ST-CON-P1-3350 | Backfilling over LV Cables of Street lighting | 2026-12-05 → 2027-01-12 (+38d) | 2026-12-20 → 2027-01-27 (+38d) |  |  | 37d → -45d |  |
| 13 | **Install pole** | 2026-12-21 → 2027-01-28 (+38d) | 2027-02-13 → 2027-03-03 (+18d) |  |  |  |  |
| SDR-ST-CON-P1-3940 | Install Pole Part 1 | 2026-12-21 → 2027-01-28 (+38d) | 2026-12-29 → 2027-02-06 (+39d) |  |  | 37d → -45d |  |
| SDR-ST-CON-P1-4400 | Install Pole Part 2 | 2027-02-04 → 2027-02-23 (+19d) | 2027-02-13 → 2027-03-03 (+18d) |  |  | 140d → -18d |  |
| 4 | **ROAD-01 From 900 to 1239 m (11) 2 Way 110 mm** | 2026-11-01 → 2026-11-05 (+4d) | 2027-02-24 → 2027-03-03 (+7d) |  |  |  |  |
| 10 | **Excavation** | 2026-11-01 → 2026-11-05 (+4d) | 2026-12-21 → 2026-12-28 (+7d) |  |  |  |  |
| SDR-ST-CON-P1-1360 | Excavation for LV Cable trench Section 1 | 2026-11-01 → 2026-11-05 A (+4d) | 2026-11-16 → 2026-12-02 (+16d) |  | 0% → 30% | 8d → -53d |  |
| SDR-ST-CON-P1-1900 | Excavation for LV Cable trench Section 2 | 2026-11-19 → 2026-11-05 A (-14d) | 2026-12-05 → 2026-12-16 (+11d) |  | 0% → 30% | 14d → -30d |  |
| SDR-ST-CON-P1-2400 | Excavation for LV Cable trench Section 3 | 2026-12-06 → 2026-11-05 A (-31d) | 2026-12-21 → 2026-12-28 (+7d) |  | 0% → 30% | 14d → -30d |  |
| 11 | **Install Footings** | 2026-12-22 → 2026-12-29 (+7d) | 2027-01-06 → 2027-01-13 (+7d) |  |  |  |  |
| SDR-ST-CON-P1-2840 | Install Footings | 2026-12-22 → 2026-12-29 (+7d) | 2027-01-06 → 2027-01-13 (+7d) |  |  | 14d → -30d |  |
| 12 | **Backfilling** | 2027-01-07 → 2027-01-14 (+7d) | 2027-01-23 → 2027-01-30 (+7d) |  |  |  |  |
| SDR-ST-CON-P1-3470 | Backfilling over LV Cables of Street lighting | 2027-01-07 → 2027-01-14 (+7d) | 2027-01-23 → 2027-01-30 (+7d) |  |  | 14d → -30d |  |

| ID | Task | Start | Finish | Complete | Total float | Predecessors |
| --- | --- | --- | --- | --- | --- | --- |
| 13 | **Install pole** | 2027-01-24 → 2027-01-31 (+7d) | 2027-02-24 → 2027-03-03 (+7d) |  |  |  |
| SDR-ST-CON-P1-4080 | Install Pole Part 1 | 2027-01-24 → 2027-01-31 (+7d) | 2027-02-07 → 2027-02-14 (+7d) |  | 14d → -30d |  |
| SDR-ST-CON-P1-4610 | Install Pole Part 2 | 2027-02-08 → 2027-02-15 (+7d) | 2027-02-24 → 2027-03-03 (+7d) |  | 14d → -30d |  |
| 1 | **Road Crossing & Drawpits** | 2026-11-01 → 2026-08-15 (-78d) | 2027-01-30 → 2026-12-17 (-44d) |  |  |  |
| 2 | **ROAD - 02** | 2026-11-01 → 2026-08-15 (-78d) | 2027-01-30 → 2026-12-17 (-44d) |  |  |  |
| 1 | **ROAD-01 From 0 to 400 m (9) 2 Way 110 mm** | 2026-11-01 → 2026-08-15 (-78d) | 2027-01-30 → 2026-12-17 (-44d) |  |  |  |
| 1 | **Road crossing Ducts & Drawpits** | 2026-11-01 → 2026-08-15 (-78d) | 2027-01-30 → 2026-12-17 (-44d) |  |  |  |
| 1 | **Excavation** | 2026-11-01 → 2026-08-15 (-78d) | 2026-11-24 → 2026-11-08 (-16d) |  |  |  |
| SDR-ST-CON-P1-1320 | Excavation for GRP Pipes Section 1 | 2026-11-01 → 2026-08-15 A (-78d) | 2026-11-24 → 2026-11-08 A (-16d) | 0% → 100% | 10d → none |  |
| 7 | **bedding Works** | 2026-11-25 → 2026-09-08 (-78d) | 2026-12-15 → 2026-11-08 (-37d) |  |  |  |
| SDR-ST-CON-P1-1950 | Sand bedding for GRP Pipes | 2026-11-25 → 2026-09-08 A (-78d) | 2026-12-15 → 2026-11-08 A (-37d) | 0% → 100% | 10d → none |  |
| 2 | **Pipes Laying** | 2026-12-16 → 2026-09-30 (-77d) | 2027-01-03 → 2026-11-07 (-57d) |  |  |  |
| SDR-ST-CON-P1-2560 | Install ST GRP Pipes | 2026-12-16 → 2026-09-30 A (-77d) | 2027-01-03 → 2026-11-07 A (-57d) | 0% → 100% | 10d → none |  |
| 6 | **Testing** | 2027-01-04 → 2026-11-22 (-43d) | 2027-01-17 → 2026-12-05 (-43d) |  |  |  |
| SDR-ST-CON-P1-3200 | Testing ST GRP Pipes | 2027-01-04 → 2026-11-22 (-43d) | 2027-01-17 → 2026-12-05 (-43d) |  | 10d → -2d |  |
| 3 | **Backfilling** | 2027-01-18 → 2026-12-06 (-43d) | 2027-01-30 → 2026-12-17 (-44d) |  |  |  |
| SDR-ST-CON-P1-3700 | Backfilling ST GRP Pipes | 2027-01-18 → 2026-12-06 (-43d) | 2027-01-30 → 2026-12-17 (-44d) |  | 10d → -2d |  |
| 2 | **ROAD-01 From 400 to 900 m (10) 4 Way 110 mm** | 2026-11-01 → 2026-10-22 (-10d) | 2027-01-26 → 2026-12-17 (-40d) |  |  |  |
| 1 | **Road crossing Ducts & Drawpits** | 2026-11-01 → 2026-10-22 (-10d) | 2027-01-26 → 2026-12-17 (-40d) |  |  |  |
| 1 | **Excavation** | 2026-11-01 → 2026-10-22 (-10d) | 2026-11-24 → 2026-11-07 (-17d) |  |  |  |
| SDR-ST-CON-P1-1270 | Excavation for GRP Pipes Section 1 | 2026-11-01 → 2026-10-22 A (-10d) | 2026-11-24 → 2026-11-07 A (-17d) | 0% → 100% | 13d → none |  |
| 7 | **bedding Works** | 2026-11-25 → 2026-10-22 (-34d) | 2026-12-14 → 2026-11-07 (-37d) |  |  |  |
| SDR-ST-CON-P1-1870 | Sand bedding for GRP Pipes | 2026-11-25 → 2026-10-22 A (-34d) | 2026-12-14 → 2026-11-07 A (-37d) | 0% → 100% | 13d → none |  |
| 2 | **Pipes Laying** | 2026-12-15 → 2026-10-22 (-54d) | 2026-12-30 → 2026-11-07 (-53d) |  |  |  |
| SDR-ST-CON-P1-2470 | Install ST GRP Pipes | 2026-12-15 → 2026-10-22 A (-54d) | 2026-12-30 → 2026-11-07 A (-53d) | 0% → 100% | 13d → none |  |
| 6 | **Testing** | 2026-12-31 → 2026-11-22 (-39d) | 2027-01-10 → 2026-12-01 (-40d) |  |  |  |
| SDR-ST-CON-P1-2970 | Testing ST GRP Pipes | 2026-12-31 → 2026-11-22 (-39d) | 2027-01-10 → 2026-12-01 (-40d) |  | 13d → -2d |  |
| 3 | **Backfilling** | 2027-01-11 → 2026-12-02 (-40d) | 2027-01-26 → 2026-12-17 (-40d) |  |  |  |
| SDR-ST-CON-P1-3360 | Backfilling ST GRP Pipes | 2027-01-11 → 2026-12-02 (-40d) | 2027-01-26 → 2026-12-17 (-40d) |  | 13d → -2d |  |
| 3 | **ROAD-01 From 900 to 1239 m (11) 2 Way 110 mm** | 2026-11-01 → 2026-10-22 (-10d) | 2027-01-20 → 2026-12-14 (-37d) |  |  |  |
| 1 | **Road crossing Ducts & Drawpits** | 2026-11-01 → 2026-10-22 (-10d) | 2027-01-20 → 2026-12-14 (-37d) |  |  |  |
| 1 | **Excavation** | 2026-11-01 → 2026-10-22 (-10d) | 2026-11-24 → 2026-11-07 (-17d) |  |  |  |
| SDR-ST-CON-P1-1370 | Excavation for GRP Pipes Section 1 | 2026-11-01 → 2026-10-22 A (-10d) | 2026-11-24 → 2026-11-07 A (-17d) | 0% → 100% | 18d → none |  |
| 7 | **bedding Works** | 2026-11-25 → 2026-10-22 (-34d) | 2026-12-12 → 2026-11-06 (-36d) |  |  |  |
| SDR-ST-CON-P1-2060 | Sand bedding for GRP Pipes | 2026-11-25 → 2026-10-22 A (-34d) | 2026-12-12 → 2026-11-06 A (-36d) | 0% → 100% | 18d → none |  |
| 2 | **Pipes Laying** | 2026-12-13 → 2026-10-29 (-45d) | 2026-12-28 → 2026-11-07 (-51d) |  |  |  |
| SDR-ST-CON-P1-2600 | Install ST GRP Pipes | 2026-12-13 → 2026-10-29 A (-45d) | 2026-12-28 → 2026-11-07 A (-51d) | 0% → 100% | 18d → none |  |
| 6 | **Testing** | 2026-12-29 → 2026-11-22 (-37d) | 2027-01-06 → 2026-11-30 (-37d) |  |  |  |
| SDR-ST-CON-P1-3110 | Testing ST GRP Pipes | 2026-12-29 → 2026-11-22 (-37d) | 2027-01-06 → 2026-11-30 (-37d) |  | 18d → 1d |  |
| 3 | **Backfilling** | 2027-01-07 → 2026-12-01 (-37d) | 2027-01-20 → 2026-12-14 (-37d) |  |  |  |
| SDR-ST-CON-P1-3480 | Backfilling ST GRP Pipes | 2027-01-07 → 2026-12-01 (-37d) | 2027-01-20 → 2026-12-14 (-37d) |  | 18d → 1d |  |
| 11 | **Ring Main Unit** | 2027-05-06 → 2027-06-26 (+51d) | 2027-07-29 → 2027-11-09 (+103d) |  |  |  |
| 1 | **Leveling** | 2027-05-06 → 2027-06-26 (+51d) | 2027-06-03 → 2027-07-18 (+45d) |  |  |  |
| SDR-ST-CON-P1-5810 | Ring Main Unit leveling | 2027-05-06 → 2027-06-26 (+51d) | 2027-06-03 → 2027-07-18 (+45d) |  | 0d → -66d | SDR-ST-CON-P1-5760 FS+24d, SDR-ST-CON-P1-4000 → SDR-ST-CON-P1-4000, SDR-ST-CON-P1-5760 FS+25d |
| 2 | **Lean Concrete** | 2027-06-05 → 2027-09-13 (+100d) | 2027-06-27 → 2027-10-05 (+100d) |  |  |  |
| SDR-ST-CON-P1-5850 | Ring Main Unit Lean Concrete | 2027-06-05 → 2027-09-13 (+100d) | 2027-06-27 → 2027-10-05 (+100d) |  | 1d → -105d |  |
| 3 | **Installation** | 2027-07-07 → 2027-10-18 (+103d) | 2027-07-29 → 2027-11-09 (+103d) |  |  |  |
| SDR-ST-CON-P1-5970 | Ring Main Unit installation for Street Lighting | 2027-07-07 → 2027-10-18 (+103d) | 2027-07-29 → 2027-11-09 (+103d) |  | 1d → -105d | SDR-ST-CON-P1-5850 FS+8d → SDR-ST-CON-P1-5850 FS+10d |
| 12 | **Feeder Pillars** | 2027-05-06 → 2027-06-26 (+51d) | 2027-07-29 → 2027-09-19 (+52d) |  |  |  |
| 1 | **Leveling** | 2027-05-06 → 2027-06-26 (+51d) | 2027-06-03 → 2027-07-18 (+45d) |  |  |  |
| SDR-ST-CON-P1-5820 | Feeder Pillars Leveling | 2027-05-06 → 2027-06-26 (+51d) | 2027-06-03 → 2027-07-18 (+45d) |  | 0d → -66d |  |
| 2 | **Lean Concrete** | 2027-06-05 → 2027-07-19 (+44d) | 2027-06-27 → 2027-08-09 (+43d) |  |  |  |
| SDR-ST-CON-P1-5860 | Feeder Pillars Lean Concrete | 2027-06-05 → 2027-07-19 (+44d) | 2027-06-27 → 2027-08-09 (+43d) |  | 1d → -64d |  |
| 3 | **Installation** | 2027-07-07 → 2027-08-28 (+52d) | 2027-07-29 → 2027-09-19 (+52d) |  |  |  |
| SDR-ST-CON-P1-5980 | Feeder Pillars Installation | 2027-07-07 → 2027-08-28 (+52d) | 2027-07-29 → 2027-09-19 (+52d) |  | 1d → -64d | SDR-ST-CON-P1-5860 FS+8d → SDR-ST-CON-P1-5860 FS+15d |
| 13 | **KWH Frame** | 2027-05-08 → 2027-06-27 (+50d) | 2027-07-21 → 2027-10-21 (+92d) |  |  |  |
| 1 | **Leveling** | 2027-05-08 → 2027-06-27 (+50d) | 2027-06-05 → 2027-07-19 (+44d) |  |  |  |
| SDR-ST-CON-P1-5830 | KWH meter mounting frame Leveling | 2027-05-08 → 2027-06-27 (+50d) | 2027-06-05 → 2027-07-19 (+44d) |  | 0d → -66d |  |
| 2 | **Lean Concrete** | 2027-06-06 → 2027-09-06 (+92d) | 2027-06-28 → 2027-09-28 (+92d) |  |  |  |
| SDR-ST-CON-P1-5870 | KWH meter mounting frame Lean Concrete | 2027-06-06 → 2027-09-06 (+92d) | 2027-06-28 → 2027-09-28 (+92d) |  | 0d → -89d |  |
| 3 | **Installation** | 2027-06-29 → 2027-09-29 (+92d) | 2027-07-21 → 2027-10-21 (+92d) |  |  |  |
| SDR-ST-CON-P1-5910 | KWH meter mounting frame installation | 2027-06-29 → 2027-09-29 (+92d) | 2027-07-21 → 2027-10-21 (+92d) |  | 0d → -89d |  |
| 14 | **Street Lighting Sub-station** | 2027-06-06 → 2027-07-20 (+44d) | 2027-07-21 → 2027-11-11 (+113d) |  |  |  |
| 1 | **Leveling** | 2027-06-06 → 2027-07-20 (+44d) | 2027-06-28 → 2027-08-10 (+43d) |  |  |  |
| SDR-ST-CON-P1-5900 | Unit Substation Leveling | 2027-06-06 → 2027-07-20 (+44d) | 2027-06-28 → 2027-08-10 (+43d) |  | 4d → -66d |  |
| 2 | **Lean Concrete** | 2027-06-29 → 2027-09-30 (+93d) | 2027-07-21 → 2027-10-23 (+94d) |  |  |  |
| SDR-ST-CON-P1-5990 | Unit Substation Lean Concrete | 2027-06-29 → 2027-09-30 (+93d) | 2027-07-21 → 2027-10-23 (+94d) |  | 14d → -96d |  |
| 3 | **Installation** | 2027-06-29 → 2027-10-24 (+117d) | 2027-07-18 → 2027-11-11 (+116d) |  |  |  |
| SDR-ST-CON-P1-6030 | Unit Substation Install for Street Lighting | 2027-06-29 → 2027-10-24 (+117d) | 2027-07-18 → 2027-11-11 (+116d) |  | 16d → -96d | SDR-ST-CON-P1-5990 SS → SDR-ST-CON-P1-5990 |
| 5 | **TELECOMMUNICATIONS WORKS** | 2026-08-20 → 2026-08-13 (-7d) | 2027-03-21 → 2027-04-17 (+27d) |  |  |  |

| ID | Task | Start | Finish | Complete | Total float | Predecessors |
| --- | --- | --- | --- | --- | --- | --- |
| 3 | **ROAD - 01** | 2026-08-20 → 2026-08-15 (-5d) | 2027-03-21 → 2027-02-28 (-21d) |  |  |  |
| 4 | **ROAD-01 N 1 (2X3)X50 mm MH-15 to MH-16** | 2026-09-21 → 2026-08-27 (-25d) | 2027-03-01 → 2027-02-25 (-4d) |  |  |  |
| 3 | **Ducts** | 2026-11-01 → 2026-11-04 (+3d) | 2027-03-01 → 2027-02-25 (-4d) |  |  |  |
| 2 | **Excavation** | 2026-11-01 → 2026-11-04 (+3d) | 2026-12-19 → 2026-12-22 (+3d) |  |  |  |
| SDR-ST-CON-P1-1690 | Excavation for telecom trench Section 1 | 2026-11-01 → 2026-11-04 A (+3d) | 2026-11-24 → 2026-12-07 (+13d) | 0% → 30% | 1d → -42d |  |
| SDR-ST-CON-P1-2340 | Excavation for telecom trench Section 2 | 2026-11-25 → 2026-11-04 A (-21d) | 2026-12-19 → 2026-12-22 (+3d) | 0% → 30% | 1d → -42d |  |
| 5 | **Pipe laying** | 2026-12-20 → 2026-11-07 (-43d) | 2027-01-11 → 2027-01-07 (-4d) |  |  |  |
| SDR-ST-CON-P1-3070 | HDPE Pipes for Telecom Installation | 2026-12-20 → 2026-11-07 A (-43d) | 2027-01-11 → 2027-01-07 (-4d) | 0% → 25% | 1d → -42d |  |
| 6 | **Backfilling** | 2027-01-12 → 2027-01-09 (-3d) | 2027-02-03 → 2027-01-31 (-3d) |  |  |  |
| SDR-ST-CON-P1-3680 | Backfilling over HDPE Telecom Pipes | 2027-01-12 → 2027-01-09 (-3d) | 2027-02-03 → 2027-01-31 (-3d) |  | 1d → -42d |  |
| 7 | **Pulling Cable** | 2027-02-04 → 2027-02-01 (-3d) | 2027-03-01 → 2027-02-25 (-4d) |  |  |  |
| SDR-ST-CON-P1-4310 | Pulling Cable | 2027-02-04 → 2027-02-01 (-3d) | 2027-03-01 → 2027-02-25 (-4d) |  | 1d → -42d |  |
| 4 | **Manholes** | 2026-09-21 → 2026-08-27 (-25d) | 2026-12-15 → 2027-01-05 (+21d) |  |  |  |
| 1 | **Excavation** | 2026-09-21 → 2026-08-27 (-25d) |  |  |  |  |
| SDR-ST-CON-P1-1680 | Excavation for Telecom Manhole Section 1 | 2026-09-21 A → 2026-08-27 A (-25d) |  |  |  |  |
| SDR-ST-CON-P1-3080 | Sand bedding for Telecom Manhole |  |  |  |  | SDR-ST-CON-P1-2370 FF → SDR-ST-CON-P1-2370 |
| SDR-ST-CON-P1-3690 | Installation of Telecom Manhole |  |  |  |  | SDR-ST-CON-P1-1680 SS, SDR-ST-CON-P1-3080 SS → SDR-ST-CON-P1-1680, SDR-ST-CON-P1-3080 |
| 4 | **Testting** | 2026-11-01 → 2026-11-22 (+21d) | 2026-11-23 → 2026-12-14 (+21d) |  |  |  |
| SDR-ST-CON-P1-4360 | Telecom Manhole finishing works | 2026-11-01 → 2026-11-22 (+21d) | 2026-11-23 → 2026-12-14 (+21d) |  | 76d → 36d |  |
| 5 | **Backfilling** | 2026-11-24 → 2026-12-15 (+21d) | 2026-12-15 → 2027-01-05 (+21d) |  |  |  |
| SDR-ST-CON-P1-4880 | Backfilling over Telecom Manhole | 2026-11-24 → 2026-12-15 (+21d) | 2026-12-15 → 2027-01-05 (+21d) |  | 76d → 36d |  |
| 2 | **ROAD-01 From 0 to 470 m (3) (2X3)X50 mm MH-12 to MH-14** |  | 2027-03-21 → 2027-02-09 (-40d) |  |  |  |
| 3 | **Ducts** |  | 2027-02-06 → 2027-01-21 (-16d) |  |  |  |
| 2 | **Excavation** |  | 2026-11-24 → 2026-11-05 (-19d) |  |  |  |
| SDR-ST-CON-P1-2190 | Excavation for telecom trench Section 2 |  | 2026-11-24 → 2026-11-05 A (-19d) | 20% → 100% | 15d → none |  |
| 5 | **Pipe laying** | 2026-11-25 → 2026-11-01 (-24d) | 2026-12-19 → 2026-12-03 (-16d) |  |  |  |
| SDR-ST-CON-P1-2940 | HDPE Pipes for Telecom Installation | 2026-11-25 → 2026-11-01 A (-24d) | 2026-12-19 → 2026-12-03 (-16d) | 0% → 50% | 15d → -10d |  |
| 6 | **Backfilling** | 2026-12-20 → 2026-12-05 (-15d) | 2027-01-12 → 2026-12-28 (-15d) |  |  |  |
| SDR-ST-CON-P1-3770 | Backfilling over HDPE Telecom Pipes | 2026-12-20 → 2026-12-05 (-15d) | 2027-01-12 → 2026-12-28 (-15d) |  | 15d → -10d |  |
| 7 | **Pulling Cable** | 2027-01-13 → 2026-12-29 (-15d) | 2027-02-06 → 2027-01-21 (-16d) |  |  |  |
| SDR-ST-CON-P1-4370 | Pulling Cable | 2027-01-13 → 2026-12-29 (-15d) | 2027-02-06 → 2027-01-21 (-16d) |  | 15d → -10d |  |
| 4 | **Manholes** | 2026-09-30 → 2026-08-27 (-34d) | 2027-03-21 → 2027-02-09 (-40d) |  |  |  |
| 1 | **Excavation** | 2026-09-30 → 2026-08-27 (-34d) | 2026-12-10 → 2026-11-04 (-36d) |  |  |  |
| SDR-ST-CON-P1-1520 | Excavation for Telecom Manhole Section 1 | 2026-09-30 A → 2026-08-27 A (-34d) |  |  |  |  |
| SDR-ST-CON-P1-2200 | Excavation for Telecom Manhole Section 2 |  | 2026-12-10 → 2026-11-04 A (-36d) | 70% → 100% | 0.52d → none | SDR-ST-CON-P1-1520 FF → SDR-ST-CON-P1-1520 |
| 2 | **Bedding Work** |  | 2027-01-02 → 2026-11-05 (-58d) |  |  |  |
| SDR-ST-CON-P1-2950 | Sand bedding for Telecom Manhole |  | 2027-01-02 → 2026-11-05 A (-58d) | 85% → 100% | 0.52d → none |  |
| 3 | **Install Manholes** |  | 2027-01-25 → 2026-11-04 (-82d) |  |  |  |
| SDR-ST-CON-P1-3780 | Installation of Telecom Manhole |  | 2027-01-25 → 2026-11-04 A (-82d) | 85% → 100% | 0.52d → none |  |
| 4 | **Testting** | 2027-01-25 → 2026-12-23 (-33d) | 2027-02-18 → 2027-01-16 (-33d) |  |  |  |
| SDR-ST-CON-P1-4630 | Telecom Manhole finishing works | 2027-01-25 → 2026-12-23 (-33d) | 2027-02-18 → 2027-01-16 (-33d) |  | 0.52d → -5d |  |
| 5 | **Backfilling** | 2027-02-18 → 2027-01-17 (-32d) | 2027-03-21 → 2027-02-09 (-40d) |  |  |  |
| SDR-ST-CON-P1-5140 | Backfilling over Telecom Manhole | 2027-02-18 → 2027-01-17 (-32d) | 2027-03-21 → 2027-02-09 (-40d) |  | 0.52d → -5d |  |
| 1 | **ROAD-01 From 470 to 1125 m (6) (2X3)X50 mm MH-10 to MH-11** | 2026-08-20 → 2026-08-15 (-5d) | 2027-02-02 → 2027-02-18 (+16d) |  |  |  |
| 3 | **Ducts** |  | 2027-02-02 → 2027-02-18 (+16d) |  |  |  |
| 2 | **Excavation** |  | 2026-11-24 → 2026-12-10 (+16d) |  |  |  |
| SDR-ST-CON-P1-1240 | Excavation for telecom trench Section 1 |  |  |  |  | SDR-ST-CON-P1-1180 SS → SDR-ST-CON-P1-1180 SS+10d |
| SDR-ST-CON-P1-1790 | Excavation for telecom trench Section 2 | 2026-11-01 → 2026-11-05 A (+4d) | 2026-11-24 → 2026-12-10 (+16d) | 0% → 20% | 17d → -47d |  |
| 5 | **Pipe laying** | 2026-11-25 → 2026-12-12 (+17d) | 2026-12-19 → 2027-01-04 (+16d) |  |  |  |
| SDR-ST-CON-P1-2510 | HDPE Pipes for Telecom Installation | 2026-11-25 → 2026-12-12 (+17d) | 2026-12-19 → 2027-01-04 (+16d) |  | 17d → -47d |  |
| 6 | **Backfilling** | 2026-12-20 → 2027-01-05 (+16d) | 2027-01-09 → 2027-01-25 (+16d) |  |  |  |
| SDR-ST-CON-P1-3230 | Backfilling over HDPE Telecom Pipes | 2026-12-20 → 2027-01-05 (+16d) | 2027-01-09 → 2027-01-25 (+16d) |  | 17d → -47d |  |
| 7 | **Pulling Cable** | 2027-01-10 → 2027-01-26 (+16d) | 2027-02-02 → 2027-02-18 (+16d) |  |  |  |
| SDR-ST-CON-P1-4020 | Pulling Cable | 2027-01-10 → 2027-01-26 (+16d) | 2027-02-02 → 2027-02-18 (+16d) |  | 17d → -47d |  |
| 4 | **Manholes** | 2026-10-05 → 2026-08-15 (-51d) | 2027-01-18 → 2027-02-09 (+22d) |  |  |  |
| 1 | **Excavation** | 2026-10-05 → 2026-08-15 (-51d) |  |  |  |  |
| SDR-ST-CON-P1-1230 | Excavation for Telecom Manhole Section 1 | 2026-10-05 A → 2026-08-15 A (-51d) |  |  |  |  |
| SDR-ST-CON-P1-1800 | Excavation for Telecom Manhole Section 2 | 2026-10-07 A → 2026-09-08 A (-29d) |  |  |  | SDR-ST-CON-P1-1230 FF → SDR-ST-CON-P1-1230 |
| 4 | **Testting** | 2026-12-01 → 2026-12-23 (+22d) | 2026-12-24 → 2027-01-16 (+23d) |  |  |  |
| SDR-ST-CON-P1-4150 | Telecom Manhole finishing works | 2026-12-01 → 2026-12-23 (+22d) | 2026-12-24 → 2027-01-16 (+23d) |  | 47d → 8d |  |
| 5 | **Backfilling** | 2026-12-26 → 2027-01-17 (+22d) | 2027-01-18 → 2027-02-09 (+22d) |  |  |  |
| SDR-ST-CON-P1-4740 | Backfilling over Telecom Manhole | 2026-12-26 → 2027-01-17 (+22d) | 2027-01-18 → 2027-02-09 (+22d) |  | 47d → 8d |  |
| 3 | **ROAD-01 From 1125 to 1765 m (7) (2X3)X50 mm MH-8 to MH-9** |  | 2027-02-06 → 2027-02-28 (+22d) |  |  |  |
| 3 | **Ducts** |  | 2027-02-06 → 2027-02-28 (+22d) |  |  |  |
| 2 | **Excavation** |  | 2026-11-24 → 2026-12-15 (+21d) |  |  |  |
| SDR-ST-CON-P1-2290 | Excavation for telecom trench Section 2 | 2026-11-01 → 2026-11-22 (+21d) | 2026-11-24 → 2026-12-15 (+21d) |  | 29d → -27d |  |
| 5 | **Pipe laying** | 2026-11-25 → 2026-12-16 (+21d) | 2026-12-19 → 2027-01-09 (+21d) |  |  |  |
| SDR-ST-CON-P1-3010 | HDPE Pipes for Telecom Installation | 2026-11-25 → 2026-12-16 (+21d) | 2026-12-19 → 2027-01-09 (+21d) |  | 29d → -27d |  |
| 6 | **Backfilling** | 2026-12-20 → 2027-01-10 (+21d) | 2027-01-12 → 2027-02-02 (+21d) |  |  |  |
| SDR-ST-CON-P1-3630 | Backfilling over HDPE Telecom Pipes | 2026-12-20 → 2027-01-10 (+21d) | 2027-01-12 → 2027-02-02 (+21d) |  | 29d → -27d |  |

| ID | Task | Start | Finish | Complete | Total float | Predecessors |
| --- | --- | --- | --- | --- | --- | --- |
| 7 | **Pulling Cable** | 2027-01-13 → 2027-02-03 (+21d) | 2027-02-06 → 2027-02-28 (+22d) |  |  |  |
| SDR-ST-CON-P1-4240 | Pulling Cable | 2027-01-13 → 2027-02-03 (+21d) | 2027-02-06 → 2027-02-28 (+22d) |  | 29d → -27d |  |
| 4 | **Manholes** | 2026-10-01 → 2026-08-27 (-35d) | 2026-12-13 → 2027-01-03 (+21d) |  |  |  |
| 1 | **Excavation** | 2026-10-01 → 2026-08-27 (-35d) |  |  |  |  |
| SDR-ST-CON-P1-1610 | Excavation for Telecom Manhole Section 1 | 2026-10-01 A → 2026-08-27 A (-35d) |  |  |  |  |
| SDR-ST-CON-P1-2300 | Excavation for Telecom Manhole Section 2 |  |  |  |  | SDR-ST-CON-P1-1610 SS+1d → SDR-ST-CON-P1-1610 |
| 4 | **Testting** | 2026-11-01 → 2026-11-22 (+21d) | 2026-11-21 → 2026-12-12 (+21d) |  |  |  |
| SDR-ST-CON-P1-4720 | Telecom Manhole finishing works | 2026-11-01 → 2026-11-22 (+21d) | 2026-11-21 → 2026-12-12 (+21d) |  | 73d → 33d |  |
| 5 | **Backfilling** | 2026-11-22 → 2026-12-13 (+21d) | 2026-12-13 → 2027-01-03 (+21d) |  |  |  |
| SDR-ST-CON-P1-5240 | Backfilling over Telecom Manhole | 2026-11-22 → 2026-12-13 (+21d) | 2026-12-13 → 2027-01-03 (+21d) |  | 73d → 33d |  |
| 4 | **ROAD - 02** | 2026-10-01 → 2026-08-13 (-49d) | 2027-03-03 → 2027-04-17 (+45d) |  |  |  |
| 3 | **ROAD-01 From 0 to 400 m (9) (2X3)X50 mm MH-5 to MH-7** | 2026-10-01 → 2026-08-15 (-47d) | 2027-01-12 → 2027-03-29 (+76d) |  |  |  |
| 3 | **Ducts** | 2026-11-01 → 2026-11-22 (+21d) | 2027-01-12 → 2027-03-29 (+76d) |  |  |  |
| 2 | **Excavation** | 2026-11-01 → 2026-11-22 (+21d) | 2026-11-24 → 2027-01-09 (+46d) |  |  |  |
| SDR-ST-CON-P1-1340 | Excavation for telecom trench Section 1 | 2026-11-01 → 2026-11-22 (+21d) | 2026-11-24 → 2026-12-15 (+21d) |  | 27d → -75d |  |
| SDR-ST-CON-P1-1960 | Excavation for telecom trench Section 2 | 2026-11-01 → 2026-12-16 (+45d) | 2026-11-24 → 2027-01-09 (+46d) |  | 27d → -75d | SDR-ST-CON-P1-1340 FF → SDR-ST-CON-P1-1340 |
| 5 | **Pipe laying** | 2026-11-01 → 2027-01-10 (+70d) | 2026-11-24 → 2027-02-02 (+70d) |  |  |  |
| SDR-ST-CON-P1-2670 | HDPE Pipes for Telecom Installation | 2026-11-01 → 2027-01-10 (+70d) | 2026-11-24 → 2027-02-02 (+70d) |  | 27d → -75d | SDR-ST-CON-P1-1960 FF → SDR-ST-CON-P1-1960 |
| 6 | **Backfilling** | 2026-11-25 → 2027-02-03 (+70d) | 2026-12-19 → 2027-02-28 (+71d) |  |  |  |
| SDR-ST-CON-P1-3440 | Backfilling over HDPE Telecom Pipes | 2026-11-25 → 2027-02-03 (+70d) | 2026-12-19 → 2027-02-28 (+71d) |  | 27d → -75d |  |
| 7 | **Pulling Cable** | 2026-12-20 → 2027-03-01 (+71d) | 2027-01-12 → 2027-03-29 (+76d) |  |  |  |
| SDR-ST-CON-P1-4270 | Pulling Cable | 2026-12-20 → 2027-03-01 (+71d) | 2027-01-12 → 2027-03-29 (+76d) |  | 27d → -75d |  |
| 4 | **Manholes** | 2026-10-01 → 2026-08-15 (-47d) | 2026-12-19 → 2027-01-09 (+21d) |  |  |  |
| 1 | **Excavation** | 2026-10-01 → 2026-08-15 (-47d) |  |  |  |  |
| SDR-ST-CON-P1-1330 | Excavation for Telecom Manhole Section 1 | 2026-10-01 A → 2026-08-15 A (-47d) |  |  |  |  |
| SDR-ST-CON-P1-1970 | Excavation for Telecom Manhole Section 2 |  |  |  |  | SDR-ST-CON-P1-1330 FF → SDR-ST-CON-P1-1330 |
| 4 | **Testting** | 2026-11-01 → 2026-11-22 (+21d) | 2026-11-24 → 2026-12-15 (+21d) |  |  |  |
| SDR-ST-CON-P1-4380 | Telecom Manhole finishing works | 2026-11-01 → 2026-11-22 (+21d) | 2026-11-24 → 2026-12-15 (+21d) |  | 66d → 26d |  |
| 5 | **Backfilling** | 2026-11-25 → 2026-12-16 (+21d) | 2026-12-19 → 2027-01-09 (+21d) |  |  |  |
| SDR-ST-CON-P1-4900 | Backfilling over Telecom Manhole | 2026-11-25 → 2026-12-16 (+21d) | 2026-12-19 → 2027-01-09 (+21d) |  | 66d → 26d |  |
| 1 | **ROAD-01 From 400 to 900 m (10) (2X3)X50 mm MH-1 to MH-4** | 2026-10-05 → 2026-08-13 (-53d) | 2027-02-28 → 2027-03-29 (+29d) |  |  |  |
| 3 | **Ducts** | 2026-11-01 → 2026-11-22 (+21d) | 2027-02-06 → 2027-03-29 (+51d) |  |  |  |
| 2 | **Excavation** | 2026-11-01 → 2026-11-22 (+21d) | 2026-11-24 → 2027-01-09 (+46d) |  |  |  |
| SDR-ST-CON-P1-1290 | Excavation for telecom trench Section 1 | 2026-11-01 → 2026-11-22 (+21d) | 2026-11-24 → 2026-12-15 (+21d) |  | 6d → -69d |  |
| SDR-ST-CON-P1-1880 | Excavation for telecom trench Section 2 | 2026-11-01 → 2026-12-16 (+45d) | 2026-11-24 → 2027-01-09 (+46d) |  | 6d → -69d | SDR-ST-CON-P1-1290 FF → SDR-ST-CON-P1-1290 |
| 5 | **Pipe laying** | 2026-11-25 → 2027-01-10 (+46d) | 2026-12-19 → 2027-02-02 (+45d) |  |  |  |
| SDR-ST-CON-P1-2640 | HDPE Pipes for Telecom Installation | 2026-11-25 → 2027-01-10 (+46d) | 2026-12-19 → 2027-02-02 (+45d) |  | 6d → -69d |  |
| 6 | **Backfilling** | 2026-12-20 → 2027-02-03 (+45d) | 2027-01-12 → 2027-02-28 (+47d) |  |  |  |
| SDR-ST-CON-P1-3370 | Backfilling over HDPE Telecom Pipes | 2026-12-20 → 2027-02-03 (+45d) | 2027-01-12 → 2027-02-28 (+47d) |  | 6d → -69d |  |
| 7 | **Pulling Cable** | 2027-01-13 → 2027-03-01 (+47d) | 2027-02-06 → 2027-03-29 (+51d) |  |  |  |
| SDR-ST-CON-P1-4160 | Pulling Cable | 2027-01-13 → 2027-03-01 (+47d) | 2027-02-06 → 2027-03-29 (+51d) |  | 6d → -69d |  |
| 4 | **Manholes** | 2026-10-05 → 2026-08-13 (-53d) | 2027-02-28 → 2027-01-24 (-35d) |  |  |  |
| 1 | **Excavation** | 2026-10-05 → 2026-08-13 (-53d) | 2026-11-24 → 2026-11-25 (+1d) |  |  |  |
| SDR-ST-CON-P1-1280 | Excavation for Telecom Manhole Section 1 | 2026-10-05 A → 2026-08-13 A (-53d) |  |  |  |  |
| SDR-ST-CON-P1-1890 | Excavation for Telecom Manhole Section 2 |  | 2026-11-24 → 2026-11-25 (+1d) | 70% → 90% | 6d → 13d | SDR-ST-CON-P1-1280 FF → SDR-ST-CON-P1-1280 |
| 2 | **Bedding Work** |  | 2026-12-16 → 2026-11-30 (-16d) |  |  |  |
| SDR-ST-CON-P1-2650 | Sand bedding for Telecom Manhole |  | 2026-12-16 → 2026-11-30 (-16d) | 85% → 90% | 6d → 13d |  |
| 3 | **Install Manholes** |  | 2027-01-09 → 2026-12-06 (-34d) |  |  |  |
| SDR-ST-CON-P1-3380 | Installation of Telecom Manhole |  | 2027-01-09 → 2026-12-06 (-34d) | 85% → 90% | 6d → 13d |  |
| 4 | **Testting** | 2027-01-10 → 2026-12-07 (-34d) | 2027-02-02 → 2026-12-30 (-34d) |  |  |  |
| SDR-ST-CON-P1-4280 | Telecom Manhole finishing works | 2027-01-10 → 2026-12-07 (-34d) | 2027-02-02 → 2026-12-30 (-34d) |  | 6d → 13d |  |
| 5 | **Backfilling** | 2027-02-03 → 2026-12-31 (-34d) | 2027-02-28 → 2027-01-24 (-35d) |  |  |  |
| SDR-ST-CON-P1-4820 | Backfilling over Telecom Manhole | 2027-02-03 → 2026-12-31 (-34d) | 2027-02-28 → 2027-01-24 (-35d) |  | 6d → 13d |  |
| 2 | **ROAD-01 From 900 to 1239 m (11) (2)X32 mm MH-1** | 2026-11-01 → 2026-11-22 (+21d) | 2027-03-03 → 2027-04-17 (+45d) |  |  |  |
| 3 | **Ducts** | 2026-11-01 → 2026-11-22 (+21d) | 2027-03-03 → 2027-03-29 (+26d) |  |  |  |
| 2 | **Excavation** | 2026-11-01 → 2026-11-22 (+21d) | 2026-12-19 → 2027-01-09 (+21d) |  |  |  |
| SDR-ST-CON-P1-1390 | Excavation for telecom trench Section 1 | 2026-11-01 → 2026-11-22 (+21d) | 2026-11-24 → 2026-12-15 (+21d) |  | 8d → -53d |  |
| SDR-ST-CON-P1-2070 | Excavation for telecom trench Section 2 | 2026-11-25 → 2026-12-16 (+21d) | 2026-12-19 → 2027-01-09 (+21d) |  | 8d → -48d |  |
| 5 | **Pipe laying** | 2026-12-20 → 2027-01-10 (+21d) | 2027-01-12 → 2027-02-02 (+21d) |  |  |  |
| SDR-ST-CON-P1-2780 | HDPE Pipes for Telecom Installation | 2026-12-20 → 2027-01-10 (+21d) | 2027-01-12 → 2027-02-02 (+21d) |  | 8d → -48d |  |
| 6 | **Backfilling** | 2027-01-13 → 2027-02-03 (+21d) | 2027-02-06 → 2027-02-28 (+22d) |  |  |  |
| SDR-ST-CON-P1-3580 | Backfilling over HDPE Telecom Pipes | 2027-01-13 → 2027-02-03 (+21d) | 2027-02-06 → 2027-02-28 (+22d) |  | 8d → -48d |  |
| 7 | **Pulling Cable** | 2027-02-07 → 2027-03-01 (+22d) | 2027-03-03 → 2027-03-29 (+26d) |  |  |  |
| SDR-ST-CON-P1-4170 | Pulling Cable | 2027-02-07 → 2027-03-01 (+22d) | 2027-03-03 → 2027-03-29 (+26d) |  | 8d → -48d |  |
| 4 | **Manholes** | 2026-11-01 → 2026-11-22 (+21d) | 2027-02-25 → 2027-04-17 (+51d) |  |  |  |
| 1 | **Excavation** | 2026-11-01 → 2026-11-22 (+21d) | 2026-11-24 → 2027-01-09 (+46d) |  |  |  |
| SDR-ST-CON-P1-1380 | Excavation for Telecom Manhole Section 1 | 2026-11-01 → 2026-11-22 (+21d) | 2026-11-24 → 2026-12-15 (+21d) |  | 8d → -53d |  |
| SDR-ST-CON-P1-2080 | Excavation for Telecom Manhole Section 2 | 2026-11-01 → 2026-12-16 (+45d) | 2026-11-24 → 2027-01-09 (+46d) |  | 8d → -53d | SDR-ST-CON-P1-1380 FF → SDR-ST-CON-P1-1380 |
| 2 | **Bedding Work** | 2026-11-25 → 2027-01-10 (+46d) | 2026-12-16 → 2027-01-31 (+46d) |  |  |  |
| SDR-ST-CON-P1-2790 | Sand bedding for Telecom Manhole | 2026-11-25 → 2027-01-10 (+46d) | 2026-12-16 → 2027-01-31 (+46d) |  | 8d → -53d |  |

| ID | Task | Start | Finish | Total float | Predecessors |
| --- | --- | --- | --- | --- | --- |
| 3 | **Install Manholes** | 2026-12-17 → 2027-02-01 (+46d) | 2027-01-10 → 2027-02-25 (+46d) |  |  |
| SDR-ST-CON-P1-3590 | Installation of Telecom Manhole | 2026-12-17 → 2027-02-01 (+46d) | 2027-01-10 → 2027-02-25 (+46d) | 8d → -53d |  |
| 4 | **Testting** | 2027-01-11 → 2027-02-27 (+47d) | 2027-02-03 → 2027-03-27 (+52d) |  |  |
| SDR-ST-CON-P1-4500 | Telecom Manhole finishing works | 2027-01-11 → 2027-02-27 (+47d) | 2027-02-03 → 2027-03-27 (+52d) | 8d → -53d |  |
| 5 | **Backfilling** | 2027-02-04 → 2027-03-28 (+52d) | 2027-02-25 → 2027-04-17 (+51d) |  |  |
| SDR-ST-CON-P1-5000 | Backfilling over Telecom Manhole | 2027-02-04 → 2027-03-28 (+52d) | 2027-02-25 → 2027-04-17 (+51d) | 8d → -53d |  |
| 13 | **LOW VOLTAGE** |  | 2027-05-09 → 2027-06-09 (+31d) |  |  |
| 1 | **ROAD - 01** |  | 2027-04-19 → 2027-05-05 (+16d) |  |  |
| 1 | **ROAD-01 From 470 to 1125 m (6)** |  | 2027-04-19 → 2027-05-05 (+16d) |  |  |
| 6 | **Excavation** |  | 2026-12-19 → 2027-01-13 (+25d) |  |  |
| SDR-ST-CON-P1-1670 | Excavation Works Part 1 |  | 2026-11-24 → 2026-12-20 (+26d) | 46d → -9d | SDR-ST-CON-P1-1180 SS, SDR-ST-CON-P1-1570 FF → SDR-ST-CON-P1-1180, SDR-ST-CON-P1-1570 |
| SDR-ST-CON-P1-6230 | Excavation Works Part 2 | 2026-11-25 → 2026-12-21 (+26d) | 2026-12-19 → 2027-01-13 (+25d) | 46d → -9d |  |
| 7 | **Pipe laying** | 2026-12-20 → 2027-01-14 (+25d) | 2027-01-11 → 2027-02-06 (+26d) |  |  |
| SDR-ST-CON-P1-2330 | Pipe Laying | 2026-12-20 → 2027-01-14 (+25d) | 2027-01-11 → 2027-02-06 (+26d) | 46d → -9d |  |
| 8 | **Backfilling** | 2027-01-12 → 2027-02-07 (+26d) | 2027-02-04 → 2027-03-03 (+27d) |  |  |
| SDR-ST-CON-P1-2990 | Backfilling Works | 2027-01-12 → 2027-02-07 (+26d) | 2027-02-04 → 2027-03-03 (+27d) | 57d → 12d |  |
| 9 | **Pulling Cable** | 2027-03-27 → 2027-04-12 (+16d) | 2027-04-19 → 2027-05-05 (+16d) |  |  |
| SDR-ST-CON-P1-3880 | Pulling Cable | 2027-03-27 → 2027-04-12 (+16d) | 2027-04-19 → 2027-05-05 (+16d) | 20d → -17d |  |
| 2 | **ROAD - 02** |  | 2027-05-09 → 2027-06-09 (+31d) |  |  |
| 1 | **ROAD-01 From 400 to 900 m (10)** |  | 2027-04-05 → 2027-04-18 (+13d) |  |  |
| 6 | **Excavation** |  | 2026-12-19 → 2027-01-19 (+31d) |  |  |
| SDR-ST-CON-P1-1740 | Excavation Works Part 1 |  | 2026-11-24 → 2026-12-26 (+32d) | 53d → -2d | SDR-ST-CON-P1-1260 FF → SDR-ST-CON-P1-1260, SDR-ST-CON-P1-1670 SS+7d |
| SDR-ST-CON-P1-6240 | Excavation Works Part 2 | 2026-11-25 → 2026-12-27 (+32d) | 2026-12-19 → 2027-01-19 (+31d) | 53d → -2d |  |
| 7 | **Pipe laying** | 2026-12-20 → 2027-01-20 (+31d) | 2027-01-11 → 2027-02-11 (+31d) |  |  |
| SDR-ST-CON-P1-2440 | Pipe Laying | 2026-12-20 → 2027-01-20 (+31d) | 2027-01-11 → 2027-02-11 (+31d) | 53d → -2d |  |
| 8 | **Backfilling** | 2027-01-12 → 2027-02-13 (+32d) | 2027-02-04 → 2027-03-14 (+38d) |  |  |
| SDR-ST-CON-P1-3170 | Backfilling Works | 2027-01-12 → 2027-02-13 (+32d) | 2027-02-04 → 2027-03-14 (+38d) | 53d → -2d |  |
| 9 | **Pulling Cable** | 2027-03-08 → 2027-03-25 (+17d) | 2027-04-05 → 2027-04-18 (+13d) |  |  |
| SDR-ST-CON-P1-4040 | Pulling Cable | 2027-03-08 → 2027-03-25 (+17d) | 2027-04-05 → 2027-04-18 (+13d) | 32d → -2d |  |
| 4 | **ROAD-01 From 900 to 1239 m (11)** |  | 2027-05-09 → 2027-06-09 (+31d) |  |  |
| 6 | **Excavation** |  | 2026-12-19 → 2027-01-19 (+31d) |  |  |
| SDR-ST-CON-P1-1750 | Excavation Works Part 1 |  | 2026-11-24 → 2026-12-26 (+32d) | 53d → 4d | SDR-ST-CON-P1-1360 FF → SDR-ST-CON-P1-1360 SS, SDR-ST-CON-P1-1740 SS+7d |
| SDR-ST-CON-P1-6250 | Excavation Works Part 2 | 2026-11-25 → 2026-12-27 (+32d) | 2026-12-19 → 2027-01-19 (+31d) | 53d → 4d |  |
| 7 | **Pipe laying** | 2026-12-20 → 2027-01-20 (+31d) | 2027-01-11 → 2027-02-11 (+31d) |  |  |
| SDR-ST-CON-P1-2450 | Pipe Laying | 2026-12-20 → 2027-01-20 (+31d) | 2027-01-11 → 2027-02-11 (+31d) | 53d → 4d |  |
| 8 | **Backfilling** | 2027-01-12 → 2027-02-13 (+32d) | 2027-02-04 → 2027-03-14 (+38d) |  |  |
| SDR-ST-CON-P1-3180 | Backfilling Works | 2027-01-12 → 2027-02-13 (+32d) | 2027-02-04 → 2027-03-14 (+38d) | 53d → 4d |  |
| 9 | **Pulling Cable** | 2027-04-14 → 2027-05-11 (+27d) | 2027-05-09 → 2027-06-09 (+31d) |  |  |
| SDR-ST-CON-P1-4070 | Pulling Cable | 2027-04-14 → 2027-05-11 (+27d) | 2027-05-09 → 2027-06-09 (+31d) | 15.52d → -34d |  |
| 10 | **PORTABLE WATER** |  | 2027-04-24 → 2027-04-29 (+5d) |  |  |
| 2 | **ROAD - 01** |  | 2027-04-24 → 2027-04-29 (+5d) |  |  |
| 2 | **ROAD-01 From 0 to 470 m (3)** |  | 2027-04-24 → 2027-04-29 (+5d) |  |  |
| 7 | **Pipes Work** |  | 2026-11-26 → 2026-11-08 (-18d) |  |  |
| SDR-ST-CON-P1-3270 | Install PW 315 mm HDPE Pipe |  |  |  | SDR-ST-CON-P1-2490 → SDR-ST-CON-P1-3930, SDR-ST-CON-P1-3760, SDR-ST-PRO-MS-1110, SDR-ST-CON-P1-2490 |
| SDR-ST-CON-P1-4190 | Testing of PW HDPE Pipe 315 mm. |  |  |  | SDR-ST-CON-P1-3270 → SDR-ST-CON-P1-4400, SDR-ST-CON-P1-3270 |
| 9 | **Backfilling** |  | 2026-11-26 → 2026-11-08 (-18d) |  |  |
| SDR-ST-CON-P1-4800 | Backfilling of PW HDPE Pipe 315 mm. |  | 2026-11-26 A → 2026-11-08 A (-18d) |  |  |
| 3 | **Valve Chambers & Valves & Fire Hydrant** | 2026-11-01 → 2026-11-22 (+21d) | 2027-04-24 → 2027-04-29 (+5d) |  |  |
| 3 | **Excavation** | 2026-11-01 → 2026-11-22 (+21d) | 2026-12-24 → 2027-01-16 (+23d) |  |  |
| SDR-ST-CON-P1-1490 | Excavation for Valve Chambers Section 1 | 2026-11-01 → 2026-11-22 (+21d) | 2026-11-24 → 2026-12-15 (+21d) | 26d → -35d |  |
| SDR-ST-CON-P1-2150 | Excavation for Valve Chambers Section 2 | 2026-12-01 → 2026-12-23 (+22d) | 2026-12-24 → 2027-01-16 (+23d) | 21d → -41d |  |
| 1 | **bedding Works** | 2026-12-26 → 2027-01-17 (+22d) | 2027-01-18 → 2027-02-09 (+22d) |  |  |
| SDR-ST-CON-P1-2850 | Sand bedding for Valve Chambers | 2026-12-26 → 2027-01-17 (+22d) | 2027-01-18 → 2027-02-09 (+22d) | 21d → -41d |  |
| 4 | **Install Chambers & Valves & Fire Hydrant** | 2027-01-19 → 2027-02-10 (+22d) | 2027-02-11 → 2027-03-07 (+24d) |  |  |
| SDR-ST-CON-P1-3560 | Install Chambers & Valves | 2027-01-19 → 2027-02-10 (+22d) | 2027-02-11 → 2027-03-07 (+24d) | 21d → -41d |  |
| 2 | **Testing** | 2027-03-02 → 2027-03-08 (+6d) | 2027-03-30 → 2027-04-05 (+6d) |  |  |
| SDR-ST-CON-P1-4470 | Testing for Chambers & Valves | 2027-03-02 → 2027-03-08 (+6d) | 2027-03-30 → 2027-04-05 (+6d) | 7d → -41d |  |
| 6 | **Backfilling** | 2027-03-31 → 2027-04-06 (+6d) | 2027-04-24 → 2027-04-29 (+5d) |  |  |
| SDR-ST-CON-P1-5030 | Backfilling for Chambers & Valves | 2027-03-31 → 2027-04-06 (+6d) | 2027-04-24 → 2027-04-29 (+5d) | 7d → -41d |  |
| 1 | **ROAD-01 From 470 to 1125 m (6)** |  | 2027-04-01 → 2027-04-22 (+21d) |  |  |
| SDR-ST-CON-P1-3290 | Install PW 315 mm HDPE Pipe |  |  |  | SDR-ST-CON-P1-2690 → SDR-ST-PRO-MS-1110, SDR-ST-CON-P1-2690 |
| SDR-ST-CON-P1-4030 | Testing of PW HDPE Pipe 315 mm. |  |  |  | SDR-ST-CON-P1-3290 → SDR-ST-CON-P1-4570, SDR-ST-CON-P1-3290 |
| 3 | **Valve Chambers & Valves & Fire Hydrant** | 2026-11-01 → 2026-11-22 (+21d) | 2027-04-01 → 2027-04-22 (+21d) |  |  |
| 3 | **Excavation** | 2026-11-01 → 2026-11-22 (+21d) | 2026-12-19 → 2027-01-09 (+21d) |  |  |
| SDR-ST-CON-P1-1420 | Excavation for Valve Chambers Section 1 | 2026-11-01 → 2026-11-22 (+21d) | 2026-11-24 → 2026-12-15 (+21d) | 10d → -30d |  |
| SDR-ST-CON-P1-2100 | Excavation for Valve Chambers Section 2 | 2026-11-25 → 2026-12-16 (+21d) | 2026-12-19 → 2027-01-09 (+21d) | 10d → -30d |  |
| 1 | **bedding Works** | 2026-12-20 → 2027-01-10 (+21d) | 2027-01-12 → 2027-02-02 (+21d) |  |  |
| SDR-ST-CON-P1-2820 | Sand bedding for Valve Chambers | 2026-12-20 → 2027-01-10 (+21d) | 2027-01-12 → 2027-02-02 (+21d) | 10d → -30d |  |
| 4 | **Install Chambers & Valves & Fire Hydrant** | 2027-01-13 → 2027-02-03 (+21d) | 2027-02-06 → 2027-02-28 (+22d) |  |  |
| SDR-ST-CON-P1-3660 | Install Chambers & Valves | 2027-01-13 → 2027-02-03 (+21d) | 2027-02-06 → 2027-02-28 (+22d) | 10d → -30d |  |

| ID | Task | Start | Finish | Total float | Predecessors |
| --- | --- | --- | --- | --- | --- |
| 2 | **Testing** | 2027-02-07 → 2027-03-01 (+22d) | 2027-03-03 → 2027-03-29 (+26d) |  |  |
| SDR-ST-CON-P1-4550 | Testing for Chambers & Valves | 2027-02-07 → 2027-03-01 (+22d) | 2027-03-03 → 2027-03-29 (+26d) | 10d → -30d |  |
| 6 | **Backfilling** | 2027-03-04 → 2027-03-30 (+26d) | 2027-04-01 → 2027-04-22 (+21d) |  |  |
| SDR-ST-CON-P1-5100 | Backfilling for Chambers & Valves | 2027-03-04 → 2027-03-30 (+26d) | 2027-04-01 → 2027-04-22 (+21d) | 10d → -30d |  |
| 3 | **ROAD-01 From 1125 to 1765 m (7)** |  | 2027-04-14 → 2027-04-22 (+8d) |  |  |
| SDR-ST-CON-P1-2130 | Excavation for PW HDPE Pipes 315 mm Section 2 |  |  |  | SDR-ST-CON-P1-1630 → SDR-ST-PRO-MS-1010, SDR-ST-CON-P1-1630 |
| SDR-ST-CON-P1-3490 | Install PW 315 mm HDPE Pipe |  |  |  | SDR-ST-CON-P1-2810 → SDR-ST-PRO-MS-1110, SDR-ST-CON-P1-2810 |
| SDR-ST-CON-P1-3950 | Testing of PW HDPE Pipe 315 mm. |  |  |  | SDR-ST-CON-P1-3490 → SDR-ST-CON-P1-4370, SDR-ST-CON-P1-3490 |
| 3 | **Valve Chambers & Valves & Fire Hydrant** | 2026-11-01 → 2026-11-22 (+21d) | 2027-04-14 → 2027-04-22 (+8d) |  |  |
| 3 | **Excavation** | 2026-11-01 → 2026-11-22 (+21d) | 2026-12-19 → 2027-01-09 (+21d) |  |  |
| SDR-ST-CON-P1-1640 | Excavation for Valve Chambers Section 1 | 2026-11-01 → 2026-11-22 (+21d) | 2026-11-24 → 2026-12-15 (+21d) | 15d → -48d |  |
| SDR-ST-CON-P1-2230 | Excavation for Valve Chambers Section 2 | 2026-11-25 → 2026-12-16 (+21d) | 2026-12-19 → 2027-01-09 (+21d) | 15d → -48d |  |
| 1 | **bedding Works** | 2026-12-20 → 2027-01-10 (+21d) | 2027-01-12 → 2027-02-02 (+21d) |  |  |
| SDR-ST-CON-P1-2900 | Sand bedding for Valve Chambers | 2026-12-20 → 2027-01-10 (+21d) | 2027-01-12 → 2027-02-02 (+21d) | 15d → -48d |  |
| 4 | **Install Chambers & Valves & Fire Hydrant** | 2027-01-13 → 2027-02-03 (+21d) | 2027-02-06 → 2027-02-28 (+22d) |  |  |
| SDR-ST-CON-P1-3640 | Install Chambers & Valves | 2027-01-13 → 2027-02-03 (+21d) | 2027-02-06 → 2027-02-28 (+22d) | 15d → -48d |  |
| 2 | **Testing** | 2027-02-07 → 2027-03-01 (+22d) | 2027-03-03 → 2027-03-29 (+26d) |  |  |
| SDR-ST-CON-P1-4510 | Testing for Chambers & Valves | 2027-02-07 → 2027-03-01 (+22d) | 2027-03-03 → 2027-03-29 (+26d) | 15d → -41d |  |
| 6 | **Backfilling** | 2027-03-21 → 2027-03-30 (+9d) | 2027-04-14 → 2027-04-22 (+8d) |  |  |
| SDR-ST-CON-P1-5070 | Backfilling for Chambers & Valves | 2027-03-21 → 2027-03-30 (+9d) | 2027-04-14 → 2027-04-22 (+8d) | 4.51d → -41d |  |
| 3 | **ROAD - 02** |  | 2027-03-27 → 2027-04-18 (+22d) |  |  |
| 3 | **ROAD-01 From 0 to 400 m (9)** |  | 2027-03-27 → 2027-04-18 (+22d) |  |  |
| 7 | **Pipes Work** |  | 2027-03-07 → 2027-02-16 (-19d) |  |  |
| 2 | **Pipes Laying** |  | 2026-11-24 → 2026-11-08 (-16d) |  |  |
| SDR-ST-CON-P1-3650 | Install PW 315 mm HDPE Pipe |  | 2026-11-24 A → 2026-11-08 A (-16d) |  | SDR-ST-CON-P1-3130 SS, SDR-ST-PRO-MS-1110 FF → SDR-ST-PRO-MS-1110, SDR-ST-CON-P1-3130 |
| 5 | **Testing** |  | 2026-11-29 → 2026-12-03 (+4d) |  |  |
| SDR-ST-CON-P1-4340 | Testing of PW HDPE Pipe 315 mm. |  | 2026-11-29 → 2026-12-03 (+4d) | 90d → 51d |  |
| 9 | **Backfilling** |  | 2027-03-07 → 2027-02-16 (-19d) |  |  |
| SDR-ST-CON-P1-4910 | Backfilling of PW HDPE Pipe 315 mm. |  | 2027-03-07 → 2027-02-16 (-19d) | 28d → 21d |  |
| 3 | **Valve Chambers & Valves & Fire Hydrant** | 2026-11-01 → 2026-11-22 (+21d) | 2027-03-27 → 2027-04-18 (+22d) |  |  |
| 3 | **Excavation** | 2026-11-01 → 2026-11-22 (+21d) | 2026-12-16 → 2027-01-06 (+21d) |  |  |
| SDR-ST-CON-P1-1940 | Excavation for Valve Chambers Section 1 | 2026-11-01 → 2026-11-22 (+21d) | 2026-11-23 → 2026-12-14 (+21d) | 18d → -50d |  |
| SDR-ST-CON-P1-2630 | Excavation for Valve Chambers Section 2 | 2026-11-24 → 2026-12-15 (+21d) | 2026-12-16 → 2027-01-06 (+21d) | 18d → -50d |  |
| 1 | **bedding Works** | 2026-12-17 → 2027-01-07 (+21d) | 2027-01-09 → 2027-01-30 (+21d) |  |  |
| SDR-ST-CON-P1-3400 | Sand bedding for Valve Chambers | 2026-12-17 → 2027-01-07 (+21d) | 2027-01-09 → 2027-01-30 (+21d) | 18d → -50d |  |
| 4 | **Install Chambers & Valves & Fire Hydrant** | 2027-01-10 → 2027-01-31 (+21d) | 2027-02-01 → 2027-02-23 (+22d) |  |  |
| SDR-ST-CON-P1-4330 | Install Chambers & Valves | 2027-01-10 → 2027-01-31 (+21d) | 2027-02-01 → 2027-02-23 (+22d) | 18d → -50d |  |
| 2 | **Testing** | 2027-02-07 → 2027-02-24 (+17d) | 2027-02-23 → 2027-03-16 (+21d) |  |  |
| SDR-ST-CON-P1-5060 | Testing for Chambers & Valves | 2027-02-07 → 2027-02-24 (+17d) | 2027-02-23 → 2027-03-16 (+21d) | 17d → -19d |  |
| 6 | **Backfilling** | 2027-02-27 → 2027-03-25 (+26d) | 2027-03-27 → 2027-04-18 (+22d) |  |  |
| SDR-ST-CON-P1-5730 | Backfilling for Chambers & Valves | 2027-02-27 → 2027-03-25 (+26d) | 2027-03-27 → 2027-04-18 (+22d) | 15d → -26d |  |
| 2 | **ROAD-01 From 400 to 900 m (10)** |  | 2027-03-27 → 2027-04-18 (+22d) |  |  |
| 7 | **Pipes Work** |  | 2026-11-21 → 2026-11-30 (+9d) |  |  |
| SDR-ST-CON-P1-3570 | Install PW 315 mm HDPE Pipe |  |  |  | SDR-ST-CON-P1-3060 SS, SDR-ST-PRO-MS-1110 FF → SDR-ST-PRO-MS-1110, SDR-ST-CON-P1-3060 |
| 5 | **Testing** |  | 2026-11-21 → 2026-11-30 (+9d) |  |  |
| SDR-ST-CON-P1-4060 | Testing of PW HDPE Pipe 315 mm. |  | 2026-11-21 → 2026-11-30 (+9d) | 90d → 32d |  |
| 3 | **Valve Chambers & Valves & Fire Hydrant** | 2026-11-01 → 2026-11-22 (+21d) | 2027-03-27 → 2027-04-18 (+22d) |  |  |
| 3 | **Excavation** | 2026-11-01 → 2026-11-22 (+21d) | 2026-12-23 → 2027-01-14 (+22d) |  |  |
| SDR-ST-CON-P1-1860 | Excavation for Valve Chambers Section 1 | 2026-11-01 → 2026-11-22 (+21d) | 2026-11-23 → 2026-12-14 (+21d) | 21d → -54d |  |
| SDR-ST-CON-P1-2550 | Excavation for Valve Chambers Section 2 | 2026-12-01 → 2026-12-23 (+22d) | 2026-12-23 → 2027-01-14 (+22d) | 15d → -51d |  |
| 1 | **bedding Works** | 2026-12-24 → 2027-01-16 (+23d) | 2027-01-16 → 2027-02-07 (+22d) |  |  |
| SDR-ST-CON-P1-3310 | Sand bedding for Valve Chambers | 2026-12-24 → 2027-01-16 (+23d) | 2027-01-16 → 2027-02-07 (+22d) | 15d → -51d |  |
| 4 | **Install Chambers & Valves & Fire Hydrant** | 2027-01-17 → 2027-02-08 (+22d) | 2027-02-08 → 2027-03-03 (+23d) |  |  |
| SDR-ST-CON-P1-4210 | Install Chambers & Valves | 2027-01-17 → 2027-02-08 (+22d) | 2027-02-08 → 2027-03-03 (+23d) | 15d → -51d |  |
| 2 | **Testing** | 2027-02-09 → 2027-03-04 (+23d) | 2027-02-25 → 2027-03-24 (+27d) |  |  |
| SDR-ST-CON-P1-4990 | Testing for Chambers & Valves | 2027-02-09 → 2027-03-04 (+23d) | 2027-02-25 → 2027-03-24 (+27d) | 15d → -31d |  |
| 6 | **Backfilling** | 2027-02-27 → 2027-03-25 (+26d) | 2027-03-27 → 2027-04-18 (+22d) |  |  |
| SDR-ST-CON-P1-5710 | Backfilling for Chambers & Valves | 2027-02-27 → 2027-03-25 (+26d) | 2027-03-27 → 2027-04-18 (+22d) | 22d → -25d |  |
| 1 | **ROAD-01 From 900 to 1239 m (11)** |  | 2027-03-25 → 2027-04-11 (+17d) |  |  |
| 7 | **Pipes Work** |  | 2026-12-21 → 2027-02-08 (+49d) |  |  |
| SDR-ST-CON-P1-2610 | Excavation for PW HDPE Pipes 315 mm Section 2 |  |  |  | SDR-ST-CON-P1-2010 → SDR-ST-PRO-MS-1010, SDR-ST-CON-P1-2010 |
| 8 | **bedding Works** |  | 2026-11-11 → 2026-12-27 (+46d) |  |  |
| SDR-ST-CON-P1-3220 | Sand bedding for PW HDPE Pipes 315 mm |  | 2026-11-11 → 2026-12-27 (+46d) | 46d → -18d |  |
| 2 | **Pipes Laying** |  | 2026-11-11 → 2026-12-30 (+49d) |  |  |
| SDR-ST-CON-P1-3610 | Install PW 315 mm HDPE Pipe |  | 2026-11-11 → 2026-12-30 (+49d) | 46d → -18d | SDR-ST-CON-P1-3220 SS, SDR-ST-PRO-MS-1110 FF → SDR-ST-PRO-MS-1110, SDR-ST-CON-P1-3220 |
| 5 | **Testing** | 2026-11-12 → 2026-12-31 (+49d) | 2026-11-28 → 2027-01-16 (+49d) |  |  |
| SDR-ST-CON-P1-4090 | Testing of PW HDPE Pipe 315 mm. | 2026-11-12 → 2026-12-31 (+49d) | 2026-11-28 → 2027-01-16 (+49d) | 46d → -18d |  |
| 9 | **Backfilling** | 2026-11-29 → 2027-01-17 (+49d) | 2026-12-21 → 2027-02-08 (+49d) |  |  |
| SDR-ST-CON-P1-4660 | Backfilling of PW HDPE Pipe 315 mm. | 2026-11-29 → 2027-01-17 (+49d) | 2026-12-21 → 2027-02-08 (+49d) | 46d → -18d |  |
| 3 | **Valve Chambers & Valves & Fire Hydrant** | 2026-11-01 → 2026-11-22 (+21d) | 2027-03-25 → 2027-04-11 (+17d) |  |  |

| ID | Task | Start | Finish | Duration | Complete | Total float | Predecessors |
| --- | --- | --- | --- | --- | --- | --- | --- |
| 3 | **Excavation** | 2026-11-01 → 2026-11-22 (+21d) | 2026-12-16 → 2027-01-06 (+21d) |  |  |  |  |
| SDR-ST-CON-P1-2020 | Excavation for Valve Chambers Section 1 | 2026-11-01 → 2026-11-22 (+21d) | 2026-11-23 → 2026-12-14 (+21d) |  |  | 10d → -58d |  |
| SDR-ST-CON-P1-2740 | Excavation for Valve Chambers Section 2 | 2026-11-24 → 2026-12-15 (+21d) | 2026-12-16 → 2027-01-06 (+21d) |  |  | 10d → -58d |  |
| 1 | **bedding Works** | 2026-12-17 → 2027-01-07 (+21d) | 2027-01-09 → 2027-01-30 (+21d) |  |  |  |  |
| SDR-ST-CON-P1-3550 | Sand bedding for Valve Chambers | 2026-12-17 → 2027-01-07 (+21d) | 2027-01-09 → 2027-01-30 (+21d) |  |  | 10d → -58d |  |
| 4 | **Install Chambers & Valves & Fire Hydrant** | 2027-01-11 → 2027-02-01 (+21d) | 2027-02-02 → 2027-02-24 (+22d) |  |  |  |  |
| SDR-ST-CON-P1-4460 | Install Chambers & Valves | 2027-01-11 → 2027-02-01 (+21d) | 2027-02-02 → 2027-02-24 (+22d) |  |  | 10d → -58d |  |
| 2 | **Testing** | 2027-02-07 → 2027-02-25 (+18d) | 2027-02-23 → 2027-03-17 (+22d) |  |  |  |  |
| SDR-ST-CON-P1-5190 | Testing for Chambers & Valves | 2027-02-07 → 2027-02-25 (+18d) | 2027-02-23 → 2027-03-17 (+22d) |  |  | 18d → -31d |  |
| 6 | **Backfilling** | 2027-02-25 → 2027-03-18 (+21d) | 2027-03-25 → 2027-04-11 (+17d) |  |  |  |  |
| SDR-ST-CON-P1-5750 | Backfilling for Chambers & Valves | 2027-02-25 → 2027-03-18 (+21d) | 2027-03-25 → 2027-04-11 (+17d) |  |  | 17d → -31d |  |
| 7 | **SEWARAGE NETWORK** |  | 2027-04-13 → 2027-04-25 (+12d) |  |  |  |  |
| 6 | **ROAD - 01** |  | 2027-03-07 → 2027-04-25 (+49d) |  |  |  |  |
| 2 | **ROAD-01 From 0 to 470 m (3) 110 mm HDPE** |  | 2027-02-28 → 2027-03-08 (+8d) |  |  |  |  |
| 7 | **Pipes Work** |  | 2026-12-30 → 2027-01-07 (+8d) |  |  |  |  |
| SDR-ST-CON-P1-1540 | Excavation for GRP Pipe 200mm Diameter Section 1 |  |  | 21d → 20d |  |  |  |
| 5 | **bedding Works** |  | 2026-11-17 → 2026-11-01 (-16d) |  |  |  |  |
| SDR-ST-CON-P1-3050 | Sand bedding for GRP Pipe 200mm Diameter |  | 2026-11-17 → 2026-11-01 A (-16d) |  | 95% → 100% | 34d → none | SDR-ST-CON-P1-2380 SS → SDR-ST-CON-P1-2380 |
| 2 | **Pipes Laying** |  | 2026-11-11 → 2026-11-08 (-3d) |  |  |  |  |
| SDR-ST-CON-P1-3710 | 200 mm GRP Pipe Laying |  | 2026-11-11 → 2026-11-08 A (-3d) | 21d → 20d | 95% → 100% | 34d → none | SDR-ST-CON-P1-3050 SS, SDR-ST-PRO-MS-1130 FF → SDR-ST-PRO-MS-1130, SDR-ST-CON-P1-3050 |
| 3 | **Testing** | 2026-11-12 → 2026-11-22 (+10d) | 2026-12-06 → 2026-12-14 (+8d) |  |  |  |  |
| SDR-ST-CON-P1-4590 | Testing of 200 mm GRP Pipe. | 2026-11-12 → 2026-11-22 (+10d) | 2026-12-06 → 2026-12-14 (+8d) | 21d → 20d |  | 34d → 2d |  |
| 6 | **Backfilling** | 2026-12-07 → 2026-12-15 (+8d) | 2026-12-30 → 2027-01-07 (+8d) |  |  |  |  |
| SDR-ST-CON-P1-5570 | Backfilling of 200 mm GRP Pipe. | 2026-12-07 → 2026-12-15 (+8d) | 2026-12-30 → 2027-01-07 (+8d) |  |  | 34d → 2d |  |
| 4 | **Manholes** | 2026-10-01 → 2026-08-27 (-35d) | 2027-02-28 → 2027-03-08 (+8d) |  |  |  |  |
| 1 | **Excavation** | 2026-10-01 → 2026-08-27 (-35d) |  |  |  |  |  |
| SDR-ST-CON-P1-1550 | Excavation for manhole. Section 1 | 2026-10-01 A → 2026-08-27 A (-35d) |  |  |  |  |  |
| 4 | **Testing** | 2027-01-10 → 2027-01-18 (+8d) | 2027-02-02 → 2027-02-10 (+8d) |  |  |  |  |
| SDR-ST-CON-P1-4790 | Testing | 2027-01-10 → 2027-01-18 (+8d) | 2027-02-02 → 2027-02-10 (+8d) |  |  | 41d → 6d |  |
| 5 | **Backfilling** | 2027-02-03 → 2027-02-11 (+8d) | 2027-02-28 → 2027-03-08 (+8d) |  |  |  |  |
| SDR-ST-CON-P1-5720 | Backfilling | 2027-02-03 → 2027-02-11 (+8d) | 2027-02-28 → 2027-03-08 (+8d) |  |  | 41d → 6d |  |
| 1 | **ROAD-01 From 470 to 1125 m (6) 110 mm HDPE** |  | 2027-02-28 → 2027-03-08 (+8d) |  |  |  |  |
| 7 | **Pipes Work** |  | 2027-01-23 → 2027-01-07 (-16d) |  |  |  |  |
| 5 | **bedding Works** |  | 2026-11-17 → 2026-11-03 (-14d) |  |  |  |  |
| SDR-ST-CON-P1-2720 | Sand bedding for GRP Pipe 200mm Diameter |  | 2026-11-17 → 2026-11-03 A (-14d) |  | 95% → 100% | 45d → none |  |
| 2 | **Pipes Laying** |  | 2026-12-05 → 2026-11-08 (-27d) |  |  |  |  |
| SDR-ST-CON-P1-3300 | 200 mm GRP Pipe Laying |  | 2026-12-05 → 2026-11-08 A (-27d) |  | 95% → 100% | 45d → none |  |
| 3 | **Testing** | 2026-12-06 → 2026-11-22 (-14d) | 2026-12-29 → 2026-12-14 (-15d) |  |  |  |  |
| SDR-ST-CON-P1-4120 | Testing of 200 mm GRP Pipe. | 2026-12-06 → 2026-11-22 (-14d) | 2026-12-29 → 2026-12-14 (-15d) | 21d → 20d |  | 45d → 8d |  |
| 6 | **Backfilling** | 2026-12-30 → 2026-12-15 (-15d) | 2027-01-23 → 2027-01-07 (-16d) |  |  |  |  |
| SDR-ST-CON-P1-4970 | Backfilling of 200 mm GRP Pipe. | 2026-12-30 → 2026-12-15 (-15d) | 2027-01-23 → 2027-01-07 (-16d) |  |  | 45d → 8d |  |
| 4 | **Manholes** | 2026-10-01 → 2026-08-26 (-36d) | 2027-02-28 → 2027-03-08 (+8d) |  |  |  |  |
| 1 | **Excavation** | 2026-10-01 → 2026-08-26 (-36d) |  |  |  |  |  |
| SDR-ST-CON-P1-1440 | Excavation for manhole. Section 1 | 2026-10-01 A → 2026-08-26 A (-36d) |  |  |  |  |  |
| SDR-ST-CON-P1-2120 | Excavation for manhole. Section 2 |  |  |  |  |  | SDR-ST-CON-P1-1440 FF → SDR-ST-CON-P1-1440 |
| SDR-ST-CON-P1-2870 | Sand bedding for manhole. |  |  |  |  |  | SDR-ST-CON-P1-2120 FF → SDR-ST-CON-P1-2120 |
| 4 | **Testing** | 2027-01-10 → 2027-01-18 (+8d) | 2027-02-02 → 2027-02-10 (+8d) |  |  |  |  |
| SDR-ST-CON-P1-4710 | Testing | 2027-01-10 → 2027-01-18 (+8d) | 2027-02-02 → 2027-02-10 (+8d) |  |  | 27d → -30d |  |
| 5 | **Backfilling** | 2027-02-03 → 2027-02-11 (+8d) | 2027-02-28 → 2027-03-08 (+8d) |  |  |  |  |
| SDR-ST-CON-P1-5700 | Backfilling | 2027-02-03 → 2027-02-11 (+8d) | 2027-02-28 → 2027-03-08 (+8d) |  |  | 34d → 5d |  |
| 3 | **ROAD-01 From 1125 to 1765 m (7) 110 mm HDPE** |  | 2027-03-07 → 2027-04-25 (+49d) |  |  |  |  |
| 7 | **Pipes Work** |  | 2027-02-09 → 2027-02-04 (-5d) |  |  |  |  |
| 1 | **Excavation** |  | 2026-11-19 → 2026-11-26 (+7d) |  |  |  |  |
| SDR-ST-CON-P1-2240 | Excavation for GRP Pipe 200mm Diameter Section 2 |  | 2026-11-19 → 2026-11-26 (+7d) |  |  | 28d → -16d |  |
| 5 | **bedding Works** |  | 2026-12-06 → 2026-12-01 (-5d) |  |  |  |  |
| SDR-ST-CON-P1-2830 | Sand bedding for GRP Pipe 200mm Diameter |  | 2026-12-06 → 2026-12-01 (-5d) |  |  | 28d → -16d |  |
| 2 | **Pipes Laying** |  | 2026-12-22 → 2026-12-17 (-5d) |  |  |  |  |
| SDR-ST-CON-P1-3420 | 200 mm GRP Pipe Laying |  | 2026-12-22 → 2026-12-17 (-5d) |  |  | 28d → -16d |  |
| 3 | **Testing** | 2026-12-23 → 2026-12-19 (-4d) | 2027-01-16 → 2027-01-11 (-5d) |  |  |  |  |
| SDR-ST-CON-P1-4180 | Testing of 200 mm GRP Pipe. | 2026-12-23 → 2026-12-19 (-4d) | 2027-01-16 → 2027-01-11 (-5d) |  |  | 28d → -16d |  |
| 6 | **Backfilling** | 2027-01-17 → 2027-01-12 (-5d) | 2027-02-09 → 2027-02-04 (-5d) |  |  |  |  |
| SDR-ST-CON-P1-5020 | Backfilling of 200 mm GRP Pipe. | 2027-01-17 → 2027-01-12 (-5d) | 2027-02-09 → 2027-02-04 (-5d) |  |  | 28d → -16d |  |
| 4 | **Manholes** | 2026-11-01 → 2026-11-22 (+21d) | 2027-03-07 → 2027-04-25 (+49d) |  |  |  |  |
| 1 | **Excavation** | 2026-11-01 → 2026-11-22 (+21d) | 2026-11-24 → 2027-01-09 (+46d) |  |  |  |  |
| SDR-ST-CON-P1-1660 | Excavation for manhole. Section 1 | 2026-11-01 → 2026-11-22 (+21d) | 2026-11-24 → 2026-12-15 (+21d) |  |  | 41.7d → -62d |  |
| SDR-ST-CON-P1-2310 | Excavation for manhole. Section 2 | 2026-11-01 → 2026-12-16 (+45d) | 2026-11-24 → 2027-01-09 (+46d) |  |  | 41.7d → -62d | SDR-ST-CON-P1-1660 FF → SDR-ST-CON-P1-1660 |
| 2 | **bedding Works** | 2026-11-25 → 2027-01-10 (+46d) | 2026-12-19 → 2027-02-02 (+45d) |  |  |  |  |
| SDR-ST-CON-P1-3030 | Sand bedding for manhole. | 2026-11-25 → 2027-01-10 (+46d) | 2026-12-19 → 2027-02-02 (+45d) |  |  | 41.7d → -62d |  |
| 3 | **Install Manholes** | 2027-01-10 → 2027-02-03 (+24d) | 2027-02-02 → 2027-02-28 (+26d) |  |  |  |  |
| SDR-ST-CON-P1-3910 | Manhole Installation | 2027-01-10 → 2027-02-03 (+24d) | 2027-02-02 → 2027-02-28 (+26d) |  |  | 23.7d → -62d |  |

| ID | Task | Start | Finish | Duration | Complete | Total float | Predecessors |
| --- | --- | --- | --- | --- | --- | --- | --- |
| 4 | **Testing** | 2027-01-10 → 2027-03-01 (+50d) | 2027-02-02 → 2027-03-29 (+55d) |  |  |  |  |
| SDR-ST-CON-P1-4830 | Testing | 2027-01-10 → 2027-03-01 (+50d) | 2027-02-02 → 2027-03-29 (+55d) |  |  | 23.7d → -62d | SDR-ST-CON-P1-3910 FF → SDR-ST-CON-P1-3910 |
| 5 | **Backfilling** | 2027-02-09 → 2027-04-05 (+55d) | 2027-03-07 → 2027-04-25 (+49d) |  |  |  |  |
| SDR-ST-CON-P1-5740 | Backfilling | 2027-02-09 → 2027-04-05 (+55d) | 2027-03-07 → 2027-04-25 (+49d) | 21.3d → 18d |  | 23.7d → -62d |  |
| 1 | **ROAD - 02** | 2026-09-07 → 2026-08-30 (-8d) | 2027-04-13 → 2027-04-08 (-5d) |  |  |  |  |
| 1 | **ROAD-01 From 400 to 900 m (10) 110 mm HDPE** | 2026-09-07 → 2026-08-30 (-8d) | 2027-04-13 → 2027-03-08 (-36d) |  |  |  |  |
| 7 | **Pipes Work** |  | 2027-03-03 → 2027-02-08 (-23d) |  |  |  |  |
| 1 | **Excavation** |  | 2026-12-06 → 2026-12-10 (+4d) |  |  |  |  |
| SDR-ST-CON-P1-1810 | Excavation for GRP Pipe 200mm Diameter Section 1 |  | 2026-11-12 → 2026-12-03 (+21d) |  | 95% → 98% | 18d → -6d |  |
| SDR-ST-CON-P1-2530 | Excavation for GRP Pipe 200mm Diameter Section 2 |  | 2026-12-06 → 2026-12-10 (+4d) |  | 95% → 98% | 18d → -6d |  |
| 5 | **bedding Works** |  | 2026-12-22 → 2026-12-15 (-7d) |  |  |  |  |
| SDR-ST-CON-P1-3210 | Sand bedding for GRP Pipe 200mm Diameter |  | 2026-12-22 → 2026-12-15 (-7d) |  |  | 18d → -6d |  |
| 2 | **Pipes Laying** | 2026-11-24 → 2026-10-25 (-30d) | 2027-01-12 → 2026-12-21 (-22d) |  |  |  |  |
| SDR-ST-CON-P1-3800 | 200 mm GRP Pipe Laying | 2026-11-24 A → 2026-10-25 A (-30d) | 2027-01-12 → 2026-12-21 (-22d) |  | 95% → 99% | 18d → -6d |  |
| 3 | **Testing** | 2027-01-13 → 2026-12-22 (-22d) | 2027-02-06 → 2027-01-14 (-23d) |  |  |  |  |
| SDR-ST-CON-P1-4580 | Testing of 200 mm GRP Pipe. | 2027-01-13 → 2026-12-22 (-22d) | 2027-02-06 → 2027-01-14 (-23d) |  |  | 18d → -6d |  |
| 6 | **Backfilling** | 2027-02-07 → 2027-01-16 (-22d) | 2027-03-03 → 2027-02-08 (-23d) |  |  |  |  |
| SDR-ST-CON-P1-5500 | Backfilling of 200 mm GRP Pipe. | 2027-02-07 → 2027-01-16 (-22d) | 2027-03-03 → 2027-02-08 (-23d) |  |  | 18d → -6d |  |
| 4 | **Manholes** | 2026-10-01 → 2026-08-30 (-32d) | 2027-04-13 → 2027-03-08 (-36d) |  |  |  |  |
| 1 | **Excavation** | 2026-10-01 → 2026-08-30 (-32d) |  |  |  |  |  |
| SDR-ST-CON-P1-1820 | Excavation for manhole. Section 1 | 2026-10-01 A → 2026-08-30 A (-32d) |  |  |  |  |  |
| SDR-ST-CON-P1-2580 | Excavation for manhole. Section 2 |  |  |  |  |  | SDR-ST-CON-P1-1820 FF → SDR-ST-CON-P1-1820 |
| SDR-ST-CON-P1-4390 | Manhole Installation |  |  |  |  |  | SDR-ST-CON-P1-2580, SDR-ST-CON-P1-3410, SDR-ST-PRO-MS-1140 FF → SDR-ST-PRO-MS-1140, SDR-ST-CON-P1-2580, SDR-ST-CON-P1-3410 |
| 4 | **Testing** | 2027-01-10 → 2027-01-18 (+8d) | 2027-02-02 → 2027-02-10 (+8d) |  |  |  |  |
| SDR-ST-CON-P1-5120 | Testing | 2027-01-10 → 2027-01-18 (+8d) | 2027-02-02 → 2027-02-10 (+8d) |  |  | 15d → -29d |  |
| 5 | **Backfilling** | 2027-03-20 → 2027-02-11 (-37d) | 2027-04-13 → 2027-03-08 (-36d) |  |  |  |  |
| SDR-ST-CON-P1-5770 | Backfilling | 2027-03-20 → 2027-02-11 (-37d) | 2027-04-13 → 2027-03-08 (-36d) |  |  | 0.52d → 5d | SDR-ST-CON-P1-5120, SDR-ST-CON-P1-5140 FS-1d, SDR-ST-PRO-MS-1050 → SDR-ST-CON-P1-5140, SDR-ST-PRO-MS-1050, SDR-ST-CON-P1-5120 |
| 3 | **ROAD-01 From 900 to 1239 m (11) 110 mm HDPE** |  | 2027-03-31 → 2027-04-08 (+8d) |  |  |  |  |
| 7 | **Pipes Work** |  | 2027-03-06 → 2027-03-31 (+25d) |  |  |  |  |
| 1 | **Excavation** |  | 2026-12-05 → 2026-12-26 (+21d) |  |  |  |  |
| SDR-ST-CON-P1-2030 | Excavation for GRP Pipe 200mm Diameter Section 1 |  | 2026-11-12 → 2026-12-03 (+21d) |  | 80% → 85% | 16d → -45d |  |
| SDR-ST-CON-P1-2700 | Excavation for GRP Pipe 200mm Diameter Section 2 | 2026-11-17 → 2026-12-08 (+21d) | 2026-12-05 → 2026-12-26 (+21d) |  |  | 16d → -45d |  |
| 5 | **bedding Works** | 2026-12-06 → 2026-12-27 (+21d) | 2026-12-16 → 2027-01-06 (+21d) |  |  |  |  |
| SDR-ST-CON-P1-3330 | Sand bedding for GRP Pipe 200mm Diameter | 2026-12-06 → 2026-12-27 (+21d) | 2026-12-16 → 2027-01-06 (+21d) |  |  | 16d → -45d |  |
| 2 | **Pipes Laying** | 2026-12-17 → 2027-01-07 (+21d) | 2027-01-10 → 2027-01-31 (+21d) |  |  |  |  |
| SDR-ST-CON-P1-3750 | 200 mm GRP Pipe Laying | 2026-12-17 → 2027-01-07 (+21d) | 2027-01-10 → 2027-01-31 (+21d) |  |  | 16d → -45d |  |
| 3 | **Testing** | 2027-01-11 → 2027-02-01 (+21d) | 2027-02-03 → 2027-02-25 (+22d) |  |  |  |  |
| SDR-ST-CON-P1-4670 | Testing of 200 mm GRP Pipe. | 2027-01-11 → 2027-02-01 (+21d) | 2027-02-03 → 2027-02-25 (+22d) |  |  | 16d → -45d |  |
| 6 | **Backfilling** | 2027-02-09 → 2027-03-03 (+22d) | 2027-03-06 → 2027-03-31 (+25d) |  |  |  |  |
| SDR-ST-CON-P1-5670 | Backfilling of 200 mm GRP Pipe. | 2027-02-09 → 2027-03-03 (+22d) | 2027-03-06 → 2027-03-31 (+25d) |  |  | 16d → -45d |  |
| 4 | **Manholes** | 2026-10-19 → 2026-09-09 (-40d) | 2027-03-31 → 2027-04-08 (+8d) |  |  |  |  |
| 1 | **Excavation** | 2026-10-19 → 2026-09-09 (-40d) | 2026-11-24 → 2026-11-26 (+2d) |  |  |  |  |
| SDR-ST-CON-P1-2040 | Excavation for manhole. Section 1 | 2026-10-19 A → 2026-09-09 A (-40d) |  |  |  |  |  |
| SDR-ST-CON-P1-2760 | Excavation for manhole. Section 2 |  | 2026-11-24 → 2026-11-26 (+2d) |  | 80% → 85% | 33d → -13d |  |
| 2 | **bedding Works** | 2026-11-25 → 2026-11-28 (+3d) | 2026-12-19 → 2026-12-21 (+2d) |  |  |  |  |
| SDR-ST-CON-P1-3620 | Sand bedding for manhole. | 2026-11-25 → 2026-11-28 (+3d) | 2026-12-19 → 2026-12-21 (+2d) |  |  | 33d → -13d |  |
| 3 | **Install Manholes** | 2027-01-10 → 2027-01-18 (+8d) | 2027-02-02 → 2027-02-10 (+8d) |  |  |  |  |
| SDR-ST-CON-P1-4560 | Manhole Installation | 2027-01-10 → 2027-01-18 (+8d) | 2027-02-02 → 2027-02-10 (+8d) |  |  | 15d → -29d |  |
| 4 | **Testing** | 2027-02-03 → 2027-02-11 (+8d) | 2027-02-28 → 2027-03-08 (+8d) |  |  |  |  |
| SDR-ST-CON-P1-5440 | Testing | 2027-02-03 → 2027-02-11 (+8d) | 2027-02-28 → 2027-03-08 (+8d) |  |  | 15d → -29d |  |
| 5 | **Backfilling** | 2027-03-03 → 2027-03-16 (+13d) | 2027-03-31 → 2027-04-08 (+8d) |  |  |  |  |
| SDR-ST-CON-P1-5800 | Backfilling | 2027-03-03 → 2027-03-16 (+13d) | 2027-03-31 → 2027-04-08 (+8d) |  |  | 15d → -29d |  |
| 11 | **STORM WATER** |  | 2027-03-17 → 2027-05-27 (+71d) |  |  |  |  |
| 2 | **ROAD N...** |  | 2027-03-17 → 2027-05-27 (+71d) |  |  |  |  |
| 8 | **Pipes Works** |  | 2027-03-17 → 2027-05-27 (+71d) |  |  |  |  |
| SDR-ST-CON-P1-1460 | Excavation for GRP Pipes Section 1 |  |  | 21d → 18d |  |  |  |
| SDR-ST-CON-P1-2910 | Install ST GRP Pipes |  |  |  |  |  | SDR-ST-CON-P1-2170 SS, SDR-ST-PRO-MS-1010 FF → SDR-ST-PRO-MS-1010, SDR-ST-CON-P1-2170 |
| 6 | **Testing** |  | 2026-12-24 → 2026-12-27 (+3d) |  |  |  |  |
| SDR-ST-CON-P1-3830 | Testing ST GRP Pipes |  | 2026-12-24 → 2026-12-27 (+3d) |  |  | 44d → -8d |  |
| 3 | **Backfilling** |  | 2027-03-17 → 2027-05-27 (+71d) |  |  |  |  |
| SDR-ST-CON-P1-4760 | Backfilling ST GRP Pipes |  | 2027-03-17 → 2027-05-27 (+71d) |  |  | 21d → -78d |  |
| 3 | **Package-3** | 2026-11-01 → 2026-11-22 (+21d) | 2027-08-06 → 2027-12-05 (+121d) |  |  |  |  |
| 1 | **Site Works** | 2026-11-01 → 2026-11-22 (+21d) | 2026-11-23 → 2026-12-31 (+38d) |  |  |  |  |
| 1 | **Earthworks** | 2026-11-01 → 2026-11-22 (+21d) | 2026-11-23 → 2026-12-31 (+38d) |  |  |  |  |
| 2 | **Excavation** | 2026-11-01 → 2026-11-22 (+21d) | 2026-11-23 → 2026-12-14 (+21d) |  |  |  |  |
| SDR-ST-CON-P3-1000 | Excavation in all types of soil to the required depth includes removal of waste material | 2026-11-01 → 2026-11-22 (+21d) | 2026-11-23 → 2026-12-14 (+21d) |  |  | 10d → -113d |  |
| 1 | **Fill** | 2026-11-01 → 2026-12-15 (+44d) | 2026-11-17 → 2026-12-31 (+44d) |  |  |  |  |
| SDR-ST-CON-P3-1010 | Backfilling with improved and select fill material from the site or imported | 2026-11-01 → 2026-12-15 (+44d) | 2026-11-17 → 2026-12-31 (+44d) |  |  | 10d → -113d | SDR-ST-CON-P3-1000 SS, SDR-ST-MILS-1000 → SDR-ST-CON-P3-1000, SDR-ST-MILS-1000 |
| 2 | **Platform Works** | 2026-11-01 → 2027-01-02 (+62d) | 2027-07-31 → 2027-11-18 (+110d) |  |  |  |  |
| 1 | **Platform** | 2026-11-01 → 2027-01-02 (+62d) | 2027-04-22 → 2027-07-04 (+73d) |  |  |  |  |

| ID | Task | Start | Finish | Duration | Total float | Predecessors | Other |
| --- | --- | --- | --- | --- | --- | --- | --- |
| 1 | **Earthworks** | 2026-11-01 → 2027-01-02 (+62d) | 2026-12-09 → 2027-02-09 (+62d) |  |  |  |  |
| 1 | **Excavation** | 2026-11-01 → 2027-01-02 (+62d) | 2026-11-18 → 2027-01-19 (+62d) |  |  |  |  |
| SDR-ST-CON-P3-1020 | Excavation in all types of soil to the required depth includes removal of waste material | 2026-11-01 → 2027-01-02 (+62d) | 2026-11-18 → 2027-01-19 (+62d) |  | 10d → -113d | SDR-ST-CON-P3-1010 SS, SDR-ST-MILS-1000 → SDR-ST-CON-P3-1010, SDR-ST-MILS-1000 | resources SIC- Cost [48000]; Mason [94.95 h]; Mason Helper [94.95 h]; Excavator [15 h]; Excavator Operator [94.95 h]; Dumper Operator [94.95 h]; Dumper Truck [100 h]; Loader [100 h]; Loader Operator [94.95 h]; Supervisor [37.98 h] → SIC- Cost [48000]; Excavator [15 h]; Excavator Operator [94.95 h]; Dumper Operator [94.95 h]; Dumper Truck [100 h]; Loader [100 h]; Loader Operator [94.95 h]; Supervisor [37.98 h]; Mason [94.95 h]; Mason Helper [94.95 h] |
| 2 | **Fill** | 2026-11-19 → 2027-01-20 (+62d) | 2026-12-09 → 2027-02-09 (+62d) |  |  |  |  |
| SDR-ST-CON-P3-1030 | Backfilling with improved and select fill material from the site or imported Part 1 | 2026-11-19 → 2027-01-20 (+62d) | 2026-12-09 → 2027-02-09 (+62d) |  | 10d → -113d |  | resources SIC- Cost [53100]; Mason [94.95 h]; Mason Helper [94.95 h]; Excavator [37.86 h]; Excavator Operator [94.95 h]; Dumper Operator [94.95 h]; Dumper Truck [100 h]; Loader [100 h]; Loader Operator [94.95 h]; Supervisor [37.98 h] → SIC- Cost [53100]; Excavator [37.86 h]; Excavator Operator [94.95 h]; Dumper Operator [94.95 h]; Dumper Truck [100 h]; Loader [100 h]; Loader Operator [94.95 h]; Supervisor [37.98 h]; Mason [94.95 h]; Mason Helper [94.95 h] |
| SDR-ST-CON-P3-1040 | Backfilling with improved and select fill material from the site or imported Part 2 | 2026-11-19 → 2027-01-20 (+62d) | 2026-12-07 → 2027-02-07 (+62d) |  | 12d → -113d |  | resources SIC- Cost [53100]; Mason [94.95 h]; Mason Helper [94.95 h]; Excavator [16.25 h]; Excavator Operator [94.95 h]; Dumper Operator [94.95 h]; Dumper Truck [100 h]; Loader [100 h]; Loader Operator [94.95 h]; Supervisor [37.98 h] → SIC- Cost [53100]; Excavator [16.25 h]; Excavator Operator [94.95 h]; Dumper Operator [94.95 h]; Dumper Truck [100 h]; Loader [100 h]; Loader Operator [94.95 h]; Supervisor [37.98 h]; Mason [94.95 h]; Mason Helper [94.95 h] |
| 3 | **Concrete Works** | 2026-12-10 → 2027-02-10 (+62d) | 2027-04-22 → 2027-07-04 (+73d) |  |  |  |  |
| 1 | **Foundations** | 2026-12-10 → 2027-02-10 (+62d) | 2027-01-19 → 2027-04-20 (+91d) |  |  |  |  |
| SDR-ST-CON-P3-1060 | Pouring Concrete under Foundation 100 mm thickness lean | 2026-12-10 → 2027-02-10 (+62d) | 2026-12-21 → 2027-02-21 (+62d) |  | 10d → -113d | SDR-ST-CON-P3-1030, SDR-ST-MILS-1000, SDR-ST-CON-P3-1030 FF, SDR-ST-CON-P3-1040 → SDR-ST-CON-P3-1030 FF, SDR-ST-CON-P3-1040 FS+2d, SDR-ST-CON-P3-1030, SDR-ST-MILS-1000 | resources SIC- Cost [82000.1]; Supervisor [37.98 h]; Mason [94.95 h]; Mason Helper [94.95 h]; Helper [94.95 h]; Carpenter [94.95 h] → SIC- Cost [82000.1]; Helper [94.95 h]; Supervisor [37.98 h]; Mason [94.95 h]; Mason Helper [94.95 h]; Carpenter [94.95 h] |
| SDR-ST-CON-P3-1080 | Provide and lay 2 layers of waterproofing bitumenous membrane 4mm below footings | 2026-12-22 → 2027-02-23 (+63d) | 2026-12-30 → 2027-03-03 (+63d) |  | 10d → -113d |  | resources SIC- Cost [135300]; Mason [94.95 h]; Mason Helper [94.95 h]; Plumbing Helper [94.95 h]; Plumber [94.95 h] → SIC- Cost [135300]; Plumbing Helper [94.95 h]; Plumber [94.95 h]; Mason [94.95 h]; Mason Helper [94.95 h] |
| SDR-ST-CON-P3-1100 | Pouring Concrete for protecting waterproofing under the foundation 50 mm thickness | 2027-01-02 → 2027-03-06 (+63d) | 2027-01-12 → 2027-03-21 (+68d) |  | 10d → -113d |  | resources SIC- Cost [45100]; Supervisor [37.98 h]; Mason [37.98 h]; Mason Helper [37.98 h]; Helper [37.98 h]; Carpenter [37.98 h] → SIC- Cost [45100]; Helper [37.98 h]; Supervisor [37.98 h]; Mason [37.98 h]; Mason Helper [37.98 h]; Carpenter [37.98 h] |
| 1 | **Footings** | 2027-01-02 → 2027-03-22 (+79d) | 2027-01-19 → 2027-04-20 (+91d) |  |  |  |  |
| SDR-ST-CON-P3-1130 | Pouring concrete for footings Part 1 | 2027-01-02 → 2027-03-22 (+79d) | 2027-01-12 → 2027-04-01 (+79d) |  | 10d → -113d | SDR-ST-CON-P3-1100 SS, SDR-ST-MILS-1000, SDR-ST-CON-P3-1070 SS → SDR-ST-CON-P3-1070, SDR-ST-CON-P3-1100, SDR-ST-MILS-1000 | resources SIC- Cost [309753]; Supervisor [37.98 h]; Mason [37.98 h]; Mason Helper [37.98 h]; Helper [37.98 h]; Carpenter [37.98 h] → SIC- Cost [309753]; Helper [37.98 h]; Supervisor [37.98 h]; Mason [37.98 h]; Mason Helper [37.98 h]; Carpenter [37.98 h] |
| SDR-ST-CON-P3-1150 | Pouring concrete for footings Part 2 | 2027-01-02 → 2027-04-03 (+91d) | 2027-01-12 → 2027-04-13 (+91d) |  | 10d → -113d | SDR-ST-CON-P3-1130 SS, SDR-ST-MILS-1000 → SDR-ST-CON-P3-1130, SDR-ST-MILS-1000 | resources SIC- Cost [309753]; Supervisor [128.18 h]; Mason [128.18 h]; Mason Helper [128.18 h]; Helper [128.18 h]; Carpenter [128.18 h] → SIC- Cost [309753]; Helper [128.18 h]; Supervisor [128.18 h]; Mason [128.18 h]; Mason Helper [128.18 h]; Carpenter [128.18 h] |
| SDR-ST-CON-P3-1180 | Pouring concrete for footings Part 3 | 2027-01-02 → 2027-04-03 (+91d) | 2027-01-19 → 2027-04-20 (+91d) |  | 10d → -113d |  | resources SIC- Cost [309754]; Supervisor [128.18 h]; Mason [128.18 h]; Mason Helper [128.18 h]; Helper [128.18 h]; Carpenter [128.18 h] → SIC- Cost [309754]; Helper [128.18 h]; Supervisor [128.18 h]; Mason [128.18 h]; Mason Helper [128.18 h]; Carpenter [128.18 h] |
| 2 | **Substructure** | 2027-01-20 → 2027-04-21 (+91d) | 2027-02-17 → 2027-05-25 (+97d) |  |  |  |  |
| 1 | **Basement** | 2027-01-23 → 2027-04-24 (+91d) | 2027-02-06 → 2027-05-08 (+91d) |  |  |  |  |
| SDR-ST-CON-P3-1200 | Pouring concrete for Basement Part 1 | 2027-01-23 → 2027-04-24 (+91d) | 2027-02-02 → 2027-05-04 (+91d) |  | 10d → -113d |  | resources SIC- Cost [214175]; Supervisor [199.87 h]; Mason [199.87 h]; Mason Helper [199.87 h]; Helper [199.87 h]; Carpenter [199.87 h] → SIC- Cost [214175]; Helper [199.87 h]; Supervisor [199.87 h]; Mason [199.87 h]; Mason Helper [199.87 h]; Carpenter [199.87 h] |
| SDR-ST-CON-P3-1220 | Pouring concrete for Basement Part 2 | 2027-01-28 → 2027-04-29 (+91d) | 2027-02-06 → 2027-05-08 (+91d) |  | 23d → -92d |  | resources SIC- Cost [200]; Supervisor [128.18 h]; Mason [199.87 h]; Mason Helper [199.87 h]; Helper [199.87 h]; Carpenter [199.87 h] → SIC- Cost [200]; Helper [199.87 h]; Supervisor [128.18 h]; Mason [199.87 h]; Mason Helper [199.87 h]; Carpenter [199.87 h] |
| 2 | **Tank** | 2027-01-20 → 2027-04-21 (+91d) | 2027-02-02 → 2027-05-04 (+91d) |  |  |  |  |
| SDR-ST-CON-P3-1210 | Pouring concrete for Tank Part 1 | 2027-01-20 → 2027-04-21 (+91d) | 2027-01-26 → 2027-04-27 (+91d) |  | 26d → -89d |  | resources SIC- Cost [214175]; Supervisor [199.87 h]; Mason [199.87 h]; Mason Helper [199.87 h]; Helper [199.87 h]; Carpenter [199.87 h] → SIC- Cost [214175]; Helper [199.87 h]; Supervisor [199.87 h]; Mason [199.87 h]; Mason Helper [199.87 h]; Carpenter [199.87 h] |
| SDR-ST-CON-P3-1230 | Pouring concrete for Tank Part 2 | 2027-01-27 → 2027-04-28 (+91d) | 2027-02-02 → 2027-05-04 (+91d) |  | 26d → -89d |  | resources SIC- Cost [214175]; Supervisor [199.87 h]; Mason [199.87 h]; Mason Helper [199.87 h]; Helper [199.87 h]; Carpenter [199.87 h] → SIC- Cost [214175]; Helper [199.87 h]; Supervisor [199.87 h]; Mason [199.87 h]; Mason Helper [199.87 h]; Carpenter [199.87 h] |
| 3 | **Retaining Walls** | 2027-02-03 → 2027-05-05 (+91d) | 2027-02-17 → 2027-05-25 (+97d) |  |  |  |  |
| SDR-ST-CON-P3-1190 | Pouring concrete for Retaining Walls Part 1 | 2027-02-03 → 2027-05-05 (+91d) | 2027-02-10 → 2027-05-12 (+91d) |  | 10d → -113d |  | resources SIC- Cost [214175]; Supervisor [39.97 h]; Mason [39.97 h]; Mason Helper [39.97 h]; Helper [39.97 h]; Carpenter [39.97 h] → SIC- Cost [214175]; Helper [39.97 h]; Supervisor [39.97 h]; Mason [39.97 h]; Mason Helper [39.97 h]; Carpenter [39.97 h] |
| SDR-ST-CON-P3-1250 | Pouring concrete for Retaining Walls Part 2 | 2027-02-11 → 2027-05-13 (+91d) | 2027-02-17 → 2027-05-25 (+97d) |  | 10d → -113d |  | resources SIC- Cost [214175]; Supervisor [199.87 h]; Mason [199.87 h]; Mason Helper [199.87 h]; Helper [199.87 h]; Carpenter [199.87 h] → SIC- Cost [214175]; Helper [199.87 h]; Supervisor [199.87 h]; Mason [199.87 h]; Mason Helper [199.87 h]; Carpenter [199.87 h] |
| 3 | **Waterproofing Vertical** | 2027-02-18 → 2027-05-26 (+97d) | 2027-03-15 → 2027-06-08 (+85d) |  |  |  |  |
| SDR-ST-CON-P3-1300 | lay 2 layers of waterproofing bitumenous membrane 4mm including protection board for substructure vertical Part 1 | 2027-02-18 → 2027-05-26 (+97d) | 2027-02-23 → 2027-05-30 (+96d) |  | 10d → -113d | SDR-ST-CON-P3-1250, SDR-ST-CON-P1-3640, SDR-ST-CON-P1-4210, SDR-ST-CON-P1-4160 → SDR-ST-CON-P1-3640, SDR-ST-CON-P1-4210, SDR-ST-CON-P1-4160, SDR-ST-CON-P3-1250, SDR-ST-MILS-1000 | resources SIC- Cost [263720]; Mason [149.55 h]; Mason Helper [149.55 h]; Plumbing Helper [1144.9 h]; Plumber [1144.9 h] → SIC- Cost [263720]; Plumbing Helper [1144.9 h]; Plumber [1144.9 h]; Mason [149.55 h]; Mason Helper [149.55 h] |
| SDR-ST-CON-P3-1370 | lay 2 layers of waterproofing bitumenous membrane 4mm including protection board for substructure vertical Part 2 | 2027-03-02 → 2027-05-31 (+90d) | 2027-03-06 → 2027-06-03 (+89d) |  | 5d → -113d |  | resources SIC- Cost [263720]; Mason [39.97 h]; Mason Helper [39.97 h]; Plumbing Helper [39.97 h]; Plumber [39.97 h] → SIC- Cost [263720]; Plumbing Helper [39.97 h]; Plumber [39.97 h]; Mason [39.97 h]; Mason Helper [39.97 h] |
| SDR-ST-CON-P3-1430 | lay 2 layers of waterproofing bitumenous membrane 4mm including protection board for substructure vertical Part 3 | 2027-03-07 → 2027-06-05 (+90d) | 2027-03-15 → 2027-06-08 (+85d) |  | 5d → -113d |  | resources SIC- Cost [263720]; Mason [128.18 h]; Mason Helper [128.18 h]; Plumbing Helper [128.18 h]; Plumber [128.18 h] → SIC- Cost [263720]; Plumbing Helper [128.18 h]; Plumber [128.18 h]; Mason [128.18 h]; Mason Helper [128.18 h] |
| 4 | **Neck Walls** | 2027-03-17 → 2027-06-10 (+85d) | 2027-03-23 → 2027-06-16 (+85d) |  |  |  |  |
| SDR-ST-CON-P3-1270 | Pouring concrete for Neck Walls Part 1 | 2027-03-17 → 2027-06-10 (+85d) | 2027-03-22 → 2027-06-15 (+85d) |  | 5d → -113d |  | resources SIC- Cost [214175]; Supervisor [39.97 h]; Mason [39.97 h]; Mason Helper [39.97 h]; Helper [39.97 h]; Carpenter [39.97 h] → SIC- Cost [214175]; Helper [39.97 h]; Supervisor [39.97 h]; Mason [39.97 h]; Mason Helper [39.97 h]; Carpenter [39.97 h] |
| SDR-ST-CON-P3-1290 | Pouring concrete for Neck Walls Part 2 | 2027-03-18 → 2027-06-12 (+86d) | 2027-03-23 → 2027-06-16 (+85d) |  | 5d → -113d |  | resources SIC- Cost [214175]; Supervisor [1998.7 h]; Mason [4477.08 h]; Mason Helper [39.97 h]; Helper [39.97 h]; Carpenter [39.97 h] → SIC- Cost [214175]; Helper [39.97 h]; Supervisor [1998.7 h]; Mason [4477.08 h]; Mason Helper [39.97 h]; Carpenter [39.97 h] |
| 5 | **Preparation for Slab** | 2027-03-24 → 2027-06-17 (+85d) | 2027-04-01 → 2027-06-21 (+81d) |  |  |  |  |
| SDR-ST-CON-P3-1320 | Pouring Concrete under slab on grade and gound beams 50 mm thickness lean | 2027-03-24 → 2027-06-17 (+85d) | 2027-03-28 → 2027-06-19 (+83d) | 4d → 2d | 5d → -106d |  | resources SIC- Cost [79800.1]; Supervisor [128.18 h]; Mason [128.18 h]; Mason Helper [128.18 h]; Helper [128.18 h]; Carpenter [128.18 h] → SIC- Cost [79800.1]; Helper [128.18 h]; Supervisor [128.18 h]; Mason [128.18 h]; Mason Helper [128.18 h]; Carpenter [128.18 h] |
| SDR-ST-CON-P3-1360 | Supply and lay 250 micron thk polyethylene sheet below slab on grade and ground beams | 2027-03-29 → 2027-06-20 (+83d) | 2027-04-01 → 2027-06-21 (+81d) | 4d → 2d | 5d → -106d |  | resources SIC- Cost [21000]; Mason [49.77 h]; Mason Helper [49.77 h]; Plumbing Helper [128.18 h]; Plumber [28.49 h] → SIC- Cost [21000]; Plumbing Helper [128.18 h]; Plumber [28.49 h]; Mason [49.77 h]; Mason Helper [49.77 h] |
| 6 | **Slab on Grade** | 2027-04-03 → 2027-06-22 (+80d) | 2027-04-06 → 2027-06-23 (+78d) |  |  |  |  |
| SDR-ST-CON-P3-1380 | Pouring Concrete for Slab on grade | 2027-04-03 → 2027-06-22 (+80d) | 2027-04-06 → 2027-06-23 (+78d) | 4d → 2d | 5d → -106d |  | resources SIC- Cost [44900]; Supervisor [128.18 h]; Mason [4462.72 h]; Mason Helper [4462.72 h]; Helper [128.18 h]; Carpenter [128.18 h] → SIC- Cost [44900]; Helper [128.18 h]; Supervisor [128.18 h]; Mason [4462.72 h]; Mason Helper [4462.72 h]; Carpenter [128.18 h] |
| 7 | **Finishes** | 2027-04-11 → 2027-06-28 (+78d) | 2027-04-22 → 2027-07-04 (+73d) |  |  |  |  |
| 9 | **Troweled Finish** | 2027-04-11 → 2027-06-28 (+78d) | 2027-04-13 → 2027-06-29 (+77d) |  |  |  |  |
| SDR-ST-CON-P3-1400 | Pouring Concrete for Slab on grade with troweled finish Part 1 | 2027-04-11 → 2027-06-28 (+78d) | 2027-04-13 → 2027-06-29 (+77d) | 3d → 2d | 5d → -106d |  | resources SIC- Cost [112030]; Supervisor [128.18 h]; Mason [89.58 h]; Mason Helper [89.58 h]; Helper [128.18 h]; Carpenter [128.18 h] → SIC- Cost [112030]; Helper [128.18 h]; Supervisor [128.18 h]; Mason [89.58 h]; Mason Helper [89.58 h]; Carpenter [128.18 h] |
| SDR-ST-CON-P3-1500 | Pouring Concrete for Slab on grade with troweled finish Part 2 | 2027-04-11 → 2027-06-28 (+78d) | 2027-04-13 → 2027-06-29 (+77d) | 3d → 2d | 5d → -106d |  | resources SIC- Cost [112030]; Supervisor [128.18 h]; Mason [128.18 h]; Mason Helper [128.18 h]; Helper [128.18 h]; Carpenter [128.18 h] → SIC- Cost [112030]; Helper [128.18 h]; Supervisor [128.18 h]; Mason [128.18 h]; Mason Helper [128.18 h]; Carpenter [128.18 h] |
| 8 | **Exposed Aggregate Finish** | 2027-04-14 → 2027-06-30 (+77d) | 2027-04-22 → 2027-07-04 (+73d) |  |  |  |  |
| SDR-ST-CON-P3-1420 | Pouring Concrete for Slab on grade with exposed aggregate finish Part 1 | 2027-04-14 → 2027-06-30 (+77d) | 2027-04-17 → 2027-07-01 (+75d) | 3d → 2d | 5d → -106d |  | resources SIC- Cost [272386]; Supervisor [128.18 h]; Mason [2118.88 h]; Mason Helper [2118.88 h]; Helper [1123.53 h]; Carpenter [684.8 h] → SIC- Cost [272386]; Helper [1123.53 h]; Supervisor [128.18 h]; Mason [2118.88 h]; Mason Helper [2118.88 h]; Carpenter [684.8 h] |
| SDR-ST-CON-P3-1480 | Pouring Concrete for Slab on grade with exposed aggregate finish Part 2 | 2027-04-14 → 2027-06-30 (+77d) | 2027-04-17 → 2027-07-01 (+75d) | 3d → 2d | 5d → -106d |  | resources SIC- Cost [272387]; Supervisor [128.18 h]; Mason [2118.88 h]; Mason Helper [2118.88 h]; Helper [1123.53 h]; Carpenter [128.18 h] → SIC- Cost [272387]; Helper [1123.53 h]; Supervisor [128.18 h]; Mason [2118.88 h]; Mason Helper [2118.88 h]; Carpenter [128.18 h] |
| SDR-ST-CON-P3-1490 | Pouring Concrete for Slab on grade with exposed aggregate finish Part 3 | 2027-04-17 → 2027-07-03 (+77d) | 2027-04-22 → 2027-07-04 (+73d) | 6d → 2d | 5d → -106d |  | resources SIC- Cost [272387]; Supervisor [28.49 h]; Mason [2118.88 h]; Mason Helper [2118.88 h]; Helper [128.18 h]; Carpenter [128.18 h] → SIC- Cost [272387]; Helper [128.18 h]; Supervisor [28.49 h]; Mason [2118.88 h]; Mason Helper [2118.88 h]; Carpenter [128.18 h] |
| 3 | **Finishes & Architectural Works** | 2027-06-14 → 2027-09-25 (+103d) | 2027-07-31 → 2027-11-18 (+110d) |  |  |  |  |
| SDR-ST-CON-P3-1540 | Installation of metal steel 1200mm railing including all accessories Part 1 | 2027-06-14 → 2027-09-25 (+103d) | 2027-06-30 → 2027-10-11 (+103d) |  | 7d → -107d |  |  |
| SDR-ST-CON-P3-1590 | Installation of metal steel 1200mm railing including all accessories Part 2 | 2027-07-01 → 2027-10-12 (+103d) | 2027-07-12 → 2027-10-28 (+108d) | 10d → 15d | 7d → -107d |  |  |
| SDR-ST-CON-P3-1640 | Installation of metal steel 1200mm railing including all accessories Part3 | 2027-07-13 → 2027-10-30 (+109d) | 2027-07-21 → 2027-11-07 (+109d) |  | 7d → -107d |  |  |
| SDR-ST-CON-P3-1710 | Platform Paving & warning tiles | 2027-07-26 → 2027-11-08 (+105d) | 2027-07-31 → 2027-11-11 (+103d) |  | 3.51d → -107d |  |  |
| SDR-ST-CON-P3-1760 | Painting Part 1 | 2027-07-26 → 2027-11-13 (+110d) | 2027-07-31 → 2027-11-18 (+110d) | 4d → 6d | 3.51d → -107d | SDR-ST-CON-P3-1710 SS, SDR-ST-MILS-1000 → SDR-ST-CON-P3-1710, SDR-ST-MILS-1000 | resources SIC- Cost [143758]; Supervisor [149.55 h]; Helper [149.55 h]; Painter [149.55 h] → SIC- Cost [143758]; Helper [149.55 h]; Supervisor [149.55 h]; Painter [149.55 h] |
| SDR-ST-CON-P3-1840 | Painting Part 2 | 2027-07-26 → 2027-11-13 (+110d) | 2027-07-31 → 2027-11-18 (+110d) | 4d → 6d | 5.51d → -102d |  | resources SIC- Cost [143758]; Supervisor [149.55 h]; Helper [149.55 h]; Painter [149.55 h] → SIC- Cost [143758]; Helper [149.55 h]; Supervisor [149.55 h]; Painter [149.55 h] |
| 5 | **Platform Electrical Works** | 2027-03-24 → 2027-06-17 (+85d) | 2027-04-15 → 2027-07-12 (+88d) |  |  |  |  |
| SDR-ST-CON-P3-1310 | cable conduits | 2027-03-24 → 2027-06-17 (+85d) | 2027-04-15 → 2027-07-12 (+88d) | 20d → 22d | 5d → -113d |  |  |
| 3 | **Canopy works** | 2026-12-14 → 2027-02-14 (+62d) | 2027-08-05 → 2027-11-24 (+111d) |  |  |  |  |
| 1 | **Civil and Architectural Works** | 2026-12-14 → 2027-02-14 (+62d) | 2027-02-09 → 2027-04-18 (+68d) |  |  |  |  |
| 1 | **Concrete** | 2026-12-14 → 2027-02-14 (+62d) | 2027-02-09 → 2027-04-18 (+68d) |  |  |  |  |
| SDR-ST-CON-P3-1050 | Pouring Concrete under the foundation 100 mm thickness lean | 2026-12-14 → 2027-02-14 (+62d) | 2026-12-28 → 2027-03-01 (+63d) |  | 13d → -105d |  | resources charpenter [37.98 h]; SIC- Cost [11200]; Supervisor [37.98 h]; Civil Forman [37.98 h]; Mason [37.98 h]; Mason Helper [37.98 h]; Labor [37.98 h] → SIC- Cost [11200]; Civil Forman [37.98 h]; Labor [37.98 h]; charpenter [37.98 h]; Supervisor [37.98 h]; Mason [37.98 h]; Mason Helper [37.98 h] |
| SDR-ST-CON-P3-1090 | Pouring Concrete for protecting waterproofing under the foundation 50 mm thickness | 2027-01-04 → 2027-03-08 (+63d) | 2027-01-17 → 2027-03-25 (+67d) |  | 21d → -81d |  | resources charpenter [37.98 h]; SIC- Cost [6720.01]; Supervisor [37.98 h]; Civil Forman [37.98 h]; Mason [37.98 h]; Mason Helper [37.98 h]; Labor [37.98 h] → SIC- Cost [6720.01]; Civil Forman [37.98 h]; Labor [37.98 h]; charpenter [37.98 h]; Supervisor [37.98 h]; Mason [37.98 h]; Mason Helper [37.98 h] |
| SDR-ST-CON-P3-1110 | Pouring Concrete for Footings | 2027-01-18 → 2027-03-27 (+68d) | 2027-01-31 → 2027-04-08 (+67d) |  | 21d → -81d |  | resources charpenter [37.98 h]; SIC- Cost [95800.1]; Supervisor [37.98 h]; Civil Forman [37.98 h]; Mason [37.98 h]; Mason Helper [37.98 h]; Labor [37.98 h] → SIC- Cost [95800.1]; Civil Forman [37.98 h]; Labor [37.98 h]; charpenter [37.98 h]; Supervisor [37.98 h]; Mason [37.98 h]; Mason Helper [37.98 h] |
| SDR-ST-CON-P3-1140 | Pouring Concrete for Coulumns necks | 2027-02-01 → 2027-04-10 (+68d) | 2027-02-09 → 2027-04-18 (+68d) |  | 22d → -57d |  | resources charpenter [199.87 h]; SIC- Cost [52720]; Supervisor [128.18 h]; Civil Forman [199.87 h]; Mason [199.87 h]; Mason Helper [199.87 h]; Labor [199.87 h] → SIC- Cost [52720]; Civil Forman [199.87 h]; Labor [199.87 h]; charpenter [199.87 h]; Supervisor [128.18 h]; Mason [199.87 h]; Mason Helper [199.87 h] |
| 4 | **Metals** | 2026-12-29 → 2027-03-02 (+63d) | 2027-08-05 → 2027-11-24 (+111d) |  |  |  |  |
| 2 | **Structural Steel Framing** | 2027-01-31 → 2027-03-27 (+55d) | 2027-05-15 → 2027-07-31 (+77d) |  |  |  |  |
| SDR-ST-CON-P3-1120 | Anchor Bolt Verification | 2027-01-31 → 2027-03-27 (+55d) | 2027-02-17 → 2027-04-13 (+55d) |  | 10d → -81d |  |  |
| SDR-ST-CON-P3-1160 | Erection of Columns Part 1 | 2027-02-20 → 2027-04-14 (+53d) | 2027-03-20 → 2027-05-06 (+47d) |  | 9d → -81d |  | resources charpenter [135.31 h]; SIC- Cost [161728]; Supervisor [135.31 h]; Mason [135.31 h]; Mason Helper [135.31 h]; Surveyor [135.31 h]; Helper [135.31 h] → SIC- Cost [161728]; Surveyor [135.31 h]; Helper [135.31 h]; charpenter [135.31 h]; Supervisor [135.31 h]; Mason [135.31 h]; Mason Helper [135.31 h] |
| SDR-ST-CON-P3-1240 | Erection of Columns Part 2 | 2027-03-07 → 2027-05-08 (+62d) | 2027-03-23 → 2027-05-25 (+63d) |  | 6d → -81d | SDR-ST-CON-P3-1160 FF, SDR-ST-MILS-1000, SDR-ST-CON-P1-5200 FS+1d, SDR-ST-CON-P1-5040 FS+1d, SDR-ST-CON-P1-4170, SDR-ST-CON-P1-4160, SDR-ST-CON-P1-4270, SDR-ST-CON-P1-4240, SDR-ST-CON-P1-4020, SDR-ST-CON-P1-4610, SDR-ST-CON-P1-5130, SDR-ST-CON-P1-3490 FF, SDR-ST-CON-P1-2330, SDR-ST-CON-P1-4160 FF → SDR-ST-CON-P1-5200 FS+1d, SDR-ST-CON-P1-5040 FS+1d, SDR-ST-CON-P1-4170, SDR-ST-CON-P1-4160, SDR-ST-CON-P1-4270, SDR-ST-CON-P1-4240, SDR-ST-CON-P1-4020, SDR-ST-CON-P1-4610, SDR-ST-CON-P1-5130, SDR-ST-CON-P1-3490, SDR-ST-CON-P1-2330, SDR-ST-CON-P1-4160 FF, SDR-ST-CON-P3-1160, SDR-ST-MILS-1000 | resources charpenter [135.31 h]; SIC- Cost [161728]; Supervisor [135.31 h]; Mason [135.31 h]; Mason Helper [135.31 h]; Surveyor [135.31 h]; Helper [135.31 h] → SIC- Cost [161728]; Surveyor [135.31 h]; Helper [135.31 h]; charpenter [135.31 h]; Supervisor [135.31 h]; Mason [135.31 h]; Mason Helper [135.31 h] |
| SDR-ST-CON-P3-1260 | Erection of Rafters Part 1 | 2027-03-01 → 2027-05-26 (+86d) | 2027-03-23 → 2027-06-13 (+82d) |  | 6d → -81d | SDR-ST-CON-P3-1240 FF, SDR-ST-MILS-1000, SDR-ST-CON-P1-2330, SDR-ST-CON-P1-5000, SDR-ST-CON-P1-4820, SDR-ST-CON-P1-4900, SDR-ST-CON-P1-5170, SDR-ST-CON-P1-5230 → SDR-ST-CON-P1-2330, SDR-ST-CON-P1-5000, SDR-ST-CON-P1-4820, SDR-ST-CON-P1-4900, SDR-ST-CON-P1-5170, SDR-ST-CON-P1-5230, SDR-ST-CON-P3-1240, SDR-ST-MILS-1000 | resources charpenter [128.18 h]; SIC- Cost [125789]; Supervisor [128.18 h]; Mason [128.18 h]; Mason Helper [128.18 h]; Surveyor [128.18 h]; Helper [128.18 h] → SIC- Cost [125789]; Surveyor [128.18 h]; Helper [128.18 h]; charpenter [128.18 h]; Supervisor [128.18 h]; Mason [128.18 h]; Mason Helper [128.18 h] |
| SDR-ST-CON-P3-1280 | Erection of Rafters Part 2 | 2027-03-03 → 2027-05-29 (+87d) | 2027-03-25 → 2027-06-15 (+82d) |  | 6d → -81d |  | resources charpenter [106.82 h]; SIC- Cost [125789]; Supervisor [106.82 h]; Mason [106.82 h]; Mason Helper [106.82 h]; Surveyor [106.82 h]; Helper [106.82 h] → SIC- Cost [125789]; Surveyor [106.82 h]; Helper [106.82 h]; charpenter [106.82 h]; Supervisor [106.82 h]; Mason [106.82 h]; Mason Helper [106.82 h] |
| SDR-ST-CON-P3-1330 | Installation of Bracing System Part 1 | 2027-03-27 → 2027-06-16 (+81d) | 2027-04-12 → 2027-07-03 (+82d) |  | 10d → -78d |  | resources charpenter [128.18 h]; SIC- Cost [107819]; Supervisor [128.18 h]; Mason [128.18 h]; Mason Helper [128.18 h]; Surveyor [128.18 h]; Helper [128.18 h] → SIC- Cost [107819]; Surveyor [128.18 h]; Helper [128.18 h]; charpenter [128.18 h]; Supervisor [128.18 h]; Mason [128.18 h]; Mason Helper [128.18 h] |
| SDR-ST-CON-P3-1340 | Installation of Beams Part 1 | 2027-03-27 → 2027-06-16 (+81d) | 2027-04-06 → 2027-06-27 (+82d) |  | 6d → -81d |  | resources charpenter [113.94 h]; SIC- Cost [143758]; Supervisor [113.94 h]; Mason [2104.64 h]; Mason Helper [2104.64 h]; Surveyor [113.94 h]; Helper [113.94 h] → SIC- Cost [143758]; Surveyor [113.94 h]; Helper [113.94 h]; charpenter [113.94 h]; Supervisor [113.94 h]; Mason [2104.64 h]; Mason Helper [2104.64 h] |

| ID | Task | Start | Finish | Duration | Total float | Predecessors | Other |
| --- | --- | --- | --- | --- | --- | --- | --- |
| SDR-ST-CON-P3-1350 | Installation of Girders Part 1 | 2027-04-05 → 2027-06-17 (+73d) | 2027-04-27 → 2027-07-10 (+74d) |  | 21d → -78d | SDR-ST-CON-P3-1280 SS, SDR-ST-MILS-1000, SDR-ST-TC-1010, SDR-ST-CON-P1-3170, SDR-ST-PRO-MS-1240 → SDR-ST-CON-P1-3170, SDR-ST-PRO-MS-1240, SDR-ST-CON-P3-1280, SDR-ST-MILS-1000, SDR-ST-TC-1010 | resources charpenter [99.7 h]; SIC- Cost [89849]; Supervisor [99.7 h]; Mason [99.7 h]; Mason Helper [99.7 h]; Surveyor [99.7 h]; Helper [99.7 h] → SIC- Cost [89849]; Surveyor [99.7 h]; Helper [99.7 h]; charpenter [99.7 h]; Supervisor [99.7 h]; Mason [99.7 h]; Mason Helper [99.7 h] |
| SDR-ST-CON-P3-1390 | Installation of Beams Part 2 | 2027-04-13 → 2027-06-28 (+76d) | 2027-04-27 → 2027-07-11 (+75d) |  | 0.52d → -81d |  | resources charpenter [113.94 h]; SIC- Cost [143758]; Supervisor [113.94 h]; Mason [113.94 h]; Mason Helper [113.94 h]; Surveyor [113.94 h]; Helper [113.94 h] → SIC- Cost [143758]; Surveyor [113.94 h]; Helper [113.94 h]; charpenter [113.94 h]; Supervisor [113.94 h]; Mason [113.94 h]; Mason Helper [113.94 h] |
| SDR-ST-CON-P3-1410 | Installation of Bracing System Part 2 | 2027-04-13 → 2027-07-04 (+82d) | 2027-05-01 → 2027-07-21 (+81d) |  | 10d → -78d |  | resources charpenter [128.18 h]; SIC- Cost [107819]; Supervisor [128.18 h]; Mason [128.18 h]; Mason Helper [128.18 h]; Surveyor [128.18 h]; Helper [128.18 h] → SIC- Cost [107819]; Surveyor [128.18 h]; Helper [128.18 h]; charpenter [128.18 h]; Supervisor [128.18 h]; Mason [128.18 h]; Mason Helper [128.18 h] |
| SDR-ST-CON-P3-1440 | Installation of Girders Part 2 | 2027-04-05 → 2027-07-11 (+97d) | 2027-04-18 → 2027-07-17 (+90d) | 12d → 6d | 21d → -78d | SDR-ST-CON-P3-1350 SS, SDR-ST-MILS-1000, SDR-ST-CON-P1-5800 SS, SDR-ST-CON-P1-3900 SS, SDR-ST-PRO-MS-1240 → SDR-ST-CON-P1-5800, SDR-ST-CON-P1-3900, SDR-ST-PRO-MS-1240, SDR-ST-CON-P3-1350, SDR-ST-MILS-1000 | resources charpenter [99.7 h]; SIC- Cost [89849]; Supervisor [99.7 h]; Mason [99.7 h]; Mason Helper [99.7 h]; Surveyor [99.7 h]; Helper [99.7 h] → SIC- Cost [89849]; Surveyor [99.7 h]; Helper [99.7 h]; charpenter [99.7 h]; Supervisor [99.7 h]; Mason [99.7 h]; Mason Helper [99.7 h] |
| SDR-ST-CON-P3-1460 | Installation of Connections (Bolting) | 2027-04-27 → 2027-07-12 (+76d) | 2027-05-11 → 2027-07-25 (+75d) |  | 0.52d → -81d |  | resources charpenter [142.43 h]; SIC- Cost [53909.4]; Supervisor [142.43 h]; Mason [142.43 h]; Mason Helper [142.43 h]; Surveyor [142.43 h]; Helper [142.43 h] → SIC- Cost [53909.4]; Surveyor [142.43 h]; Helper [142.43 h]; charpenter [142.43 h]; Supervisor [142.43 h]; Mason [142.43 h]; Mason Helper [142.43 h] |
| SDR-ST-CON-P3-1450 | Installation of Joists Part 1 | 2027-04-27 → 2027-07-18 (+82d) | 2027-05-11 → 2027-07-31 (+81d) |  | 13.52d → -74d |  | resources charpenter [113.94 h]; SIC- Cost [89849]; Supervisor [113.94 h]; Mason [113.94 h]; Mason Helper [113.94 h]; Surveyor [113.94 h]; Helper [113.94 h] → SIC- Cost [89849]; Surveyor [113.94 h]; Helper [113.94 h]; charpenter [113.94 h]; Supervisor [113.94 h]; Mason [113.94 h]; Mason Helper [113.94 h] |
| SDR-ST-CON-P3-1470 | Installation of Joists Part 2 | 2027-05-02 → 2027-07-22 (+81d) | 2027-05-15 → 2027-07-31 (+77d) | 12d → 8d | 10d → -78d |  | resources charpenter [113.94 h]; SIC- Cost [89849]; Supervisor [113.94 h]; Mason [113.94 h]; Mason Helper [113.94 h]; Surveyor [113.94 h]; Helper [113.94 h] → SIC- Cost [89849]; Surveyor [113.94 h]; Helper [113.94 h]; charpenter [113.94 h]; Supervisor [113.94 h]; Mason [113.94 h]; Mason Helper [113.94 h] |
| 3 | **Aluminum Cladding Panels** | 2027-05-22 → 2027-08-19 (+89d) | 2027-08-05 → 2027-11-24 (+111d) |  |  |  |  |
| 1 | **Steel Subframe Installation** | 2027-05-22 → 2027-08-19 (+89d) | 2027-08-05 → 2027-11-24 (+111d) |  |  |  |  |
| SDR-ST-CON-P3-1530 | Survey & Setting Out for Cladding | 2027-05-22 → 2027-08-19 (+89d) | 2027-05-30 → 2027-08-28 (+90d) |  | 10d → -95d | SDR-ST-CON-P3-1470, SDR-ST-CON-P3-1410, SDR-ST-CON-P3-1430, SDR-ST-MILS-1000, SDR-ST-TC-1020, SDR-ST-CON-P1-4040, SDR-ST-CON-P1-3880, SDR-ST-CON-P1-4070, SDR-ST-CON-P1-4040 FF, SDR-ST-MILS-1090 → SDR-ST-TC-1020, SDR-ST-CON-P1-4040, SDR-ST-CON-P1-3880, SDR-ST-CON-P1-4250, SDR-ST-CON-P1-4070, SDR-ST-CON-P1-4040 FF, SDR-ST-MILS-1090, SDR-ST-CON-P3-1470, SDR-ST-CON-P3-1410, SDR-ST-CON-P3-1430, SDR-ST-MILS-1000 |  |
| SDR-ST-CON-P3-1560 | Install Steel Subframe Supports Part 1 | 2027-06-08 → 2027-09-02 (+86d) | 2027-06-28 → 2027-09-18 (+82d) | 18d → 14d | 3d → -99d | SDR-ST-CON-P3-1530, SDR-ST-MILS-1090, SDR-ST-MILS-1000, SDR-ST-CON-P1-4070, SDR-ST-CON-P1-5280 SS, SDR-ST-CON-P1-5490, SDR-ST-CON-P1-3980, SDR-ST-CON-P1-5280 → SDR-ST-CON-P1-4070, SDR-ST-CON-P1-5280, SDR-ST-CON-P1-5490, SDR-ST-CON-P1-3980, SDR-ST-CON-P3-1530, SDR-ST-MILS-1090, SDR-ST-MILS-1000 |  |
| SDR-ST-CON-P3-1620 | Install Steel Subframe Supports Part 2 | 2027-06-29 → 2027-09-19 (+82d) | 2027-07-19 → 2027-10-09 (+82d) |  | 3d → -99d | SDR-ST-CON-P3-1560, SDR-ST-MILS-1000, SDR-ST-CON-P1-5460, SDR-ST-CON-P1-3980, SDR-ST-CON-P1-4050, SDR-ST-CON-P1-5900 FS-1d → SDR-ST-CON-P1-5460, SDR-ST-CON-P1-3980, SDR-ST-CON-P1-4050, SDR-ST-CON-P1-5900, SDR-ST-CON-P3-1560, SDR-ST-MILS-1000 |  |
| SDR-ST-CON-P3-1690 | Install Steel Subframe Supports Part 3 | 2027-07-20 → 2027-10-10 (+82d) | 2027-08-03 → 2027-10-24 (+82d) |  | 3d → -94d |  |  |
| SDR-ST-CON-P3-1720 | Alignment & Leveling of Subframe Part 1 | 2027-07-20 → 2027-10-10 (+82d) | 2027-08-01 → 2027-10-21 (+81d) |  | 5d → -92d |  |  |
| SDR-ST-CON-P3-1770 | Alignment & Leveling of Subframe Part 2 | 2027-07-28 → 2027-10-25 (+89d) | 2027-08-05 → 2027-10-28 (+84d) | 8d → 4d | 1d → -94d | SDR-ST-CON-P3-1720 SS, SDR-ST-MILS-1000, SDR-ST-CON-P1-5980 FS-2d, SDR-ST-CON-P3-1690 SS → SDR-ST-CON-P1-5980, SDR-ST-CON-P3-1690, SDR-ST-CON-P3-1720, SDR-ST-MILS-1000 |  |
| SDR-ST-CON-P3-1830 | Fixing & Tightening of Subframe Connections Part 1 | 2027-07-28 → 2027-10-30 (+94d) | 2027-08-05 → 2027-11-03 (+90d) | 8d → 5d | 1d → -94d | SDR-ST-CON-P3-1770 SS, SDR-ST-MILS-1000 FS-2d → SDR-ST-CON-P3-1770, SDR-ST-MILS-1000 |  |
| SDR-ST-CON-P3-1880 | Fixing & Tightening of Subframe Connections Part 2 | 2027-07-28 → 2027-11-20 (+115d) | 2027-08-04 → 2027-11-24 (+112d) | 7d → 5d | 2d → -107d | SDR-ST-CON-P3-1830 SS, SDR-ST-MILS-1000 SS, SDR-ST-CON-P3-1760 SS → SDR-ST-CON-P3-1760, SDR-ST-CON-P3-1830, SDR-ST-MILS-1000 |  |
| 2 | **Aluminum Cladding Installation** | 2027-06-29 → 2027-09-19 (+82d) | 2027-08-05 → 2027-11-11 (+98d) |  |  |  |  |
| SDR-ST-CON-P3-1610 | Install Aluminum Panels (4mm Thick Part 1 | 2027-06-29 → 2027-09-19 (+82d) | 2027-07-15 → 2027-10-03 (+80d) | 15d → 13d | 6d → -99d |  |  |
| SDR-ST-CON-P3-1660 | Install Aluminum Panels (4mm Thick Part 2 | 2027-07-03 → 2027-10-04 (+93d) | 2027-07-15 → 2027-10-17 (+94d) |  | 6d → -99d | SDR-ST-CON-P3-1610 FF, SDR-ST-MILS-1000 → SDR-ST-CON-P3-1610, SDR-ST-MILS-1000 |  |
| SDR-ST-CON-P3-1700 | Install Aluminum Panels (4mm Thick Part 3 | 2027-07-17 → 2027-10-18 (+93d) | 2027-07-24 → 2027-10-25 (+93d) |  | 6d → -99d |  |  |
| SDR-ST-CON-P3-1730 | Fix Panels with Snap Hooks & Fasteners Part 1 | 2027-07-17 → 2027-10-26 (+101d) | 2027-07-22 → 2027-11-01 (+102d) |  | 6d → -99d | SDR-ST-CON-P3-1700 SS, SDR-ST-MILS-1000 → SDR-ST-CON-P3-1700, SDR-ST-MILS-1000 |  |
| SDR-ST-CON-P3-1750 | Fix Panels with Snap Hooks & Fasteners Part 2 | 2027-07-26 → 2027-10-26 (+92d) | 2027-08-01 → 2027-10-31 (+91d) |  | 1.52d → -99d |  |  |
| SDR-ST-CON-P3-1810 | Install Drainage System Part 1 | 2027-07-26 → 2027-11-01 (+98d) | 2027-07-31 → 2027-11-04 (+96d) |  | 1.52d → -99d | SDR-ST-CON-P3-1750 SS, SDR-ST-MILS-1000 → SDR-ST-CON-P3-1750, SDR-ST-MILS-1000 |  |
| SDR-ST-CON-P3-1820 | Install Drainage System Part 2 | 2027-07-26 → 2027-11-01 (+98d) | 2027-07-31 → 2027-11-02 (+94d) | 4.1d → 2d | 3.51d → -99d |  |  |
| SDR-ST-CON-P3-1850 | Adjustment & Alignment of Panels Part 1 | 2027-07-26 → 2027-11-03 (+100d) | 2027-07-29 → 2027-11-06 (+100d) |  | 3.51d → -96d | SDR-ST-CON-P3-1820 SS, SDR-ST-CON-P1-6000 SS, SDR-ST-MILS-1000, SDR-ST-CON-P3-1730 → SDR-ST-CON-P3-1730, SDR-ST-CON-P3-1820, SDR-ST-CON-P1-6000, SDR-ST-MILS-1000 |  |
| SDR-ST-CON-P3-1860 | Adjustment & Alignment of Panels Part 2 | 2027-07-26 → 2027-11-03 (+100d) | 2027-07-29 → 2027-11-06 (+100d) |  | 3.51d → -96d |  |  |
| SDR-ST-CON-P3-1890 | Sealant & Finishing Works | 2027-07-31 → 2027-11-07 (+99d) | 2027-08-05 → 2027-11-11 (+98d) |  | 1.52d → -96d | SDR-ST-CON-P3-1860 SS+2d, SDR-ST-MILS-1000, SDR-ST-CON-P3-1810, SDR-ST-CON-P3-1850 SS → SDR-ST-CON-P3-1810, SDR-ST-CON-P3-1850, SDR-ST-CON-P3-1860, SDR-ST-MILS-1000 |  |
| 1 | **THERMAL & MOISTURE PROTECTION** | 2026-12-29 → 2027-03-02 (+63d) | 2027-02-16 → 2027-05-24 (+97d) |  |  |  |  |
| 1 | **Bituminous Sheet Waterproofing** | 2026-12-29 → 2027-03-02 (+63d) | 2027-02-16 → 2027-05-24 (+97d) |  |  |  |  |
| SDR-ST-CON-P3-1070 | Provide and lay 2 layers of waterproofing bitumenous membrane 4mm below footings | 2026-12-29 → 2027-03-02 (+63d) | 2027-01-03 → 2027-03-07 (+63d) |  | 13d → -105d |  |  |
| SDR-ST-CON-P3-1170 | Provide and lay 2 layers of waterproofing bitumenous membrane 4mm in contact with soil | 2027-02-11 → 2027-05-13 (+91d) | 2027-02-16 → 2027-05-24 (+97d) |  | 21d → -78d |  |  |
| 4 | **Electrical Works** | 2027-01-23 → 2027-07-18 (+176d) | 2027-08-06 → 2027-12-05 (+121d) |  |  |  |  |
| 1 | **Low-Voltage Electrical Power Conductors and Cables** | 2027-05-13 → 2027-07-18 (+66d) | 2027-06-07 → 2027-08-08 (+62d) |  |  |  |  |
| SDR-ST-CON-P3-1510 | Installtion and test low voltage cable including pulling of cable 600/1000V . | 2027-05-13 → 2027-07-18 (+66d) | 2027-06-07 → 2027-08-08 (+62d) | 17d → 20d | 11d → -78d |  |  |
| 2 | **Ondoor Lighting Points** | 2027-06-08 → 2027-08-09 (+62d) | 2027-07-01 → 2027-09-01 (+62d) |  |  |  |  |
| SDR-ST-CON-P3-1580 | Install, test, and commission all necessary components for outdoor lighting points. | 2027-06-08 → 2027-08-09 (+62d) | 2027-07-01 → 2027-09-01 (+62d) |  | 11d → -78d |  |  |
| 3 | **Outdoor Lighting Fixtures** | 2027-06-09 → 2027-09-04 (+87d) | 2027-07-14 → 2027-10-27 (+105d) |  |  |  |  |
| SDR-ST-CON-P3-1630 | Install of L10 recessed in ceiling light, lenght1535mmxwidth75mmxhieght105mm, LED 53.2w Part 1 | 2027-06-09 → 2027-09-04 (+87d) | 2027-07-01 → 2027-09-27 (+88d) | 20d → 21d | 11d → -78d | SDR-ST-CON-P3-1580 SS+1d, SDR-ST-MILS-1000, SDR-ST-CON-P1-4050, SDR-ST-PRO-MS-1170 → SDR-ST-PRO-MS-1170, SDR-ST-CON-P3-1580 FS+1d, SDR-ST-MILS-1000, SDR-ST-CON-P1-4050 |  |
| SDR-ST-CON-P3-1650 | Install of L10 recessed in ceiling light, lenght1535mmxwidth75mmxhieght105mm, LED 53.2w Part 2 | 2027-06-22 → 2027-10-05 (+105d) | 2027-07-14 → 2027-10-27 (+105d) |  | 2d → -105d | SDR-ST-CON-P3-1630 SS, SDR-ST-MILS-1000 SS, SDR-ST-TC-1000, SDR-ST-PRO-MS-1170 → SDR-ST-TC-1000, SDR-ST-PRO-MS-1170, SDR-ST-CON-P3-1630 SS, SDR-ST-MILS-1000 |  |
| 4 | **CCTV** | 2027-01-23 → 2027-07-18 (+176d) | 2027-08-06 → 2027-12-05 (+121d) |  |  |  |  |
| SDR-ST-CON-P3-1520 | Install of Handhole (600x600x730mm) | 2027-05-10 → 2027-07-18 (+69d) | 2027-05-25 → 2027-07-22 (+58d) | 8d → 5d | 11.52d → -78d | SDR-ST-CON-P3-1440, SDR-ST-CON-P1-5790, SDR-ST-MILS-1000, SDR-ST-CO-1030 SS, SDR-ST-MILS-1090 → SDR-ST-CO-1030, SDR-ST-MILS-1090, SDR-ST-CON-P3-1440, SDR-ST-CON-P1-5790, SDR-ST-MILS-1000 |  |
| SDR-ST-CON-P3-1550 | Install of 2 core 9/125um indoor -outdoor central tube | 2027-05-24 → 2027-07-24 (+61d) | 2027-06-06 → 2027-08-01 (+56d) | 11d → 8d | 4.51d → -78d | SDR-ST-CON-P3-1520 SS, SDR-ST-CO-1030, SDR-ST-MILS-1000 SS → SDR-ST-CON-P3-1520, SDR-ST-CO-1030, SDR-ST-MILS-1000 |  |
| SDR-ST-CON-P3-1570 | Install of 4 Port (2 duplex) LC/UPC OS2 fiber patch panel | 2027-06-06 → 2027-08-02 (+57d) | 2027-06-20 → 2027-08-14 (+55d) |  | 4.51d → -78d | SDR-ST-CON-P3-1550 SS, SDR-ST-MILS-1000 SS, SDR-ST-PRO-MS-1040, SDR-ST-CON-P3-1550, SDR-ST-MILS-1000 → SDR-ST-PRO-MS-1040, SDR-ST-CON-P3-1550, SDR-ST-MILS-1000 |  |
| SDR-ST-CON-P3-1600 | Install of Pole mounted Filed Equipment cabinet (FEC) , with fan and ventilation | 2027-06-20 → 2027-09-25 (+97d) | 2027-07-13 → 2027-10-16 (+95d) | 20d → 19d | 4.51d → -113d | SDR-ST-CON-P3-1570, SDR-ST-MILS-1000 SS, SDR-ST-CON-P1-5430 SS, SDR-ST-PRO-MS-1060, SDR-ST-CON-P1-5430 → SDR-ST-CON-P1-5430, SDR-ST-PRO-MS-1060, SDR-ST-CON-P3-1570, SDR-ST-MILS-1000 |  |
| SDR-ST-CON-P3-1670 | Install of 8 Port Industrial PoE Switch 10/1000BaseT | 2027-07-13 → 2027-10-17 (+96d) | 2027-07-29 → 2027-11-07 (+101d) | 14d → 19d | 4.51d → -113d |  |  |
| SDR-ST-CON-P3-1680 | Install of 1.2KVA Industrial type UPS located at FEC | 2027-07-13 → 2027-10-17 (+96d) | 2027-08-01 → 2027-11-07 (+98d) | 16d → 19d | 4.51d → -113d | SDR-ST-CON-P3-1600 SS, SDR-ST-MILS-1000 SS, SDR-ST-CO-1010, SDR-ST-CON-P3-1600, SDR-ST-MILS-1000 → SDR-ST-CON-P3-1600, SDR-ST-MILS-1000, SDR-ST-CO-1010 |  |
| SDR-ST-CON-P3-1740 | Install of UTP CAT6 Patch Cord , connect the industrial switch with the cameras | 2027-07-18 → 2027-11-08 (+113d) | 2027-07-26 → 2027-11-18 (+115d) | 7d → 10d | 0.52d → -113d | SDR-ST-CON-P3-1680 SS, SDR-ST-CON-P3-1670 SS, SDR-ST-CON-P3-1650 SS+1d, SDR-ST-MILS-1000 SS, SDR-ST-CON-P1-5920 SS, SDR-ST-PRO-MS-1160, SDR-ST-CON-P3-1650 FS+1d, SDR-ST-MILS-1000, SDR-ST-CON-P1-5920 FF → SDR-ST-CON-P1-5920, SDR-ST-PRO-MS-1160, SDR-ST-CON-P3-1680, SDR-ST-CON-P3-1670, SDR-ST-CON-P3-1650 FS+1d, SDR-ST-MILS-1000 |  |
| SDR-ST-CON-P3-1780 | Install of 5MP IP PoE Bullet Camera, outdoor mounted on canopy ceiling Part 1. | 2027-01-23 → 2027-11-20 (+301d) | 2027-02-04 → 2027-12-02 (+301d) |  | 141d → -113d | SDR-ST-MILS-1000 SS, SDR-ST-PRO-MS-1160, SDR-ST-PRO-MS-1090 → SDR-ST-PRO-MS-1160, SDR-ST-PRO-MS-1090, SDR-ST-CON-P3-1820, SDR-ST-CON-P3-1740, SDR-ST-MILS-1000 |  |
| SDR-ST-CON-P3-1790 | Install of 5MP IP PoE Bullet Camera, outdoor mounted on canopy ceiling Part 2. | 2027-07-21 → 2027-11-20 (+122d) | 2027-08-06 → 2027-12-05 (+121d) |  | 0.52d → -111d | SDR-ST-CON-P3-1740 SS+3d, SDR-ST-MILS-1000, SDR-ST-PRO-MS-1160 → SDR-ST-PRO-MS-1160, SDR-ST-CON-P3-1740, SDR-ST-MILS-1000 |  |
| 5 | **Voice Evacuation System** | 2027-07-18 → 2027-11-20 (+125d) | 2027-07-28 → 2027-11-28 (+123d) |  |  |  |  |
| SDR-ST-CON-P3-1800 | install, test of Suspended ceiling outdoor projector speaker, bi-directional, 20w Part 1 | 2027-07-20 → 2027-11-20 (+123d) | 2027-07-28 → 2027-11-28 (+123d) |  | 0d → -113d | SDR-ST-CON-P3-1740 FF, SDR-ST-CON-P1-5910 FS-2d, SDR-ST-CON-P1-5980 SS, SDR-ST-CON-P1-5970 FF-2d, SDR-ST-MILS-1000 SS-2d, SDR-ST-PRO-MS-1150, SDR-ST-MILS-1000 FS-2d → SDR-ST-PRO-MS-1150, SDR-ST-CON-P3-1740, SDR-ST-CON-P1-5910, SDR-ST-CON-P1-5980 SS, SDR-ST-CON-P1-5970, SDR-ST-MILS-1000 |  |
| SDR-ST-CON-P3-1870 | install, test of Suspended ceiling outdoor projector speaker, bi-directional, 20w Part 2 | 2027-07-18 → 2027-11-20 (+125d) | 2027-07-26 → 2027-11-28 (+125d) |  | 0d → -113d | SDR-ST-CON-P3-1800 SS-2d, SDR-ST-CON-P3-1780 SS, SDR-ST-CON-P3-1650 SS, SDR-ST-MILS-1000 SS-2d, SDR-ST-PRO-MS-1150, SDR-ST-CON-P3-1650 → SDR-ST-PRO-MS-1150, SDR-ST-CON-P3-1800 SS, SDR-ST-CON-P3-1780 SS, SDR-ST-CON-P3-1650, SDR-ST-MILS-1000 |  |
| 6 | **Testing and Comissioning** | 2027-03-18 → 2027-04-15 (+28d) | 2027-08-06 → 2027-12-13 (+129d) |  |  |  |  |
| 1 | **Civil Works** | 2027-06-12 → 2027-09-18 (+98d) | 2027-06-21 → 2027-10-04 (+105d) |  |  |  |  |
| SDR-ST-TC-1000 | Testing & Commissioning of road works | 2027-06-12 → 2027-09-18 (+98d) | 2027-06-21 → 2027-10-04 (+105d) | 9d → 15d | 2d → -105d |  | resources SIC- Cost; Civil Engineer [1096.85 h]; Civil Forman [1096.85 h] → Suppliers [1096.85 h]; SIC- Cost; Civil Forman [1096.85 h] |
| 2 | **Storm Water Drainage Network** | 2027-03-18 → 2027-05-30 (+73d) | 2027-04-04 → 2027-06-16 (+73d) |  |  |  |  |
| SDR-ST-TC-1010 | Testing & Commissioning of network work | 2027-03-18 → 2027-05-30 (+73d) | 2027-04-04 → 2027-06-16 (+73d) | 15d → 16d | 21d → -78d | SDR-ST-CON-P1-4760, SDR-ST-CON-P1-4760 FF → SDR-ST-CON-P1-4760 FS+1d, SDR-ST-CON-P1-4760 FF |  |
| 3 | **Sewerage Network** | 2027-04-07 → 2027-04-15 (+8d) | 2027-04-24 → 2027-05-09 (+15d) |  |  |  |  |
| SDR-ST-TC-1030 | Testing & Commissioning of Sewage Network | 2027-04-07 → 2027-04-15 (+8d) | 2027-04-24 → 2027-05-09 (+15d) | 15d → 21d | 15d → -23d |  |  |
| 5 | **Portable Water** | 2027-04-26 → 2027-05-02 (+6d) | 2027-05-12 → 2027-05-30 (+18d) |  |  |  |  |
| SDR-ST-TC-1020 | Testing & Commissioning of Potable Network | 2027-04-26 → 2027-05-02 (+6d) | 2027-05-12 → 2027-05-30 (+18d) | 15d → 20d | 11d → -37d |  |  |
| 6 | **Electrical Works** | 2027-07-31 → 2027-11-18 (+110d) | 2027-08-01 → 2027-11-30 (+121d) |  |  |  |  |
| SDR-ST-TC-1050 | Testing & Commissioning of Electrical Network | 2027-07-31 → 2027-11-18 (+110d) | 2027-08-01 → 2027-11-30 (+121d) | 1d → 11d | 5.51d → -100d | SDR-ST-CON-P1-6050 SS, SDR-ST-CON-P3-1890 SS, SDR-ST-CON-P1-6050 → SDR-ST-CON-P3-1890, SDR-ST-CON-P1-6050 FS+1d |  |
| 8 | **CCTV Works** | 2027-07-21 → 2027-12-06 (+138d) | 2027-08-06 → 2027-12-13 (+129d) |  |  |  |  |
| SDR-ST-TC-1040 | Testing & Commissioning of medium voltage works | 2027-07-21 → 2027-12-06 (+138d) | 2027-08-06 → 2027-12-13 (+129d) | 14d → 7d | 0.52d → -111d | SDR-ST-CON-P3-1790 SS, SDR-ST-CON-P3-1800 SS, SDR-ST-CON-P3-1870 SS → SDR-ST-CON-P3-1800, SDR-ST-CON-P3-1870, SDR-ST-CON-P3-1790 |  |
| 7 | **Close Out** | 2027-04-14 → 2027-04-24 (+10d) | 2027-08-06 → 2027-12-15 (+131d) |  |  |  |  |
| 1 | **As Built Drawings** | 2027-04-14 → 2027-04-24 (+10d) | 2027-08-01 → 2027-12-04 (+125d) |  |  |  |  |
| 1 | **Civil** | 2027-06-10 → 2027-09-16 (+98d) | 2027-06-21 → 2027-09-29 (+100d) |  |  |  |  |
| SDR-ST-CO-1000 | Civil As-Built Drawing Submission | 2027-06-10 → 2027-09-16 (+98d) | 2027-06-15 → 2027-09-23 (+100d) | 5d → 7d | 1d → -104d |  | resources Civil Engineer [301.39 h]; Civil Drafman [301.39 h] → Suppliers [301.39 h]; Civil Drafman [301.39 h] |

| ID | Task | Start | Finish | Duration | Total float | Predecessors | Other |
| --- | --- | --- | --- | --- | --- | --- | --- |
| SDR-ST-CO-1010 | Civil As-Built Drawing Approvals | 2027-06-16 → 2027-09-25 (+101d) | 2027-06-21 → 2027-09-29 (+100d) |  | 1d → -104d |  | resources Civil Engineer [301.39 h]; Civil Forman [301.39 h] → Suppliers [301.39 h]; Civil Forman [301.39 h] |
| 2 | **Mechanical** | 2027-04-14 → 2027-04-24 (+10d) | 2027-05-24 → 2027-06-03 (+10d) |  |  |  |  |
| SDR-ST-CO-1020 | Mechanical As-Built Drawing Submission | 2027-04-14 → 2027-04-24 (+10d) | 2027-04-22 → 2027-05-02 (+10d) | 7d → 8d | 4.51d → -41d |  |  |
| SDR-ST-CO-1030 | Mechanical As-Built Drawing Approvals | 2027-05-10 → 2027-05-26 (+16d) | 2027-05-24 → 2027-06-03 (+10d) | 7d → 8d | 4.51d → -41d |  |  |
| 3 | **Electrical** | 2027-07-10 → 2027-11-11 (+124d) | 2027-08-01 → 2027-12-04 (+125d) |  |  |  |  |
| SDR-ST-CO-1040 | Electrical As-Built Drawing Submission | 2027-07-10 → 2027-11-11 (+124d) | 2027-07-19 → 2027-11-22 (+126d) | 9d → 10d | 4d → -104d |  |  |
| SDR-ST-CO-1100 | Electrical As-Built Drawing Approvals | 2027-07-21 → 2027-11-24 (+126d) | 2027-08-01 → 2027-12-04 (+125d) | 10d → 9d | 4d → -104d |  |  |
| 2 | **Training and Manuals** | 2027-07-15 → 2027-11-20 (+128d) | 2027-08-06 → 2027-12-15 (+131d) |  |  |  |  |
| SDR-ST-CO-1050 | Training and Manuals | 2027-07-15 → 2027-11-20 (+128d) | 2027-08-06 → 2027-12-15 (+131d) | 20d → 23d | 0d → -113d | SDR-ST-CON-P3-1870 SS-2d, SDR-ST-CON-P3-1630 SS+2d, SDR-ST-CON-P3-1630 → SDR-ST-CON-P3-1870 SS, SDR-ST-CON-P3-1630 | resources Civil Engineer [200.93 h]; Mechanical Engineer [200.93 h]; Architecture [200.93 h] → Suppliers [200.93 h]; Mechanical Engineer [200.93 h]; Architecture [200.93 h] |
| 3 | **Demobilize Manpower** | 2027-07-15 → 2027-11-20 (+128d) | 2027-08-06 → 2027-12-12 (+128d) |  |  |  |  |
| SDR-ST-CO-1060 | Manpower Demobilize | 2027-07-15 → 2027-11-20 (+128d) | 2027-08-06 → 2027-12-12 (+128d) |  | 0d → -112d | SDR-ST-CO-1050 SS, SDR-ST-CO-1020 SS+2d, SDR-ST-CO-1020 → SDR-ST-CO-1050 SS, SDR-ST-CO-1020 |  |
| 4 | **Demobilize Equipment** | 2027-07-15 → 2027-11-20 (+128d) | 2027-08-06 → 2027-12-12 (+128d) |  |  |  |  |
| SDR-ST-CO-1070 | Equipments Demobilize | 2027-07-15 → 2027-11-20 (+128d) | 2027-08-06 → 2027-12-12 (+128d) |  | 0d → -112d |  |  |
| 5 | **Removal of Site Offices and Structures** | 2027-07-15 → 2027-11-20 (+128d) | 2027-08-06 → 2027-12-14 (+130d) |  |  |  |  |
| SDR-ST-CO-1090 | Site Office Removal | 2027-07-15 → 2027-11-20 (+128d) | 2027-08-06 → 2027-12-14 (+130d) | 20d → 22d | 0d → -112d |  |  |
| 6 | **Handover** | 2027-08-06 → 2027-12-01 (+117d) | 2027-08-06 → 2027-12-14 (+130d) |  |  |  |  |
| SDR-ST-CO-1080 | Project Handover | 2027-08-06 → 2027-12-01 (+117d) | 2027-08-06 → 2027-12-14 (+130d) | 1d → 12d | 0d → -112d | SDR-ST-CO-1070 SS, SDR-ST-CO-1090 SS, SDR-ST-CON-P3-1890 SS, SDR-ST-CON-P3-1880 FF, SDR-ST-CON-P3-1840, SDR-ST-CON-P1-6030 SS, SDR-ST-CON-P1-6040 SS, SDR-ST-CON-P1-6000 SS, SDR-ST-CO-1100 FF+1d, SDR-ST-TC-1050 SS, SDR-ST-MILS-1100, SDR-ST-MILS-1120 FF, SDR-ST-TC-1000 FF, SDR-ST-TC-1040 FF, SDR-ST-CON-P1-5980, SDR-ST-CON-P1-6040, SDR-ST-CO-1090 FF, SDR-ST-CON-P1-6030 → SDR-ST-CON-P1-5980, SDR-ST-CON-P1-6040, SDR-ST-CO-1070 SS, SDR-ST-CO-1090 FF, SDR-ST-CON-P3-1890, SDR-ST-CON-P3-1880, SDR-ST-CON-P3-1840, SDR-ST-CON-P1-6030, SDR-ST-CON-P1-6040 SS, SDR-ST-CON-P1-6000, SDR-ST-CO-1100 FF+1d, SDR-ST-TC-1050 FF, SDR-ST-MILS-1100, SDR-ST-MILS-1120 FF, SDR-ST-TC-1000 FF, SDR-ST-TC-1040 FF | resources Civil Engineer [86.11 h]; Civil Forman [86.11 h]; Electrical Forman [86.11 h]; Mechanical Forman [86.11 h]; Helper [86.11 h]; Labor [86.11 h]; Mechanical Engineer [86.11 h] → Suppliers [86.11 h]; Civil Forman [86.11 h]; Electrical Forman [86.11 h]; Mechanical Forman [86.11 h]; Helper [86.11 h]; Labor [86.11 h]; Mechanical Engineer [86.11 h] |
