# Project:PASSENGER STATION FOR SAR RAILWAY - PACKAGE 1 SUDAIR - Update 09/11/2026.-R1

How a schedule from Primavera P6 changed from version to version. A marks actual dates.

## Version 7 (data date 2026-11-09, saved 2026-11-12, file SUD1-05-018-NEW - 9-11-26.xer)

Note of the change: Renumber project folders 01–23 in order (after removing projects 12 and 25)

| ID | WBS | Task | Duration | Start | Finish | Predecessors | Complete | Total float |
| --- | --- | --- | --- | --- | --- | --- | --- | --- |
|  | 1 | **Milestone** |  | 2026-04-07 | 2027-12-15 |  |  |  |
| SDR-ST-MILS-1000 |  | Project Start | 0d | 2026-04-07 A | 2026-04-07 A |  | 100% |  |
| SDR-ST-MILS-1070 |  | Completion of road and paving works | 0d | 2027-02-21 | 2027-02-21 | SDR-ST-CON-P1-4770 |  | -55d |
| SDR-ST-MILS-1100 |  | Completion of site and platform works | 0d | 2027-07-04 | 2027-07-04 | SDR-ST-CON-P3-1490, SDR-ST-CON-P3-1420, SDR-ST-CON-P3-1480 |  | 17d |
| SDR-ST-MILS-1140 |  | Project Finish | 0d | 2027-12-15 | 2027-12-15 | SDR-ST-MILS-1110 FF, SDR-ST-TC-1040, SDR-ST-CO-1050, SDR-ST-CO-1070, SDR-ST-TC-1050, SDR-ST-CON-P3-1780, SDR-ST-CO-1080, SDR-ST-CO-1090, SDR-ST-CON-P1-4790, SDR-ST-CON-P1-4710, SDR-ST-CON-P1-4830, SDR-ST-CON-P1-5120, SDR-ST-CON-P1-5440, SDR-ST-CON-P3-1890 |  | -113d |
|  | 1 | **Major Milestone** |  | 2026-04-07 | 2027-12-12 |  |  |  |
| SDR-ST-MILS-1010 |  | Project Start Milstone | 0d | 2026-04-07 A | 2026-04-07 A | SDR-ST-MILS-1000 SS | 100% |  |
| SDR-ST-MILS-1120 |  | Project Finish Milstone | 0d | 2027-12-12 | 2027-12-12 | SDR-ST-CO-1060, SDR-ST-MILS-1130 |  | -110d |
|  | 3 | **Contractual Milestone** |  | 2026-05-06 | 2027-12-05 |  |  |  |
| SDR-ST-MILS-1040 |  | Submission and approval of plans and materials Finish Milestone | 0d | 2026-05-06 A | 2026-05-06 A | SDR-ST-ENG-AP-1230 | 100% |  |
| SDR-ST-MILS-1020 |  | Mobilization Finish Milestone | 0d | 2026-05-06 A | 2026-05-06 A | SDR-ST-MOBL-1060 | 100% |  |
| SDR-ST-MILS-1030 |  | Execution Plan and Baseline Submission Finish Milestone | 0d | 2026-08-15 A | 2026-08-15 A | SDR-ST-PREL-1110 | 100% |  |
| SDR-ST-MILS-1080 |  | Completion of road works | 0d | 2027-02-21 | 2027-02-21 | SDR-ST-CON-P1-4770 FF, SDR-ST-CON-P1-4410 FF, SDR-ST-CON-P1-4430 FF, SDR-ST-CON-P1-4730 FF, SDR-ST-CON-P1-4750 FF, SDR-ST-CON-P1-5010 FF, SDR-ST-CON-P1-4540 FF, SDR-ST-CON-P1-4890 FF, SDR-ST-CON-P1-4600 FF, SDR-ST-CON-P1-4930 FF, SDR-ST-CON-P1-4650 FF, SDR-ST-CON-P1-4980 FF |  | -18d |
| SDR-ST-MILS-1060 |  | Completion of medium voltage works | 0d | 2027-08-18 | 2027-08-18 | SDR-ST-CON-P1-3900 FF, SDR-ST-CON-P1-4000 FF, SDR-ST-CON-P1-4250 FF, SDR-ST-CON-P1-4010 FF, SDR-ST-CON-P1-4320 FF, SDR-ST-CON-P1-4050 FF, SDR-ST-CON-P1-3980 FF |  | -84d |
| SDR-ST-MILS-1130 |  | Completion of finishing works in the project | 0d | 2027-12-05 | 2027-12-05 | SDR-ST-CON-P1-5490 FF, SDR-ST-CON-P1-5280 FF, SDR-ST-CON-P1-5460 FF, SDR-ST-CON-P1-5390 FF, SDR-ST-CON-P1-5430 FF, SDR-ST-CON-P1-5530 FF, SDR-ST-CON-P1-3900 FF, SDR-ST-CON-P1-4000 FF, SDR-ST-CON-P1-4250 FF, SDR-ST-CON-P1-4010 FF, SDR-ST-CON-P1-4320 FF, SDR-ST-CON-P1-4050 FF, SDR-ST-CON-P1-3980 FF, SDR-ST-CON-P1-5170 FF, SDR-ST-CON-P1-5760 FF, SDR-ST-CON-P1-6080 FF, SDR-ST-CON-P1-5790 FF, SDR-ST-CON-P1-3810 FF, SDR-ST-CON-P1-3670 FF, SDR-ST-CON-P1-3760 FF, SDR-ST-CON-P1-3930 FF, SDR-ST-CON-P1-5920 FF, SDR-ST-CON-P1-6000 FF, SDR-ST-CON-P1-6040 FF, SDR-ST-CON-P1-6050 FF, SDR-ST-CON-P1-4570 FF, SDR-ST-CON-P1-4400 FF, SDR-ST-CON-P1-4610 FF, SDR-ST-CON-P1-3700 FF, SDR-ST-CON-P1-3360 FF, SDR-ST-CON-P1-3480 FF, SDR-ST-CON-P1-5970 FF, SDR-ST-CON-P1-5980 FF, SDR-ST-CON-P1-5910 FF, SDR-ST-CON-P1-6030 FF, SDR-ST-CON-P1-4310 FF, SDR-ST-CON-P1-4880 FF, SDR-ST-CON-P1-4370 FF, SDR-ST-CON-P1-5140 FF, SDR-ST-CON-P1-4020 FF, SDR-ST-CON-P1-4740 FF, SDR-ST-CON-P1-4240 FF, SDR-ST-CON-P1-5240 FF, SDR-ST-CON-P1-4270 FF, SDR-ST-CON-P1-4900 FF, SDR-ST-CON-P1-4160 FF, SDR-ST-CON-P1-4820 FF, SDR-ST-CON-P1-4170 FF, SDR-ST-CON-P1-5000 FF, SDR-ST-CON-P1-3880 FF, SDR-ST-CON-P1-4040 FF, SDR-ST-CON-P1-4070 FF, SDR-ST-CON-P1-4800 FF, SDR-ST-CON-P1-5030 FF, SDR-ST-CON-P1-4700 FF, SDR-ST-CON-P1-5100 FF, SDR-ST-CON-P1-4520 FF, SDR-ST-CON-P1-5070 FF, SDR-ST-CON-P1-4910 FF, SDR-ST-CON-P1-5730 FF, SDR-ST-CON-P1-4640 FF, SDR-ST-CON-P1-5710 FF, SDR-ST-CON-P1-4660 FF, SDR-ST-CON-P1-5750 FF, SDR-ST-CON-P1-5570 FF, SDR-ST-CON-P1-5720 FF, SDR-ST-CON-P1-4970 FF, SDR-ST-CON-P1-5700 FF, SDR-ST-CON-P1-5020 FF, SDR-ST-CON-P1-5740 FF, SDR-ST-CON-P1-5500 FF, SDR-ST-CON-P1-5770 FF, SDR-ST-CON-P1-5670 FF, SDR-ST-CON-P1-5800 FF, SDR-ST-CON-P1-4760 FF, SDR-ST-CON-P3-1840 FF, SDR-ST-CON-P3-1140 FF, SDR-ST-CON-P3-1450 FF, SDR-ST-CON-P3-1880 FF, SDR-ST-CON-P3-1890 FF, SDR-ST-CON-P3-1170 FF, SDR-ST-CON-P3-1790 FF, SDR-ST-CON-P3-1870 FF |  | -104d |
|  | 2 | **Phases Milestone** |  | 2026-11-21 | 2027-12-05 |  |  |  |
| SDR-ST-MILS-1050 |  | Engineering Phase Finish Milestone | 0d | 2026-11-21 | 2026-11-21 | SDR-ST-ENG-AP-1080 FF, SDR-ST-ENG-AP-1090 FF, SDR-ST-ENG-AP-1100 FF, SDR-ST-ENG-AP-1110 FF, SDR-ST-ENG-AP-1120 FF, SDR-ST-ENG-AP-1000 FF, SDR-ST-ENG-AP-1010 FF, SDR-ST-ENG-AP-1020 FF, SDR-ST-ENG-AP-1030 FF, SDR-ST-ENG-AP-1040 FF, SDR-ST-ENG-AP-1050 FF, SDR-ST-ENG-AP-1060 FF, SDR-ST-ENG-AP-1070 FF, SDR-ST-ENG-AP-1130 FF, SDR-ST-ENG-AP-1140 FF, SDR-ST-ENG-AP-1150 FF, SDR-ST-ENG-AP-1160 FF, SDR-ST-ENG-AP-1170 FF, SDR-ST-ENG-AP-1180 FF, SDR-ST-ENG-AP-1190 FF, SDR-ST-ENG-AP-1200 FF, SDR-ST-ENG-AP-1210 FF, SDR-ST-ENG-AP-1220 FF, SDR-ST-ENG-AP-1230 FF |  | -113d |
| SDR-ST-MILS-1090 |  | Procurment Phase Finish Milestone | 0d | 2027-04-20 | 2027-04-20 | SDR-ST-PRO-MS-1260 FF, SDR-ST-PRO-MS-1100 FF, SDR-ST-PRO-MS-1080 FF, SDR-ST-PRO-MS-1270 FF, SDR-ST-PRO-MS-1070 FF, SDR-ST-PRO-MS-1000 FF, SDR-ST-PRO-MS-1010 FF, SDR-ST-PRO-MS-1030 FF, SDR-ST-PRO-MS-1020 FF, SDR-ST-PRO-MS-1040 FF, SDR-ST-PRO-MS-1090 FF, SDR-ST-PRO-MS-1120 FF, SDR-ST-PRO-MS-1150 FF, SDR-ST-PRO-MS-1160 FF, SDR-ST-PRO-MS-1050 FF, SDR-ST-PRO-MS-1060 FF, SDR-ST-PRO-MS-1110 FF, SDR-ST-PRO-MS-1140 FF, SDR-ST-PRO-MS-1130 FF, SDR-ST-PRO-MS-1200 FF, SDR-ST-PRO-MS-1240 FF, SDR-ST-PRO-MS-1180 FF, SDR-ST-PRO-MS-1230 FF, SDR-ST-PRO-MS-1220 FF, SDR-ST-PRO-MS-1210 FF, SDR-ST-PRO-MS-1170 FF, SDR-ST-PRO-MS-1250 FF, SDR-ST-PRO-MS-1190 FF |  | -8d |
| SDR-ST-MILS-1110 |  | Construction Phase Finish Milestone | 0d | 2027-12-05 | 2027-12-05 | SDR-ST-CON-P3-1890 FF, SDR-ST-CON-P3-1790, SDR-ST-CON-P1-6050, SDR-ST-CON-P1-6040 |  | -104d |
|  | 9 | **Mobilization** |  | 2026-04-07 | 2026-08-17 |  |  |  |
|  | 6 | **Office Site Prepare** |  | 2026-04-07 | 2026-04-12 |  |  |  |
| SDR-ST-MOBL-1000 |  | Office Area Grading and Prepare | 4d | 2026-04-07 A | 2026-04-12 A | SDR-ST-MILS-1000 SS | 100% |  |
|  | 3 | **Access Roads** |  | 2026-04-12 | 2026-04-16 |  |  |  |
| SDR-ST-MOBL-1010 |  | Office Area Access Roads Prepare | 4d | 2026-04-12 A | 2026-04-16 A | SDR-ST-MOBL-1000, SDR-ST-MILS-1010 | 100% |  |
|  | 5 | **Offices Installation** |  | 2026-04-16 | 2026-04-22 |  |  |  |
| SDR-ST-MOBL-1020 |  | Offices Cabins Installation | 5d | 2026-04-16 A | 2026-04-22 A | SDR-ST-MILS-1010, SDR-ST-MOBL-1010 | 100% |  |
|  | 10 | **Offices MEP Works** |  | 2026-04-16 | 2026-04-22 |  |  |  |
| SDR-ST-MOBL-1030 |  | Office Cabins MEP Works | 5d | 2026-04-16 A | 2026-04-22 A | SDR-ST-MILS-1000, SDR-ST-MOBL-1020 FF | 100% |  |
|  | 4 | **Manpower Mobilization** |  | 2026-04-22 | 2026-04-30 |  |  |  |
| SDR-ST-MOBL-1040 |  | Manpower Arrive | 4d | 2026-04-22 A | 2026-04-30 A | SDR-ST-MOBL-1030 | 100% |  |
|  | 7 | **Equipment Mobilization** |  | 2026-04-13 | 2026-05-04 |  |  |  |
| SDR-ST-MOBL-1050 |  | Equipment Arrive | 3d | 2026-04-13 A | 2026-05-04 A | SDR-ST-MOBL-1040 | 100% |  |
|  | 1 | **Project Signage** |  | 2026-04-30 | 2026-05-06 |  |  |  |
| SDR-ST-MOBL-1060 |  | Project Sign Installation | 6d | 2026-04-30 A | 2026-05-06 A | SDR-ST-MOBL-1050 | 100% |  |
|  | 2 | **Preliminary Submittals** |  | 2026-04-30 | 2026-08-17 |  |  |  |
|  | 1 | **HSSE Plan** |  | 2026-04-30 | 2026-05-06 |  |  |  |
| SDR-ST-PREL-1000 |  | Project HSSE Plan Submission | 3d | 2026-04-30 A | 2026-05-04 A | SDR-ST-MOBL-1050, SDR-ST-MOBL-1020 | 100% |  |
| SDR-ST-PREL-1060 |  | Project HSSE Plan Approval | 2d | 2026-05-04 A | 2026-05-06 A | SDR-ST-PREL-1000 | 100% |  |
|  | 2 | **Quality Control Plan** |  | 2026-04-30 | 2026-05-06 |  |  |  |
| SDR-ST-PREL-1010 |  | Project Quality Plan Submission | 3d | 2026-04-30 A | 2026-05-04 A | SDR-ST-PREL-1000 SS | 100% |  |
| SDR-ST-PREL-1070 |  | Project Quality Plan Approval | 2d | 2026-05-04 A | 2026-05-06 A | SDR-ST-PREL-1010 | 100% |  |
|  | 3 | **Communications Plan** |  | 2026-04-30 | 2026-06-22 |  |  |  |
| SDR-ST-PREL-1020 |  | Project Communication Plan Submission | 3d | 2026-04-30 A | 2026-05-04 A | SDR-ST-PREL-1010 SS | 100% |  |
| SDR-ST-PREL-1080 |  | Project Communication Plan Approval | 2d | 2026-05-04 A | 2026-06-22 A | SDR-ST-PREL-1020 | 100% |  |
|  | 4 | **Risk Managment Plan** |  | 2026-04-30 | 2026-05-06 |  |  |  |
| SDR-ST-PREL-1030 |  | Project Risk Managment Plan Submission | 3d | 2026-04-30 A | 2026-05-04 A | SDR-ST-PREL-1020 SS | 100% |  |
| SDR-ST-PREL-1090 |  | Project Risk Managment Plan Approvals | 2d | 2026-05-04 A | 2026-05-06 A | SDR-ST-PREL-1030 | 100% |  |
|  | 5 | **Project Execution Plan** |  | 2026-04-30 | 2026-08-17 |  |  |  |
| SDR-ST-PREL-1040 |  | Project Execution Plan Submission | 3d | 2026-04-30 A | 2026-08-15 A | SDR-ST-PREL-1030 SS | 100% |  |
| SDR-ST-PREL-1100 |  | Project Execution Plan Approvals | 2d | 2026-05-04 A | 2026-08-17 A | SDR-ST-PREL-1040 | 100% |  |
|  | 6 | **Project Schedule** |  | 2026-04-30 | 2026-08-02 |  |  |  |
| SDR-ST-PREL-1050 |  | Project Schedule Submission | 3d | 2026-04-30 A | 2026-05-04 A | SDR-ST-PREL-1000 SS | 100% |  |
| SDR-ST-PREL-1110 |  | Project Schedule Approvals | 3d | 2026-05-04 A | 2026-08-02 A | SDR-ST-PREL-1050 | 100% |  |
|  | 3 | **Engineering** |  | 2026-04-07 | 2026-11-30 |  |  |  |
|  | 5 | **Shop Drawings Stage** |  | 2026-04-07 | 2026-11-21 |  |  |  |
|  | 1 | **Submission** |  | 2026-04-07 | 2026-07-08 |  |  |  |
|  | 4 | **Civil** |  | 2026-04-07 | 2026-06-29 |  |  |  |
| SDR-ST-ENG-SUB-1080 |  | STRUCTURAL STEEL GENERAL NOTES Submission | 7d | 2026-04-07 A | 2026-05-31 A | SDR-ST-MILS-1000 SS | 100% |  |
| SDR-ST-ENG-SUB-1090 |  | REINFORCED CONCRETE GENERAL NOTES - 01 Submission | 7d | 2026-04-07 A | 2026-05-31 A | SDR-ST-MILS-1000 SS | 100% |  |
| SDR-ST-ENG-SUB-1100 |  | EXTERNAL CANOPY PLANS Submission | 7d | 2026-04-07 A | 2026-05-24 A | SDR-ST-MILS-1000 SS | 100% |  |
| SDR-ST-ENG-SUB-1110 |  | CANOPY FRAMING Submission | 7d | 2026-04-07 A | 2026-06-29 A | SDR-ST-MILS-1000 SS | 100% |  |
| SDR-ST-ENG-SUB-1120 |  | RC DETAILS Submission | 7d | 2026-04-07 A | 2026-05-31 A | SDR-ST-MILS-1000 SS | 100% |  |
|  | 6 | **Sewerage Network** |  | 2026-04-07 | 2026-05-31 |  |  |  |
| SDR-ST-ENG-SUB-1000 |  | Sewage Layout Master Plan Submission | 7d | 2026-04-07 A | 2026-05-01 A | SDR-ST-MILS-1000 SS | 100% |  |
| SDR-ST-ENG-SUB-1010 |  | Sewage Network Profile Submission | 7d | 2026-04-07 A | 2026-05-01 A | SDR-ST-MILS-1000 SS | 100% |  |
| SDR-ST-ENG-SUB-1020 |  | Sewage Network Standard Details Submission | 7d | 2026-04-07 A | 2026-05-31 A | SDR-ST-MILS-1000 SS | 100% |  |
| SDR-ST-ENG-SUB-1030 |  | Sewage Network Section Submission | 7d | 2026-04-07 A | 2026-05-31 A | SDR-ST-MILS-1000 SS | 100% |  |
|  | 8 | **Portable Water** |  | 2026-04-07 | 2026-05-31 |  |  |  |
| SDR-ST-ENG-SUB-1040 |  | Potable Water Piping Layout Master Plan Submission | 7d | 2026-04-07 A | 2026-05-01 A | SDR-ST-MILS-1000 SS | 100% |  |
| SDR-ST-ENG-SUB-1050 |  | Potable Water Piping Layout Submission | 7d | 2026-04-07 A | 2026-05-01 A | SDR-ST-MILS-1000 SS | 100% |  |

| ID | WBS | Task | Duration | Start | Finish | Predecessors | Complete | Total float |
| --- | --- | --- | --- | --- | --- | --- | --- | --- |
| SDR-ST-ENG-SUB-1060 |  | Potable Water Standard Details Submission | 7d | 2026-04-07 A | 2026-05-31 A | SDR-ST-MILS-1000 SS | 100% |  |
| SDR-ST-ENG-SUB-1070 |  | Potable Water Section Submission | 7d | 2026-04-07 A | 2026-05-31 A | SDR-ST-MILS-1000 SS | 100% |  |
|  | 9 | **Electrical** |  | 2026-04-07 | 2026-07-08 |  |  |  |
| SDR-ST-ENG-SUB-1130 |  | Medium Voltage Network Submission | 7d | 2026-04-07 A | 2026-07-08 A | SDR-ST-MILS-1000 SS | 100% |  |
| SDR-ST-ENG-SUB-1140 |  | Standard Details Medium Voltage Submission | 7d | 2026-04-07 A | 2026-07-08 A | SDR-ST-MILS-1000 SS | 100% |  |
| SDR-ST-ENG-SUB-1150 |  | Low Voltage Network Submission | 7d | 2026-04-07 A | 2026-05-01 A | SDR-ST-MILS-1000 SS | 100% |  |
| SDR-ST-ENG-SUB-1160 |  | Standard Details_Low Voltage Submission | 7d | 2026-04-07 A | 2026-05-01 A | SDR-ST-ENG-SUB-1130 SS | 100% |  |
| SDR-ST-ENG-SUB-1170 |  | Street Lighting Network Submission | 7d | 2026-04-07 A | 2026-05-01 A | SDR-ST-ENG-SUB-1130 SS | 100% |  |
| SDR-ST-ENG-SUB-1180 |  | Standard Details_Street Lighting Submission | 7d | 2026-04-07 A | 2026-05-01 A | SDR-ST-ENG-SUB-1130 SS | 100% |  |
| SDR-ST-ENG-SUB-1190 |  | Telecommunication Network Submission | 7d | 2026-04-07 A | 2026-05-01 A | SDR-ST-ENG-SUB-1130 SS | 100% |  |
| SDR-ST-ENG-SUB-1200 |  | Telecommunication Standard Details Submission | 7d | 2026-04-07 A | 2026-05-01 A | SDR-ST-ENG-SUB-1130 SS | 100% |  |
| SDR-ST-ENG-SUB-1210 |  | Canopy:Ground Floor Lighting Plan Submission | 7d | 2026-04-07 A | 2026-05-01 A | SDR-ST-ENG-SUB-1130 SS | 100% |  |
| SDR-ST-ENG-SUB-1220 |  | Canopy:Ground Floor CCTV Plan Submission | 7d | 2026-04-07 A | 2026-05-01 A | SDR-ST-ENG-SUB-1130 SS | 100% |  |
| SDR-ST-ENG-SUB-1230 |  | Canopy:Ground Floor Voice Evacuation Plan Submission | 7d | 2026-04-07 A | 2026-05-01 A | SDR-ST-ENG-SUB-1130 SS | 100% |  |
|  | 4 | **Approvals** |  | 2026-04-15 | 2026-11-21 |  |  |  |
|  | 4 | **Civil** |  | 2026-04-15 | 2026-07-12 |  |  |  |
| SDR-ST-ENG-AP-1100 |  | EXTERNAL CANOPY PLANS Approval | 11d | 2026-04-15 A | 2026-06-15 A | SDR-ST-ENG-SUB-1100 | 100% |  |
| SDR-ST-ENG-AP-1110 |  | CANOPY FRAMING Approval | 11d | 2026-04-15 A | 2026-07-12 A | SDR-ST-ENG-SUB-1110 | 100% |  |
| SDR-ST-ENG-AP-1080 |  | STRUCTURAL STEEL GENERAL NOTES Approval | 11d | 2026-04-25 A | 2026-06-08 A | SDR-ST-ENG-SUB-1080 | 100% |  |
| SDR-ST-ENG-AP-1090 |  | REINFORCED CONCRETE GENERAL NOTES - 01 Approval | 11d | 2026-04-25 A | 2026-06-08 A | SDR-ST-ENG-SUB-1090 | 100% |  |
| SDR-ST-ENG-AP-1120 |  | RC DETAILS Approval | 11d | 2026-04-25 A | 2026-06-08 A | SDR-ST-ENG-SUB-1120 | 100% |  |
|  | 6 | **Sewerage Network** |  | 2026-04-15 | 2026-06-10 |  |  |  |
| SDR-ST-ENG-AP-1000 |  | Sewage Layout Master Plan Approval | 11d | 2026-04-15 A | 2026-05-06 A | SDR-ST-ENG-SUB-1000 | 100% |  |
| SDR-ST-ENG-AP-1010 |  | Sewage Network Profile Approval | 11d | 2026-04-25 A | 2026-06-10 A | SDR-ST-ENG-SUB-1010 | 100% |  |
| SDR-ST-ENG-AP-1020 |  | Sewage Network Standard Details Approval | 11d | 2026-04-25 A | 2026-06-08 A | SDR-ST-ENG-SUB-1020 | 100% |  |
| SDR-ST-ENG-AP-1030 |  | Sewage Network Section Approval | 11d | 2026-04-25 A | 2026-06-08 A | SDR-ST-ENG-SUB-1030 | 100% |  |
|  | 8 | **Portable Water** |  | 2026-04-15 | 2026-06-08 |  |  |  |
| SDR-ST-ENG-AP-1040 |  | Potable Water Piping Layout Master Plan Approval | 11d | 2026-04-15 A | 2026-05-06 A | SDR-ST-ENG-SUB-1040 | 100% |  |
| SDR-ST-ENG-AP-1050 |  | Potable Water Piping Layout Approval | 11d | 2026-04-15 A | 2026-05-06 A | SDR-ST-ENG-SUB-1050 | 100% |  |
| SDR-ST-ENG-AP-1060 |  | Potable Water Standard Details Approval | 11d | 2026-04-25 A | 2026-06-08 A | SDR-ST-ENG-SUB-1060 | 100% |  |
| SDR-ST-ENG-AP-1070 |  | Potable Water Section Approval | 11d | 2026-04-25 A | 2026-06-08 A | SDR-ST-ENG-SUB-1070 | 100% |  |
|  | 9 | **Electrical** |  | 2026-04-15 | 2026-11-21 |  |  |  |
| SDR-ST-ENG-AP-1150 |  | Low Voltage Network Approval | 11d | 2026-04-15 A | 2026-05-06 A | SDR-ST-ENG-SUB-1150 | 100% |  |
| SDR-ST-ENG-AP-1170 |  | Street Lighting Network Approval | 11d | 2026-04-15 A | 2026-05-06 A | SDR-ST-ENG-SUB-1170 | 100% |  |
| SDR-ST-ENG-AP-1180 |  | Standard Details_Street Lighting Approval | 11d | 2026-04-15 A | 2026-05-06 A | SDR-ST-ENG-SUB-1180 | 100% |  |
| SDR-ST-ENG-AP-1190 |  | Telecommunication Network Approval | 11d | 2026-04-15 A | 2026-05-06 A | SDR-ST-ENG-SUB-1190 | 100% |  |
| SDR-ST-ENG-AP-1200 |  | Telecommunication Standard Details Approval | 11d | 2026-04-15 A | 2026-05-06 A | SDR-ST-ENG-SUB-1200 | 100% |  |
| SDR-ST-ENG-AP-1210 |  | Canopy:Ground Floor Lighting Plan Approval | 11d | 2026-04-15 A | 2026-05-06 A | SDR-ST-ENG-SUB-1210 | 100% |  |
| SDR-ST-ENG-AP-1220 |  | Canopy:Ground Floor CCTV Plan Approval | 11d | 2026-04-15 A | 2026-05-06 A | SDR-ST-ENG-SUB-1220 | 100% |  |
| SDR-ST-ENG-AP-1160 |  | Standard Details_Low Voltage Approval | 11d | 2026-04-25 A | 2026-06-10 A | SDR-ST-ENG-SUB-1160 | 100% |  |
| SDR-ST-ENG-AP-1230 |  | Canopy:Ground Floor Voice Evacuation Plan Approval | 11d | 2026-05-02 A | 2026-05-06 A | SDR-ST-ENG-SUB-1230 FS+8d | 100% |  |
| SDR-ST-ENG-AP-1130 |  | Medium Voltage Network Approval | 11d | 2026-11-09 | 2026-11-21 | SDR-ST-ENG-SUB-1130 |  | -113d |
| SDR-ST-ENG-AP-1140 |  | Standard Details Medium Voltage Approval | 11d | 2026-11-09 | 2026-11-21 | SDR-ST-ENG-SUB-1140 |  | -113d |
|  | 6 | **Materials** |  | 2026-04-16 | 2026-11-30 |  |  |  |
|  | 5 | **Materials Submission** |  | 2026-04-16 | 2026-11-17 |  |  |  |
|  | 2 | **Short Lead Items** |  | 2026-04-16 | 2026-06-30 |  |  |  |
|  | 2 | **Civil** |  | 2026-04-16 | 2026-06-07 |  |  |  |
| SDR-ST-PRO-S-1010 |  | Waterproofing (Thermal & moisture Protection) | 7d | 2026-04-16 A | 2026-06-07 A | SDR-ST-ENG-AP-1120 SS+1d, SDR-ST-MILS-1000 SS | 100% |  |
| SDR-ST-PRO-S-1030 |  | Interlock | 7d | 2026-04-16 A | 2026-05-01 A | SDR-ST-ENG-AP-1090 SS+1d, SDR-ST-MILS-1000 SS | 100% |  |
| SDR-ST-PRO-S-1060 |  | Kerbstone | 7d | 2026-04-16 A | 2026-05-01 A | SDR-ST-ENG-AP-1090 SS+1d, SDR-ST-MILS-1000 | 100% |  |
| SDR-ST-PRO-S-1260 |  | Steel Bars | 7d | 2026-04-16 A | 2026-05-01 A | SDR-ST-ENG-AP-1080 SS+1d, SDR-ST-MILS-1000 SS | 100% |  |
| SDR-ST-PRO-S-1270 |  | Asphalt | 7d | 2026-04-16 A | 2026-06-03 A | SDR-ST-ENG-AP-1090 SS+1d, SDR-ST-MILS-1000 | 100% |  |
|  | 4 | **Electrical** |  | 2026-04-16 | 2026-06-30 |  |  |  |
| SDR-ST-PRO-S-1140 |  | LOW VOLTAGE CABLES | 7d | 2026-04-16 A | 2026-05-01 A | SDR-ST-ENG-AP-1150 SS+1d, SDR-ST-ENG-AP-1160 SS, SDR-ST-MILS-1000 FS+8d | 100% |  |
| SDR-ST-PRO-S-1150 |  | LOW VOLTAGE DISTRIBUTION Panel | 7d | 2026-04-16 A | 2026-06-23 A | SDR-ST-ENG-AP-1150 SS+1d, SDR-ST-MILS-1000 | 100% |  |
| SDR-ST-PRO-S-1160 |  | STREET LIGHTING FEEDER Panel | 7d | 2026-04-16 A | 2026-06-22 A | SDR-ST-ENG-AP-1170 SS+1d, SDR-ST-MILS-1000 | 100% |  |
| SDR-ST-PRO-S-1170 |  | STREET LIGHTING CABLES | 7d | 2026-04-16 A | 2026-06-04 A | SDR-ST-ENG-AP-1170 SS+1d, SDR-ST-ENG-AP-1180 SS, SDR-ST-MILS-1000 | 100% |  |
| SDR-ST-PRO-S-1200 |  | ROAD CROSSING DUCTS Ø110mm | 7d | 2026-04-16 A | 2026-06-15 A | SDR-ST-ENG-AP-1010 SS+1d, SDR-ST-MILS-1000 | 100% |  |
| SDR-ST-PRO-S-1210 |  | Drawpits | 7d | 2026-04-16 A | 2026-06-24 A | SDR-ST-ENG-AP-1090 SS+1d, SDR-ST-MILS-1000 | 100% |  |
| SDR-ST-PRO-S-1230 |  | CCTV :5MP IP PoE Bullet Camera | 7d | 2026-04-16 A | 2026-06-30 A | SDR-ST-ENG-AP-1190 SS+1d, SDR-ST-MILS-1000 | 100% |  |
| SDR-ST-PRO-S-1240 |  | CCTV :Pole mounted Filed Equipment cabinet (FE | 7d | 2026-04-16 A | 2026-06-22 A | SDR-ST-ENG-AP-1200 SS+1d, SDR-ST-MILS-1000 | 100% |  |
| SDR-ST-PRO-S-1250 |  | VOICE EVACUATION SYSTEM | 7d | 2026-04-16 A | 2026-06-23 A | SDR-ST-ENG-AP-1200 SS+1d, SDR-ST-MILS-1000 | 100% |  |
|  | 1 | **Mechanical** |  | 2026-04-16 | 2026-06-08 |  |  |  |
| SDR-ST-PRO-S-1040 |  | HDPE PIPES & FITTINGS | 7d | 2026-04-16 A | 2026-05-01 A | SDR-ST-ENG-AP-1000 SS+1d, SDR-ST-ENG-AP-1020 SS, SDR-ST-ENG-AP-1040 SS, SDR-ST-ENG-AP-1060 SS, SDR-ST-MILS-1000 | 100% |  |
| SDR-ST-PRO-S-1050 |  | CONCRETE PIPES AND FITTINGS | 7d | 2026-04-16 A | 2026-05-21 A | SDR-ST-ENG-AP-1090 SS+1d, SDR-ST-MILS-1000 | 100% |  |
| SDR-ST-PRO-S-1070 |  | GI GOOSENECK & VENT | 7d | 2026-04-16 A | 2026-06-08 A | SDR-ST-ENG-AP-1010 SS+1d, SDR-ST-MILS-1000 | 100% |  |
| SDR-ST-PRO-S-1080 |  | WARNING TAPE | 7d | 2026-04-16 A | 2026-05-01 A | SDR-ST-ENG-AP-1000 SS+1d, SDR-ST-ENG-AP-1050 SS+1d, SDR-ST-MILS-1000 | 100% |  |
| SDR-ST-PRO-S-1090 |  | MANHOLE, CATCH BASIN & VALVE BOX COVER | 7d | 2026-04-16 A | 2026-05-02 A | SDR-ST-ENG-AP-1030 SS+1d, SDR-ST-ENG-AP-1070 SS+1d, SDR-ST-MILS-1000 | 100% |  |
|  | 1 | **Long Lead Items** |  | 2026-04-16 | 2026-11-17 |  |  |  |
|  | 1 | **Civil** |  | 2026-04-16 | 2026-06-21 |  |  |  |

| ID | WBS | Task | Duration | Start | Finish | Predecessors | Complete | Total float |
| --- | --- | --- | --- | --- | --- | --- | --- | --- |
| SDR-ST-PRO-S-1000 |  | Metal railing for platform | 7d | 2026-04-16 A | 2026-06-21 A | SDR-ST-ENG-AP-1110 SS+1d, SDR-ST-MILS-1000 | 100% |  |
| SDR-ST-PRO-S-1020 |  | Canopy | 7d | 2026-04-16 A | 2026-05-01 A | SDR-ST-ENG-AP-1100 SS+1d, SDR-ST-MILS-1000 | 100% |  |
|  | 3 | **Electrical** |  | 2026-04-16 | 2026-11-17 |  |  |  |
| SDR-ST-PRO-S-1180 |  | LIGHTING POLES | 7d | 2026-04-16 A | 2026-05-01 A | SDR-ST-ENG-AP-1170 SS+1d, SDR-ST-MILS-1000 | 100% |  |
| SDR-ST-PRO-S-1190 |  | STREET LIGHTING LUMINAIRE | 7d | 2026-04-16 A | 2026-06-01 A | SDR-ST-ENG-AP-1170 SS+1d, SDR-ST-ENG-AP-1210 SS, SDR-ST-MILS-1000 | 100% |  |
| SDR-ST-PRO-S-1220 |  | Outdoor Lighting Fixtures | 7d | 2026-04-16 A | 2026-06-08 A | SDR-ST-ENG-AP-1170 SS+1d, SDR-ST-ENG-AP-1220 SS, SDR-ST-MILS-1000 | 100% |  |
| SDR-ST-PRO-S-1110 |  | MEDIUM VOLTAGE CABLES DUCT BANKS | 7d | 2026-11-10 | 2026-11-17 | SDR-ST-ENG-AP-1130 SS+1d, SDR-ST-MILS-1000 |  | -66d |
| SDR-ST-PRO-S-1120 |  | MEDIUM VOLTAGE CABLES | 7d | 2026-11-10 | 2026-11-17 | SDR-ST-ENG-AP-1140 SS+1d, SDR-ST-ENG-AP-1130 SS+1d, SDR-ST-MILS-1000 |  | -27d |
| SDR-ST-PRO-S-1130 |  | SUB-STATION | 7d | 2026-11-10 | 2026-11-17 | SDR-ST-ENG-AP-1130 SS+1d, SDR-ST-ENG-AP-1190 SS+1d, SDR-ST-ENG-AP-1170 SS+1d, SDR-ST-MILS-1000 |  | -8d |
|  | 2 | **Mechanical** |  | 2026-04-16 | 2026-05-01 |  |  |  |
| SDR-ST-PRO-S-1100 |  | WASHOUT & AIR VALVE, GATE VALVE, BUTTERFLY VALVE | 7d | 2026-04-16 A | 2026-05-01 A | SDR-ST-ENG-AP-1010 SS+1d, SDR-ST-MILS-1000 | 100% |  |
|  | 6 | **Materials Approval** |  | 2026-04-16 | 2026-11-30 |  |  |  |
|  | 2 | **Short Lead Items** |  | 2026-04-16 | 2026-11-15 |  |  |  |
|  | 1 | **Civil** |  | 2026-04-25 | 2026-07-07 |  |  |  |
| SDR-ST-PRO-A-1010 |  | Waterproofing (Thermal & moisture Protection) | 11d | 2026-04-25 A | 2026-06-15 A | SDR-ST-PRO-S-1010 | 100% |  |
| SDR-ST-PRO-A-1270 |  | Asphalt | 11d | 2026-04-25 A | 2026-07-07 A | SDR-ST-PRO-S-1270 | 100% |  |
| SDR-ST-PRO-A-1030 |  | Interlock | 11d | 2026-05-02 A | 2026-05-06 A | SDR-ST-PRO-S-1030 | 100% |  |
| SDR-ST-PRO-A-1060 |  | Kerbstone | 11d | 2026-05-02 A | 2026-05-06 A | SDR-ST-PRO-S-1060 | 100% |  |
| SDR-ST-PRO-A-1260 |  | Steel Bars | 11d | 2026-05-02 A | 2026-05-06 A | SDR-ST-PRO-S-1260 | 100% |  |
|  | 3 | **Electrical** |  | 2026-04-16 | 2026-11-15 |  |  |  |
| SDR-ST-PRO-A-1110 |  | LOW VOLTAGE CABLES | 11d | 2026-04-16 A | 2026-05-06 A | SDR-ST-PRO-S-1140 SS | 100% |  |
| SDR-ST-PRO-A-1130 |  | STREET LIGHTING FEEDER Panel | 11d | 2026-04-22 A | 2026-07-12 A | SDR-ST-PRO-S-1160 | 100% |  |
| SDR-ST-PRO-A-1120 |  | LOW VOLTAGE DISTRIBUTION Panel | 11d | 2026-04-25 A | 2026-07-12 A | SDR-ST-PRO-S-1150 | 100% |  |
| SDR-ST-PRO-A-1140 |  | STREET LIGHTING CABLES | 11d | 2026-04-25 A | 2026-06-20 A | SDR-ST-PRO-S-1170 | 100% |  |
| SDR-ST-PRO-A-1150 |  | ROAD CROSSING DUCTS Ø110mm | 11d | 2026-04-25 A | 2026-06-20 A | SDR-ST-PRO-S-1200 | 100% |  |
| SDR-ST-PRO-A-1160 |  | Drawpits | 11d | 2026-04-25 A | 2026-07-19 A | SDR-ST-PRO-S-1210 | 100% |  |
| SDR-ST-PRO-A-1190 |  | VOICE EVACUATION SYSTEM | 11d | 2026-04-25 A | 2026-07-21 A | SDR-ST-PRO-S-1250 | 100% |  |
| SDR-ST-PRO-A-1170 |  | CCTV :5MP IP PoE Bullet Camera | 11d | 2026-07-26 A | 2026-11-15 | SDR-ST-PRO-S-1230 | 60% | 55d |
| SDR-ST-PRO-A-1180 |  | CCTV :Pole mounted Filed Equipment cabinet (FE | 11d | 2026-07-26 A | 2026-11-15 | SDR-ST-PRO-S-1240 | 60% | 57d |
|  | 2 | **Mechanical** |  | 2026-04-25 | 2026-07-01 |  |  |  |
| SDR-ST-PRO-A-1050 |  | CONCRETE PIPES AND FITTINGS | 11d | 2026-04-25 A | 2026-05-31 A | SDR-ST-PRO-S-1050 | 100% |  |
| SDR-ST-PRO-A-1070 |  | GI GOOSENECK & VENT | 11d | 2026-04-25 A | 2026-07-01 A | SDR-ST-PRO-S-1070 | 100% |  |
| SDR-ST-PRO-A-1080 |  | WARNING TAPE | 11d | 2026-04-25 A | 2026-05-24 A | SDR-ST-PRO-S-1080 | 100% |  |
| SDR-ST-PRO-A-1040 |  | HDPE PIPES & FITTINGS | 11d | 2026-05-02 A | 2026-05-06 A | SDR-ST-PRO-S-1040 | 100% |  |
| SDR-ST-PRO-A-1090 |  | MANHOLE, CATCH BASIN & VALVE BOX COVER | 11d | 2026-05-02 A | 2026-06-24 A | SDR-ST-PRO-S-1090 | 100% |  |
|  | 1 | **Long Lead Items** |  | 2026-04-25 | 2026-11-30 |  |  |  |
|  | 1 | **Civil** |  | 2026-04-25 | 2026-07-13 |  |  |  |
| SDR-ST-PRO-A-1000 |  | Metal railing for platform | 11d | 2026-04-25 A | 2026-07-13 A | SDR-ST-PRO-S-1000 | 100% |  |
| SDR-ST-PRO-A-1020 |  | Canopy | 11d | 2026-05-02 A | 2026-05-06 A | SDR-ST-PRO-S-1020 | 100% |  |
|  | 3 | **Electrical** |  | 2026-04-25 | 2026-11-30 |  |  |  |
| SDR-ST-PRO-A-1240 |  | STREET LIGHTING LUMINAIRE | 11d | 2026-04-25 A | 2026-06-09 A | SDR-ST-PRO-S-1190 | 100% |  |
| SDR-ST-PRO-A-1250 |  | Outdoor Lighting Fixtures | 11d | 2026-04-25 A | 2026-06-15 A | SDR-ST-PRO-S-1220 | 100% |  |
| SDR-ST-PRO-A-1230 |  | LIGHTING POLES | 11d | 2026-05-02 A | 2026-05-06 A | SDR-ST-PRO-S-1180 | 100% |  |
| SDR-ST-PRO-A-1200 |  | MEDIUM VOLTAGE CABLES DUCT BANKS | 11d | 2026-11-18 | 2026-11-30 | SDR-ST-PRO-S-1110 |  | -66d |
| SDR-ST-PRO-A-1210 |  | MEDIUM VOLTAGE CABLES | 11d | 2026-11-18 | 2026-11-30 | SDR-ST-PRO-S-1120 |  | -27d |
| SDR-ST-PRO-A-1220 |  | SUB-STATION | 11d | 2026-11-18 | 2026-11-30 | SDR-ST-PRO-S-1130 |  | -8d |
|  | 2 | **Mechanical** |  | 2026-05-02 | 2026-05-06 |  |  |  |
| SDR-ST-PRO-A-1100 |  | WASHOUT & AIR VALVE, GATE VALVE, BUTTERFLY VALVE | 11d | 2026-05-02 A | 2026-05-06 A | SDR-ST-PRO-S-1100 | 100% |  |
|  | 4 | **Procurement** |  | 2026-06-09 | 2027-04-20 |  |  |  |
|  | 5 | **Purchase Order** |  | 2026-06-09 | 2026-12-17 |  |  |  |
|  | 4 | **Short Lead Items** |  | 2026-06-09 | 2026-11-23 |  |  |  |
|  | 1 | **Civil** |  | 2026-07-22 | 2026-11-14 |  |  |  |
| SDR-ST-PRO-PO-1060 |  | Kerbstone | 10d | 2026-07-22 A | 2026-10-29 A | SDR-ST-MILS-1000 SS+87d, SDR-ST-PRO-A-1060 | 100% |  |
| SDR-ST-PRO-PO-1030 |  | Waterproofing (Thermal & moisture Protection) | 20d | 2026-08-10 A | 2026-11-08 A | SDR-ST-MILS-1000 SS+103d, SDR-ST-PRO-A-1010 | 100% |  |
| SDR-ST-PRO-PO-1270 |  | Asphalt | 10d | 2026-09-06 A | 2026-10-29 A | SDR-ST-MILS-1000 SS+126d, SDR-ST-PRO-A-1270 | 100% |  |
| SDR-ST-PRO-PO-1260 |  | Steel Bars | 10d | 2026-09-28 A | 2026-11-14 | SDR-ST-PREL-1110, SDR-ST-PRO-A-1260 | 50% | -56d |
| SDR-ST-PRO-PO-1040 |  | Interlock | 12d | 2026-10-25 A | 2026-11-12 | SDR-ST-MILS-1000 SS+86d, SDR-ST-PRO-A-1030 | 80% | -3d |
|  | 3 | **Electrical** |  | 2026-06-18 | 2026-11-23 |  |  |  |
| SDR-ST-PRO-PO-1100 |  | LOW VOLTAGE CABLES | 20d | 2026-06-18 A | 2026-07-13 A | SDR-ST-MILS-1000 SS+98d, SDR-ST-PRO-A-1110 | 100% |  |
| SDR-ST-PRO-PO-1010 |  | ROAD CROSSING DUCTS Ø110mm | 10d | 2026-07-01 A | 2026-07-21 A | SDR-ST-MILS-1000 SS+81d, SDR-ST-PRO-A-1150 | 100% |  |
| SDR-ST-PRO-PO-1070 |  | STREET LIGHTING FEEDER Panel | 10d | 2026-07-01 A | 2026-11-14 | SDR-ST-MILS-1000 SS+86d, SDR-ST-PRO-A-1130 | 50% | -12d |
| SDR-ST-PRO-PO-1130 |  | LOW VOLTAGE DISTRIBUTION Panel | 10d | 2026-07-01 A | 2026-11-14 | SDR-ST-MILS-1000 SS+94d, SDR-ST-PRO-A-1120 | 50% | 81d |
| SDR-ST-PRO-PO-1110 |  | STREET LIGHTING CABLES | 11d | 2026-08-25 A | 2026-11-12 | SDR-ST-MILS-1000 SS+98d, SDR-ST-PRO-A-1140 | 70% | 26.7d |
| SDR-ST-PRO-PO-1050 |  | CCTV :Pole mounted Filed Equipment cabinet | 10d | 2026-10-29 A | 2026-11-23 | SDR-ST-MILS-1000 SS+86d, SDR-ST-PRO-A-1180 | 25% | 57d |
| SDR-ST-PRO-PO-1230 |  | CCTV :5MP IP PoE Bullet Camera | 10d | 2026-10-29 A | 2026-11-23 | SDR-ST-MILS-1000 SS+131d, SDR-ST-PRO-A-1170 | 25% | 55d |
| SDR-ST-PRO-PO-1020 |  | Drawpits | 10d | 2026-10-31 A | 2026-11-16 | SDR-ST-MILS-1000 SS+81d, SDR-ST-PRO-A-1160 | 25% | -51d |
| SDR-ST-PRO-PO-1220 |  | VOICE EVACUATION SYSTEM | 10d | 2026-10-31 A | 2026-11-15 | SDR-ST-MILS-1000 SS+126d, SDR-ST-PRO-A-1190 | 25% | 62d |
|  | 2 | **Mechanical** |  | 2026-06-09 | 2026-11-15 |  |  |  |
| SDR-ST-PRO-PO-1000 |  | WARNING TAPE | 10d | 2026-06-09 A | 2026-07-06 A | SDR-ST-MILS-1000 SS+76d, SDR-ST-PRO-A-1080, SDR-ST-MILS-1050, SDR-ST-MILS-1040, SDR-ST-MILS-1030, SDR-ST-MILS-1020, SDR-ST-PREL-1100, SDR-ST-PREL-1090, SDR-ST-PREL-1080, SDR-ST-PREL-1060, SDR-ST-PREL-1070 | 100% |  |
| SDR-ST-PRO-PO-1080 |  | HDPE PIPES & FITTINGS | 10d | 2026-06-09 A | 2026-06-23 A | SDR-ST-MILS-1000 SS+98d, SDR-ST-PRO-A-1040 | 100% |  |

| ID | WBS | Task | Duration | Start | Finish | Predecessors | Complete | Total float |
| --- | --- | --- | --- | --- | --- | --- | --- | --- |
| SDR-ST-PRO-PO-1120 |  | CONCRETE PIPES AND FITTINGS | 10d | 2026-06-09 A | 2026-06-22 A | SDR-ST-MILS-1000 SS+89d, SDR-ST-PRO-A-1050 | 100% |  |
| SDR-ST-PRO-PO-1140 |  | MANHOLE, CATCH BASIN & VALVE BOX COVER | 10d | 2026-10-27 A | 2026-11-15 | SDR-ST-MILS-1000 SS+96d, SDR-ST-PRO-A-1090 | 50% | -48d |
| SDR-ST-PRO-PO-1090 |  | GI GOOSENECK & VENT | 10d | 2026-10-31 A | 2026-11-15 | SDR-ST-MILS-1000 SS+88d, SDR-ST-PRO-A-1070 | 25% | 67d |
|  | 5 | **Long Lead Items** |  | 2026-07-01 | 2026-12-17 |  |  |  |
|  | 1 | **Civil** |  | 2026-11-09 | 2026-12-08 |  |  |  |
| SDR-ST-PRO-PO-1150 |  | Metal railing for platform | 26d | 2026-11-09 | 2026-12-08 | SDR-ST-MILS-1000 SS+106d, SDR-ST-PRO-A-1000 |  | 14d |
| SDR-ST-PRO-PO-1240 |  | Canopy | 14d | 2026-11-09 | 2026-11-24 | SDR-ST-MILS-1000 SS+146d, SDR-ST-PRO-A-1020 |  | -32d |
|  | 3 | **Electrical** |  | 2026-07-01 | 2026-12-17 |  |  |  |
| SDR-ST-PRO-PO-1200 |  | LIGHTING POLES | 14d | 2026-07-01 A | 2026-11-15 | SDR-ST-MILS-1000 SS+122d, SDR-ST-PRO-A-1230 | 60% | -49.6d |
| SDR-ST-PRO-PO-1180 |  | Outdoor Lighting Fixtures | 14d | 2026-11-09 | 2026-11-24 | SDR-ST-MILS-1000 SS+131d, SDR-ST-PRO-A-1250 |  | 32d |
| SDR-ST-PRO-PO-1210 |  | STREET LIGHTING LUMINAIRE | 14d | 2026-11-09 | 2026-11-24 | SDR-ST-MILS-1000 SS+133d, SDR-ST-PRO-A-1240 |  | 21d |
| SDR-ST-PRO-PO-1160 |  | MEDIUM VOLTAGE CABLES DUCT BANKS | 14d | 2026-12-01 | 2026-12-16 | SDR-ST-MILS-1000 SS+116d, SDR-ST-PRO-A-1200 |  | -66d |
| SDR-ST-PRO-PO-1170 |  | MEDIUM VOLTAGE CABLES | 15d | 2026-12-01 | 2026-12-17 | SDR-ST-MILS-1000 SS+116d, SDR-ST-PRO-A-1210 |  | -27d |
| SDR-ST-PRO-PO-1250 |  | SUB-STATION | 14d | 2026-12-01 | 2026-12-16 | SDR-ST-MILS-1000 SS+151d, SDR-ST-PRO-A-1220 |  | -8d |
|  | 2 | **Mechanical** |  | 2026-11-09 | 2026-11-24 |  |  |  |
| SDR-ST-PRO-PO-1190 |  | WASHOUT & AIR VALVE, GATE VALVE, BUTTERFLY VALVE | 14d | 2026-11-09 | 2026-11-24 | SDR-ST-MILS-1000 SS+122d, SDR-ST-PRO-A-1100 |  | -23d |
|  | 6 | **Delivery to Site** |  | 2026-07-13 | 2027-04-16 |  |  |  |
|  | 2 | **Short Lead Items Delivery** |  | 2026-07-13 | 2027-02-06 |  |  |  |
|  | 1 | **Civil** |  | 2026-10-19 | 2027-02-06 |  |  |  |
| SDR-ST-PRO-DL-1030 |  | Waterproofing (Thermal & moisture Protection) | 61d | 2026-10-19 A | 2027-01-07 | SDR-ST-PRO-PO-1030 | 85% | 25d |
| SDR-ST-PRO-DL-1260 |  | Steel Bars | 60d | 2026-10-19 A | 2026-12-24 | SDR-ST-MILS-1000 SS+64d, SDR-ST-PRO-PO-1260 | 30% | -66d |
| SDR-ST-PRO-DL-1270 |  | Asphalt | 19d | 2026-10-19 A | 2027-02-06 | SDR-ST-PRO-PO-1270 FS+1d | 15% | -60d |
| SDR-ST-PRO-DL-1060 |  | Kerbstone | 52d | 2026-10-25 A | 2027-01-07 | SDR-ST-PRO-PO-1060 FS+1d | 25% | -51d |
| SDR-ST-PRO-DL-1040 |  | Interlock | 55d | 2026-10-31 A | 2027-01-10 | SDR-ST-PRO-PO-1040 FS+6d | 15% | -3d |
|  | 3 | **Electrical** |  | 2026-08-02 | 2027-01-25 |  |  |  |
| SDR-ST-PRO-DL-1100 |  | LOW VOLTAGE CABLES | 62d | 2026-08-02 A | 2026-12-29 | SDR-ST-PRO-PO-1100 | 50% | 73d |
| SDR-ST-PRO-DL-1010 |  | ROAD CROSSING DUCTS Ø110mm | 17d | 2026-10-25 A | 2026-12-07 | SDR-ST-PRO-PO-1010 | 25% | -19d |
| SDR-ST-PRO-DL-1070 |  | STREET LIGHTING FEEDER Panel | 41d | 2026-10-25 A | 2026-12-31 | SDR-ST-PRO-PO-1070 FS+6d | 15% | -14d |
| SDR-ST-PRO-DL-1110 |  | STREET LIGHTING CABLES | 26d | 2026-10-25 A | 2026-12-21 | SDR-ST-PRO-PO-1110 FS+3d | 15% | 30.7d |
| SDR-ST-PRO-DL-1130 |  | LOW VOLTAGE DISTRIBUTION Panel | 42d | 2026-10-25 A | 2026-12-27 | SDR-ST-PRO-PO-1130 FS+3d | 15% | 95d |
| SDR-ST-PRO-DL-1200 |  | VOICE EVACUATION SYSTEM | 63d | 2026-11-16 | 2027-01-17 | SDR-ST-PRO-PO-1220 |  | 72d |
| SDR-ST-PRO-DL-1020 |  | Drawpits | 32d | 2026-11-17 | 2026-12-18 | SDR-ST-PRO-PO-1020 |  | -60d |
| SDR-ST-PRO-DL-1050 |  | CCTV :Pole mounted Filed Equipment cabinet | 63d | 2026-11-24 | 2027-01-25 | SDR-ST-PRO-PO-1050 |  | 66d |
| SDR-ST-PRO-DL-1230 |  | CCTV :5MP IP PoE Bullet Camera | 63d | 2026-11-24 | 2027-01-25 | SDR-ST-PRO-PO-1230 |  | 64d |
|  | 2 | **Mechanical** |  | 2026-07-13 | 2027-01-13 |  |  |  |
| SDR-ST-PRO-DL-1080 |  | HDPE PIPES & FITTINGS | 60d | 2026-07-13 A | 2026-07-20 A | SDR-ST-PRO-PO-1080 | 100% |  |
| SDR-ST-PRO-DL-1000 |  | WARNING TAPE | 55d | 2026-08-11 A | 2026-08-25 A | SDR-ST-PRO-PO-1000 | 100% |  |
| SDR-ST-PRO-DL-1120 |  | CONCRETE PIPES AND FITTINGS | 80d | 2026-08-18 A | 2026-08-31 A | SDR-ST-PRO-PO-1120 | 100% |  |
| SDR-ST-PRO-DL-2000 |  | MANHOLE, CATCH BASIN & VALVE BOX COVER | 60d | 2026-10-31 A | 2027-01-13 | SDR-ST-PRO-PO-1140 | 15% | -48d |
| SDR-ST-PRO-DL-1090 |  | GI GOOSENECK & VENT | 59d | 2026-11-16 | 2027-01-13 | SDR-ST-PRO-PO-1090 |  | 78d |
|  | 5 | **Long Lead Items Delivery** |  | 2026-11-15 | 2027-04-16 |  |  |  |
|  | 1 | **Civil** |  | 2026-12-07 | 2027-03-22 |  |  |  |
| SDR-ST-PRO-DL-1240 |  | Canopy | 100d | 2026-12-07 | 2027-03-22 | SDR-ST-PRO-PO-1240 FS+10d |  | -38d |
| SDR-ST-PRO-DL-1150 |  | Metal railing for platform | 98d | 2026-12-09 | 2027-03-22 | SDR-ST-MILS-1000 SS+152d, SDR-ST-PRO-PO-1150 |  | 16d |
|  | 3 | **Electrical** |  | 2026-11-15 | 2027-04-16 |  |  |  |
| SDR-ST-PRO-DL-1210 |  | LIGHTING POLES | 91d | 2026-11-15 | 2027-02-14 | SDR-ST-PRO-PO-1200 |  | -58.6d |
| SDR-ST-PRO-DL-1180 |  | Outdoor Lighting Fixtures | 80d | 2026-11-25 | 2027-02-12 | SDR-ST-MILS-1000 SS+165d, SDR-ST-PRO-PO-1180 |  | 37d |
| SDR-ST-PRO-DL-1220 |  | STREET LIGHTING LUMINAIRE | 52d | 2026-11-25 | 2027-01-15 | SDR-ST-MILS-1000 SS+162d, SDR-ST-PRO-PO-1210 |  | 25d |
| SDR-ST-PRO-DL-1160 |  | MEDIUM VOLTAGE CABLES DUCT BANKS | 102d | 2026-12-17 | 2027-04-03 | SDR-ST-PRO-PO-1160 |  | -77d |
| SDR-ST-PRO-DL-1250 |  | SUB-STATION | 115d | 2026-12-17 | 2027-04-16 | SDR-ST-PRO-PO-1250 |  | -9d |
| SDR-ST-PRO-DL-1170 |  | MEDIUM VOLTAGE CABLES | 105d | 2026-12-18 | 2027-04-07 | SDR-ST-PRO-PO-1170 |  | -31d |
|  | 2 | **Mechanical** |  | 2026-11-30 | 2026-12-16 |  |  |  |
| SDR-ST-PRO-DL-1190 |  | WASHOUT & AIR VALVE, GATE VALVE, BUTTERFLY VALVE | 17d | 2026-11-30 | 2026-12-16 | SDR-ST-PRO-PO-1190 FS+4d |  | -27d |
|  | 4 | **Materials Staging Time** |  | 2026-11-09 | 2027-04-20 |  |  |  |
|  | 4 | **Short Lead Items Delivery** |  | 2026-11-09 | 2027-02-10 |  |  |  |
|  | 1 | **Civil** |  | 2026-12-25 | 2027-02-10 |  |  |  |
| SDR-ST-PRO-MS-1260 |  | Steel Bars | 4d | 2026-12-25 | 2026-12-28 | SDR-ST-PRO-DL-1260 |  | -66d |
| SDR-ST-PRO-MS-1070 |  | Waterproofing (Thermal & moisture Protection) | 4d | 2027-01-08 | 2027-01-11 | SDR-ST-PRO-DL-1030 |  | 25d |
| SDR-ST-PRO-MS-1100 |  | Kerbstone | 5d | 2027-01-08 | 2027-01-12 | SDR-ST-PRO-DL-1060 |  | -51d |
| SDR-ST-PRO-MS-1080 |  | Interlock | 4d | 2027-01-11 | 2027-01-14 | SDR-ST-PRO-DL-1040 |  | -3d |
| SDR-ST-PRO-MS-1270 |  | Asphalt | 4d | 2027-02-07 | 2027-02-10 | SDR-ST-PRO-DL-1270 |  | -60d |
|  | 3 | **Electrical** |  | 2026-12-08 | 2027-01-31 |  |  |  |
| SDR-ST-PRO-MS-1000 |  | ROAD CROSSING DUCTS Ø110mm | 4d | 2026-12-08 | 2026-12-11 | SDR-ST-PRO-DL-1010 |  | -19d |
| SDR-ST-PRO-MS-1010 |  | Drawpits | 4d | 2026-12-19 | 2026-12-22 | SDR-ST-PRO-DL-1020 |  | -60d |
| SDR-ST-PRO-MS-1030 |  | STREET LIGHTING CABLES | 4d | 2026-12-21 | 2026-12-25 | SDR-ST-PRO-DL-1110 |  | 30.7d |
| SDR-ST-PRO-MS-1040 |  | LOW VOLTAGE DISTRIBUTION Panel | 4d | 2026-12-28 | 2026-12-31 | SDR-ST-PRO-DL-1130 |  | 95d |
| SDR-ST-PRO-MS-1120 |  | LOW VOLTAGE CABLES | 4d | 2026-12-30 | 2027-01-02 | SDR-ST-PRO-DL-1100 |  | 73d |
| SDR-ST-PRO-MS-1020 |  | STREET LIGHTING FEEDER Panel | 4d | 2027-01-01 | 2027-01-04 | SDR-ST-PRO-DL-1070 |  | -14d |
| SDR-ST-PRO-MS-1150 |  | VOICE EVACUATION SYSTEM | 6d | 2027-01-18 | 2027-01-23 | SDR-ST-PRO-DL-1200 |  | 72d |
| SDR-ST-PRO-MS-1090 |  | CCTV :Pole mounted Filed Equipment cabinet | 4d | 2027-01-26 | 2027-01-29 | SDR-ST-PRO-DL-1050 |  | 66d |

| ID | WBS | Task | Duration | Start | Finish | Predecessors | Complete | Total float |
| --- | --- | --- | --- | --- | --- | --- | --- | --- |
| SDR-ST-PRO-MS-1160 |  | CCTV :5MP IP PoE Bullet Camera | 6d | 2027-01-26 | 2027-01-31 | SDR-ST-PRO-DL-1230 |  | 64d |
|  | 2 | **Mechanical** |  | 2026-11-09 | 2027-01-17 |  |  |  |
| SDR-ST-PRO-MS-1110 |  | HDPE PIPES & FITTINGS | 4d | 2026-11-09 | 2026-11-12 | SDR-ST-PRO-DL-1080 |  | 24d |
| SDR-ST-PRO-MS-1130 |  | CONCRETE PIPES AND FITTINGS | 4d | 2026-11-09 | 2026-11-12 | SDR-ST-PRO-DL-1120 |  | 1d |
| SDR-ST-PRO-MS-1050 |  | WARNING TAPE | 4d | 2026-11-22 | 2026-11-25 | SDR-ST-PRO-DL-1000 |  | 21d |
| SDR-ST-PRO-MS-1060 |  | GI GOOSENECK & VENT | 4d | 2027-01-14 | 2027-01-17 | SDR-ST-PRO-DL-1090 |  | 78d |
| SDR-ST-PRO-MS-1140 |  | MANHOLE, CATCH BASIN & VALVE BOX COVER | 4d | 2027-01-14 | 2027-01-17 | SDR-ST-PRO-DL-2000 |  | -56d |
|  | 5 | **Long Lead Items Delivery** |  | 2026-12-17 | 2027-04-20 |  |  |  |
|  | 1 | **Civil** |  | 2027-03-23 | 2027-03-26 |  |  |  |
| SDR-ST-PRO-MS-1200 |  | Metal railing for platform | 4d | 2027-03-23 | 2027-03-26 | SDR-ST-PRO-DL-1150 |  | 16d |
| SDR-ST-PRO-MS-1240 |  | Canopy | 4d | 2027-03-23 | 2027-03-26 | SDR-ST-PRO-DL-1240 |  | -38d |
|  | 3 | **Electrical** |  | 2027-01-16 | 2027-04-20 |  |  |  |
| SDR-ST-PRO-MS-1180 |  | STREET LIGHTING LUMINAIRE | 5d | 2027-01-16 | 2027-01-20 | SDR-ST-PRO-DL-1220 |  | 25d |
| SDR-ST-PRO-MS-1230 |  | LIGHTING POLES | 4d | 2027-02-14 | 2027-02-18 | SDR-ST-PRO-DL-1210 |  | -58.6d |
| SDR-ST-PRO-MS-1170 |  | Outdoor Lighting Fixtures | 7d | 2027-02-21 | 2027-02-28 | SDR-ST-PRO-DL-1180 FS+8d |  | 37d |
| SDR-ST-PRO-MS-1210 |  | MEDIUM VOLTAGE CABLES DUCT BANKS | 6d | 2027-04-04 | 2027-04-09 | SDR-ST-CON-P1-5570, SDR-ST-PRO-DL-1160 |  | -77d |
| SDR-ST-PRO-MS-1220 |  | MEDIUM VOLTAGE CABLES | 4d | 2027-04-08 | 2027-04-11 | SDR-ST-PRO-DL-1170 |  | -31d |
| SDR-ST-PRO-MS-1250 |  | SUB-STATION | 4d | 2027-04-17 | 2027-04-20 | SDR-ST-PRO-DL-1250 |  | -9d |
|  | 2 | **Mechanical** |  | 2026-12-17 | 2026-12-21 |  |  |  |
| SDR-ST-PRO-MS-1190 |  | WASHOUT & AIR VALVE, GATE VALVE, BUTTERFLY VALVE | 5d | 2026-12-17 | 2026-12-21 | SDR-ST-PRO-DL-1190 |  | -27d |
|  | 5 | **Construction** |  | 2026-04-23 | 2027-12-05 |  |  |  |
|  | 1 | **Package-1** |  | 2026-04-23 | 2027-11-21 |  |  |  |
|  | 15 | **ROAD WORKS 1** |  | 2026-04-23 | 2027-09-23 |  |  |  |
|  | 8 | **ROAD - 01** |  | 2026-04-23 | 2027-09-05 |  |  |  |
|  | 6 | **ROAD-01 From 0 to 470 m (3)** |  | 2026-04-23 | 2027-08-01 |  |  |  |
|  | 14 | **GENERAL WORKS** |  | 2026-04-23 | 2026-05-22 |  |  |  |
|  | 10 | **Cleaning and removal of organic materials in Zone A** |  | 2026-04-23 | 2026-05-21 |  |  |  |
| SDR-ST-CON-P1-1000 |  | Cleaning and removal of organic materials Part 1 | 16d | 2026-04-23 A | 2026-04-30 A | SDR-ST-MOBL-1060 | 100% |  |
| SDR-ST-CON-P1-1050 |  | Cleaning and removal of organic materials Part 2 | 18d | 2026-04-30 A | 2026-05-09 A | SDR-ST-CON-P1-1000, SDR-ST-MILS-1040, SDR-ST-MILS-1030, SDR-ST-MILS-1020, SDR-ST-MILS-1050, SDR-ST-PREL-1060, SDR-ST-PREL-1070, SDR-ST-PREL-1010, SDR-ST-PREL-1080, SDR-ST-PREL-1020, SDR-ST-PREL-1090, SDR-ST-PREL-1030, SDR-ST-PREL-1100, SDR-ST-PREL-1040 | 100% |  |
| SDR-ST-CON-P1-6060 |  | Cleaning and removal of organic materials Part 3 | 14d | 2026-05-09 A | 2026-05-21 A | SDR-ST-CON-P1-1050 | 100% |  |
|  | 12 | **Surveying works Zone A** |  | 2026-05-12 | 2026-05-22 |  |  |  |
| SDR-ST-CON-P1-1090 |  | Surveying works Zone A | 14d | 2026-05-12 A | 2026-05-22 A | SDR-ST-CON-P1-1050, SDR-ST-CON-P1-6060 | 100% |  |
|  | 1 | **Earth Works Road** |  | 2026-06-18 | 2026-06-25 |  |  |  |
| SDR-ST-CON-P1-1150 |  | Roadway Excavation and cuttings | 12d | 2026-06-18 A | 2026-06-25 A | SDR-ST-CON-P1-1090 | 100% |  |
|  | 10 | **Backfilling Works** |  | 2026-05-23 | 2026-08-16 |  |  |  |
| SDR-ST-CON-P1-1200 |  | Embankments to the Road 1 Layer | 18d | 2026-05-23 A | 2026-06-06 A | SDR-ST-CON-P1-1150 | 100% |  |
| SDR-ST-CON-P1-1470 |  | Embankments to the Road 2 Layer | 20d | 2026-06-09 A | 2026-06-15 A | SDR-ST-CON-P1-1200 | 100% |  |
| SDR-ST-CON-P1-2140 |  | Embankments to the Road 3 Layer | 13d | 2026-06-15 A | 2026-06-27 A | SDR-ST-CON-P1-1470 | 100% |  |
| SDR-ST-CON-P1-2710 |  | Embankments to the Road 4 Layer | 12d | 2026-08-11 A | 2026-08-16 A | SDR-ST-CON-P1-2140 | 100% |  |
|  | 11 | **Subgrade** |  | 2026-09-10 | 2026-09-30 |  |  |  |
| SDR-ST-CON-P1-3260 |  | Subgrade layer works | 14d | 2026-09-10 A | 2026-09-30 A | SDR-ST-CON-P1-2710, SDR-ST-CON-P3-1040 | 100% |  |
|  | 2 | **Base Course** |  | 2026-10-03 | 2026-10-11 |  |  |  |
| SDR-ST-CON-P1-3850 |  | Aggregate base course layer | 13d | 2026-10-03 A | 2026-10-11 A | SDR-ST-CON-P1-3260 | 100% |  |
|  | 3 | **Asphalt Works** |  | 2026-10-11 | 2027-03-25 |  |  |  |
|  | 1 | **Bituminous base course** |  | 2026-10-11 | 2027-02-21 |  |  |  |
| SDR-ST-CON-P1-4410 |  | Bituminous base course (Grading I - Class A 1st Layer with RC-01 | 8d | 2026-10-11 A | 2027-02-14 | SDR-ST-CON-P1-3850 | 70% | -55d |
| SDR-ST-CON-P1-4770 |  | Bituminous base course (Grading I - Class A 2nd layer with RC-02 | 6d | 2027-02-15 | 2027-02-21 | SDR-ST-PRO-MS-1270, SDR-ST-CON-P1-4410 |  | -55d |
|  | 2 | **Bituminous concrete wearing course** |  | 2027-02-25 | 2027-03-25 |  |  |  |
| SDR-ST-CON-P1-5110 |  | Bituminous concrete wearing course, (Grading I - Class A), including tack coat (RC2) | 21d | 2027-02-25 | 2027-03-25 | SDR-ST-PRO-MS-1270, SDR-ST-CON-P1-4770 FS+2d |  | -55d |
|  | 4 | **Kerbstone Installation** |  | 2027-02-08 | 2027-05-25 |  |  |  |
| SDR-ST-CON-P1-3860 |  | Precast Concrete Curbstone, Type A2 | 21d | 2027-02-08 | 2027-03-04 | SDR-ST-CON-P1-3260 |  | -64d |
| SDR-ST-CON-P1-4530 |  | Precast Concrete Curbstone, Type D | 10d | 2027-05-09 | 2027-05-25 | SDR-ST-CON-P1-3860, SDR-ST-CON-P1-5110, SDR-ST-CON-P3-1230, SDR-ST-CON-P3-1220 |  | -92d |
|  | 5 | **Interlock Installation** |  | 2027-05-27 | 2027-07-12 |  |  |  |
| SDR-ST-CON-P1-4100 |  | Interlock Installation Part 1 | 20d | 2027-05-27 | 2027-06-19 | SDR-ST-PRO-MS-1080, SDR-ST-CON-P1-3860, SDR-ST-CON-P1-2710, SDR-ST-CON-P1-4530 FS+1d |  | -92d |
| SDR-ST-CON-P1-4620 |  | Interlock Installation Part 2 | 20d | 2027-06-20 | 2027-07-12 | SDR-ST-CON-P1-4170, SDR-ST-CON-P1-4100 |  | -92d |
|  | 6 | **Road Marking** |  | 2027-07-13 | 2027-07-31 |  |  |  |
| SDR-ST-CON-P1-5210 |  | Retroreflective Thermoplastic White Traffic lines | 4d | 2027-07-13 | 2027-07-17 | SDR-ST-CON-P1-5110 SS, SDR-ST-CON-P1-2710, SDR-ST-CON-P1-4620, SDR-ST-TC-1030 |  | -73d |
| SDR-ST-CON-P1-5310 |  | Retroreflective Thermoplastic Yellow, Traffic lines | 4d | 2027-07-18 | 2027-07-21 | SDR-ST-CON-P1-5210 |  | -73d |
| SDR-ST-CON-P1-5470 |  | Ceramic raised pavement markers | 4d | 2027-07-22 | 2027-07-26 | SDR-ST-CON-P1-5310 |  | -73d |
| SDR-ST-CON-P1-5620 |  | Rumble strip | 4d | 2027-07-27 | 2027-07-31 | SDR-ST-CON-P1-5470 |  | -73d |
|  | 7 | **Traffic Signage** |  | 2027-07-13 | 2027-07-26 |  |  |  |
| SDR-ST-CON-P1-5220 |  | Traffic signs, ground mounted, 1 Sheet Alumenium, (breakaway) Single post, with all accessories | 4d | 2027-07-13 | 2027-07-17 | SDR-ST-CON-P1-5210 SS |  | -71d |
| SDR-ST-CON-P1-5320 |  | Traffic signs, ground mounted, 1 Sheet Aluminum, (breakaway) Double post, with all accessories | 4d | 2027-07-18 | 2027-07-21 | SDR-ST-CON-P1-5220 |  | -71d |
| SDR-ST-CON-P1-5480 |  | Traffic signs, ground mounted, 2 Sheet Aluminum, (breakaway) Single post, with all accessories | 4d | 2027-07-22 | 2027-07-26 | SDR-ST-CON-P1-5320 |  | -71d |
|  | 8 | **Speed table** |  | 2027-07-27 | 2027-08-01 |  |  |  |
| SDR-ST-CON-P1-5490 |  | Interlock speed table including interlock, flush kerb and marking | 5d | 2027-07-27 | 2027-08-01 | SDR-ST-CON-P1-5110, SDR-ST-CON-P1-5480 |  | -71d |
|  | 7 | **ROAD-01 From 470 to 1125 m (6)** |  | 2026-04-30 | 2027-09-01 |  |  |  |
|  | 14 | **GENERAL WORKS** |  | 2026-04-30 | 2026-05-20 |  |  |  |
|  | 10 | **Cleaning and removal of organic materials in Zone A** |  | 2026-04-30 | 2026-05-10 |  |  |  |
| SDR-ST-CON-P1-1010 |  | Cleaning and removal of organic materials in Zone A | 21d | 2026-04-30 A | 2026-05-10 A | SDR-ST-CON-P1-1050 SS | 100% |  |

| ID | WBS | Task | Duration | Start | Finish | Predecessors | Complete | Total float |
| --- | --- | --- | --- | --- | --- | --- | --- | --- |
|  | 12 | **Surveying works Zone A** |  | 2026-05-10 | 2026-05-20 |  |  |  |
| SDR-ST-CON-P1-1070 |  | Surveying works Zone A | 20d | 2026-05-10 A | 2026-05-20 A | SDR-ST-CON-P1-1010 | 100% |  |
|  | 1 | **Earth Works Road** |  | 2026-06-25 | 2026-07-05 |  |  |  |
| SDR-ST-CON-P1-1120 |  | Roadway Excavation and cuttings | 14d | 2026-06-25 A | 2026-07-05 A | SDR-ST-CON-P1-1070 | 100% |  |
|  | 10 | **Backfilling Works** |  | 2026-05-23 | 2026-08-16 |  |  |  |
| SDR-ST-CON-P1-1190 |  | Embankments to the Road 1 Layer | 20d | 2026-05-23 A | 2026-06-08 A | SDR-ST-CON-P1-1120 | 100% |  |
| SDR-ST-CON-P1-1400 |  | Embankments to the Road 2 Layer | 13d | 2026-06-09 A | 2026-06-15 A | SDR-ST-CON-P1-1190 | 100% |  |
| SDR-ST-CON-P1-2090 |  | Embankments to the Road 3 Layer | 15d | 2026-06-16 A | 2026-06-27 A | SDR-ST-CON-P1-1400 | 100% |  |
| SDR-ST-CON-P1-2570 |  | Embankments to the Road 4 Layer | 15d | 2026-08-11 A | 2026-08-16 A | SDR-ST-CON-P1-2090 | 100% |  |
|  | 11 | **Subgrade** |  | 2026-09-10 | 2026-10-07 |  |  |  |
| SDR-ST-CON-P1-3140 |  | Subgrade layer works | 20d | 2026-09-10 A | 2026-10-07 A | SDR-ST-CON-P1-2570 | 100% |  |
|  | 2 | **Base Course** |  | 2026-10-08 | 2026-10-29 |  |  |  |
| SDR-ST-CON-P1-3720 |  | Aggregate base course layer | 11d | 2026-10-08 A | 2026-10-29 A | SDR-ST-CON-P1-3140 | 100% |  |
|  | 3 | **Asphalt Works** |  | 2026-11-22 | 2027-03-24 |  |  |  |
|  | 1 | **Bituminous base course** |  | 2026-11-22 | 2027-02-18 |  |  |  |
| SDR-ST-CON-P1-4430 |  | Bituminous base course (Grading I - Class A 1st Layer with RC-01 | 6d | 2026-11-22 | 2026-11-28 | SDR-ST-CON-P1-3720 |  | 19d |
| SDR-ST-CON-P1-4730 |  | Bituminous base course (Grading I - Class A 2nd layer with RC-02 | 7d | 2027-02-11 | 2027-02-18 | SDR-ST-PRO-MS-1270, SDR-ST-CON-P1-4430 |  | -45d |
|  | 2 | **Bituminous concrete wearing course** |  | 2027-02-24 | 2027-03-24 |  |  |  |
| SDR-ST-CON-P1-5040 |  | Bituminous concrete wearing course, (Grading I - Class A), including tack coat (RC2) | 21d | 2027-02-24 | 2027-03-24 | SDR-ST-PRO-MS-1270, SDR-ST-CON-P1-4730 FS+3d |  | -45d |
|  | 4 | **Kerbstone Installation** |  | 2026-11-22 | 2027-04-01 |  |  |  |
| SDR-ST-CON-P1-3730 |  | Precast Concrete Curbstone, Type A2 | 20d | 2026-11-22 | 2026-12-14 | SDR-ST-CON-P1-3140 |  | 0d |
| SDR-ST-CON-P1-4480 |  | Precast Concrete Curbstone, Type D | 20d | 2027-03-06 | 2027-04-01 | SDR-ST-CON-P1-3860, SDR-ST-CON-P1-3730 FS+4d |  | -64d |
|  | 5 | **Interlock Installation** |  | 2027-04-03 | 2027-05-24 |  |  |  |
| SDR-ST-CON-P1-3890 |  | Interlock Installation Part 1 | 20d | 2027-04-03 | 2027-04-25 | SDR-ST-PRO-MS-1080, SDR-ST-CON-P1-4480 |  | -64d |
| SDR-ST-CON-P1-4490 |  | Interlock Installation Part 2 | 20d | 2027-04-26 | 2027-05-24 | SDR-ST-CON-P1-4170, SDR-ST-CON-P1-3890 |  | -64d |
|  | 6 | **Road Marking** |  | 2027-05-25 | 2027-08-05 |  |  |  |
| SDR-ST-CON-P1-5080 |  | Retroreflective Thermoplastic White Traffic lines | 7d | 2027-05-25 | 2027-06-01 | SDR-ST-CON-P1-5570, SDR-ST-CON-P1-5040 SS, SDR-ST-CON-P1-4490 |  | -64d |
| SDR-ST-CON-P1-5150 |  | Retroreflective Thermoplastic Yellow, Traffic lines | 7d | 2027-07-13 | 2027-07-20 | SDR-ST-CON-P3-1310, SDR-ST-CON-P1-6070, SDR-ST-CON-P1-5030, SDR-ST-CON-P1-5080 |  | -99d |
| SDR-ST-CON-P1-5270 |  | Ceramic raised pavement markers | 7d | 2027-07-21 | 2027-07-28 | SDR-ST-CON-P1-6070, SDR-ST-CON-P1-4620, SDR-ST-CON-P1-5150 |  | -99d |
| SDR-ST-CON-P1-5400 |  | Rumble strip | 7d | 2027-07-29 | 2027-08-05 | SDR-ST-CON-P1-5270 |  | -99d |
|  | 7 | **Traffic Signage** |  | 2027-08-06 | 2027-08-21 |  |  |  |
| SDR-ST-CON-P1-5090 |  | Traffic signs, ground mounted, 1 Sheet Alumenium, (breakaway) Single post, with all accessories | 8d | 2027-08-06 | 2027-08-14 | SDR-ST-CON-P1-5400 |  | -99d |
| SDR-ST-CON-P1-5160 |  | Traffic signs, ground mounted, 1 Sheet Aluminum, (breakaway) Double post, with all accessories | 6d | 2027-08-15 | 2027-08-21 | SDR-ST-CON-P1-5090 |  | -99d |
|  | 8 | **Speed table** |  | 2027-08-22 | 2027-09-01 |  |  |  |
| SDR-ST-CON-P1-5280 |  | Interlock speed table including interlock, flush kerb and marking | 10d | 2027-08-22 | 2027-09-01 | SDR-ST-CON-P1-5160 |  | -99d |
|  | 9 | **ROAD-01 From 1125 to 1765 m (7)** |  | 2026-05-02 | 2027-09-05 |  |  |  |
|  | 14 | **GENERAL WORKS** |  | 2026-05-02 | 2026-05-24 |  |  |  |
|  | 10 | **Cleaning and removal of organic materials in Zone A** |  | 2026-05-02 | 2026-05-14 |  |  |  |
| SDR-ST-CON-P1-1020 |  | Cleaning and removal of organic materials in Zone A | 21d | 2026-05-02 A | 2026-05-14 A | SDR-ST-CON-P1-1010 SS+7d | 100% |  |
|  | 12 | **Surveying works Zone A** |  | 2026-05-16 | 2026-05-24 |  |  |  |
| SDR-ST-CON-P1-1080 |  | Surveying works Zone A | 14d | 2026-05-16 A | 2026-05-24 A | SDR-ST-CON-P1-1020 | 100% |  |
|  | 1 | **Earth Works Road** |  | 2026-07-30 | 2026-08-09 |  |  |  |
| SDR-ST-CON-P1-1140 |  | Roadway Excavation and cuttings | 14d | 2026-07-30 A | 2026-08-09 A | SDR-ST-CON-P1-1080 | 100% |  |
|  | 10 | **Backfilling Works** |  | 2026-05-24 | 2026-08-17 |  |  |  |
| SDR-ST-CON-P1-1210 |  | Embankments to the Road 1 Layer | 20d | 2026-05-24 A | 2026-06-08 A | SDR-ST-CON-P1-1140 | 100% |  |
| SDR-ST-CON-P1-1580 |  | Embankments to the Road 2 Layer | 13d | 2026-06-09 A | 2026-06-15 A | SDR-ST-CON-P1-1210 | 100% |  |
| SDR-ST-CON-P1-2220 |  | Embankments to the Road 3 Layer | 13d | 2026-06-15 A | 2026-06-30 A | SDR-ST-CON-P1-1580 | 100% |  |
| SDR-ST-CON-P1-2880 |  | Embankments to the Road 4 Layer | 13d | 2026-08-11 A | 2026-08-17 A | SDR-ST-CON-P1-2220 | 100% |  |
|  | 11 | **Subgrade** |  | 2026-09-10 | 2026-10-29 |  |  |  |
| SDR-ST-CON-P1-3600 |  | Subgrade layer works | 15d | 2026-09-10 A | 2026-10-29 A | SDR-ST-CON-P1-2880 | 100% |  |
|  | 2 | **Base Course** |  | 2026-10-17 | 2026-11-05 |  |  |  |
| SDR-ST-CON-P1-4220 |  | Aggregate base course layer | 15d | 2026-10-17 A | 2026-11-05 A | SDR-ST-CON-P1-3600 | 100% |  |
|  | 3 | **Asphalt Works** |  | 2026-11-22 | 2027-03-08 |  |  |  |
|  | 1 | **Bituminous base course** |  | 2026-11-22 | 2026-12-10 |  |  |  |
| SDR-ST-CON-P1-4750 |  | Bituminous base course (Grading I - Class A 1st Layer with RC-01 | 8d | 2026-11-22 | 2026-11-30 | SDR-ST-CON-P1-4220 |  | 15d |
| SDR-ST-CON-P1-5010 |  | Bituminous base course (Grading I - Class A 2nd layer with RC-02 | 9d | 2026-12-01 | 2026-12-10 | SDR-ST-CON-P1-4750 |  | 15d |
|  | 2 | **Bituminous concrete wearing course** |  | 2027-02-11 | 2027-03-08 |  |  |  |
| SDR-ST-CON-P1-5200 |  | Bituminous concrete wearing course, (Grading I - Class A), including tack coat (RC2) | 21d | 2027-02-11 | 2027-03-08 | SDR-ST-PRO-MS-1270, SDR-ST-CON-P1-5010 FS+3d |  | -35d |
|  | 4 | **Kerbstone Installation** |  | 2026-11-22 | 2027-01-11 |  |  |  |
| SDR-ST-CON-P1-4230 |  | Precast Concrete Curbstone, Type A2 | 20d | 2026-11-22 | 2026-12-14 | SDR-ST-CON-P1-3600 |  | 0d |
| SDR-ST-CON-P1-4950 |  | Precast Concrete Curbstone, Type D | 20d | 2026-12-20 | 2027-01-11 | SDR-ST-CON-P1-4230 FS+4d |  | 0d |
|  | 5 | **Interlock Installation** |  | 2027-01-16 | 2027-03-04 |  |  |  |
| SDR-ST-CON-P1-4440 |  | Interlock Installation Part 1 | 21d | 2027-01-16 | 2027-02-08 | SDR-ST-PRO-MS-1080, SDR-ST-CON-P1-4950 |  | -3d |
| SDR-ST-CON-P1-4870 |  | Interlock Installation Part 2 | 20d | 2027-02-09 | 2027-03-04 | SDR-ST-CON-P1-4440 |  | -3d |
|  | 6 | **Road Marking** |  | 2027-07-13 | 2027-08-14 |  |  |  |
| SDR-ST-CON-P1-5300 |  | Retroreflective Thermoplastic White Traffic lines | 7d | 2027-07-13 | 2027-07-20 | SDR-ST-CON-P3-1310, SDR-ST-CON-P3-1490, SDR-ST-CON-P1-6070, SDR-ST-CON-P1-5200 SS, SDR-ST-CON-P1-4870 |  | -105d |
| SDR-ST-CON-P1-5450 |  | Retroreflective Thermoplastic Yellow, Traffic lines | 7d | 2027-07-21 | 2027-07-28 | SDR-ST-CON-P1-5300 |  | -105d |
| SDR-ST-CON-P1-5610 |  | Ceramic raised pavement markers | 7d | 2027-07-29 | 2027-08-05 | SDR-ST-CON-P1-5450 |  | -105d |
| SDR-ST-CON-P1-5690 |  | Rumble strip | 8d | 2027-08-06 | 2027-08-14 | SDR-ST-CON-P1-5610 |  | -105d |
|  | 7 | **Traffic Signage** |  | 2027-08-15 | 2027-08-26 |  |  |  |

| ID | WBS | Task | Duration | Start | Finish | Predecessors | Complete | Total float |
| --- | --- | --- | --- | --- | --- | --- | --- | --- |
| SDR-ST-CON-P1-5540 |  | Traffic signs, ground mounted, 1 Sheet Alumenium, (breakaway) Single post, with all accessories | 5d | 2027-08-15 | 2027-08-19 | SDR-ST-CON-P1-5690 |  | -105d |
| SDR-ST-CON-P1-5680 |  | Traffic signs, ground mounted, 1 Sheet Aluminum, (breakaway) Double post, with all accessories | 6d | 2027-08-21 | 2027-08-26 | SDR-ST-CON-P1-5540 |  | -105d |
|  | 8 | **Speed table** |  | 2027-08-28 | 2027-09-05 |  |  |  |
| SDR-ST-CON-P1-5460 |  | Interlock speed table including interlock, flush kerb and marking | 8d | 2027-08-28 | 2027-09-05 | SDR-ST-CON-P1-5680 |  | -105d |
|  | 6 | **ROAD - 02** |  | 2026-05-02 | 2027-09-23 |  |  |  |
|  | 1 | **ROAD-01 From 0 to 400 m (9)** |  | 2026-05-02 | 2027-09-12 |  |  |  |
|  | 14 | **GENERAL WORKS** |  | 2026-05-02 | 2026-05-24 |  |  |  |
|  | 10 | **Cleaning and removal of organic materials in Zone A** |  | 2026-05-02 | 2026-05-10 |  |  |  |
| SDR-ST-CON-P1-1030 |  | Cleaning and removal of organic materials in Zone A | 21d | 2026-05-02 A | 2026-05-10 A | SDR-ST-CON-P1-1020 SS+4d | 100% |  |
|  | 12 | **Surveying works Zone A** |  | 2026-05-11 | 2026-05-24 |  |  |  |
| SDR-ST-CON-P1-1100 |  | Surveying works Zone A | 19d | 2026-05-11 A | 2026-05-24 A | SDR-ST-CON-P1-1030 | 100% |  |
|  | 1 | **Earth Works Road** |  | 2026-07-08 | 2026-08-08 |  |  |  |
| SDR-ST-CON-P1-1160 |  | Roadway Excavation and cuttings | 14d | 2026-07-08 A | 2026-08-08 A | SDR-ST-CON-P1-1100 | 100% |  |
|  | 10 | **Backfilling Works** |  | 2026-05-31 | 2026-08-20 |  |  |  |
| SDR-ST-CON-P1-1300 |  | Embankments to the Road 1 Layer | 13d | 2026-05-31 A | 2026-06-09 A | SDR-ST-CON-P1-1160 | 100% |  |
| SDR-ST-CON-P1-1910 |  | Embankments to the Road 2 Layer | 13d | 2026-06-16 A | 2026-06-30 A | SDR-ST-CON-P1-1300 | 100% |  |
| SDR-ST-CON-P1-2620 |  | Embankments to the Road 3 Layer | 13d | 2026-08-11 A | 2026-08-16 A | SDR-ST-CON-P1-1910 | 100% |  |
| SDR-ST-CON-P1-2920 |  | Embankments to the Road 4 Layer | 13d | 2026-08-16 A | 2026-08-20 A | SDR-ST-CON-P1-2620 | 100% |  |
|  | 11 | **Subgrade** |  | 2026-09-07 | 2026-11-28 |  |  |  |
| SDR-ST-CON-P1-3390 |  | Subgrade layer works | 13d | 2026-09-07 A | 2026-11-28 | SDR-ST-CON-P1-2920 | 80% | -5d |
|  | 2 | **Base Course** |  | 2026-11-08 | 2026-12-06 |  |  |  |
| SDR-ST-CON-P1-3960 |  | Aggregate base course layer | 13d | 2026-11-08 A | 2026-12-06 | SDR-ST-CON-P1-3390 | 15% | -3d |
|  | 3 | **Asphalt Works** |  | 2026-12-07 | 2027-01-24 |  |  |  |
|  | 1 | **Bituminous base course** |  | 2026-12-07 | 2026-12-28 |  |  |  |
| SDR-ST-CON-P1-4540 |  | Bituminous base course (Grading I - Class A 1st Layer with RC-01 | 10d | 2026-12-07 | 2026-12-17 | SDR-ST-CON-P1-3960 |  | -3d |
| SDR-ST-CON-P1-4890 |  | Bituminous base course (Grading I - Class A 2nd layer with RC-02 | 9d | 2026-12-19 | 2026-12-28 | SDR-ST-CON-P1-4540 |  | -3d |
|  | 2 | **Bituminous concrete wearing course** |  | 2026-12-31 | 2027-01-24 |  |  |  |
| SDR-ST-CON-P1-5130 |  | Bituminous concrete wearing course, (Grading I - Class A), including tack coat (RC2) | 21d | 2026-12-31 | 2027-01-24 | SDR-ST-CON-P1-4890 FS+2d |  | -3d |
|  | 4 | **Kerbstone Installation** |  | 2026-11-29 | 2027-01-18 |  |  |  |
| SDR-ST-CON-P1-3970 |  | Precast Concrete Curbstone, Type A2 | 20d | 2026-11-29 | 2026-12-21 | SDR-ST-CON-P1-3390 |  | -5d |
| SDR-ST-CON-P1-4690 |  | Precast Concrete Curbstone, Type D | 20d | 2026-12-27 | 2027-01-18 | SDR-ST-CON-P1-3970 FS+4d |  | -5d |
|  | 5 | **Interlock Installation** |  | 2027-01-19 | 2027-03-07 |  |  |  |
| SDR-ST-CON-P1-4200 |  | Interlock Installation Part 1 | 20d | 2027-01-19 | 2027-02-10 | SDR-ST-CON-P1-3970 FS+4d, SDR-ST-CON-P1-4690 |  | -5d |
| SDR-ST-CON-P1-4780 |  | Interlock Installation Part 2 | 20d | 2027-02-11 | 2027-03-07 | SDR-ST-CON-P1-4200 |  | -5d |
|  | 6 | **Road Marking** |  | 2027-07-13 | 2027-08-12 |  |  |  |
| SDR-ST-CON-P1-5250 |  | Retroreflective Thermoplastic White Traffic lines | 7d | 2027-07-13 | 2027-07-20 | SDR-ST-CON-P3-1310, SDR-ST-CON-P1-6070, SDR-ST-CON-P1-6070 FF, SDR-ST-CON-P1-4780 |  | -105d |
| SDR-ST-CON-P1-5370 |  | Retroreflective Thermoplastic Yellow, Traffic lines | 7d | 2027-07-21 | 2027-07-28 | SDR-ST-CON-P1-6070, SDR-ST-CON-P1-5250 |  | -105d |
| SDR-ST-CON-P1-5550 |  | Ceramic raised pavement markers | 7d | 2027-07-29 | 2027-08-05 | SDR-ST-CON-P1-5370 |  | -105d |
| SDR-ST-CON-P1-5630 |  | Rumble strip | 7d | 2027-08-06 | 2027-08-12 | SDR-ST-CON-P1-5550 |  | -105d |
|  | 7 | **Traffic Signage** |  | 2027-08-14 | 2027-09-01 |  |  |  |
| SDR-ST-CON-P1-5260 |  | Traffic signs, ground mounted, 1 Sheet Alumenium, (breakaway) Single post, with all accessories | 6d | 2027-08-14 | 2027-08-19 | SDR-ST-CON-P1-5250, SDR-ST-CON-P1-5630 |  | -105d |
| SDR-ST-CON-P1-5380 |  | Traffic signs, ground mounted, 1 Sheet Aluminum, (breakaway) Double post, with all accessories | 6d | 2027-08-21 | 2027-08-26 | SDR-ST-CON-P1-5260 |  | -105d |
| SDR-ST-CON-P1-5560 |  | Traffic signs, ground mounted, 2 Sheet Aluminum, (breakaway) Single post, with all accessories | 5d | 2027-08-28 | 2027-09-01 | SDR-ST-CON-P1-5380 |  | -105d |
|  | 8 | **Speed table** |  | 2027-09-04 | 2027-09-12 |  |  |  |
| SDR-ST-CON-P1-5390 |  | Interlock speed table including interlock, flush kerb and marking | 8d | 2027-09-04 | 2027-09-12 | SDR-ST-CON-P1-5380, SDR-ST-CON-P1-5560 FS+1d |  | -105d |
|  | 2 | **ROAD-01 From 400 to 900 m (10)** |  | 2026-05-02 | 2027-09-23 |  |  |  |
|  | 14 | **GENERAL WORKS** |  | 2026-05-02 | 2026-05-24 |  |  |  |
|  | 10 | **Cleaning and removal of organic materials in Zone A** |  | 2026-05-02 | 2026-05-14 |  |  |  |
| SDR-ST-CON-P1-1040 |  | Cleaning and removal of organic materials in Zone A | 21d | 2026-05-02 A | 2026-05-14 A | SDR-ST-CON-P1-1030 SS+3d | 100% |  |
|  | 12 | **Surveying works Zone A** |  | 2026-05-16 | 2026-05-24 |  |  |  |
| SDR-ST-CON-P1-1110 |  | Surveying works Zone A | 16d | 2026-05-16 A | 2026-05-24 A | SDR-ST-CON-P1-1040 | 100% |  |
|  | 1 | **Earth Works Road** |  | 2026-07-30 | 2026-08-10 |  |  |  |
| SDR-ST-CON-P1-1170 |  | Roadway Excavation and cuttings | 13d | 2026-07-30 A | 2026-08-10 A | SDR-ST-CON-P1-1110 | 100% |  |
|  | 10 | **Backfilling Works** |  | 2026-06-01 | 2026-08-16 |  |  |  |
| SDR-ST-CON-P1-1250 |  | Embankments to the Road 1 Layer | 14d | 2026-06-01 A | 2026-06-09 A | SDR-ST-CON-P1-1170 | 100% |  |
| SDR-ST-CON-P1-1830 |  | Embankments to the Road 2 Layer | 14d | 2026-06-18 A | 2026-06-30 A | SDR-ST-CON-P1-1250 | 100% |  |
| SDR-ST-CON-P1-2540 |  | Embankments to the Road 3 Layer | 14d | 2026-08-11 A | 2026-08-16 A | SDR-ST-CON-P1-1830 | 100% |  |
| SDR-ST-CON-P1-3100 |  | Embankments to the Road 4 Layer | 14d | 2026-08-11 A | 2026-08-16 A | SDR-ST-CON-P1-2540 | 100% |  |
|  | 11 | **Subgrade** |  | 2026-09-07 | 2026-12-03 |  |  |  |
| SDR-ST-CON-P1-3540 |  | Subgrade layer works | 14d | 2026-09-07 A | 2026-12-03 | SDR-ST-CON-P1-3100 | 75% | -24d |
|  | 2 | **Base Course** |  | 2026-12-05 | 2026-12-20 |  |  |  |
| SDR-ST-CON-P1-4130 |  | Aggregate base course layer | 14d | 2026-12-05 | 2026-12-20 | SDR-ST-CON-P1-3540 |  | -24d |
|  | 3 | **Asphalt Works** |  | 2026-12-21 | 2027-01-30 |  |  |  |
|  | 1 | **Bituminous base course** |  | 2026-12-21 | 2027-01-05 |  |  |  |
| SDR-ST-CON-P1-4600 |  | Bituminous base course (Grading I - Class A 1st Layer with RC-01 | 8d | 2026-12-21 | 2026-12-29 | SDR-ST-CON-P1-4130 |  | -24d |
| SDR-ST-CON-P1-4930 |  | Bituminous base course (Grading I - Class A 2nd layer with RC-02 | 6d | 2026-12-30 | 2027-01-05 | SDR-ST-CON-P1-4600 |  | -24d |
|  | 2 | **Bituminous concrete wearing course** |  | 2027-01-06 | 2027-01-30 |  |  |  |
| SDR-ST-CON-P1-5180 |  | Bituminous concrete wearing course, (Grading I - Class A), including tack coat (RC2) | 21d | 2027-01-06 | 2027-01-30 | SDR-ST-CON-P1-4930 |  | -24d |
|  | 4 | **Kerbstone Installation** |  | 2026-12-05 | 2027-01-24 |  |  |  |
| SDR-ST-CON-P1-4140 |  | Precast Concrete Curbstone, Type A2 | 20d | 2026-12-05 | 2026-12-27 | SDR-ST-CON-P1-3540 |  | -19d |

| ID | WBS | Task | Duration | Start | Finish | Predecessors | Complete | Total float |
| --- | --- | --- | --- | --- | --- | --- | --- | --- |
| SDR-ST-CON-P1-4810 |  | Precast Concrete Curbstone, Type D | 20d | 2027-01-02 | 2027-01-24 | SDR-ST-CON-P1-4140 FS+4d |  | -19d |
|  | 5 | **Interlock Installation** |  | 2027-01-31 | 2027-03-24 |  |  |  |
| SDR-ST-CON-P1-4350 |  | Interlock Installation Part 1 | 20d | 2027-01-31 | 2027-02-23 | SDR-ST-CON-P1-5180, SDR-ST-CON-P1-4140 SS, SDR-ST-CON-P1-4810 |  | -24d |
| SDR-ST-CON-P1-4920 |  | Interlock Installation Part 2 | 20d | 2027-02-25 | 2027-03-24 | SDR-ST-CON-P1-4350 FS+1d |  | -24d |
|  | 6 | **Road Marking** |  | 2027-07-13 | 2027-08-23 |  |  |  |
| SDR-ST-CON-P1-5290 |  | Retroreflective Thermoplastic White Traffic lines | 10d | 2027-07-13 | 2027-07-24 | SDR-ST-CON-P3-1310, SDR-ST-CON-P3-1490, SDR-ST-CON-P1-5180 SS, SDR-ST-CON-P1-4920 |  | -113d |
| SDR-ST-CON-P1-5410 |  | Retroreflective Thermoplastic Yellow, Traffic lines | 9d | 2027-07-25 | 2027-08-03 | SDR-ST-CON-P1-5290 |  | -113d |
| SDR-ST-CON-P1-5580 |  | Ceramic raised pavement markers | 9d | 2027-08-04 | 2027-08-12 | SDR-ST-CON-P1-5410 |  | -113d |
| SDR-ST-CON-P1-5640 |  | Rumble strip | 9d | 2027-08-14 | 2027-08-23 | SDR-ST-CON-P1-5580 |  | -113d |
|  | 7 | **Traffic Signage** |  | 2027-08-24 | 2027-09-13 |  |  |  |
| SDR-ST-CON-P1-5420 |  | Traffic signs, ground mounted, 1 Sheet Alumenium, (breakaway) Single post, with all accessories | 9d | 2027-08-24 | 2027-09-02 | SDR-ST-CON-P1-5290 SS, SDR-ST-CON-P1-5640 |  | -113d |
| SDR-ST-CON-P1-5590 |  | Traffic signs, ground mounted, 1 Sheet Aluminum, (breakaway) Double post, with all accessories | 9d | 2027-09-04 | 2027-09-13 | SDR-ST-CON-P1-5420 |  | -113d |
|  | 8 | **Speed table** |  | 2027-09-14 | 2027-09-23 |  |  |  |
| SDR-ST-CON-P1-5430 |  | Interlock speed table including interlock, flush kerb and marking | 9d | 2027-09-14 | 2027-09-23 | SDR-ST-CON-P1-5410 SS, SDR-ST-CON-P1-5590 |  | -113d |
|  | 3 | **ROAD-01 From 900 to 1239 m (11)** |  | 2026-05-03 | 2027-09-15 |  |  |  |
|  | 14 | **GENERAL WORKS** |  | 2026-05-03 | 2026-05-30 |  |  |  |
|  | 10 | **Cleaning and removal of organic materials in Zone A** |  | 2026-05-03 | 2026-05-16 |  |  |  |
| SDR-ST-CON-P1-1060 |  | Cleaning and removal of organic materials in Zone A | 21d | 2026-05-03 A | 2026-05-16 A | SDR-ST-CON-P1-1040 SS+6d | 100% |  |
|  | 12 | **Surveying works Zone A** |  | 2026-05-16 | 2026-05-30 |  |  |  |
| SDR-ST-CON-P1-1130 |  | Surveying works Zone A | 19d | 2026-05-16 A | 2026-05-30 A | SDR-ST-CON-P1-1060 | 100% |  |
|  | 1 | **Earth Works Road** |  | 2026-07-30 | 2026-08-16 |  |  |  |
| SDR-ST-CON-P1-1220 |  | Roadway Excavation and cuttings | 16d | 2026-07-30 A | 2026-08-16 A | SDR-ST-CON-P1-1130 | 100% |  |
|  | 10 | **Backfilling Works** |  | 2026-06-02 | 2026-08-20 |  |  |  |
| SDR-ST-CON-P1-1350 |  | Embankments to the Road 1 Layer | 11d | 2026-06-02 A | 2026-08-16 A | SDR-ST-CON-P1-1220 | 100% |  |
| SDR-ST-CON-P1-1990 |  | Embankments to the Road 2 Layer | 11d | 2026-06-22 A | 2026-07-02 A | SDR-ST-CON-P1-1350 | 100% |  |
| SDR-ST-CON-P1-2730 |  | Embankments to the Road 3 Layer | 11d | 2026-08-12 A | 2026-08-17 A | SDR-ST-CON-P1-1990 | 100% |  |
| SDR-ST-CON-P1-3320 |  | Embankments to the Road 4 Layer | 10d | 2026-08-16 A | 2026-08-20 A | SDR-ST-CON-P1-2730 | 100% |  |
|  | 11 | **Subgrade** |  | 2026-09-07 | 2026-11-30 |  |  |  |
| SDR-ST-CON-P1-3740 |  | Subgrade layer works | 11d | 2026-09-07 A | 2026-11-30 | SDR-ST-CON-P1-3320 | 60% | -11d |
|  | 2 | **Base Course** |  | 2026-12-01 | 2026-12-10 |  |  |  |
| SDR-ST-CON-P1-4290 |  | Aggregate base course layer | 9d | 2026-12-01 | 2026-12-10 | SDR-ST-CON-P1-3740 |  | -11d |
|  | 3 | **Asphalt Works** |  | 2026-12-12 | 2027-02-02 |  |  |  |
|  | 1 | **Bituminous base course** |  | 2026-12-12 | 2027-01-06 |  |  |  |
| SDR-ST-CON-P1-4650 |  | Bituminous base course (Grading I - Class A 1st Layer with RC-01 | 11d | 2026-12-12 | 2026-12-23 | SDR-ST-CON-P1-4290 |  | -11d |
| SDR-ST-CON-P1-4980 |  | Bituminous base course (Grading I - Class A 2nd layer with RC-02 | 12d | 2026-12-24 | 2027-01-06 | SDR-ST-CON-P1-4650 |  | -11d |
|  | 2 | **Bituminous concrete wearing course** |  | 2027-01-10 | 2027-02-02 |  |  |  |
| SDR-ST-CON-P1-5230 |  | Bituminous concrete wearing course, (Grading I - Class A), including tack coat (RC2) | 21d | 2027-01-10 | 2027-02-02 | SDR-ST-CON-P1-4980 FS+2d |  | -11d |
|  | 4 | **Kerbstone Installation** |  | 2027-01-13 | 2027-03-06 |  |  |  |
| SDR-ST-CON-P1-4300 |  | Precast Concrete Curbstone, Type A2 | 20d | 2027-01-13 | 2027-02-04 | SDR-ST-PRO-MS-1100, SDR-ST-CON-P1-3740 |  | -44d |
| SDR-ST-CON-P1-4860 |  | Precast Concrete Curbstone, Type D | 20d | 2027-02-10 | 2027-03-06 | SDR-ST-PRO-MS-1100, SDR-ST-CON-P1-4300 FS+4d |  | -44d |
|  | 5 | **Interlock Installation** |  | 2027-03-07 | 2027-04-26 |  |  |  |
| SDR-ST-CON-P1-4450 |  | Interlock Installation Part 1 | 20d | 2027-03-07 | 2027-04-03 | SDR-ST-CON-P1-5180, SDR-ST-CON-P1-4300 SS, SDR-ST-CON-P1-4860 |  | -44d |
| SDR-ST-CON-P1-4940 |  | Interlock Installation Part 2 | 20d | 2027-04-04 | 2027-04-26 | SDR-ST-CON-P1-4450 |  | -44d |
|  | 6 | **Road Marking** |  | 2027-05-11 | 2027-06-22 |  |  |  |
| SDR-ST-CON-P1-5350 |  | Retroreflective Thermoplastic White Traffic lines | 8d | 2027-05-11 | 2027-05-25 | SDR-ST-CON-P1-5750, SDR-ST-CON-P1-6070, SDR-ST-CON-P1-5230 SS, SDR-ST-CON-P1-4940 |  | -56d |
| SDR-ST-CON-P1-5510 |  | Retroreflective Thermoplastic Yellow, Traffic lines | 8d | 2027-05-26 | 2027-06-03 | SDR-ST-CON-P1-5350 |  | -56d |
| SDR-ST-CON-P1-5600 |  | Ceramic raised pavement markers | 8d | 2027-06-05 | 2027-06-13 | SDR-ST-CON-P1-5510 |  | -56d |
| SDR-ST-CON-P1-5650 |  | Rumble strip | 8d | 2027-06-14 | 2027-06-22 | SDR-ST-CON-P1-5600 |  | -56d |
|  | 7 | **Traffic Signage** |  | 2027-06-23 | 2027-07-11 |  |  |  |
| SDR-ST-CON-P1-5360 |  | Traffic signs, ground mounted, 1 Sheet Alumenium, (breakaway) Single post, with all accessories | 6d | 2027-06-23 | 2027-06-29 | SDR-ST-CON-P1-5350 SS, SDR-ST-CON-P1-5650 |  | -56d |
| SDR-ST-CON-P1-5520 |  | Traffic signs, ground mounted, 1 Sheet Aluminum, (breakaway) Double post, with all accessories | 5d | 2027-06-30 | 2027-07-05 | SDR-ST-CON-P1-5360 |  | -56d |
| SDR-ST-CON-P1-5660 |  | Traffic signs, ground mounted, 2 Sheet Aluminum, (breakaway) Single post, with all accessories | 5d | 2027-07-06 | 2027-07-11 | SDR-ST-CON-P1-5520 |  | -56d |
|  | 8 | **Speed table** |  | 2027-09-06 | 2027-09-15 |  |  |  |
| SDR-ST-CON-P1-5530 |  | Interlock speed table including interlock, flush kerb and marking | 9d | 2027-09-06 | 2027-09-15 | SDR-ST-CON-P1-5460, SDR-ST-CON-P1-5350, SDR-ST-CON-P1-5660, SDR-ST-CON-P1-5620 |  | -105d |
|  | 12 | **ELECTRICAL WORKS** |  | 2026-08-03 | 2027-11-21 |  |  |  |
|  | 2 | **MV Network** |  | 2026-11-01 | 2027-08-18 |  |  |  |
|  | 5 | **ROAD - 01** |  | 2026-11-01 | 2027-08-18 |  |  |  |
|  | 4 | **ROAD-01 From 1125 to 1765 m (7)** |  | 2026-11-01 | 2027-06-26 |  |  |  |
|  | 6 | **Excavation** |  | 2026-11-01 | 2026-12-23 |  |  |  |
| SDR-ST-CON-P1-1570 |  | Excavation Works Part 1 | 21d | 2026-11-01 A | 2026-11-07 A | SDR-ST-CON-P1-1210, SDR-ST-CON-P1-2220 | 100% |  |
| SDR-ST-CON-P1-6090 |  | Excavation Works Part 2 | 21d | 2026-11-08 A | 2026-11-29 | SDR-ST-CON-P1-1570 | 72% | 20d |
| SDR-ST-CON-P1-6100 |  | Excavation Works Part 3 | 21d | 2026-11-30 | 2026-12-23 | SDR-ST-CON-P1-6090 |  | 20d |
|  | 7 | **Pipe laying** |  | 2027-04-10 | 2027-05-03 |  |  |  |
| SDR-ST-CON-P1-2270 |  | Pipe Laying | 21d | 2027-04-10 | 2027-05-03 | SDR-ST-PRO-MS-1210, SDR-ST-CON-P1-6100 |  | -66d |
|  | 8 | **Backfilling** |  | 2027-05-04 | 2027-06-01 |  |  |  |
| SDR-ST-CON-P1-3000 |  | Backfilling Works | 20d | 2027-05-04 | 2027-06-01 | SDR-ST-CON-P1-4660, SDR-ST-PRO-MS-1050, SDR-ST-CON-P1-2270 |  | -66d |
|  | 9 | **Pulling Cable** |  | 2027-06-02 | 2027-06-26 |  |  |  |
| SDR-ST-CON-P1-3900 |  | Pulling Cable | 21d | 2027-06-02 | 2027-06-26 | SDR-ST-PRO-MS-1220, SDR-ST-CON-P1-2270, SDR-ST-CON-P1-3000 |  | -66d |
|  | 3 | **ROAD-01 From 470 to 1125 m (6)** |  | 2026-11-01 | 2027-06-24 |  |  |  |
|  | 6 | **Excavation** |  | 2026-11-01 | 2026-12-26 |  |  |  |

| ID | WBS | Task | Duration | Start | Finish | Predecessors | Complete | Total float |
| --- | --- | --- | --- | --- | --- | --- | --- | --- |
| SDR-ST-CON-P1-1720 |  | Excavation Works Part 1 | 21d | 2026-11-01 A | 2026-11-07 A | SDR-ST-CON-P1-1190, SDR-ST-CON-P1-1570 SS+7d | 100% |  |
| SDR-ST-CON-P1-6110 |  | Excavation Works Part2 | 21d | 2026-11-09 A | 2026-12-05 | SDR-ST-CON-P1-1720 | 39% | 18d |
| SDR-ST-CON-P1-6120 |  | Excavation Works Part 3 | 18d | 2026-12-06 | 2026-12-26 | SDR-ST-CON-P1-6110 |  | 18d |
|  | 7 | **Pipe laying** |  | 2027-04-10 | 2027-05-03 |  |  |  |
| SDR-ST-CON-P1-2420 |  | Pipe Laying | 21d | 2027-04-10 | 2027-05-03 | SDR-ST-PRO-MS-1210, SDR-ST-CON-P1-6120 |  | -66d |
|  | 8 | **Backfilling** |  | 2027-05-04 | 2027-06-01 |  |  |  |
| SDR-ST-CON-P1-3150 |  | Backfilling Works | 20d | 2027-05-04 | 2027-06-01 | SDR-ST-CON-P1-4660, SDR-ST-CON-P1-2420 |  | -66d |
|  | 9 | **Pulling Cable** |  | 2027-06-02 | 2027-06-24 |  |  |  |
| SDR-ST-CON-P1-4000 |  | Pulling Cable | 20d | 2027-06-02 | 2027-06-24 | SDR-ST-PRO-MS-1220, SDR-ST-CON-P1-2420, SDR-ST-CON-P1-3150 |  | -66d |
|  | 2 | **ROAD-01 N 03** |  | 2026-11-04 | 2027-08-18 |  |  |  |
|  | 6 | **Excavation** |  | 2026-11-04 | 2026-12-29 |  |  |  |
| SDR-ST-CON-P1-1770 |  | Excavation Works Part 1 | 21d | 2026-11-04 A | 2026-11-07 A | SDR-ST-CON-P1-1200, SDR-ST-CON-P1-1720 SS+7d | 100% |  |
| SDR-ST-CON-P1-6130 |  | Excavation Works Part 2 | 21d | 2026-11-05 A | 2026-12-08 | SDR-ST-CON-P1-1770 | 5% | 16d |
| SDR-ST-CON-P1-6140 |  | Excavation Works Part 3 | 18d | 2026-12-09 | 2026-12-29 | SDR-ST-CON-P1-6130 |  | 16d |
|  | 7 | **Pipe laying** |  | 2027-04-10 | 2027-05-03 |  |  |  |
| SDR-ST-CON-P1-2500 |  | Pipe Laying | 21d | 2027-04-10 | 2027-05-03 | SDR-ST-PRO-MS-1210, SDR-ST-CON-P1-6140 |  | -65d |
|  | 8 | **Backfilling** |  | 2027-07-05 | 2027-07-27 |  |  |  |
| SDR-ST-CON-P1-3280 |  | Backfilling Works | 20d | 2027-07-05 | 2027-07-27 | SDR-ST-CON-P3-1490, SDR-ST-CON-P1-2500 |  | -95d |
|  | 9 | **Pulling Cable** |  | 2027-07-28 | 2027-08-18 |  |  |  |
| SDR-ST-CON-P1-4250 |  | Pulling Cable | 20d | 2027-07-28 | 2027-08-18 | SDR-ST-PRO-MS-1220, SDR-ST-CON-P1-2500, SDR-ST-CON-P1-3280 |  | -95d |
|  | 1 | **ROAD-01 N 01** |  | 2026-11-03 | 2027-06-24 |  |  |  |
|  | 6 | **Excavation** |  | 2026-11-03 | 2027-04-13 |  |  |  |
| SDR-ST-CON-P1-1730 |  | Excavation Works Part 1 | 21d | 2026-11-03 A | 2026-12-03 | SDR-ST-CON-P1-1770 SS+7d | 72% | 1d |
| SDR-ST-CON-P1-6150 |  | Excavation Works Part 2 | 20d | 2027-02-23 | 2027-03-22 | SDR-ST-MILS-1070, SDR-ST-CON-P1-1730 |  | -42d |
| SDR-ST-CON-P1-6160 |  | Excavation Works Part 3 | 19d | 2027-03-23 | 2027-04-13 | SDR-ST-CON-P1-6150 |  | -42d |
|  | 7 | **Pipe laying** |  | 2027-04-14 | 2027-05-06 |  |  |  |
| SDR-ST-CON-P1-2430 |  | Pipe Laying | 20d | 2027-04-14 | 2027-05-06 | SDR-ST-CON-P1-4640, SDR-ST-PRO-MS-1210, SDR-ST-CON-P1-6160 |  | -42d |
|  | 8 | **Backfilling** |  | 2027-05-08 | 2027-06-03 |  |  |  |
| SDR-ST-CON-P1-3160 |  | Backfilling Works | 19d | 2027-05-08 | 2027-06-03 | SDR-ST-CON-P1-5720, SDR-ST-CON-P1-5570, SDR-ST-CON-P1-5710, SDR-ST-CON-P1-5730, SDR-ST-CON-P1-2430 |  | -41d |
|  | 9 | **Pulling Cable** |  | 2027-06-05 | 2027-06-24 |  |  |  |
| SDR-ST-CON-P1-4010 |  | Pulling Cable | 18d | 2027-06-05 | 2027-06-24 | SDR-ST-CON-P1-4910, SDR-ST-CON-P1-4520, SDR-ST-PRO-MS-1220, SDR-ST-CON-P1-2430, SDR-ST-CON-P1-3160 |  | -41d |
|  | 6 | **ROAD - 02** |  | 2026-11-03 | 2027-06-26 |  |  |  |
|  | 3 | **ROAD-01 From 0 to 400 m (9) 2 Way 150 mm** |  | 2026-11-03 | 2027-06-20 |  |  |  |
|  | 6 | **Excavation** |  | 2026-11-03 | 2027-03-24 |  |  |  |
| SDR-ST-CON-P1-1920 |  | Excavation Works Part 1 | 21d | 2026-11-03 A | 2026-12-14 | SDR-ST-CON-P1-1300, SDR-ST-CON-P1-1730 SS+7d | 39% | 1d |
| SDR-ST-CON-P1-6170 |  | Excavation Works Part 2 | 20d | 2026-12-15 | 2027-01-06 | SDR-ST-CON-P1-1920 |  | 18d |
| SDR-ST-CON-P1-6180 |  | Excavation Works Part 3 | 19d | 2027-02-27 | 2027-03-24 | SDR-ST-CON-P1-4020, SDR-ST-CON-P1-4310, SDR-ST-CON-P1-6170 |  | -24d |
|  | 7 | **Pipe laying** |  | 2027-04-10 | 2027-05-02 |  |  |  |
| SDR-ST-CON-P1-2660 |  | Pipe Laying | 20d | 2027-04-10 | 2027-05-02 | SDR-ST-CON-P1-4740, SDR-ST-CON-P1-4880, SDR-ST-PRO-MS-1210, SDR-ST-CON-P1-6180 |  | -37d |
|  | 8 | **Backfilling** |  | 2027-05-03 | 2027-05-30 |  |  |  |
| SDR-ST-CON-P1-3430 |  | Backfilling Works | 19d | 2027-05-03 | 2027-05-30 | SDR-ST-CON-P1-2660 |  | -37d |
|  | 9 | **Pulling Cable** |  | 2027-05-31 | 2027-06-20 |  |  |  |
| SDR-ST-CON-P1-4320 |  | Pulling Cable | 18d | 2027-05-31 | 2027-06-20 | SDR-ST-PRO-MS-1220, SDR-ST-CON-P1-2660, SDR-ST-CON-P1-3430 |  | -37d |
|  | 2 | **ROAD-01 From 400 to 900 m (10) 2 Way 150 mm** |  | 2026-11-03 | 2027-06-26 |  |  |  |
|  | 6 | **Excavation** |  | 2026-11-03 | 2027-04-14 |  |  |  |
| SDR-ST-CON-P1-1840 |  | Excavation Works Part 1 | 21d | 2026-11-03 A | 2026-12-17 | SDR-ST-CON-P1-1250, SDR-ST-CON-P1-1920 SS+7d | 5% | 1d |
| SDR-ST-CON-P1-6190 |  | Excavation Works Part 2 | 20d | 2027-02-23 | 2027-03-22 | SDR-ST-MILS-1070, SDR-ST-CON-P1-1840 |  | -55d |
| SDR-ST-CON-P1-6200 |  | Excavation Works Part 3 | 20d | 2027-03-23 | 2027-04-14 | SDR-ST-CON-P1-6190 |  | -55d |
|  | 7 | **Pipe laying** |  | 2027-04-15 | 2027-05-08 |  |  |  |
| SDR-ST-CON-P1-2590 |  | Pipe Laying | 20d | 2027-04-15 | 2027-05-08 | SDR-ST-PRO-MS-1210, SDR-ST-CON-P1-1840, SDR-ST-CON-P1-6200 |  | -37d |
|  | 8 | **Backfilling** |  | 2027-05-09 | 2027-06-05 |  |  |  |
| SDR-ST-CON-P1-3340 |  | Backfilling Works | 19d | 2027-05-09 | 2027-06-05 | SDR-ST-CON-P1-2590 |  | -37d |
|  | 9 | **Pulling Cable** |  | 2027-06-06 | 2027-06-26 |  |  |  |
| SDR-ST-CON-P1-4050 |  | Pulling Cable | 18d | 2027-06-06 | 2027-06-26 | SDR-ST-PRO-MS-1220, SDR-ST-CON-P1-2590, SDR-ST-CON-P1-3340 |  | -37d |
|  | 1 | **ROAD-01 From 900 to 1239 m (11) 2 Way 150 mm** |  | 2026-12-02 | 2027-06-20 |  |  |  |
|  | 6 | **Excavation** |  | 2026-12-02 | 2027-02-09 |  |  |  |
| SDR-ST-CON-P1-2000 |  | Excavation Works Part 1 | 21d | 2026-12-02 | 2026-12-26 | SDR-ST-CON-P1-1350, SDR-ST-CON-P1-1840 SS+7d |  | 7d |
| SDR-ST-CON-P1-6210 |  | Excavation Works Part 2 | 20d | 2026-12-27 | 2027-01-18 | SDR-ST-CON-P1-2000 |  | 7d |
| SDR-ST-CON-P1-6220 |  | Excavation Works Part 3 | 19d | 2027-01-19 | 2027-02-09 | SDR-ST-CON-P1-6210 |  | 10d |
|  | 7 | **Pipe laying** |  | 2027-04-10 | 2027-05-02 |  |  |  |
| SDR-ST-CON-P1-2750 |  | Pipe Laying | 20d | 2027-04-10 | 2027-05-02 | SDR-ST-CON-P1-4660, SDR-ST-PRO-MS-1210, SDR-ST-CON-P1-6220 |  | -35d |
|  | 8 | **Backfilling** |  | 2027-05-03 | 2027-05-30 |  |  |  |
| SDR-ST-CON-P1-3460 |  | Backfilling Works | 19d | 2027-05-03 | 2027-05-30 | SDR-ST-CON-P1-2750 |  | -35d |
|  | 9 | **Pulling Cable** |  | 2027-05-31 | 2027-06-20 |  |  |  |
| SDR-ST-CON-P1-3980 |  | Pulling Cable | 18d | 2027-05-31 | 2027-06-20 | SDR-ST-PRO-MS-1220, SDR-ST-CON-P1-2750, SDR-ST-CON-P1-3460 |  | -35d |
|  | 1 | **Earthing System** |  | 2027-01-19 | 2027-02-06 |  |  |  |
| SDR-ST-CON-P1-4840 |  | Installation of Earthing System Including lighting poles circuits | 16d | 2027-01-19 | 2027-02-06 | SDR-ST-CON-P1-6210 |  | 7d |
|  | 16 | **Street Lighting Network** |  | 2026-08-03 | 2027-11-21 |  |  |  |
|  | 7 | **ROAD - 01** |  | 2026-08-03 | 2027-11-21 |  |  |  |
|  | 2 | **ROAD-01 From 470 to 1125 m (6)** |  | 2026-08-03 | 2027-04-26 |  |  |  |

| ID | WBS | Task | Duration | Start | Finish | Predecessors | Complete | Total float |
| --- | --- | --- | --- | --- | --- | --- | --- | --- |
|  | 10 | **Excavation** |  | 2026-08-03 | 2027-01-25 |  |  |  |
| SDR-ST-CON-P1-1180 |  | Excavation for LV Cable trench Section 1 | 21d | 2026-08-03 A | 2026-12-14 | SDR-ST-CON-P1-1190 SS | 70% | -61d |
| SDR-ST-CON-P1-1560 |  | Excavation for LV Cable trench Section 2 | 21d | 2026-11-05 A | 2027-01-04 | SDR-ST-CON-P1-1180 FS+2d | 50% | -61d |
| SDR-ST-CON-P1-2250 |  | Excavation for LV Cable trench Section 3 | 21d | 2026-11-05 A | 2027-01-25 | SDR-ST-CON-P1-1560 | 50% | -61d |
|  | 11 | **Install Footings** |  | 2027-01-26 | 2027-02-18 |  |  |  |
| SDR-ST-CON-P1-2980 |  | Install Footings | 21d | 2027-01-26 | 2027-02-18 | SDR-ST-PRO-MS-1260, SDR-ST-CON-P1-2250 |  | -61d |
|  | 12 | **Backfilling** |  | 2027-02-20 | 2027-03-03 |  |  |  |
| SDR-ST-CON-P1-3870 |  | Backfilling over LV Cables of Street lighting | 10d | 2027-02-20 | 2027-03-03 | SDR-ST-CON-P1-2980 |  | -61d |
|  | 13 | **Install pole** |  | 2027-03-04 | 2027-04-26 |  |  |  |
| SDR-ST-CON-P1-4420 |  | Install Pole Part 1 | 21d | 2027-03-04 | 2027-04-01 | SDR-ST-PRO-MS-1020, SDR-ST-PRO-MS-1230, SDR-ST-CON-P1-3870 |  | -61d |
| SDR-ST-CON-P1-5170 |  | Install Pole Part 2 | 21d | 2027-04-03 | 2027-04-26 | SDR-ST-PRO-MS-1230, SDR-ST-CON-P1-4420 |  | -61d |
|  | 3 | **ROAD-01 From 1125 to 1765 m (7)** |  | 2026-08-03 | 2027-04-19 |  |  |  |
|  | 10 | **Excavation** |  | 2026-08-03 | 2027-01-10 |  |  |  |
| SDR-ST-CON-P1-1590 |  | Excavation for LV Cable trench Section 1 | 21d | 2026-08-03 A | 2026-12-14 | SDR-ST-CON-P1-1210 | 70% | -39d |
| SDR-ST-CON-P1-2390 |  | Excavation for LV Cable trench Section 2 | 21d | 2026-11-04 A | 2026-12-29 | SDR-ST-CON-P1-1590 FS+2d | 50% | -39d |
| SDR-ST-CON-P1-3120 |  | Excavation for LV Cable trench Section 3 | 21d | 2026-11-04 A | 2027-01-10 | SDR-ST-CON-P1-2390 | 50% | -39d |
|  | 11 | **Install Footings** |  | 2027-01-11 | 2027-02-02 |  |  |  |
| SDR-ST-CON-P1-3990 |  | Install Footings | 20d | 2027-01-11 | 2027-02-02 | SDR-ST-PRO-MS-1260, SDR-ST-CON-P1-3120 |  | -39d |
|  | 12 | **Backfilling** |  | 2027-02-03 | 2027-02-24 |  |  |  |
| SDR-ST-CON-P1-4680 |  | Backfilling over LV Cables of Street lighting | 18d | 2027-02-03 | 2027-02-24 | SDR-ST-CON-P1-3990 |  | -39d |
|  | 13 | **Install pole** |  | 2027-02-25 | 2027-04-19 |  |  |  |
| SDR-ST-CON-P1-5050 |  | Install Pole Part 1 | 21d | 2027-02-25 | 2027-03-25 | SDR-ST-PRO-MS-1230, SDR-ST-CON-P1-4680 |  | -39d |
| SDR-ST-CON-P1-5760 |  | Install Pole Part 2 | 21d | 2027-03-27 | 2027-04-19 | SDR-ST-PRO-MS-1230, SDR-ST-CON-P1-5050 |  | -39d |
|  | 1 | **ROAD-01 From 0 to 470 m (3)** |  | 2026-09-05 | 2027-07-12 |  |  |  |
|  | 10 | **Excavation** |  | 2026-09-05 | 2026-12-26 |  |  |  |
| SDR-ST-CON-P1-1500 |  | Excavation for LV Cable trench Section 1 | 21d | 2026-09-05 A | 2026-12-02 | SDR-ST-CON-P1-1200 | 70% | -42d |
| SDR-ST-CON-P1-3040 |  | Excavation for LV Cable trench Section 3 | 21d | 2026-11-03 A | 2026-12-26 | SDR-ST-CON-P1-2320 | 50% | -35d |
| SDR-ST-CON-P1-2320 |  | Excavation for LV Cable trench Section 2 | 21d | 2026-11-04 A | 2026-12-14 | SDR-ST-CON-P1-1500 | 50% | -35d |
|  | 11 | **Install Footings** |  | 2026-12-29 | 2027-01-21 |  |  |  |
| SDR-ST-CON-P1-3920 |  | Install Footings | 21d | 2026-12-29 | 2027-01-21 | SDR-ST-PRO-MS-1260, SDR-ST-CON-P1-3040 |  | -37d |
|  | 12 | **Backfilling** |  | 2027-01-23 | 2027-02-08 |  |  |  |
| SDR-ST-CON-P1-4850 |  | Backfilling over LV Cables of Street lighting | 15d | 2027-01-23 | 2027-02-08 | SDR-ST-CON-P1-3920 |  | -37d |
|  | 13 | **Install pole** |  | 2027-02-18 | 2027-07-12 |  |  |  |
| SDR-ST-CON-P1-5330 |  | Install Pole Part 1 | 21d | 2027-02-18 | 2027-03-21 | SDR-ST-PRO-MS-1020, SDR-ST-PRO-MS-1230, SDR-ST-CON-P1-4850 |  | -45.6d |
| SDR-ST-CON-P1-5780 |  | Install Pole Part 2 | 21d | 2027-03-30 | 2027-04-22 | SDR-ST-CON-P1-4660, SDR-ST-CON-P1-5230, SDR-ST-CON-P1-5180, SDR-ST-CON-P1-4160, SDR-ST-CON-P1-4270, SDR-ST-PRO-MS-1230, SDR-ST-CON-P1-5330 |  | -53d |
| SDR-ST-CON-P1-6070 |  | Install Pole Part 3 | 12d | 2027-04-27 | 2027-05-10 | SDR-ST-CON-P1-5790, SDR-ST-CON-P1-5170, SDR-ST-CON-P1-4840, SDR-ST-CON-P1-4800 FS+4d, SDR-ST-CON-P1-5000, SDR-ST-CON-P1-4820, SDR-ST-CON-P1-4900, SDR-ST-CON-P1-5240, SDR-ST-PRO-MS-1180, SDR-ST-PRO-MS-1230, SDR-ST-CON-P1-5780 |  | -56d |
| SDR-ST-CON-P1-6080 |  | Install Pole Part 4 | 7d | 2027-07-05 | 2027-07-12 | SDR-ST-CON-P3-1490, SDR-ST-CON-P1-5750, SDR-ST-PRO-MS-1180, SDR-ST-PRO-MS-1180 FF, SDR-ST-PRO-MS-1230, SDR-ST-CON-P1-6070 |  | -70d |
|  | 4 | **ROAD-01 N (1)** |  | 2026-11-04 | 2027-04-14 |  |  |  |
|  | 10 | **Excavation** |  | 2026-11-04 | 2026-12-30 |  |  |  |
| SDR-ST-CON-P1-3190 |  | Excavation for LV Cable trench Section 3 | 21d | 2026-11-04 A | 2026-12-30 | SDR-ST-CON-P1-2410 | 50% | -37d |
| SDR-ST-CON-P1-1700 |  | Excavation for LV Cable trench Section 1 | 21d | 2026-11-05 A | 2026-12-03 | SDR-ST-CON-P1-1500 SS | 50% | -42d |
| SDR-ST-CON-P1-2410 |  | Excavation for LV Cable trench Section 2 | 21d | 2026-11-05 A | 2026-12-17 | SDR-ST-CON-P1-1700 FS+2d | 50% | -37d |
|  | 11 | **Install Footings** |  | 2026-12-31 | 2027-01-24 |  |  |  |
| SDR-ST-CON-P1-4110 |  | Install Footings | 21d | 2026-12-31 | 2027-01-24 | SDR-ST-CON-P1-3190 |  | -37d |
|  | 12 | **Backfilling** |  | 2027-01-25 | 2027-02-08 |  |  |  |
| SDR-ST-CON-P1-4960 |  | Backfilling over LV Cables of Street lighting | 13d | 2027-01-25 | 2027-02-08 | SDR-ST-CON-P1-4110 |  | -37d |
|  | 13 | **Install pole** |  | 2027-02-18 | 2027-04-14 |  |  |  |
| SDR-ST-CON-P1-5340 |  | Install Pole Part 1 | 21d | 2027-02-18 | 2027-03-21 | SDR-ST-PRO-MS-1230, SDR-ST-CON-P1-4960 |  | -45.6d |
| SDR-ST-CON-P1-5790 |  | Install Pole Part 2 | 21d | 2027-03-21 | 2027-04-14 | SDR-ST-CON-P1-5130, SDR-ST-PRO-MS-1230, SDR-ST-CON-P1-5340 |  | -45.6d |
|  | 5 | **Road Crossing & Drawpits** |  | 2026-08-27 | 2027-02-21 |  |  |  |
|  | 1 | **ROAD - 01** |  | 2026-08-27 | 2027-02-21 |  |  |  |
|  | 1 | **ROAD-01 From 470 to 1125 m (6)** |  | 2026-08-27 | 2026-12-29 |  |  |  |
|  | 1 | **Road crossing Ducts & Drawpits** |  | 2026-08-27 | 2026-12-29 |  |  |  |
|  | 1 | **Excavation** |  | 2026-08-27 | 2026-10-07 |  |  |  |
| SDR-ST-CON-P1-1450 |  | Excavation for GRP Pipes Section 1 | 21d | 2026-08-27 A | 2026-10-07 A | SDR-ST-CON-P1-1180 | 100% |  |
|  | 7 | **bedding Works** |  | 2026-10-08 | 2026-10-10 |  |  |  |
| SDR-ST-CON-P1-2160 |  | Sand bedding for GRP Pipes | 21d | 2026-10-08 A | 2026-10-10 A | SDR-ST-CON-P1-1450 | 100% |  |
|  | 2 | **Pipes Laying** |  | 2026-10-11 | 2026-10-14 |  |  |  |
| SDR-ST-CON-P1-2890 |  | Install ST GRP Pipes | 14d | 2026-10-11 A | 2026-10-14 A | SDR-ST-CON-P1-2160 | 100% |  |
|  | 6 | **Testing** |  | 2026-12-15 | 2026-12-22 |  |  |  |
| SDR-ST-CON-P1-3530 |  | Testing ST GRP Pipes | 7d | 2026-12-15 | 2026-12-22 | SDR-ST-CON-P1-2890 |  | -12d |
|  | 3 | **Backfilling** |  | 2026-12-23 | 2026-12-29 |  |  |  |
| SDR-ST-CON-P1-3810 |  | Backfilling ST GRP Pipes | 6d | 2026-12-23 | 2026-12-29 | SDR-ST-CON-P1-3530 |  | -12d |
|  | 2 | **ROAD-01 From 1125 to 1765 m (7)** |  | 2026-08-27 | 2027-01-03 |  |  |  |
|  | 1 | **Road crossing Ducts & Drawpits** |  | 2026-08-27 | 2027-01-03 |  |  |  |
|  | 1 | **Excavation** |  | 2026-08-27 | 2026-10-08 |  |  |  |
| SDR-ST-CON-P1-1600 |  | Excavation for GRP Pipes Section 1 | 21d | 2026-08-27 A | 2026-10-08 A | SDR-ST-CON-P1-1590 SS | 100% |  |
|  | 7 | **bedding Works** |  | 2026-09-21 | 2026-10-12 |  |  |  |
| SDR-ST-CON-P1-2280 |  | Sand bedding for GRP Pipes | 15d | 2026-09-21 A | 2026-10-12 A | SDR-ST-CON-P1-1600 | 100% |  |
|  | 2 | **Pipes Laying** |  | 2026-10-13 | 2026-10-17 |  |  |  |

| ID | WBS | Task | Duration | Start | Finish | Predecessors | Complete | Total float |
| --- | --- | --- | --- | --- | --- | --- | --- | --- |
| SDR-ST-CON-P1-2800 |  | Install ST GRP Pipes | 12d | 2026-10-13 A | 2026-10-17 A | SDR-ST-PRO-MS-1000, SDR-ST-CON-P1-2280 | 100% |  |
|  | 6 | **Testing** |  | 2026-12-12 | 2026-12-21 |  |  |  |
| SDR-ST-CON-P1-3250 |  | Testing ST GRP Pipes | 9d | 2026-12-12 | 2026-12-21 | SDR-ST-CON-P1-2800 |  | -16d |
|  | 3 | **Backfilling** |  | 2026-12-22 | 2027-01-03 |  |  |  |
| SDR-ST-CON-P1-3670 |  | Backfilling ST GRP Pipes | 11d | 2026-12-22 | 2027-01-03 | SDR-ST-CON-P1-3250 |  | -16d |
|  | 3 | **ROAD-01 From 0 to 470 m (3)** |  | 2026-08-27 | 2026-12-19 |  |  |  |
|  | 1 | **Road crossing Ducts & Drawpits** |  | 2026-08-27 | 2026-12-19 |  |  |  |
|  | 1 | **Excavation** |  | 2026-08-27 | 2026-10-12 |  |  |  |
| SDR-ST-CON-P1-1510 |  | Excavation for GRP Pipes Section 1 | 21d | 2026-08-27 A | 2026-10-12 A | SDR-ST-CON-P1-1500 SS | 100% |  |
|  | 7 | **bedding Works** |  | 2026-10-13 | 2026-10-15 |  |  |  |
| SDR-ST-CON-P1-2180 |  | Sand bedding for GRP Pipes | 21d | 2026-10-13 A | 2026-10-15 A | SDR-ST-CON-P1-1510 | 100% |  |
|  | 2 | **Pipes Laying** |  | 2026-10-17 | 2026-10-19 |  |  |  |
| SDR-ST-CON-P1-2930 |  | Install ST GRP Pipes | 13d | 2026-10-17 A | 2026-10-19 A | SDR-ST-CON-P1-2180 | 100% |  |
|  | 6 | **Testing** |  | 2026-11-22 | 2026-12-02 |  |  |  |
| SDR-ST-CON-P1-3510 |  | Testing ST GRP Pipes | 10d | 2026-11-22 | 2026-12-02 | SDR-ST-CON-P1-2930 |  | 41d |
|  | 3 | **Backfilling** |  | 2026-12-05 | 2026-12-19 |  |  |  |
| SDR-ST-CON-P1-3760 |  | Backfilling ST GRP Pipes | 13d | 2026-12-05 | 2026-12-19 | SDR-ST-CON-P1-3510 FS+1d |  | 41d |
|  | 4 | **ROAD-01 N (1)** |  | 2026-11-22 | 2027-02-21 |  |  |  |
|  | 1 | **Road crossing Ducts & Drawpits** |  | 2026-11-22 | 2027-02-21 |  |  |  |
|  | 1 | **Excavation** |  | 2026-11-22 | 2026-12-15 |  |  |  |
| SDR-ST-CON-P1-1710 |  | Excavation for GRP Pipes Section 1 | 21d | 2026-11-22 | 2026-12-15 | SDR-ST-CON-P1-1700 SS |  | -14d |
|  | 7 | **bedding Works** |  | 2026-12-16 | 2027-01-09 |  |  |  |
| SDR-ST-CON-P1-2360 |  | Sand bedding for GRP Pipes | 21d | 2026-12-16 | 2027-01-09 | SDR-ST-CON-P1-1710 |  | -14d |
|  | 2 | **Pipes Laying** |  | 2027-01-10 | 2027-01-23 |  |  |  |
| SDR-ST-CON-P1-3090 |  | Install ST GRP Pipes | 12d | 2027-01-10 | 2027-01-23 | SDR-ST-CON-P1-2360 |  | -14d |
|  | 6 | **Testing** |  | 2027-01-24 | 2027-02-08 |  |  |  |
| SDR-ST-CON-P1-3520 |  | Testing ST GRP Pipes | 14d | 2027-01-24 | 2027-02-08 | SDR-ST-CON-P1-3090 |  | -14d |
|  | 3 | **Backfilling** |  | 2027-02-10 | 2027-02-21 |  |  |  |
| SDR-ST-CON-P1-3930 |  | Backfilling ST GRP Pipes | 10d | 2027-02-10 | 2027-02-21 | SDR-ST-CON-P1-3520 FS+1d |  | -14d |
|  | 11 | **Ring Main Unit** |  | 2027-07-26 | 2027-10-04 |  |  |  |
|  | 1 | **Leveling** |  | 2027-07-26 | 2027-08-09 |  |  |  |
| SDR-ST-CON-P1-5840 |  | Ring Main Unit leveling | 14d | 2027-07-26 | 2027-08-09 | SDR-ST-CON-P1-3900, SDR-ST-CON-P1-5780, SDR-ST-CON-P3-1460, SDR-ST-CON-P1-6080 |  | -81d |
|  | 2 | **Lean Concrete** |  | 2027-08-19 | 2027-09-11 |  |  |  |
| SDR-ST-CON-P1-5890 |  | Ring Main Unit Lean Concrete | 20d | 2027-08-19 | 2027-09-11 | SDR-ST-CON-P1-4070, SDR-ST-MILS-1060, SDR-ST-CON-P1-5840 |  | -84d |
|  | 3 | **Installation** |  | 2027-09-12 | 2027-10-04 |  |  |  |
| SDR-ST-CON-P1-5920 |  | Ring Main Unit installation for Street Lighting | 20d | 2027-09-12 | 2027-10-04 | SDR-ST-CON-P1-5800, SDR-ST-CON-P1-5890, SDR-ST-MILS-1080, SDR-ST-MILS-1060 |  | -84d |
|  | 12 | **Feeder Pillars** |  | 2027-08-19 | 2027-10-23 |  |  |  |
|  | 1 | **Leveling** |  | 2027-08-19 | 2027-09-12 |  |  |  |
| SDR-ST-CON-P1-5880 |  | Feeder Pillars Leveling | 21d | 2027-08-19 | 2027-09-12 | SDR-ST-CON-P1-4320, SDR-ST-CON-P1-4010, SDR-ST-CON-P1-4250, SDR-ST-CON-P1-4000, SDR-ST-CON-P1-5840 |  | -89d |
|  | 2 | **Lean Concrete** |  | 2027-09-13 | 2027-10-05 |  |  |  |
| SDR-ST-CON-P1-5930 |  | Feeder Pillars Lean Concrete | 20d | 2027-09-13 | 2027-10-05 | SDR-ST-CON-P1-5880, SDR-ST-MILS-1070, SDR-ST-MILS-1080, SDR-ST-CON-P3-1500 |  | -87d |
|  | 3 | **Installation** |  | 2027-10-06 | 2027-10-23 |  |  |  |
| SDR-ST-CON-P1-6000 |  | Feeder Pillars Installation | 15d | 2027-10-06 | 2027-10-23 | SDR-ST-CON-P1-5930 |  | -87d |
|  | 13 | **KWH Frame** |  | 2027-09-30 | 2027-11-21 |  |  |  |
|  | 1 | **Leveling** |  | 2027-09-30 | 2027-10-21 |  |  |  |
| SDR-ST-CON-P1-5940 |  | KWH meter mounting frame Leveling | 19d | 2027-09-30 | 2027-10-21 | SDR-ST-CO-1010, SDR-ST-CON-P1-5880 |  | -104d |
|  | 2 | **Lean Concrete** |  | 2027-10-23 | 2027-11-08 |  |  |  |
| SDR-ST-CON-P1-6010 |  | KWH meter mounting frame Lean Concrete | 15d | 2027-10-23 | 2027-11-08 | SDR-ST-CON-P1-5940 |  | -104d |
|  | 3 | **Installation** |  | 2027-11-09 | 2027-11-21 |  |  |  |
| SDR-ST-CON-P1-6040 |  | KWH meter mounting frame installation | 11d | 2027-11-09 | 2027-11-21 | SDR-ST-CON-P1-6010 |  | -104d |
|  | 14 | **Street Lighting Sub-station** |  | 2027-10-05 | 2027-11-16 |  |  |  |
|  | 1 | **Leveling** |  | 2027-10-05 | 2027-10-27 |  |  |  |
| SDR-ST-CON-P1-5950 |  | Unit Substation Leveling Part 1 | 20d | 2027-10-05 | 2027-10-27 | SDR-ST-CON-P1-5940 SS+4d |  | -104d |
| SDR-ST-CON-P1-5960 |  | Unit Substation Leveling Part 2 | 20d | 2027-10-05 | 2027-10-27 | SDR-ST-CON-P1-5950 SS |  | -104d |
|  | 2 | **Lean Concrete** |  | 2027-10-28 | 2027-11-10 |  |  |  |
| SDR-ST-CON-P1-6020 |  | Unit Substation Lean Concrete | 12d | 2027-10-28 | 2027-11-10 | SDR-ST-CON-P1-5950, SDR-ST-CON-P1-5960 |  | -104d |
|  | 3 | **Installation** |  | 2027-11-11 | 2027-11-16 |  |  |  |
| SDR-ST-CON-P1-6050 |  | Unit Substation Install for Street Lighting | 5d | 2027-11-11 | 2027-11-16 | SDR-ST-CON-P1-6020 |  | -104d |
|  | 8 | **ROAD - 02** |  | 2026-08-15 | 2027-11-11 |  |  |  |
|  | 6 | **ROAD-01 From 0 to 400 m (9) 2 Way 110 mm** |  | 2026-11-02 | 2027-02-25 |  |  |  |
|  | 10 | **Excavation** |  | 2026-11-02 | 2026-12-31 |  |  |  |
| SDR-ST-CON-P1-1780 |  | Excavation for LV Cable trench Section 2 | 15d | 2026-11-02 A | 2026-12-17 | SDR-ST-CON-P1-1310 FS+2d | 30% | -45d |
| SDR-ST-CON-P1-1310 |  | Excavation for LV Cable trench Section 1 | 15d | 2026-11-04 A | 2026-12-03 | SDR-ST-CON-P1-1300 SS | 30% | -75d |
| SDR-ST-CON-P1-2350 |  | Excavation for LV Cable trench Section 3 | 16d | 2026-11-04 A | 2026-12-31 | SDR-ST-CON-P1-1780 | 30% | -45d |
|  | 11 | **Install Footings** |  | 2027-01-02 | 2027-01-18 |  |  |  |
| SDR-ST-CON-P1-2860 |  | Install Footings | 15d | 2027-01-02 | 2027-01-18 | SDR-ST-CON-P1-2350 |  | -45d |
|  | 12 | **Backfilling** |  | 2027-01-19 | 2027-02-06 |  |  |  |
| SDR-ST-CON-P1-3500 |  | Backfilling over LV Cables of Street lighting | 16d | 2027-01-19 | 2027-02-06 | SDR-ST-CON-P1-2860 |  | -45d |
|  | 13 | **Install pole** |  | 2027-02-07 | 2027-02-25 |  |  |  |
| SDR-ST-CON-P1-4260 |  | Install Pole Part 1 | 8d | 2027-02-07 | 2027-02-15 | SDR-ST-CON-P1-3500 |  | -45d |

| ID | WBS | Task | Duration | Start | Finish | Predecessors | Complete | Total float |
| --- | --- | --- | --- | --- | --- | --- | --- | --- |
| SDR-ST-CON-P1-4570 |  | Install Pole Part 2 | 8d | 2027-02-16 | 2027-02-25 | SDR-ST-CON-P1-4260 |  | -45d |
|  | 5 | **ROAD-01 From 400 to 900 m (10) 4 Way 110 mm** |  | 2026-11-01 | 2027-03-03 |  |  |  |
|  | 10 | **Excavation** |  | 2026-11-01 | 2026-12-26 |  |  |  |
| SDR-ST-CON-P1-1260 |  | Excavation for LV Cable trench Section 1 | 15d | 2026-11-01 A | 2026-11-30 | SDR-ST-CON-P1-1250 SS | 30% | -69d |
| SDR-ST-CON-P1-1760 |  | Excavation for LV Cable trench Section 2 | 15d | 2026-11-01 A | 2026-12-14 | SDR-ST-CON-P1-1260 FS+2d | 30% | -45d |
| SDR-ST-CON-P1-2260 |  | Excavation for LV Cable trench Section 3 | 15d | 2026-11-01 A | 2026-12-26 | SDR-ST-CON-P1-1760 | 30% | -45d |
|  | 11 | **Install Footings** |  | 2026-12-27 | 2027-01-11 |  |  |  |
| SDR-ST-CON-P1-2770 |  | Install Footings | 14d | 2026-12-27 | 2027-01-11 | SDR-ST-CON-P1-2260 |  | -45d |
|  | 12 | **Backfilling** |  | 2027-01-12 | 2027-01-27 |  |  |  |
| SDR-ST-CON-P1-3350 |  | Backfilling over LV Cables of Street lighting | 14d | 2027-01-12 | 2027-01-27 | SDR-ST-CON-P1-2770 |  | -45d |
|  | 13 | **Install pole** |  | 2027-01-28 | 2027-03-03 |  |  |  |
| SDR-ST-CON-P1-3940 |  | Install Pole Part 1 | 8d | 2027-01-28 | 2027-02-06 | SDR-ST-CON-P1-3350 |  | -45d |
| SDR-ST-CON-P1-4400 |  | Install Pole Part 2 | 8d | 2027-02-23 | 2027-03-03 | SDR-ST-MILS-1080, SDR-ST-CON-P1-3940 |  | -18d |
|  | 4 | **ROAD-01 From 900 to 1239 m (11) 2 Way 110 mm** |  | 2026-11-05 | 2027-03-03 |  |  |  |
|  | 10 | **Excavation** |  | 2026-11-05 | 2026-12-28 |  |  |  |
| SDR-ST-CON-P1-1360 |  | Excavation for LV Cable trench Section 1 | 14d | 2026-11-05 A | 2026-12-02 | SDR-ST-CON-P1-1350 SS | 30% | -53d |
| SDR-ST-CON-P1-1900 |  | Excavation for LV Cable trench Section 2 | 14d | 2026-11-05 A | 2026-12-16 | SDR-ST-CON-P1-1360 FS+2d | 30% | -30d |
| SDR-ST-CON-P1-2400 |  | Excavation for LV Cable trench Section 3 | 14d | 2026-11-05 A | 2026-12-28 | SDR-ST-CON-P1-1900 | 30% | -30d |
|  | 11 | **Install Footings** |  | 2026-12-29 | 2027-01-13 |  |  |  |
| SDR-ST-CON-P1-2840 |  | Install Footings | 14d | 2026-12-29 | 2027-01-13 | SDR-ST-CON-P1-2400 |  | -30d |
|  | 12 | **Backfilling** |  | 2027-01-14 | 2027-01-30 |  |  |  |
| SDR-ST-CON-P1-3470 |  | Backfilling over LV Cables of Street lighting | 14d | 2027-01-14 | 2027-01-30 | SDR-ST-CON-P1-2840 |  | -30d |
|  | 13 | **Install pole** |  | 2027-01-31 | 2027-03-03 |  |  |  |
| SDR-ST-CON-P1-4080 |  | Install Pole Part 1 | 13d | 2027-01-31 | 2027-02-14 | SDR-ST-CON-P1-3470 |  | -30d |
| SDR-ST-CON-P1-4610 |  | Install Pole Part 2 | 14d | 2027-02-15 | 2027-03-03 | SDR-ST-CON-P1-4080 |  | -30d |
|  | 1 | **Road Crossing & Drawpits** |  | 2026-08-15 | 2026-12-17 |  |  |  |
|  | 2 | **ROAD - 02** |  | 2026-08-15 | 2026-12-17 |  |  |  |
|  | 1 | **ROAD-01 From 0 to 400 m (9) 2 Way 110 mm** |  | 2026-08-15 | 2026-12-17 |  |  |  |
|  | 1 | **Road crossing Ducts & Drawpits** |  | 2026-08-15 | 2026-12-17 |  |  |  |
|  | 1 | **Excavation** |  | 2026-08-15 | 2026-11-08 |  |  |  |
| SDR-ST-CON-P1-1320 |  | Excavation for GRP Pipes Section 1 | 21d | 2026-08-15 A | 2026-11-08 A | SDR-ST-CON-P1-1310 SS | 100% |  |
|  | 7 | **bedding Works** |  | 2026-09-08 | 2026-11-08 |  |  |  |
| SDR-ST-CON-P1-1950 |  | Sand bedding for GRP Pipes | 18d | 2026-09-08 A | 2026-11-08 A | SDR-ST-CON-P1-1320 | 100% |  |
|  | 2 | **Pipes Laying** |  | 2026-09-30 | 2026-11-07 |  |  |  |
| SDR-ST-CON-P1-2560 |  | Install ST GRP Pipes | 16d | 2026-09-30 A | 2026-11-07 A | SDR-ST-CON-P1-1950 | 100% |  |
|  | 6 | **Testing** |  | 2026-11-22 | 2026-12-05 |  |  |  |
| SDR-ST-CON-P1-3200 |  | Testing ST GRP Pipes | 12d | 2026-11-22 | 2026-12-05 | SDR-ST-CON-P1-2560 |  | -2d |
|  | 3 | **Backfilling** |  | 2026-12-06 | 2026-12-17 |  |  |  |
| SDR-ST-CON-P1-3700 |  | Backfilling ST GRP Pipes | 11d | 2026-12-06 | 2026-12-17 | SDR-ST-CON-P1-3200 |  | -2d |
|  | 2 | **ROAD-01 From 400 to 900 m (10) 4 Way 110 mm** |  | 2026-10-22 | 2026-12-17 |  |  |  |
|  | 1 | **Road crossing Ducts & Drawpits** |  | 2026-10-22 | 2026-12-17 |  |  |  |
|  | 1 | **Excavation** |  | 2026-10-22 | 2026-11-07 |  |  |  |
| SDR-ST-CON-P1-1270 |  | Excavation for GRP Pipes Section 1 | 21d | 2026-10-22 A | 2026-11-07 A | SDR-ST-CON-P1-1260 SS | 100% |  |
|  | 7 | **bedding Works** |  | 2026-10-22 | 2026-11-07 |  |  |  |
| SDR-ST-CON-P1-1870 |  | Sand bedding for GRP Pipes | 17d | 2026-10-22 A | 2026-11-07 A | SDR-ST-CON-P1-1270 | 100% |  |
|  | 2 | **Pipes Laying** |  | 2026-10-22 | 2026-11-07 |  |  |  |
| SDR-ST-CON-P1-2470 |  | Install ST GRP Pipes | 14d | 2026-10-22 A | 2026-11-07 A | SDR-ST-CON-P1-1870 | 100% |  |
|  | 6 | **Testing** |  | 2026-11-22 | 2026-12-01 |  |  |  |
| SDR-ST-CON-P1-2970 |  | Testing ST GRP Pipes | 9d | 2026-11-22 | 2026-12-01 | SDR-ST-CON-P1-2470 |  | -2d |
|  | 3 | **Backfilling** |  | 2026-12-02 | 2026-12-17 |  |  |  |
| SDR-ST-CON-P1-3360 |  | Backfilling ST GRP Pipes | 14d | 2026-12-02 | 2026-12-17 | SDR-ST-CON-P1-2970 |  | -2d |
|  | 3 | **ROAD-01 From 900 to 1239 m (11) 2 Way 110 mm** |  | 2026-10-22 | 2026-12-14 |  |  |  |
|  | 1 | **Road crossing Ducts & Drawpits** |  | 2026-10-22 | 2026-12-14 |  |  |  |
|  | 1 | **Excavation** |  | 2026-10-22 | 2026-11-07 |  |  |  |
| SDR-ST-CON-P1-1370 |  | Excavation for GRP Pipes Section 1 | 21d | 2026-10-22 A | 2026-11-07 A | SDR-ST-CON-P1-1360 SS | 100% |  |
|  | 7 | **bedding Works** |  | 2026-10-22 | 2026-11-06 |  |  |  |
| SDR-ST-CON-P1-2060 |  | Sand bedding for GRP Pipes | 15d | 2026-10-22 A | 2026-11-06 A | SDR-ST-CON-P1-1370 | 100% |  |
|  | 2 | **Pipes Laying** |  | 2026-10-29 | 2026-11-07 |  |  |  |
| SDR-ST-CON-P1-2600 |  | Install ST GRP Pipes | 14d | 2026-10-29 A | 2026-11-07 A | SDR-ST-CON-P1-2060 | 100% |  |
|  | 6 | **Testing** |  | 2026-11-22 | 2026-11-30 |  |  |  |
| SDR-ST-CON-P1-3110 |  | Testing ST GRP Pipes | 8d | 2026-11-22 | 2026-11-30 | SDR-ST-CON-P1-2600 |  | 1d |
|  | 3 | **Backfilling** |  | 2026-12-01 | 2026-12-14 |  |  |  |
| SDR-ST-CON-P1-3480 |  | Backfilling ST GRP Pipes | 12d | 2026-12-01 | 2026-12-14 | SDR-ST-CON-P1-3110 |  | 1d |
|  | 11 | **Ring Main Unit** |  | 2027-06-26 | 2027-11-09 |  |  |  |
|  | 1 | **Leveling** |  | 2027-06-26 | 2027-07-18 |  |  |  |
| SDR-ST-CON-P1-5810 |  | Ring Main Unit leveling | 20d | 2027-06-26 | 2027-07-18 | SDR-ST-CON-P1-4000, SDR-ST-CON-P1-5760 FS+25d |  | -66d |
|  | 2 | **Lean Concrete** |  | 2027-09-13 | 2027-10-05 |  |  |  |
| SDR-ST-CON-P1-5850 |  | Ring Main Unit Lean Concrete | 20d | 2027-09-13 | 2027-10-05 | SDR-ST-CON-P1-5390, SDR-ST-CON-P1-5810 |  | -105d |
|  | 3 | **Installation** |  | 2027-10-18 | 2027-11-09 |  |  |  |
| SDR-ST-CON-P1-5970 |  | Ring Main Unit installation for Street Lighting | 20d | 2027-10-18 | 2027-11-09 | SDR-ST-CON-P1-5850 FS+10d |  | -105d |

| ID | WBS | Task | Duration | Start | Finish | Predecessors | Complete | Total float |
| --- | --- | --- | --- | --- | --- | --- | --- | --- |
|  | 12 | **Feeder Pillars** |  | 2027-06-26 | 2027-09-19 |  |  |  |
|  | 1 | **Leveling** |  | 2027-06-26 | 2027-07-18 |  |  |  |
| SDR-ST-CON-P1-5820 |  | Feeder Pillars Leveling | 20d | 2027-06-26 | 2027-07-18 | SDR-ST-CON-P1-5810 SS |  | -66d |
|  | 2 | **Lean Concrete** |  | 2027-07-19 | 2027-08-09 |  |  |  |
| SDR-ST-CON-P1-5860 |  | Feeder Pillars Lean Concrete | 20d | 2027-07-19 | 2027-08-09 | SDR-ST-CON-P1-5820 |  | -64d |
|  | 3 | **Installation** |  | 2027-08-28 | 2027-09-19 |  |  |  |
| SDR-ST-CON-P1-5980 |  | Feeder Pillars Installation | 20d | 2027-08-28 | 2027-09-19 | SDR-ST-CON-P1-5860 FS+15d |  | -64d |
|  | 13 | **KWH Frame** |  | 2027-06-27 | 2027-10-21 |  |  |  |
|  | 1 | **Leveling** |  | 2027-06-27 | 2027-07-19 |  |  |  |
| SDR-ST-CON-P1-5830 |  | KWH meter mounting frame Leveling | 20d | 2027-06-27 | 2027-07-19 | SDR-ST-CON-P1-5820 SS+1d |  | -66d |
|  | 2 | **Lean Concrete** |  | 2027-09-06 | 2027-09-28 |  |  |  |
| SDR-ST-CON-P1-5870 |  | KWH meter mounting frame Lean Concrete | 20d | 2027-09-06 | 2027-09-28 | SDR-ST-CON-P1-5460, SDR-ST-CON-P1-5830 |  | -89d |
|  | 3 | **Installation** |  | 2027-09-29 | 2027-10-21 |  |  |  |
| SDR-ST-CON-P1-5910 |  | KWH meter mounting frame installation | 20d | 2027-09-29 | 2027-10-21 | SDR-ST-CON-P1-5870 |  | -89d |
|  | 14 | **Street Lighting Sub-station** |  | 2027-07-20 | 2027-11-11 |  |  |  |
|  | 1 | **Leveling** |  | 2027-07-20 | 2027-08-10 |  |  |  |
| SDR-ST-CON-P1-5900 |  | Unit Substation Leveling | 20d | 2027-07-20 | 2027-08-10 | SDR-ST-CON-P1-5830, SDR-ST-PRO-MS-1250 |  | -66d |
|  | 2 | **Lean Concrete** |  | 2027-09-30 | 2027-10-23 |  |  |  |
| SDR-ST-CON-P1-5990 |  | Unit Substation Lean Concrete | 20d | 2027-09-30 | 2027-10-23 | SDR-ST-CO-1010, SDR-ST-CON-P1-5900 |  | -96d |
|  | 3 | **Installation** |  | 2027-10-24 | 2027-11-11 |  |  |  |
| SDR-ST-CON-P1-6030 |  | Unit Substation Install for Street Lighting | 17d | 2027-10-24 | 2027-11-11 | SDR-ST-CON-P1-5990 |  | -96d |
|  | 5 | **TELECOMMUNICATIONS WORKS** |  | 2026-08-13 | 2027-04-17 |  |  |  |
|  | 3 | **ROAD - 01** |  | 2026-08-15 | 2027-02-28 |  |  |  |
|  | 4 | **ROAD-01 N 1 (2X3)X50 mm MH-15 to MH-16** |  | 2026-08-27 | 2027-02-25 |  |  |  |
|  | 3 | **Ducts** |  | 2026-11-04 | 2027-02-25 |  |  |  |
|  | 2 | **Excavation** |  | 2026-11-04 | 2026-12-22 |  |  |  |
| SDR-ST-CON-P1-1690 |  | Excavation for telecom trench Section 1 | 21d | 2026-11-04 A | 2026-12-07 | SDR-ST-CON-P1-1700 SS | 30% | -42d |
| SDR-ST-CON-P1-2340 |  | Excavation for telecom trench Section 2 | 21d | 2026-11-04 A | 2026-12-22 | SDR-ST-CON-P1-1690 | 30% | -42d |
|  | 5 | **Pipe laying** |  | 2026-11-07 | 2027-01-07 |  |  |  |
| SDR-ST-CON-P1-3070 |  | HDPE Pipes for Telecom Installation | 20d | 2026-11-07 A | 2027-01-07 | SDR-ST-CON-P1-2340 | 25% | -42d |
|  | 6 | **Backfilling** |  | 2027-01-09 | 2027-01-31 |  |  |  |
| SDR-ST-CON-P1-3680 |  | Backfilling over HDPE Telecom Pipes | 20d | 2027-01-09 | 2027-01-31 | SDR-ST-CON-P1-3070 |  | -42d |
|  | 7 | **Pulling Cable** |  | 2027-02-01 | 2027-02-25 |  |  |  |
| SDR-ST-CON-P1-4310 |  | Pulling Cable | 21d | 2027-02-01 | 2027-02-25 | SDR-ST-CON-P1-3680 |  | -42d |
|  | 4 | **Manholes** |  | 2026-08-27 | 2027-01-05 |  |  |  |
|  | 1 | **Excavation** |  | 2026-08-27 | 2026-10-06 |  |  |  |
| SDR-ST-CON-P1-1680 |  | Excavation for Telecom Manhole Section 1 | 21d | 2026-08-27 A | 2026-10-03 A | SDR-ST-CON-P1-1690 SS | 100% |  |
| SDR-ST-CON-P1-2370 |  | Excavation for Telecom Manhole Section 2 | 21d | 2026-10-04 A | 2026-10-06 A | SDR-ST-CON-P1-1680 | 100% |  |
|  | 2 | **Bedding Work** |  | 2026-09-24 | 2026-10-15 |  |  |  |
| SDR-ST-CON-P1-3080 |  | Sand bedding for Telecom Manhole | 20d | 2026-09-24 A | 2026-10-15 A | SDR-ST-CON-P1-2370 | 100% |  |
|  | 3 | **Install Manholes** |  | 2026-10-05 | 2026-10-17 |  |  |  |
| SDR-ST-CON-P1-3690 |  | Installation of Telecom Manhole | 20d | 2026-10-05 A | 2026-10-17 A | SDR-ST-CON-P1-1680, SDR-ST-CON-P1-3080 | 100% |  |
|  | 4 | **Testting** |  | 2026-11-22 | 2026-12-14 |  |  |  |
| SDR-ST-CON-P1-4360 |  | Telecom Manhole finishing works | 20d | 2026-11-22 | 2026-12-14 | SDR-ST-CON-P1-3690 |  | 36d |
|  | 5 | **Backfilling** |  | 2026-12-15 | 2027-01-05 |  |  |  |
| SDR-ST-CON-P1-4880 |  | Backfilling over Telecom Manhole | 19d | 2026-12-15 | 2027-01-05 | SDR-ST-CON-P1-4360 |  | 36d |
|  | 2 | **ROAD-01 From 0 to 470 m (3) (2X3)X50 mm MH-12 to MH-14** |  | 2026-08-20 | 2027-02-09 |  |  |  |
|  | 3 | **Ducts** |  | 2026-08-20 | 2027-01-21 |  |  |  |
|  | 2 | **Excavation** |  | 2026-08-20 | 2026-11-05 |  |  |  |
| SDR-ST-CON-P1-1530 |  | Excavation for telecom trench Section 1 | 21d | 2026-08-20 A | 2026-08-31 A | SDR-ST-CON-P1-1500 SS | 100% |  |
| SDR-ST-CON-P1-2190 |  | Excavation for telecom trench Section 2 | 21d | 2026-10-19 A | 2026-11-05 A | SDR-ST-CON-P1-1530 | 100% |  |
|  | 5 | **Pipe laying** |  | 2026-11-01 | 2026-12-03 |  |  |  |
| SDR-ST-CON-P1-2940 |  | HDPE Pipes for Telecom Installation | 21d | 2026-11-01 A | 2026-12-03 | SDR-ST-CON-P1-2190 | 50% | -10d |
|  | 6 | **Backfilling** |  | 2026-12-05 | 2026-12-28 |  |  |  |
| SDR-ST-CON-P1-3770 |  | Backfilling over HDPE Telecom Pipes | 21d | 2026-12-05 | 2026-12-28 | SDR-ST-CON-P1-2940 |  | -10d |
|  | 7 | **Pulling Cable** |  | 2026-12-29 | 2027-01-21 |  |  |  |
| SDR-ST-CON-P1-4370 |  | Pulling Cable | 21d | 2026-12-29 | 2027-01-21 | SDR-ST-CON-P1-3770 |  | -10d |
|  | 4 | **Manholes** |  | 2026-08-27 | 2027-02-09 |  |  |  |
|  | 1 | **Excavation** |  | 2026-08-27 | 2026-11-04 |  |  |  |
| SDR-ST-CON-P1-1520 |  | Excavation for Telecom Manhole Section 1 | 21d | 2026-08-27 A | 2026-10-01 A | SDR-ST-CON-P1-1530 SS | 100% |  |
| SDR-ST-CON-P1-2200 |  | Excavation for Telecom Manhole Section 2 | 21d | 2026-10-05 A | 2026-11-04 A | SDR-ST-CON-P1-1520 | 100% |  |
|  | 2 | **Bedding Work** |  | 2026-10-07 | 2026-11-05 |  |  |  |
| SDR-ST-CON-P1-2950 |  | Sand bedding for Telecom Manhole | 19d | 2026-10-07 A | 2026-11-05 A | SDR-ST-PRO-MS-1010, SDR-ST-CON-P1-2200 | 100% |  |
|  | 3 | **Install Manholes** |  | 2026-10-13 | 2026-11-04 |  |  |  |
| SDR-ST-CON-P1-3780 |  | Installation of Telecom Manhole | 20d | 2026-10-13 A | 2026-11-04 A | SDR-ST-CON-P1-1520, SDR-ST-CON-P1-2950 | 100% |  |
|  | 4 | **Testting** |  | 2026-12-23 | 2027-01-16 |  |  |  |
| SDR-ST-CON-P1-4630 |  | Telecom Manhole finishing works | 21d | 2026-12-23 | 2027-01-16 | SDR-ST-CON-P1-3780 |  | -5d |
|  | 5 | **Backfilling** |  | 2027-01-17 | 2027-02-09 |  |  |  |
| SDR-ST-CON-P1-5140 |  | Backfilling over Telecom Manhole | 21d | 2027-01-17 | 2027-02-09 | SDR-ST-CON-P1-4630 |  | -5d |
|  | 1 | **ROAD-01 From 470 to 1125 m (6) (2X3)X50 mm MH-10 to MH-11** |  | 2026-08-15 | 2027-02-18 |  |  |  |

| ID | WBS | Task | Duration | Start | Finish | Predecessors | Complete | Total float |
| --- | --- | --- | --- | --- | --- | --- | --- | --- |
|  | 3 | **Ducts** |  | 2026-08-20 | 2027-02-18 |  |  |  |
|  | 2 | **Excavation** |  | 2026-08-20 | 2026-12-10 |  |  |  |
| SDR-ST-CON-P1-1240 |  | Excavation for telecom trench Section 1 | 21d | 2026-08-20 A | 2026-08-31 A | SDR-ST-CON-P1-1180 SS+10d | 100% |  |
| SDR-ST-CON-P1-1790 |  | Excavation for telecom trench Section 2 | 21d | 2026-11-05 A | 2026-12-10 | SDR-ST-CON-P1-1240 | 20% | -47d |
|  | 5 | **Pipe laying** |  | 2026-12-12 | 2027-01-04 |  |  |  |
| SDR-ST-CON-P1-2510 |  | HDPE Pipes for Telecom Installation | 21d | 2026-12-12 | 2027-01-04 | SDR-ST-CON-P1-1790 |  | -47d |
|  | 6 | **Backfilling** |  | 2027-01-05 | 2027-01-25 |  |  |  |
| SDR-ST-CON-P1-3230 |  | Backfilling over HDPE Telecom Pipes | 18d | 2027-01-05 | 2027-01-25 | SDR-ST-CON-P1-2510 |  | -47d |
|  | 7 | **Pulling Cable** |  | 2027-01-26 | 2027-02-18 |  |  |  |
| SDR-ST-CON-P1-4020 |  | Pulling Cable | 21d | 2027-01-26 | 2027-02-18 | SDR-ST-CON-P1-3230 |  | -47d |
|  | 4 | **Manholes** |  | 2026-08-15 | 2027-02-09 |  |  |  |
|  | 1 | **Excavation** |  | 2026-08-15 | 2026-10-13 |  |  |  |
| SDR-ST-CON-P1-1230 |  | Excavation for Telecom Manhole Section 1 | 21d | 2026-08-15 A | 2026-10-12 A | SDR-ST-CON-P1-1240 SS | 100% |  |
| SDR-ST-CON-P1-1800 |  | Excavation for Telecom Manhole Section 2 | 21d | 2026-09-08 A | 2026-10-13 A | SDR-ST-CON-P1-1230 | 100% |  |
|  | 2 | **Bedding Work** |  | 2026-10-08 | 2026-10-15 |  |  |  |
| SDR-ST-CON-P1-2520 |  | Sand bedding for Telecom Manhole | 19d | 2026-10-08 A | 2026-10-15 A | SDR-ST-PRO-MS-1010, SDR-ST-CON-P1-1800 | 100% |  |
|  | 3 | **Install Manholes** |  | 2026-10-13 | 2026-10-17 |  |  |  |
| SDR-ST-CON-P1-3240 |  | Installation of Telecom Manhole | 20d | 2026-10-13 A | 2026-10-17 A | SDR-ST-CON-P1-1230, SDR-ST-CON-P1-2520 | 100% |  |
|  | 4 | **Testting** |  | 2026-12-23 | 2027-01-16 |  |  |  |
| SDR-ST-CON-P1-4150 |  | Telecom Manhole finishing works | 21d | 2026-12-23 | 2027-01-16 | SDR-ST-CON-P1-3240 |  | 8d |
|  | 5 | **Backfilling** |  | 2027-01-17 | 2027-02-09 |  |  |  |
| SDR-ST-CON-P1-4740 |  | Backfilling over Telecom Manhole | 21d | 2027-01-17 | 2027-02-09 | SDR-ST-CON-P1-4150 |  | 8d |
|  | 3 | **ROAD-01 From 1125 to 1765 m (7) (2X3)X50 mm MH-8 to MH-9** |  | 2026-08-20 | 2027-02-28 |  |  |  |
|  | 3 | **Ducts** |  | 2026-08-20 | 2027-02-28 |  |  |  |
|  | 2 | **Excavation** |  | 2026-08-20 | 2026-12-15 |  |  |  |
| SDR-ST-CON-P1-1620 |  | Excavation for telecom trench Section 1 | 21d | 2026-08-20 A | 2026-08-31 A | SDR-ST-CON-P1-1590 SS | 100% |  |
| SDR-ST-CON-P1-2290 |  | Excavation for telecom trench Section 2 | 21d | 2026-11-22 | 2026-12-15 | SDR-ST-CON-P1-1620 |  | -27d |
|  | 5 | **Pipe laying** |  | 2026-12-16 | 2027-01-09 |  |  |  |
| SDR-ST-CON-P1-3010 |  | HDPE Pipes for Telecom Installation | 21d | 2026-12-16 | 2027-01-09 | SDR-ST-CON-P1-2290 |  | -27d |
|  | 6 | **Backfilling** |  | 2027-01-10 | 2027-02-02 |  |  |  |
| SDR-ST-CON-P1-3630 |  | Backfilling over HDPE Telecom Pipes | 21d | 2027-01-10 | 2027-02-02 | SDR-ST-CON-P1-3010 |  | -27d |
|  | 7 | **Pulling Cable** |  | 2027-02-03 | 2027-02-28 |  |  |  |
| SDR-ST-CON-P1-4240 |  | Pulling Cable | 21d | 2027-02-03 | 2027-02-28 | SDR-ST-CON-P1-3630 |  | -27d |
|  | 4 | **Manholes** |  | 2026-08-27 | 2027-01-03 |  |  |  |
|  | 1 | **Excavation** |  | 2026-08-27 | 2026-10-10 |  |  |  |
| SDR-ST-CON-P1-1610 |  | Excavation for Telecom Manhole Section 1 | 21d | 2026-08-27 A | 2026-10-04 A | SDR-ST-CON-P1-1620 SS | 100% |  |
| SDR-ST-CON-P1-2300 |  | Excavation for Telecom Manhole Section 2 | 21d | 2026-10-04 A | 2026-10-10 A | SDR-ST-CON-P1-1610 | 100% |  |
|  | 2 | **Bedding Work** |  | 2026-10-10 | 2026-10-14 |  |  |  |
| SDR-ST-CON-P1-3020 |  | Sand bedding for Telecom Manhole | 19d | 2026-10-10 A | 2026-10-14 A | SDR-ST-CON-P1-2300 | 100% |  |
|  | 3 | **Install Manholes** |  | 2026-10-15 | 2026-10-18 |  |  |  |
| SDR-ST-CON-P1-3820 |  | Installation of Telecom Manhole | 20d | 2026-10-15 A | 2026-10-18 A | SDR-ST-CON-P1-1610, SDR-ST-CON-P1-3020 | 100% |  |
|  | 4 | **Testting** |  | 2026-11-22 | 2026-12-12 |  |  |  |
| SDR-ST-CON-P1-4720 |  | Telecom Manhole finishing works | 18d | 2026-11-22 | 2026-12-12 | SDR-ST-CON-P1-3820 |  | 33d |
|  | 5 | **Backfilling** |  | 2026-12-13 | 2027-01-03 |  |  |  |
| SDR-ST-CON-P1-5240 |  | Backfilling over Telecom Manhole | 19d | 2026-12-13 | 2027-01-03 | SDR-ST-CON-P1-4720 |  | 33d |
|  | 4 | **ROAD - 02** |  | 2026-08-13 | 2027-04-17 |  |  |  |
|  | 3 | **ROAD-01 From 0 to 400 m (9) (2X3)X50 mm MH-5 to MH-7** |  | 2026-08-15 | 2027-03-29 |  |  |  |
|  | 3 | **Ducts** |  | 2026-11-22 | 2027-03-29 |  |  |  |
|  | 2 | **Excavation** |  | 2026-11-22 | 2027-01-09 |  |  |  |
| SDR-ST-CON-P1-1340 |  | Excavation for telecom trench Section 1 | 21d | 2026-11-22 | 2026-12-15 | SDR-ST-CON-P1-1310 SS |  | -75d |
| SDR-ST-CON-P1-1960 |  | Excavation for telecom trench Section 2 | 21d | 2026-12-16 | 2027-01-09 | SDR-ST-CON-P1-1340 |  | -75d |
|  | 5 | **Pipe laying** |  | 2027-01-10 | 2027-02-02 |  |  |  |
| SDR-ST-CON-P1-2670 |  | HDPE Pipes for Telecom Installation | 21d | 2027-01-10 | 2027-02-02 | SDR-ST-CON-P1-1960 |  | -75d |
|  | 6 | **Backfilling** |  | 2027-02-03 | 2027-02-28 |  |  |  |
| SDR-ST-CON-P1-3440 |  | Backfilling over HDPE Telecom Pipes | 21d | 2027-02-03 | 2027-02-28 | SDR-ST-CON-P1-2670 |  | -75d |
|  | 7 | **Pulling Cable** |  | 2027-03-01 | 2027-03-29 |  |  |  |
| SDR-ST-CON-P1-4270 |  | Pulling Cable | 21d | 2027-03-01 | 2027-03-29 | SDR-ST-CON-P1-3440 |  | -75d |
|  | 4 | **Manholes** |  | 2026-08-15 | 2027-01-09 |  |  |  |
|  | 1 | **Excavation** |  | 2026-08-15 | 2026-10-05 |  |  |  |
| SDR-ST-CON-P1-1330 |  | Excavation for Telecom Manhole Section 1 | 21d | 2026-08-15 A | 2026-10-04 A | SDR-ST-CON-P1-1340 SS | 100% |  |
| SDR-ST-CON-P1-1970 |  | Excavation for Telecom Manhole Section 2 | 21d | 2026-10-03 A | 2026-10-05 A | SDR-ST-CON-P1-1330 | 100% |  |
|  | 2 | **Bedding Work** |  | 2026-10-05 | 2026-10-10 |  |  |  |
| SDR-ST-CON-P1-2680 |  | Sand bedding for Telecom Manhole | 21d | 2026-10-05 A | 2026-10-10 A | SDR-ST-CON-P1-1970 | 100% |  |
|  | 3 | **Install Manholes** |  | 2026-10-11 | 2026-10-15 |  |  |  |
| SDR-ST-CON-P1-3450 |  | Installation of Telecom Manhole | 20d | 2026-10-11 A | 2026-10-15 A | SDR-ST-CON-P1-1330, SDR-ST-CON-P1-2680 | 100% |  |
|  | 4 | **Testting** |  | 2026-11-22 | 2026-12-15 |  |  |  |
| SDR-ST-CON-P1-4380 |  | Telecom Manhole finishing works | 21d | 2026-11-22 | 2026-12-15 | SDR-ST-CON-P1-3450 |  | 26d |
|  | 5 | **Backfilling** |  | 2026-12-16 | 2027-01-09 |  |  |  |
| SDR-ST-CON-P1-4900 |  | Backfilling over Telecom Manhole | 21d | 2026-12-16 | 2027-01-09 | SDR-ST-CON-P1-4380 |  | 26d |
|  | 1 | **ROAD-01 From 400 to 900 m (10) (2X3)X50 mm MH-1 to MH-4** |  | 2026-08-13 | 2027-03-29 |  |  |  |

| ID | WBS | Task | Duration | Start | Finish | Predecessors | Complete | Total float |
| --- | --- | --- | --- | --- | --- | --- | --- | --- |
|  | 3 | **Ducts** |  | 2026-11-22 | 2027-03-29 |  |  |  |
|  | 2 | **Excavation** |  | 2026-11-22 | 2027-01-09 |  |  |  |
| SDR-ST-CON-P1-1290 |  | Excavation for telecom trench Section 1 | 21d | 2026-11-22 | 2026-12-15 | SDR-ST-CON-P1-1260 SS |  | -69d |
| SDR-ST-CON-P1-1880 |  | Excavation for telecom trench Section 2 | 21d | 2026-12-16 | 2027-01-09 | SDR-ST-CON-P1-1290 |  | -69d |
|  | 5 | **Pipe laying** |  | 2027-01-10 | 2027-02-02 |  |  |  |
| SDR-ST-CON-P1-2640 |  | HDPE Pipes for Telecom Installation | 21d | 2027-01-10 | 2027-02-02 | SDR-ST-CON-P1-1880 |  | -69d |
|  | 6 | **Backfilling** |  | 2027-02-03 | 2027-02-28 |  |  |  |
| SDR-ST-CON-P1-3370 |  | Backfilling over HDPE Telecom Pipes | 21d | 2027-02-03 | 2027-02-28 | SDR-ST-CON-P1-2640 |  | -69d |
|  | 7 | **Pulling Cable** |  | 2027-03-01 | 2027-03-29 |  |  |  |
| SDR-ST-CON-P1-4160 |  | Pulling Cable | 21d | 2027-03-01 | 2027-03-29 | SDR-ST-CON-P1-3370 |  | -69d |
|  | 4 | **Manholes** |  | 2026-08-13 | 2027-01-24 |  |  |  |
|  | 1 | **Excavation** |  | 2026-08-13 | 2026-11-25 |  |  |  |
| SDR-ST-CON-P1-1280 |  | Excavation for Telecom Manhole Section 1 | 21d | 2026-08-13 A | 2026-10-08 A | SDR-ST-CON-P1-1290 SS | 100% |  |
| SDR-ST-CON-P1-1890 |  | Excavation for Telecom Manhole Section 2 | 21d | 2026-10-07 A | 2026-11-25 | SDR-ST-CON-P1-1280 | 90% | 13d |
|  | 2 | **Bedding Work** |  | 2026-10-10 | 2026-11-30 |  |  |  |
| SDR-ST-CON-P1-2650 |  | Sand bedding for Telecom Manhole | 19d | 2026-10-10 A | 2026-11-30 | SDR-ST-CON-P1-1890 | 90% | 13d |
|  | 3 | **Install Manholes** |  | 2026-10-13 | 2026-12-06 |  |  |  |
| SDR-ST-CON-P1-3380 |  | Installation of Telecom Manhole | 20d | 2026-10-13 A | 2026-12-06 | SDR-ST-CON-P1-1280, SDR-ST-CON-P1-2650 | 90% | 13d |
|  | 4 | **Testting** |  | 2026-12-07 | 2026-12-30 |  |  |  |
| SDR-ST-CON-P1-4280 |  | Telecom Manhole finishing works | 21d | 2026-12-07 | 2026-12-30 | SDR-ST-CON-P1-3380 |  | 13d |
|  | 5 | **Backfilling** |  | 2026-12-31 | 2027-01-24 |  |  |  |
| SDR-ST-CON-P1-4820 |  | Backfilling over Telecom Manhole | 21d | 2026-12-31 | 2027-01-24 | SDR-ST-CON-P1-4280 |  | 13d |
|  | 2 | **ROAD-01 From 900 to 1239 m (11) (2)X32 mm MH-1** |  | 2026-11-22 | 2027-04-17 |  |  |  |
|  | 3 | **Ducts** |  | 2026-11-22 | 2027-03-29 |  |  |  |
|  | 2 | **Excavation** |  | 2026-11-22 | 2027-01-09 |  |  |  |
| SDR-ST-CON-P1-1390 |  | Excavation for telecom trench Section 1 | 21d | 2026-11-22 | 2026-12-15 | SDR-ST-CON-P1-1360 SS |  | -53d |
| SDR-ST-CON-P1-2070 |  | Excavation for telecom trench Section 2 | 21d | 2026-12-16 | 2027-01-09 | SDR-ST-CON-P1-1390 |  | -48d |
|  | 5 | **Pipe laying** |  | 2027-01-10 | 2027-02-02 |  |  |  |
| SDR-ST-CON-P1-2780 |  | HDPE Pipes for Telecom Installation | 21d | 2027-01-10 | 2027-02-02 | SDR-ST-CON-P1-2070 |  | -48d |
|  | 6 | **Backfilling** |  | 2027-02-03 | 2027-02-28 |  |  |  |
| SDR-ST-CON-P1-3580 |  | Backfilling over HDPE Telecom Pipes | 21d | 2027-02-03 | 2027-02-28 | SDR-ST-CON-P1-2780 |  | -48d |
|  | 7 | **Pulling Cable** |  | 2027-03-01 | 2027-03-29 |  |  |  |
| SDR-ST-CON-P1-4170 |  | Pulling Cable | 21d | 2027-03-01 | 2027-03-29 | SDR-ST-CON-P1-3580 |  | -48d |
|  | 4 | **Manholes** |  | 2026-11-22 | 2027-04-17 |  |  |  |
|  | 1 | **Excavation** |  | 2026-11-22 | 2027-01-09 |  |  |  |
| SDR-ST-CON-P1-1380 |  | Excavation for Telecom Manhole Section 1 | 21d | 2026-11-22 | 2026-12-15 | SDR-ST-CON-P1-1390 SS |  | -53d |
| SDR-ST-CON-P1-2080 |  | Excavation for Telecom Manhole Section 2 | 21d | 2026-12-16 | 2027-01-09 | SDR-ST-CON-P1-1380 |  | -53d |
|  | 2 | **Bedding Work** |  | 2027-01-10 | 2027-01-31 |  |  |  |
| SDR-ST-CON-P1-2790 |  | Sand bedding for Telecom Manhole | 19d | 2027-01-10 | 2027-01-31 | SDR-ST-CON-P1-2080 |  | -53d |
|  | 3 | **Install Manholes** |  | 2027-02-01 | 2027-02-25 |  |  |  |
| SDR-ST-CON-P1-3590 |  | Installation of Telecom Manhole | 21d | 2027-02-01 | 2027-02-25 | SDR-ST-CON-P1-1380, SDR-ST-CON-P1-2790 |  | -53d |
|  | 4 | **Testting** |  | 2027-02-27 | 2027-03-27 |  |  |  |
| SDR-ST-CON-P1-4500 |  | Telecom Manhole finishing works | 21d | 2027-02-27 | 2027-03-27 | SDR-ST-CON-P1-3590 |  | -53d |
|  | 5 | **Backfilling** |  | 2027-03-28 | 2027-04-17 |  |  |  |
| SDR-ST-CON-P1-5000 |  | Backfilling over Telecom Manhole | 18d | 2027-03-28 | 2027-04-17 | SDR-ST-CON-P1-4500 |  | -53d |
|  | 13 | **LOW VOLTAGE** |  | 2026-08-20 | 2027-06-09 |  |  |  |
|  | 1 | **ROAD - 01** |  | 2026-08-20 | 2027-05-05 |  |  |  |
|  | 1 | **ROAD-01 From 470 to 1125 m (6)** |  | 2026-08-20 | 2027-05-05 |  |  |  |
|  | 6 | **Excavation** |  | 2026-08-20 | 2027-01-13 |  |  |  |
| SDR-ST-CON-P1-1670 |  | Excavation Works Part 1 | 21d | 2026-08-20 A | 2026-12-20 | SDR-ST-CON-P1-1180, SDR-ST-CON-P1-1570 | 70% | -9d |
| SDR-ST-CON-P1-6230 |  | Excavation Works Part 2 | 21d | 2026-12-21 | 2027-01-13 | SDR-ST-CON-P1-1670 |  | -9d |
|  | 7 | **Pipe laying** |  | 2027-01-14 | 2027-02-06 |  |  |  |
| SDR-ST-CON-P1-2330 |  | Pipe Laying | 20d | 2027-01-14 | 2027-02-06 | SDR-ST-CON-P1-1670, SDR-ST-CON-P1-6230 |  | -9d |
|  | 8 | **Backfilling** |  | 2027-02-07 | 2027-03-03 |  |  |  |
| SDR-ST-CON-P1-2990 |  | Backfilling Works | 21d | 2027-02-07 | 2027-03-03 | SDR-ST-CON-P1-4880, SDR-ST-CON-P1-2330 |  | 12d |
|  | 9 | **Pulling Cable** |  | 2027-04-12 | 2027-05-05 |  |  |  |
| SDR-ST-CON-P1-3880 |  | Pulling Cable | 21d | 2027-04-12 | 2027-05-05 | SDR-ST-CON-P1-5750, SDR-ST-PRO-MS-1120, SDR-ST-CON-P1-2330, SDR-ST-CON-P1-2990 |  | -17d |
|  | 2 | **ROAD - 02** |  | 2026-08-24 | 2027-06-09 |  |  |  |
|  | 1 | **ROAD-01 From 400 to 900 m (10)** |  | 2026-08-24 | 2027-04-18 |  |  |  |
|  | 6 | **Excavation** |  | 2026-08-24 | 2027-01-19 |  |  |  |
| SDR-ST-CON-P1-1740 |  | Excavation Works Part 1 | 21d | 2026-08-24 A | 2026-12-26 | SDR-ST-CON-P1-1260, SDR-ST-CON-P1-1670 SS+7d | 50% | -2d |
| SDR-ST-CON-P1-6240 |  | Excavation Works Part 2 | 21d | 2026-12-27 | 2027-01-19 | SDR-ST-CON-P1-1740 |  | -2d |
|  | 7 | **Pipe laying** |  | 2027-01-20 | 2027-02-11 |  |  |  |
| SDR-ST-CON-P1-2440 |  | Pipe Laying | 20d | 2027-01-20 | 2027-02-11 | SDR-ST-CON-P1-1740, SDR-ST-CON-P1-6240 |  | -2d |
|  | 8 | **Backfilling** |  | 2027-02-13 | 2027-03-14 |  |  |  |
| SDR-ST-CON-P1-3170 |  | Backfilling Works | 21d | 2027-02-13 | 2027-03-14 | SDR-ST-CON-P1-2440 |  | -2d |
|  | 9 | **Pulling Cable** |  | 2027-03-25 | 2027-04-18 |  |  |  |
| SDR-ST-CON-P1-4040 |  | Pulling Cable | 21d | 2027-03-25 | 2027-04-18 | SDR-ST-CON-P1-4520, SDR-ST-CON-P1-4700, SDR-ST-CON-P1-4910, SDR-ST-CON-P1-2440, SDR-ST-CON-P1-3170 |  | -2d |
|  | 4 | **ROAD-01 From 900 to 1239 m (11)** |  | 2026-08-24 | 2027-06-09 |  |  |  |
|  | 6 | **Excavation** |  | 2026-08-24 | 2027-01-19 |  |  |  |

| ID | WBS | Task | Duration | Start | Finish | Predecessors | Complete | Total float |
| --- | --- | --- | --- | --- | --- | --- | --- | --- |
| SDR-ST-CON-P1-1750 |  | Excavation Works Part 1 | 21d | 2026-08-24 A | 2026-12-26 | SDR-ST-CON-P1-1360 SS, SDR-ST-CON-P1-1740 SS+7d | 50% | 4d |
| SDR-ST-CON-P1-6250 |  | Excavation Works Part 2 | 21d | 2026-12-27 | 2027-01-19 | SDR-ST-CON-P1-1750 |  | 4d |
|  | 7 | **Pipe laying** |  | 2027-01-20 | 2027-02-11 |  |  |  |
| SDR-ST-CON-P1-2450 |  | Pipe Laying | 20d | 2027-01-20 | 2027-02-11 | SDR-ST-CON-P1-1750, SDR-ST-CON-P1-6250 |  | 4d |
|  | 8 | **Backfilling** |  | 2027-02-13 | 2027-03-14 |  |  |  |
| SDR-ST-CON-P1-3180 |  | Backfilling Works | 21d | 2027-02-13 | 2027-03-14 | SDR-ST-CON-P1-2450 |  | 4d |
|  | 9 | **Pulling Cable** |  | 2027-05-11 | 2027-06-09 |  |  |  |
| SDR-ST-CON-P1-4070 |  | Pulling Cable | 21d | 2027-05-11 | 2027-06-09 | SDR-ST-CON-P1-6070, SDR-ST-CON-P1-5100, SDR-ST-CON-P1-5070, SDR-ST-CON-P1-2450, SDR-ST-CON-P1-3180 |  | -34d |
|  | 10 | **PORTABLE WATER** |  | 2026-08-09 | 2027-04-29 |  |  |  |
|  | 2 | **ROAD - 01** |  | 2026-08-09 | 2027-04-29 |  |  |  |
|  | 2 | **ROAD-01 From 0 to 470 m (3)** |  | 2026-08-09 | 2027-04-29 |  |  |  |
|  | 7 | **Pipes Work** |  | 2026-08-09 | 2026-11-08 |  |  |  |
|  | 1 | **Excavation** |  | 2026-08-09 | 2026-09-14 |  |  |  |
| SDR-ST-CON-P1-1480 |  | Excavation for PW HDPE Pipes 315 mm Section 1 | 21d | 2026-08-09 A | 2026-08-31 A | SDR-ST-CON-P1-1200 FS+15d | 100% |  |
| SDR-ST-CON-P1-1980 |  | Excavation for PW HDPE Pipes 315 mm Section 2 | 21d | 2026-08-09 A | 2026-09-14 A | SDR-ST-CON-P1-1480 | 100% |  |
|  | 8 | **bedding Works** |  | 2026-08-26 | 2026-09-30 |  |  |  |
| SDR-ST-CON-P1-2490 |  | Sand bedding for PW HDPE Pipes 315 mm | 21d | 2026-08-26 A | 2026-09-30 A | SDR-ST-CON-P1-1980 FS+1d | 100% |  |
|  | 2 | **Pipes Laying** |  | 2026-08-29 | 2026-09-27 |  |  |  |
| SDR-ST-CON-P1-3270 |  | Install PW 315 mm HDPE Pipe | 21d | 2026-08-29 A | 2026-09-27 A | SDR-ST-CON-P1-3930, SDR-ST-CON-P1-3760, SDR-ST-PRO-MS-1110, SDR-ST-CON-P1-2490 | 100% |  |
|  | 5 | **Testing** |  | 2026-10-03 | 2026-10-05 |  |  |  |
| SDR-ST-CON-P1-4190 |  | Testing of PW HDPE Pipe 315 mm. | 21d | 2026-10-03 A | 2026-10-05 A | SDR-ST-CON-P1-4400, SDR-ST-CON-P1-3270 | 100% |  |
|  | 9 | **Backfilling** |  | 2026-10-22 | 2026-11-08 |  |  |  |
| SDR-ST-CON-P1-4800 |  | Backfilling of PW HDPE Pipe 315 mm. | 21d | 2026-10-22 A | 2026-11-08 A | SDR-ST-PRO-MS-1050, SDR-ST-CON-P1-4190 | 100% |  |
|  | 3 | **Valve Chambers & Valves & Fire Hydrant** |  | 2026-11-22 | 2027-04-29 |  |  |  |
|  | 3 | **Excavation** |  | 2026-11-22 | 2027-01-16 |  |  |  |
| SDR-ST-CON-P1-1490 |  | Excavation for Valve Chambers Section 1 | 21d | 2026-11-22 | 2026-12-15 | SDR-ST-CON-P1-1480 SS+7d |  | -35d |
| SDR-ST-CON-P1-2150 |  | Excavation for Valve Chambers Section 2 | 21d | 2026-12-23 | 2027-01-16 | SDR-ST-PRO-MS-1010, SDR-ST-CON-P1-1490 |  | -41d |
|  | 1 | **bedding Works** |  | 2027-01-17 | 2027-02-09 |  |  |  |
| SDR-ST-CON-P1-2850 |  | Sand bedding for Valve Chambers | 21d | 2027-01-17 | 2027-02-09 | SDR-ST-CON-P1-2150 |  | -41d |
|  | 4 | **Install Chambers & Valves & Fire Hydrant** |  | 2027-02-10 | 2027-03-07 |  |  |  |
| SDR-ST-CON-P1-3560 |  | Install Chambers & Valves | 21d | 2027-02-10 | 2027-03-07 | SDR-ST-PRO-MS-1190, SDR-ST-CON-P1-2850 |  | -41d |
|  | 2 | **Testing** |  | 2027-03-08 | 2027-04-05 |  |  |  |
| SDR-ST-CON-P1-4470 |  | Testing for Chambers & Valves | 21d | 2027-03-08 | 2027-04-05 | SDR-ST-CON-P1-4570, SDR-ST-CON-P1-4310, SDR-ST-CON-P1-3560 |  | -41d |
|  | 6 | **Backfilling** |  | 2027-04-06 | 2027-04-29 |  |  |  |
| SDR-ST-CON-P1-5030 |  | Backfilling for Chambers & Valves | 21d | 2027-04-06 | 2027-04-29 | SDR-ST-CON-P1-4990, SDR-ST-PRO-MS-1050, SDR-ST-CON-P1-4470 |  | -41d |
|  | 1 | **ROAD-01 From 470 to 1125 m (6)** |  | 2026-08-09 | 2027-04-22 |  |  |  |
|  | 7 | **Pipes Work** |  | 2026-08-09 | 2026-10-28 |  |  |  |
|  | 1 | **Excavation** |  | 2026-08-09 | 2026-09-24 |  |  |  |
| SDR-ST-CON-P1-1410 |  | Excavation for PW HDPE Pipes 315 mm Section 1 | 21d | 2026-08-09 A | 2026-08-31 A | SDR-ST-CON-P1-1190 FS+7d | 100% |  |
| SDR-ST-CON-P1-2050 |  | Excavation for PW HDPE Pipes 315 mm Section 2 | 21d | 2026-08-09 A | 2026-09-24 A | SDR-ST-CON-P1-1410 | 100% |  |
|  | 8 | **bedding Works** |  | 2026-08-24 | 2026-09-30 |  |  |  |
| SDR-ST-CON-P1-2690 |  | Sand bedding for PW HDPE Pipes 315 mm | 21d | 2026-08-24 A | 2026-09-30 A | SDR-ST-CON-P1-2050 | 100% |  |
|  | 2 | **Pipes Laying** |  | 2026-08-29 | 2026-10-03 |  |  |  |
| SDR-ST-CON-P1-3290 |  | Install PW 315 mm HDPE Pipe | 21d | 2026-08-29 A | 2026-10-03 A | SDR-ST-PRO-MS-1110, SDR-ST-CON-P1-2690 | 100% |  |
|  | 5 | **Testing** |  | 2026-10-03 | 2026-10-05 |  |  |  |
| SDR-ST-CON-P1-4030 |  | Testing of PW HDPE Pipe 315 mm. | 21d | 2026-10-03 A | 2026-10-05 A | SDR-ST-CON-P1-4570, SDR-ST-CON-P1-3290 | 100% |  |
|  | 9 | **Backfilling** |  | 2026-10-25 | 2026-10-28 |  |  |  |
| SDR-ST-CON-P1-4700 |  | Backfilling of PW HDPE Pipe 315 mm. | 21d | 2026-10-25 A | 2026-10-28 A | SDR-ST-PRO-MS-1050, SDR-ST-CON-P1-4030 | 100% |  |
|  | 3 | **Valve Chambers & Valves & Fire Hydrant** |  | 2026-11-22 | 2027-04-22 |  |  |  |
|  | 3 | **Excavation** |  | 2026-11-22 | 2027-01-09 |  |  |  |
| SDR-ST-CON-P1-1420 |  | Excavation for Valve Chambers Section 1 | 21d | 2026-11-22 | 2026-12-15 | SDR-ST-CON-P1-1410 SS+7d |  | -30d |
| SDR-ST-CON-P1-2100 |  | Excavation for Valve Chambers Section 2 | 21d | 2026-12-16 | 2027-01-09 | SDR-ST-CON-P1-1420 |  | -30d |
|  | 1 | **bedding Works** |  | 2027-01-10 | 2027-02-02 |  |  |  |
| SDR-ST-CON-P1-2820 |  | Sand bedding for Valve Chambers | 21d | 2027-01-10 | 2027-02-02 | SDR-ST-CON-P1-2100 |  | -30d |
|  | 4 | **Install Chambers & Valves & Fire Hydrant** |  | 2027-02-03 | 2027-02-28 |  |  |  |
| SDR-ST-CON-P1-3660 |  | Install Chambers & Valves | 21d | 2027-02-03 | 2027-02-28 | SDR-ST-PRO-MS-1190, SDR-ST-CON-P1-2820 |  | -30d |
|  | 2 | **Testing** |  | 2027-03-01 | 2027-03-29 |  |  |  |
| SDR-ST-CON-P1-4550 |  | Testing for Chambers & Valves | 21d | 2027-03-01 | 2027-03-29 | SDR-ST-CON-P1-3660 |  | -30d |
|  | 6 | **Backfilling** |  | 2027-03-30 | 2027-04-22 |  |  |  |
| SDR-ST-CON-P1-5100 |  | Backfilling for Chambers & Valves | 21d | 2027-03-30 | 2027-04-22 | SDR-ST-PRO-MS-1050, SDR-ST-CON-P1-4550 |  | -30d |
|  | 3 | **ROAD-01 From 1125 to 1765 m (7)** |  | 2026-08-09 | 2027-04-22 |  |  |  |
|  | 7 | **Pipes Work** |  | 2026-08-09 | 2026-10-25 |  |  |  |
|  | 1 | **Excavation** |  | 2026-08-09 | 2026-09-21 |  |  |  |
| SDR-ST-CON-P1-1630 |  | Excavation for PW HDPE Pipes 315 mm Section 1 | 21d | 2026-08-09 A | 2026-08-31 A | SDR-ST-CON-P1-1210 FS+7d | 100% |  |
| SDR-ST-CON-P1-2130 |  | Excavation for PW HDPE Pipes 315 mm Section 2 | 21d | 2026-08-09 A | 2026-09-21 A | SDR-ST-PRO-MS-1010, SDR-ST-CON-P1-1630 | 100% |  |
|  | 8 | **bedding Works** |  | 2026-08-26 | 2026-10-03 |  |  |  |
| SDR-ST-CON-P1-2810 |  | Sand bedding for PW HDPE Pipes 315 mm | 21d | 2026-08-26 A | 2026-10-03 A | SDR-ST-CON-P1-2130 | 100% |  |
|  | 2 | **Pipes Laying** |  | 2026-08-29 | 2026-09-30 |  |  |  |
| SDR-ST-CON-P1-3490 |  | Install PW 315 mm HDPE Pipe | 21d | 2026-08-29 A | 2026-09-30 A | SDR-ST-PRO-MS-1110, SDR-ST-CON-P1-2810 | 100% |  |
|  | 5 | **Testing** |  | 2026-10-03 | 2026-10-05 |  |  |  |

| ID | WBS | Task | Duration | Start | Finish | Predecessors | Complete | Total float |
| --- | --- | --- | --- | --- | --- | --- | --- | --- |
| SDR-ST-CON-P1-3950 |  | Testing of PW HDPE Pipe 315 mm. | 21d | 2026-10-03 A | 2026-10-05 A | SDR-ST-CON-P1-4370, SDR-ST-CON-P1-3490 | 100% |  |
|  | 9 | **Backfilling** |  | 2026-10-25 | 2026-10-25 |  |  |  |
| SDR-ST-CON-P1-4520 |  | Backfilling of PW HDPE Pipe 315 mm. | 21d | 2026-10-25 A | 2026-10-25 A | SDR-ST-CON-P1-4990, SDR-ST-PRO-MS-1050, SDR-ST-CON-P1-3950 | 100% |  |
|  | 3 | **Valve Chambers & Valves & Fire Hydrant** |  | 2026-11-22 | 2027-04-22 |  |  |  |
|  | 3 | **Excavation** |  | 2026-11-22 | 2027-01-09 |  |  |  |
| SDR-ST-CON-P1-1640 |  | Excavation for Valve Chambers Section 1 | 21d | 2026-11-22 | 2026-12-15 | SDR-ST-CON-P1-1630 SS+7d |  | -48d |
| SDR-ST-CON-P1-2230 |  | Excavation for Valve Chambers Section 2 | 21d | 2026-12-16 | 2027-01-09 | SDR-ST-CON-P1-1640 |  | -48d |
|  | 1 | **bedding Works** |  | 2027-01-10 | 2027-02-02 |  |  |  |
| SDR-ST-CON-P1-2900 |  | Sand bedding for Valve Chambers | 21d | 2027-01-10 | 2027-02-02 | SDR-ST-CON-P1-2230 |  | -48d |
|  | 4 | **Install Chambers & Valves & Fire Hydrant** |  | 2027-02-03 | 2027-02-28 |  |  |  |
| SDR-ST-CON-P1-3640 |  | Install Chambers & Valves | 21d | 2027-02-03 | 2027-02-28 | SDR-ST-PRO-MS-1190, SDR-ST-CON-P1-2900 |  | -48d |
|  | 2 | **Testing** |  | 2027-03-01 | 2027-03-29 |  |  |  |
| SDR-ST-CON-P1-4510 |  | Testing for Chambers & Valves | 21d | 2027-03-01 | 2027-03-29 | SDR-ST-CON-P1-4370, SDR-ST-CON-P1-3640 |  | -41d |
|  | 6 | **Backfilling** |  | 2027-03-30 | 2027-04-22 |  |  |  |
| SDR-ST-CON-P1-5070 |  | Backfilling for Chambers & Valves | 21d | 2027-03-30 | 2027-04-22 | SDR-ST-CON-P1-5020, SDR-ST-CON-P1-4970, SDR-ST-CON-P1-5140, SDR-ST-PRO-MS-1050, SDR-ST-CON-P1-4510 |  | -41d |
|  | 3 | **ROAD - 02** |  | 2026-08-27 | 2027-04-18 |  |  |  |
|  | 3 | **ROAD-01 From 0 to 400 m (9)** |  | 2026-08-27 | 2027-04-18 |  |  |  |
|  | 7 | **Pipes Work** |  | 2026-08-27 | 2027-02-16 |  |  |  |
|  | 1 | **Excavation** |  | 2026-08-27 | 2026-09-21 |  |  |  |
| SDR-ST-CON-P1-1930 |  | Excavation for PW HDPE Pipes 315 mm Section 1 | 21d | 2026-08-27 A | 2026-09-14 A | SDR-ST-CON-P1-1300 FS+7d | 100% |  |
| SDR-ST-CON-P1-2480 |  | Excavation for PW HDPE Pipes 315 mm Section 2 | 21d | 2026-08-31 A | 2026-09-21 A | SDR-ST-CON-P1-1930 | 100% |  |
|  | 8 | **bedding Works** |  | 2026-09-22 | 2026-10-24 |  |  |  |
| SDR-ST-CON-P1-3130 |  | Sand bedding for PW HDPE Pipes 315 mm | 21d | 2026-09-22 A | 2026-10-24 A | SDR-ST-CON-P1-2480 | 100% |  |
|  | 2 | **Pipes Laying** |  | 2026-09-24 | 2026-11-08 |  |  |  |
| SDR-ST-CON-P1-3650 |  | Install PW 315 mm HDPE Pipe | 21d | 2026-09-24 A | 2026-11-08 A | SDR-ST-PRO-MS-1110, SDR-ST-CON-P1-3130 | 100% |  |
|  | 5 | **Testing** |  | 2026-10-24 | 2026-12-03 |  |  |  |
| SDR-ST-CON-P1-4340 |  | Testing of PW HDPE Pipe 315 mm. | 21d | 2026-10-24 A | 2026-12-03 | SDR-ST-CON-P1-3650 | 50% | 51d |
|  | 9 | **Backfilling** |  | 2026-10-24 | 2027-02-16 |  |  |  |
| SDR-ST-CON-P1-4910 |  | Backfilling of PW HDPE Pipe 315 mm. | 21d | 2026-10-24 A | 2027-02-16 | SDR-ST-CON-P1-5020, SDR-ST-CON-P1-4740, SDR-ST-CON-P1-4880, SDR-ST-PRO-MS-1050, SDR-ST-CON-P1-4340 | 95% | 21d |
|  | 3 | **Valve Chambers & Valves & Fire Hydrant** |  | 2026-11-22 | 2027-04-18 |  |  |  |
|  | 3 | **Excavation** |  | 2026-11-22 | 2027-01-06 |  |  |  |
| SDR-ST-CON-P1-1940 |  | Excavation for Valve Chambers Section 1 | 20d | 2026-11-22 | 2026-12-14 | SDR-ST-CON-P1-1930 SS |  | -50d |
| SDR-ST-CON-P1-2630 |  | Excavation for Valve Chambers Section 2 | 20d | 2026-12-15 | 2027-01-06 | SDR-ST-CON-P1-1940 |  | -50d |
|  | 1 | **bedding Works** |  | 2027-01-07 | 2027-01-30 |  |  |  |
| SDR-ST-CON-P1-3400 |  | Sand bedding for Valve Chambers | 20d | 2027-01-07 | 2027-01-30 | SDR-ST-CON-P1-2630 |  | -50d |
|  | 4 | **Install Chambers & Valves & Fire Hydrant** |  | 2027-01-31 | 2027-02-23 |  |  |  |
| SDR-ST-CON-P1-4330 |  | Install Chambers & Valves | 20d | 2027-01-31 | 2027-02-23 | SDR-ST-PRO-MS-1190, SDR-ST-CON-P1-3400 |  | -50d |
|  | 2 | **Testing** |  | 2027-02-24 | 2027-03-16 |  |  |  |
| SDR-ST-CON-P1-5060 |  | Testing for Chambers & Valves | 14d | 2027-02-24 | 2027-03-16 | SDR-ST-CON-P1-4370, SDR-ST-CON-P1-4330 |  | -19d |
|  | 6 | **Backfilling** |  | 2027-03-25 | 2027-04-18 |  |  |  |
| SDR-ST-CON-P1-5730 |  | Backfilling for Chambers & Valves | 21d | 2027-03-25 | 2027-04-18 | SDR-ST-CON-P1-4020, SDR-ST-CON-P1-4610, SDR-ST-CON-P1-4990, SDR-ST-PRO-MS-1050, SDR-ST-CON-P1-5060 |  | -26d |
|  | 2 | **ROAD-01 From 400 to 900 m (10)** |  | 2026-08-27 | 2027-04-18 |  |  |  |
|  | 7 | **Pipes Work** |  | 2026-08-27 | 2026-11-30 |  |  |  |
|  | 1 | **Excavation** |  | 2026-08-27 | 2026-09-24 |  |  |  |
| SDR-ST-CON-P1-1850 |  | Excavation for PW HDPE Pipes 315 mm Section 1 | 17d | 2026-08-27 A | 2026-09-14 A | SDR-ST-CON-P1-1250 FS+8d | 100% |  |
| SDR-ST-CON-P1-2460 |  | Excavation for PW HDPE Pipes 315 mm Section 2 | 17d | 2026-08-31 A | 2026-09-24 A | SDR-ST-CON-P1-1850 | 100% |  |
|  | 8 | **bedding Works** |  | 2026-09-22 | 2026-10-24 |  |  |  |
| SDR-ST-CON-P1-3060 |  | Sand bedding for PW HDPE Pipes 315 mm | 12d | 2026-09-22 A | 2026-10-24 A | SDR-ST-CON-P1-2460 | 100% |  |
|  | 2 | **Pipes Laying** |  | 2026-09-24 | 2026-10-24 |  |  |  |
| SDR-ST-CON-P1-3570 |  | Install PW 315 mm HDPE Pipe | 11d | 2026-09-24 A | 2026-10-24 A | SDR-ST-PRO-MS-1110, SDR-ST-CON-P1-3060 | 100% |  |
|  | 5 | **Testing** |  | 2026-10-25 | 2026-11-30 |  |  |  |
| SDR-ST-CON-P1-4060 |  | Testing of PW HDPE Pipe 315 mm. | 14d | 2026-10-25 A | 2026-11-30 | SDR-ST-CON-P1-3570 | 50% | 32d |
|  | 9 | **Backfilling** |  | 2026-10-23 | 2026-11-01 |  |  |  |
| SDR-ST-CON-P1-4640 |  | Backfilling of PW HDPE Pipe 315 mm. | 21d | 2026-10-23 A | 2026-11-01 A | SDR-ST-PRO-MS-1050, SDR-ST-CON-P1-4060 | 100% |  |
|  | 3 | **Valve Chambers & Valves & Fire Hydrant** |  | 2026-11-22 | 2027-04-18 |  |  |  |
|  | 3 | **Excavation** |  | 2026-11-22 | 2027-01-14 |  |  |  |
| SDR-ST-CON-P1-1860 |  | Excavation for Valve Chambers Section 1 | 20d | 2026-11-22 | 2026-12-14 | SDR-ST-CON-P1-1850 SS |  | -54d |
| SDR-ST-CON-P1-2550 |  | Excavation for Valve Chambers Section 2 | 20d | 2026-12-23 | 2027-01-14 | SDR-ST-PRO-MS-1010, SDR-ST-CON-P1-1860 |  | -51d |
|  | 1 | **bedding Works** |  | 2027-01-16 | 2027-02-07 |  |  |  |
| SDR-ST-CON-P1-3310 |  | Sand bedding for Valve Chambers | 20d | 2027-01-16 | 2027-02-07 | SDR-ST-CON-P1-2550 |  | -51d |
|  | 4 | **Install Chambers & Valves & Fire Hydrant** |  | 2027-02-08 | 2027-03-03 |  |  |  |
| SDR-ST-CON-P1-4210 |  | Install Chambers & Valves | 20d | 2027-02-08 | 2027-03-03 | SDR-ST-PRO-MS-1190, SDR-ST-CON-P1-3310 |  | -51d |
|  | 2 | **Testing** |  | 2027-03-04 | 2027-03-24 |  |  |  |
| SDR-ST-CON-P1-4990 |  | Testing for Chambers & Valves | 14d | 2027-03-04 | 2027-03-24 | SDR-ST-CON-P1-4370, SDR-ST-CON-P1-4210 |  | -31d |
|  | 6 | **Backfilling** |  | 2027-03-25 | 2027-04-18 |  |  |  |
| SDR-ST-CON-P1-5710 |  | Backfilling for Chambers & Valves | 21d | 2027-03-25 | 2027-04-18 | SDR-ST-CON-P1-4880, SDR-ST-PRO-MS-1050, SDR-ST-CON-P1-4990 |  | -25d |
|  | 1 | **ROAD-01 From 900 to 1239 m (11)** |  | 2026-08-27 | 2027-04-11 |  |  |  |
|  | 7 | **Pipes Work** |  | 2026-08-27 | 2027-02-08 |  |  |  |
|  | 1 | **Excavation** |  | 2026-08-27 | 2026-09-24 |  |  |  |
| SDR-ST-CON-P1-2010 |  | Excavation for PW HDPE Pipes 315 mm Section 1 | 16d | 2026-08-27 A | 2026-09-14 A | SDR-ST-CON-P1-1350 | 100% |  |

| ID | WBS | Task | Duration | Start | Finish | Predecessors | Complete | Total float |
| --- | --- | --- | --- | --- | --- | --- | --- | --- |
| SDR-ST-CON-P1-2610 |  | Excavation for PW HDPE Pipes 315 mm Section 2 | 16d | 2026-08-31 A | 2026-09-24 A | SDR-ST-PRO-MS-1010, SDR-ST-CON-P1-2010 | 100% |  |
|  | 8 | **bedding Works** |  | 2026-09-22 | 2026-12-27 |  |  |  |
| SDR-ST-CON-P1-3220 |  | Sand bedding for PW HDPE Pipes 315 mm | 10d | 2026-09-22 A | 2026-12-27 | SDR-ST-CON-P1-2610 | 80% | -18d |
|  | 2 | **Pipes Laying** |  | 2026-09-24 | 2026-12-30 |  |  |  |
| SDR-ST-CON-P1-3610 |  | Install PW 315 mm HDPE Pipe | 10d | 2026-09-24 A | 2026-12-30 | SDR-ST-PRO-MS-1110, SDR-ST-CON-P1-3220 | 80% | -18d |
|  | 5 | **Testing** |  | 2026-12-31 | 2027-01-16 |  |  |  |
| SDR-ST-CON-P1-4090 |  | Testing of PW HDPE Pipe 315 mm. | 14d | 2026-12-31 | 2027-01-16 | SDR-ST-CON-P1-3610 |  | -18d |
|  | 9 | **Backfilling** |  | 2027-01-17 | 2027-02-08 |  |  |  |
| SDR-ST-CON-P1-4660 |  | Backfilling of PW HDPE Pipe 315 mm. | 20d | 2027-01-17 | 2027-02-08 | SDR-ST-PRO-MS-1050, SDR-ST-CON-P1-4090 |  | -18d |
|  | 3 | **Valve Chambers & Valves & Fire Hydrant** |  | 2026-11-22 | 2027-04-11 |  |  |  |
|  | 3 | **Excavation** |  | 2026-11-22 | 2027-01-06 |  |  |  |
| SDR-ST-CON-P1-2020 |  | Excavation for Valve Chambers Section 1 | 20d | 2026-11-22 | 2026-12-14 | SDR-ST-CON-P1-2010 SS |  | -58d |
| SDR-ST-CON-P1-2740 |  | Excavation for Valve Chambers Section 2 | 20d | 2026-12-15 | 2027-01-06 | SDR-ST-CON-P1-2020 |  | -58d |
|  | 1 | **bedding Works** |  | 2027-01-07 | 2027-01-30 |  |  |  |
| SDR-ST-CON-P1-3550 |  | Sand bedding for Valve Chambers | 20d | 2027-01-07 | 2027-01-30 | SDR-ST-CON-P1-2740 |  | -58d |
|  | 4 | **Install Chambers & Valves & Fire Hydrant** |  | 2027-02-01 | 2027-02-24 |  |  |  |
| SDR-ST-CON-P1-4460 |  | Install Chambers & Valves | 20d | 2027-02-01 | 2027-02-24 | SDR-ST-PRO-MS-1190, SDR-ST-CON-P1-3550 FS+1d |  | -58d |
|  | 2 | **Testing** |  | 2027-02-25 | 2027-03-17 |  |  |  |
| SDR-ST-CON-P1-5190 |  | Testing for Chambers & Valves | 14d | 2027-02-25 | 2027-03-17 | SDR-ST-CON-P1-4370, SDR-ST-CON-P1-4460 |  | -31d |
|  | 6 | **Backfilling** |  | 2027-03-18 | 2027-04-11 |  |  |  |
| SDR-ST-CON-P1-5750 |  | Backfilling for Chambers & Valves | 21d | 2027-03-18 | 2027-04-11 | SDR-ST-CON-P1-4610, SDR-ST-PRO-MS-1050, SDR-ST-CON-P1-5190 |  | -31d |
|  | 7 | **SEWARAGE NETWORK** |  | 2026-08-09 | 2027-04-25 |  |  |  |
|  | 6 | **ROAD - 01** |  | 2026-08-09 | 2027-04-25 |  |  |  |
|  | 2 | **ROAD-01 From 0 to 470 m (3) 110 mm HDPE** |  | 2026-08-09 | 2027-03-08 |  |  |  |
|  | 7 | **Pipes Work** |  | 2026-08-09 | 2027-01-07 |  |  |  |
|  | 1 | **Excavation** |  | 2026-08-09 | 2026-10-17 |  |  |  |
| SDR-ST-CON-P1-1540 |  | Excavation for GRP Pipe 200mm Diameter Section 1 | 20d | 2026-08-09 A | 2026-08-31 A | SDR-ST-CON-P1-1200 | 100% |  |
| SDR-ST-CON-P1-2380 |  | Excavation for GRP Pipe 200mm Diameter Section 2 | 20d | 2026-09-07 A | 2026-10-17 A | SDR-ST-CON-P1-1540 | 100% |  |
|  | 5 | **bedding Works** |  | 2026-09-22 | 2026-11-01 |  |  |  |
| SDR-ST-CON-P1-3050 |  | Sand bedding for GRP Pipe 200mm Diameter | 15d | 2026-09-22 A | 2026-11-01 A | SDR-ST-CON-P1-2380 | 100% |  |
|  | 2 | **Pipes Laying** |  | 2026-09-24 | 2026-11-08 |  |  |  |
| SDR-ST-CON-P1-3710 |  | 200 mm GRP Pipe Laying | 20d | 2026-09-24 A | 2026-11-08 A | SDR-ST-PRO-MS-1130, SDR-ST-CON-P1-3050 | 100% |  |
|  | 3 | **Testing** |  | 2026-11-22 | 2026-12-14 |  |  |  |
| SDR-ST-CON-P1-4590 |  | Testing of 200 mm GRP Pipe. | 20d | 2026-11-22 | 2026-12-14 | SDR-ST-CON-P1-3710 |  | 2d |
|  | 6 | **Backfilling** |  | 2026-12-15 | 2027-01-07 |  |  |  |
| SDR-ST-CON-P1-5570 |  | Backfilling of 200 mm GRP Pipe. | 21d | 2026-12-15 | 2027-01-07 | SDR-ST-PRO-MS-1050, SDR-ST-CON-P1-4590 |  | 2d |
|  | 4 | **Manholes** |  | 2026-08-27 | 2027-03-08 |  |  |  |
|  | 1 | **Excavation** |  | 2026-08-27 | 2026-10-03 |  |  |  |
| SDR-ST-CON-P1-1550 |  | Excavation for manhole. Section 1 | 21d | 2026-08-27 A | 2026-10-03 A | SDR-ST-CON-P1-1540 SS | 100% |  |
| SDR-ST-CON-P1-2210 |  | Excavation for manhole. Section 2 | 21d | 2026-10-01 A | 2026-10-03 A | SDR-ST-CON-P1-1550 | 100% |  |
|  | 2 | **bedding Works** |  | 2026-10-05 | 2026-10-07 |  |  |  |
| SDR-ST-CON-P1-2960 |  | Sand bedding for manhole. | 21d | 2026-10-05 A | 2026-10-07 A | SDR-ST-CON-P1-2210 | 100% |  |
|  | 3 | **Install Manholes** |  | 2026-10-08 | 2026-10-11 |  |  |  |
| SDR-ST-CON-P1-3840 |  | Manhole Installation | 21d | 2026-10-08 A | 2026-10-11 A | SDR-ST-PRO-MS-1140, SDR-ST-CON-P1-2210, SDR-ST-CON-P1-2960 | 100% |  |
|  | 4 | **Testing** |  | 2027-01-18 | 2027-02-10 |  |  |  |
| SDR-ST-CON-P1-4790 |  | Testing | 21d | 2027-01-18 | 2027-02-10 | SDR-ST-CON-P1-3840, SDR-ST-CON-P1-3840 FF |  | 6d |
|  | 5 | **Backfilling** |  | 2027-02-11 | 2027-03-08 |  |  |  |
| SDR-ST-CON-P1-5720 |  | Backfilling | 21d | 2027-02-11 | 2027-03-08 | SDR-ST-PRO-MS-1050, SDR-ST-CON-P1-4790 |  | 6d |
|  | 1 | **ROAD-01 From 470 to 1125 m (6) 110 mm HDPE** |  | 2026-08-13 | 2027-03-08 |  |  |  |
|  | 7 | **Pipes Work** |  | 2026-08-13 | 2027-01-07 |  |  |  |
|  | 1 | **Excavation** |  | 2026-08-13 | 2026-10-24 |  |  |  |
| SDR-ST-CON-P1-1430 |  | Excavation for GRP Pipe 200mm Diameter Section 1 | 17d | 2026-08-13 A | 2026-08-31 A | SDR-ST-CON-P1-1190 | 100% |  |
| SDR-ST-CON-P1-2110 |  | Excavation for GRP Pipe 200mm Diameter Section 2 | 17d | 2026-09-07 A | 2026-10-24 A | SDR-ST-CON-P1-1430 FS+3d | 100% |  |
|  | 5 | **bedding Works** |  | 2026-10-17 | 2026-11-03 |  |  |  |
| SDR-ST-CON-P1-2720 |  | Sand bedding for GRP Pipe 200mm Diameter | 15d | 2026-10-17 A | 2026-11-03 A | SDR-ST-CON-P1-2110 | 100% |  |
|  | 2 | **Pipes Laying** |  | 2026-10-17 | 2026-11-08 |  |  |  |
| SDR-ST-CON-P1-3300 |  | 200 mm GRP Pipe Laying | 18d | 2026-10-17 A | 2026-11-08 A | SDR-ST-PRO-MS-1130, SDR-ST-CON-P1-2110, SDR-ST-CON-P1-2720 | 100% |  |
|  | 3 | **Testing** |  | 2026-11-22 | 2026-12-14 |  |  |  |
| SDR-ST-CON-P1-4120 |  | Testing of 200 mm GRP Pipe. | 20d | 2026-11-22 | 2026-12-14 | SDR-ST-CON-P1-3300 |  | 8d |
|  | 6 | **Backfilling** |  | 2026-12-15 | 2027-01-07 |  |  |  |
| SDR-ST-CON-P1-4970 |  | Backfilling of 200 mm GRP Pipe. | 21d | 2026-12-15 | 2027-01-07 | SDR-ST-PRO-MS-1050, SDR-ST-CON-P1-4120 |  | 8d |
|  | 4 | **Manholes** |  | 2026-08-26 | 2027-03-08 |  |  |  |
|  | 1 | **Excavation** |  | 2026-08-26 | 2026-10-06 |  |  |  |
| SDR-ST-CON-P1-1440 |  | Excavation for manhole. Section 1 | 21d | 2026-08-26 A | 2026-10-06 A | SDR-ST-CON-P1-1430 SS | 100% |  |
| SDR-ST-CON-P1-2120 |  | Excavation for manhole. Section 2 | 21d | 2026-10-01 A | 2026-10-03 A | SDR-ST-CON-P1-1440 | 100% |  |
|  | 2 | **bedding Works** |  | 2026-10-07 | 2026-10-10 |  |  |  |
| SDR-ST-CON-P1-2870 |  | Sand bedding for manhole. | 21d | 2026-10-07 A | 2026-10-10 A | SDR-ST-CON-P1-2120 | 100% |  |
|  | 3 | **Install Manholes** |  | 2026-10-08 | 2026-10-13 |  |  |  |
| SDR-ST-CON-P1-3790 |  | Manhole Installation | 21d | 2026-10-08 A | 2026-10-13 A | SDR-ST-PRO-MS-1140, SDR-ST-CON-P1-2120, SDR-ST-CON-P1-2870 | 100% |  |
|  | 4 | **Testing** |  | 2027-01-18 | 2027-02-10 |  |  |  |

| ID | WBS | Task | Duration | Start | Finish | Predecessors | Complete | Total float |
| --- | --- | --- | --- | --- | --- | --- | --- | --- |
| SDR-ST-CON-P1-4710 |  | Testing | 21d | 2027-01-18 | 2027-02-10 | SDR-ST-CON-P1-3790, SDR-ST-CON-P1-3790 FF |  | -30d |
|  | 5 | **Backfilling** |  | 2027-02-11 | 2027-03-08 |  |  |  |
| SDR-ST-CON-P1-5700 |  | Backfilling | 21d | 2027-02-11 | 2027-03-08 | SDR-ST-CON-P1-4880, SDR-ST-PRO-MS-1050, SDR-ST-CON-P1-4710 |  | 5d |
|  | 3 | **ROAD-01 From 1125 to 1765 m (7) 110 mm HDPE** |  | 2026-08-13 | 2027-04-25 |  |  |  |
|  | 7 | **Pipes Work** |  | 2026-08-13 | 2027-02-04 |  |  |  |
|  | 1 | **Excavation** |  | 2026-08-13 | 2026-11-26 |  |  |  |
| SDR-ST-CON-P1-1650 |  | Excavation for GRP Pipe 200mm Diameter Section 1 | 17d | 2026-08-13 A | 2026-08-31 A | SDR-ST-CON-P1-1210 | 100% |  |
| SDR-ST-CON-P1-2240 |  | Excavation for GRP Pipe 200mm Diameter Section 2 | 17d | 2026-09-07 A | 2026-11-26 | SDR-ST-CON-P1-1650 FS+3d | 95% | -16d |
|  | 5 | **bedding Works** |  | 2026-10-24 | 2026-12-01 |  |  |  |
| SDR-ST-CON-P1-2830 |  | Sand bedding for GRP Pipe 200mm Diameter | 14d | 2026-10-24 A | 2026-12-01 | SDR-ST-CON-P1-2240 | 95% | -16d |
|  | 2 | **Pipes Laying** |  | 2026-10-24 | 2026-12-17 |  |  |  |
| SDR-ST-CON-P1-3420 |  | 200 mm GRP Pipe Laying | 18d | 2026-10-24 A | 2026-12-17 | SDR-ST-PRO-MS-1130, SDR-ST-CON-P1-2830 | 95% | -16d |
|  | 3 | **Testing** |  | 2026-12-19 | 2027-01-11 |  |  |  |
| SDR-ST-CON-P1-4180 |  | Testing of 200 mm GRP Pipe. | 21d | 2026-12-19 | 2027-01-11 | SDR-ST-CON-P1-3420 |  | -16d |
|  | 6 | **Backfilling** |  | 2027-01-12 | 2027-02-04 |  |  |  |
| SDR-ST-CON-P1-5020 |  | Backfilling of 200 mm GRP Pipe. | 21d | 2027-01-12 | 2027-02-04 | SDR-ST-PRO-MS-1050, SDR-ST-CON-P1-4180 |  | -16d |
|  | 4 | **Manholes** |  | 2026-11-22 | 2027-04-25 |  |  |  |
|  | 1 | **Excavation** |  | 2026-11-22 | 2027-01-09 |  |  |  |
| SDR-ST-CON-P1-1660 |  | Excavation for manhole. Section 1 | 21d | 2026-11-22 | 2026-12-15 | SDR-ST-CON-P1-1650 SS |  | -62d |
| SDR-ST-CON-P1-2310 |  | Excavation for manhole. Section 2 | 21d | 2026-12-16 | 2027-01-09 | SDR-ST-CON-P1-1660 |  | -62d |
|  | 2 | **bedding Works** |  | 2027-01-10 | 2027-02-02 |  |  |  |
| SDR-ST-CON-P1-3030 |  | Sand bedding for manhole. | 21d | 2027-01-10 | 2027-02-02 | SDR-ST-CON-P1-2310 |  | -62d |
|  | 3 | **Install Manholes** |  | 2027-02-03 | 2027-02-28 |  |  |  |
| SDR-ST-CON-P1-3910 |  | Manhole Installation | 21d | 2027-02-03 | 2027-02-28 | SDR-ST-PRO-MS-1140, SDR-ST-CON-P1-2310, SDR-ST-CON-P1-3030 |  | -62d |
|  | 4 | **Testing** |  | 2027-03-01 | 2027-03-29 |  |  |  |
| SDR-ST-CON-P1-4830 |  | Testing | 21d | 2027-03-01 | 2027-03-29 | SDR-ST-CON-P1-3910 |  | -62d |
|  | 5 | **Backfilling** |  | 2027-04-05 | 2027-04-25 |  |  |  |
| SDR-ST-CON-P1-5740 |  | Backfilling | 18d | 2027-04-05 | 2027-04-25 | SDR-ST-PRO-MS-1050, SDR-ST-CON-P1-4830 FS+5d |  | -62d |
|  | 1 | **ROAD - 02** |  | 2026-08-30 | 2027-04-08 |  |  |  |
|  | 1 | **ROAD-01 From 400 to 900 m (10) 110 mm HDPE** |  | 2026-08-30 | 2027-03-08 |  |  |  |
|  | 7 | **Pipes Work** |  | 2026-09-07 | 2027-02-08 |  |  |  |
|  | 1 | **Excavation** |  | 2026-09-07 | 2026-12-10 |  |  |  |
| SDR-ST-CON-P1-1810 |  | Excavation for GRP Pipe 200mm Diameter Section 1 | 17d | 2026-09-07 A | 2026-12-03 | SDR-ST-CON-P1-1250 | 98% | -6d |
| SDR-ST-CON-P1-2530 |  | Excavation for GRP Pipe 200mm Diameter Section 2 | 17d | 2026-10-24 A | 2026-12-10 | SDR-ST-CON-P1-1810 FS+3d | 98% | -6d |
|  | 5 | **bedding Works** |  | 2026-10-24 | 2026-12-15 |  |  |  |
| SDR-ST-CON-P1-3210 |  | Sand bedding for GRP Pipe 200mm Diameter | 14d | 2026-10-24 A | 2026-12-15 | SDR-ST-CON-P1-2530 | 95% | -6d |
|  | 2 | **Pipes Laying** |  | 2026-10-25 | 2026-12-21 |  |  |  |
| SDR-ST-CON-P1-3800 |  | 200 mm GRP Pipe Laying | 18d | 2026-10-25 A | 2026-12-21 | SDR-ST-PRO-MS-1130, SDR-ST-CON-P1-3210 | 99% | -6d |
|  | 3 | **Testing** |  | 2026-12-22 | 2027-01-14 |  |  |  |
| SDR-ST-CON-P1-4580 |  | Testing of 200 mm GRP Pipe. | 21d | 2026-12-22 | 2027-01-14 | SDR-ST-CON-P1-3800 |  | -6d |
|  | 6 | **Backfilling** |  | 2027-01-16 | 2027-02-08 |  |  |  |
| SDR-ST-CON-P1-5500 |  | Backfilling of 200 mm GRP Pipe. | 21d | 2027-01-16 | 2027-02-08 | SDR-ST-PRO-MS-1050, SDR-ST-CON-P1-4580 |  | -6d |
|  | 4 | **Manholes** |  | 2026-08-30 | 2027-03-08 |  |  |  |
|  | 1 | **Excavation** |  | 2026-08-30 | 2026-10-03 |  |  |  |
| SDR-ST-CON-P1-1820 |  | Excavation for manhole. Section 1 | 21d | 2026-08-30 A | 2026-10-03 A | SDR-ST-CON-P1-1810 SS | 100% |  |
| SDR-ST-CON-P1-2580 |  | Excavation for manhole. Section 2 | 21d | 2026-10-01 A | 2026-10-03 A | SDR-ST-CON-P1-1820 | 100% |  |
|  | 2 | **bedding Works** |  | 2026-10-04 | 2026-10-05 |  |  |  |
| SDR-ST-CON-P1-3410 |  | Sand bedding for manhole. | 21d | 2026-10-04 A | 2026-10-05 A | SDR-ST-CON-P1-2580 | 100% |  |
|  | 3 | **Install Manholes** |  | 2026-10-10 | 2026-10-13 |  |  |  |
| SDR-ST-CON-P1-4390 |  | Manhole Installation | 21d | 2026-10-10 A | 2026-10-13 A | SDR-ST-PRO-MS-1140, SDR-ST-CON-P1-2580, SDR-ST-CON-P1-3410 | 100% |  |
|  | 4 | **Testing** |  | 2027-01-18 | 2027-02-10 |  |  |  |
| SDR-ST-CON-P1-5120 |  | Testing | 21d | 2027-01-18 | 2027-02-10 | SDR-ST-CON-P1-4390, SDR-ST-CON-P1-4390 FF |  | -29d |
|  | 5 | **Backfilling** |  | 2027-02-11 | 2027-03-08 |  |  |  |
| SDR-ST-CON-P1-5770 |  | Backfilling | 21d | 2027-02-11 | 2027-03-08 | SDR-ST-CON-P1-5140, SDR-ST-PRO-MS-1050, SDR-ST-CON-P1-5120 |  | 5d |
|  | 3 | **ROAD-01 From 900 to 1239 m (11) 110 mm HDPE** |  | 2026-09-07 | 2027-04-08 |  |  |  |
|  | 7 | **Pipes Work** |  | 2026-09-07 | 2027-03-31 |  |  |  |
|  | 1 | **Excavation** |  | 2026-09-07 | 2026-12-26 |  |  |  |
| SDR-ST-CON-P1-2030 |  | Excavation for GRP Pipe 200mm Diameter Section 1 | 16d | 2026-09-07 A | 2026-12-03 | SDR-ST-CON-P1-1350 | 85% | -45d |
| SDR-ST-CON-P1-2700 |  | Excavation for GRP Pipe 200mm Diameter Section 2 | 16d | 2026-12-08 | 2026-12-26 | SDR-ST-CON-P1-2030 FS+3d |  | -45d |
|  | 5 | **bedding Works** |  | 2026-12-27 | 2027-01-06 |  |  |  |
| SDR-ST-CON-P1-3330 |  | Sand bedding for GRP Pipe 200mm Diameter | 10d | 2026-12-27 | 2027-01-06 | SDR-ST-CON-P1-2700 |  | -45d |
|  | 2 | **Pipes Laying** |  | 2027-01-07 | 2027-01-31 |  |  |  |
| SDR-ST-CON-P1-3750 |  | 200 mm GRP Pipe Laying | 21d | 2027-01-07 | 2027-01-31 | SDR-ST-PRO-MS-1130, SDR-ST-CON-P1-2700, SDR-ST-CON-P1-3330 |  | -45d |
|  | 3 | **Testing** |  | 2027-02-01 | 2027-02-25 |  |  |  |
| SDR-ST-CON-P1-4670 |  | Testing of 200 mm GRP Pipe. | 21d | 2027-02-01 | 2027-02-25 | SDR-ST-CON-P1-3750 |  | -45d |
|  | 6 | **Backfilling** |  | 2027-03-03 | 2027-03-31 |  |  |  |
| SDR-ST-CON-P1-5670 |  | Backfilling of 200 mm GRP Pipe. | 21d | 2027-03-03 | 2027-03-31 | SDR-ST-PRO-MS-1050, SDR-ST-CON-P1-4670 FS+4d |  | -45d |
|  | 4 | **Manholes** |  | 2026-09-09 | 2027-04-08 |  |  |  |
|  | 1 | **Excavation** |  | 2026-09-09 | 2026-11-26 |  |  |  |
| SDR-ST-CON-P1-2040 |  | Excavation for manhole. Section 1 | 21d | 2026-09-09 A | 2026-10-24 A | SDR-ST-CON-P1-2030 SS | 100% |  |

| ID | WBS | Task | Duration | Start | Finish | Predecessors | Complete | Total float |
| --- | --- | --- | --- | --- | --- | --- | --- | --- |
| SDR-ST-CON-P1-2760 |  | Excavation for manhole. Section 2 | 21d | 2026-10-25 A | 2026-11-26 | SDR-ST-CON-P1-2040 | 85% | -13d |
|  | 2 | **bedding Works** |  | 2026-11-28 | 2026-12-21 |  |  |  |
| SDR-ST-CON-P1-3620 |  | Sand bedding for manhole. | 21d | 2026-11-28 | 2026-12-21 | SDR-ST-CON-P1-2760 |  | -13d |
|  | 3 | **Install Manholes** |  | 2027-01-18 | 2027-02-10 |  |  |  |
| SDR-ST-CON-P1-4560 |  | Manhole Installation | 21d | 2027-01-18 | 2027-02-10 | SDR-ST-PRO-MS-1140, SDR-ST-CON-P1-2760, SDR-ST-CON-P1-3620 |  | -29d |
|  | 4 | **Testing** |  | 2027-02-11 | 2027-03-08 |  |  |  |
| SDR-ST-CON-P1-5440 |  | Testing | 21d | 2027-02-11 | 2027-03-08 | SDR-ST-CON-P1-5120, SDR-ST-CON-P1-4560, SDR-ST-CON-P1-4560 FF |  | -29d |
|  | 5 | **Backfilling** |  | 2027-03-16 | 2027-04-08 |  |  |  |
| SDR-ST-CON-P1-5800 |  | Backfilling | 21d | 2027-03-16 | 2027-04-08 | SDR-ST-CON-P1-4240, SDR-ST-PRO-MS-1050, SDR-ST-CON-P1-5440 FS+2d |  | -29d |
|  | 11 | **STORM WATER** |  | 2026-08-09 | 2027-05-27 |  |  |  |
|  | 2 | **ROAD N...** |  | 2026-08-09 | 2027-05-27 |  |  |  |
|  | 8 | **Pipes Works** |  | 2026-08-09 | 2027-05-27 |  |  |  |
|  | 1 | **Excavation** |  | 2026-08-09 | 2026-08-31 |  |  |  |
| SDR-ST-CON-P1-1460 |  | Excavation for GRP Pipes Section 1 | 18d | 2026-08-09 A | 2026-08-31 A | SDR-ST-CON-P1-1200 | 100% |  |
|  | 7 | **bedding Works** |  | 2026-09-22 | 2026-10-17 |  |  |  |
| SDR-ST-CON-P1-2170 |  | Sand bedding for GRP Pipes | 21d | 2026-09-22 A | 2026-10-17 A | SDR-ST-CON-P1-1460 FS+4d | 100% |  |
|  | 2 | **Pipes Laying** |  | 2026-09-15 | 2026-10-17 |  |  |  |
| SDR-ST-CON-P1-2910 |  | Install ST GRP Pipes | 21d | 2026-09-15 A | 2026-10-17 A | SDR-ST-PRO-MS-1010, SDR-ST-CON-P1-2170 | 100% |  |
|  | 6 | **Testing** |  | 2026-10-25 | 2026-12-27 |  |  |  |
| SDR-ST-CON-P1-3830 |  | Testing ST GRP Pipes | 21d | 2026-10-25 A | 2026-12-27 | SDR-ST-CON-P1-2910 FS+4d | 95% | -8d |
|  | 3 | **Backfilling** |  | 2026-10-26 | 2027-05-27 |  |  |  |
| SDR-ST-CON-P1-4760 |  | Backfilling ST GRP Pipes | 20d | 2026-10-26 A | 2027-05-27 | SDR-ST-PRO-MS-1050, SDR-ST-CON-P1-3830, SDR-ST-CON-P3-1170 | 95% | -78d |
|  | 3 | **Package-3** |  | 2026-11-22 | 2027-12-05 |  |  |  |
|  | 1 | **Site Works** |  | 2026-11-22 | 2026-12-31 |  |  |  |
|  | 1 | **Earthworks** |  | 2026-11-22 | 2026-12-31 |  |  |  |
|  | 2 | **Excavation** |  | 2026-11-22 | 2026-12-14 |  |  |  |
| SDR-ST-CON-P3-1000 |  | Excavation in all types of soil to the required depth includes removal of waste material | 20d | 2026-11-22 | 2026-12-14 | SDR-ST-MILS-1000, SDR-ST-CON-P1-6060 |  | -113d |
|  | 1 | **Fill** |  | 2026-12-15 | 2026-12-31 |  |  |  |
| SDR-ST-CON-P3-1010 |  | Backfilling with improved and select fill material from the site or imported | 15d | 2026-12-15 | 2026-12-31 | SDR-ST-CON-P3-1000, SDR-ST-MILS-1000 |  | -113d |
|  | 2 | **Platform Works** |  | 2027-01-02 | 2027-11-18 |  |  |  |
|  | 1 | **Platform** |  | 2027-01-02 | 2027-07-04 |  |  |  |
|  | 1 | **Earthworks** |  | 2027-01-02 | 2027-02-09 |  |  |  |
|  | 1 | **Excavation** |  | 2027-01-02 | 2027-01-19 |  |  |  |
| SDR-ST-CON-P3-1020 |  | Excavation in all types of soil to the required depth includes removal of waste material | 16d | 2027-01-02 | 2027-01-19 | SDR-ST-CON-P3-1010, SDR-ST-MILS-1000 |  | -113d |
|  | 2 | **Fill** |  | 2027-01-20 | 2027-02-09 |  |  |  |
| SDR-ST-CON-P3-1030 |  | Backfilling with improved and select fill material from the site or imported Part 1 | 18d | 2027-01-20 | 2027-02-09 | SDR-ST-CON-P3-1020, SDR-ST-MILS-1000 |  | -113d |
| SDR-ST-CON-P3-1040 |  | Backfilling with improved and select fill material from the site or imported Part 2 | 16d | 2027-01-20 | 2027-02-07 | SDR-ST-CON-P3-1020, SDR-ST-MILS-1000 |  | -113d |
|  | 3 | **Concrete Works** |  | 2027-02-10 | 2027-07-04 |  |  |  |
|  | 1 | **Foundations** |  | 2027-02-10 | 2027-04-20 |  |  |  |
| SDR-ST-CON-P3-1060 |  | Pouring Concrete under Foundation 100 mm thickness lean | 10d | 2027-02-10 | 2027-02-21 | SDR-ST-CON-P3-1030 FF, SDR-ST-CON-P3-1040 FS+2d, SDR-ST-CON-P3-1030, SDR-ST-MILS-1000 |  | -113d |
| SDR-ST-CON-P3-1080 |  | Provide and lay 2 layers of waterproofing bitumenous membrane 4mm below footings | 8d | 2027-02-23 | 2027-03-03 | SDR-ST-CON-P1-1860, SDR-ST-CON-P1-1800, SDR-ST-CON-P3-1060, SDR-ST-MILS-1000 |  | -113d |
| SDR-ST-CON-P3-1100 |  | Pouring Concrete for protecting waterproofing under the foundation 50 mm thickness | 10d | 2027-03-06 | 2027-03-21 | SDR-ST-PRO-MS-1010, SDR-ST-PRO-MS-1010 FF, SDR-ST-CON-P3-1080 FS+1d, SDR-ST-MILS-1000, SDR-ST-PRO-MS-1260 |  | -113d |
|  | 1 | **Footings** |  | 2027-03-22 | 2027-04-20 |  |  |  |
| SDR-ST-CON-P3-1130 |  | Pouring concrete for footings Part 1 | 10d | 2027-03-22 | 2027-04-01 | SDR-ST-CON-P3-1070, SDR-ST-CON-P3-1100, SDR-ST-MILS-1000 |  | -113d |
| SDR-ST-CON-P3-1150 |  | Pouring concrete for footings Part 2 | 10d | 2027-04-03 | 2027-04-13 | SDR-ST-CON-P3-1130, SDR-ST-MILS-1000 |  | -113d |
| SDR-ST-CON-P3-1180 |  | Pouring concrete for footings Part 3 | 16d | 2027-04-03 | 2027-04-20 | SDR-ST-CON-P3-1150 SS, SDR-ST-MILS-1000 |  | -113d |
|  | 2 | **Substructure** |  | 2027-04-21 | 2027-05-25 |  |  |  |
|  | 1 | **Basement** |  | 2027-04-24 | 2027-05-08 |  |  |  |
| SDR-ST-CON-P3-1200 |  | Pouring concrete for Basement Part 1 | 10d | 2027-04-24 | 2027-05-04 | SDR-ST-CON-P1-3620, SDR-ST-CON-P3-1150, SDR-ST-CON-P3-1180 FS+2d, SDR-ST-MILS-1000 |  | -113d |
| SDR-ST-CON-P3-1220 |  | Pouring concrete for Basement Part 2 | 8d | 2027-04-29 | 2027-05-08 | SDR-ST-CON-P3-1200 SS+5d, SDR-ST-MILS-1000 |  | -92d |
|  | 2 | **Tank** |  | 2027-04-21 | 2027-05-04 |  |  |  |
| SDR-ST-CON-P3-1210 |  | Pouring concrete for Tank Part 1 | 6d | 2027-04-21 | 2027-04-27 | SDR-ST-CON-P3-1180, SDR-ST-MILS-1000 |  | -89d |
| SDR-ST-CON-P3-1230 |  | Pouring concrete for Tank Part 2 | 6d | 2027-04-28 | 2027-05-04 | SDR-ST-CON-P1-3830, SDR-ST-CON-P3-1210, SDR-ST-MILS-1000 |  | -89d |
|  | 3 | **Retaining Walls** |  | 2027-05-05 | 2027-05-25 |  |  |  |
| SDR-ST-CON-P3-1190 |  | Pouring concrete for Retaining Walls Part 1 | 7d | 2027-05-05 | 2027-05-12 | SDR-ST-CON-P3-1200, SDR-ST-CON-P1-3830, SDR-ST-CON-P1-4460, SDR-ST-CON-P3-1180, SDR-ST-MILS-1000 |  | -113d |
| SDR-ST-CON-P3-1250 |  | Pouring concrete for Retaining Walls Part 2 | 6d | 2027-05-13 | 2027-05-25 | SDR-ST-CON-P1-4330, SDR-ST-CON-P1-4020, SDR-ST-CON-P1-4270, SDR-ST-CON-P3-1190, SDR-ST-MILS-1000 |  | -113d |
|  | 3 | **Waterproofing Vertical** |  | 2027-05-26 | 2027-06-08 |  |  |  |
| SDR-ST-CON-P3-1300 |  | lay 2 layers of waterproofing bitumenous membrane 4mm including protection board for substructure vertical Part 1 | 4d | 2027-05-26 | 2027-05-30 | SDR-ST-CON-P1-3640, SDR-ST-CON-P1-4210, SDR-ST-CON-P1-4160, SDR-ST-CON-P3-1250, SDR-ST-MILS-1000 |  | -113d |
| SDR-ST-CON-P3-1370 |  | lay 2 layers of waterproofing bitumenous membrane 4mm including protection board for substructure vertical Part 2 | 4d | 2027-05-31 | 2027-06-03 | SDR-ST-CON-P1-4310, SDR-ST-CON-P1-4710, SDR-ST-CON-P1-4640, SDR-ST-CON-P3-1300, SDR-ST-MILS-1000 |  | -113d |
| SDR-ST-CON-P3-1430 |  | lay 2 layers of waterproofing bitumenous membrane 4mm including protection board for substructure vertical Part 3 | 4d | 2027-06-05 | 2027-06-08 | SDR-ST-CON-P3-1370, SDR-ST-MILS-1000 |  | -113d |
|  | 4 | **Neck Walls** |  | 2027-06-10 | 2027-06-16 |  |  |  |
| SDR-ST-CON-P3-1270 |  | Pouring concrete for Neck Walls Part 1 | 5d | 2027-06-10 | 2027-06-15 | SDR-ST-CON-P1-4270, SDR-ST-CON-P1-5020, SDR-ST-CON-P1-4970, SDR-ST-CON-P3-1230, SDR-ST-CON-P3-1220, SDR-ST-CON-P1-4950, SDR-ST-MILS-1000, SDR-ST-CON-P3-1430 FS+1d |  | -113d |
| SDR-ST-CON-P3-1290 |  | Pouring concrete for Neck Walls Part 2 | 5d | 2027-06-12 | 2027-06-16 | SDR-ST-CON-P3-1270 SS+1d, SDR-ST-CON-P1-4660, SDR-ST-MILS-1000 SS |  | -113d |
|  | 5 | **Preparation for Slab** |  | 2027-06-17 | 2027-06-21 |  |  |  |
| SDR-ST-CON-P3-1320 |  | Pouring Concrete under slab on grade and gound beams 50 mm thickness lean | 2d | 2027-06-17 | 2027-06-19 | SDR-ST-CON-P1-4610, SDR-ST-CON-P1-5670, SDR-ST-CON-P1-5500, SDR-ST-CON-P1-4340, SDR-ST-CON-P3-1270, SDR-ST-CON-P3-1290, SDR-ST-MILS-1000 |  | -106d |
| SDR-ST-CON-P3-1360 |  | Supply and lay 250 micron thk polyethylene sheet below slab on grade and ground beams | 2d | 2027-06-20 | 2027-06-21 | SDR-ST-CON-P1-6200, SDR-ST-CON-P3-1320, SDR-ST-MILS-1000 |  | -106d |
|  | 6 | **Slab on Grade** |  | 2027-06-22 | 2027-06-23 |  |  |  |
| SDR-ST-CON-P3-1380 |  | Pouring Concrete for Slab on grade | 2d | 2027-06-22 | 2027-06-23 | SDR-ST-CON-P1-4240, SDR-ST-CON-P1-5740, SDR-ST-CON-P3-1360, SDR-ST-MILS-1000 |  | -106d |
|  | 7 | **Finishes** |  | 2027-06-28 | 2027-07-04 |  |  |  |
|  | 9 | **Troweled Finish** |  | 2027-06-28 | 2027-06-29 |  |  |  |

| ID | WBS | Task | Duration | Start | Finish | Predecessors | Total float |
| --- | --- | --- | --- | --- | --- | --- | --- |
| SDR-ST-CON-P3-1400 |  | Pouring Concrete for Slab on grade with troweled finish Part 1 | 2d | 2027-06-28 | 2027-06-29 | SDR-ST-CON-P1-4700, SDR-ST-CON-P3-1380 FS+3d, SDR-ST-MILS-1000 | -106d |
| SDR-ST-CON-P3-1500 |  | Pouring Concrete for Slab on grade with troweled finish Part 2 | 2d | 2027-06-28 | 2027-06-29 | SDR-ST-CON-P1-4820, SDR-ST-CON-P3-1400 SS, SDR-ST-MILS-1000 | -106d |
|  | 8 | **Exposed Aggregate Finish** |  | 2027-06-30 | 2027-07-04 |  |  |
| SDR-ST-CON-P3-1420 |  | Pouring Concrete for Slab on grade with exposed aggregate finish Part 1 | 2d | 2027-06-30 | 2027-07-01 | SDR-ST-CON-P3-1500, SDR-ST-CON-P1-5020, SDR-ST-CON-P3-1380, SDR-ST-CON-P1-5500, SDR-ST-MILS-1000 | -106d |
| SDR-ST-CON-P3-1480 |  | Pouring Concrete for Slab on grade with exposed aggregate finish Part 2 | 2d | 2027-06-30 | 2027-07-01 | SDR-ST-CON-P3-1420 SS, SDR-ST-MILS-1000 | -106d |
| SDR-ST-CON-P3-1490 |  | Pouring Concrete for Slab on grade with exposed aggregate finish Part 3 | 2d | 2027-07-03 | 2027-07-04 | SDR-ST-CON-P3-1480 SS+2d, SDR-ST-MILS-1000 | -106d |
|  | 3 | **Finishes & Architectural Works** |  | 2027-09-25 | 2027-11-18 |  |  |
| SDR-ST-CON-P3-1540 |  | Installation of metal steel 1200mm railing including all accessories Part 1 | 15d | 2027-09-25 | 2027-10-11 | SDR-ST-CON-P1-4070, SDR-ST-CON-P1-4320, SDR-ST-CON-P1-5460, SDR-ST-PRO-MS-1200, SDR-ST-CON-P3-1420, SDR-ST-CON-P3-1480, SDR-ST-CON-P3-1400, SDR-ST-CON-P3-1490, SDR-ST-MILS-1000, SDR-ST-CON-P1-5430 | -107d |
| SDR-ST-CON-P3-1590 |  | Installation of metal steel 1200mm railing including all accessories Part 2 | 15d | 2027-10-12 | 2027-10-28 | SDR-ST-CON-P1-5460, SDR-ST-CON-P1-3980, SDR-ST-PRO-MS-1200, SDR-ST-CON-P3-1540, SDR-ST-MILS-1000 | -107d |
| SDR-ST-CON-P3-1640 |  | Installation of metal steel 1200mm railing including all accessories Part3 | 8d | 2027-10-30 | 2027-11-07 | SDR-ST-PRO-MS-1200, SDR-ST-CON-P3-1590, SDR-ST-MILS-1000 | -107d |
| SDR-ST-CON-P3-1710 |  | Platform Paving & warning tiles | 4d | 2027-11-08 | 2027-11-11 | SDR-ST-CON-P1-5920, SDR-ST-CON-P3-1590, SDR-ST-CON-P3-1640, SDR-ST-MILS-1000 | -107d |
| SDR-ST-CON-P3-1760 |  | Painting Part 1 | 6d | 2027-11-13 | 2027-11-18 | SDR-ST-CON-P3-1710, SDR-ST-MILS-1000 | -107d |
| SDR-ST-CON-P3-1840 |  | Painting Part 2 | 6d | 2027-11-13 | 2027-11-18 | SDR-ST-CON-P3-1760 SS, SDR-ST-MILS-1000 | -102d |
|  | 5 | **Platform Electrical Works** |  | 2027-06-17 | 2027-07-12 |  |  |
| SDR-ST-CON-P3-1310 |  | cable conduits | 22d | 2027-06-17 | 2027-07-12 | SDR-ST-PRO-MS-1030, SDR-ST-CON-P3-1290, SDR-ST-MILS-1000 | -113d |
|  | 3 | **Canopy works** |  | 2027-02-14 | 2027-11-24 |  |  |
|  | 1 | **Civil and Architectural Works** |  | 2027-02-14 | 2027-04-18 |  |  |
|  | 1 | **Concrete** |  | 2027-02-14 | 2027-04-18 |  |  |
| SDR-ST-CON-P3-1050 |  | Pouring Concrete under the foundation 100 mm thickness lean | 13d | 2027-02-14 | 2027-03-01 | SDR-ST-CON-P3-1060 SS+3d, SDR-ST-MILS-1000 | -105d |
| SDR-ST-CON-P3-1090 |  | Pouring Concrete for protecting waterproofing under the foundation 50 mm thickness | 12d | 2027-03-08 | 2027-03-25 | SDR-ST-CON-P3-1050, SDR-ST-CON-P3-1070, SDR-ST-MILS-1000 | -81d |
| SDR-ST-CON-P3-1110 |  | Pouring Concrete for Footings | 12d | 2027-03-27 | 2027-04-08 | SDR-ST-CON-P3-1090, SDR-ST-MILS-1000 | -81d |
| SDR-ST-CON-P3-1140 |  | Pouring Concrete for Coulumns necks | 8d | 2027-04-10 | 2027-04-18 | SDR-ST-CON-P1-3670, SDR-ST-CON-P3-1110, SDR-ST-MILS-1000 | -57d |
|  | 4 | **Metals** |  | 2027-03-02 | 2027-11-24 |  |  |
|  | 2 | **Structural Steel Framing** |  | 2027-03-27 | 2027-07-31 |  |  |
| SDR-ST-CON-P3-1120 |  | Anchor Bolt Verification | 16d | 2027-03-27 | 2027-04-13 | SDR-ST-CON-P1-3480, SDR-ST-CON-P1-3360, SDR-ST-CON-P1-3700, SDR-ST-CON-P1-3940, SDR-ST-CON-P1-3670, SDR-ST-CON-P1-3810, SDR-ST-CON-P3-1110 SS, SDR-ST-MILS-1000 | -81d |
| SDR-ST-CON-P3-1160 |  | Erection of Columns Part 1 | 20d | 2027-04-14 | 2027-05-06 | SDR-ST-CON-P1-3670, SDR-ST-CON-P1-4570, SDR-ST-CON-P3-1120, SDR-ST-MILS-1000 | -81d |
| SDR-ST-CON-P3-1240 |  | Erection of Columns Part 2 | 11d | 2027-05-08 | 2027-05-25 | SDR-ST-CON-P1-5200 FS+1d, SDR-ST-CON-P1-5040 FS+1d, SDR-ST-CON-P1-4170, SDR-ST-CON-P1-4160, SDR-ST-CON-P1-4270, SDR-ST-CON-P1-4240, SDR-ST-CON-P1-4020, SDR-ST-CON-P1-4610, SDR-ST-CON-P1-5130, SDR-ST-CON-P1-3490, SDR-ST-CON-P1-2330, SDR-ST-CON-P1-4160 FF, SDR-ST-CON-P3-1160, SDR-ST-MILS-1000 | -81d |
| SDR-ST-CON-P3-1260 |  | Erection of Rafters Part 1 | 16d | 2027-05-26 | 2027-06-13 | SDR-ST-CON-P1-2330, SDR-ST-CON-P1-5000, SDR-ST-CON-P1-4820, SDR-ST-CON-P1-4900, SDR-ST-CON-P1-5170, SDR-ST-CON-P1-5230, SDR-ST-CON-P3-1240, SDR-ST-MILS-1000 | -81d |
| SDR-ST-CON-P3-1280 |  | Erection of Rafters Part 2 | 16d | 2027-05-29 | 2027-06-15 | SDR-ST-CON-P1-5240, SDR-ST-CON-P1-2500, SDR-ST-PRO-MS-1240, SDR-ST-CON-P3-1260 SS+2d, SDR-ST-MILS-1000 | -81d |
| SDR-ST-CON-P3-1330 |  | Installation of Bracing System Part 1 | 15d | 2027-06-16 | 2027-07-03 | SDR-ST-CON-P1-5670, SDR-ST-CON-P1-5500, SDR-ST-CON-P1-5020, SDR-ST-CON-P1-4240, SDR-ST-CON-P1-4700, SDR-ST-CON-P1-4840, SDR-ST-CON-P1-6200, SDR-ST-PRO-MS-1240, SDR-ST-CON-P3-1260, SDR-ST-CON-P3-1280, SDR-ST-MILS-1000 | -78d |
| SDR-ST-CON-P3-1340 |  | Installation of Beams Part 1 | 10d | 2027-06-16 | 2027-06-27 | SDR-ST-CON-P1-4840, SDR-ST-CON-P1-6200, SDR-ST-PRO-MS-1240, SDR-ST-CON-P3-1280, SDR-ST-MILS-1000 | -81d |
| SDR-ST-CON-P3-1350 |  | Installation of Girders Part 1 | 20d | 2027-06-17 | 2027-07-10 | SDR-ST-CON-P1-3170, SDR-ST-PRO-MS-1240, SDR-ST-CON-P3-1280, SDR-ST-MILS-1000, SDR-ST-TC-1010 | -78d |
| SDR-ST-CON-P3-1390 |  | Installation of Beams Part 2 | 12d | 2027-06-28 | 2027-07-11 | SDR-ST-CON-P1-5770, SDR-ST-CON-P1-5740, SDR-ST-CON-P1-5700, SDR-ST-CON-P1-5100, SDR-ST-CON-P1-3180, SDR-ST-CON-P1-3170, SDR-ST-CON-P1-4780, SDR-ST-CON-P1-4870, SDR-ST-CON-P1-5730, SDR-ST-CON-P1-4910, SDR-ST-CON-P1-2430, SDR-ST-PRO-MS-1240, SDR-ST-CON-P3-1340, SDR-ST-MILS-1000 | -81d |
| SDR-ST-CON-P3-1410 |  | Installation of Bracing System Part 2 | 16d | 2027-07-04 | 2027-07-21 | SDR-ST-CON-P1-4520, SDR-ST-PRO-MS-1240, SDR-ST-CON-P3-1330, SDR-ST-MILS-1000 | -78d |
| SDR-ST-CON-P3-1440 |  | Installation of Girders Part 2 | 6d | 2027-07-11 | 2027-07-17 | SDR-ST-CON-P1-5800, SDR-ST-CON-P1-3900, SDR-ST-PRO-MS-1240, SDR-ST-CON-P3-1350, SDR-ST-MILS-1000 | -78d |
| SDR-ST-CON-P3-1460 |  | Installation of Connections (Bolting) | 12d | 2027-07-12 | 2027-07-25 | SDR-ST-PRO-MS-1240, SDR-ST-CON-P3-1390, SDR-ST-MILS-1000 | -81d |
| SDR-ST-CON-P3-1450 |  | Installation of Joists Part 1 | 12d | 2027-07-18 | 2027-07-31 | SDR-ST-CON-P1-5070, SDR-ST-CON-P1-3880, SDR-ST-PRO-MS-1240, SDR-ST-CON-P3-1390, SDR-ST-MILS-1000, SDR-ST-CON-P3-1440 | -74d |
| SDR-ST-CON-P3-1470 |  | Installation of Joists Part 2 | 8d | 2027-07-22 | 2027-07-31 | SDR-ST-CON-P3-1410, SDR-ST-CON-P1-4040, SDR-ST-PRO-MS-1240, SDR-ST-CON-P3-1450 SS, SDR-ST-MILS-1000 | -78d |
|  | 3 | **Aluminum Cladding Panels** |  | 2027-08-19 | 2027-11-24 |  |  |
|  | 1 | **Steel Subframe Installation** |  | 2027-08-19 | 2027-11-24 |  |  |
| SDR-ST-CON-P3-1530 |  | Survey & Setting Out for Cladding | 8d | 2027-08-19 | 2027-08-28 | SDR-ST-TC-1020, SDR-ST-CON-P1-4040, SDR-ST-CON-P1-3880, SDR-ST-CON-P1-4250, SDR-ST-CON-P1-4070, SDR-ST-CON-P1-4040 FF, SDR-ST-MILS-1090, SDR-ST-CON-P3-1470, SDR-ST-CON-P3-1410, SDR-ST-CON-P3-1430, SDR-ST-MILS-1000 | -95d |
| SDR-ST-CON-P3-1560 |  | Install Steel Subframe Supports Part 1 | 14d | 2027-09-02 | 2027-09-18 | SDR-ST-CON-P1-4070, SDR-ST-CON-P1-5280, SDR-ST-CON-P1-5490, SDR-ST-CON-P1-3980, SDR-ST-CON-P3-1530, SDR-ST-MILS-1090, SDR-ST-MILS-1000 | -99d |
| SDR-ST-CON-P3-1620 |  | Install Steel Subframe Supports Part 2 | 18d | 2027-09-19 | 2027-10-09 | SDR-ST-CON-P1-5460, SDR-ST-CON-P1-3980, SDR-ST-CON-P1-4050, SDR-ST-CON-P1-5900, SDR-ST-CON-P3-1560, SDR-ST-MILS-1000 | -99d |
| SDR-ST-CON-P3-1690 |  | Install Steel Subframe Supports Part 3 | 13d | 2027-10-10 | 2027-10-24 | SDR-ST-CON-P3-1620, SDR-ST-MILS-1000 | -94d |
| SDR-ST-CON-P3-1720 |  | Alignment & Leveling of Subframe Part 1 | 11d | 2027-10-10 | 2027-10-21 | SDR-ST-CON-P3-1690 SS, SDR-ST-MILS-1000 | -92d |
| SDR-ST-CON-P3-1770 |  | Alignment & Leveling of Subframe Part 2 | 4d | 2027-10-25 | 2027-10-28 | SDR-ST-CON-P1-5980, SDR-ST-CON-P3-1690, SDR-ST-CON-P3-1720, SDR-ST-MILS-1000 | -94d |
| SDR-ST-CON-P3-1830 |  | Fixing & Tightening of Subframe Connections Part 1 | 5d | 2027-10-30 | 2027-11-03 | SDR-ST-CON-P3-1770, SDR-ST-MILS-1000 | -94d |
| SDR-ST-CON-P3-1880 |  | Fixing & Tightening of Subframe Connections Part 2 | 5d | 2027-11-20 | 2027-11-24 | SDR-ST-CON-P3-1760, SDR-ST-CON-P3-1830, SDR-ST-MILS-1000 | -107d |
|  | 2 | **Aluminum Cladding Installation** |  | 2027-09-19 | 2027-11-11 |  |  |
| SDR-ST-CON-P3-1610 |  | Install Aluminum Panels (4mm Thick Part 1 | 13d | 2027-09-19 | 2027-10-03 | SDR-ST-CON-P3-1620 SS, SDR-ST-MILS-1000, SDR-ST-CON-P1-4320, SDR-ST-CON-P1-4010 | -99d |
| SDR-ST-CON-P3-1660 |  | Install Aluminum Panels (4mm Thick Part 2 | 12d | 2027-10-04 | 2027-10-17 | SDR-ST-CON-P3-1610, SDR-ST-MILS-1000 | -99d |
| SDR-ST-CON-P3-1700 |  | Install Aluminum Panels (4mm Thick Part 3 | 7d | 2027-10-18 | 2027-10-25 | SDR-ST-CON-P3-1660, SDR-ST-MILS-1000 | -99d |
| SDR-ST-CON-P3-1730 |  | Fix Panels with Snap Hooks & Fasteners Part 1 | 6d | 2027-10-26 | 2027-11-01 | SDR-ST-CON-P3-1700, SDR-ST-MILS-1000 | -99d |
| SDR-ST-CON-P3-1750 |  | Fix Panels with Snap Hooks & Fasteners Part 2 | 5d | 2027-10-26 | 2027-10-31 | SDR-ST-CON-P3-1730 SS, SDR-ST-CON-P1-5920, SDR-ST-MILS-1000 | -99d |
| SDR-ST-CON-P3-1810 |  | Install Drainage System Part 1 | 4d | 2027-11-01 | 2027-11-04 | SDR-ST-CON-P3-1750, SDR-ST-MILS-1000 | -99d |
| SDR-ST-CON-P3-1820 |  | Install Drainage System Part 2 | 2d | 2027-11-01 | 2027-11-02 | SDR-ST-CON-P3-1810 SS, SDR-ST-MILS-1000 | -99d |
| SDR-ST-CON-P3-1850 |  | Adjustment & Alignment of Panels Part 1 | 3d | 2027-11-03 | 2027-11-06 | SDR-ST-CON-P3-1730, SDR-ST-CON-P3-1820, SDR-ST-CON-P1-6000, SDR-ST-MILS-1000 | -96d |
| SDR-ST-CON-P3-1860 |  | Adjustment & Alignment of Panels Part 2 | 3d | 2027-11-03 | 2027-11-06 | SDR-ST-CON-P3-1850 SS, SDR-ST-MILS-1000 | -96d |
| SDR-ST-CON-P3-1890 |  | Sealant & Finishing Works | 5d | 2027-11-07 | 2027-11-11 | SDR-ST-CON-P3-1810, SDR-ST-CON-P3-1850, SDR-ST-CON-P3-1860, SDR-ST-MILS-1000 | -96d |
|  | 1 | **THERMAL & MOISTURE PROTECTION** |  | 2027-03-02 | 2027-05-24 |  |  |
|  | 1 | **Bituminous Sheet Waterproofing** |  | 2027-03-02 | 2027-05-24 |  |  |
| SDR-ST-CON-P3-1070 |  | Provide and lay 2 layers of waterproofing bitumenous membrane 4mm below footings | 5d | 2027-03-02 | 2027-03-07 | SDR-ST-CON-P3-1050, SDR-ST-MILS-1000 | -105d |
| SDR-ST-CON-P3-1170 |  | Provide and lay 2 layers of waterproofing bitumenous membrane 4mm in contact with soil | 5d | 2027-05-13 | 2027-05-24 | SDR-ST-CON-P3-1190, SDR-ST-CON-P3-1230, SDR-ST-CON-P3-1220, SDR-ST-PRO-MS-1070, SDR-ST-CON-P3-1140, SDR-ST-CON-P1-3480, SDR-ST-CON-P1-3360, SDR-ST-CON-P1-3700, SDR-ST-CON-P1-3930, SDR-ST-CON-P1-3760, SDR-ST-CON-P1-3670, SDR-ST-CON-P1-3810, SDR-ST-MILS-1000 | -78d |
|  | 4 | **Electrical Works** |  | 2027-07-18 | 2027-12-05 |  |  |
|  | 1 | **Low-Voltage Electrical Power Conductors and Cables** |  | 2027-07-18 | 2027-08-08 |  |  |
| SDR-ST-CON-P3-1510 |  | Installtion and test low voltage cable including pulling of cable 600/1000V . | 20d | 2027-07-18 | 2027-08-08 | SDR-ST-TC-1020, SDR-ST-CON-P3-1440, SDR-ST-MILS-1000 | -78d |
|  | 2 | **Ondoor Lighting Points** |  | 2027-08-09 | 2027-09-01 |  |  |
| SDR-ST-CON-P3-1580 |  | Install, test, and commission all necessary components for outdoor lighting points. | 21d | 2027-08-09 | 2027-09-01 | SDR-ST-CON-P3-1510, SDR-ST-MILS-1000 | -78d |
|  | 3 | **Outdoor Lighting Fixtures** |  | 2027-09-04 | 2027-10-27 |  |  |
| SDR-ST-CON-P3-1630 |  | Install of L10 recessed in ceiling light, lenght1535mmxwidth75mmxhieght105mm, LED 53.2w Part 1 | 21d | 2027-09-04 | 2027-09-27 | SDR-ST-PRO-MS-1170, SDR-ST-CON-P3-1580 FS+1d, SDR-ST-MILS-1000, SDR-ST-CON-P1-4050 | -78d |

| ID | WBS | Task | Duration | Start | Finish | Predecessors | Total float |
| --- | --- | --- | --- | --- | --- | --- | --- |
| SDR-ST-CON-P3-1650 |  | Install of L10 recessed in ceiling light, lenght1535mmxwidth75mmxhieght105mm, LED 53.2w Part 2 | 20d | 2027-10-05 | 2027-10-27 | SDR-ST-TC-1000, SDR-ST-PRO-MS-1170, SDR-ST-CON-P3-1630 SS, SDR-ST-MILS-1000 | -105d |
|  | 4 | **CCTV** |  | 2027-07-18 | 2027-12-05 |  |  |
| SDR-ST-CON-P3-1520 |  | Install of Handhole (600x600x730mm) | 5d | 2027-07-18 | 2027-07-22 | SDR-ST-CO-1030, SDR-ST-MILS-1090, SDR-ST-CON-P3-1440, SDR-ST-CON-P1-5790, SDR-ST-MILS-1000 | -78d |
| SDR-ST-CON-P3-1550 |  | Install of 2 core 9/125um indoor -outdoor central tube | 8d | 2027-07-24 | 2027-08-01 | SDR-ST-CON-P3-1520, SDR-ST-CO-1030, SDR-ST-MILS-1000 | -78d |
| SDR-ST-CON-P3-1570 |  | Install of 4 Port (2 duplex) LC/UPC OS2 fiber patch panel | 12d | 2027-08-02 | 2027-08-14 | SDR-ST-PRO-MS-1040, SDR-ST-CON-P3-1550, SDR-ST-MILS-1000 | -78d |
| SDR-ST-CON-P3-1600 |  | Install of Pole mounted Filed Equipment cabinet (FEC) , with fan and ventilation | 19d | 2027-09-25 | 2027-10-16 | SDR-ST-CON-P1-5430, SDR-ST-PRO-MS-1060, SDR-ST-CON-P3-1570, SDR-ST-MILS-1000 | -113d |
| SDR-ST-CON-P3-1670 |  | Install of 8 Port Industrial PoE Switch 10/1000BaseT | 19d | 2027-10-17 | 2027-11-07 | SDR-ST-CON-P3-1600, SDR-ST-CON-P1-5850, SDR-ST-MILS-1000 | -113d |
| SDR-ST-CON-P3-1680 |  | Install of 1.2KVA Industrial type UPS located at FEC | 19d | 2027-10-17 | 2027-11-07 | SDR-ST-CON-P3-1600, SDR-ST-MILS-1000, SDR-ST-CO-1010 | -113d |
| SDR-ST-CON-P3-1740 |  | Install of UTP CAT6 Patch Cord , connect the industrial switch with the cameras | 10d | 2027-11-08 | 2027-11-18 | SDR-ST-CON-P1-5920, SDR-ST-PRO-MS-1160, SDR-ST-CON-P3-1680, SDR-ST-CON-P3-1670, SDR-ST-CON-P3-1650 FS+1d, SDR-ST-MILS-1000 | -113d |
| SDR-ST-CON-P3-1780 |  | Install of 5MP IP PoE Bullet Camera, outdoor mounted on canopy ceiling Part 1. | 12d | 2027-11-20 | 2027-12-02 | SDR-ST-PRO-MS-1160, SDR-ST-PRO-MS-1090, SDR-ST-CON-P3-1820, SDR-ST-CON-P3-1740, SDR-ST-MILS-1000 | -113d |
| SDR-ST-CON-P3-1790 |  | Install of 5MP IP PoE Bullet Camera, outdoor mounted on canopy ceiling Part 2. | 14d | 2027-11-20 | 2027-12-05 | SDR-ST-PRO-MS-1160, SDR-ST-CON-P3-1740, SDR-ST-MILS-1000 | -111d |
|  | 5 | **Voice Evacuation System** |  | 2027-11-20 | 2027-11-28 |  |  |
| SDR-ST-CON-P3-1800 |  | install, test of Suspended ceiling outdoor projector speaker, bi-directional, 20w Part 1 | 8d | 2027-11-20 | 2027-11-28 | SDR-ST-PRO-MS-1150, SDR-ST-CON-P3-1740, SDR-ST-CON-P1-5910, SDR-ST-CON-P1-5980 SS, SDR-ST-CON-P1-5970, SDR-ST-MILS-1000 | -113d |
| SDR-ST-CON-P3-1870 |  | install, test of Suspended ceiling outdoor projector speaker, bi-directional, 20w Part 2 | 8d | 2027-11-20 | 2027-11-28 | SDR-ST-PRO-MS-1150, SDR-ST-CON-P3-1800 SS, SDR-ST-CON-P3-1780 SS, SDR-ST-CON-P3-1650, SDR-ST-MILS-1000 | -113d |
|  | 6 | **Testing and Comissioning** |  | 2027-04-15 | 2027-12-13 |  |  |
|  | 1 | **Civil Works** |  | 2027-09-18 | 2027-10-04 |  |  |
| SDR-ST-TC-1000 |  | Testing & Commissioning of road works | 15d | 2027-09-18 | 2027-10-04 | SDR-ST-CON-P1-5530 FS+1d | -105d |
|  | 2 | **Storm Water Drainage Network** |  | 2027-05-30 | 2027-06-16 |  |  |
| SDR-ST-TC-1010 |  | Testing & Commissioning of network work | 16d | 2027-05-30 | 2027-06-16 | SDR-ST-CON-P1-4760 FS+1d, SDR-ST-CON-P1-4760 FF | -78d |
|  | 3 | **Sewerage Network** |  | 2027-04-15 | 2027-05-09 |  |  |
| SDR-ST-TC-1030 |  | Testing & Commissioning of Sewage Network | 21d | 2027-04-15 | 2027-05-09 | SDR-ST-CON-P1-5700, SDR-ST-CON-P1-5800 FS+5d | -23d |
|  | 5 | **Portable Water** |  | 2027-05-02 | 2027-05-30 |  |  |
| SDR-ST-TC-1020 |  | Testing & Commissioning of Potable Network | 20d | 2027-05-02 | 2027-05-30 | SDR-ST-CON-P1-5030 FS+1d, SDR-ST-CON-P1-5070 | -37d |
|  | 6 | **Electrical Works** |  | 2027-11-18 | 2027-11-30 |  |  |
| SDR-ST-TC-1050 |  | Testing & Commissioning of Electrical Network | 11d | 2027-11-18 | 2027-11-30 | SDR-ST-CON-P3-1890, SDR-ST-CON-P1-6050 FS+1d | -100d |
|  | 8 | **CCTV Works** |  | 2027-12-06 | 2027-12-13 |  |  |
| SDR-ST-TC-1040 |  | Testing & Commissioning of medium voltage works | 7d | 2027-12-06 | 2027-12-13 | SDR-ST-CON-P3-1800, SDR-ST-CON-P3-1870, SDR-ST-CON-P3-1790 | -111d |
|  | 7 | **Close Out** |  | 2027-04-24 | 2027-12-15 |  |  |
|  | 1 | **As Built Drawings** |  | 2027-04-24 | 2027-12-04 |  |  |
|  | 1 | **Civil** |  | 2027-09-16 | 2027-09-29 |  |  |
| SDR-ST-CO-1000 |  | Civil As-Built Drawing Submission | 7d | 2027-09-16 | 2027-09-23 | SDR-ST-CON-P1-5530 | -104d |
| SDR-ST-CO-1010 |  | Civil As-Built Drawing Approvals | 5d | 2027-09-25 | 2027-09-29 | SDR-ST-CO-1000 | -104d |
|  | 2 | **Mechanical** |  | 2027-04-24 | 2027-06-03 |  |  |
| SDR-ST-CO-1020 |  | Mechanical As-Built Drawing Submission | 8d | 2027-04-24 | 2027-05-02 | SDR-ST-CON-P1-5070, SDR-ST-CON-P1-5800 | -41d |
| SDR-ST-CO-1030 |  | Mechanical As-Built Drawing Approvals | 8d | 2027-05-26 | 2027-06-03 | SDR-ST-CO-1020 FS+15d | -41d |
|  | 3 | **Electrical** |  | 2027-11-11 | 2027-12-04 |  |  |
| SDR-ST-CO-1040 |  | Electrical As-Built Drawing Submission | 10d | 2027-11-11 | 2027-11-22 | SDR-ST-CON-P1-6050 SS, SDR-ST-CO-1010 | -104d |
| SDR-ST-CO-1100 |  | Electrical As-Built Drawing Approvals | 9d | 2027-11-24 | 2027-12-04 | SDR-ST-CO-1040 FS+1d | -104d |
|  | 2 | **Training and Manuals** |  | 2027-11-20 | 2027-12-15 |  |  |
| SDR-ST-CO-1050 |  | Training and Manuals | 23d | 2027-11-20 | 2027-12-15 | SDR-ST-CON-P3-1870 SS, SDR-ST-CON-P3-1630 | -113d |
|  | 3 | **Demobilize Manpower** |  | 2027-11-20 | 2027-12-12 |  |  |
| SDR-ST-CO-1060 |  | Manpower Demobilize | 20d | 2027-11-20 | 2027-12-12 | SDR-ST-CO-1050 SS, SDR-ST-CO-1020 | -112d |
|  | 4 | **Demobilize Equipment** |  | 2027-11-20 | 2027-12-12 |  |  |
| SDR-ST-CO-1070 |  | Equipments Demobilize | 20d | 2027-11-20 | 2027-12-12 | SDR-ST-CO-1060 SS, SDR-ST-CO-1020 | -112d |
|  | 5 | **Removal of Site Offices and Structures** |  | 2027-11-20 | 2027-12-14 |  |  |
| SDR-ST-CO-1090 |  | Site Office Removal | 22d | 2027-11-20 | 2027-12-14 | SDR-ST-CO-1070 SS, SDR-ST-CO-1020 | -112d |
|  | 6 | **Handover** |  | 2027-12-01 | 2027-12-14 |  |  |
| SDR-ST-CO-1080 |  | Project Handover | 12d | 2027-12-01 | 2027-12-14 | SDR-ST-CON-P1-5980, SDR-ST-CON-P1-6040, SDR-ST-CO-1070 SS, SDR-ST-CO-1090 FF, SDR-ST-CON-P3-1890, SDR-ST-CON-P3-1880, SDR-ST-CON-P3-1840, SDR-ST-CON-P1-6030, SDR-ST-CON-P1-6040 SS, SDR-ST-CON-P1-6000, SDR-ST-CO-1100 FF+1d, SDR-ST-TC-1050 FF, SDR-ST-MILS-1100, SDR-ST-MILS-1120 FF, SDR-ST-TC-1000 FF, SDR-ST-TC-1040 FF | -112d |

## Version 8 (data date 2026-11-16, saved 2026-11-16, file SUD1-05-018-NEW -SAR-16-11-26.xer)

Last finish 2027-12-15 → 2027-12-22 (+7d). Complete tasks 279 → 310.

Changed:

| ID | Task | Start | Finish | Total float |
| --- | --- | --- | --- | --- |
| 1 | **Milestone** |  | 2027-12-15 → 2027-12-22 (+7d) |  |
| SDR-ST-MILS-1070 | Completion of road and paving works | 2027-02-21 → 2027-03-01 (+8d) | 2027-02-21 → 2027-03-01 (+8d) | -55d → -61d |
| SDR-ST-MILS-1100 | Completion of site and platform works | 2027-07-04 → 2027-07-11 (+7d) | 2027-07-04 → 2027-07-11 (+7d) | 17d → 11d |
| SDR-ST-MILS-1140 | Project Finish | 2027-12-15 → 2027-12-22 (+7d) | 2027-12-15 → 2027-12-22 (+7d) | -113d → -119d |
| 1 | **Major Milestone** |  | 2027-12-12 → 2027-12-19 (+7d) |  |
| SDR-ST-MILS-1120 | Project Finish Milstone | 2027-12-12 → 2027-12-19 (+7d) | 2027-12-12 → 2027-12-19 (+7d) | -110d → -116d |
| 3 | **Contractual Milestone** |  | 2027-12-05 → 2027-12-12 (+7d) |  |
| SDR-ST-MILS-1080 | Completion of road works | 2027-02-21 → 2027-03-01 (+8d) | 2027-02-21 → 2027-03-01 (+8d) | -18d → -20d |
| SDR-ST-MILS-1060 | Completion of medium voltage works | 2027-08-18 → 2027-08-25 (+7d) | 2027-08-18 → 2027-08-25 (+7d) | -84d → -90d |
| SDR-ST-MILS-1130 | Completion of finishing works in the project | 2027-12-05 → 2027-12-12 (+7d) | 2027-12-05 → 2027-12-12 (+7d) | -104d → -110d |
| 2 | **Phases Milestone** | 2026-11-21 → 2026-11-28 (+7d) | 2027-12-05 → 2027-12-12 (+7d) |  |
| SDR-ST-MILS-1050 | Engineering Phase Finish Milestone | 2026-11-21 → 2026-11-28 (+7d) | 2026-11-21 → 2026-11-28 (+7d) | -113d → -119d |
| SDR-ST-MILS-1090 | Procurment Phase Finish Milestone | 2027-04-20 → 2027-04-27 (+7d) | 2027-04-20 → 2027-04-27 (+7d) | -8d → -14d |
| SDR-ST-MILS-1110 | Construction Phase Finish Milestone | 2027-12-05 → 2027-12-12 (+7d) | 2027-12-05 → 2027-12-12 (+7d) | -104d → -110d |
| 3 | **Engineering** |  | 2026-11-30 → 2026-12-07 (+7d) |  |
| 5 | **Shop Drawings Stage** |  | 2026-11-21 → 2026-11-28 (+7d) |  |
| 4 | **Approvals** |  | 2026-11-21 → 2026-11-28 (+7d) |  |
| 9 | **Electrical** |  | 2026-11-21 → 2026-11-28 (+7d) |  |
| SDR-ST-ENG-AP-1130 | Medium Voltage Network Approval | 2026-11-09 → 2026-11-16 (+7d) | 2026-11-21 → 2026-11-28 (+7d) | -113d → -119d |
| SDR-ST-ENG-AP-1140 | Standard Details Medium Voltage Approval | 2026-11-09 → 2026-11-16 (+7d) | 2026-11-21 → 2026-11-28 (+7d) | -113d → -119d |
| 6 | **Materials** |  | 2026-11-30 → 2026-12-07 (+7d) |  |
| 5 | **Materials Submission** |  | 2026-11-17 → 2026-11-24 (+7d) |  |
| 1 | **Long Lead Items** |  | 2026-11-17 → 2026-11-24 (+7d) |  |
| 3 | **Electrical** |  | 2026-11-17 → 2026-11-24 (+7d) |  |
| SDR-ST-PRO-S-1110 | MEDIUM VOLTAGE CABLES DUCT BANKS | 2026-11-10 → 2026-11-17 (+7d) | 2026-11-17 → 2026-11-24 (+7d) | -66d → -72d |
| SDR-ST-PRO-S-1120 | MEDIUM VOLTAGE CABLES | 2026-11-10 → 2026-11-17 (+7d) | 2026-11-17 → 2026-11-24 (+7d) | -27d → -33d |
| SDR-ST-PRO-S-1130 | SUB-STATION | 2026-11-10 → 2026-11-17 (+7d) | 2026-11-17 → 2026-11-24 (+7d) | -8d → -14d |
| 6 | **Materials Approval** |  | 2026-11-30 → 2026-12-07 (+7d) |  |
| 2 | **Short Lead Items** |  | 2026-11-15 → 2026-11-22 (+7d) |  |
| 3 | **Electrical** |  | 2026-11-15 → 2026-11-22 (+7d) |  |
| SDR-ST-PRO-A-1170 | CCTV :5MP IP PoE Bullet Camera |  | 2026-11-15 → 2026-11-22 (+7d) | 55d → 49d |
| SDR-ST-PRO-A-1180 | CCTV :Pole mounted Filed Equipment cabinet (FE |  | 2026-11-15 → 2026-11-22 (+7d) | 57d → 51d |
| 1 | **Long Lead Items** |  | 2026-11-30 → 2026-12-07 (+7d) |  |
| 3 | **Electrical** |  | 2026-11-30 → 2026-12-07 (+7d) |  |
| SDR-ST-PRO-A-1200 | MEDIUM VOLTAGE CABLES DUCT BANKS | 2026-11-18 → 2026-11-25 (+7d) | 2026-11-30 → 2026-12-07 (+7d) | -66d → -72d |
| SDR-ST-PRO-A-1210 | MEDIUM VOLTAGE CABLES | 2026-11-18 → 2026-11-25 (+7d) | 2026-11-30 → 2026-12-07 (+7d) | -27d → -33d |
| SDR-ST-PRO-A-1220 | SUB-STATION | 2026-11-18 → 2026-11-25 (+7d) | 2026-11-30 → 2026-12-07 (+7d) | -8d → -14d |
| 4 | **Procurement** |  | 2027-04-20 → 2027-04-27 (+7d) |  |
| 5 | **Purchase Order** |  | 2026-12-17 → 2026-12-24 (+7d) |  |
| 4 | **Short Lead Items** |  | 2026-11-23 → 2026-11-30 (+7d) |  |
| 1 | **Civil** |  | 2026-11-14 → 2026-11-21 (+7d) |  |
| SDR-ST-PRO-PO-1260 | Steel Bars |  | 2026-11-14 → 2026-11-21 (+7d) | -56d → -62d |
| SDR-ST-PRO-PO-1040 | Interlock |  | 2026-11-12 → 2026-11-19 (+7d) | -3d → -9d |
| 3 | **Electrical** |  | 2026-11-23 → 2026-11-30 (+7d) |  |
| SDR-ST-PRO-PO-1070 | STREET LIGHTING FEEDER Panel |  | 2026-11-14 → 2026-11-21 (+7d) | -12d → -18d |
| SDR-ST-PRO-PO-1130 | LOW VOLTAGE DISTRIBUTION Panel |  | 2026-11-14 → 2026-11-21 (+7d) | 81d → 75d |
| SDR-ST-PRO-PO-1110 | STREET LIGHTING CABLES |  | 2026-11-12 → 2026-11-19 (+7d) | 26.7d → 20.7d |
| SDR-ST-PRO-PO-1050 | CCTV :Pole mounted Filed Equipment cabinet |  | 2026-11-23 → 2026-11-30 (+7d) | 57d → 51d |
| SDR-ST-PRO-PO-1230 | CCTV :5MP IP PoE Bullet Camera |  | 2026-11-23 → 2026-11-30 (+7d) | 55d → 49d |
| SDR-ST-PRO-PO-1020 | Drawpits |  | 2026-11-16 → 2026-11-23 (+7d) | -51d → -57d |
| SDR-ST-PRO-PO-1220 | VOICE EVACUATION SYSTEM |  | 2026-11-15 → 2026-11-22 (+7d) | 62d → 56d |
| 2 | **Mechanical** |  | 2026-11-15 → 2026-11-22 (+7d) |  |
| SDR-ST-PRO-PO-1140 | MANHOLE, CATCH BASIN & VALVE BOX COVER |  | 2026-11-15 → 2026-11-22 (+7d) | -48d → -54d |
| SDR-ST-PRO-PO-1090 | GI GOOSENECK & VENT |  | 2026-11-15 → 2026-11-22 (+7d) | 67d → 61d |
| 5 | **Long Lead Items** |  | 2026-12-17 → 2026-12-24 (+7d) |  |
| 1 | **Civil** | 2026-11-09 → 2026-11-16 (+7d) | 2026-12-08 → 2026-12-15 (+7d) |  |
| SDR-ST-PRO-PO-1150 | Metal railing for platform | 2026-11-09 → 2026-11-16 (+7d) | 2026-12-08 → 2026-12-15 (+7d) | 14d → 8d |
| SDR-ST-PRO-PO-1240 | Canopy | 2026-11-09 → 2026-11-16 (+7d) | 2026-11-24 → 2026-12-01 (+7d) | -32d → -38d |
| 3 | **Electrical** |  | 2026-12-17 → 2026-12-24 (+7d) |  |
| SDR-ST-PRO-PO-1200 | LIGHTING POLES |  | 2026-11-15 → 2026-11-22 (+7d) | -49.6d → -55.6d |
| SDR-ST-PRO-PO-1180 | Outdoor Lighting Fixtures | 2026-11-09 → 2026-11-16 (+7d) | 2026-11-24 → 2026-12-01 (+7d) | 32d → 26d |
| SDR-ST-PRO-PO-1210 | STREET LIGHTING LUMINAIRE | 2026-11-09 → 2026-11-16 (+7d) | 2026-11-24 → 2026-12-01 (+7d) | 21d → 15d |
| SDR-ST-PRO-PO-1160 | MEDIUM VOLTAGE CABLES DUCT BANKS | 2026-12-01 → 2026-12-08 (+7d) | 2026-12-16 → 2026-12-23 (+7d) | -66d → -72d |
| SDR-ST-PRO-PO-1170 | MEDIUM VOLTAGE CABLES | 2026-12-01 → 2026-12-08 (+7d) | 2026-12-17 → 2026-12-24 (+7d) | -27d → -33d |
| SDR-ST-PRO-PO-1250 | SUB-STATION | 2026-12-01 → 2026-12-08 (+7d) | 2026-12-16 → 2026-12-23 (+7d) | -8d → -14d |
| 2 | **Mechanical** | 2026-11-09 → 2026-11-16 (+7d) | 2026-11-24 → 2026-12-01 (+7d) |  |
| SDR-ST-PRO-PO-1190 | WASHOUT & AIR VALVE, GATE VALVE, BUTTERFLY VALVE | 2026-11-09 → 2026-11-16 (+7d) | 2026-11-24 → 2026-12-01 (+7d) | -23d → -29d |
| 6 | **Delivery to Site** |  | 2027-04-16 → 2027-04-23 (+7d) |  |
| 2 | **Short Lead Items Delivery** |  | 2027-02-06 → 2027-02-13 (+7d) |  |
| 1 | **Civil** |  | 2027-02-06 → 2027-02-13 (+7d) |  |

| ID | Task | Start | Finish | Total float |
| --- | --- | --- | --- | --- |
| SDR-ST-PRO-DL-1030 | Waterproofing (Thermal & moisture Protection) |  | 2027-01-07 → 2027-01-14 (+7d) | 25d → 18d |
| SDR-ST-PRO-DL-1260 | Steel Bars |  | 2026-12-24 → 2026-12-31 (+7d) | -66d → -73d |
| SDR-ST-PRO-DL-1270 | Asphalt |  | 2027-02-06 → 2027-02-13 (+7d) | -60d → -67d |
| SDR-ST-PRO-DL-1060 | Kerbstone |  | 2027-01-07 → 2027-01-14 (+7d) | -51d → -58d |
| SDR-ST-PRO-DL-1040 | Interlock |  | 2027-01-10 → 2027-01-17 (+7d) | -3d → -10d |
| 3 | **Electrical** |  | 2027-01-25 → 2027-02-01 (+7d) |  |
| SDR-ST-PRO-DL-1100 | LOW VOLTAGE CABLES |  | 2026-12-29 → 2027-01-05 (+7d) | 73d → 66d |
| SDR-ST-PRO-DL-1010 | ROAD CROSSING DUCTS Ø110mm |  | 2026-12-07 → 2026-12-14 (+7d) | -19d → -3d |
| SDR-ST-PRO-DL-1070 | STREET LIGHTING FEEDER Panel |  | 2026-12-31 → 2027-01-07 (+7d) | -14d → -21d |
| SDR-ST-PRO-DL-1110 | STREET LIGHTING CABLES |  | 2026-12-21 → 2026-12-28 (+7d) | 30.7d → 23.7d |
| SDR-ST-PRO-DL-1130 | LOW VOLTAGE DISTRIBUTION Panel |  | 2026-12-27 → 2027-01-03 (+7d) | 95d → 88d |
| SDR-ST-PRO-DL-1200 | VOICE EVACUATION SYSTEM | 2026-11-16 → 2026-11-23 (+7d) | 2027-01-17 → 2027-01-24 (+7d) | 72d → 65d |
| SDR-ST-PRO-DL-1020 | Drawpits | 2026-11-17 → 2026-11-24 (+7d) | 2026-12-18 → 2026-12-25 (+7d) | -60d → -67d |
| SDR-ST-PRO-DL-1050 | CCTV :Pole mounted Filed Equipment cabinet | 2026-11-24 → 2026-12-01 (+7d) | 2027-01-25 → 2027-02-01 (+7d) | 66d → 59d |
| SDR-ST-PRO-DL-1230 | CCTV :5MP IP PoE Bullet Camera | 2026-11-24 → 2026-12-01 (+7d) | 2027-01-25 → 2027-02-01 (+7d) | 64d → 57d |
| 2 | **Mechanical** |  | 2027-01-13 → 2027-01-20 (+7d) |  |
| SDR-ST-PRO-DL-2000 | MANHOLE, CATCH BASIN & VALVE BOX COVER |  | 2027-01-13 → 2027-01-20 (+7d) | -48d → -54d |
| SDR-ST-PRO-DL-1090 | GI GOOSENECK & VENT | 2026-11-16 → 2026-11-23 (+7d) | 2027-01-13 → 2027-01-20 (+7d) | 78d → 71d |
| 5 | **Long Lead Items Delivery** | 2026-11-15 → 2026-11-22 (+7d) | 2027-04-16 → 2027-04-23 (+7d) |  |
| 1 | **Civil** | 2026-12-07 → 2026-12-14 (+7d) | 2027-03-22 → 2027-03-29 (+7d) |  |
| SDR-ST-PRO-DL-1240 | Canopy | 2026-12-07 → 2026-12-14 (+7d) | 2027-03-22 → 2027-03-29 (+7d) | -38d → -45d |
| SDR-ST-PRO-DL-1150 | Metal railing for platform | 2026-12-09 → 2026-12-16 (+7d) | 2027-03-22 → 2027-03-29 (+7d) | 16d → 9d |
| 3 | **Electrical** | 2026-11-15 → 2026-11-22 (+7d) | 2027-04-16 → 2027-04-23 (+7d) |  |
| SDR-ST-PRO-DL-1210 | LIGHTING POLES | 2026-11-15 → 2026-11-22 (+7d) | 2027-02-14 → 2027-02-21 (+7d) | -58.6d → -65.6d |
| SDR-ST-PRO-DL-1180 | Outdoor Lighting Fixtures | 2026-11-25 → 2026-12-02 (+7d) | 2027-02-12 → 2027-02-19 (+7d) | 37d → 30d |
| SDR-ST-PRO-DL-1220 | STREET LIGHTING LUMINAIRE | 2026-11-25 → 2026-12-02 (+7d) | 2027-01-15 → 2027-01-22 (+7d) | 25d → 18d |
| SDR-ST-PRO-DL-1160 | MEDIUM VOLTAGE CABLES DUCT BANKS | 2026-12-17 → 2026-12-24 (+7d) | 2027-04-03 → 2027-04-10 (+7d) | -77d → -84d |
| SDR-ST-PRO-DL-1250 | SUB-STATION | 2026-12-17 → 2026-12-24 (+7d) | 2027-04-16 → 2027-04-23 (+7d) | -9d → -16d |
| SDR-ST-PRO-DL-1170 | MEDIUM VOLTAGE CABLES | 2026-12-18 → 2026-12-25 (+7d) | 2027-04-07 → 2027-04-14 (+7d) | -31d → -38d |
| 2 | **Mechanical** | 2026-11-30 → 2026-12-07 (+7d) | 2026-12-16 → 2026-12-23 (+7d) |  |
| SDR-ST-PRO-DL-1190 | WASHOUT & AIR VALVE, GATE VALVE, BUTTERFLY VALVE | 2026-11-30 → 2026-12-07 (+7d) | 2026-12-16 → 2026-12-23 (+7d) | -27d → -34d |
| 4 | **Materials Staging Time** | 2026-11-09 → 2026-11-16 (+7d) | 2027-04-20 → 2027-04-27 (+7d) |  |
| 4 | **Short Lead Items Delivery** | 2026-11-09 → 2026-11-16 (+7d) | 2027-02-10 → 2027-02-17 (+7d) |  |
| 1 | **Civil** | 2026-12-25 → 2027-01-01 (+7d) | 2027-02-10 → 2027-02-17 (+7d) |  |
| SDR-ST-PRO-MS-1260 | Steel Bars | 2026-12-25 → 2027-01-01 (+7d) | 2026-12-28 → 2027-01-04 (+7d) | -66d → -73d |
| SDR-ST-PRO-MS-1070 | Waterproofing (Thermal & moisture Protection) | 2027-01-08 → 2027-01-15 (+7d) | 2027-01-11 → 2027-01-18 (+7d) | 25d → 18d |
| SDR-ST-PRO-MS-1100 | Kerbstone | 2027-01-08 → 2027-01-15 (+7d) | 2027-01-12 → 2027-01-19 (+7d) | -51d → -58d |
| SDR-ST-PRO-MS-1080 | Interlock | 2027-01-11 → 2027-01-18 (+7d) | 2027-01-14 → 2027-01-21 (+7d) | -3d → -10d |
| SDR-ST-PRO-MS-1270 | Asphalt | 2027-02-07 → 2027-02-14 (+7d) | 2027-02-10 → 2027-02-17 (+7d) | -60d → -67d |
| 3 | **Electrical** | 2026-12-08 → 2026-12-15 (+7d) | 2027-01-31 → 2027-02-07 (+7d) |  |
| SDR-ST-PRO-MS-1000 | ROAD CROSSING DUCTS Ø110mm | 2026-12-08 → 2026-12-15 (+7d) | 2026-12-11 → 2026-12-18 (+7d) | -19d → -3d |
| SDR-ST-PRO-MS-1010 | Drawpits | 2026-12-19 → 2026-12-26 (+7d) | 2026-12-22 → 2026-12-29 (+7d) | -60d → -67d |
| SDR-ST-PRO-MS-1030 | STREET LIGHTING CABLES | 2026-12-21 → 2026-12-28 (+7d) | 2026-12-25 → 2027-01-01 (+7d) | 30.7d → 23.7d |
| SDR-ST-PRO-MS-1040 | LOW VOLTAGE DISTRIBUTION Panel | 2026-12-28 → 2027-01-04 (+7d) | 2026-12-31 → 2027-01-07 (+7d) | 95d → 88d |
| SDR-ST-PRO-MS-1120 | LOW VOLTAGE CABLES | 2026-12-30 → 2027-01-06 (+7d) | 2027-01-02 → 2027-01-09 (+7d) | 73d → 66d |
| SDR-ST-PRO-MS-1020 | STREET LIGHTING FEEDER Panel | 2027-01-01 → 2027-01-08 (+7d) | 2027-01-04 → 2027-01-11 (+7d) | -14d → -21d |
| SDR-ST-PRO-MS-1150 | VOICE EVACUATION SYSTEM | 2027-01-18 → 2027-01-25 (+7d) | 2027-01-23 → 2027-01-30 (+7d) | 72d → 65d |
| SDR-ST-PRO-MS-1090 | CCTV :Pole mounted Filed Equipment cabinet | 2027-01-26 → 2027-02-02 (+7d) | 2027-01-29 → 2027-02-05 (+7d) | 66d → 59d |
| SDR-ST-PRO-MS-1160 | CCTV :5MP IP PoE Bullet Camera | 2027-01-26 → 2027-02-02 (+7d) | 2027-01-31 → 2027-02-07 (+7d) | 64d → 57d |
| 2 | **Mechanical** | 2026-11-09 → 2026-11-16 (+7d) | 2027-01-17 → 2027-01-24 (+7d) |  |
| SDR-ST-PRO-MS-1110 | HDPE PIPES & FITTINGS | 2026-11-09 → 2026-11-16 (+7d) | 2026-11-12 → 2026-11-19 (+7d) | 24d → 20d |
| SDR-ST-PRO-MS-1130 | CONCRETE PIPES AND FITTINGS | 2026-11-09 → 2026-11-16 (+7d) | 2026-11-12 → 2026-11-19 (+7d) | 1d → -6d |
| SDR-ST-PRO-MS-1050 | WARNING TAPE | 2026-11-22 → 2026-11-29 (+7d) | 2026-11-25 → 2026-12-02 (+7d) | 21d → 14d |
| SDR-ST-PRO-MS-1060 | GI GOOSENECK & VENT | 2027-01-14 → 2027-01-21 (+7d) | 2027-01-17 → 2027-01-24 (+7d) | 78d → 71d |
| SDR-ST-PRO-MS-1140 | MANHOLE, CATCH BASIN & VALVE BOX COVER | 2027-01-14 → 2027-01-21 (+7d) | 2027-01-17 → 2027-01-24 (+7d) | -56d → -63d |
| 5 | **Long Lead Items Delivery** | 2026-12-17 → 2026-12-24 (+7d) | 2027-04-20 → 2027-04-27 (+7d) |  |
| 1 | **Civil** | 2027-03-23 → 2027-03-30 (+7d) | 2027-03-26 → 2027-04-02 (+7d) |  |
| SDR-ST-PRO-MS-1200 | Metal railing for platform | 2027-03-23 → 2027-03-30 (+7d) | 2027-03-26 → 2027-04-02 (+7d) | 16d → 9d |
| SDR-ST-PRO-MS-1240 | Canopy | 2027-03-23 → 2027-03-30 (+7d) | 2027-03-26 → 2027-04-02 (+7d) | -38d → -45d |
| 3 | **Electrical** | 2027-01-16 → 2027-01-23 (+7d) | 2027-04-20 → 2027-04-27 (+7d) |  |
| SDR-ST-PRO-MS-1180 | STREET LIGHTING LUMINAIRE | 2027-01-16 → 2027-01-23 (+7d) | 2027-01-20 → 2027-01-27 (+7d) | 25d → 18d |
| SDR-ST-PRO-MS-1230 | LIGHTING POLES | 2027-02-14 → 2027-02-21 (+7d) | 2027-02-18 → 2027-02-26 (+8d) | -58.6d → -65.6d |
| SDR-ST-PRO-MS-1170 | Outdoor Lighting Fixtures | 2027-02-21 → 2027-03-01 (+8d) | 2027-02-28 → 2027-03-07 (+7d) | 37d → 30d |
| SDR-ST-PRO-MS-1210 | MEDIUM VOLTAGE CABLES DUCT BANKS | 2027-04-04 → 2027-04-11 (+7d) | 2027-04-09 → 2027-04-16 (+7d) | -77d → -84d |
| SDR-ST-PRO-MS-1220 | MEDIUM VOLTAGE CABLES | 2027-04-08 → 2027-04-15 (+7d) | 2027-04-11 → 2027-04-18 (+7d) | -31d → -38d |
| SDR-ST-PRO-MS-1250 | SUB-STATION | 2027-04-17 → 2027-04-24 (+7d) | 2027-04-20 → 2027-04-27 (+7d) | -9d → -16d |
| 2 | **Mechanical** | 2026-12-17 → 2026-12-24 (+7d) | 2026-12-21 → 2026-12-28 (+7d) |  |
| SDR-ST-PRO-MS-1190 | WASHOUT & AIR VALVE, GATE VALVE, BUTTERFLY VALVE | 2026-12-17 → 2026-12-24 (+7d) | 2026-12-21 → 2026-12-28 (+7d) | -27d → -34d |
| 5 | **Construction** |  | 2027-12-05 → 2027-12-12 (+7d) |  |
| 1 | **Package-1** |  | 2027-11-21 → 2027-11-28 (+7d) |  |

| ID | Task | Start | Finish | Total float |
| --- | --- | --- | --- | --- |
| 15 | **ROAD WORKS 1** |  | 2027-09-23 → 2027-09-30 (+7d) |  |
| 8 | **ROAD - 01** |  | 2027-09-05 → 2027-09-12 (+7d) |  |
| 6 | **ROAD-01 From 0 to 470 m (3)** |  | 2027-08-01 → 2027-08-07 (+6d) |  |
| 3 | **Asphalt Works** |  | 2027-03-25 → 2027-04-01 (+7d) |  |
| 1 | **Bituminous base course** |  | 2027-02-21 → 2027-03-01 (+8d) |  |
| SDR-ST-CON-P1-4410 | Bituminous base course (Grading I - Class A 1st Layer with RC-01 |  | 2027-02-14 → 2027-02-21 (+7d) | -55d → -61d |
| SDR-ST-CON-P1-4770 | Bituminous base course (Grading I - Class A 2nd layer with RC-02 | 2027-02-15 → 2027-02-23 (+8d) | 2027-02-21 → 2027-03-01 (+8d) | -55d → -61d |
| 2 | **Bituminous concrete wearing course** | 2027-02-25 → 2027-03-04 (+7d) | 2027-03-25 → 2027-04-01 (+7d) |  |
| SDR-ST-CON-P1-5110 | Bituminous concrete wearing course, (Grading I - Class A), including tack coat (RC2) | 2027-02-25 → 2027-03-04 (+7d) | 2027-03-25 → 2027-04-01 (+7d) | -55d → -61d |
| 4 | **Kerbstone Installation** | 2027-02-08 → 2027-02-15 (+7d) | 2027-05-25 → 2027-06-01 (+7d) |  |
| SDR-ST-CON-P1-3860 | Precast Concrete Curbstone, Type A2 | 2027-02-08 → 2027-02-15 (+7d) | 2027-03-04 → 2027-03-16 (+12d) | -64d → -70d |
| SDR-ST-CON-P1-4530 | Precast Concrete Curbstone, Type D | 2027-05-09 → 2027-05-22 (+13d) | 2027-05-25 → 2027-06-01 (+7d) | -92d → -98d |
| 5 | **Interlock Installation** | 2027-05-27 → 2027-06-03 (+7d) | 2027-07-12 → 2027-07-19 (+7d) |  |
| SDR-ST-CON-P1-4100 | Interlock Installation Part 1 | 2027-05-27 → 2027-06-03 (+7d) | 2027-06-19 → 2027-06-26 (+7d) | -92d → -98d |
| SDR-ST-CON-P1-4620 | Interlock Installation Part 2 | 2027-06-20 → 2027-06-27 (+7d) | 2027-07-12 → 2027-07-19 (+7d) | -92d → -98d |
| 6 | **Road Marking** | 2027-07-13 → 2027-07-20 (+7d) | 2027-07-31 → 2027-08-06 (+6d) |  |
| SDR-ST-CON-P1-5210 | Retroreflective Thermoplastic White Traffic lines | 2027-07-13 → 2027-07-20 (+7d) | 2027-07-17 → 2027-07-24 (+7d) | -73d → -79d |
| SDR-ST-CON-P1-5310 | Retroreflective Thermoplastic Yellow, Traffic lines | 2027-07-18 → 2027-07-25 (+7d) | 2027-07-21 → 2027-07-28 (+7d) | -73d → -79d |
| SDR-ST-CON-P1-5470 | Ceramic raised pavement markers | 2027-07-22 → 2027-07-29 (+7d) | 2027-07-26 → 2027-08-02 (+7d) | -73d → -79d |
| SDR-ST-CON-P1-5620 | Rumble strip | 2027-07-27 → 2027-08-03 (+7d) | 2027-07-31 → 2027-08-06 (+6d) | -73d → -79d |
| 7 | **Traffic Signage** | 2027-07-13 → 2027-07-20 (+7d) | 2027-07-26 → 2027-08-02 (+7d) |  |
| SDR-ST-CON-P1-5220 | Traffic signs, ground mounted, 1 Sheet Alumenium, (breakaway) Single post, with all accessories | 2027-07-13 → 2027-07-20 (+7d) | 2027-07-17 → 2027-07-24 (+7d) | -71d → -77d |
| SDR-ST-CON-P1-5320 | Traffic signs, ground mounted, 1 Sheet Aluminum, (breakaway) Double post, with all accessories | 2027-07-18 → 2027-07-25 (+7d) | 2027-07-21 → 2027-07-28 (+7d) | -71d → -77d |
| SDR-ST-CON-P1-5480 | Traffic signs, ground mounted, 2 Sheet Aluminum, (breakaway) Single post, with all accessories | 2027-07-22 → 2027-07-29 (+7d) | 2027-07-26 → 2027-08-02 (+7d) | -71d → -77d |
| 8 | **Speed table** | 2027-07-27 → 2027-08-03 (+7d) | 2027-08-01 → 2027-08-07 (+6d) |  |
| SDR-ST-CON-P1-5490 | Interlock speed table including interlock, flush kerb and marking | 2027-07-27 → 2027-08-03 (+7d) | 2027-08-01 → 2027-08-07 (+6d) | -71d → -77d |
| 7 | **ROAD-01 From 470 to 1125 m (6)** |  | 2027-09-01 → 2027-09-08 (+7d) |  |
| 3 | **Asphalt Works** | 2026-11-22 → 2026-11-29 (+7d) | 2027-03-24 → 2027-03-31 (+7d) |  |
| 1 | **Bituminous base course** | 2026-11-22 → 2026-11-29 (+7d) | 2027-02-18 → 2027-02-27 (+9d) |  |
| SDR-ST-CON-P1-4430 | Bituminous base course (Grading I - Class A 1st Layer with RC-01 | 2026-11-22 → 2026-11-29 (+7d) | 2026-11-28 → 2026-12-05 (+7d) | 19d → 13d |
| SDR-ST-CON-P1-4730 | Bituminous base course (Grading I - Class A 2nd layer with RC-02 | 2027-02-11 → 2027-02-18 (+7d) | 2027-02-18 → 2027-02-27 (+9d) | -45d → -51d |
| 2 | **Bituminous concrete wearing course** | 2027-02-24 → 2027-03-03 (+7d) | 2027-03-24 → 2027-03-31 (+7d) |  |
| SDR-ST-CON-P1-5040 | Bituminous concrete wearing course, (Grading I - Class A), including tack coat (RC2) | 2027-02-24 → 2027-03-03 (+7d) | 2027-03-24 → 2027-03-31 (+7d) | -45d → -51d |
| 4 | **Kerbstone Installation** | 2026-11-22 → 2026-11-29 (+7d) | 2027-04-01 → 2027-04-08 (+7d) |  |
| SDR-ST-CON-P1-3730 | Precast Concrete Curbstone, Type A2 | 2026-11-22 → 2026-11-29 (+7d) | 2026-12-14 → 2026-12-21 (+7d) | 0d → -6d |
| SDR-ST-CON-P1-4480 | Precast Concrete Curbstone, Type D | 2027-03-06 → 2027-03-17 (+11d) | 2027-04-01 → 2027-04-08 (+7d) | -64d → -70d |
| 5 | **Interlock Installation** | 2027-04-03 → 2027-04-10 (+7d) | 2027-05-24 → 2027-05-31 (+7d) |  |
| SDR-ST-CON-P1-3890 | Interlock Installation Part 1 | 2027-04-03 → 2027-04-10 (+7d) | 2027-04-25 → 2027-05-02 (+7d) | -64d → -70d |
| SDR-ST-CON-P1-4490 | Interlock Installation Part 2 | 2027-04-26 → 2027-05-03 (+7d) | 2027-05-24 → 2027-05-31 (+7d) | -64d → -70d |
| 6 | **Road Marking** | 2027-05-25 → 2027-06-01 (+7d) | 2027-08-05 → 2027-08-11 (+6d) |  |
| SDR-ST-CON-P1-5080 | Retroreflective Thermoplastic White Traffic lines | 2027-05-25 → 2027-06-01 (+7d) | 2027-06-01 → 2027-06-08 (+7d) | -64d → -70d |
| SDR-ST-CON-P1-5150 | Retroreflective Thermoplastic Yellow, Traffic lines | 2027-07-13 → 2027-07-20 (+7d) | 2027-07-20 → 2027-07-27 (+7d) | -99d → -105d |
| SDR-ST-CON-P1-5270 | Ceramic raised pavement markers | 2027-07-21 → 2027-07-28 (+7d) | 2027-07-28 → 2027-08-04 (+7d) | -99d → -105d |
| SDR-ST-CON-P1-5400 | Rumble strip | 2027-07-29 → 2027-08-05 (+7d) | 2027-08-05 → 2027-08-11 (+6d) | -99d → -105d |
| 7 | **Traffic Signage** | 2027-08-06 → 2027-08-12 (+6d) | 2027-08-21 → 2027-08-28 (+7d) |  |
| SDR-ST-CON-P1-5090 | Traffic signs, ground mounted, 1 Sheet Alumenium, (breakaway) Single post, with all accessories | 2027-08-06 → 2027-08-12 (+6d) | 2027-08-14 → 2027-08-21 (+7d) | -99d → -105d |
| SDR-ST-CON-P1-5160 | Traffic signs, ground mounted, 1 Sheet Aluminum, (breakaway) Double post, with all accessories | 2027-08-15 → 2027-08-22 (+7d) | 2027-08-21 → 2027-08-28 (+7d) | -99d → -105d |
| 8 | **Speed table** | 2027-08-22 → 2027-08-29 (+7d) | 2027-09-01 → 2027-09-08 (+7d) |  |
| SDR-ST-CON-P1-5280 | Interlock speed table including interlock, flush kerb and marking | 2027-08-22 → 2027-08-29 (+7d) | 2027-09-01 → 2027-09-08 (+7d) | -99d → -105d |
| 9 | **ROAD-01 From 1125 to 1765 m (7)** |  | 2027-09-05 → 2027-09-12 (+7d) |  |
| 3 | **Asphalt Works** | 2026-11-22 → 2026-11-29 (+7d) | 2027-03-08 → 2027-03-20 (+12d) |  |
| 1 | **Bituminous base course** | 2026-11-22 → 2026-11-29 (+7d) | 2026-12-10 → 2026-12-17 (+7d) |  |
| SDR-ST-CON-P1-4750 | Bituminous base course (Grading I - Class A 1st Layer with RC-01 | 2026-11-22 → 2026-11-29 (+7d) | 2026-11-30 → 2026-12-07 (+7d) | 15d → 9d |
| SDR-ST-CON-P1-5010 | Bituminous base course (Grading I - Class A 2nd layer with RC-02 | 2026-12-01 → 2026-12-08 (+7d) | 2026-12-10 → 2026-12-17 (+7d) | 15d → 9d |
| 2 | **Bituminous concrete wearing course** | 2027-02-11 → 2027-02-18 (+7d) | 2027-03-08 → 2027-03-20 (+12d) |  |
| SDR-ST-CON-P1-5200 | Bituminous concrete wearing course, (Grading I - Class A), including tack coat (RC2) | 2027-02-11 → 2027-02-18 (+7d) | 2027-03-08 → 2027-03-20 (+12d) | -35d → -41d |
| 4 | **Kerbstone Installation** | 2026-11-22 → 2026-11-29 (+7d) | 2027-01-11 → 2027-01-18 (+7d) |  |
| SDR-ST-CON-P1-4230 | Precast Concrete Curbstone, Type A2 | 2026-11-22 → 2026-11-29 (+7d) | 2026-12-14 → 2026-12-21 (+7d) | 0d → -6d |
| SDR-ST-CON-P1-4950 | Precast Concrete Curbstone, Type D | 2026-12-20 → 2026-12-27 (+7d) | 2027-01-11 → 2027-01-18 (+7d) | 0d → -6d |
| 5 | **Interlock Installation** | 2027-01-16 → 2027-01-23 (+7d) | 2027-03-04 → 2027-03-16 (+12d) |  |
| SDR-ST-CON-P1-4440 | Interlock Installation Part 1 | 2027-01-16 → 2027-01-23 (+7d) | 2027-02-08 → 2027-02-15 (+7d) | -3d → -9d |
| SDR-ST-CON-P1-4870 | Interlock Installation Part 2 | 2027-02-09 → 2027-02-16 (+7d) | 2027-03-04 → 2027-03-16 (+12d) | -3d → -9d |
| 6 | **Road Marking** | 2027-07-13 → 2027-07-20 (+7d) | 2027-08-14 → 2027-08-21 (+7d) |  |
| SDR-ST-CON-P1-5300 | Retroreflective Thermoplastic White Traffic lines | 2027-07-13 → 2027-07-20 (+7d) | 2027-07-20 → 2027-07-27 (+7d) | -105d → -111d |
| SDR-ST-CON-P1-5450 | Retroreflective Thermoplastic Yellow, Traffic lines | 2027-07-21 → 2027-07-28 (+7d) | 2027-07-28 → 2027-08-04 (+7d) | -105d → -111d |
| SDR-ST-CON-P1-5610 | Ceramic raised pavement markers | 2027-07-29 → 2027-08-05 (+7d) | 2027-08-05 → 2027-08-11 (+6d) | -105d → -111d |
| SDR-ST-CON-P1-5690 | Rumble strip | 2027-08-06 → 2027-08-12 (+6d) | 2027-08-14 → 2027-08-21 (+7d) | -105d → -111d |
| 7 | **Traffic Signage** | 2027-08-15 → 2027-08-22 (+7d) | 2027-08-26 → 2027-09-02 (+7d) |  |
| SDR-ST-CON-P1-5540 | Traffic signs, ground mounted, 1 Sheet Alumenium, (breakaway) Single post, with all accessories | 2027-08-15 → 2027-08-22 (+7d) | 2027-08-19 → 2027-08-26 (+7d) | -105d → -111d |
| SDR-ST-CON-P1-5680 | Traffic signs, ground mounted, 1 Sheet Aluminum, (breakaway) Double post, with all accessories | 2027-08-21 → 2027-08-28 (+7d) | 2027-08-26 → 2027-09-02 (+7d) | -105d → -111d |

| ID | Task | Start | Finish | Complete | Total float |
| --- | --- | --- | --- | --- | --- |
| 8 | **Speed table** | 2027-08-28 → 2027-09-04 (+7d) | 2027-09-05 → 2027-09-12 (+7d) |  |  |
| SDR-ST-CON-P1-5460 | Interlock speed table including interlock, flush kerb and marking | 2027-08-28 → 2027-09-04 (+7d) | 2027-09-05 → 2027-09-12 (+7d) |  | -105d → -111d |
| 6 | **ROAD - 02** |  | 2027-09-23 → 2027-09-30 (+7d) |  |  |
| 1 | **ROAD-01 From 0 to 400 m (9)** |  | 2027-09-12 → 2027-09-19 (+7d) |  |  |
| 11 | **Subgrade** |  | 2026-11-28 → 2026-12-05 (+7d) |  |  |
| SDR-ST-CON-P1-3390 | Subgrade layer works |  | 2026-11-28 → 2026-12-05 (+7d) |  | -5d → -11d |
| 2 | **Base Course** |  | 2026-12-06 → 2026-12-13 (+7d) |  |  |
| SDR-ST-CON-P1-3960 | Aggregate base course layer |  | 2026-12-06 → 2026-12-13 (+7d) |  | -3d → -9d |
| 3 | **Asphalt Works** | 2026-12-07 → 2026-12-14 (+7d) | 2027-01-24 → 2027-01-31 (+7d) |  |  |
| 1 | **Bituminous base course** | 2026-12-07 → 2026-12-14 (+7d) | 2026-12-28 → 2027-01-04 (+7d) |  |  |
| SDR-ST-CON-P1-4540 | Bituminous base course (Grading I - Class A 1st Layer with RC-01 | 2026-12-07 → 2026-12-14 (+7d) | 2026-12-17 → 2026-12-24 (+7d) |  | -3d → -9d |
| SDR-ST-CON-P1-4890 | Bituminous base course (Grading I - Class A 2nd layer with RC-02 | 2026-12-19 → 2026-12-26 (+7d) | 2026-12-28 → 2027-01-04 (+7d) |  | -3d → -9d |
| 2 | **Bituminous concrete wearing course** | 2026-12-31 → 2027-01-07 (+7d) | 2027-01-24 → 2027-01-31 (+7d) |  |  |
| SDR-ST-CON-P1-5130 | Bituminous concrete wearing course, (Grading I - Class A), including tack coat (RC2) | 2026-12-31 → 2027-01-07 (+7d) | 2027-01-24 → 2027-01-31 (+7d) |  | -3d → -9d |
| 4 | **Kerbstone Installation** | 2026-11-29 → 2026-12-06 (+7d) | 2027-01-18 → 2027-01-25 (+7d) |  |  |
| SDR-ST-CON-P1-3970 | Precast Concrete Curbstone, Type A2 | 2026-11-29 → 2026-12-06 (+7d) | 2026-12-21 → 2026-12-28 (+7d) |  | -5d → -11d |
| SDR-ST-CON-P1-4690 | Precast Concrete Curbstone, Type D | 2026-12-27 → 2027-01-03 (+7d) | 2027-01-18 → 2027-01-25 (+7d) |  | -5d → -11d |
| 5 | **Interlock Installation** | 2027-01-19 → 2027-01-26 (+7d) | 2027-03-07 → 2027-03-18 (+11d) |  |  |
| SDR-ST-CON-P1-4200 | Interlock Installation Part 1 | 2027-01-19 → 2027-01-26 (+7d) | 2027-02-10 → 2027-02-17 (+7d) |  | -5d → -11d |
| SDR-ST-CON-P1-4780 | Interlock Installation Part 2 | 2027-02-11 → 2027-02-18 (+7d) | 2027-03-07 → 2027-03-18 (+11d) |  | -5d → -11d |
| 6 | **Road Marking** | 2027-07-13 → 2027-07-20 (+7d) | 2027-08-12 → 2027-08-19 (+7d) |  |  |
| SDR-ST-CON-P1-5250 | Retroreflective Thermoplastic White Traffic lines | 2027-07-13 → 2027-07-20 (+7d) | 2027-07-20 → 2027-07-27 (+7d) |  | -105d → -111d |
| SDR-ST-CON-P1-5370 | Retroreflective Thermoplastic Yellow, Traffic lines | 2027-07-21 → 2027-07-28 (+7d) | 2027-07-28 → 2027-08-04 (+7d) |  | -105d → -111d |
| SDR-ST-CON-P1-5550 | Ceramic raised pavement markers | 2027-07-29 → 2027-08-05 (+7d) | 2027-08-05 → 2027-08-11 (+6d) |  | -105d → -111d |
| SDR-ST-CON-P1-5630 | Rumble strip | 2027-08-06 → 2027-08-12 (+6d) | 2027-08-12 → 2027-08-19 (+7d) |  | -105d → -111d |
| 7 | **Traffic Signage** | 2027-08-14 → 2027-08-21 (+7d) | 2027-09-01 → 2027-09-08 (+7d) |  |  |
| SDR-ST-CON-P1-5260 | Traffic signs, ground mounted, 1 Sheet Alumenium, (breakaway) Single post, with all accessories | 2027-08-14 → 2027-08-21 (+7d) | 2027-08-19 → 2027-08-26 (+7d) |  | -105d → -111d |
| SDR-ST-CON-P1-5380 | Traffic signs, ground mounted, 1 Sheet Aluminum, (breakaway) Double post, with all accessories | 2027-08-21 → 2027-08-28 (+7d) | 2027-08-26 → 2027-09-02 (+7d) |  | -105d → -111d |
| SDR-ST-CON-P1-5560 | Traffic signs, ground mounted, 2 Sheet Aluminum, (breakaway) Single post, with all accessories | 2027-08-28 → 2027-09-04 (+7d) | 2027-09-01 → 2027-09-08 (+7d) |  | -105d → -111d |
| 8 | **Speed table** | 2027-09-04 → 2027-09-11 (+7d) | 2027-09-12 → 2027-09-19 (+7d) |  |  |
| SDR-ST-CON-P1-5390 | Interlock speed table including interlock, flush kerb and marking | 2027-09-04 → 2027-09-11 (+7d) | 2027-09-12 → 2027-09-19 (+7d) |  | -105d → -111d |
| 2 | **ROAD-01 From 400 to 900 m (10)** |  | 2027-09-23 → 2027-09-30 (+7d) |  |  |
| 11 | **Subgrade** |  | 2026-12-03 → 2026-11-07 (-26d) |  |  |
| SDR-ST-CON-P1-3540 | Subgrade layer works |  | 2026-12-03 → 2026-11-07 A (-26d) | 75% → 100% | -24d → none |
| 2 | **Base Course** | 2026-12-05 → 2026-11-02 (-33d) | 2026-12-20 → 2026-12-14 (-6d) |  |  |
| SDR-ST-CON-P1-4130 | Aggregate base course layer | 2026-12-05 → 2026-11-02 A (-33d) | 2026-12-20 → 2026-12-14 (-6d) | 0% → 40% | -24d → -19d |
| 3 | **Asphalt Works** | 2026-12-21 → 2026-12-15 (-6d) | 2027-01-30 → 2027-01-24 (-6d) |  |  |
| 1 | **Bituminous base course** | 2026-12-21 → 2026-12-15 (-6d) | 2027-01-05 → 2026-12-30 (-6d) |  |  |
| SDR-ST-CON-P1-4600 | Bituminous base course (Grading I - Class A 1st Layer with RC-01 | 2026-12-21 → 2026-12-15 (-6d) | 2026-12-29 → 2026-12-23 (-6d) |  | -24d → -19d |
| SDR-ST-CON-P1-4930 | Bituminous base course (Grading I - Class A 2nd layer with RC-02 | 2026-12-30 → 2026-12-24 (-6d) | 2027-01-05 → 2026-12-30 (-6d) |  | -24d → -19d |
| 2 | **Bituminous concrete wearing course** | 2027-01-06 → 2026-12-31 (-6d) | 2027-01-30 → 2027-01-24 (-6d) |  |  |
| SDR-ST-CON-P1-5180 | Bituminous concrete wearing course, (Grading I - Class A), including tack coat (RC2) | 2027-01-06 → 2026-12-31 (-6d) | 2027-01-30 → 2027-01-24 (-6d) |  | -24d → -19d |
| 4 | **Kerbstone Installation** | 2026-12-05 → 2026-11-29 (-6d) | 2027-01-24 → 2027-01-18 (-6d) |  |  |
| SDR-ST-CON-P1-4140 | Precast Concrete Curbstone, Type A2 | 2026-12-05 → 2026-11-29 (-6d) | 2026-12-27 → 2026-12-21 (-6d) |  | -19d → -14d |
| SDR-ST-CON-P1-4810 | Precast Concrete Curbstone, Type D | 2027-01-02 → 2026-12-27 (-6d) | 2027-01-24 → 2027-01-18 (-6d) |  | -19d → -14d |
| 5 | **Interlock Installation** | 2027-01-31 → 2027-01-25 (-6d) | 2027-03-24 → 2027-03-18 (-6d) |  |  |
| SDR-ST-CON-P1-4350 | Interlock Installation Part 1 | 2027-01-31 → 2027-01-25 (-6d) | 2027-02-23 → 2027-02-16 (-7d) |  | -24d → -19d |
| SDR-ST-CON-P1-4920 | Interlock Installation Part 2 | 2027-02-25 → 2027-02-18 (-7d) | 2027-03-24 → 2027-03-18 (-6d) |  | -24d → -19d |
| 6 | **Road Marking** | 2027-07-13 → 2027-07-20 (+7d) | 2027-08-23 → 2027-08-30 (+7d) |  |  |
| SDR-ST-CON-P1-5290 | Retroreflective Thermoplastic White Traffic lines | 2027-07-13 → 2027-07-20 (+7d) | 2027-07-24 → 2027-07-31 (+7d) |  | -113d → -119d |
| SDR-ST-CON-P1-5410 | Retroreflective Thermoplastic Yellow, Traffic lines | 2027-07-25 → 2027-08-01 (+7d) | 2027-08-03 → 2027-08-09 (+6d) |  | -113d → -119d |
| SDR-ST-CON-P1-5580 | Ceramic raised pavement markers | 2027-08-04 → 2027-08-10 (+6d) | 2027-08-12 → 2027-08-19 (+7d) |  | -113d → -119d |
| SDR-ST-CON-P1-5640 | Rumble strip | 2027-08-14 → 2027-08-21 (+7d) | 2027-08-23 → 2027-08-30 (+7d) |  | -113d → -119d |
| 7 | **Traffic Signage** | 2027-08-24 → 2027-08-31 (+7d) | 2027-09-13 → 2027-09-20 (+7d) |  |  |
| SDR-ST-CON-P1-5420 | Traffic signs, ground mounted, 1 Sheet Alumenium, (breakaway) Single post, with all accessories | 2027-08-24 → 2027-08-31 (+7d) | 2027-09-02 → 2027-09-09 (+7d) |  | -113d → -119d |
| SDR-ST-CON-P1-5590 | Traffic signs, ground mounted, 1 Sheet Aluminum, (breakaway) Double post, with all accessories | 2027-09-04 → 2027-09-11 (+7d) | 2027-09-13 → 2027-09-20 (+7d) |  | -113d → -119d |
| 8 | **Speed table** | 2027-09-14 → 2027-09-21 (+7d) | 2027-09-23 → 2027-09-30 (+7d) |  |  |
| SDR-ST-CON-P1-5430 | Interlock speed table including interlock, flush kerb and marking | 2027-09-14 → 2027-09-21 (+7d) | 2027-09-23 → 2027-09-30 (+7d) |  | -113d → -119d |
| 3 | **ROAD-01 From 900 to 1239 m (11)** |  | 2027-09-15 → 2027-09-22 (+7d) |  |  |
| 11 | **Subgrade** |  | 2026-11-30 → 2026-12-07 (+7d) |  |  |
| SDR-ST-CON-P1-3740 | Subgrade layer works |  | 2026-11-30 → 2026-12-07 (+7d) | 60% → 80% | -11d → -17d |
| 2 | **Base Course** | 2026-12-01 → 2026-11-08 (-23d) | 2026-12-10 → 2026-12-17 (+7d) |  |  |
| SDR-ST-CON-P1-4290 | Aggregate base course layer | 2026-12-01 → 2026-11-08 A (-23d) | 2026-12-10 → 2026-12-17 (+7d) | 0% → 10% | -11d → -17d |
| 3 | **Asphalt Works** | 2026-12-12 → 2026-12-19 (+7d) | 2027-02-02 → 2027-02-09 (+7d) |  |  |
| 1 | **Bituminous base course** | 2026-12-12 → 2026-12-19 (+7d) | 2027-01-06 → 2027-01-13 (+7d) |  |  |
| SDR-ST-CON-P1-4650 | Bituminous base course (Grading I - Class A 1st Layer with RC-01 | 2026-12-12 → 2026-12-19 (+7d) | 2026-12-23 → 2026-12-30 (+7d) |  | -11d → -17d |
| SDR-ST-CON-P1-4980 | Bituminous base course (Grading I - Class A 2nd layer with RC-02 | 2026-12-24 → 2026-12-31 (+7d) | 2027-01-06 → 2027-01-13 (+7d) |  | -11d → -17d |
| 2 | **Bituminous concrete wearing course** | 2027-01-10 → 2027-01-17 (+7d) | 2027-02-02 → 2027-02-09 (+7d) |  |  |
| SDR-ST-CON-P1-5230 | Bituminous concrete wearing course, (Grading I - Class A), including tack coat (RC2) | 2027-01-10 → 2027-01-17 (+7d) | 2027-02-02 → 2027-02-09 (+7d) |  | -11d → -17d |
| 4 | **Kerbstone Installation** | 2027-01-13 → 2027-01-20 (+7d) | 2027-03-06 → 2027-03-17 (+11d) |  |  |

| ID | Task | Start | Finish | Total float |
| --- | --- | --- | --- | --- |
| SDR-ST-CON-P1-4300 | Precast Concrete Curbstone, Type A2 | 2027-01-13 → 2027-01-20 (+7d) | 2027-02-04 → 2027-02-11 (+7d) | -44d → -50d |
| SDR-ST-CON-P1-4860 | Precast Concrete Curbstone, Type D | 2027-02-10 → 2027-02-17 (+7d) | 2027-03-06 → 2027-03-17 (+11d) | -44d → -50d |
| 5 | **Interlock Installation** | 2027-03-07 → 2027-03-18 (+11d) | 2027-04-26 → 2027-05-03 (+7d) |  |
| SDR-ST-CON-P1-4450 | Interlock Installation Part 1 | 2027-03-07 → 2027-03-18 (+11d) | 2027-04-03 → 2027-04-10 (+7d) | -44d → -50d |
| SDR-ST-CON-P1-4940 | Interlock Installation Part 2 | 2027-04-04 → 2027-04-11 (+7d) | 2027-04-26 → 2027-05-03 (+7d) | -44d → -50d |
| 6 | **Road Marking** | 2027-05-11 → 2027-05-24 (+13d) | 2027-06-22 → 2027-06-29 (+7d) |  |
| SDR-ST-CON-P1-5350 | Retroreflective Thermoplastic White Traffic lines | 2027-05-11 → 2027-05-24 (+13d) | 2027-05-25 → 2027-06-01 (+7d) | -56d → -62d |
| SDR-ST-CON-P1-5510 | Retroreflective Thermoplastic Yellow, Traffic lines | 2027-05-26 → 2027-06-02 (+7d) | 2027-06-03 → 2027-06-10 (+7d) | -56d → -62d |
| SDR-ST-CON-P1-5600 | Ceramic raised pavement markers | 2027-06-05 → 2027-06-12 (+7d) | 2027-06-13 → 2027-06-20 (+7d) | -56d → -62d |
| SDR-ST-CON-P1-5650 | Rumble strip | 2027-06-14 → 2027-06-21 (+7d) | 2027-06-22 → 2027-06-29 (+7d) | -56d → -62d |
| 7 | **Traffic Signage** | 2027-06-23 → 2027-06-30 (+7d) | 2027-07-11 → 2027-07-18 (+7d) |  |
| SDR-ST-CON-P1-5360 | Traffic signs, ground mounted, 1 Sheet Alumenium, (breakaway) Single post, with all accessories | 2027-06-23 → 2027-06-30 (+7d) | 2027-06-29 → 2027-07-06 (+7d) | -56d → -62d |
| SDR-ST-CON-P1-5520 | Traffic signs, ground mounted, 1 Sheet Aluminum, (breakaway) Double post, with all accessories | 2027-06-30 → 2027-07-07 (+7d) | 2027-07-05 → 2027-07-12 (+7d) | -56d → -62d |
| SDR-ST-CON-P1-5660 | Traffic signs, ground mounted, 2 Sheet Aluminum, (breakaway) Single post, with all accessories | 2027-07-06 → 2027-07-13 (+7d) | 2027-07-11 → 2027-07-18 (+7d) | -56d → -62d |
| 8 | **Speed table** | 2027-09-06 → 2027-09-13 (+7d) | 2027-09-15 → 2027-09-22 (+7d) |  |
| SDR-ST-CON-P1-5530 | Interlock speed table including interlock, flush kerb and marking | 2027-09-06 → 2027-09-13 (+7d) | 2027-09-15 → 2027-09-22 (+7d) | -105d → -111d |
| 12 | **ELECTRICAL WORKS** |  | 2027-11-21 → 2027-11-28 (+7d) |  |
| 2 | **MV Network** |  | 2027-08-18 → 2027-08-25 (+7d) |  |
| 5 | **ROAD - 01** |  | 2027-08-18 → 2027-08-25 (+7d) |  |
| 4 | **ROAD-01 From 1125 to 1765 m (7)** |  | 2027-06-26 → 2027-07-03 (+7d) |  |
| 6 | **Excavation** |  | 2026-12-23 → 2026-12-30 (+7d) |  |
| SDR-ST-CON-P1-6090 | Excavation Works Part 2 |  | 2026-11-29 → 2026-12-06 (+7d) | 20d → 14d |
| SDR-ST-CON-P1-6100 | Excavation Works Part 3 | 2026-11-30 → 2026-12-07 (+7d) | 2026-12-23 → 2026-12-30 (+7d) | 20d → 14d |
| 7 | **Pipe laying** | 2027-04-10 → 2027-04-17 (+7d) | 2027-05-03 → 2027-05-10 (+7d) |  |
| SDR-ST-CON-P1-2270 | Pipe Laying | 2027-04-10 → 2027-04-17 (+7d) | 2027-05-03 → 2027-05-10 (+7d) | -66d → -72d |
| 8 | **Backfilling** | 2027-05-04 → 2027-05-11 (+7d) | 2027-06-01 → 2027-06-08 (+7d) |  |
| SDR-ST-CON-P1-3000 | Backfilling Works | 2027-05-04 → 2027-05-11 (+7d) | 2027-06-01 → 2027-06-08 (+7d) | -66d → -72d |
| 9 | **Pulling Cable** | 2027-06-02 → 2027-06-09 (+7d) | 2027-06-26 → 2027-07-03 (+7d) |  |
| SDR-ST-CON-P1-3900 | Pulling Cable | 2027-06-02 → 2027-06-09 (+7d) | 2027-06-26 → 2027-07-03 (+7d) | -66d → -72d |
| 3 | **ROAD-01 From 470 to 1125 m (6)** |  | 2027-06-24 → 2027-07-01 (+7d) |  |
| 6 | **Excavation** |  | 2026-12-26 → 2027-01-02 (+7d) |  |
| SDR-ST-CON-P1-6110 | Excavation Works Part2 |  | 2026-12-05 → 2026-12-12 (+7d) | 18d → 12d |
| SDR-ST-CON-P1-6120 | Excavation Works Part 3 | 2026-12-06 → 2026-12-13 (+7d) | 2026-12-26 → 2027-01-02 (+7d) | 18d → 12d |
| 7 | **Pipe laying** | 2027-04-10 → 2027-04-17 (+7d) | 2027-05-03 → 2027-05-10 (+7d) |  |
| SDR-ST-CON-P1-2420 | Pipe Laying | 2027-04-10 → 2027-04-17 (+7d) | 2027-05-03 → 2027-05-10 (+7d) | -66d → -72d |
| 8 | **Backfilling** | 2027-05-04 → 2027-05-11 (+7d) | 2027-06-01 → 2027-06-08 (+7d) |  |
| SDR-ST-CON-P1-3150 | Backfilling Works | 2027-05-04 → 2027-05-11 (+7d) | 2027-06-01 → 2027-06-08 (+7d) | -66d → -72d |
| 9 | **Pulling Cable** | 2027-06-02 → 2027-06-09 (+7d) | 2027-06-24 → 2027-07-01 (+7d) |  |
| SDR-ST-CON-P1-4000 | Pulling Cable | 2027-06-02 → 2027-06-09 (+7d) | 2027-06-24 → 2027-07-01 (+7d) | -66d → -72d |
| 2 | **ROAD-01 N 03** |  | 2027-08-18 → 2027-08-25 (+7d) |  |
| 6 | **Excavation** |  | 2026-12-29 → 2027-01-05 (+7d) |  |
| SDR-ST-CON-P1-6130 | Excavation Works Part 2 |  | 2026-12-08 → 2026-12-15 (+7d) | 16d → 10d |
| SDR-ST-CON-P1-6140 | Excavation Works Part 3 | 2026-12-09 → 2026-12-16 (+7d) | 2026-12-29 → 2027-01-05 (+7d) | 16d → 10d |
| 7 | **Pipe laying** | 2027-04-10 → 2027-04-17 (+7d) | 2027-05-03 → 2027-05-10 (+7d) |  |
| SDR-ST-CON-P1-2500 | Pipe Laying | 2027-04-10 → 2027-04-17 (+7d) | 2027-05-03 → 2027-05-10 (+7d) | -65d → -71d |
| 8 | **Backfilling** | 2027-07-05 → 2027-07-12 (+7d) | 2027-07-27 → 2027-08-03 (+7d) |  |
| SDR-ST-CON-P1-3280 | Backfilling Works | 2027-07-05 → 2027-07-12 (+7d) | 2027-07-27 → 2027-08-03 (+7d) | -95d → -101d |
| 9 | **Pulling Cable** | 2027-07-28 → 2027-08-04 (+7d) | 2027-08-18 → 2027-08-25 (+7d) |  |
| SDR-ST-CON-P1-4250 | Pulling Cable | 2027-07-28 → 2027-08-04 (+7d) | 2027-08-18 → 2027-08-25 (+7d) | -95d → -101d |
| 1 | **ROAD-01 N 01** |  | 2027-06-24 → 2027-07-01 (+7d) |  |
| 6 | **Excavation** |  | 2027-04-13 → 2027-04-20 (+7d) |  |
| SDR-ST-CON-P1-1730 | Excavation Works Part 1 |  | 2026-12-03 → 2026-12-07 (+4d) | 1d → 2d |
| SDR-ST-CON-P1-6150 | Excavation Works Part 2 | 2027-02-23 → 2027-03-02 (+7d) | 2027-03-22 → 2027-03-29 (+7d) | -42d → -48d |
| SDR-ST-CON-P1-6160 | Excavation Works Part 3 | 2027-03-23 → 2027-03-30 (+7d) | 2027-04-13 → 2027-04-20 (+7d) | -42d → -48d |
| 7 | **Pipe laying** | 2027-04-14 → 2027-04-21 (+7d) | 2027-05-06 → 2027-05-13 (+7d) |  |
| SDR-ST-CON-P1-2430 | Pipe Laying | 2027-04-14 → 2027-04-21 (+7d) | 2027-05-06 → 2027-05-13 (+7d) | -42d → -48d |
| 8 | **Backfilling** | 2027-05-08 → 2027-05-15 (+7d) | 2027-06-03 → 2027-06-10 (+7d) |  |
| SDR-ST-CON-P1-3160 | Backfilling Works | 2027-05-08 → 2027-05-15 (+7d) | 2027-06-03 → 2027-06-10 (+7d) | -41d → -47d |
| 9 | **Pulling Cable** | 2027-06-05 → 2027-06-12 (+7d) | 2027-06-24 → 2027-07-01 (+7d) |  |
| SDR-ST-CON-P1-4010 | Pulling Cable | 2027-06-05 → 2027-06-12 (+7d) | 2027-06-24 → 2027-07-01 (+7d) | -41d → -47d |
| 6 | **ROAD - 02** |  | 2027-06-26 → 2027-07-03 (+7d) |  |
| 3 | **ROAD-01 From 0 to 400 m (9) 2 Way 150 mm** |  | 2027-06-20 → 2027-06-27 (+7d) |  |
| 6 | **Excavation** |  | 2027-03-24 → 2027-03-31 (+7d) |  |
| SDR-ST-CON-P1-1920 | Excavation Works Part 1 |  | 2026-12-14 → 2026-12-15 (+1d) | 1d → 2d |
| SDR-ST-CON-P1-6170 | Excavation Works Part 2 | 2026-12-15 → 2026-12-16 (+1d) | 2027-01-06 → 2027-01-07 (+1d) | 18d → 17d |
| SDR-ST-CON-P1-6180 | Excavation Works Part 3 | 2027-02-27 → 2027-03-06 (+7d) | 2027-03-24 → 2027-03-31 (+7d) | -24d → -30d |
| 7 | **Pipe laying** | 2027-04-10 → 2027-04-17 (+7d) | 2027-05-02 → 2027-05-09 (+7d) |  |
| SDR-ST-CON-P1-2660 | Pipe Laying | 2027-04-10 → 2027-04-17 (+7d) | 2027-05-02 → 2027-05-09 (+7d) | -37d → -43d |
| 8 | **Backfilling** | 2027-05-03 → 2027-05-10 (+7d) | 2027-05-30 → 2027-06-06 (+7d) |  |
| SDR-ST-CON-P1-3430 | Backfilling Works | 2027-05-03 → 2027-05-10 (+7d) | 2027-05-30 → 2027-06-06 (+7d) | -37d → -43d |

| ID | Task | Start | Finish | Total float |
| --- | --- | --- | --- | --- |
| 9 | **Pulling Cable** | 2027-05-31 → 2027-06-07 (+7d) | 2027-06-20 → 2027-06-27 (+7d) |  |
| SDR-ST-CON-P1-4320 | Pulling Cable | 2027-05-31 → 2027-06-07 (+7d) | 2027-06-20 → 2027-06-27 (+7d) | -37d → -43d |
| 2 | **ROAD-01 From 400 to 900 m (10) 2 Way 150 mm** |  | 2027-06-26 → 2027-07-03 (+7d) |  |
| 6 | **Excavation** |  | 2027-04-14 → 2027-04-21 (+7d) |  |
| SDR-ST-CON-P1-1840 | Excavation Works Part 1 |  | 2026-12-17 → 2026-12-16 (-1d) | 1d → 2d |
| SDR-ST-CON-P1-6190 | Excavation Works Part 2 | 2027-02-23 → 2027-03-02 (+7d) | 2027-03-22 → 2027-03-29 (+7d) | -55d → -61d |
| SDR-ST-CON-P1-6200 | Excavation Works Part 3 | 2027-03-23 → 2027-03-30 (+7d) | 2027-04-14 → 2027-04-21 (+7d) | -55d → -61d |
| 7 | **Pipe laying** | 2027-04-15 → 2027-04-22 (+7d) | 2027-05-08 → 2027-05-15 (+7d) |  |
| SDR-ST-CON-P1-2590 | Pipe Laying | 2027-04-15 → 2027-04-22 (+7d) | 2027-05-08 → 2027-05-15 (+7d) | -37d → -43d |
| 8 | **Backfilling** | 2027-05-09 → 2027-05-22 (+13d) | 2027-06-05 → 2027-06-12 (+7d) |  |
| SDR-ST-CON-P1-3340 | Backfilling Works | 2027-05-09 → 2027-05-22 (+13d) | 2027-06-05 → 2027-06-12 (+7d) | -37d → -43d |
| 9 | **Pulling Cable** | 2027-06-06 → 2027-06-13 (+7d) | 2027-06-26 → 2027-07-03 (+7d) |  |
| SDR-ST-CON-P1-4050 | Pulling Cable | 2027-06-06 → 2027-06-13 (+7d) | 2027-06-26 → 2027-07-03 (+7d) | -37d → -43d |
| 1 | **ROAD-01 From 900 to 1239 m (11) 2 Way 150 mm** | 2026-12-02 → 2026-11-29 (-3d) | 2027-06-20 → 2027-06-27 (+7d) |  |
| 6 | **Excavation** | 2026-12-02 → 2026-11-29 (-3d) | 2027-02-09 → 2027-02-06 (-3d) |  |
| SDR-ST-CON-P1-2000 | Excavation Works Part 1 | 2026-12-02 → 2026-11-29 (-3d) | 2026-12-26 → 2026-12-22 (-4d) | 7d → 10d |
| SDR-ST-CON-P1-6210 | Excavation Works Part 2 | 2026-12-27 → 2026-12-23 (-4d) | 2027-01-18 → 2027-01-14 (-4d) | 7d → 10d |
| SDR-ST-CON-P1-6220 | Excavation Works Part 3 | 2027-01-19 → 2027-01-16 (-3d) | 2027-02-09 → 2027-02-06 (-3d) | 10d → 13d |
| 7 | **Pipe laying** | 2027-04-10 → 2027-04-17 (+7d) | 2027-05-02 → 2027-05-09 (+7d) |  |
| SDR-ST-CON-P1-2750 | Pipe Laying | 2027-04-10 → 2027-04-17 (+7d) | 2027-05-02 → 2027-05-09 (+7d) | -35d → -41d |
| 8 | **Backfilling** | 2027-05-03 → 2027-05-10 (+7d) | 2027-05-30 → 2027-06-06 (+7d) |  |
| SDR-ST-CON-P1-3460 | Backfilling Works | 2027-05-03 → 2027-05-10 (+7d) | 2027-05-30 → 2027-06-06 (+7d) | -35d → -41d |
| 9 | **Pulling Cable** | 2027-05-31 → 2027-06-07 (+7d) | 2027-06-20 → 2027-06-27 (+7d) |  |
| SDR-ST-CON-P1-3980 | Pulling Cable | 2027-05-31 → 2027-06-07 (+7d) | 2027-06-20 → 2027-06-27 (+7d) | -35d → -41d |
| 1 | **Earthing System** | 2027-01-19 → 2027-01-16 (-3d) | 2027-02-06 → 2027-02-02 (-4d) |  |
| SDR-ST-CON-P1-4840 | Installation of Earthing System Including lighting poles circuits | 2027-01-19 → 2027-01-16 (-3d) | 2027-02-06 → 2027-02-02 (-4d) | 7d → 10d |
| 16 | **Street Lighting Network** |  | 2027-11-21 → 2027-11-28 (+7d) |  |
| 7 | **ROAD - 01** |  | 2027-11-21 → 2027-11-28 (+7d) |  |
| 2 | **ROAD-01 From 470 to 1125 m (6)** |  | 2027-04-26 → 2027-05-03 (+7d) |  |
| 10 | **Excavation** |  | 2027-01-25 → 2027-02-01 (+7d) |  |
| SDR-ST-CON-P1-1180 | Excavation for LV Cable trench Section 1 |  | 2026-12-14 → 2026-12-21 (+7d) | -61d → -67d |
| SDR-ST-CON-P1-1560 | Excavation for LV Cable trench Section 2 |  | 2027-01-04 → 2027-01-11 (+7d) | -61d → -67d |
| SDR-ST-CON-P1-2250 | Excavation for LV Cable trench Section 3 |  | 2027-01-25 → 2027-02-01 (+7d) | -61d → -67d |
| 11 | **Install Footings** | 2027-01-26 → 2027-02-02 (+7d) | 2027-02-18 → 2027-02-27 (+9d) |  |
| SDR-ST-CON-P1-2980 | Install Footings | 2027-01-26 → 2027-02-02 (+7d) | 2027-02-18 → 2027-02-27 (+9d) | -61d → -67d |
| 12 | **Backfilling** | 2027-02-20 → 2027-02-28 (+8d) | 2027-03-03 → 2027-03-15 (+12d) |  |
| SDR-ST-CON-P1-3870 | Backfilling over LV Cables of Street lighting | 2027-02-20 → 2027-02-28 (+8d) | 2027-03-03 → 2027-03-15 (+12d) | -61d → -67d |
| 13 | **Install pole** | 2027-03-04 → 2027-03-16 (+12d) | 2027-04-26 → 2027-05-03 (+7d) |  |
| SDR-ST-CON-P1-4420 | Install Pole Part 1 | 2027-03-04 → 2027-03-16 (+12d) | 2027-04-01 → 2027-04-08 (+7d) | -61d → -67d |
| SDR-ST-CON-P1-5170 | Install Pole Part 2 | 2027-04-03 → 2027-04-10 (+7d) | 2027-04-26 → 2027-05-03 (+7d) | -61d → -67d |
| 3 | **ROAD-01 From 1125 to 1765 m (7)** |  | 2027-04-19 → 2027-04-26 (+7d) |  |
| 10 | **Excavation** |  | 2027-01-10 → 2027-01-17 (+7d) |  |
| SDR-ST-CON-P1-1590 | Excavation for LV Cable trench Section 1 |  | 2026-12-14 → 2026-12-21 (+7d) | -39d → -45d |
| SDR-ST-CON-P1-2390 | Excavation for LV Cable trench Section 2 |  | 2026-12-29 → 2027-01-05 (+7d) | -39d → -45d |
| SDR-ST-CON-P1-3120 | Excavation for LV Cable trench Section 3 |  | 2027-01-10 → 2027-01-17 (+7d) | -39d → -45d |
| 11 | **Install Footings** | 2027-01-11 → 2027-01-18 (+7d) | 2027-02-02 → 2027-02-09 (+7d) |  |
| SDR-ST-CON-P1-3990 | Install Footings | 2027-01-11 → 2027-01-18 (+7d) | 2027-02-02 → 2027-02-09 (+7d) | -39d → -45d |
| 12 | **Backfilling** | 2027-02-03 → 2027-02-10 (+7d) | 2027-02-24 → 2027-03-03 (+7d) |  |
| SDR-ST-CON-P1-4680 | Backfilling over LV Cables of Street lighting | 2027-02-03 → 2027-02-10 (+7d) | 2027-02-24 → 2027-03-03 (+7d) | -39d → -45d |
| 13 | **Install pole** | 2027-02-25 → 2027-03-04 (+7d) | 2027-04-19 → 2027-04-26 (+7d) |  |
| SDR-ST-CON-P1-5050 | Install Pole Part 1 | 2027-02-25 → 2027-03-04 (+7d) | 2027-03-25 → 2027-04-01 (+7d) | -39d → -45d |
| SDR-ST-CON-P1-5760 | Install Pole Part 2 | 2027-03-27 → 2027-04-03 (+7d) | 2027-04-19 → 2027-04-26 (+7d) | -39d → -45d |
| 1 | **ROAD-01 From 0 to 470 m (3)** |  | 2027-07-12 → 2027-07-19 (+7d) |  |
| 10 | **Excavation** |  | 2026-12-26 → 2027-01-02 (+7d) |  |
| SDR-ST-CON-P1-1500 | Excavation for LV Cable trench Section 1 |  | 2026-12-02 → 2026-12-09 (+7d) | -42d → -48d |
| SDR-ST-CON-P1-3040 | Excavation for LV Cable trench Section 3 |  | 2026-12-26 → 2027-01-02 (+7d) | -35d → -41d |
| SDR-ST-CON-P1-2320 | Excavation for LV Cable trench Section 2 |  | 2026-12-14 → 2026-12-21 (+7d) | -35d → -41d |
| 11 | **Install Footings** | 2026-12-29 → 2027-01-05 (+7d) | 2027-01-21 → 2027-01-28 (+7d) |  |
| SDR-ST-CON-P1-3920 | Install Footings | 2026-12-29 → 2027-01-05 (+7d) | 2027-01-21 → 2027-01-28 (+7d) | -37d → -43d |
| 12 | **Backfilling** | 2027-01-23 → 2027-01-30 (+7d) | 2027-02-08 → 2027-02-15 (+7d) |  |
| SDR-ST-CON-P1-4850 | Backfilling over LV Cables of Street lighting | 2027-01-23 → 2027-01-30 (+7d) | 2027-02-08 → 2027-02-15 (+7d) | -37d → -43d |
| 13 | **Install pole** | 2027-02-18 → 2027-02-27 (+9d) | 2027-07-12 → 2027-07-19 (+7d) |  |
| SDR-ST-CON-P1-5330 | Install Pole Part 1 | 2027-02-18 → 2027-02-27 (+9d) | 2027-03-21 → 2027-03-27 (+6d) | -45.6d → -51d |
| SDR-ST-CON-P1-5780 | Install Pole Part 2 | 2027-03-30 → 2027-04-06 (+7d) | 2027-04-22 → 2027-04-29 (+7d) | -53d → -59d |
| SDR-ST-CON-P1-6070 | Install Pole Part 3 | 2027-04-27 → 2027-05-04 (+7d) | 2027-05-10 → 2027-05-23 (+13d) | -56d → -62d |
| SDR-ST-CON-P1-6080 | Install Pole Part 4 | 2027-07-05 → 2027-07-12 (+7d) | 2027-07-12 → 2027-07-19 (+7d) | -70d → -76d |
| 4 | **ROAD-01 N (1)** |  | 2027-04-14 → 2027-04-20 (+6d) |  |
| 10 | **Excavation** |  | 2026-12-30 → 2027-01-06 (+7d) |  |
| SDR-ST-CON-P1-3190 | Excavation for LV Cable trench Section 3 |  | 2026-12-30 → 2027-01-06 (+7d) | -37d → -43d |
| SDR-ST-CON-P1-1700 | Excavation for LV Cable trench Section 1 |  | 2026-12-03 → 2026-12-10 (+7d) | -42d → -48d |

| ID | Task | Start | Finish | Complete | Total float |
| --- | --- | --- | --- | --- | --- |
| SDR-ST-CON-P1-2410 | Excavation for LV Cable trench Section 2 |  | 2026-12-17 → 2026-12-24 (+7d) |  | -37d → -43d |
| 11 | **Install Footings** | 2026-12-31 → 2027-01-07 (+7d) | 2027-01-24 → 2027-01-31 (+7d) |  |  |
| SDR-ST-CON-P1-4110 | Install Footings | 2026-12-31 → 2027-01-07 (+7d) | 2027-01-24 → 2027-01-31 (+7d) |  | -37d → -43d |
| 12 | **Backfilling** | 2027-01-25 → 2027-02-01 (+7d) | 2027-02-08 → 2027-02-15 (+7d) |  |  |
| SDR-ST-CON-P1-4960 | Backfilling over LV Cables of Street lighting | 2027-01-25 → 2027-02-01 (+7d) | 2027-02-08 → 2027-02-15 (+7d) |  | -37d → -43d |
| 13 | **Install pole** | 2027-02-18 → 2027-02-27 (+9d) | 2027-04-14 → 2027-04-20 (+6d) |  |  |
| SDR-ST-CON-P1-5340 | Install Pole Part 1 | 2027-02-18 → 2027-02-27 (+9d) | 2027-03-21 → 2027-03-27 (+6d) |  | -45.6d → -51d |
| SDR-ST-CON-P1-5790 | Install Pole Part 2 | 2027-03-21 → 2027-03-28 (+7d) | 2027-04-14 → 2027-04-20 (+6d) |  | -45.6d → -51d |
| 5 | **Road Crossing & Drawpits** |  | 2027-02-21 → 2026-11-15 (-98d) |  |  |
| 1 | **ROAD - 01** |  | 2027-02-21 → 2026-11-15 (-98d) |  |  |
| 1 | **ROAD-01 From 470 to 1125 m (6)** |  | 2026-12-29 → 2026-11-15 (-44d) |  |  |
| 1 | **Road crossing Ducts & Drawpits** |  | 2026-12-29 → 2026-11-15 (-44d) |  |  |
| 6 | **Testing** | 2026-12-15 → 2026-10-14 (-62d) | 2026-12-22 → 2026-10-20 (-63d) |  |  |
| SDR-ST-CON-P1-3530 | Testing ST GRP Pipes | 2026-12-15 → 2026-10-14 A (-62d) | 2026-12-22 → 2026-10-20 A (-63d) | 0% → 100% | -12d → none |
| 3 | **Backfilling** | 2026-12-23 → 2026-10-11 (-73d) | 2026-12-29 → 2026-11-15 (-44d) |  |  |
| SDR-ST-CON-P1-3810 | Backfilling ST GRP Pipes | 2026-12-23 → 2026-10-11 A (-73d) | 2026-12-29 → 2026-11-15 A (-44d) | 0% → 100% | -12d → none |
| 2 | **ROAD-01 From 1125 to 1765 m (7)** |  | 2027-01-03 → 2026-11-07 (-57d) |  |  |
| 1 | **Road crossing Ducts & Drawpits** |  | 2027-01-03 → 2026-11-07 (-57d) |  |  |
| 6 | **Testing** | 2026-12-12 → 2026-10-17 (-56d) | 2026-12-21 → 2026-10-21 (-61d) |  |  |
| SDR-ST-CON-P1-3250 | Testing ST GRP Pipes | 2026-12-12 → 2026-10-17 A (-56d) | 2026-12-21 → 2026-10-21 A (-61d) | 0% → 100% | -16d → none |
| 3 | **Backfilling** | 2026-12-22 → 2026-10-20 (-63d) | 2027-01-03 → 2026-11-07 (-57d) |  |  |
| SDR-ST-CON-P1-3670 | Backfilling ST GRP Pipes | 2026-12-22 → 2026-10-20 A (-63d) | 2027-01-03 → 2026-11-07 A (-57d) | 0% → 100% | -16d → none |
| 3 | **ROAD-01 From 0 to 470 m (3)** |  | 2026-12-19 → 2026-11-13 (-36d) |  |  |
| 1 | **Road crossing Ducts & Drawpits** |  | 2026-12-19 → 2026-11-13 (-36d) |  |  |
| 6 | **Testing** | 2026-11-22 → 2026-10-19 (-34d) | 2026-12-02 → 2026-10-24 (-39d) |  |  |
| SDR-ST-CON-P1-3510 | Testing ST GRP Pipes | 2026-11-22 → 2026-10-19 A (-34d) | 2026-12-02 → 2026-10-24 A (-39d) | 0% → 100% | 41d → none |
| 3 | **Backfilling** | 2026-12-05 → 2026-10-25 (-41d) | 2026-12-19 → 2026-11-13 (-36d) |  |  |
| SDR-ST-CON-P1-3760 | Backfilling ST GRP Pipes | 2026-12-05 → 2026-10-25 A (-41d) | 2026-12-19 → 2026-11-13 A (-36d) | 0% → 100% | 41d → none |
| 4 | **ROAD-01 N (1)** | 2026-11-22 → 2026-10-04 (-49d) | 2027-02-21 → 2026-11-14 (-99d) |  |  |
| 1 | **Road crossing Ducts & Drawpits** | 2026-11-22 → 2026-10-04 (-49d) | 2027-02-21 → 2026-11-14 (-99d) |  |  |
| 1 | **Excavation** | 2026-11-22 → 2026-10-04 (-49d) | 2026-12-15 → 2026-10-20 (-56d) |  |  |
| SDR-ST-CON-P1-1710 | Excavation for GRP Pipes Section 1 | 2026-11-22 → 2026-10-04 A (-49d) | 2026-12-15 → 2026-10-20 A (-56d) | 0% → 100% | -14d → none |
| 7 | **bedding Works** | 2026-12-16 → 2026-10-10 (-67d) | 2027-01-09 → 2026-10-21 (-80d) |  |  |
| SDR-ST-CON-P1-2360 | Sand bedding for GRP Pipes | 2026-12-16 → 2026-10-10 A (-67d) | 2027-01-09 → 2026-10-21 A (-80d) | 0% → 100% | -14d → none |
| 2 | **Pipes Laying** | 2027-01-10 → 2026-10-11 (-91d) | 2027-01-23 → 2026-10-24 (-91d) |  |  |
| SDR-ST-CON-P1-3090 | Install ST GRP Pipes | 2027-01-10 → 2026-10-11 A (-91d) | 2027-01-23 → 2026-10-24 A (-91d) | 0% → 100% | -14d → none |
| 6 | **Testing** | 2027-01-24 → 2026-10-20 (-96d) | 2027-02-08 → 2026-10-26 (-105d) |  |  |
| SDR-ST-CON-P1-3520 | Testing ST GRP Pipes | 2027-01-24 → 2026-10-20 A (-96d) | 2027-02-08 → 2026-10-26 A (-105d) | 0% → 100% | -14d → none |
| 3 | **Backfilling** | 2027-02-10 → 2026-11-01 (-101d) | 2027-02-21 → 2026-11-14 (-99d) |  |  |
| SDR-ST-CON-P1-3930 | Backfilling ST GRP Pipes | 2027-02-10 → 2026-11-01 A (-101d) | 2027-02-21 → 2026-11-14 A (-99d) | 0% → 100% | -14d → none |
| 11 | **Ring Main Unit** | 2027-07-26 → 2027-08-02 (+7d) | 2027-10-04 → 2027-10-11 (+7d) |  |  |
| 1 | **Leveling** | 2027-07-26 → 2027-08-02 (+7d) | 2027-08-09 → 2027-08-16 (+7d) |  |  |
| SDR-ST-CON-P1-5840 | Ring Main Unit leveling | 2027-07-26 → 2027-08-02 (+7d) | 2027-08-09 → 2027-08-16 (+7d) |  | -81d → -87d |
| 2 | **Lean Concrete** | 2027-08-19 → 2027-08-26 (+7d) | 2027-09-11 → 2027-09-18 (+7d) |  |  |
| SDR-ST-CON-P1-5890 | Ring Main Unit Lean Concrete | 2027-08-19 → 2027-08-26 (+7d) | 2027-09-11 → 2027-09-18 (+7d) |  | -84d → -90d |
| 3 | **Installation** | 2027-09-12 → 2027-09-19 (+7d) | 2027-10-04 → 2027-10-11 (+7d) |  |  |
| SDR-ST-CON-P1-5920 | Ring Main Unit installation for Street Lighting | 2027-09-12 → 2027-09-19 (+7d) | 2027-10-04 → 2027-10-11 (+7d) |  | -84d → -90d |
| 12 | **Feeder Pillars** | 2027-08-19 → 2027-08-26 (+7d) | 2027-10-23 → 2027-10-30 (+7d) |  |  |
| 1 | **Leveling** | 2027-08-19 → 2027-08-26 (+7d) | 2027-09-12 → 2027-09-19 (+7d) |  |  |
| SDR-ST-CON-P1-5880 | Feeder Pillars Leveling | 2027-08-19 → 2027-08-26 (+7d) | 2027-09-12 → 2027-09-19 (+7d) |  | -89d → -95d |
| 2 | **Lean Concrete** | 2027-09-13 → 2027-09-20 (+7d) | 2027-10-05 → 2027-10-12 (+7d) |  |  |
| SDR-ST-CON-P1-5930 | Feeder Pillars Lean Concrete | 2027-09-13 → 2027-09-20 (+7d) | 2027-10-05 → 2027-10-12 (+7d) |  | -87d → -93d |
| 3 | **Installation** | 2027-10-06 → 2027-10-13 (+7d) | 2027-10-23 → 2027-10-30 (+7d) |  |  |
| SDR-ST-CON-P1-6000 | Feeder Pillars Installation | 2027-10-06 → 2027-10-13 (+7d) | 2027-10-23 → 2027-10-30 (+7d) |  | -87d → -93d |
| 13 | **KWH Frame** | 2027-09-30 → 2027-10-07 (+7d) | 2027-11-21 → 2027-11-28 (+7d) |  |  |
| 1 | **Leveling** | 2027-09-30 → 2027-10-07 (+7d) | 2027-10-21 → 2027-10-28 (+7d) |  |  |
| SDR-ST-CON-P1-5940 | KWH meter mounting frame Leveling | 2027-09-30 → 2027-10-07 (+7d) | 2027-10-21 → 2027-10-28 (+7d) |  | -104d → -110d |
| 2 | **Lean Concrete** | 2027-10-23 → 2027-10-30 (+7d) | 2027-11-08 → 2027-11-15 (+7d) |  |  |
| SDR-ST-CON-P1-6010 | KWH meter mounting frame Lean Concrete | 2027-10-23 → 2027-10-30 (+7d) | 2027-11-08 → 2027-11-15 (+7d) |  | -104d → -110d |
| 3 | **Installation** | 2027-11-09 → 2027-11-16 (+7d) | 2027-11-21 → 2027-11-28 (+7d) |  |  |
| SDR-ST-CON-P1-6040 | KWH meter mounting frame installation | 2027-11-09 → 2027-11-16 (+7d) | 2027-11-21 → 2027-11-28 (+7d) |  | -104d → -110d |
| 14 | **Street Lighting Sub-station** | 2027-10-05 → 2027-10-12 (+7d) | 2027-11-16 → 2027-11-23 (+7d) |  |  |
| 1 | **Leveling** | 2027-10-05 → 2027-10-12 (+7d) | 2027-10-27 → 2027-11-03 (+7d) |  |  |
| SDR-ST-CON-P1-5950 | Unit Substation Leveling Part 1 | 2027-10-05 → 2027-10-12 (+7d) | 2027-10-27 → 2027-11-03 (+7d) |  | -104d → -110d |
| SDR-ST-CON-P1-5960 | Unit Substation Leveling Part 2 | 2027-10-05 → 2027-10-12 (+7d) | 2027-10-27 → 2027-11-03 (+7d) |  | -104d → -110d |
| 2 | **Lean Concrete** | 2027-10-28 → 2027-11-04 (+7d) | 2027-11-10 → 2027-11-17 (+7d) |  |  |
| SDR-ST-CON-P1-6020 | Unit Substation Lean Concrete | 2027-10-28 → 2027-11-04 (+7d) | 2027-11-10 → 2027-11-17 (+7d) |  | -104d → -110d |
| 3 | **Installation** | 2027-11-11 → 2027-11-18 (+7d) | 2027-11-16 → 2027-11-23 (+7d) |  |  |
| SDR-ST-CON-P1-6050 | Unit Substation Install for Street Lighting | 2027-11-11 → 2027-11-18 (+7d) | 2027-11-16 → 2027-11-23 (+7d) |  | -104d → -110d |
| 8 | **ROAD - 02** |  | 2027-11-11 → 2027-11-18 (+7d) |  |  |

| ID | Task | Start | Finish | Complete | Total float |
| --- | --- | --- | --- | --- | --- |
| 6 | **ROAD-01 From 0 to 400 m (9) 2 Way 110 mm** |  | 2027-02-25 → 2027-03-04 (+7d) |  |  |
| 10 | **Excavation** |  | 2026-12-31 → 2027-01-07 (+7d) |  |  |
| SDR-ST-CON-P1-1780 | Excavation for LV Cable trench Section 2 |  | 2026-12-17 → 2026-12-24 (+7d) |  | -45d → -51d |
| SDR-ST-CON-P1-1310 | Excavation for LV Cable trench Section 1 |  | 2026-12-03 → 2026-12-10 (+7d) |  | -75d → -81d |
| SDR-ST-CON-P1-2350 | Excavation for LV Cable trench Section 3 |  | 2026-12-31 → 2027-01-07 (+7d) |  | -45d → -51d |
| 11 | **Install Footings** | 2027-01-02 → 2027-01-09 (+7d) | 2027-01-18 → 2027-01-25 (+7d) |  |  |
| SDR-ST-CON-P1-2860 | Install Footings | 2027-01-02 → 2027-01-09 (+7d) | 2027-01-18 → 2027-01-25 (+7d) |  | -45d → -51d |
| 12 | **Backfilling** | 2027-01-19 → 2027-01-26 (+7d) | 2027-02-06 → 2027-02-13 (+7d) |  |  |
| SDR-ST-CON-P1-3500 | Backfilling over LV Cables of Street lighting | 2027-01-19 → 2027-01-26 (+7d) | 2027-02-06 → 2027-02-13 (+7d) |  | -45d → -51d |
| 13 | **Install pole** | 2027-02-07 → 2027-02-14 (+7d) | 2027-02-25 → 2027-03-04 (+7d) |  |  |
| SDR-ST-CON-P1-4260 | Install Pole Part 1 | 2027-02-07 → 2027-02-14 (+7d) | 2027-02-15 → 2027-02-23 (+8d) |  | -45d → -51d |
| SDR-ST-CON-P1-4570 | Install Pole Part 2 | 2027-02-16 → 2027-02-24 (+8d) | 2027-02-25 → 2027-03-04 (+7d) |  | -45d → -51d |
| 5 | **ROAD-01 From 400 to 900 m (10) 4 Way 110 mm** |  | 2027-03-03 → 2027-03-15 (+12d) |  |  |
| 10 | **Excavation** |  | 2026-12-26 → 2027-01-02 (+7d) |  |  |
| SDR-ST-CON-P1-1260 | Excavation for LV Cable trench Section 1 |  | 2026-11-30 → 2026-12-07 (+7d) |  | -69d → -75d |
| SDR-ST-CON-P1-1760 | Excavation for LV Cable trench Section 2 |  | 2026-12-14 → 2026-12-21 (+7d) |  | -45d → -51d |
| SDR-ST-CON-P1-2260 | Excavation for LV Cable trench Section 3 |  | 2026-12-26 → 2027-01-02 (+7d) |  | -45d → -51d |
| 11 | **Install Footings** | 2026-12-27 → 2027-01-03 (+7d) | 2027-01-11 → 2027-01-18 (+7d) |  |  |
| SDR-ST-CON-P1-2770 | Install Footings | 2026-12-27 → 2027-01-03 (+7d) | 2027-01-11 → 2027-01-18 (+7d) |  | -45d → -51d |
| 12 | **Backfilling** | 2027-01-12 → 2027-01-19 (+7d) | 2027-01-27 → 2027-02-03 (+7d) |  |  |
| SDR-ST-CON-P1-3350 | Backfilling over LV Cables of Street lighting | 2027-01-12 → 2027-01-19 (+7d) | 2027-01-27 → 2027-02-03 (+7d) |  | -45d → -51d |
| 13 | **Install pole** | 2027-01-28 → 2027-02-04 (+7d) | 2027-03-03 → 2027-03-15 (+12d) |  |  |
| SDR-ST-CON-P1-3940 | Install Pole Part 1 | 2027-01-28 → 2027-02-04 (+7d) | 2027-02-06 → 2027-02-13 (+7d) |  | -45d → -51d |
| SDR-ST-CON-P1-4400 | Install Pole Part 2 | 2027-02-23 → 2027-03-02 (+7d) | 2027-03-03 → 2027-03-15 (+12d) |  | -18d → -20d |
| 4 | **ROAD-01 From 900 to 1239 m (11) 2 Way 110 mm** |  | 2027-03-03 → 2027-03-15 (+12d) |  |  |
| 10 | **Excavation** |  | 2026-12-28 → 2027-01-04 (+7d) |  |  |
| SDR-ST-CON-P1-1360 | Excavation for LV Cable trench Section 1 |  | 2026-12-02 → 2026-12-09 (+7d) |  | -53d → -59d |
| SDR-ST-CON-P1-1900 | Excavation for LV Cable trench Section 2 |  | 2026-12-16 → 2026-12-23 (+7d) |  | -30d → -36d |
| SDR-ST-CON-P1-2400 | Excavation for LV Cable trench Section 3 |  | 2026-12-28 → 2027-01-04 (+7d) |  | -30d → -36d |
| 11 | **Install Footings** | 2026-12-29 → 2027-01-05 (+7d) | 2027-01-13 → 2027-01-20 (+7d) |  |  |
| SDR-ST-CON-P1-2840 | Install Footings | 2026-12-29 → 2027-01-05 (+7d) | 2027-01-13 → 2027-01-20 (+7d) |  | -30d → -36d |
| 12 | **Backfilling** | 2027-01-14 → 2027-01-21 (+7d) | 2027-01-30 → 2027-02-06 (+7d) |  |  |
| SDR-ST-CON-P1-3470 | Backfilling over LV Cables of Street lighting | 2027-01-14 → 2027-01-21 (+7d) | 2027-01-30 → 2027-02-06 (+7d) |  | -30d → -36d |
| 13 | **Install pole** | 2027-01-31 → 2027-02-07 (+7d) | 2027-03-03 → 2027-03-15 (+12d) |  |  |
| SDR-ST-CON-P1-4080 | Install Pole Part 1 | 2027-01-31 → 2027-02-07 (+7d) | 2027-02-14 → 2027-02-21 (+7d) |  | -30d → -36d |
| SDR-ST-CON-P1-4610 | Install Pole Part 2 | 2027-02-15 → 2027-02-23 (+8d) | 2027-03-03 → 2027-03-15 (+12d) |  | -30d → -36d |
| 1 | **Road Crossing & Drawpits** |  | 2026-12-17 → 2026-11-10 (-37d) |  |  |
| 2 | **ROAD - 02** |  | 2026-12-17 → 2026-11-10 (-37d) |  |  |
| 1 | **ROAD-01 From 0 to 400 m (9) 2 Way 110 mm** |  | 2026-12-17 → 2026-10-31 (-47d) |  |  |
| 1 | **Road crossing Ducts & Drawpits** |  | 2026-12-17 → 2026-10-31 (-47d) |  |  |
| 1 | **Excavation** |  | 2026-11-08 → 2026-10-11 (-28d) |  |  |
| SDR-ST-CON-P1-1320 | Excavation for GRP Pipes Section 1 |  | 2026-11-08 A → 2026-10-11 A (-28d) |  |  |
| 7 | **bedding Works** |  | 2026-11-08 → 2026-10-11 (-28d) |  |  |
| SDR-ST-CON-P1-1950 | Sand bedding for GRP Pipes |  | 2026-11-08 A → 2026-10-11 A (-28d) |  |  |
| 2 | **Pipes Laying** |  | 2026-11-07 → 2026-10-13 (-25d) |  |  |
| SDR-ST-CON-P1-2560 | Install ST GRP Pipes |  | 2026-11-07 A → 2026-10-13 A (-25d) |  |  |
| 6 | **Testing** | 2026-11-22 → 2026-10-01 (-52d) | 2026-12-05 → 2026-10-15 (-51d) |  |  |
| SDR-ST-CON-P1-3200 | Testing ST GRP Pipes | 2026-11-22 → 2026-10-01 A (-52d) | 2026-12-05 → 2026-10-15 A (-51d) | 0% → 100% | -2d → none |
| 3 | **Backfilling** | 2026-12-06 → 2026-10-15 (-52d) | 2026-12-17 → 2026-10-31 (-47d) |  |  |
| SDR-ST-CON-P1-3700 | Backfilling ST GRP Pipes | 2026-12-06 → 2026-10-15 A (-52d) | 2026-12-17 → 2026-10-31 A (-47d) | 0% → 100% | -2d → none |
| 2 | **ROAD-01 From 400 to 900 m (10) 4 Way 110 mm** |  | 2026-12-17 → 2026-11-08 (-39d) |  |  |
| 1 | **Road crossing Ducts & Drawpits** |  | 2026-12-17 → 2026-11-08 (-39d) |  |  |
| 6 | **Testing** | 2026-11-22 → 2026-10-22 (-31d) | 2026-12-01 → 2026-11-07 (-24d) |  |  |
| SDR-ST-CON-P1-2970 | Testing ST GRP Pipes | 2026-11-22 → 2026-10-22 A (-31d) | 2026-12-01 → 2026-11-07 A (-24d) | 0% → 100% | -2d → none |
| 3 | **Backfilling** | 2026-12-02 → 2026-10-30 (-33d) | 2026-12-17 → 2026-11-08 (-39d) |  |  |
| SDR-ST-CON-P1-3360 | Backfilling ST GRP Pipes | 2026-12-02 → 2026-10-30 A (-33d) | 2026-12-17 → 2026-11-08 A (-39d) | 0% → 100% | -2d → none |
| 3 | **ROAD-01 From 900 to 1239 m (11) 2 Way 110 mm** |  | 2026-12-14 → 2026-11-10 (-34d) |  |  |
| 1 | **Road crossing Ducts & Drawpits** |  | 2026-12-14 → 2026-11-10 (-34d) |  |  |
| 6 | **Testing** | 2026-11-22 → 2026-10-29 (-24d) | 2026-11-30 → 2026-11-09 (-21d) |  |  |
| SDR-ST-CON-P1-3110 | Testing ST GRP Pipes | 2026-11-22 → 2026-10-29 A (-24d) | 2026-11-30 → 2026-11-09 A (-21d) | 0% → 100% | 1d → none |
| 3 | **Backfilling** | 2026-12-01 → 2026-10-30 (-32d) | 2026-12-14 → 2026-11-10 (-34d) |  |  |
| SDR-ST-CON-P1-3480 | Backfilling ST GRP Pipes | 2026-12-01 → 2026-10-30 A (-32d) | 2026-12-14 → 2026-11-10 A (-34d) | 0% → 100% | 1d → none |
| 11 | **Ring Main Unit** | 2027-06-26 → 2027-07-03 (+7d) | 2027-11-09 → 2027-11-16 (+7d) |  |  |
| 1 | **Leveling** | 2027-06-26 → 2027-07-03 (+7d) | 2027-07-18 → 2027-07-25 (+7d) |  |  |
| SDR-ST-CON-P1-5810 | Ring Main Unit leveling | 2027-06-26 → 2027-07-03 (+7d) | 2027-07-18 → 2027-07-25 (+7d) |  | -66d → -72d |
| 2 | **Lean Concrete** | 2027-09-13 → 2027-09-20 (+7d) | 2027-10-05 → 2027-10-12 (+7d) |  |  |
| SDR-ST-CON-P1-5850 | Ring Main Unit Lean Concrete | 2027-09-13 → 2027-09-20 (+7d) | 2027-10-05 → 2027-10-12 (+7d) |  | -105d → -111d |
| 3 | **Installation** | 2027-10-18 → 2027-10-25 (+7d) | 2027-11-09 → 2027-11-16 (+7d) |  |  |
| SDR-ST-CON-P1-5970 | Ring Main Unit installation for Street Lighting | 2027-10-18 → 2027-10-25 (+7d) | 2027-11-09 → 2027-11-16 (+7d) |  | -105d → -111d |
| 12 | **Feeder Pillars** | 2027-06-26 → 2027-07-03 (+7d) | 2027-09-19 → 2027-09-26 (+7d) |  |  |

| ID | Task | Start | Finish | Complete | Total float |
| --- | --- | --- | --- | --- | --- |
| 1 | **Leveling** | 2027-06-26 → 2027-07-03 (+7d) | 2027-07-18 → 2027-07-25 (+7d) |  |  |
| SDR-ST-CON-P1-5820 | Feeder Pillars Leveling | 2027-06-26 → 2027-07-03 (+7d) | 2027-07-18 → 2027-07-25 (+7d) |  | -66d → -72d |
| 2 | **Lean Concrete** | 2027-07-19 → 2027-07-26 (+7d) | 2027-08-09 → 2027-08-16 (+7d) |  |  |
| SDR-ST-CON-P1-5860 | Feeder Pillars Lean Concrete | 2027-07-19 → 2027-07-26 (+7d) | 2027-08-09 → 2027-08-16 (+7d) |  | -64d → -70d |
| 3 | **Installation** | 2027-08-28 → 2027-09-04 (+7d) | 2027-09-19 → 2027-09-26 (+7d) |  |  |
| SDR-ST-CON-P1-5980 | Feeder Pillars Installation | 2027-08-28 → 2027-09-04 (+7d) | 2027-09-19 → 2027-09-26 (+7d) |  | -64d → -70d |
| 13 | **KWH Frame** | 2027-06-27 → 2027-07-04 (+7d) | 2027-10-21 → 2027-10-28 (+7d) |  |  |
| 1 | **Leveling** | 2027-06-27 → 2027-07-04 (+7d) | 2027-07-19 → 2027-07-26 (+7d) |  |  |
| SDR-ST-CON-P1-5830 | KWH meter mounting frame Leveling | 2027-06-27 → 2027-07-04 (+7d) | 2027-07-19 → 2027-07-26 (+7d) |  | -66d → -72d |
| 2 | **Lean Concrete** | 2027-09-06 → 2027-09-13 (+7d) | 2027-09-28 → 2027-10-05 (+7d) |  |  |
| SDR-ST-CON-P1-5870 | KWH meter mounting frame Lean Concrete | 2027-09-06 → 2027-09-13 (+7d) | 2027-09-28 → 2027-10-05 (+7d) |  | -89d → -95d |
| 3 | **Installation** | 2027-09-29 → 2027-10-06 (+7d) | 2027-10-21 → 2027-10-28 (+7d) |  |  |
| SDR-ST-CON-P1-5910 | KWH meter mounting frame installation | 2027-09-29 → 2027-10-06 (+7d) | 2027-10-21 → 2027-10-28 (+7d) |  | -89d → -95d |
| 14 | **Street Lighting Sub-station** | 2027-07-20 → 2027-07-27 (+7d) | 2027-11-11 → 2027-11-18 (+7d) |  |  |
| 1 | **Leveling** | 2027-07-20 → 2027-07-27 (+7d) | 2027-08-10 → 2027-08-17 (+7d) |  |  |
| SDR-ST-CON-P1-5900 | Unit Substation Leveling | 2027-07-20 → 2027-07-27 (+7d) | 2027-08-10 → 2027-08-17 (+7d) |  | -66d → -72d |
| 2 | **Lean Concrete** | 2027-09-30 → 2027-10-07 (+7d) | 2027-10-23 → 2027-10-30 (+7d) |  |  |
| SDR-ST-CON-P1-5990 | Unit Substation Lean Concrete | 2027-09-30 → 2027-10-07 (+7d) | 2027-10-23 → 2027-10-30 (+7d) |  | -96d → -102d |
| 3 | **Installation** | 2027-10-24 → 2027-10-31 (+7d) | 2027-11-11 → 2027-11-18 (+7d) |  |  |
| SDR-ST-CON-P1-6030 | Unit Substation Install for Street Lighting | 2027-10-24 → 2027-10-31 (+7d) | 2027-11-11 → 2027-11-18 (+7d) |  | -96d → -102d |
| 5 | **TELECOMMUNICATIONS WORKS** |  | 2027-04-17 → 2027-04-24 (+7d) |  |  |
| 3 | **ROAD - 01** |  | 2027-02-28 → 2027-03-07 (+7d) |  |  |
| 4 | **ROAD-01 N 1 (2X3)X50 mm MH-15 to MH-16** |  | 2027-02-25 → 2027-03-04 (+7d) |  |  |
| 3 | **Ducts** |  | 2027-02-25 → 2027-03-04 (+7d) |  |  |
| 2 | **Excavation** |  | 2026-12-22 → 2026-12-29 (+7d) |  |  |
| SDR-ST-CON-P1-1690 | Excavation for telecom trench Section 1 |  | 2026-12-07 → 2026-12-14 (+7d) | 30% → 40% | -42d → -48d |
| SDR-ST-CON-P1-2340 | Excavation for telecom trench Section 2 |  | 2026-12-22 → 2026-12-29 (+7d) | 30% → 40% | -42d → -48d |
| 5 | **Pipe laying** |  | 2027-01-07 → 2027-01-14 (+7d) |  |  |
| SDR-ST-CON-P1-3070 | HDPE Pipes for Telecom Installation |  | 2027-01-07 → 2027-01-14 (+7d) |  | -42d → -48d |
| 6 | **Backfilling** | 2027-01-09 → 2027-01-16 (+7d) | 2027-01-31 → 2027-02-07 (+7d) |  |  |
| SDR-ST-CON-P1-3680 | Backfilling over HDPE Telecom Pipes | 2027-01-09 → 2027-01-16 (+7d) | 2027-01-31 → 2027-02-07 (+7d) |  | -42d → -48d |
| 7 | **Pulling Cable** | 2027-02-01 → 2027-02-08 (+7d) | 2027-02-25 → 2027-03-04 (+7d) |  |  |
| SDR-ST-CON-P1-4310 | Pulling Cable | 2027-02-01 → 2027-02-08 (+7d) | 2027-02-25 → 2027-03-04 (+7d) |  | -42d → -48d |
| 4 | **Manholes** |  | 2027-01-05 → 2027-01-12 (+7d) |  |  |
| 4 | **Testting** | 2026-11-22 → 2026-11-29 (+7d) | 2026-12-14 → 2026-12-21 (+7d) |  |  |
| SDR-ST-CON-P1-4360 | Telecom Manhole finishing works | 2026-11-22 → 2026-11-29 (+7d) | 2026-12-14 → 2026-12-21 (+7d) |  | 36d → 30d |
| 5 | **Backfilling** | 2026-12-15 → 2026-12-22 (+7d) | 2027-01-05 → 2027-01-12 (+7d) |  |  |
| SDR-ST-CON-P1-4880 | Backfilling over Telecom Manhole | 2026-12-15 → 2026-12-22 (+7d) | 2027-01-05 → 2027-01-12 (+7d) |  | 36d → 30d |
| 2 | **ROAD-01 From 0 to 470 m (3) (2X3)X50 mm MH-12 to MH-14** |  | 2027-02-09 → 2027-02-16 (+7d) |  |  |
| 3 | **Ducts** |  | 2027-01-21 → 2027-01-28 (+7d) |  |  |
| 5 | **Pipe laying** |  | 2026-12-03 → 2026-12-10 (+7d) |  |  |
| SDR-ST-CON-P1-2940 | HDPE Pipes for Telecom Installation |  | 2026-12-03 → 2026-12-10 (+7d) |  | -10d → -16d |
| 6 | **Backfilling** | 2026-12-05 → 2026-12-12 (+7d) | 2026-12-28 → 2027-01-04 (+7d) |  |  |
| SDR-ST-CON-P1-3770 | Backfilling over HDPE Telecom Pipes | 2026-12-05 → 2026-12-12 (+7d) | 2026-12-28 → 2027-01-04 (+7d) |  | -10d → -16d |
| 7 | **Pulling Cable** | 2026-12-29 → 2027-01-05 (+7d) | 2027-01-21 → 2027-01-28 (+7d) |  |  |
| SDR-ST-CON-P1-4370 | Pulling Cable | 2026-12-29 → 2027-01-05 (+7d) | 2027-01-21 → 2027-01-28 (+7d) |  | -10d → -16d |
| 4 | **Manholes** |  | 2027-02-09 → 2027-02-16 (+7d) |  |  |
| 4 | **Testting** | 2026-12-23 → 2026-12-30 (+7d) | 2027-01-16 → 2027-01-23 (+7d) |  |  |
| SDR-ST-CON-P1-4630 | Telecom Manhole finishing works | 2026-12-23 → 2026-12-30 (+7d) | 2027-01-16 → 2027-01-23 (+7d) |  | -5d → -11d |
| 5 | **Backfilling** | 2027-01-17 → 2027-01-24 (+7d) | 2027-02-09 → 2027-02-16 (+7d) |  |  |
| SDR-ST-CON-P1-5140 | Backfilling over Telecom Manhole | 2027-01-17 → 2027-01-24 (+7d) | 2027-02-09 → 2027-02-16 (+7d) |  | -5d → -11d |
| 1 | **ROAD-01 From 470 to 1125 m (6) (2X3)X50 mm MH-10 to MH-11** |  | 2027-02-18 → 2027-02-27 (+9d) |  |  |
| 3 | **Ducts** |  | 2027-02-18 → 2027-02-27 (+9d) |  |  |
| 2 | **Excavation** |  | 2026-12-10 → 2026-12-17 (+7d) |  |  |
| SDR-ST-CON-P1-1790 | Excavation for telecom trench Section 2 |  | 2026-12-10 → 2026-12-17 (+7d) | 20% → 30% | -47d → -53d |
| 5 | **Pipe laying** | 2026-12-12 → 2026-11-07 (-35d) | 2027-01-04 → 2027-01-11 (+7d) |  |  |
| SDR-ST-CON-P1-2510 | HDPE Pipes for Telecom Installation | 2026-12-12 → 2026-11-07 A (-35d) | 2027-01-04 → 2027-01-11 (+7d) | 0% → 30% | -47d → -53d |
| 6 | **Backfilling** | 2027-01-05 → 2027-01-12 (+7d) | 2027-01-25 → 2027-02-01 (+7d) |  |  |
| SDR-ST-CON-P1-3230 | Backfilling over HDPE Telecom Pipes | 2027-01-05 → 2027-01-12 (+7d) | 2027-01-25 → 2027-02-01 (+7d) |  | -47d → -53d |
| 7 | **Pulling Cable** | 2027-01-26 → 2027-02-02 (+7d) | 2027-02-18 → 2027-02-27 (+9d) |  |  |
| SDR-ST-CON-P1-4020 | Pulling Cable | 2027-01-26 → 2027-02-02 (+7d) | 2027-02-18 → 2027-02-27 (+9d) |  | -47d → -53d |
| 4 | **Manholes** |  | 2027-02-09 → 2027-02-16 (+7d) |  |  |
| 4 | **Testting** | 2026-12-23 → 2026-12-30 (+7d) | 2027-01-16 → 2027-01-23 (+7d) |  |  |
| SDR-ST-CON-P1-4150 | Telecom Manhole finishing works | 2026-12-23 → 2026-12-30 (+7d) | 2027-01-16 → 2027-01-23 (+7d) |  | 8d → 2d |
| 5 | **Backfilling** | 2027-01-17 → 2027-01-24 (+7d) | 2027-02-09 → 2027-02-16 (+7d) |  |  |
| SDR-ST-CON-P1-4740 | Backfilling over Telecom Manhole | 2027-01-17 → 2027-01-24 (+7d) | 2027-02-09 → 2027-02-16 (+7d) |  | 8d → 2d |
| 3 | **ROAD-01 From 1125 to 1765 m (7) (2X3)X50 mm MH-8 to MH-9** |  | 2027-02-28 → 2027-03-07 (+7d) |  |  |
| 3 | **Ducts** |  | 2027-02-28 → 2027-03-07 (+7d) |  |  |
| 2 | **Excavation** |  | 2026-12-15 → 2026-12-22 (+7d) |  |  |
| SDR-ST-CON-P1-2290 | Excavation for telecom trench Section 2 | 2026-11-22 → 2026-11-05 A (-17d) | 2026-12-15 → 2026-12-22 (+7d) | 0% → 30% | -27d → -33d |

| ID | Task | Start | Finish | Complete | Total float |
| --- | --- | --- | --- | --- | --- |
| 5 | **Pipe laying** | 2026-12-16 → 2026-12-23 (+7d) | 2027-01-09 → 2027-01-16 (+7d) |  |  |
| SDR-ST-CON-P1-3010 | HDPE Pipes for Telecom Installation | 2026-12-16 → 2026-12-23 (+7d) | 2027-01-09 → 2027-01-16 (+7d) |  | -27d → -33d |
| 6 | **Backfilling** | 2027-01-10 → 2027-01-17 (+7d) | 2027-02-02 → 2027-02-09 (+7d) |  |  |
| SDR-ST-CON-P1-3630 | Backfilling over HDPE Telecom Pipes | 2027-01-10 → 2027-01-17 (+7d) | 2027-02-02 → 2027-02-09 (+7d) |  | -27d → -33d |
| 7 | **Pulling Cable** | 2027-02-03 → 2027-02-10 (+7d) | 2027-02-28 → 2027-03-07 (+7d) |  |  |
| SDR-ST-CON-P1-4240 | Pulling Cable | 2027-02-03 → 2027-02-10 (+7d) | 2027-02-28 → 2027-03-07 (+7d) |  | -27d → -33d |
| 4 | **Manholes** |  | 2027-01-03 → 2027-01-10 (+7d) |  |  |
| 4 | **Testting** | 2026-11-22 → 2026-11-29 (+7d) | 2026-12-12 → 2026-12-19 (+7d) |  |  |
| SDR-ST-CON-P1-4720 | Telecom Manhole finishing works | 2026-11-22 → 2026-11-29 (+7d) | 2026-12-12 → 2026-12-19 (+7d) |  | 33d → 27d |
| 5 | **Backfilling** | 2026-12-13 → 2026-12-20 (+7d) | 2027-01-03 → 2027-01-10 (+7d) |  |  |
| SDR-ST-CON-P1-5240 | Backfilling over Telecom Manhole | 2026-12-13 → 2026-12-20 (+7d) | 2027-01-03 → 2027-01-10 (+7d) |  | 33d → 27d |
| 4 | **ROAD - 02** |  | 2027-04-17 → 2027-04-24 (+7d) |  |  |
| 3 | **ROAD-01 From 0 to 400 m (9) (2X3)X50 mm MH-5 to MH-7** |  | 2027-03-29 → 2027-04-05 (+7d) |  |  |
| 3 | **Ducts** | 2026-11-22 → 2026-11-08 (-14d) | 2027-03-29 → 2027-04-05 (+7d) |  |  |
| 2 | **Excavation** | 2026-11-22 → 2026-11-08 (-14d) | 2027-01-09 → 2027-01-16 (+7d) |  |  |
| SDR-ST-CON-P1-1960 | Excavation for telecom trench Section 2 | 2026-12-16 → 2026-11-08 A (-38d) | 2027-01-09 → 2027-01-16 (+7d) | 0% → 30% | -75d → -81d |
| SDR-ST-CON-P1-1340 | Excavation for telecom trench Section 1 | 2026-11-22 → 2026-11-09 A (-13d) | 2026-12-15 → 2026-12-22 (+7d) | 0% → 30% | -75d → -81d |
| 5 | **Pipe laying** | 2027-01-10 → 2026-11-09 (-62d) | 2027-02-02 → 2027-02-09 (+7d) |  |  |
| SDR-ST-CON-P1-2670 | HDPE Pipes for Telecom Installation | 2027-01-10 → 2026-11-09 A (-62d) | 2027-02-02 → 2027-02-09 (+7d) | 0% → 30% | -75d → -81d |
| 6 | **Backfilling** | 2027-02-03 → 2027-02-10 (+7d) | 2027-02-28 → 2027-03-07 (+7d) |  |  |
| SDR-ST-CON-P1-3440 | Backfilling over HDPE Telecom Pipes | 2027-02-03 → 2027-02-10 (+7d) | 2027-02-28 → 2027-03-07 (+7d) |  | -75d → -81d |
| 7 | **Pulling Cable** | 2027-03-01 → 2027-03-08 (+7d) | 2027-03-29 → 2027-04-05 (+7d) |  |  |
| SDR-ST-CON-P1-4270 | Pulling Cable | 2027-03-01 → 2027-03-08 (+7d) | 2027-03-29 → 2027-04-05 (+7d) |  | -75d → -81d |
| 4 | **Manholes** |  | 2027-01-09 → 2027-01-16 (+7d) |  |  |
| 4 | **Testting** | 2026-11-22 → 2026-11-29 (+7d) | 2026-12-15 → 2026-12-22 (+7d) |  |  |
| SDR-ST-CON-P1-4380 | Telecom Manhole finishing works | 2026-11-22 → 2026-11-29 (+7d) | 2026-12-15 → 2026-12-22 (+7d) |  | 26d → 20d |
| 5 | **Backfilling** | 2026-12-16 → 2026-12-23 (+7d) | 2027-01-09 → 2027-01-16 (+7d) |  |  |
| SDR-ST-CON-P1-4900 | Backfilling over Telecom Manhole | 2026-12-16 → 2026-12-23 (+7d) | 2027-01-09 → 2027-01-16 (+7d) |  | 26d → 20d |
| 1 | **ROAD-01 From 400 to 900 m (10) (2X3)X50 mm MH-1 to MH-4** |  | 2027-03-29 → 2027-04-05 (+7d) |  |  |
| 3 | **Ducts** | 2026-11-22 → 2026-11-29 (+7d) | 2027-03-29 → 2027-04-05 (+7d) |  |  |
| 2 | **Excavation** | 2026-11-22 → 2026-11-29 (+7d) | 2027-01-09 → 2027-01-16 (+7d) |  |  |
| SDR-ST-CON-P1-1290 | Excavation for telecom trench Section 1 | 2026-11-22 → 2026-11-29 (+7d) | 2026-12-15 → 2026-12-22 (+7d) |  | -69d → -75d |
| SDR-ST-CON-P1-1880 | Excavation for telecom trench Section 2 | 2026-12-16 → 2026-12-23 (+7d) | 2027-01-09 → 2027-01-16 (+7d) |  | -69d → -75d |
| 5 | **Pipe laying** | 2027-01-10 → 2027-01-17 (+7d) | 2027-02-02 → 2027-02-09 (+7d) |  |  |
| SDR-ST-CON-P1-2640 | HDPE Pipes for Telecom Installation | 2027-01-10 → 2027-01-17 (+7d) | 2027-02-02 → 2027-02-09 (+7d) |  | -69d → -75d |
| 6 | **Backfilling** | 2027-02-03 → 2027-02-10 (+7d) | 2027-02-28 → 2027-03-07 (+7d) |  |  |
| SDR-ST-CON-P1-3370 | Backfilling over HDPE Telecom Pipes | 2027-02-03 → 2027-02-10 (+7d) | 2027-02-28 → 2027-03-07 (+7d) |  | -69d → -75d |
| 7 | **Pulling Cable** | 2027-03-01 → 2027-03-08 (+7d) | 2027-03-29 → 2027-04-05 (+7d) |  |  |
| SDR-ST-CON-P1-4160 | Pulling Cable | 2027-03-01 → 2027-03-08 (+7d) | 2027-03-29 → 2027-04-05 (+7d) |  | -69d → -75d |
| 4 | **Manholes** |  | 2027-01-24 → 2027-01-16 (-8d) |  |  |
| 1 | **Excavation** |  | 2026-11-25 → 2026-11-08 (-17d) |  |  |
| SDR-ST-CON-P1-1890 | Excavation for Telecom Manhole Section 2 |  | 2026-11-25 → 2026-11-08 A (-17d) | 90% → 100% | 13d → none |
| 2 | **Bedding Work** |  | 2026-11-30 → 2026-11-09 (-21d) |  |  |
| SDR-ST-CON-P1-2650 | Sand bedding for Telecom Manhole |  | 2026-11-30 → 2026-11-09 A (-21d) | 90% → 100% | 13d → none |
| 3 | **Install Manholes** |  | 2026-12-06 → 2026-11-10 (-26d) |  |  |
| SDR-ST-CON-P1-3380 | Installation of Telecom Manhole |  | 2026-12-06 → 2026-11-10 A (-26d) | 90% → 100% | 13d → none |
| 4 | **Testting** | 2026-12-07 → 2026-11-29 (-8d) | 2026-12-30 → 2026-12-22 (-8d) |  |  |
| SDR-ST-CON-P1-4280 | Telecom Manhole finishing works | 2026-12-07 → 2026-11-29 (-8d) | 2026-12-30 → 2026-12-22 (-8d) |  | 13d → 20d |
| 5 | **Backfilling** | 2026-12-31 → 2026-12-23 (-8d) | 2027-01-24 → 2027-01-16 (-8d) |  |  |
| SDR-ST-CON-P1-4820 | Backfilling over Telecom Manhole | 2026-12-31 → 2026-12-23 (-8d) | 2027-01-24 → 2027-01-16 (-8d) |  | 13d → 20d |
| 2 | **ROAD-01 From 900 to 1239 m (11) (2)X32 mm MH-1** | 2026-11-22 → 2026-11-03 (-19d) | 2027-04-17 → 2027-04-24 (+7d) |  |  |
| 3 | **Ducts** | 2026-11-22 → 2026-11-03 (-19d) | 2027-03-29 → 2027-04-05 (+7d) |  |  |
| 2 | **Excavation** | 2026-11-22 → 2026-11-03 (-19d) | 2027-01-09 → 2027-01-16 (+7d) |  |  |
| SDR-ST-CON-P1-1390 | Excavation for telecom trench Section 1 | 2026-11-22 → 2026-11-03 A (-19d) | 2026-12-15 → 2026-12-22 (+7d) | 0% → 30% | -53d → -59d |
| SDR-ST-CON-P1-2070 | Excavation for telecom trench Section 2 | 2026-12-16 → 2026-11-03 A (-43d) | 2027-01-09 → 2027-01-16 (+7d) | 0% → 30% | -48d → -54d |
| 5 | **Pipe laying** | 2027-01-10 → 2027-01-17 (+7d) | 2027-02-02 → 2027-02-09 (+7d) |  |  |
| SDR-ST-CON-P1-2780 | HDPE Pipes for Telecom Installation | 2027-01-10 → 2027-01-17 (+7d) | 2027-02-02 → 2027-02-09 (+7d) |  | -48d → -54d |
| 6 | **Backfilling** | 2027-02-03 → 2027-02-10 (+7d) | 2027-02-28 → 2027-03-07 (+7d) |  |  |
| SDR-ST-CON-P1-3580 | Backfilling over HDPE Telecom Pipes | 2027-02-03 → 2027-02-10 (+7d) | 2027-02-28 → 2027-03-07 (+7d) |  | -48d → -54d |
| 7 | **Pulling Cable** | 2027-03-01 → 2027-03-08 (+7d) | 2027-03-29 → 2027-04-05 (+7d) |  |  |
| SDR-ST-CON-P1-4170 | Pulling Cable | 2027-03-01 → 2027-03-08 (+7d) | 2027-03-29 → 2027-04-05 (+7d) |  | -48d → -54d |
| 4 | **Manholes** | 2026-11-22 → 2026-11-29 (+7d) | 2027-04-17 → 2027-04-24 (+7d) |  |  |
| 1 | **Excavation** | 2026-11-22 → 2026-11-29 (+7d) | 2027-01-09 → 2027-01-16 (+7d) |  |  |
| SDR-ST-CON-P1-1380 | Excavation for Telecom Manhole Section 1 | 2026-11-22 → 2026-11-29 (+7d) | 2026-12-15 → 2026-12-22 (+7d) |  | -53d → -59d |
| SDR-ST-CON-P1-2080 | Excavation for Telecom Manhole Section 2 | 2026-12-16 → 2026-12-23 (+7d) | 2027-01-09 → 2027-01-16 (+7d) |  | -53d → -59d |
| 2 | **Bedding Work** | 2027-01-10 → 2027-01-17 (+7d) | 2027-01-31 → 2027-02-07 (+7d) |  |  |
| SDR-ST-CON-P1-2790 | Sand bedding for Telecom Manhole | 2027-01-10 → 2027-01-17 (+7d) | 2027-01-31 → 2027-02-07 (+7d) |  | -53d → -59d |
| 3 | **Install Manholes** | 2027-02-01 → 2027-02-08 (+7d) | 2027-02-25 → 2027-03-04 (+7d) |  |  |
| SDR-ST-CON-P1-3590 | Installation of Telecom Manhole | 2027-02-01 → 2027-02-08 (+7d) | 2027-02-25 → 2027-03-04 (+7d) |  | -53d → -59d |
| 4 | **Testting** | 2027-02-27 → 2027-03-06 (+7d) | 2027-03-27 → 2027-04-03 (+7d) |  |  |

| ID | Task | Start | Finish | Total float |
| --- | --- | --- | --- | --- |
| SDR-ST-CON-P1-4500 | Telecom Manhole finishing works | 2027-02-27 → 2027-03-06 (+7d) | 2027-03-27 → 2027-04-03 (+7d) | -53d → -59d |
| 5 | **Backfilling** | 2027-03-28 → 2027-04-04 (+7d) | 2027-04-17 → 2027-04-24 (+7d) |  |
| SDR-ST-CON-P1-5000 | Backfilling over Telecom Manhole | 2027-03-28 → 2027-04-04 (+7d) | 2027-04-17 → 2027-04-24 (+7d) | -53d → -59d |
| 13 | **LOW VOLTAGE** |  | 2027-06-09 → 2027-06-16 (+7d) |  |
| 1 | **ROAD - 01** |  | 2027-05-05 → 2027-05-12 (+7d) |  |
| 1 | **ROAD-01 From 470 to 1125 m (6)** |  | 2027-05-05 → 2027-05-12 (+7d) |  |
| 6 | **Excavation** |  | 2027-01-13 → 2027-01-20 (+7d) |  |
| SDR-ST-CON-P1-1670 | Excavation Works Part 1 |  | 2026-12-20 → 2026-12-27 (+7d) | -9d → -15d |
| SDR-ST-CON-P1-6230 | Excavation Works Part 2 | 2026-12-21 → 2026-12-28 (+7d) | 2027-01-13 → 2027-01-20 (+7d) | -9d → -15d |
| 7 | **Pipe laying** | 2027-01-14 → 2027-01-21 (+7d) | 2027-02-06 → 2027-02-13 (+7d) |  |
| SDR-ST-CON-P1-2330 | Pipe Laying | 2027-01-14 → 2027-01-21 (+7d) | 2027-02-06 → 2027-02-13 (+7d) | -9d → -15d |
| 8 | **Backfilling** | 2027-02-07 → 2027-02-14 (+7d) | 2027-03-03 → 2027-03-15 (+12d) |  |
| SDR-ST-CON-P1-2990 | Backfilling Works | 2027-02-07 → 2027-02-14 (+7d) | 2027-03-03 → 2027-03-15 (+12d) | 12d → 6d |
| 9 | **Pulling Cable** | 2027-04-12 → 2027-04-19 (+7d) | 2027-05-05 → 2027-05-12 (+7d) |  |
| SDR-ST-CON-P1-3880 | Pulling Cable | 2027-04-12 → 2027-04-19 (+7d) | 2027-05-05 → 2027-05-12 (+7d) | -17d → -23d |
| 2 | **ROAD - 02** |  | 2027-06-09 → 2027-06-16 (+7d) |  |
| 1 | **ROAD-01 From 400 to 900 m (10)** |  | 2027-04-18 → 2027-04-25 (+7d) |  |
| 6 | **Excavation** |  | 2027-01-19 → 2027-01-26 (+7d) |  |
| SDR-ST-CON-P1-1740 | Excavation Works Part 1 |  | 2026-12-26 → 2027-01-02 (+7d) | -2d → -8d |
| SDR-ST-CON-P1-6240 | Excavation Works Part 2 | 2026-12-27 → 2027-01-03 (+7d) | 2027-01-19 → 2027-01-26 (+7d) | -2d → -8d |
| 7 | **Pipe laying** | 2027-01-20 → 2027-01-27 (+7d) | 2027-02-11 → 2027-02-18 (+7d) |  |
| SDR-ST-CON-P1-2440 | Pipe Laying | 2027-01-20 → 2027-01-27 (+7d) | 2027-02-11 → 2027-02-18 (+7d) | -2d → -8d |
| 8 | **Backfilling** | 2027-02-13 → 2027-02-20 (+7d) | 2027-03-14 → 2027-03-21 (+7d) |  |
| SDR-ST-CON-P1-3170 | Backfilling Works | 2027-02-13 → 2027-02-20 (+7d) | 2027-03-14 → 2027-03-21 (+7d) | -2d → -8d |
| 9 | **Pulling Cable** | 2027-03-25 → 2027-04-01 (+7d) | 2027-04-18 → 2027-04-25 (+7d) |  |
| SDR-ST-CON-P1-4040 | Pulling Cable | 2027-03-25 → 2027-04-01 (+7d) | 2027-04-18 → 2027-04-25 (+7d) | -2d → -8d |
| 4 | **ROAD-01 From 900 to 1239 m (11)** |  | 2027-06-09 → 2027-06-16 (+7d) |  |
| 6 | **Excavation** |  | 2027-01-19 → 2027-01-26 (+7d) |  |
| SDR-ST-CON-P1-1750 | Excavation Works Part 1 |  | 2026-12-26 → 2027-01-02 (+7d) | 4d → -2d |
| SDR-ST-CON-P1-6250 | Excavation Works Part 2 | 2026-12-27 → 2027-01-03 (+7d) | 2027-01-19 → 2027-01-26 (+7d) | 4d → -2d |
| 7 | **Pipe laying** | 2027-01-20 → 2027-01-27 (+7d) | 2027-02-11 → 2027-02-18 (+7d) |  |
| SDR-ST-CON-P1-2450 | Pipe Laying | 2027-01-20 → 2027-01-27 (+7d) | 2027-02-11 → 2027-02-18 (+7d) | 4d → -2d |
| 8 | **Backfilling** | 2027-02-13 → 2027-02-20 (+7d) | 2027-03-14 → 2027-03-21 (+7d) |  |
| SDR-ST-CON-P1-3180 | Backfilling Works | 2027-02-13 → 2027-02-20 (+7d) | 2027-03-14 → 2027-03-21 (+7d) | 4d → -2d |
| 9 | **Pulling Cable** | 2027-05-11 → 2027-05-24 (+13d) | 2027-06-09 → 2027-06-16 (+7d) |  |
| SDR-ST-CON-P1-4070 | Pulling Cable | 2027-05-11 → 2027-05-24 (+13d) | 2027-06-09 → 2027-06-16 (+7d) | -34d → -40d |
| 10 | **PORTABLE WATER** |  | 2027-04-29 → 2027-05-06 (+7d) |  |
| 2 | **ROAD - 01** |  | 2027-04-29 → 2027-05-06 (+7d) |  |
| 2 | **ROAD-01 From 0 to 470 m (3)** |  | 2027-04-29 → 2027-05-06 (+7d) |  |
| 3 | **Valve Chambers & Valves & Fire Hydrant** | 2026-11-22 → 2026-11-29 (+7d) | 2027-04-29 → 2027-05-06 (+7d) |  |
| 3 | **Excavation** | 2026-11-22 → 2026-11-29 (+7d) | 2027-01-16 → 2027-01-23 (+7d) |  |
| SDR-ST-CON-P1-1490 | Excavation for Valve Chambers Section 1 | 2026-11-22 → 2026-11-29 (+7d) | 2026-12-15 → 2026-12-22 (+7d) | -35d → -41d |
| SDR-ST-CON-P1-2150 | Excavation for Valve Chambers Section 2 | 2026-12-23 → 2026-12-30 (+7d) | 2027-01-16 → 2027-01-23 (+7d) | -41d → -47d |
| 1 | **bedding Works** | 2027-01-17 → 2027-01-24 (+7d) | 2027-02-09 → 2027-02-16 (+7d) |  |
| SDR-ST-CON-P1-2850 | Sand bedding for Valve Chambers | 2027-01-17 → 2027-01-24 (+7d) | 2027-02-09 → 2027-02-16 (+7d) | -41d → -47d |
| 4 | **Install Chambers & Valves & Fire Hydrant** | 2027-02-10 → 2027-02-17 (+7d) | 2027-03-07 → 2027-03-18 (+11d) |  |
| SDR-ST-CON-P1-3560 | Install Chambers & Valves | 2027-02-10 → 2027-02-17 (+7d) | 2027-03-07 → 2027-03-18 (+11d) | -41d → -47d |
| 2 | **Testing** | 2027-03-08 → 2027-03-20 (+12d) | 2027-04-05 → 2027-04-12 (+7d) |  |
| SDR-ST-CON-P1-4470 | Testing for Chambers & Valves | 2027-03-08 → 2027-03-20 (+12d) | 2027-04-05 → 2027-04-12 (+7d) | -41d → -47d |
| 6 | **Backfilling** | 2027-04-06 → 2027-04-13 (+7d) | 2027-04-29 → 2027-05-06 (+7d) |  |
| SDR-ST-CON-P1-5030 | Backfilling for Chambers & Valves | 2027-04-06 → 2027-04-13 (+7d) | 2027-04-29 → 2027-05-06 (+7d) | -41d → -47d |
| 1 | **ROAD-01 From 470 to 1125 m (6)** |  | 2027-04-22 → 2027-04-29 (+7d) |  |
| 3 | **Valve Chambers & Valves & Fire Hydrant** | 2026-11-22 → 2026-11-29 (+7d) | 2027-04-22 → 2027-04-29 (+7d) |  |
| 3 | **Excavation** | 2026-11-22 → 2026-11-29 (+7d) | 2027-01-09 → 2027-01-16 (+7d) |  |
| SDR-ST-CON-P1-1420 | Excavation for Valve Chambers Section 1 | 2026-11-22 → 2026-11-29 (+7d) | 2026-12-15 → 2026-12-22 (+7d) | -30d → -36d |
| SDR-ST-CON-P1-2100 | Excavation for Valve Chambers Section 2 | 2026-12-16 → 2026-12-23 (+7d) | 2027-01-09 → 2027-01-16 (+7d) | -30d → -36d |
| 1 | **bedding Works** | 2027-01-10 → 2027-01-17 (+7d) | 2027-02-02 → 2027-02-09 (+7d) |  |
| SDR-ST-CON-P1-2820 | Sand bedding for Valve Chambers | 2027-01-10 → 2027-01-17 (+7d) | 2027-02-02 → 2027-02-09 (+7d) | -30d → -36d |
| 4 | **Install Chambers & Valves & Fire Hydrant** | 2027-02-03 → 2027-02-10 (+7d) | 2027-02-28 → 2027-03-07 (+7d) |  |
| SDR-ST-CON-P1-3660 | Install Chambers & Valves | 2027-02-03 → 2027-02-10 (+7d) | 2027-02-28 → 2027-03-07 (+7d) | -30d → -36d |
| 2 | **Testing** | 2027-03-01 → 2027-03-08 (+7d) | 2027-03-29 → 2027-04-05 (+7d) |  |
| SDR-ST-CON-P1-4550 | Testing for Chambers & Valves | 2027-03-01 → 2027-03-08 (+7d) | 2027-03-29 → 2027-04-05 (+7d) | -30d → -36d |
| 6 | **Backfilling** | 2027-03-30 → 2027-04-06 (+7d) | 2027-04-22 → 2027-04-29 (+7d) |  |
| SDR-ST-CON-P1-5100 | Backfilling for Chambers & Valves | 2027-03-30 → 2027-04-06 (+7d) | 2027-04-22 → 2027-04-29 (+7d) | -30d → -36d |
| 3 | **ROAD-01 From 1125 to 1765 m (7)** |  | 2027-04-22 → 2027-04-29 (+7d) |  |
| 3 | **Valve Chambers & Valves & Fire Hydrant** | 2026-11-22 → 2026-11-29 (+7d) | 2027-04-22 → 2027-04-29 (+7d) |  |
| 3 | **Excavation** | 2026-11-22 → 2026-11-29 (+7d) | 2027-01-09 → 2027-01-16 (+7d) |  |
| SDR-ST-CON-P1-1640 | Excavation for Valve Chambers Section 1 | 2026-11-22 → 2026-11-29 (+7d) | 2026-12-15 → 2026-12-22 (+7d) | -48d → -54d |
| SDR-ST-CON-P1-2230 | Excavation for Valve Chambers Section 2 | 2026-12-16 → 2026-12-23 (+7d) | 2027-01-09 → 2027-01-16 (+7d) | -48d → -54d |
| 1 | **bedding Works** | 2027-01-10 → 2027-01-17 (+7d) | 2027-02-02 → 2027-02-09 (+7d) |  |

| ID | Task | Start | Finish | Complete | Total float |
| --- | --- | --- | --- | --- | --- |
| SDR-ST-CON-P1-2900 | Sand bedding for Valve Chambers | 2027-01-10 → 2027-01-17 (+7d) | 2027-02-02 → 2027-02-09 (+7d) |  | -48d → -54d |
| 4 | **Install Chambers & Valves & Fire Hydrant** | 2027-02-03 → 2027-02-10 (+7d) | 2027-02-28 → 2027-03-07 (+7d) |  |  |
| SDR-ST-CON-P1-3640 | Install Chambers & Valves | 2027-02-03 → 2027-02-10 (+7d) | 2027-02-28 → 2027-03-07 (+7d) |  | -48d → -54d |
| 2 | **Testing** | 2027-03-01 → 2027-03-08 (+7d) | 2027-03-29 → 2027-04-05 (+7d) |  |  |
| SDR-ST-CON-P1-4510 | Testing for Chambers & Valves | 2027-03-01 → 2027-03-08 (+7d) | 2027-03-29 → 2027-04-05 (+7d) |  | -41d → -47d |
| 6 | **Backfilling** | 2027-03-30 → 2027-04-06 (+7d) | 2027-04-22 → 2027-04-29 (+7d) |  |  |
| SDR-ST-CON-P1-5070 | Backfilling for Chambers & Valves | 2027-03-30 → 2027-04-06 (+7d) | 2027-04-22 → 2027-04-29 (+7d) |  | -41d → -47d |
| 3 | **ROAD - 02** |  | 2027-04-18 → 2027-04-25 (+7d) |  |  |
| 3 | **ROAD-01 From 0 to 400 m (9)** |  | 2027-04-18 → 2027-04-25 (+7d) |  |  |
| 7 | **Pipes Work** |  | 2027-02-16 → 2027-02-24 (+8d) |  |  |
| 5 | **Testing** |  | 2026-12-03 → 2026-12-10 (+7d) |  |  |
| SDR-ST-CON-P1-4340 | Testing of PW HDPE Pipe 315 mm. |  | 2026-12-03 → 2026-12-10 (+7d) |  | 51d → 45d |
| 9 | **Backfilling** |  | 2027-02-16 → 2027-02-24 (+8d) |  |  |
| SDR-ST-CON-P1-4910 | Backfilling of PW HDPE Pipe 315 mm. |  | 2027-02-16 → 2027-02-24 (+8d) |  | 21d → 15d |
| 3 | **Valve Chambers & Valves & Fire Hydrant** | 2026-11-22 → 2026-11-29 (+7d) | 2027-04-18 → 2027-04-25 (+7d) |  |  |
| 3 | **Excavation** | 2026-11-22 → 2026-11-29 (+7d) | 2027-01-06 → 2027-01-13 (+7d) |  |  |
| SDR-ST-CON-P1-1940 | Excavation for Valve Chambers Section 1 | 2026-11-22 → 2026-11-29 (+7d) | 2026-12-14 → 2026-12-21 (+7d) |  | -50d → -56d |
| SDR-ST-CON-P1-2630 | Excavation for Valve Chambers Section 2 | 2026-12-15 → 2026-12-22 (+7d) | 2027-01-06 → 2027-01-13 (+7d) |  | -50d → -56d |
| 1 | **bedding Works** | 2027-01-07 → 2027-01-14 (+7d) | 2027-01-30 → 2027-02-06 (+7d) |  |  |
| SDR-ST-CON-P1-3400 | Sand bedding for Valve Chambers | 2027-01-07 → 2027-01-14 (+7d) | 2027-01-30 → 2027-02-06 (+7d) |  | -50d → -56d |
| 4 | **Install Chambers & Valves & Fire Hydrant** | 2027-01-31 → 2027-02-07 (+7d) | 2027-02-23 → 2027-03-02 (+7d) |  |  |
| SDR-ST-CON-P1-4330 | Install Chambers & Valves | 2027-01-31 → 2027-02-07 (+7d) | 2027-02-23 → 2027-03-02 (+7d) |  | -50d → -56d |
| 2 | **Testing** | 2027-02-24 → 2027-03-03 (+7d) | 2027-03-16 → 2027-03-23 (+7d) |  |  |
| SDR-ST-CON-P1-5060 | Testing for Chambers & Valves | 2027-02-24 → 2027-03-03 (+7d) | 2027-03-16 → 2027-03-23 (+7d) |  | -19d → -25d |
| 6 | **Backfilling** | 2027-03-25 → 2027-04-01 (+7d) | 2027-04-18 → 2027-04-25 (+7d) |  |  |
| SDR-ST-CON-P1-5730 | Backfilling for Chambers & Valves | 2027-03-25 → 2027-04-01 (+7d) | 2027-04-18 → 2027-04-25 (+7d) |  | -26d → -32d |
| 2 | **ROAD-01 From 400 to 900 m (10)** |  | 2027-04-18 → 2027-04-25 (+7d) |  |  |
| 7 | **Pipes Work** |  | 2026-11-30 → 2026-12-07 (+7d) |  |  |
| 5 | **Testing** |  | 2026-11-30 → 2026-12-07 (+7d) |  |  |
| SDR-ST-CON-P1-4060 | Testing of PW HDPE Pipe 315 mm. |  | 2026-11-30 → 2026-12-07 (+7d) |  | 32d → 26d |
| 3 | **Valve Chambers & Valves & Fire Hydrant** | 2026-11-22 → 2026-11-29 (+7d) | 2027-04-18 → 2027-04-25 (+7d) |  |  |
| 3 | **Excavation** | 2026-11-22 → 2026-11-29 (+7d) | 2027-01-14 → 2027-01-21 (+7d) |  |  |
| SDR-ST-CON-P1-1860 | Excavation for Valve Chambers Section 1 | 2026-11-22 → 2026-11-29 (+7d) | 2026-12-14 → 2026-12-21 (+7d) |  | -54d → -60d |
| SDR-ST-CON-P1-2550 | Excavation for Valve Chambers Section 2 | 2026-12-23 → 2026-12-30 (+7d) | 2027-01-14 → 2027-01-21 (+7d) |  | -51d → -57d |
| 1 | **bedding Works** | 2027-01-16 → 2027-01-23 (+7d) | 2027-02-07 → 2027-02-14 (+7d) |  |  |
| SDR-ST-CON-P1-3310 | Sand bedding for Valve Chambers | 2027-01-16 → 2027-01-23 (+7d) | 2027-02-07 → 2027-02-14 (+7d) |  | -51d → -57d |
| 4 | **Install Chambers & Valves & Fire Hydrant** | 2027-02-08 → 2027-02-15 (+7d) | 2027-03-03 → 2027-03-15 (+12d) |  |  |
| SDR-ST-CON-P1-4210 | Install Chambers & Valves | 2027-02-08 → 2027-02-15 (+7d) | 2027-03-03 → 2027-03-15 (+12d) |  | -51d → -57d |
| 2 | **Testing** | 2027-03-04 → 2027-03-16 (+12d) | 2027-03-24 → 2027-03-31 (+7d) |  |  |
| SDR-ST-CON-P1-4990 | Testing for Chambers & Valves | 2027-03-04 → 2027-03-16 (+12d) | 2027-03-24 → 2027-03-31 (+7d) |  | -31d → -37d |
| 6 | **Backfilling** | 2027-03-25 → 2027-04-01 (+7d) | 2027-04-18 → 2027-04-25 (+7d) |  |  |
| SDR-ST-CON-P1-5710 | Backfilling for Chambers & Valves | 2027-03-25 → 2027-04-01 (+7d) | 2027-04-18 → 2027-04-25 (+7d) |  | -25d → -31d |
| 1 | **ROAD-01 From 900 to 1239 m (11)** |  | 2027-04-11 → 2027-04-18 (+7d) |  |  |
| 7 | **Pipes Work** |  | 2027-02-08 → 2027-02-07 (-1d) |  |  |
| 8 | **bedding Works** |  | 2026-12-27 → 2026-11-12 (-45d) |  |  |
| SDR-ST-CON-P1-3220 | Sand bedding for PW HDPE Pipes 315 mm |  | 2026-12-27 → 2026-11-12 A (-45d) | 80% → 100% | -18d → none |
| 2 | **Pipes Laying** |  | 2026-12-30 → 2026-11-12 (-48d) |  |  |
| SDR-ST-CON-P1-3610 | Install PW 315 mm HDPE Pipe |  | 2026-12-30 → 2026-11-12 A (-48d) | 80% → 100% | -18d → none |
| 5 | **Testing** | 2026-12-31 → 2026-12-30 (-1d) | 2027-01-16 → 2027-01-14 (-2d) |  |  |
| SDR-ST-CON-P1-4090 | Testing of PW HDPE Pipe 315 mm. | 2026-12-31 → 2026-12-30 (-1d) | 2027-01-16 → 2027-01-14 (-2d) |  | -18d → -17d |
| 9 | **Backfilling** | 2027-01-17 → 2027-01-16 (-1d) | 2027-02-08 → 2027-02-07 (-1d) |  |  |
| SDR-ST-CON-P1-4660 | Backfilling of PW HDPE Pipe 315 mm. | 2027-01-17 → 2027-01-16 (-1d) | 2027-02-08 → 2027-02-07 (-1d) |  | -18d → -17d |
| 3 | **Valve Chambers & Valves & Fire Hydrant** | 2026-11-22 → 2026-11-29 (+7d) | 2027-04-11 → 2027-04-18 (+7d) |  |  |
| 3 | **Excavation** | 2026-11-22 → 2026-11-29 (+7d) | 2027-01-06 → 2027-01-13 (+7d) |  |  |
| SDR-ST-CON-P1-2020 | Excavation for Valve Chambers Section 1 | 2026-11-22 → 2026-11-29 (+7d) | 2026-12-14 → 2026-12-21 (+7d) |  | -58d → -64d |
| SDR-ST-CON-P1-2740 | Excavation for Valve Chambers Section 2 | 2026-12-15 → 2026-12-22 (+7d) | 2027-01-06 → 2027-01-13 (+7d) |  | -58d → -64d |
| 1 | **bedding Works** | 2027-01-07 → 2027-01-14 (+7d) | 2027-01-30 → 2027-02-06 (+7d) |  |  |
| SDR-ST-CON-P1-3550 | Sand bedding for Valve Chambers | 2027-01-07 → 2027-01-14 (+7d) | 2027-01-30 → 2027-02-06 (+7d) |  | -58d → -64d |
| 4 | **Install Chambers & Valves & Fire Hydrant** | 2027-02-01 → 2027-02-08 (+7d) | 2027-02-24 → 2027-03-03 (+7d) |  |  |
| SDR-ST-CON-P1-4460 | Install Chambers & Valves | 2027-02-01 → 2027-02-08 (+7d) | 2027-02-24 → 2027-03-03 (+7d) |  | -58d → -64d |
| 2 | **Testing** | 2027-02-25 → 2027-03-04 (+7d) | 2027-03-17 → 2027-03-24 (+7d) |  |  |
| SDR-ST-CON-P1-5190 | Testing for Chambers & Valves | 2027-02-25 → 2027-03-04 (+7d) | 2027-03-17 → 2027-03-24 (+7d) |  | -31d → -37d |
| 6 | **Backfilling** | 2027-03-18 → 2027-03-25 (+7d) | 2027-04-11 → 2027-04-18 (+7d) |  |  |
| SDR-ST-CON-P1-5750 | Backfilling for Chambers & Valves | 2027-03-18 → 2027-03-25 (+7d) | 2027-04-11 → 2027-04-18 (+7d) |  | -31d → -37d |
| 7 | **SEWARAGE NETWORK** |  | 2027-04-25 → 2027-05-02 (+7d) |  |  |
| 6 | **ROAD - 01** |  | 2027-04-25 → 2027-05-02 (+7d) |  |  |
| 2 | **ROAD-01 From 0 to 470 m (3) 110 mm HDPE** |  | 2027-03-08 → 2027-03-20 (+12d) |  |  |
| 7 | **Pipes Work** |  | 2027-01-07 → 2027-01-14 (+7d) |  |  |
| 3 | **Testing** | 2026-11-22 → 2026-11-29 (+7d) | 2026-12-14 → 2026-12-21 (+7d) |  |  |
| SDR-ST-CON-P1-4590 | Testing of 200 mm GRP Pipe. | 2026-11-22 → 2026-11-29 (+7d) | 2026-12-14 → 2026-12-21 (+7d) |  | 2d → -4d |

| ID | Task | Start | Finish | Complete | Total float |
| --- | --- | --- | --- | --- | --- |
| 6 | **Backfilling** | 2026-12-15 → 2026-12-22 (+7d) | 2027-01-07 → 2027-01-14 (+7d) |  |  |
| SDR-ST-CON-P1-5570 | Backfilling of 200 mm GRP Pipe. | 2026-12-15 → 2026-12-22 (+7d) | 2027-01-07 → 2027-01-14 (+7d) |  | 2d → -4d |
| 4 | **Manholes** |  | 2027-03-08 → 2027-03-20 (+12d) |  |  |
| 4 | **Testing** | 2027-01-18 → 2027-01-25 (+7d) | 2027-02-10 → 2027-02-17 (+7d) |  |  |
| SDR-ST-CON-P1-4790 | Testing | 2027-01-18 → 2027-01-25 (+7d) | 2027-02-10 → 2027-02-17 (+7d) |  | 6d → 0d |
| 5 | **Backfilling** | 2027-02-11 → 2027-02-18 (+7d) | 2027-03-08 → 2027-03-20 (+12d) |  |  |
| SDR-ST-CON-P1-5720 | Backfilling | 2027-02-11 → 2027-02-18 (+7d) | 2027-03-08 → 2027-03-20 (+12d) |  | 6d → 0d |
| 1 | **ROAD-01 From 470 to 1125 m (6) 110 mm HDPE** |  | 2027-03-08 → 2027-03-20 (+12d) |  |  |
| 7 | **Pipes Work** |  | 2027-01-07 → 2027-01-14 (+7d) |  |  |
| 3 | **Testing** | 2026-11-22 → 2026-11-29 (+7d) | 2026-12-14 → 2026-12-21 (+7d) |  |  |
| SDR-ST-CON-P1-4120 | Testing of 200 mm GRP Pipe. | 2026-11-22 → 2026-11-29 (+7d) | 2026-12-14 → 2026-12-21 (+7d) |  | 8d → 2d |
| 6 | **Backfilling** | 2026-12-15 → 2026-12-22 (+7d) | 2027-01-07 → 2027-01-14 (+7d) |  |  |
| SDR-ST-CON-P1-4970 | Backfilling of 200 mm GRP Pipe. | 2026-12-15 → 2026-12-22 (+7d) | 2027-01-07 → 2027-01-14 (+7d) |  | 8d → 2d |
| 4 | **Manholes** |  | 2027-03-08 → 2027-03-20 (+12d) |  |  |
| 4 | **Testing** | 2027-01-18 → 2027-01-25 (+7d) | 2027-02-10 → 2027-02-17 (+7d) |  |  |
| SDR-ST-CON-P1-4710 | Testing | 2027-01-18 → 2027-01-25 (+7d) | 2027-02-10 → 2027-02-17 (+7d) |  | -30d → -36d |
| 5 | **Backfilling** | 2027-02-11 → 2027-02-18 (+7d) | 2027-03-08 → 2027-03-20 (+12d) |  |  |
| SDR-ST-CON-P1-5700 | Backfilling | 2027-02-11 → 2027-02-18 (+7d) | 2027-03-08 → 2027-03-20 (+12d) |  | 5d → -1d |
| 3 | **ROAD-01 From 1125 to 1765 m (7) 110 mm HDPE** |  | 2027-04-25 → 2027-05-02 (+7d) |  |  |
| 7 | **Pipes Work** |  | 2027-02-04 → 2027-02-01 (-3d) |  |  |
| 1 | **Excavation** |  | 2026-11-26 → 2026-11-04 (-22d) |  |  |
| SDR-ST-CON-P1-2240 | Excavation for GRP Pipe 200mm Diameter Section 2 |  | 2026-11-26 → 2026-11-04 A (-22d) | 95% → 100% | -16d → none |
| 5 | **bedding Works** |  | 2026-12-01 → 2026-11-04 (-27d) |  |  |
| SDR-ST-CON-P1-2830 | Sand bedding for GRP Pipe 200mm Diameter |  | 2026-12-01 → 2026-11-04 A (-27d) | 95% → 100% | -16d → none |
| 2 | **Pipes Laying** |  | 2026-12-17 → 2026-12-14 (-3d) |  |  |
| SDR-ST-CON-P1-3420 | 200 mm GRP Pipe Laying |  | 2026-12-17 → 2026-12-14 (-3d) |  | -16d → -13d |
| 3 | **Testing** | 2026-12-19 → 2026-12-15 (-4d) | 2027-01-11 → 2027-01-07 (-4d) |  |  |
| SDR-ST-CON-P1-4180 | Testing of 200 mm GRP Pipe. | 2026-12-19 → 2026-12-15 (-4d) | 2027-01-11 → 2027-01-07 (-4d) |  | -16d → -13d |
| 6 | **Backfilling** | 2027-01-12 → 2027-01-09 (-3d) | 2027-02-04 → 2027-02-01 (-3d) |  |  |
| SDR-ST-CON-P1-5020 | Backfilling of 200 mm GRP Pipe. | 2027-01-12 → 2027-01-09 (-3d) | 2027-02-04 → 2027-02-01 (-3d) |  | -16d → -13d |
| 4 | **Manholes** | 2026-11-22 → 2026-11-29 (+7d) | 2027-04-25 → 2027-05-02 (+7d) |  |  |
| 1 | **Excavation** | 2026-11-22 → 2026-11-29 (+7d) | 2027-01-09 → 2027-01-16 (+7d) |  |  |
| SDR-ST-CON-P1-1660 | Excavation for manhole. Section 1 | 2026-11-22 → 2026-11-29 (+7d) | 2026-12-15 → 2026-12-22 (+7d) |  | -62d → -68d |
| SDR-ST-CON-P1-2310 | Excavation for manhole. Section 2 | 2026-12-16 → 2026-12-23 (+7d) | 2027-01-09 → 2027-01-16 (+7d) |  | -62d → -68d |
| 2 | **bedding Works** | 2027-01-10 → 2027-01-17 (+7d) | 2027-02-02 → 2027-02-09 (+7d) |  |  |
| SDR-ST-CON-P1-3030 | Sand bedding for manhole. | 2027-01-10 → 2027-01-17 (+7d) | 2027-02-02 → 2027-02-09 (+7d) |  | -62d → -68d |
| 3 | **Install Manholes** | 2027-02-03 → 2027-02-10 (+7d) | 2027-02-28 → 2027-03-07 (+7d) |  |  |
| SDR-ST-CON-P1-3910 | Manhole Installation | 2027-02-03 → 2027-02-10 (+7d) | 2027-02-28 → 2027-03-07 (+7d) |  | -62d → -68d |
| 4 | **Testing** | 2027-03-01 → 2027-03-08 (+7d) | 2027-03-29 → 2027-04-05 (+7d) |  |  |
| SDR-ST-CON-P1-4830 | Testing | 2027-03-01 → 2027-03-08 (+7d) | 2027-03-29 → 2027-04-05 (+7d) |  | -62d → -68d |
| 5 | **Backfilling** | 2027-04-05 → 2027-04-12 (+7d) | 2027-04-25 → 2027-05-02 (+7d) |  |  |
| SDR-ST-CON-P1-5740 | Backfilling | 2027-04-05 → 2027-04-12 (+7d) | 2027-04-25 → 2027-05-02 (+7d) |  | -62d → -68d |
| 1 | **ROAD - 02** |  | 2027-04-08 → 2027-04-15 (+7d) |  |  |
| 1 | **ROAD-01 From 400 to 900 m (10) 110 mm HDPE** |  | 2027-03-08 → 2027-03-20 (+12d) |  |  |
| 7 | **Pipes Work** |  | 2027-02-08 → 2027-01-21 (-18d) |  |  |
| 1 | **Excavation** |  | 2026-12-10 → 2026-11-04 (-36d) |  |  |
| SDR-ST-CON-P1-1810 | Excavation for GRP Pipe 200mm Diameter Section 1 |  | 2026-12-03 → 2026-11-04 A (-29d) | 98% → 100% | -6d → none |
| SDR-ST-CON-P1-2530 | Excavation for GRP Pipe 200mm Diameter Section 2 |  | 2026-12-10 → 2026-11-04 A (-36d) | 98% → 100% | -6d → none |
| 5 | **bedding Works** |  | 2026-12-15 → 2026-12-02 (-13d) |  |  |
| SDR-ST-CON-P1-3210 | Sand bedding for GRP Pipe 200mm Diameter |  | 2026-12-15 → 2026-12-02 (-13d) |  | -6d → 9d |
| 2 | **Pipes Laying** |  | 2026-12-21 → 2026-12-03 (-18d) |  |  |
| SDR-ST-CON-P1-3800 | 200 mm GRP Pipe Laying |  | 2026-12-21 → 2026-12-03 (-18d) |  | -6d → 9d |
| 3 | **Testing** | 2026-12-22 → 2026-12-05 (-17d) | 2027-01-14 → 2026-12-28 (-17d) |  |  |
| SDR-ST-CON-P1-4580 | Testing of 200 mm GRP Pipe. | 2026-12-22 → 2026-12-05 (-17d) | 2027-01-14 → 2026-12-28 (-17d) |  | -6d → 9d |
| 6 | **Backfilling** | 2027-01-16 → 2026-12-29 (-18d) | 2027-02-08 → 2027-01-21 (-18d) |  |  |
| SDR-ST-CON-P1-5500 | Backfilling of 200 mm GRP Pipe. | 2027-01-16 → 2026-12-29 (-18d) | 2027-02-08 → 2027-01-21 (-18d) |  | -6d → 9d |
| 4 | **Manholes** |  | 2027-03-08 → 2027-03-20 (+12d) |  |  |
| 4 | **Testing** | 2027-01-18 → 2027-01-25 (+7d) | 2027-02-10 → 2027-02-17 (+7d) |  |  |
| SDR-ST-CON-P1-5120 | Testing | 2027-01-18 → 2027-01-25 (+7d) | 2027-02-10 → 2027-02-17 (+7d) |  | -29d → -35d |
| 5 | **Backfilling** | 2027-02-11 → 2027-02-18 (+7d) | 2027-03-08 → 2027-03-20 (+12d) |  |  |
| SDR-ST-CON-P1-5770 | Backfilling | 2027-02-11 → 2027-02-18 (+7d) | 2027-03-08 → 2027-03-20 (+12d) |  | 5d → -1d |
| 3 | **ROAD-01 From 900 to 1239 m (11) 110 mm HDPE** |  | 2027-04-08 → 2027-04-15 (+7d) |  |  |
| 7 | **Pipes Work** |  | 2027-03-31 → 2027-02-27 (-32d) |  |  |
| 1 | **Excavation** |  | 2026-12-26 → 2026-11-05 (-51d) |  |  |
| SDR-ST-CON-P1-2030 | Excavation for GRP Pipe 200mm Diameter Section 1 |  | 2026-12-03 → 2026-11-05 A (-28d) | 85% → 100% | -45d → none |
| SDR-ST-CON-P1-2700 | Excavation for GRP Pipe 200mm Diameter Section 2 | 2026-12-08 → 2026-09-15 A (-84d) | 2026-12-26 → 2026-11-05 A (-51d) | 0% → 100% | -45d → none |
| 5 | **bedding Works** | 2026-12-27 → 2026-11-29 (-28d) | 2027-01-06 → 2026-12-09 (-28d) |  |  |
| SDR-ST-CON-P1-3330 | Sand bedding for GRP Pipe 200mm Diameter | 2026-12-27 → 2026-11-29 (-28d) | 2027-01-06 → 2026-12-09 (-28d) |  | -45d → -21d |
| 2 | **Pipes Laying** | 2027-01-07 → 2026-12-10 (-28d) | 2027-01-31 → 2027-01-03 (-28d) |  |  |
| SDR-ST-CON-P1-3750 | 200 mm GRP Pipe Laying | 2027-01-07 → 2026-12-10 (-28d) | 2027-01-31 → 2027-01-03 (-28d) |  | -45d → -21d |

| ID | Task | Start | Finish | Complete | Total float |
| --- | --- | --- | --- | --- | --- |
| 3 | **Testing** | 2027-02-01 → 2027-01-04 (-28d) | 2027-02-25 → 2027-01-27 (-29d) |  |  |
| SDR-ST-CON-P1-4670 | Testing of 200 mm GRP Pipe. | 2027-02-01 → 2027-01-04 (-28d) | 2027-02-25 → 2027-01-27 (-29d) |  | -45d → -21d |
| 6 | **Backfilling** | 2027-03-03 → 2027-02-02 (-29d) | 2027-03-31 → 2027-02-27 (-32d) |  |  |
| SDR-ST-CON-P1-5670 | Backfilling of 200 mm GRP Pipe. | 2027-03-03 → 2027-02-02 (-29d) | 2027-03-31 → 2027-02-27 (-32d) |  | -45d → -21d |
| 4 | **Manholes** |  | 2027-04-08 → 2027-04-15 (+7d) |  |  |
| 1 | **Excavation** |  | 2026-11-26 → 2026-11-09 (-17d) |  |  |
| SDR-ST-CON-P1-2760 | Excavation for manhole. Section 2 |  | 2026-11-26 → 2026-11-09 A (-17d) | 85% → 100% | -13d → none |
| 2 | **bedding Works** | 2026-11-28 → 2026-10-25 (-34d) | 2026-12-21 → 2026-11-12 (-39d) |  |  |
| SDR-ST-CON-P1-3620 | Sand bedding for manhole. | 2026-11-28 → 2026-10-25 A (-34d) | 2026-12-21 → 2026-11-12 A (-39d) | 0% → 100% | -13d → none |
| 3 | **Install Manholes** | 2027-01-18 → 2027-01-25 (+7d) | 2027-02-10 → 2027-02-17 (+7d) |  |  |
| SDR-ST-CON-P1-4560 | Manhole Installation | 2027-01-18 → 2027-01-25 (+7d) | 2027-02-10 → 2027-02-17 (+7d) |  | -29d → -35d |
| 4 | **Testing** | 2027-02-11 → 2027-02-18 (+7d) | 2027-03-08 → 2027-03-20 (+12d) |  |  |
| SDR-ST-CON-P1-5440 | Testing | 2027-02-11 → 2027-02-18 (+7d) | 2027-03-08 → 2027-03-20 (+12d) |  | -29d → -35d |
| 5 | **Backfilling** | 2027-03-16 → 2027-03-23 (+7d) | 2027-04-08 → 2027-04-15 (+7d) |  |  |
| SDR-ST-CON-P1-5800 | Backfilling | 2027-03-16 → 2027-03-23 (+7d) | 2027-04-08 → 2027-04-15 (+7d) |  | -29d → -35d |
| 11 | **STORM WATER** |  | 2027-05-27 → 2027-06-03 (+7d) |  |  |
| 2 | **ROAD N...** |  | 2027-05-27 → 2027-06-03 (+7d) |  |  |
| 8 | **Pipes Works** |  | 2027-05-27 → 2027-06-03 (+7d) |  |  |
| 6 | **Testing** |  | 2026-12-27 → 2027-01-03 (+7d) |  |  |
| SDR-ST-CON-P1-3830 | Testing ST GRP Pipes |  | 2026-12-27 → 2027-01-03 (+7d) |  | -8d → -14d |
| 3 | **Backfilling** |  | 2027-05-27 → 2027-06-03 (+7d) |  |  |
| SDR-ST-CON-P1-4760 | Backfilling ST GRP Pipes |  | 2027-05-27 → 2027-06-03 (+7d) |  | -78d → -84d |
| 3 | **Package-3** | 2026-11-22 → 2026-11-29 (+7d) | 2027-12-05 → 2027-12-12 (+7d) |  |  |
| 1 | **Site Works** | 2026-11-22 → 2026-11-29 (+7d) | 2026-12-31 → 2027-01-07 (+7d) |  |  |
| 1 | **Earthworks** | 2026-11-22 → 2026-11-29 (+7d) | 2026-12-31 → 2027-01-07 (+7d) |  |  |
| 2 | **Excavation** | 2026-11-22 → 2026-11-29 (+7d) | 2026-12-14 → 2026-12-21 (+7d) |  |  |
| SDR-ST-CON-P3-1000 | Excavation in all types of soil to the required depth includes removal of waste material | 2026-11-22 → 2026-11-29 (+7d) | 2026-12-14 → 2026-12-21 (+7d) |  | -113d → -119d |
| 1 | **Fill** | 2026-12-15 → 2026-12-22 (+7d) | 2026-12-31 → 2027-01-07 (+7d) |  |  |
| SDR-ST-CON-P3-1010 | Backfilling with improved and select fill material from the site or imported | 2026-12-15 → 2026-12-22 (+7d) | 2026-12-31 → 2027-01-07 (+7d) |  | -113d → -119d |
| 2 | **Platform Works** | 2027-01-02 → 2027-01-09 (+7d) | 2027-11-18 → 2027-11-25 (+7d) |  |  |
| 1 | **Platform** | 2027-01-02 → 2027-01-09 (+7d) | 2027-07-04 → 2027-07-11 (+7d) |  |  |
| 1 | **Earthworks** | 2027-01-02 → 2027-01-09 (+7d) | 2027-02-09 → 2027-02-16 (+7d) |  |  |
| 1 | **Excavation** | 2027-01-02 → 2027-01-09 (+7d) | 2027-01-19 → 2027-01-26 (+7d) |  |  |
| SDR-ST-CON-P3-1020 | Excavation in all types of soil to the required depth includes removal of waste material | 2027-01-02 → 2027-01-09 (+7d) | 2027-01-19 → 2027-01-26 (+7d) |  | -113d → -119d |
| 2 | **Fill** | 2027-01-20 → 2027-01-27 (+7d) | 2027-02-09 → 2027-02-16 (+7d) |  |  |
| SDR-ST-CON-P3-1030 | Backfilling with improved and select fill material from the site or imported Part 1 | 2027-01-20 → 2027-01-27 (+7d) | 2027-02-09 → 2027-02-16 (+7d) |  | -113d → -119d |
| SDR-ST-CON-P3-1040 | Backfilling with improved and select fill material from the site or imported Part 2 | 2027-01-20 → 2027-01-27 (+7d) | 2027-02-07 → 2027-02-14 (+7d) |  | -113d → -119d |
| 3 | **Concrete Works** | 2027-02-10 → 2027-02-17 (+7d) | 2027-07-04 → 2027-07-11 (+7d) |  |  |
| 1 | **Foundations** | 2027-02-10 → 2027-02-17 (+7d) | 2027-04-20 → 2027-04-27 (+7d) |  |  |
| SDR-ST-CON-P3-1060 | Pouring Concrete under Foundation 100 mm thickness lean | 2027-02-10 → 2027-02-17 (+7d) | 2027-02-21 → 2027-03-01 (+8d) |  | -113d → -119d |
| SDR-ST-CON-P3-1080 | Provide and lay 2 layers of waterproofing bitumenous membrane 4mm below footings | 2027-02-23 → 2027-03-02 (+7d) | 2027-03-03 → 2027-03-15 (+12d) |  | -113d → -119d |
| SDR-ST-CON-P3-1100 | Pouring Concrete for protecting waterproofing under the foundation 50 mm thickness | 2027-03-06 → 2027-03-17 (+11d) | 2027-03-21 → 2027-03-28 (+7d) |  | -113d → -119d |
| 1 | **Footings** | 2027-03-22 → 2027-03-29 (+7d) | 2027-04-20 → 2027-04-27 (+7d) |  |  |
| SDR-ST-CON-P3-1130 | Pouring concrete for footings Part 1 | 2027-03-22 → 2027-03-29 (+7d) | 2027-04-01 → 2027-04-08 (+7d) |  | -113d → -119d |
| SDR-ST-CON-P3-1150 | Pouring concrete for footings Part 2 | 2027-04-03 → 2027-04-10 (+7d) | 2027-04-13 → 2027-04-20 (+7d) |  | -113d → -119d |
| SDR-ST-CON-P3-1180 | Pouring concrete for footings Part 3 | 2027-04-03 → 2027-04-10 (+7d) | 2027-04-20 → 2027-04-27 (+7d) |  | -113d → -119d |
| 2 | **Substructure** | 2027-04-21 → 2027-04-28 (+7d) | 2027-05-25 → 2027-06-01 (+7d) |  |  |
| 1 | **Basement** | 2027-04-24 → 2027-05-01 (+7d) | 2027-05-08 → 2027-05-15 (+7d) |  |  |
| SDR-ST-CON-P3-1200 | Pouring concrete for Basement Part 1 | 2027-04-24 → 2027-05-01 (+7d) | 2027-05-04 → 2027-05-11 (+7d) |  | -113d → -119d |
| SDR-ST-CON-P3-1220 | Pouring concrete for Basement Part 2 | 2027-04-29 → 2027-05-06 (+7d) | 2027-05-08 → 2027-05-15 (+7d) |  | -92d → -98d |
| 2 | **Tank** | 2027-04-21 → 2027-04-28 (+7d) | 2027-05-04 → 2027-05-11 (+7d) |  |  |
| SDR-ST-CON-P3-1210 | Pouring concrete for Tank Part 1 | 2027-04-21 → 2027-04-28 (+7d) | 2027-04-27 → 2027-05-04 (+7d) |  | -89d → -95d |
| SDR-ST-CON-P3-1230 | Pouring concrete for Tank Part 2 | 2027-04-28 → 2027-05-05 (+7d) | 2027-05-04 → 2027-05-11 (+7d) |  | -89d → -95d |
| 3 | **Retaining Walls** | 2027-05-05 → 2027-05-12 (+7d) | 2027-05-25 → 2027-06-01 (+7d) |  |  |
| SDR-ST-CON-P3-1190 | Pouring concrete for Retaining Walls Part 1 | 2027-05-05 → 2027-05-12 (+7d) | 2027-05-12 → 2027-05-25 (+13d) |  | -113d → -119d |
| SDR-ST-CON-P3-1250 | Pouring concrete for Retaining Walls Part 2 | 2027-05-13 → 2027-05-26 (+13d) | 2027-05-25 → 2027-06-01 (+7d) |  | -113d → -119d |
| 3 | **Waterproofing Vertical** | 2027-05-26 → 2027-06-02 (+7d) | 2027-06-08 → 2027-06-15 (+7d) |  |  |
| SDR-ST-CON-P3-1300 | lay 2 layers of waterproofing bitumenous membrane 4mm including protection board for substructure vertical Part 1 | 2027-05-26 → 2027-06-02 (+7d) | 2027-05-30 → 2027-06-06 (+7d) |  | -113d → -119d |
| SDR-ST-CON-P3-1370 | lay 2 layers of waterproofing bitumenous membrane 4mm including protection board for substructure vertical Part 2 | 2027-05-31 → 2027-06-07 (+7d) | 2027-06-03 → 2027-06-10 (+7d) |  | -113d → -119d |
| SDR-ST-CON-P3-1430 | lay 2 layers of waterproofing bitumenous membrane 4mm including protection board for substructure vertical Part 3 | 2027-06-05 → 2027-06-12 (+7d) | 2027-06-08 → 2027-06-15 (+7d) |  | -113d → -119d |
| 4 | **Neck Walls** | 2027-06-10 → 2027-06-17 (+7d) | 2027-06-16 → 2027-06-23 (+7d) |  |  |
| SDR-ST-CON-P3-1270 | Pouring concrete for Neck Walls Part 1 | 2027-06-10 → 2027-06-17 (+7d) | 2027-06-15 → 2027-06-22 (+7d) |  | -113d → -119d |
| SDR-ST-CON-P3-1290 | Pouring concrete for Neck Walls Part 2 | 2027-06-12 → 2027-06-19 (+7d) | 2027-06-16 → 2027-06-23 (+7d) |  | -113d → -119d |
| 5 | **Preparation for Slab** | 2027-06-17 → 2027-06-24 (+7d) | 2027-06-21 → 2027-06-28 (+7d) |  |  |
| SDR-ST-CON-P3-1320 | Pouring Concrete under slab on grade and gound beams 50 mm thickness lean | 2027-06-17 → 2027-06-24 (+7d) | 2027-06-19 → 2027-06-26 (+7d) |  | -106d → -112d |
| SDR-ST-CON-P3-1360 | Supply and lay 250 micron thk polyethylene sheet below slab on grade and ground beams | 2027-06-20 → 2027-06-27 (+7d) | 2027-06-21 → 2027-06-28 (+7d) |  | -106d → -112d |
| 6 | **Slab on Grade** | 2027-06-22 → 2027-06-29 (+7d) | 2027-06-23 → 2027-06-30 (+7d) |  |  |
| SDR-ST-CON-P3-1380 | Pouring Concrete for Slab on grade | 2027-06-22 → 2027-06-29 (+7d) | 2027-06-23 → 2027-06-30 (+7d) |  | -106d → -112d |
| 7 | **Finishes** | 2027-06-28 → 2027-07-05 (+7d) | 2027-07-04 → 2027-07-11 (+7d) |  |  |
| 9 | **Troweled Finish** | 2027-06-28 → 2027-07-05 (+7d) | 2027-06-29 → 2027-07-06 (+7d) |  |  |

| ID | Task | Start | Finish | Total float |
| --- | --- | --- | --- | --- |
| SDR-ST-CON-P3-1400 | Pouring Concrete for Slab on grade with troweled finish Part 1 | 2027-06-28 → 2027-07-05 (+7d) | 2027-06-29 → 2027-07-06 (+7d) | -106d → -112d |
| SDR-ST-CON-P3-1500 | Pouring Concrete for Slab on grade with troweled finish Part 2 | 2027-06-28 → 2027-07-05 (+7d) | 2027-06-29 → 2027-07-06 (+7d) | -106d → -112d |
| 8 | **Exposed Aggregate Finish** | 2027-06-30 → 2027-07-07 (+7d) | 2027-07-04 → 2027-07-11 (+7d) |  |
| SDR-ST-CON-P3-1420 | Pouring Concrete for Slab on grade with exposed aggregate finish Part 1 | 2027-06-30 → 2027-07-07 (+7d) | 2027-07-01 → 2027-07-08 (+7d) | -106d → -112d |
| SDR-ST-CON-P3-1480 | Pouring Concrete for Slab on grade with exposed aggregate finish Part 2 | 2027-06-30 → 2027-07-07 (+7d) | 2027-07-01 → 2027-07-08 (+7d) | -106d → -112d |
| SDR-ST-CON-P3-1490 | Pouring Concrete for Slab on grade with exposed aggregate finish Part 3 | 2027-07-03 → 2027-07-10 (+7d) | 2027-07-04 → 2027-07-11 (+7d) | -106d → -112d |
| 3 | **Finishes & Architectural Works** | 2027-09-25 → 2027-10-02 (+7d) | 2027-11-18 → 2027-11-25 (+7d) |  |
| SDR-ST-CON-P3-1540 | Installation of metal steel 1200mm railing including all accessories Part 1 | 2027-09-25 → 2027-10-02 (+7d) | 2027-10-11 → 2027-10-18 (+7d) | -107d → -113d |
| SDR-ST-CON-P3-1590 | Installation of metal steel 1200mm railing including all accessories Part 2 | 2027-10-12 → 2027-10-19 (+7d) | 2027-10-28 → 2027-11-04 (+7d) | -107d → -113d |
| SDR-ST-CON-P3-1640 | Installation of metal steel 1200mm railing including all accessories Part3 | 2027-10-30 → 2027-11-06 (+7d) | 2027-11-07 → 2027-11-14 (+7d) | -107d → -113d |
| SDR-ST-CON-P3-1710 | Platform Paving & warning tiles | 2027-11-08 → 2027-11-15 (+7d) | 2027-11-11 → 2027-11-18 (+7d) | -107d → -113d |
| SDR-ST-CON-P3-1760 | Painting Part 1 | 2027-11-13 → 2027-11-20 (+7d) | 2027-11-18 → 2027-11-25 (+7d) | -107d → -113d |
| SDR-ST-CON-P3-1840 | Painting Part 2 | 2027-11-13 → 2027-11-20 (+7d) | 2027-11-18 → 2027-11-25 (+7d) | -102d → -108d |
| 5 | **Platform Electrical Works** | 2027-06-17 → 2027-06-24 (+7d) | 2027-07-12 → 2027-07-19 (+7d) |  |
| SDR-ST-CON-P3-1310 | cable conduits | 2027-06-17 → 2027-06-24 (+7d) | 2027-07-12 → 2027-07-19 (+7d) | -113d → -119d |
| 3 | **Canopy works** | 2027-02-14 → 2027-02-21 (+7d) | 2027-11-24 → 2027-12-01 (+7d) |  |
| 1 | **Civil and Architectural Works** | 2027-02-14 → 2027-02-21 (+7d) | 2027-04-18 → 2027-04-25 (+7d) |  |
| 1 | **Concrete** | 2027-02-14 → 2027-02-21 (+7d) | 2027-04-18 → 2027-04-25 (+7d) |  |
| SDR-ST-CON-P3-1050 | Pouring Concrete under the foundation 100 mm thickness lean | 2027-02-14 → 2027-02-21 (+7d) | 2027-03-01 → 2027-03-08 (+7d) | -105d → -111d |
| SDR-ST-CON-P3-1090 | Pouring Concrete for protecting waterproofing under the foundation 50 mm thickness | 2027-03-08 → 2027-03-20 (+12d) | 2027-03-25 → 2027-04-01 (+7d) | -81d → -87d |
| SDR-ST-CON-P3-1110 | Pouring Concrete for Footings | 2027-03-27 → 2027-04-03 (+7d) | 2027-04-08 → 2027-04-15 (+7d) | -81d → -87d |
| SDR-ST-CON-P3-1140 | Pouring Concrete for Coulumns necks | 2027-04-10 → 2027-04-17 (+7d) | 2027-04-18 → 2027-04-25 (+7d) | -57d → -63d |
| 4 | **Metals** | 2027-03-02 → 2027-03-14 (+12d) | 2027-11-24 → 2027-12-01 (+7d) |  |
| 2 | **Structural Steel Framing** | 2027-03-27 → 2027-04-03 (+7d) | 2027-07-31 → 2027-08-06 (+6d) |  |
| SDR-ST-CON-P3-1120 | Anchor Bolt Verification | 2027-03-27 → 2027-04-03 (+7d) | 2027-04-13 → 2027-04-20 (+7d) | -81d → -87d |
| SDR-ST-CON-P3-1160 | Erection of Columns Part 1 | 2027-04-14 → 2027-04-21 (+7d) | 2027-05-06 → 2027-05-13 (+7d) | -81d → -87d |
| SDR-ST-CON-P3-1240 | Erection of Columns Part 2 | 2027-05-08 → 2027-05-15 (+7d) | 2027-05-25 → 2027-06-01 (+7d) | -81d → -87d |
| SDR-ST-CON-P3-1260 | Erection of Rafters Part 1 | 2027-05-26 → 2027-06-02 (+7d) | 2027-06-13 → 2027-06-20 (+7d) | -81d → -87d |
| SDR-ST-CON-P3-1280 | Erection of Rafters Part 2 | 2027-05-29 → 2027-06-05 (+7d) | 2027-06-15 → 2027-06-22 (+7d) | -81d → -87d |
| SDR-ST-CON-P3-1330 | Installation of Bracing System Part 1 | 2027-06-16 → 2027-06-23 (+7d) | 2027-07-03 → 2027-07-10 (+7d) | -78d → -84d |
| SDR-ST-CON-P3-1340 | Installation of Beams Part 1 | 2027-06-16 → 2027-06-23 (+7d) | 2027-06-27 → 2027-07-04 (+7d) | -81d → -87d |
| SDR-ST-CON-P3-1350 | Installation of Girders Part 1 | 2027-06-17 → 2027-06-24 (+7d) | 2027-07-10 → 2027-07-17 (+7d) | -78d → -84d |
| SDR-ST-CON-P3-1390 | Installation of Beams Part 2 | 2027-06-28 → 2027-07-05 (+7d) | 2027-07-11 → 2027-07-18 (+7d) | -81d → -87d |
| SDR-ST-CON-P3-1410 | Installation of Bracing System Part 2 | 2027-07-04 → 2027-07-11 (+7d) | 2027-07-21 → 2027-07-28 (+7d) | -78d → -84d |
| SDR-ST-CON-P3-1440 | Installation of Girders Part 2 | 2027-07-11 → 2027-07-18 (+7d) | 2027-07-17 → 2027-07-24 (+7d) | -78d → -84d |
| SDR-ST-CON-P3-1460 | Installation of Connections (Bolting) | 2027-07-12 → 2027-07-19 (+7d) | 2027-07-25 → 2027-08-01 (+7d) | -81d → -87d |
| SDR-ST-CON-P3-1450 | Installation of Joists Part 1 | 2027-07-18 → 2027-07-25 (+7d) | 2027-07-31 → 2027-08-06 (+6d) | -74d → -80d |
| SDR-ST-CON-P3-1470 | Installation of Joists Part 2 | 2027-07-22 → 2027-07-29 (+7d) | 2027-07-31 → 2027-08-06 (+6d) | -78d → -84d |
| 3 | **Aluminum Cladding Panels** | 2027-08-19 → 2027-08-26 (+7d) | 2027-11-24 → 2027-12-01 (+7d) |  |
| 1 | **Steel Subframe Installation** | 2027-08-19 → 2027-08-26 (+7d) | 2027-11-24 → 2027-12-01 (+7d) |  |
| SDR-ST-CON-P3-1530 | Survey & Setting Out for Cladding | 2027-08-19 → 2027-08-26 (+7d) | 2027-08-28 → 2027-09-04 (+7d) | -95d → -101d |
| SDR-ST-CON-P3-1560 | Install Steel Subframe Supports Part 1 | 2027-09-02 → 2027-09-09 (+7d) | 2027-09-18 → 2027-09-25 (+7d) | -99d → -105d |
| SDR-ST-CON-P3-1620 | Install Steel Subframe Supports Part 2 | 2027-09-19 → 2027-09-26 (+7d) | 2027-10-09 → 2027-10-16 (+7d) | -99d → -105d |
| SDR-ST-CON-P3-1690 | Install Steel Subframe Supports Part 3 | 2027-10-10 → 2027-10-17 (+7d) | 2027-10-24 → 2027-10-31 (+7d) | -94d → -100d |
| SDR-ST-CON-P3-1720 | Alignment & Leveling of Subframe Part 1 | 2027-10-10 → 2027-10-17 (+7d) | 2027-10-21 → 2027-10-28 (+7d) | -92d → -98d |
| SDR-ST-CON-P3-1770 | Alignment & Leveling of Subframe Part 2 | 2027-10-25 → 2027-11-01 (+7d) | 2027-10-28 → 2027-11-04 (+7d) | -94d → -100d |
| SDR-ST-CON-P3-1830 | Fixing & Tightening of Subframe Connections Part 1 | 2027-10-30 → 2027-11-06 (+7d) | 2027-11-03 → 2027-11-10 (+7d) | -94d → -100d |
| SDR-ST-CON-P3-1880 | Fixing & Tightening of Subframe Connections Part 2 | 2027-11-20 → 2027-11-27 (+7d) | 2027-11-24 → 2027-12-01 (+7d) | -107d → -113d |
| 2 | **Aluminum Cladding Installation** | 2027-09-19 → 2027-09-26 (+7d) | 2027-11-11 → 2027-11-18 (+7d) |  |
| SDR-ST-CON-P3-1610 | Install Aluminum Panels (4mm Thick Part 1 | 2027-09-19 → 2027-09-26 (+7d) | 2027-10-03 → 2027-10-10 (+7d) | -99d → -105d |
| SDR-ST-CON-P3-1660 | Install Aluminum Panels (4mm Thick Part 2 | 2027-10-04 → 2027-10-11 (+7d) | 2027-10-17 → 2027-10-24 (+7d) | -99d → -105d |
| SDR-ST-CON-P3-1700 | Install Aluminum Panels (4mm Thick Part 3 | 2027-10-18 → 2027-10-25 (+7d) | 2027-10-25 → 2027-11-01 (+7d) | -99d → -105d |
| SDR-ST-CON-P3-1730 | Fix Panels with Snap Hooks & Fasteners Part 1 | 2027-10-26 → 2027-11-02 (+7d) | 2027-11-01 → 2027-11-08 (+7d) | -99d → -105d |
| SDR-ST-CON-P3-1750 | Fix Panels with Snap Hooks & Fasteners Part 2 | 2027-10-26 → 2027-11-02 (+7d) | 2027-10-31 → 2027-11-07 (+7d) | -99d → -105d |
| SDR-ST-CON-P3-1810 | Install Drainage System Part 1 | 2027-11-01 → 2027-11-08 (+7d) | 2027-11-04 → 2027-11-11 (+7d) | -99d → -105d |
| SDR-ST-CON-P3-1820 | Install Drainage System Part 2 | 2027-11-01 → 2027-11-08 (+7d) | 2027-11-02 → 2027-11-09 (+7d) | -99d → -105d |
| SDR-ST-CON-P3-1850 | Adjustment & Alignment of Panels Part 1 | 2027-11-03 → 2027-11-10 (+7d) | 2027-11-06 → 2027-11-13 (+7d) | -96d → -102d |
| SDR-ST-CON-P3-1860 | Adjustment & Alignment of Panels Part 2 | 2027-11-03 → 2027-11-10 (+7d) | 2027-11-06 → 2027-11-13 (+7d) | -96d → -102d |
| SDR-ST-CON-P3-1890 | Sealant & Finishing Works | 2027-11-07 → 2027-11-14 (+7d) | 2027-11-11 → 2027-11-18 (+7d) | -96d → -102d |
| 1 | **THERMAL & MOISTURE PROTECTION** | 2027-03-02 → 2027-03-14 (+12d) | 2027-05-24 → 2027-05-31 (+7d) |  |
| 1 | **Bituminous Sheet Waterproofing** | 2027-03-02 → 2027-03-14 (+12d) | 2027-05-24 → 2027-05-31 (+7d) |  |
| SDR-ST-CON-P3-1070 | Provide and lay 2 layers of waterproofing bitumenous membrane 4mm below footings | 2027-03-02 → 2027-03-14 (+12d) | 2027-03-07 → 2027-03-18 (+11d) | -105d → -111d |
| SDR-ST-CON-P3-1170 | Provide and lay 2 layers of waterproofing bitumenous membrane 4mm in contact with soil | 2027-05-13 → 2027-05-26 (+13d) | 2027-05-24 → 2027-05-31 (+7d) | -78d → -84d |
| 4 | **Electrical Works** | 2027-07-18 → 2027-07-25 (+7d) | 2027-12-05 → 2027-12-12 (+7d) |  |
| 1 | **Low-Voltage Electrical Power Conductors and Cables** | 2027-07-18 → 2027-07-25 (+7d) | 2027-08-08 → 2027-08-15 (+7d) |  |
| SDR-ST-CON-P3-1510 | Installtion and test low voltage cable including pulling of cable 600/1000V . | 2027-07-18 → 2027-07-25 (+7d) | 2027-08-08 → 2027-08-15 (+7d) | -78d → -84d |
| 2 | **Ondoor Lighting Points** | 2027-08-09 → 2027-08-16 (+7d) | 2027-09-01 → 2027-09-08 (+7d) |  |
| SDR-ST-CON-P3-1580 | Install, test, and commission all necessary components for outdoor lighting points. | 2027-08-09 → 2027-08-16 (+7d) | 2027-09-01 → 2027-09-08 (+7d) | -78d → -84d |
| 3 | **Outdoor Lighting Fixtures** | 2027-09-04 → 2027-09-11 (+7d) | 2027-10-27 → 2027-11-03 (+7d) |  |
| SDR-ST-CON-P3-1630 | Install of L10 recessed in ceiling light, lenght1535mmxwidth75mmxhieght105mm, LED 53.2w Part 1 | 2027-09-04 → 2027-09-11 (+7d) | 2027-09-27 → 2027-10-04 (+7d) | -78d → -84d |

| ID | Task | Start | Finish | Total float |
| --- | --- | --- | --- | --- |
| SDR-ST-CON-P3-1650 | Install of L10 recessed in ceiling light, lenght1535mmxwidth75mmxhieght105mm, LED 53.2w Part 2 | 2027-10-05 → 2027-10-12 (+7d) | 2027-10-27 → 2027-11-03 (+7d) | -105d → -111d |
| 4 | **CCTV** | 2027-07-18 → 2027-07-25 (+7d) | 2027-12-05 → 2027-12-12 (+7d) |  |
| SDR-ST-CON-P3-1520 | Install of Handhole (600x600x730mm) | 2027-07-18 → 2027-07-25 (+7d) | 2027-07-22 → 2027-07-29 (+7d) | -78d → -84d |
| SDR-ST-CON-P3-1550 | Install of 2 core 9/125um indoor -outdoor central tube | 2027-07-24 → 2027-07-31 (+7d) | 2027-08-01 → 2027-08-07 (+6d) | -78d → -84d |
| SDR-ST-CON-P3-1570 | Install of 4 Port (2 duplex) LC/UPC OS2 fiber patch panel | 2027-08-02 → 2027-08-08 (+6d) | 2027-08-14 → 2027-08-21 (+7d) | -78d → -84d |
| SDR-ST-CON-P3-1600 | Install of Pole mounted Filed Equipment cabinet (FEC) , with fan and ventilation | 2027-09-25 → 2027-10-02 (+7d) | 2027-10-16 → 2027-10-23 (+7d) | -113d → -119d |
| SDR-ST-CON-P3-1670 | Install of 8 Port Industrial PoE Switch 10/1000BaseT | 2027-10-17 → 2027-10-24 (+7d) | 2027-11-07 → 2027-11-14 (+7d) | -113d → -119d |
| SDR-ST-CON-P3-1680 | Install of 1.2KVA Industrial type UPS located at FEC | 2027-10-17 → 2027-10-24 (+7d) | 2027-11-07 → 2027-11-14 (+7d) | -113d → -119d |
| SDR-ST-CON-P3-1740 | Install of UTP CAT6 Patch Cord , connect the industrial switch with the cameras | 2027-11-08 → 2027-11-15 (+7d) | 2027-11-18 → 2027-11-25 (+7d) | -113d → -119d |
| SDR-ST-CON-P3-1780 | Install of 5MP IP PoE Bullet Camera, outdoor mounted on canopy ceiling Part 1. | 2027-11-20 → 2027-11-27 (+7d) | 2027-12-02 → 2027-12-09 (+7d) | -113d → -119d |
| SDR-ST-CON-P3-1790 | Install of 5MP IP PoE Bullet Camera, outdoor mounted on canopy ceiling Part 2. | 2027-11-20 → 2027-11-27 (+7d) | 2027-12-05 → 2027-12-12 (+7d) | -111d → -117d |
| 5 | **Voice Evacuation System** | 2027-11-20 → 2027-11-27 (+7d) | 2027-11-28 → 2027-12-05 (+7d) |  |
| SDR-ST-CON-P3-1800 | install, test of Suspended ceiling outdoor projector speaker, bi-directional, 20w Part 1 | 2027-11-20 → 2027-11-27 (+7d) | 2027-11-28 → 2027-12-05 (+7d) | -113d → -119d |
| SDR-ST-CON-P3-1870 | install, test of Suspended ceiling outdoor projector speaker, bi-directional, 20w Part 2 | 2027-11-20 → 2027-11-27 (+7d) | 2027-11-28 → 2027-12-05 (+7d) | -113d → -119d |
| 6 | **Testing and Comissioning** | 2027-04-15 → 2027-04-22 (+7d) | 2027-12-13 → 2027-12-20 (+7d) |  |
| 1 | **Civil Works** | 2027-09-18 → 2027-09-25 (+7d) | 2027-10-04 → 2027-10-11 (+7d) |  |
| SDR-ST-TC-1000 | Testing & Commissioning of road works | 2027-09-18 → 2027-09-25 (+7d) | 2027-10-04 → 2027-10-11 (+7d) | -105d → -111d |
| 2 | **Storm Water Drainage Network** | 2027-05-30 → 2027-06-06 (+7d) | 2027-06-16 → 2027-06-23 (+7d) |  |
| SDR-ST-TC-1010 | Testing & Commissioning of network work | 2027-05-30 → 2027-06-06 (+7d) | 2027-06-16 → 2027-06-23 (+7d) | -78d → -84d |
| 3 | **Sewerage Network** | 2027-04-15 → 2027-04-22 (+7d) | 2027-05-09 → 2027-05-22 (+13d) |  |
| SDR-ST-TC-1030 | Testing & Commissioning of Sewage Network | 2027-04-15 → 2027-04-22 (+7d) | 2027-05-09 → 2027-05-22 (+13d) | -23d → -29d |
| 5 | **Portable Water** | 2027-05-02 → 2027-05-09 (+7d) | 2027-05-30 → 2027-06-06 (+7d) |  |
| SDR-ST-TC-1020 | Testing & Commissioning of Potable Network | 2027-05-02 → 2027-05-09 (+7d) | 2027-05-30 → 2027-06-06 (+7d) | -37d → -43d |
| 6 | **Electrical Works** | 2027-11-18 → 2027-11-25 (+7d) | 2027-11-30 → 2027-12-07 (+7d) |  |
| SDR-ST-TC-1050 | Testing & Commissioning of Electrical Network | 2027-11-18 → 2027-11-25 (+7d) | 2027-11-30 → 2027-12-07 (+7d) | -100d → -106d |
| 8 | **CCTV Works** | 2027-12-06 → 2027-12-13 (+7d) | 2027-12-13 → 2027-12-20 (+7d) |  |
| SDR-ST-TC-1040 | Testing & Commissioning of medium voltage works | 2027-12-06 → 2027-12-13 (+7d) | 2027-12-13 → 2027-12-20 (+7d) | -111d → -117d |
| 7 | **Close Out** | 2027-04-24 → 2027-05-01 (+7d) | 2027-12-15 → 2027-12-22 (+7d) |  |
| 1 | **As Built Drawings** | 2027-04-24 → 2027-05-01 (+7d) | 2027-12-04 → 2027-12-11 (+7d) |  |
| 1 | **Civil** | 2027-09-16 → 2027-09-23 (+7d) | 2027-09-29 → 2027-10-06 (+7d) |  |
| SDR-ST-CO-1000 | Civil As-Built Drawing Submission | 2027-09-16 → 2027-09-23 (+7d) | 2027-09-23 → 2027-09-30 (+7d) | -104d → -110d |
| SDR-ST-CO-1010 | Civil As-Built Drawing Approvals | 2027-09-25 → 2027-10-02 (+7d) | 2027-09-29 → 2027-10-06 (+7d) | -104d → -110d |
| 2 | **Mechanical** | 2027-04-24 → 2027-05-01 (+7d) | 2027-06-03 → 2027-06-10 (+7d) |  |
| SDR-ST-CO-1020 | Mechanical As-Built Drawing Submission | 2027-04-24 → 2027-05-01 (+7d) | 2027-05-02 → 2027-05-09 (+7d) | -41d → -47d |
| SDR-ST-CO-1030 | Mechanical As-Built Drawing Approvals | 2027-05-26 → 2027-06-02 (+7d) | 2027-06-03 → 2027-06-10 (+7d) | -41d → -47d |
| 3 | **Electrical** | 2027-11-11 → 2027-11-18 (+7d) | 2027-12-04 → 2027-12-11 (+7d) |  |
| SDR-ST-CO-1040 | Electrical As-Built Drawing Submission | 2027-11-11 → 2027-11-18 (+7d) | 2027-11-22 → 2027-11-29 (+7d) | -104d → -110d |
| SDR-ST-CO-1100 | Electrical As-Built Drawing Approvals | 2027-11-24 → 2027-12-01 (+7d) | 2027-12-04 → 2027-12-11 (+7d) | -104d → -110d |
| 2 | **Training and Manuals** | 2027-11-20 → 2027-11-27 (+7d) | 2027-12-15 → 2027-12-22 (+7d) |  |
| SDR-ST-CO-1050 | Training and Manuals | 2027-11-20 → 2027-11-27 (+7d) | 2027-12-15 → 2027-12-22 (+7d) | -113d → -119d |
| 3 | **Demobilize Manpower** | 2027-11-20 → 2027-11-27 (+7d) | 2027-12-12 → 2027-12-19 (+7d) |  |
| SDR-ST-CO-1060 | Manpower Demobilize | 2027-11-20 → 2027-11-27 (+7d) | 2027-12-12 → 2027-12-19 (+7d) | -112d → -118d |
| 4 | **Demobilize Equipment** | 2027-11-20 → 2027-11-27 (+7d) | 2027-12-12 → 2027-12-19 (+7d) |  |
| SDR-ST-CO-1070 | Equipments Demobilize | 2027-11-20 → 2027-11-27 (+7d) | 2027-12-12 → 2027-12-19 (+7d) | -112d → -118d |
| 5 | **Removal of Site Offices and Structures** | 2027-11-20 → 2027-11-27 (+7d) | 2027-12-14 → 2027-12-21 (+7d) |  |
| SDR-ST-CO-1090 | Site Office Removal | 2027-11-20 → 2027-11-27 (+7d) | 2027-12-14 → 2027-12-21 (+7d) | -112d → -118d |
| 6 | **Handover** | 2027-12-01 → 2027-12-08 (+7d) | 2027-12-14 → 2027-12-21 (+7d) |  |
| SDR-ST-CO-1080 | Project Handover | 2027-12-01 → 2027-12-08 (+7d) | 2027-12-14 → 2027-12-21 (+7d) | -112d → -118d |

## Version 9 (data date 2026-11-23, saved 2026-11-24, file SUD1-05-018-23-11-26.xer)

Last finish 2027-12-22 → 2027-12-29 (+7d). Complete tasks 310 → 351.

Changed:

| ID | Task | Start | Finish | Total float |
| --- | --- | --- | --- | --- |
| 1 | **Milestone** |  | 2027-12-22 → 2027-12-29 (+7d) |  |
| SDR-ST-MILS-1070 | Completion of road and paving works | 2027-03-01 → 2027-03-08 (+7d) | 2027-03-01 → 2027-03-08 (+7d) | -61d → -67d |
| SDR-ST-MILS-1100 | Completion of site and platform works | 2027-07-11 → 2027-07-18 (+7d) | 2027-07-11 → 2027-07-18 (+7d) | 11d → 5d |
| SDR-ST-MILS-1140 | Project Finish | 2027-12-22 → 2027-12-29 (+7d) | 2027-12-22 → 2027-12-29 (+7d) | -119d → -125d |
| 1 | **Major Milestone** |  | 2027-12-19 → 2027-12-26 (+7d) |  |
| SDR-ST-MILS-1120 | Project Finish Milstone | 2027-12-19 → 2027-12-26 (+7d) | 2027-12-19 → 2027-12-26 (+7d) | -116d → -122d |
| 3 | **Contractual Milestone** |  | 2027-12-12 → 2027-12-19 (+7d) |  |
| SDR-ST-MILS-1080 | Completion of road works | 2027-03-01 → 2027-03-08 (+7d) | 2027-03-01 → 2027-03-08 (+7d) | -20d → -26d |
| SDR-ST-MILS-1060 | Completion of medium voltage works | 2027-08-25 → 2027-09-01 (+7d) | 2027-08-25 → 2027-09-01 (+7d) | -90d → -96d |
| SDR-ST-MILS-1130 | Completion of finishing works in the project | 2027-12-12 → 2027-12-19 (+7d) | 2027-12-12 → 2027-12-19 (+7d) | -110d → -116d |
| 2 | **Phases Milestone** | 2026-11-28 → 2026-12-05 (+7d) | 2027-12-12 → 2027-12-19 (+7d) |  |
| SDR-ST-MILS-1050 | Engineering Phase Finish Milestone | 2026-11-28 → 2026-12-05 (+7d) | 2026-11-28 → 2026-12-05 (+7d) | -119d → -125d |
| SDR-ST-MILS-1090 | Procurment Phase Finish Milestone | 2027-04-27 → 2027-05-04 (+7d) | 2027-04-27 → 2027-05-04 (+7d) | -14d → -20d |
| SDR-ST-MILS-1110 | Construction Phase Finish Milestone | 2027-12-12 → 2027-12-19 (+7d) | 2027-12-12 → 2027-12-19 (+7d) | -110d → -116d |
| 3 | **Engineering** |  | 2026-12-07 → 2026-12-14 (+7d) |  |
| 5 | **Shop Drawings Stage** |  | 2026-11-28 → 2026-12-05 (+7d) |  |
| 4 | **Approvals** |  | 2026-11-28 → 2026-12-05 (+7d) |  |
| 9 | **Electrical** |  | 2026-11-28 → 2026-12-05 (+7d) |  |
| SDR-ST-ENG-AP-1130 | Medium Voltage Network Approval | 2026-11-16 → 2026-11-23 (+7d) | 2026-11-28 → 2026-12-05 (+7d) | -119d → -125d |
| SDR-ST-ENG-AP-1140 | Standard Details Medium Voltage Approval | 2026-11-16 → 2026-11-23 (+7d) | 2026-11-28 → 2026-12-05 (+7d) | -119d → -125d |
| 6 | **Materials** |  | 2026-12-07 → 2026-12-14 (+7d) |  |
| 5 | **Materials Submission** |  | 2026-11-24 → 2026-12-01 (+7d) |  |
| 1 | **Long Lead Items** |  | 2026-11-24 → 2026-12-01 (+7d) |  |
| 3 | **Electrical** |  | 2026-11-24 → 2026-12-01 (+7d) |  |
| SDR-ST-PRO-S-1110 | MEDIUM VOLTAGE CABLES DUCT BANKS | 2026-11-17 → 2026-11-24 (+7d) | 2026-11-24 → 2026-12-01 (+7d) | -72d → -78d |
| SDR-ST-PRO-S-1120 | MEDIUM VOLTAGE CABLES | 2026-11-17 → 2026-11-24 (+7d) | 2026-11-24 → 2026-12-01 (+7d) | -33d → -39d |
| SDR-ST-PRO-S-1130 | SUB-STATION | 2026-11-17 → 2026-11-24 (+7d) | 2026-11-24 → 2026-12-01 (+7d) | -14d → -20d |
| 6 | **Materials Approval** |  | 2026-12-07 → 2026-12-14 (+7d) |  |
| 2 | **Short Lead Items** |  | 2026-11-22 → 2026-11-29 (+7d) |  |
| 3 | **Electrical** |  | 2026-11-22 → 2026-11-29 (+7d) |  |
| SDR-ST-PRO-A-1170 | CCTV :5MP IP PoE Bullet Camera |  | 2026-11-22 → 2026-11-29 (+7d) | 49d → 43d |
| SDR-ST-PRO-A-1180 | CCTV :Pole mounted Filed Equipment cabinet (FE |  | 2026-11-22 → 2026-11-29 (+7d) | 51d → 45d |
| 1 | **Long Lead Items** |  | 2026-12-07 → 2026-12-14 (+7d) |  |
| 3 | **Electrical** |  | 2026-12-07 → 2026-12-14 (+7d) |  |
| SDR-ST-PRO-A-1200 | MEDIUM VOLTAGE CABLES DUCT BANKS | 2026-11-25 → 2026-12-02 (+7d) | 2026-12-07 → 2026-12-14 (+7d) | -72d → -78d |
| SDR-ST-PRO-A-1210 | MEDIUM VOLTAGE CABLES | 2026-11-25 → 2026-12-02 (+7d) | 2026-12-07 → 2026-12-14 (+7d) | -33d → -39d |
| SDR-ST-PRO-A-1220 | SUB-STATION | 2026-11-25 → 2026-12-02 (+7d) | 2026-12-07 → 2026-12-14 (+7d) | -14d → -20d |
| 4 | **Procurement** |  | 2027-04-27 → 2027-05-04 (+7d) |  |
| 5 | **Purchase Order** |  | 2026-12-24 → 2026-12-31 (+7d) |  |
| 4 | **Short Lead Items** |  | 2026-11-30 → 2026-12-07 (+7d) |  |
| 1 | **Civil** |  | 2026-11-21 → 2026-11-28 (+7d) |  |
| SDR-ST-PRO-PO-1260 | Steel Bars |  | 2026-11-21 → 2026-11-28 (+7d) | -62d → -68d |
| SDR-ST-PRO-PO-1040 | Interlock |  | 2026-11-19 → 2026-11-26 (+7d) | -9d → -15d |
| 3 | **Electrical** |  | 2026-11-30 → 2026-12-07 (+7d) |  |
| SDR-ST-PRO-PO-1070 | STREET LIGHTING FEEDER Panel |  | 2026-11-21 → 2026-11-28 (+7d) | -18d → -24d |
| SDR-ST-PRO-PO-1130 | LOW VOLTAGE DISTRIBUTION Panel |  | 2026-11-21 → 2026-11-28 (+7d) | 75d → 69d |
| SDR-ST-PRO-PO-1110 | STREET LIGHTING CABLES |  | 2026-11-19 → 2026-11-26 (+7d) | 20.7d → 14.7d |
| SDR-ST-PRO-PO-1050 | CCTV :Pole mounted Filed Equipment cabinet |  | 2026-11-30 → 2026-12-07 (+7d) | 51d → 45d |
| SDR-ST-PRO-PO-1230 | CCTV :5MP IP PoE Bullet Camera |  | 2026-11-30 → 2026-12-07 (+7d) | 49d → 43d |
| SDR-ST-PRO-PO-1020 | Drawpits |  | 2026-11-23 → 2026-11-30 (+7d) | -57d → -63d |
| SDR-ST-PRO-PO-1220 | VOICE EVACUATION SYSTEM |  | 2026-11-22 → 2026-11-29 (+7d) | 56d → 50d |
| 2 | **Mechanical** |  | 2026-11-22 → 2026-11-29 (+7d) |  |
| SDR-ST-PRO-PO-1140 | MANHOLE, CATCH BASIN & VALVE BOX COVER |  | 2026-11-22 → 2026-11-29 (+7d) | -54d → -22d |
| SDR-ST-PRO-PO-1090 | GI GOOSENECK & VENT |  | 2026-11-22 → 2026-11-29 (+7d) | 61d → 55d |
| 5 | **Long Lead Items** |  | 2026-12-24 → 2026-12-31 (+7d) |  |
| 1 | **Civil** | 2026-11-16 → 2026-11-23 (+7d) | 2026-12-15 → 2026-12-22 (+7d) |  |
| SDR-ST-PRO-PO-1150 | Metal railing for platform | 2026-11-16 → 2026-11-23 (+7d) | 2026-12-15 → 2026-12-22 (+7d) | 8d → 2d |
| SDR-ST-PRO-PO-1240 | Canopy | 2026-11-16 → 2026-11-23 (+7d) | 2026-12-01 → 2026-12-08 (+7d) | -38d → -44d |
| 3 | **Electrical** |  | 2026-12-24 → 2026-12-31 (+7d) |  |
| SDR-ST-PRO-PO-1200 | LIGHTING POLES |  | 2026-11-22 → 2026-11-29 (+7d) | -55.6d → -61.6d |
| SDR-ST-PRO-PO-1180 | Outdoor Lighting Fixtures | 2026-11-16 → 2026-11-23 (+7d) | 2026-12-01 → 2026-12-08 (+7d) | 26d → 20d |
| SDR-ST-PRO-PO-1210 | STREET LIGHTING LUMINAIRE | 2026-11-16 → 2026-11-23 (+7d) | 2026-12-01 → 2026-12-08 (+7d) | 15d → 9d |
| SDR-ST-PRO-PO-1160 | MEDIUM VOLTAGE CABLES DUCT BANKS | 2026-12-08 → 2026-12-15 (+7d) | 2026-12-23 → 2026-12-30 (+7d) | -72d → -78d |
| SDR-ST-PRO-PO-1170 | MEDIUM VOLTAGE CABLES | 2026-12-08 → 2026-12-15 (+7d) | 2026-12-24 → 2026-12-31 (+7d) | -33d → -39d |
| SDR-ST-PRO-PO-1250 | SUB-STATION | 2026-12-08 → 2026-12-15 (+7d) | 2026-12-23 → 2026-12-30 (+7d) | -14d → -20d |
| 2 | **Mechanical** | 2026-11-16 → 2026-11-23 (+7d) | 2026-12-01 → 2026-12-08 (+7d) |  |
| SDR-ST-PRO-PO-1190 | WASHOUT & AIR VALVE, GATE VALVE, BUTTERFLY VALVE | 2026-11-16 → 2026-11-23 (+7d) | 2026-12-01 → 2026-12-08 (+7d) | -29d → -35d |
| 6 | **Delivery to Site** |  | 2027-04-23 → 2027-04-30 (+7d) |  |
| 2 | **Short Lead Items Delivery** |  | 2027-02-13 → 2027-02-20 (+7d) |  |
| 1 | **Civil** |  | 2027-02-13 → 2027-02-20 (+7d) |  |

| ID | Task | Start | Finish | Total float |
| --- | --- | --- | --- | --- |
| SDR-ST-PRO-DL-1030 | Waterproofing (Thermal & moisture Protection) |  | 2027-01-14 → 2027-01-21 (+7d) | 18d → 15d |
| SDR-ST-PRO-DL-1260 | Steel Bars |  | 2026-12-31 → 2027-01-07 (+7d) | -73d → -80d |
| SDR-ST-PRO-DL-1270 | Asphalt |  | 2027-02-13 → 2027-02-20 (+7d) | -67d → -74d |
| SDR-ST-PRO-DL-1060 | Kerbstone |  | 2027-01-14 → 2027-01-21 (+7d) | -58d → -65d |
| SDR-ST-PRO-DL-1040 | Interlock |  | 2027-01-17 → 2027-01-24 (+7d) | -10d → -17d |
| 3 | **Electrical** |  | 2027-02-01 → 2027-02-08 (+7d) |  |
| SDR-ST-PRO-DL-1100 | LOW VOLTAGE CABLES |  | 2027-01-05 → 2027-01-12 (+7d) | 66d → 59d |
| SDR-ST-PRO-DL-1010 | ROAD CROSSING DUCTS Ø110mm |  | 2026-12-14 → 2026-12-21 (+7d) | -3d → -10d |
| SDR-ST-PRO-DL-1070 | STREET LIGHTING FEEDER Panel |  | 2027-01-07 → 2027-01-14 (+7d) | -21d → -28d |
| SDR-ST-PRO-DL-1110 | STREET LIGHTING CABLES |  | 2026-12-28 → 2027-01-04 (+7d) | 23.7d → 16.7d |
| SDR-ST-PRO-DL-1130 | LOW VOLTAGE DISTRIBUTION Panel |  | 2027-01-03 → 2027-01-10 (+7d) | 88d → 81d |
| SDR-ST-PRO-DL-1200 | VOICE EVACUATION SYSTEM | 2026-11-23 → 2026-11-30 (+7d) | 2027-01-24 → 2027-01-31 (+7d) | 65d → 58d |
| SDR-ST-PRO-DL-1020 | Drawpits | 2026-11-24 → 2026-12-01 (+7d) | 2026-12-25 → 2027-01-01 (+7d) | -67d → -74d |
| SDR-ST-PRO-DL-1050 | CCTV :Pole mounted Filed Equipment cabinet | 2026-12-01 → 2026-12-08 (+7d) | 2027-02-01 → 2027-02-08 (+7d) | 59d → 52d |
| SDR-ST-PRO-DL-1230 | CCTV :5MP IP PoE Bullet Camera | 2026-12-01 → 2026-12-08 (+7d) | 2027-02-01 → 2027-02-08 (+7d) | 57d → 50d |
| 2 | **Mechanical** |  | 2027-01-20 → 2027-01-27 (+7d) |  |
| SDR-ST-PRO-DL-2000 | MANHOLE, CATCH BASIN & VALVE BOX COVER |  | 2027-01-20 → 2027-01-27 (+7d) | -54d → -22d |
| SDR-ST-PRO-DL-1090 | GI GOOSENECK & VENT | 2026-11-23 → 2026-11-30 (+7d) | 2027-01-20 → 2027-01-27 (+7d) | 71d → 64d |
| 5 | **Long Lead Items Delivery** | 2026-11-22 → 2026-11-29 (+7d) | 2027-04-23 → 2027-04-30 (+7d) |  |
| 1 | **Civil** | 2026-12-14 → 2026-12-21 (+7d) | 2027-03-29 → 2027-04-05 (+7d) |  |
| SDR-ST-PRO-DL-1240 | Canopy | 2026-12-14 → 2026-12-21 (+7d) | 2027-03-29 → 2027-04-05 (+7d) | -45d → -52d |
| SDR-ST-PRO-DL-1150 | Metal railing for platform | 2026-12-16 → 2026-12-23 (+7d) | 2027-03-29 → 2027-04-05 (+7d) | 9d → 2d |
| 3 | **Electrical** | 2026-11-22 → 2026-11-29 (+7d) | 2027-04-23 → 2027-04-30 (+7d) |  |
| SDR-ST-PRO-DL-1210 | LIGHTING POLES | 2026-11-22 → 2026-11-29 (+7d) | 2027-02-21 → 2027-03-01 (+8d) | -65.6d → -72.6d |
| SDR-ST-PRO-DL-1180 | Outdoor Lighting Fixtures | 2026-12-02 → 2026-12-09 (+7d) | 2027-02-19 → 2027-02-27 (+8d) | 30d → 23d |
| SDR-ST-PRO-DL-1220 | STREET LIGHTING LUMINAIRE | 2026-12-02 → 2026-12-09 (+7d) | 2027-01-22 → 2027-01-29 (+7d) | 18d → 11d |
| SDR-ST-PRO-DL-1160 | MEDIUM VOLTAGE CABLES DUCT BANKS | 2026-12-24 → 2026-12-31 (+7d) | 2027-04-10 → 2027-04-17 (+7d) | -84d → -91d |
| SDR-ST-PRO-DL-1250 | SUB-STATION | 2026-12-24 → 2026-12-31 (+7d) | 2027-04-23 → 2027-04-30 (+7d) | -16d → -23d |
| SDR-ST-PRO-DL-1170 | MEDIUM VOLTAGE CABLES | 2026-12-25 → 2027-01-01 (+7d) | 2027-04-14 → 2027-04-21 (+7d) | -38d → -45d |
| 2 | **Mechanical** | 2026-12-07 → 2026-12-14 (+7d) | 2026-12-23 → 2026-12-30 (+7d) |  |
| SDR-ST-PRO-DL-1190 | WASHOUT & AIR VALVE, GATE VALVE, BUTTERFLY VALVE | 2026-12-07 → 2026-12-14 (+7d) | 2026-12-23 → 2026-12-30 (+7d) | -34d → -41d |
| 4 | **Materials Staging Time** | 2026-11-16 → 2026-11-23 (+7d) | 2027-04-27 → 2027-05-04 (+7d) |  |
| 4 | **Short Lead Items Delivery** | 2026-11-16 → 2026-11-23 (+7d) | 2027-02-17 → 2027-02-25 (+8d) |  |
| 1 | **Civil** | 2027-01-01 → 2027-01-08 (+7d) | 2027-02-17 → 2027-02-25 (+8d) |  |
| SDR-ST-PRO-MS-1260 | Steel Bars | 2027-01-01 → 2027-01-08 (+7d) | 2027-01-04 → 2027-01-11 (+7d) | -73d → -80d |
| SDR-ST-PRO-MS-1070 | Waterproofing (Thermal & moisture Protection) | 2027-01-15 → 2027-01-22 (+7d) | 2027-01-18 → 2027-01-25 (+7d) | 18d → 15d |
| SDR-ST-PRO-MS-1100 | Kerbstone | 2027-01-15 → 2027-01-22 (+7d) | 2027-01-19 → 2027-01-26 (+7d) | -58d → -65d |
| SDR-ST-PRO-MS-1080 | Interlock | 2027-01-18 → 2027-01-25 (+7d) | 2027-01-21 → 2027-01-28 (+7d) | -10d → -17d |
| SDR-ST-PRO-MS-1270 | Asphalt | 2027-02-14 → 2027-02-21 (+7d) | 2027-02-17 → 2027-02-25 (+8d) | -67d → -74d |
| 3 | **Electrical** | 2026-12-15 → 2026-12-22 (+7d) | 2027-02-07 → 2027-02-14 (+7d) |  |
| SDR-ST-PRO-MS-1000 | ROAD CROSSING DUCTS Ø110mm | 2026-12-15 → 2026-12-22 (+7d) | 2026-12-18 → 2026-12-25 (+7d) | -3d → -10d |
| SDR-ST-PRO-MS-1010 | Drawpits | 2026-12-26 → 2027-01-02 (+7d) | 2026-12-29 → 2027-01-05 (+7d) | -67d → -74d |
| SDR-ST-PRO-MS-1030 | STREET LIGHTING CABLES | 2026-12-28 → 2027-01-04 (+7d) | 2027-01-01 → 2027-01-08 (+7d) | 23.7d → 16.7d |
| SDR-ST-PRO-MS-1040 | LOW VOLTAGE DISTRIBUTION Panel | 2027-01-04 → 2027-01-11 (+7d) | 2027-01-07 → 2027-01-14 (+7d) | 88d → 81d |
| SDR-ST-PRO-MS-1120 | LOW VOLTAGE CABLES | 2027-01-06 → 2027-01-13 (+7d) | 2027-01-09 → 2027-01-16 (+7d) | 66d → 59d |
| SDR-ST-PRO-MS-1020 | STREET LIGHTING FEEDER Panel | 2027-01-08 → 2027-01-15 (+7d) | 2027-01-11 → 2027-01-18 (+7d) | -21d → -28d |
| SDR-ST-PRO-MS-1150 | VOICE EVACUATION SYSTEM | 2027-01-25 → 2027-02-01 (+7d) | 2027-01-30 → 2027-02-06 (+7d) | 65d → 58d |
| SDR-ST-PRO-MS-1090 | CCTV :Pole mounted Filed Equipment cabinet | 2027-02-02 → 2027-02-09 (+7d) | 2027-02-05 → 2027-02-12 (+7d) | 59d → 52d |
| SDR-ST-PRO-MS-1160 | CCTV :5MP IP PoE Bullet Camera | 2027-02-02 → 2027-02-09 (+7d) | 2027-02-07 → 2027-02-14 (+7d) | 57d → 50d |
| 2 | **Mechanical** | 2026-11-16 → 2026-11-23 (+7d) | 2027-01-24 → 2027-01-31 (+7d) |  |
| SDR-ST-PRO-MS-1110 | HDPE PIPES & FITTINGS | 2026-11-16 → 2026-11-23 (+7d) | 2026-11-19 → 2026-11-26 (+7d) | 20d → 41d |
| SDR-ST-PRO-MS-1130 | CONCRETE PIPES AND FITTINGS | 2026-11-16 → 2026-11-23 (+7d) | 2026-11-19 → 2026-11-26 (+7d) | -6d → 45d |
| SDR-ST-PRO-MS-1050 | WARNING TAPE | 2026-11-29 → 2026-12-06 (+7d) | 2026-12-02 → 2026-12-09 (+7d) | 14d → 28d |
| SDR-ST-PRO-MS-1060 | GI GOOSENECK & VENT | 2027-01-21 → 2027-01-28 (+7d) | 2027-01-24 → 2027-01-31 (+7d) | 71d → 64d |
| SDR-ST-PRO-MS-1140 | MANHOLE, CATCH BASIN & VALVE BOX COVER | 2027-01-21 → 2027-01-28 (+7d) | 2027-01-24 → 2027-01-31 (+7d) | -63d → -25d |
| 5 | **Long Lead Items Delivery** | 2026-12-24 → 2026-12-31 (+7d) | 2027-04-27 → 2027-05-04 (+7d) |  |
| 1 | **Civil** | 2027-03-30 → 2027-04-06 (+7d) | 2027-04-02 → 2027-04-09 (+7d) |  |
| SDR-ST-PRO-MS-1200 | Metal railing for platform | 2027-03-30 → 2027-04-06 (+7d) | 2027-04-02 → 2027-04-09 (+7d) | 9d → 2d |
| SDR-ST-PRO-MS-1240 | Canopy | 2027-03-30 → 2027-04-06 (+7d) | 2027-04-02 → 2027-04-09 (+7d) | -45d → -52d |
| 3 | **Electrical** | 2027-01-23 → 2027-01-30 (+7d) | 2027-04-27 → 2027-05-04 (+7d) |  |
| SDR-ST-PRO-MS-1180 | STREET LIGHTING LUMINAIRE | 2027-01-23 → 2027-01-30 (+7d) | 2027-01-27 → 2027-02-03 (+7d) | 18d → 11d |
| SDR-ST-PRO-MS-1230 | LIGHTING POLES | 2027-02-21 → 2027-03-01 (+8d) | 2027-02-26 → 2027-03-05 (+7d) | -65.6d → -72.6d |
| SDR-ST-PRO-MS-1170 | Outdoor Lighting Fixtures | 2027-03-01 → 2027-03-08 (+7d) | 2027-03-07 → 2027-03-19 (+12d) | 30d → 23d |
| SDR-ST-PRO-MS-1210 | MEDIUM VOLTAGE CABLES DUCT BANKS | 2027-04-11 → 2027-04-18 (+7d) | 2027-04-16 → 2027-04-23 (+7d) | -84d → -91d |
| SDR-ST-PRO-MS-1220 | MEDIUM VOLTAGE CABLES | 2027-04-15 → 2027-04-22 (+7d) | 2027-04-18 → 2027-04-25 (+7d) | -38d → -45d |
| SDR-ST-PRO-MS-1250 | SUB-STATION | 2027-04-24 → 2027-05-01 (+7d) | 2027-04-27 → 2027-05-04 (+7d) | -16d → -23d |
| 2 | **Mechanical** | 2026-12-24 → 2026-12-31 (+7d) | 2026-12-28 → 2027-01-04 (+7d) |  |
| SDR-ST-PRO-MS-1190 | WASHOUT & AIR VALVE, GATE VALVE, BUTTERFLY VALVE | 2026-12-24 → 2026-12-31 (+7d) | 2026-12-28 → 2027-01-04 (+7d) | -34d → -41d |
| 5 | **Construction** |  | 2027-12-12 → 2027-12-19 (+7d) |  |
| 1 | **Package-1** |  | 2027-11-28 → 2027-12-05 (+7d) |  |

| ID | Task | Start | Finish | Total float |
| --- | --- | --- | --- | --- |
| 15 | **ROAD WORKS 1** |  | 2027-09-30 → 2027-10-07 (+7d) |  |
| 8 | **ROAD - 01** |  | 2027-09-12 → 2027-09-19 (+7d) |  |
| 6 | **ROAD-01 From 0 to 470 m (3)** |  | 2027-08-07 → 2027-08-14 (+7d) |  |
| 3 | **Asphalt Works** |  | 2027-04-01 → 2027-04-08 (+7d) |  |
| 1 | **Bituminous base course** |  | 2027-03-01 → 2027-03-08 (+7d) |  |
| SDR-ST-CON-P1-4410 | Bituminous base course (Grading I - Class A 1st Layer with RC-01 |  | 2027-02-21 → 2027-03-01 (+8d) | -61d → -67d |
| SDR-ST-CON-P1-4770 | Bituminous base course (Grading I - Class A 2nd layer with RC-02 | 2027-02-23 → 2027-03-02 (+7d) | 2027-03-01 → 2027-03-08 (+7d) | -61d → -67d |
| 2 | **Bituminous concrete wearing course** | 2027-03-04 → 2027-03-16 (+12d) | 2027-04-01 → 2027-04-08 (+7d) |  |
| SDR-ST-CON-P1-5110 | Bituminous concrete wearing course, (Grading I - Class A), including tack coat (RC2) | 2027-03-04 → 2027-03-16 (+12d) | 2027-04-01 → 2027-04-08 (+7d) | -61d → -67d |
| 4 | **Kerbstone Installation** | 2027-02-15 → 2027-02-23 (+8d) | 2027-06-01 → 2027-06-08 (+7d) |  |
| SDR-ST-CON-P1-3860 | Precast Concrete Curbstone, Type A2 | 2027-02-15 → 2027-02-23 (+8d) | 2027-03-16 → 2027-03-23 (+7d) | -70d → -76d |
| SDR-ST-CON-P1-4530 | Precast Concrete Curbstone, Type D | 2027-05-22 → 2027-05-29 (+7d) | 2027-06-01 → 2027-06-08 (+7d) | -98d → -104d |
| 5 | **Interlock Installation** | 2027-06-03 → 2027-06-10 (+7d) | 2027-07-19 → 2027-07-26 (+7d) |  |
| SDR-ST-CON-P1-4100 | Interlock Installation Part 1 | 2027-06-03 → 2027-06-10 (+7d) | 2027-06-26 → 2027-07-03 (+7d) | -98d → -104d |
| SDR-ST-CON-P1-4620 | Interlock Installation Part 2 | 2027-06-27 → 2027-07-04 (+7d) | 2027-07-19 → 2027-07-26 (+7d) | -98d → -104d |
| 6 | **Road Marking** | 2027-07-20 → 2027-07-27 (+7d) | 2027-08-06 → 2027-08-12 (+6d) |  |
| SDR-ST-CON-P1-5210 | Retroreflective Thermoplastic White Traffic lines | 2027-07-20 → 2027-07-27 (+7d) | 2027-07-24 → 2027-07-31 (+7d) | -79d → -85d |
| SDR-ST-CON-P1-5310 | Retroreflective Thermoplastic Yellow, Traffic lines | 2027-07-25 → 2027-08-01 (+7d) | 2027-07-28 → 2027-08-04 (+7d) | -79d → -85d |
| SDR-ST-CON-P1-5470 | Ceramic raised pavement markers | 2027-07-29 → 2027-08-05 (+7d) | 2027-08-02 → 2027-08-08 (+6d) | -79d → -85d |
| SDR-ST-CON-P1-5620 | Rumble strip | 2027-08-03 → 2027-08-09 (+6d) | 2027-08-06 → 2027-08-12 (+6d) | -79d → -85d |
| 7 | **Traffic Signage** | 2027-07-20 → 2027-07-27 (+7d) | 2027-08-02 → 2027-08-08 (+6d) |  |
| SDR-ST-CON-P1-5220 | Traffic signs, ground mounted, 1 Sheet Alumenium, (breakaway) Single post, with all accessories | 2027-07-20 → 2027-07-27 (+7d) | 2027-07-24 → 2027-07-31 (+7d) | -77d → -83d |
| SDR-ST-CON-P1-5320 | Traffic signs, ground mounted, 1 Sheet Aluminum, (breakaway) Double post, with all accessories | 2027-07-25 → 2027-08-01 (+7d) | 2027-07-28 → 2027-08-04 (+7d) | -77d → -83d |
| SDR-ST-CON-P1-5480 | Traffic signs, ground mounted, 2 Sheet Aluminum, (breakaway) Single post, with all accessories | 2027-07-29 → 2027-08-05 (+7d) | 2027-08-02 → 2027-08-08 (+6d) | -77d → -83d |
| 8 | **Speed table** | 2027-08-03 → 2027-08-09 (+6d) | 2027-08-07 → 2027-08-14 (+7d) |  |
| SDR-ST-CON-P1-5490 | Interlock speed table including interlock, flush kerb and marking | 2027-08-03 → 2027-08-09 (+6d) | 2027-08-07 → 2027-08-14 (+7d) | -77d → -83d |
| 7 | **ROAD-01 From 470 to 1125 m (6)** |  | 2027-09-08 → 2027-09-15 (+7d) |  |
| 3 | **Asphalt Works** | 2026-11-29 → 2026-12-06 (+7d) | 2027-03-31 → 2027-04-07 (+7d) |  |
| 1 | **Bituminous base course** | 2026-11-29 → 2026-12-06 (+7d) | 2027-02-27 → 2027-03-06 (+7d) |  |
| SDR-ST-CON-P1-4430 | Bituminous base course (Grading I - Class A 1st Layer with RC-01 | 2026-11-29 → 2026-12-06 (+7d) | 2026-12-05 → 2026-12-12 (+7d) | 13d → 7d |
| SDR-ST-CON-P1-4730 | Bituminous base course (Grading I - Class A 2nd layer with RC-02 | 2027-02-18 → 2027-02-27 (+9d) | 2027-02-27 → 2027-03-06 (+7d) | -51d → -57d |
| 2 | **Bituminous concrete wearing course** | 2027-03-03 → 2027-03-15 (+12d) | 2027-03-31 → 2027-04-07 (+7d) |  |
| SDR-ST-CON-P1-5040 | Bituminous concrete wearing course, (Grading I - Class A), including tack coat (RC2) | 2027-03-03 → 2027-03-15 (+12d) | 2027-03-31 → 2027-04-07 (+7d) | -51d → -57d |
| 4 | **Kerbstone Installation** | 2026-11-29 → 2026-12-06 (+7d) | 2027-04-08 → 2027-04-15 (+7d) |  |
| SDR-ST-CON-P1-3730 | Precast Concrete Curbstone, Type A2 | 2026-11-29 → 2026-12-06 (+7d) | 2026-12-21 → 2026-12-28 (+7d) | -6d → -12d |
| SDR-ST-CON-P1-4480 | Precast Concrete Curbstone, Type D | 2027-03-17 → 2027-03-24 (+7d) | 2027-04-08 → 2027-04-15 (+7d) | -70d → -76d |
| 5 | **Interlock Installation** | 2027-04-10 → 2027-04-17 (+7d) | 2027-05-31 → 2027-06-07 (+7d) |  |
| SDR-ST-CON-P1-3890 | Interlock Installation Part 1 | 2027-04-10 → 2027-04-17 (+7d) | 2027-05-02 → 2027-05-09 (+7d) | -70d → -76d |
| SDR-ST-CON-P1-4490 | Interlock Installation Part 2 | 2027-05-03 → 2027-05-10 (+7d) | 2027-05-31 → 2027-06-07 (+7d) | -70d → -76d |
| 6 | **Road Marking** | 2027-06-01 → 2027-06-08 (+7d) | 2027-08-11 → 2027-08-18 (+7d) |  |
| SDR-ST-CON-P1-5080 | Retroreflective Thermoplastic White Traffic lines | 2027-06-01 → 2027-06-08 (+7d) | 2027-06-08 → 2027-06-15 (+7d) | -70d → -76d |
| SDR-ST-CON-P1-5150 | Retroreflective Thermoplastic Yellow, Traffic lines | 2027-07-20 → 2027-07-27 (+7d) | 2027-07-27 → 2027-08-03 (+7d) | -105d → -111d |
| SDR-ST-CON-P1-5270 | Ceramic raised pavement markers | 2027-07-28 → 2027-08-04 (+7d) | 2027-08-04 → 2027-08-10 (+6d) | -105d → -111d |
| SDR-ST-CON-P1-5400 | Rumble strip | 2027-08-05 → 2027-08-11 (+6d) | 2027-08-11 → 2027-08-18 (+7d) | -105d → -111d |
| 7 | **Traffic Signage** | 2027-08-12 → 2027-08-19 (+7d) | 2027-08-28 → 2027-09-04 (+7d) |  |
| SDR-ST-CON-P1-5090 | Traffic signs, ground mounted, 1 Sheet Alumenium, (breakaway) Single post, with all accessories | 2027-08-12 → 2027-08-19 (+7d) | 2027-08-21 → 2027-08-28 (+7d) | -105d → -111d |
| SDR-ST-CON-P1-5160 | Traffic signs, ground mounted, 1 Sheet Aluminum, (breakaway) Double post, with all accessories | 2027-08-22 → 2027-08-29 (+7d) | 2027-08-28 → 2027-09-04 (+7d) | -105d → -111d |
| 8 | **Speed table** | 2027-08-29 → 2027-09-05 (+7d) | 2027-09-08 → 2027-09-15 (+7d) |  |
| SDR-ST-CON-P1-5280 | Interlock speed table including interlock, flush kerb and marking | 2027-08-29 → 2027-09-05 (+7d) | 2027-09-08 → 2027-09-15 (+7d) | -105d → -111d |
| 9 | **ROAD-01 From 1125 to 1765 m (7)** |  | 2027-09-12 → 2027-09-19 (+7d) |  |
| 3 | **Asphalt Works** | 2026-11-29 → 2026-12-06 (+7d) | 2027-03-20 → 2027-03-27 (+7d) |  |
| 1 | **Bituminous base course** | 2026-11-29 → 2026-12-06 (+7d) | 2026-12-17 → 2026-12-24 (+7d) |  |
| SDR-ST-CON-P1-4750 | Bituminous base course (Grading I - Class A 1st Layer with RC-01 | 2026-11-29 → 2026-12-06 (+7d) | 2026-12-07 → 2026-12-14 (+7d) | 9d → 3d |
| SDR-ST-CON-P1-5010 | Bituminous base course (Grading I - Class A 2nd layer with RC-02 | 2026-12-08 → 2026-12-15 (+7d) | 2026-12-17 → 2026-12-24 (+7d) | 9d → 3d |
| 2 | **Bituminous concrete wearing course** | 2027-02-18 → 2027-02-27 (+9d) | 2027-03-20 → 2027-03-27 (+7d) |  |
| SDR-ST-CON-P1-5200 | Bituminous concrete wearing course, (Grading I - Class A), including tack coat (RC2) | 2027-02-18 → 2027-02-27 (+9d) | 2027-03-20 → 2027-03-27 (+7d) | -41d → -47d |
| 4 | **Kerbstone Installation** | 2026-11-29 → 2026-12-06 (+7d) | 2027-01-18 → 2027-01-25 (+7d) |  |
| SDR-ST-CON-P1-4230 | Precast Concrete Curbstone, Type A2 | 2026-11-29 → 2026-12-06 (+7d) | 2026-12-21 → 2026-12-28 (+7d) | -6d → -12d |
| SDR-ST-CON-P1-4950 | Precast Concrete Curbstone, Type D | 2026-12-27 → 2027-01-03 (+7d) | 2027-01-18 → 2027-01-25 (+7d) | -6d → -12d |
| 5 | **Interlock Installation** | 2027-01-23 → 2027-01-30 (+7d) | 2027-03-16 → 2027-03-23 (+7d) |  |
| SDR-ST-CON-P1-4440 | Interlock Installation Part 1 | 2027-01-23 → 2027-01-30 (+7d) | 2027-02-15 → 2027-02-23 (+8d) | -9d → -15d |
| SDR-ST-CON-P1-4870 | Interlock Installation Part 2 | 2027-02-16 → 2027-02-24 (+8d) | 2027-03-16 → 2027-03-23 (+7d) | -9d → -15d |
| 6 | **Road Marking** | 2027-07-20 → 2027-07-27 (+7d) | 2027-08-21 → 2027-08-28 (+7d) |  |
| SDR-ST-CON-P1-5300 | Retroreflective Thermoplastic White Traffic lines | 2027-07-20 → 2027-07-27 (+7d) | 2027-07-27 → 2027-08-03 (+7d) | -111d → -117d |
| SDR-ST-CON-P1-5450 | Retroreflective Thermoplastic Yellow, Traffic lines | 2027-07-28 → 2027-08-04 (+7d) | 2027-08-04 → 2027-08-10 (+6d) | -111d → -117d |
| SDR-ST-CON-P1-5610 | Ceramic raised pavement markers | 2027-08-05 → 2027-08-11 (+6d) | 2027-08-11 → 2027-08-18 (+7d) | -111d → -117d |
| SDR-ST-CON-P1-5690 | Rumble strip | 2027-08-12 → 2027-08-19 (+7d) | 2027-08-21 → 2027-08-28 (+7d) | -111d → -117d |
| 7 | **Traffic Signage** | 2027-08-22 → 2027-08-29 (+7d) | 2027-09-02 → 2027-09-09 (+7d) |  |
| SDR-ST-CON-P1-5540 | Traffic signs, ground mounted, 1 Sheet Alumenium, (breakaway) Single post, with all accessories | 2027-08-22 → 2027-08-29 (+7d) | 2027-08-26 → 2027-09-02 (+7d) | -111d → -117d |
| SDR-ST-CON-P1-5680 | Traffic signs, ground mounted, 1 Sheet Aluminum, (breakaway) Double post, with all accessories | 2027-08-28 → 2027-09-04 (+7d) | 2027-09-02 → 2027-09-09 (+7d) | -111d → -117d |

| ID | Task | Start | Finish | Complete | Total float |
| --- | --- | --- | --- | --- | --- |
| 8 | **Speed table** | 2027-09-04 → 2027-09-11 (+7d) | 2027-09-12 → 2027-09-19 (+7d) |  |  |
| SDR-ST-CON-P1-5460 | Interlock speed table including interlock, flush kerb and marking | 2027-09-04 → 2027-09-11 (+7d) | 2027-09-12 → 2027-09-19 (+7d) |  | -111d → -117d |
| 6 | **ROAD - 02** |  | 2027-09-30 → 2027-10-07 (+7d) |  |  |
| 1 | **ROAD-01 From 0 to 400 m (9)** |  | 2027-09-19 → 2027-09-26 (+7d) |  |  |
| 11 | **Subgrade** |  | 2026-12-05 → 2026-11-15 (-20d) |  |  |
| SDR-ST-CON-P1-3390 | Subgrade layer works |  | 2026-12-05 → 2026-11-15 A (-20d) | 80% → 100% | -11d → none |
| SDR-ST-CON-P1-3960 | Aggregate base course layer |  |  | 15% → 90% |  |
| 6 | **Road Marking** | 2027-07-20 → 2027-07-27 (+7d) | 2027-08-19 → 2027-08-26 (+7d) |  |  |
| SDR-ST-CON-P1-5250 | Retroreflective Thermoplastic White Traffic lines | 2027-07-20 → 2027-07-27 (+7d) | 2027-07-27 → 2027-08-03 (+7d) |  | -111d → -117d |
| SDR-ST-CON-P1-5370 | Retroreflective Thermoplastic Yellow, Traffic lines | 2027-07-28 → 2027-08-04 (+7d) | 2027-08-04 → 2027-08-10 (+6d) |  | -111d → -117d |
| SDR-ST-CON-P1-5550 | Ceramic raised pavement markers | 2027-08-05 → 2027-08-11 (+6d) | 2027-08-11 → 2027-08-18 (+7d) |  | -111d → -117d |
| SDR-ST-CON-P1-5630 | Rumble strip | 2027-08-12 → 2027-08-19 (+7d) | 2027-08-19 → 2027-08-26 (+7d) |  | -111d → -117d |
| 7 | **Traffic Signage** | 2027-08-21 → 2027-08-28 (+7d) | 2027-09-08 → 2027-09-15 (+7d) |  |  |
| SDR-ST-CON-P1-5260 | Traffic signs, ground mounted, 1 Sheet Alumenium, (breakaway) Single post, with all accessories | 2027-08-21 → 2027-08-28 (+7d) | 2027-08-26 → 2027-09-02 (+7d) |  | -111d → -117d |
| SDR-ST-CON-P1-5380 | Traffic signs, ground mounted, 1 Sheet Aluminum, (breakaway) Double post, with all accessories | 2027-08-28 → 2027-09-04 (+7d) | 2027-09-02 → 2027-09-09 (+7d) |  | -111d → -117d |
| SDR-ST-CON-P1-5560 | Traffic signs, ground mounted, 2 Sheet Aluminum, (breakaway) Single post, with all accessories | 2027-09-04 → 2027-09-11 (+7d) | 2027-09-08 → 2027-09-15 (+7d) |  | -111d → -117d |
| 8 | **Speed table** | 2027-09-11 → 2027-09-18 (+7d) | 2027-09-19 → 2027-09-26 (+7d) |  |  |
| SDR-ST-CON-P1-5390 | Interlock speed table including interlock, flush kerb and marking | 2027-09-11 → 2027-09-18 (+7d) | 2027-09-19 → 2027-09-26 (+7d) |  | -111d → -117d |
| 2 | **ROAD-01 From 400 to 900 m (10)** |  | 2027-09-30 → 2027-10-07 (+7d) |  |  |
| 2 | **Base Course** |  | 2026-12-14 → 2026-11-18 (-26d) |  |  |
| SDR-ST-CON-P1-4130 | Aggregate base course layer |  | 2026-12-14 → 2026-11-18 A (-26d) | 40% → 100% | -19d → none |
| 3 | **Asphalt Works** | 2026-12-15 → 2026-12-06 (-9d) | 2027-01-24 → 2027-01-14 (-10d) |  |  |
| 1 | **Bituminous base course** | 2026-12-15 → 2026-12-06 (-9d) | 2026-12-30 → 2026-12-21 (-9d) |  |  |
| SDR-ST-CON-P1-4600 | Bituminous base course (Grading I - Class A 1st Layer with RC-01 | 2026-12-15 → 2026-12-06 (-9d) | 2026-12-23 → 2026-12-14 (-9d) |  | -19d → -11d |
| SDR-ST-CON-P1-4930 | Bituminous base course (Grading I - Class A 2nd layer with RC-02 | 2026-12-24 → 2026-12-15 (-9d) | 2026-12-30 → 2026-12-21 (-9d) |  | -19d → -11d |
| 2 | **Bituminous concrete wearing course** | 2026-12-31 → 2026-12-22 (-9d) | 2027-01-24 → 2027-01-14 (-10d) |  |  |
| SDR-ST-CON-P1-5180 | Bituminous concrete wearing course, (Grading I - Class A), including tack coat (RC2) | 2026-12-31 → 2026-12-22 (-9d) | 2027-01-24 → 2027-01-14 (-10d) |  | -19d → -11d |
| 4 | **Kerbstone Installation** | 2026-11-29 → 2026-12-06 (+7d) | 2027-01-18 → 2027-01-25 (+7d) |  |  |
| SDR-ST-CON-P1-4140 | Precast Concrete Curbstone, Type A2 | 2026-11-29 → 2026-12-06 (+7d) | 2026-12-21 → 2026-12-28 (+7d) |  | -14d → -20d |
| SDR-ST-CON-P1-4810 | Precast Concrete Curbstone, Type D | 2026-12-27 → 2027-01-03 (+7d) | 2027-01-18 → 2027-01-25 (+7d) |  | -14d → -20d |
| 5 | **Interlock Installation** | 2027-01-25 → 2027-01-26 (+1d) | 2027-03-18 → 2027-03-20 (+2d) |  |  |
| SDR-ST-CON-P1-4350 | Interlock Installation Part 1 | 2027-01-25 → 2027-01-26 (+1d) | 2027-02-16 → 2027-02-17 (+1d) |  | -19d → -20d |
| SDR-ST-CON-P1-4920 | Interlock Installation Part 2 | 2027-02-18 → 2027-02-20 (+2d) | 2027-03-18 → 2027-03-20 (+2d) |  | -19d → -20d |
| 6 | **Road Marking** | 2027-07-20 → 2027-07-27 (+7d) | 2027-08-30 → 2027-09-06 (+7d) |  |  |
| SDR-ST-CON-P1-5290 | Retroreflective Thermoplastic White Traffic lines | 2027-07-20 → 2027-07-27 (+7d) | 2027-07-31 → 2027-08-06 (+6d) |  | -119d → -125d |
| SDR-ST-CON-P1-5410 | Retroreflective Thermoplastic Yellow, Traffic lines | 2027-08-01 → 2027-08-07 (+6d) | 2027-08-09 → 2027-08-16 (+7d) |  | -119d → -125d |
| SDR-ST-CON-P1-5580 | Ceramic raised pavement markers | 2027-08-10 → 2027-08-17 (+7d) | 2027-08-19 → 2027-08-26 (+7d) |  | -119d → -125d |
| SDR-ST-CON-P1-5640 | Rumble strip | 2027-08-21 → 2027-08-28 (+7d) | 2027-08-30 → 2027-09-06 (+7d) |  | -119d → -125d |
| 7 | **Traffic Signage** | 2027-08-31 → 2027-09-07 (+7d) | 2027-09-20 → 2027-09-27 (+7d) |  |  |
| SDR-ST-CON-P1-5420 | Traffic signs, ground mounted, 1 Sheet Alumenium, (breakaway) Single post, with all accessories | 2027-08-31 → 2027-09-07 (+7d) | 2027-09-09 → 2027-09-16 (+7d) |  | -119d → -125d |
| SDR-ST-CON-P1-5590 | Traffic signs, ground mounted, 1 Sheet Aluminum, (breakaway) Double post, with all accessories | 2027-09-11 → 2027-09-18 (+7d) | 2027-09-20 → 2027-09-27 (+7d) |  | -119d → -125d |
| 8 | **Speed table** | 2027-09-21 → 2027-09-28 (+7d) | 2027-09-30 → 2027-10-07 (+7d) |  |  |
| SDR-ST-CON-P1-5430 | Interlock speed table including interlock, flush kerb and marking | 2027-09-21 → 2027-09-28 (+7d) | 2027-09-30 → 2027-10-07 (+7d) |  | -119d → -125d |
| 3 | **ROAD-01 From 900 to 1239 m (11)** |  | 2027-09-22 → 2027-09-29 (+7d) |  |  |
| 11 | **Subgrade** |  | 2026-12-07 → 2026-11-14 (-23d) |  |  |
| SDR-ST-CON-P1-3740 | Subgrade layer works |  | 2026-12-07 → 2026-11-14 A (-23d) | 80% → 100% | -17d → none |
| 2 | **Base Course** |  | 2026-12-17 → 2026-11-22 (-25d) |  |  |
| SDR-ST-CON-P1-4290 | Aggregate base course layer |  | 2026-12-17 → 2026-11-22 A (-25d) | 10% → 100% | -17d → none |
| 3 | **Asphalt Works** | 2026-12-19 → 2026-12-06 (-13d) | 2027-02-09 → 2027-01-27 (-13d) |  |  |
| 1 | **Bituminous base course** | 2026-12-19 → 2026-12-06 (-13d) | 2027-01-13 → 2026-12-31 (-13d) |  |  |
| SDR-ST-CON-P1-4650 | Bituminous base course (Grading I - Class A 1st Layer with RC-01 | 2026-12-19 → 2026-12-06 (-13d) | 2026-12-30 → 2026-12-17 (-13d) |  | -17d → -6d |
| SDR-ST-CON-P1-4980 | Bituminous base course (Grading I - Class A 2nd layer with RC-02 | 2026-12-31 → 2026-12-19 (-12d) | 2027-01-13 → 2026-12-31 (-13d) |  | -17d → -6d |
| 2 | **Bituminous concrete wearing course** | 2027-01-17 → 2027-01-04 (-13d) | 2027-02-09 → 2027-01-27 (-13d) |  |  |
| SDR-ST-CON-P1-5230 | Bituminous concrete wearing course, (Grading I - Class A), including tack coat (RC2) | 2027-01-17 → 2027-01-04 (-13d) | 2027-02-09 → 2027-01-27 (-13d) |  | -17d → -6d |
| 4 | **Kerbstone Installation** | 2027-01-20 → 2027-01-27 (+7d) | 2027-03-17 → 2027-03-24 (+7d) |  |  |
| SDR-ST-CON-P1-4300 | Precast Concrete Curbstone, Type A2 | 2027-01-20 → 2027-01-27 (+7d) | 2027-02-11 → 2027-02-18 (+7d) |  | -50d → -56d |
| SDR-ST-CON-P1-4860 | Precast Concrete Curbstone, Type D | 2027-02-17 → 2027-02-25 (+8d) | 2027-03-17 → 2027-03-24 (+7d) |  | -50d → -56d |
| 5 | **Interlock Installation** | 2027-03-18 → 2027-03-25 (+7d) | 2027-05-03 → 2027-05-10 (+7d) |  |  |
| SDR-ST-CON-P1-4450 | Interlock Installation Part 1 | 2027-03-18 → 2027-03-25 (+7d) | 2027-04-10 → 2027-04-17 (+7d) |  | -50d → -56d |
| SDR-ST-CON-P1-4940 | Interlock Installation Part 2 | 2027-04-11 → 2027-04-18 (+7d) | 2027-05-03 → 2027-05-10 (+7d) |  | -50d → -56d |
| 6 | **Road Marking** | 2027-05-24 → 2027-05-31 (+7d) | 2027-06-29 → 2027-07-06 (+7d) |  |  |
| SDR-ST-CON-P1-5350 | Retroreflective Thermoplastic White Traffic lines | 2027-05-24 → 2027-05-31 (+7d) | 2027-06-01 → 2027-06-08 (+7d) |  | -62d → -68d |
| SDR-ST-CON-P1-5510 | Retroreflective Thermoplastic Yellow, Traffic lines | 2027-06-02 → 2027-06-09 (+7d) | 2027-06-10 → 2027-06-17 (+7d) |  | -62d → -68d |
| SDR-ST-CON-P1-5600 | Ceramic raised pavement markers | 2027-06-12 → 2027-06-19 (+7d) | 2027-06-20 → 2027-06-27 (+7d) |  | -62d → -68d |
| SDR-ST-CON-P1-5650 | Rumble strip | 2027-06-21 → 2027-06-28 (+7d) | 2027-06-29 → 2027-07-06 (+7d) |  | -62d → -68d |
| 7 | **Traffic Signage** | 2027-06-30 → 2027-07-07 (+7d) | 2027-07-18 → 2027-07-25 (+7d) |  |  |
| SDR-ST-CON-P1-5360 | Traffic signs, ground mounted, 1 Sheet Alumenium, (breakaway) Single post, with all accessories | 2027-06-30 → 2027-07-07 (+7d) | 2027-07-06 → 2027-07-13 (+7d) |  | -62d → -68d |
| SDR-ST-CON-P1-5520 | Traffic signs, ground mounted, 1 Sheet Aluminum, (breakaway) Double post, with all accessories | 2027-07-07 → 2027-07-14 (+7d) | 2027-07-12 → 2027-07-19 (+7d) |  | -62d → -68d |
| SDR-ST-CON-P1-5660 | Traffic signs, ground mounted, 2 Sheet Aluminum, (breakaway) Single post, with all accessories | 2027-07-13 → 2027-07-20 (+7d) | 2027-07-18 → 2027-07-25 (+7d) |  | -62d → -68d |
| 8 | **Speed table** | 2027-09-13 → 2027-09-20 (+7d) | 2027-09-22 → 2027-09-29 (+7d) |  |  |

| ID | Task | Start | Finish | Total float |
| --- | --- | --- | --- | --- |
| SDR-ST-CON-P1-5530 | Interlock speed table including interlock, flush kerb and marking | 2027-09-13 → 2027-09-20 (+7d) | 2027-09-22 → 2027-09-29 (+7d) | -111d → -117d |
| 12 | **ELECTRICAL WORKS** |  | 2027-11-28 → 2027-12-05 (+7d) |  |
| 2 | **MV Network** |  | 2027-08-25 → 2027-09-01 (+7d) |  |
| 5 | **ROAD - 01** |  | 2027-08-25 → 2027-09-01 (+7d) |  |
| 4 | **ROAD-01 From 1125 to 1765 m (7)** |  | 2027-07-03 → 2027-07-10 (+7d) |  |
| 6 | **Excavation** |  | 2026-12-30 → 2027-01-06 (+7d) |  |
| SDR-ST-CON-P1-6090 | Excavation Works Part 2 |  | 2026-12-06 → 2026-12-13 (+7d) | 14d → 8d |
| SDR-ST-CON-P1-6100 | Excavation Works Part 3 | 2026-12-07 → 2026-12-14 (+7d) | 2026-12-30 → 2027-01-06 (+7d) | 14d → 8d |
| 7 | **Pipe laying** | 2027-04-17 → 2027-04-24 (+7d) | 2027-05-10 → 2027-05-23 (+13d) |  |
| SDR-ST-CON-P1-2270 | Pipe Laying | 2027-04-17 → 2027-04-24 (+7d) | 2027-05-10 → 2027-05-23 (+13d) | -72d → -78d |
| 8 | **Backfilling** | 2027-05-11 → 2027-05-24 (+13d) | 2027-06-08 → 2027-06-15 (+7d) |  |
| SDR-ST-CON-P1-3000 | Backfilling Works | 2027-05-11 → 2027-05-24 (+13d) | 2027-06-08 → 2027-06-15 (+7d) | -72d → -78d |
| 9 | **Pulling Cable** | 2027-06-09 → 2027-06-16 (+7d) | 2027-07-03 → 2027-07-10 (+7d) |  |
| SDR-ST-CON-P1-3900 | Pulling Cable | 2027-06-09 → 2027-06-16 (+7d) | 2027-07-03 → 2027-07-10 (+7d) | -72d → -78d |
| 3 | **ROAD-01 From 470 to 1125 m (6)** |  | 2027-07-01 → 2027-07-08 (+7d) |  |
| 6 | **Excavation** |  | 2027-01-02 → 2027-01-09 (+7d) |  |
| SDR-ST-CON-P1-6110 | Excavation Works Part2 |  | 2026-12-12 → 2026-12-19 (+7d) | 12d → 6d |
| SDR-ST-CON-P1-6120 | Excavation Works Part 3 | 2026-12-13 → 2026-12-20 (+7d) | 2027-01-02 → 2027-01-09 (+7d) | 12d → 6d |
| 7 | **Pipe laying** | 2027-04-17 → 2027-04-24 (+7d) | 2027-05-10 → 2027-05-23 (+13d) |  |
| SDR-ST-CON-P1-2420 | Pipe Laying | 2027-04-17 → 2027-04-24 (+7d) | 2027-05-10 → 2027-05-23 (+13d) | -72d → -78d |
| 8 | **Backfilling** | 2027-05-11 → 2027-05-24 (+13d) | 2027-06-08 → 2027-06-15 (+7d) |  |
| SDR-ST-CON-P1-3150 | Backfilling Works | 2027-05-11 → 2027-05-24 (+13d) | 2027-06-08 → 2027-06-15 (+7d) | -72d → -78d |
| 9 | **Pulling Cable** | 2027-06-09 → 2027-06-16 (+7d) | 2027-07-01 → 2027-07-08 (+7d) |  |
| SDR-ST-CON-P1-4000 | Pulling Cable | 2027-06-09 → 2027-06-16 (+7d) | 2027-07-01 → 2027-07-08 (+7d) | -72d → -78d |
| 2 | **ROAD-01 N 03** |  | 2027-08-25 → 2027-09-01 (+7d) |  |
| 6 | **Excavation** |  | 2027-01-05 → 2027-01-12 (+7d) |  |
| SDR-ST-CON-P1-6130 | Excavation Works Part 2 |  | 2026-12-15 → 2026-12-22 (+7d) | 10d → 4d |
| SDR-ST-CON-P1-6140 | Excavation Works Part 3 | 2026-12-16 → 2026-12-23 (+7d) | 2027-01-05 → 2027-01-12 (+7d) | 10d → 4d |
| 7 | **Pipe laying** | 2027-04-17 → 2027-04-24 (+7d) | 2027-05-10 → 2027-05-23 (+13d) |  |
| SDR-ST-CON-P1-2500 | Pipe Laying | 2027-04-17 → 2027-04-24 (+7d) | 2027-05-10 → 2027-05-23 (+13d) | -71d → -77d |
| 8 | **Backfilling** | 2027-07-12 → 2027-07-19 (+7d) | 2027-08-03 → 2027-08-09 (+6d) |  |
| SDR-ST-CON-P1-3280 | Backfilling Works | 2027-07-12 → 2027-07-19 (+7d) | 2027-08-03 → 2027-08-09 (+6d) | -101d → -107d |
| 9 | **Pulling Cable** | 2027-08-04 → 2027-08-10 (+6d) | 2027-08-25 → 2027-09-01 (+7d) |  |
| SDR-ST-CON-P1-4250 | Pulling Cable | 2027-08-04 → 2027-08-10 (+6d) | 2027-08-25 → 2027-09-01 (+7d) | -101d → -107d |
| 1 | **ROAD-01 N 01** |  | 2027-07-01 → 2027-07-08 (+7d) |  |
| 6 | **Excavation** |  | 2027-04-20 → 2027-04-27 (+7d) |  |
| SDR-ST-CON-P1-1730 | Excavation Works Part 1 |  | 2026-12-07 → 2026-12-14 (+7d) | 2d → -4d |
| SDR-ST-CON-P1-6150 | Excavation Works Part 2 | 2027-03-02 → 2027-03-14 (+12d) | 2027-03-29 → 2027-04-05 (+7d) | -48d → -54d |
| SDR-ST-CON-P1-6160 | Excavation Works Part 3 | 2027-03-30 → 2027-04-06 (+7d) | 2027-04-20 → 2027-04-27 (+7d) | -48d → -54d |
| 7 | **Pipe laying** | 2027-04-21 → 2027-04-28 (+7d) | 2027-05-13 → 2027-05-26 (+13d) |  |
| SDR-ST-CON-P1-2430 | Pipe Laying | 2027-04-21 → 2027-04-28 (+7d) | 2027-05-13 → 2027-05-26 (+13d) | -48d → -54d |
| 8 | **Backfilling** | 2027-05-15 → 2027-05-27 (+12d) | 2027-06-10 → 2027-06-17 (+7d) |  |
| SDR-ST-CON-P1-3160 | Backfilling Works | 2027-05-15 → 2027-05-27 (+12d) | 2027-06-10 → 2027-06-17 (+7d) | -47d → -53d |
| 9 | **Pulling Cable** | 2027-06-12 → 2027-06-19 (+7d) | 2027-07-01 → 2027-07-08 (+7d) |  |
| SDR-ST-CON-P1-4010 | Pulling Cable | 2027-06-12 → 2027-06-19 (+7d) | 2027-07-01 → 2027-07-08 (+7d) | -47d → -53d |
| 6 | **ROAD - 02** |  | 2027-07-03 → 2027-07-10 (+7d) |  |
| 3 | **ROAD-01 From 0 to 400 m (9) 2 Way 150 mm** |  | 2027-06-27 → 2027-07-04 (+7d) |  |
| 6 | **Excavation** |  | 2027-03-31 → 2027-04-07 (+7d) |  |
| SDR-ST-CON-P1-1920 | Excavation Works Part 1 |  | 2026-12-15 → 2026-12-22 (+7d) | 2d → -4d |
| SDR-ST-CON-P1-6170 | Excavation Works Part 2 | 2026-12-16 → 2026-12-23 (+7d) | 2027-01-07 → 2027-01-14 (+7d) | 17d → 11d |
| SDR-ST-CON-P1-6180 | Excavation Works Part 3 | 2027-03-06 → 2027-03-17 (+11d) | 2027-03-31 → 2027-04-07 (+7d) | -30d → -36d |
| 7 | **Pipe laying** | 2027-04-17 → 2027-04-24 (+7d) | 2027-05-09 → 2027-05-22 (+13d) |  |
| SDR-ST-CON-P1-2660 | Pipe Laying | 2027-04-17 → 2027-04-24 (+7d) | 2027-05-09 → 2027-05-22 (+13d) | -43d → -49d |
| 8 | **Backfilling** | 2027-05-10 → 2027-05-23 (+13d) | 2027-06-06 → 2027-06-13 (+7d) |  |
| SDR-ST-CON-P1-3430 | Backfilling Works | 2027-05-10 → 2027-05-23 (+13d) | 2027-06-06 → 2027-06-13 (+7d) | -43d → -49d |
| 9 | **Pulling Cable** | 2027-06-07 → 2027-06-14 (+7d) | 2027-06-27 → 2027-07-04 (+7d) |  |
| SDR-ST-CON-P1-4320 | Pulling Cable | 2027-06-07 → 2027-06-14 (+7d) | 2027-06-27 → 2027-07-04 (+7d) | -43d → -49d |
| 2 | **ROAD-01 From 400 to 900 m (10) 2 Way 150 mm** |  | 2027-07-03 → 2027-07-10 (+7d) |  |
| 6 | **Excavation** |  | 2027-04-21 → 2027-04-28 (+7d) |  |
| SDR-ST-CON-P1-1840 | Excavation Works Part 1 |  | 2026-12-16 → 2026-12-23 (+7d) | 2d → -4d |
| SDR-ST-CON-P1-6190 | Excavation Works Part 2 | 2027-03-02 → 2027-03-14 (+12d) | 2027-03-29 → 2027-04-05 (+7d) | -61d → -67d |
| SDR-ST-CON-P1-6200 | Excavation Works Part 3 | 2027-03-30 → 2027-04-06 (+7d) | 2027-04-21 → 2027-04-28 (+7d) | -61d → -67d |
| 7 | **Pipe laying** | 2027-04-22 → 2027-04-29 (+7d) | 2027-05-15 → 2027-05-27 (+12d) |  |
| SDR-ST-CON-P1-2590 | Pipe Laying | 2027-04-22 → 2027-04-29 (+7d) | 2027-05-15 → 2027-05-27 (+12d) | -43d → -49d |
| 8 | **Backfilling** | 2027-05-22 → 2027-05-29 (+7d) | 2027-06-12 → 2027-06-19 (+7d) |  |
| SDR-ST-CON-P1-3340 | Backfilling Works | 2027-05-22 → 2027-05-29 (+7d) | 2027-06-12 → 2027-06-19 (+7d) | -43d → -49d |
| 9 | **Pulling Cable** | 2027-06-13 → 2027-06-20 (+7d) | 2027-07-03 → 2027-07-10 (+7d) |  |
| SDR-ST-CON-P1-4050 | Pulling Cable | 2027-06-13 → 2027-06-20 (+7d) | 2027-07-03 → 2027-07-10 (+7d) | -43d → -49d |
| 1 | **ROAD-01 From 900 to 1239 m (11) 2 Way 150 mm** | 2026-11-29 → 2026-12-06 (+7d) | 2027-06-27 → 2027-07-04 (+7d) |  |
| 6 | **Excavation** | 2026-11-29 → 2026-12-06 (+7d) | 2027-02-06 → 2027-02-13 (+7d) |  |

| ID | Task | Start | Finish | Total float |
| --- | --- | --- | --- | --- |
| SDR-ST-CON-P1-2000 | Excavation Works Part 1 | 2026-11-29 → 2026-12-06 (+7d) | 2026-12-22 → 2026-12-29 (+7d) | 10d → 4d |
| SDR-ST-CON-P1-6210 | Excavation Works Part 2 | 2026-12-23 → 2026-12-30 (+7d) | 2027-01-14 → 2027-01-21 (+7d) | 10d → 4d |
| SDR-ST-CON-P1-6220 | Excavation Works Part 3 | 2027-01-16 → 2027-01-23 (+7d) | 2027-02-06 → 2027-02-13 (+7d) | 13d → 7d |
| 7 | **Pipe laying** | 2027-04-17 → 2027-04-24 (+7d) | 2027-05-09 → 2027-05-22 (+13d) |  |
| SDR-ST-CON-P1-2750 | Pipe Laying | 2027-04-17 → 2027-04-24 (+7d) | 2027-05-09 → 2027-05-22 (+13d) | -41d → -47d |
| 8 | **Backfilling** | 2027-05-10 → 2027-05-23 (+13d) | 2027-06-06 → 2027-06-13 (+7d) |  |
| SDR-ST-CON-P1-3460 | Backfilling Works | 2027-05-10 → 2027-05-23 (+13d) | 2027-06-06 → 2027-06-13 (+7d) | -41d → -47d |
| 9 | **Pulling Cable** | 2027-06-07 → 2027-06-14 (+7d) | 2027-06-27 → 2027-07-04 (+7d) |  |
| SDR-ST-CON-P1-3980 | Pulling Cable | 2027-06-07 → 2027-06-14 (+7d) | 2027-06-27 → 2027-07-04 (+7d) | -41d → -47d |
| 1 | **Earthing System** | 2027-01-16 → 2027-01-23 (+7d) | 2027-02-02 → 2027-02-09 (+7d) |  |
| SDR-ST-CON-P1-4840 | Installation of Earthing System Including lighting poles circuits | 2027-01-16 → 2027-01-23 (+7d) | 2027-02-02 → 2027-02-09 (+7d) | 10d → 4d |
| 16 | **Street Lighting Network** |  | 2027-11-28 → 2027-12-05 (+7d) |  |
| 7 | **ROAD - 01** |  | 2027-11-28 → 2027-12-05 (+7d) |  |
| 2 | **ROAD-01 From 470 to 1125 m (6)** |  | 2027-05-03 → 2027-05-10 (+7d) |  |
| 10 | **Excavation** |  | 2027-02-01 → 2027-02-08 (+7d) |  |
| SDR-ST-CON-P1-1180 | Excavation for LV Cable trench Section 1 |  | 2026-12-21 → 2026-12-28 (+7d) | -67d → -73d |
| SDR-ST-CON-P1-1560 | Excavation for LV Cable trench Section 2 |  | 2027-01-11 → 2027-01-18 (+7d) | -67d → -73d |
| SDR-ST-CON-P1-2250 | Excavation for LV Cable trench Section 3 |  | 2027-02-01 → 2027-02-08 (+7d) | -67d → -73d |
| 11 | **Install Footings** | 2027-02-02 → 2027-02-09 (+7d) | 2027-02-27 → 2027-03-06 (+7d) |  |
| SDR-ST-CON-P1-2980 | Install Footings | 2027-02-02 → 2027-02-09 (+7d) | 2027-02-27 → 2027-03-06 (+7d) | -67d → -73d |
| 12 | **Backfilling** | 2027-02-28 → 2027-03-07 (+7d) | 2027-03-15 → 2027-03-22 (+7d) |  |
| SDR-ST-CON-P1-3870 | Backfilling over LV Cables of Street lighting | 2027-02-28 → 2027-03-07 (+7d) | 2027-03-15 → 2027-03-22 (+7d) | -67d → -73d |
| 13 | **Install pole** | 2027-03-16 → 2027-03-23 (+7d) | 2027-05-03 → 2027-05-10 (+7d) |  |
| SDR-ST-CON-P1-4420 | Install Pole Part 1 | 2027-03-16 → 2027-03-23 (+7d) | 2027-04-08 → 2027-04-15 (+7d) | -67d → -73d |
| SDR-ST-CON-P1-5170 | Install Pole Part 2 | 2027-04-10 → 2027-04-17 (+7d) | 2027-05-03 → 2027-05-10 (+7d) | -67d → -73d |
| 3 | **ROAD-01 From 1125 to 1765 m (7)** |  | 2027-04-26 → 2027-05-03 (+7d) |  |
| 10 | **Excavation** |  | 2027-01-17 → 2027-01-24 (+7d) |  |
| SDR-ST-CON-P1-1590 | Excavation for LV Cable trench Section 1 |  | 2026-12-21 → 2026-12-28 (+7d) | -45d → -51d |
| SDR-ST-CON-P1-2390 | Excavation for LV Cable trench Section 2 |  | 2027-01-05 → 2027-01-12 (+7d) | -45d → -51d |
| SDR-ST-CON-P1-3120 | Excavation for LV Cable trench Section 3 |  | 2027-01-17 → 2027-01-24 (+7d) | -45d → -51d |
| 11 | **Install Footings** | 2027-01-18 → 2027-01-25 (+7d) | 2027-02-09 → 2027-02-16 (+7d) |  |
| SDR-ST-CON-P1-3990 | Install Footings | 2027-01-18 → 2027-01-25 (+7d) | 2027-02-09 → 2027-02-16 (+7d) | -45d → -51d |
| 12 | **Backfilling** | 2027-02-10 → 2027-02-17 (+7d) | 2027-03-03 → 2027-03-15 (+12d) |  |
| SDR-ST-CON-P1-4680 | Backfilling over LV Cables of Street lighting | 2027-02-10 → 2027-02-17 (+7d) | 2027-03-03 → 2027-03-15 (+12d) | -45d → -51d |
| 13 | **Install pole** | 2027-03-04 → 2027-03-16 (+12d) | 2027-04-26 → 2027-05-03 (+7d) |  |
| SDR-ST-CON-P1-5050 | Install Pole Part 1 | 2027-03-04 → 2027-03-16 (+12d) | 2027-04-01 → 2027-04-08 (+7d) | -45d → -51d |
| SDR-ST-CON-P1-5760 | Install Pole Part 2 | 2027-04-03 → 2027-04-10 (+7d) | 2027-04-26 → 2027-05-03 (+7d) | -45d → -51d |
| 1 | **ROAD-01 From 0 to 470 m (3)** |  | 2027-07-19 → 2027-07-26 (+7d) |  |
| 10 | **Excavation** |  | 2027-01-02 → 2027-01-09 (+7d) |  |
| SDR-ST-CON-P1-1500 | Excavation for LV Cable trench Section 1 |  | 2026-12-09 → 2026-12-16 (+7d) | -48d → -54d |
| SDR-ST-CON-P1-3040 | Excavation for LV Cable trench Section 3 |  | 2027-01-02 → 2027-01-09 (+7d) | -41d → -47d |
| SDR-ST-CON-P1-2320 | Excavation for LV Cable trench Section 2 |  | 2026-12-21 → 2026-12-28 (+7d) | -41d → -47d |
| 11 | **Install Footings** | 2027-01-05 → 2027-01-12 (+7d) | 2027-01-28 → 2027-02-04 (+7d) |  |
| SDR-ST-CON-P1-3920 | Install Footings | 2027-01-05 → 2027-01-12 (+7d) | 2027-01-28 → 2027-02-04 (+7d) | -43d → -49d |
| 12 | **Backfilling** | 2027-01-30 → 2027-02-06 (+7d) | 2027-02-15 → 2027-02-23 (+8d) |  |
| SDR-ST-CON-P1-4850 | Backfilling over LV Cables of Street lighting | 2027-01-30 → 2027-02-06 (+7d) | 2027-02-15 → 2027-02-23 (+8d) | -43d → -49d |
| 13 | **Install pole** | 2027-02-27 → 2027-03-06 (+7d) | 2027-07-19 → 2027-07-26 (+7d) |  |
| SDR-ST-CON-P1-5330 | Install Pole Part 1 | 2027-02-27 → 2027-03-06 (+7d) | 2027-03-27 → 2027-04-03 (+7d) | -51d → -57d |
| SDR-ST-CON-P1-5780 | Install Pole Part 2 | 2027-04-06 → 2027-04-13 (+7d) | 2027-04-29 → 2027-05-06 (+7d) | -59d → -65d |
| SDR-ST-CON-P1-6070 | Install Pole Part 3 | 2027-05-04 → 2027-05-11 (+7d) | 2027-05-23 → 2027-05-30 (+7d) | -62d → -68d |
| SDR-ST-CON-P1-6080 | Install Pole Part 4 | 2027-07-12 → 2027-07-19 (+7d) | 2027-07-19 → 2027-07-26 (+7d) | -76d → -82d |
| 4 | **ROAD-01 N (1)** |  | 2027-04-20 → 2027-04-27 (+7d) |  |
| 10 | **Excavation** |  | 2027-01-06 → 2027-01-13 (+7d) |  |
| SDR-ST-CON-P1-3190 | Excavation for LV Cable trench Section 3 |  | 2027-01-06 → 2027-01-13 (+7d) | -43d → -49d |
| SDR-ST-CON-P1-1700 | Excavation for LV Cable trench Section 1 |  | 2026-12-10 → 2026-12-17 (+7d) | -48d → -54d |
| SDR-ST-CON-P1-2410 | Excavation for LV Cable trench Section 2 |  | 2026-12-24 → 2026-12-31 (+7d) | -43d → -49d |
| 11 | **Install Footings** | 2027-01-07 → 2027-01-14 (+7d) | 2027-01-31 → 2027-02-07 (+7d) |  |
| SDR-ST-CON-P1-4110 | Install Footings | 2027-01-07 → 2027-01-14 (+7d) | 2027-01-31 → 2027-02-07 (+7d) | -43d → -49d |
| 12 | **Backfilling** | 2027-02-01 → 2027-02-08 (+7d) | 2027-02-15 → 2027-02-23 (+8d) |  |
| SDR-ST-CON-P1-4960 | Backfilling over LV Cables of Street lighting | 2027-02-01 → 2027-02-08 (+7d) | 2027-02-15 → 2027-02-23 (+8d) | -43d → -49d |
| 13 | **Install pole** | 2027-02-27 → 2027-03-06 (+7d) | 2027-04-20 → 2027-04-27 (+7d) |  |
| SDR-ST-CON-P1-5340 | Install Pole Part 1 | 2027-02-27 → 2027-03-06 (+7d) | 2027-03-27 → 2027-04-03 (+7d) | -51d → -57d |
| SDR-ST-CON-P1-5790 | Install Pole Part 2 | 2027-03-28 → 2027-04-04 (+7d) | 2027-04-20 → 2027-04-27 (+7d) | -51d → -57d |
| 11 | **Ring Main Unit** | 2027-08-02 → 2027-08-08 (+6d) | 2027-10-11 → 2027-10-18 (+7d) |  |
| 1 | **Leveling** | 2027-08-02 → 2027-08-08 (+6d) | 2027-08-16 → 2027-08-23 (+7d) |  |
| SDR-ST-CON-P1-5840 | Ring Main Unit leveling | 2027-08-02 → 2027-08-08 (+6d) | 2027-08-16 → 2027-08-23 (+7d) | -87d → -93d |
| 2 | **Lean Concrete** | 2027-08-26 → 2027-09-02 (+7d) | 2027-09-18 → 2027-09-25 (+7d) |  |
| SDR-ST-CON-P1-5890 | Ring Main Unit Lean Concrete | 2027-08-26 → 2027-09-02 (+7d) | 2027-09-18 → 2027-09-25 (+7d) | -90d → -96d |
| 3 | **Installation** | 2027-09-19 → 2027-09-26 (+7d) | 2027-10-11 → 2027-10-18 (+7d) |  |
| SDR-ST-CON-P1-5920 | Ring Main Unit installation for Street Lighting | 2027-09-19 → 2027-09-26 (+7d) | 2027-10-11 → 2027-10-18 (+7d) | -90d → -96d |

| ID | Task | Start | Finish | Total float |
| --- | --- | --- | --- | --- |
| 12 | **Feeder Pillars** | 2027-08-26 → 2027-09-02 (+7d) | 2027-10-30 → 2027-11-06 (+7d) |  |
| 1 | **Leveling** | 2027-08-26 → 2027-09-02 (+7d) | 2027-09-19 → 2027-09-26 (+7d) |  |
| SDR-ST-CON-P1-5880 | Feeder Pillars Leveling | 2027-08-26 → 2027-09-02 (+7d) | 2027-09-19 → 2027-09-26 (+7d) | -95d → -101d |
| 2 | **Lean Concrete** | 2027-09-20 → 2027-09-27 (+7d) | 2027-10-12 → 2027-10-19 (+7d) |  |
| SDR-ST-CON-P1-5930 | Feeder Pillars Lean Concrete | 2027-09-20 → 2027-09-27 (+7d) | 2027-10-12 → 2027-10-19 (+7d) | -93d → -99d |
| 3 | **Installation** | 2027-10-13 → 2027-10-20 (+7d) | 2027-10-30 → 2027-11-06 (+7d) |  |
| SDR-ST-CON-P1-6000 | Feeder Pillars Installation | 2027-10-13 → 2027-10-20 (+7d) | 2027-10-30 → 2027-11-06 (+7d) | -93d → -99d |
| 13 | **KWH Frame** | 2027-10-07 → 2027-10-14 (+7d) | 2027-11-28 → 2027-12-05 (+7d) |  |
| 1 | **Leveling** | 2027-10-07 → 2027-10-14 (+7d) | 2027-10-28 → 2027-11-04 (+7d) |  |
| SDR-ST-CON-P1-5940 | KWH meter mounting frame Leveling | 2027-10-07 → 2027-10-14 (+7d) | 2027-10-28 → 2027-11-04 (+7d) | -110d → -116d |
| 2 | **Lean Concrete** | 2027-10-30 → 2027-11-06 (+7d) | 2027-11-15 → 2027-11-22 (+7d) |  |
| SDR-ST-CON-P1-6010 | KWH meter mounting frame Lean Concrete | 2027-10-30 → 2027-11-06 (+7d) | 2027-11-15 → 2027-11-22 (+7d) | -110d → -116d |
| 3 | **Installation** | 2027-11-16 → 2027-11-23 (+7d) | 2027-11-28 → 2027-12-05 (+7d) |  |
| SDR-ST-CON-P1-6040 | KWH meter mounting frame installation | 2027-11-16 → 2027-11-23 (+7d) | 2027-11-28 → 2027-12-05 (+7d) | -110d → -116d |
| 14 | **Street Lighting Sub-station** | 2027-10-12 → 2027-10-19 (+7d) | 2027-11-23 → 2027-11-30 (+7d) |  |
| 1 | **Leveling** | 2027-10-12 → 2027-10-19 (+7d) | 2027-11-03 → 2027-11-10 (+7d) |  |
| SDR-ST-CON-P1-5950 | Unit Substation Leveling Part 1 | 2027-10-12 → 2027-10-19 (+7d) | 2027-11-03 → 2027-11-10 (+7d) | -110d → -116d |
| SDR-ST-CON-P1-5960 | Unit Substation Leveling Part 2 | 2027-10-12 → 2027-10-19 (+7d) | 2027-11-03 → 2027-11-10 (+7d) | -110d → -116d |
| 2 | **Lean Concrete** | 2027-11-04 → 2027-11-11 (+7d) | 2027-11-17 → 2027-11-24 (+7d) |  |
| SDR-ST-CON-P1-6020 | Unit Substation Lean Concrete | 2027-11-04 → 2027-11-11 (+7d) | 2027-11-17 → 2027-11-24 (+7d) | -110d → -116d |
| 3 | **Installation** | 2027-11-18 → 2027-11-25 (+7d) | 2027-11-23 → 2027-11-30 (+7d) |  |
| SDR-ST-CON-P1-6050 | Unit Substation Install for Street Lighting | 2027-11-18 → 2027-11-25 (+7d) | 2027-11-23 → 2027-11-30 (+7d) | -110d → -116d |
| 8 | **ROAD - 02** |  | 2027-11-18 → 2027-11-25 (+7d) |  |
| 6 | **ROAD-01 From 0 to 400 m (9) 2 Way 110 mm** |  | 2027-03-04 → 2027-03-16 (+12d) |  |
| 10 | **Excavation** |  | 2027-01-07 → 2027-01-14 (+7d) |  |
| SDR-ST-CON-P1-1780 | Excavation for LV Cable trench Section 2 |  | 2026-12-24 → 2026-12-31 (+7d) | -51d → -57d |
| SDR-ST-CON-P1-1310 | Excavation for LV Cable trench Section 1 |  | 2026-12-10 → 2026-12-17 (+7d) | -81d → -87d |
| SDR-ST-CON-P1-2350 | Excavation for LV Cable trench Section 3 |  | 2027-01-07 → 2027-01-14 (+7d) | -51d → -57d |
| 11 | **Install Footings** | 2027-01-09 → 2027-01-16 (+7d) | 2027-01-25 → 2027-02-01 (+7d) |  |
| SDR-ST-CON-P1-2860 | Install Footings | 2027-01-09 → 2027-01-16 (+7d) | 2027-01-25 → 2027-02-01 (+7d) | -51d → -57d |
| 12 | **Backfilling** | 2027-01-26 → 2027-02-02 (+7d) | 2027-02-13 → 2027-02-20 (+7d) |  |
| SDR-ST-CON-P1-3500 | Backfilling over LV Cables of Street lighting | 2027-01-26 → 2027-02-02 (+7d) | 2027-02-13 → 2027-02-20 (+7d) | -51d → -57d |
| 13 | **Install pole** | 2027-02-14 → 2027-02-21 (+7d) | 2027-03-04 → 2027-03-16 (+12d) |  |
| SDR-ST-CON-P1-4260 | Install Pole Part 1 | 2027-02-14 → 2027-02-21 (+7d) | 2027-02-23 → 2027-03-02 (+7d) | -51d → -57d |
| SDR-ST-CON-P1-4570 | Install Pole Part 2 | 2027-02-24 → 2027-03-03 (+7d) | 2027-03-04 → 2027-03-16 (+12d) | -51d → -57d |
| 5 | **ROAD-01 From 400 to 900 m (10) 4 Way 110 mm** |  | 2027-03-15 → 2027-03-22 (+7d) |  |
| 10 | **Excavation** |  | 2027-01-02 → 2027-01-09 (+7d) |  |
| SDR-ST-CON-P1-1260 | Excavation for LV Cable trench Section 1 |  | 2026-12-07 → 2026-12-14 (+7d) | -75d → -81d |
| SDR-ST-CON-P1-1760 | Excavation for LV Cable trench Section 2 |  | 2026-12-21 → 2026-12-28 (+7d) | -51d → -57d |
| SDR-ST-CON-P1-2260 | Excavation for LV Cable trench Section 3 |  | 2027-01-02 → 2027-01-09 (+7d) | -51d → -57d |
| 11 | **Install Footings** | 2027-01-03 → 2027-01-10 (+7d) | 2027-01-18 → 2027-01-25 (+7d) |  |
| SDR-ST-CON-P1-2770 | Install Footings | 2027-01-03 → 2027-01-10 (+7d) | 2027-01-18 → 2027-01-25 (+7d) | -51d → -57d |
| 12 | **Backfilling** | 2027-01-19 → 2027-01-26 (+7d) | 2027-02-03 → 2027-02-10 (+7d) |  |
| SDR-ST-CON-P1-3350 | Backfilling over LV Cables of Street lighting | 2027-01-19 → 2027-01-26 (+7d) | 2027-02-03 → 2027-02-10 (+7d) | -51d → -57d |
| 13 | **Install pole** | 2027-02-04 → 2027-02-11 (+7d) | 2027-03-15 → 2027-03-22 (+7d) |  |
| SDR-ST-CON-P1-3940 | Install Pole Part 1 | 2027-02-04 → 2027-02-11 (+7d) | 2027-02-13 → 2027-02-20 (+7d) | -51d → -57d |
| SDR-ST-CON-P1-4400 | Install Pole Part 2 | 2027-03-02 → 2027-03-14 (+12d) | 2027-03-15 → 2027-03-22 (+7d) | -20d → -26d |
| 4 | **ROAD-01 From 900 to 1239 m (11) 2 Way 110 mm** |  | 2027-03-15 → 2027-03-22 (+7d) |  |
| 10 | **Excavation** |  | 2027-01-04 → 2027-01-11 (+7d) |  |
| SDR-ST-CON-P1-1360 | Excavation for LV Cable trench Section 1 |  | 2026-12-09 → 2026-12-16 (+7d) | -59d → -65d |
| SDR-ST-CON-P1-1900 | Excavation for LV Cable trench Section 2 |  | 2026-12-23 → 2026-12-30 (+7d) | -36d → -42d |
| SDR-ST-CON-P1-2400 | Excavation for LV Cable trench Section 3 |  | 2027-01-04 → 2027-01-11 (+7d) | -36d → -42d |
| 11 | **Install Footings** | 2027-01-05 → 2027-01-12 (+7d) | 2027-01-20 → 2027-01-27 (+7d) |  |
| SDR-ST-CON-P1-2840 | Install Footings | 2027-01-05 → 2027-01-12 (+7d) | 2027-01-20 → 2027-01-27 (+7d) | -36d → -42d |
| 12 | **Backfilling** | 2027-01-21 → 2027-01-28 (+7d) | 2027-02-06 → 2027-02-13 (+7d) |  |
| SDR-ST-CON-P1-3470 | Backfilling over LV Cables of Street lighting | 2027-01-21 → 2027-01-28 (+7d) | 2027-02-06 → 2027-02-13 (+7d) | -36d → -42d |
| 13 | **Install pole** | 2027-02-07 → 2027-02-14 (+7d) | 2027-03-15 → 2027-03-22 (+7d) |  |
| SDR-ST-CON-P1-4080 | Install Pole Part 1 | 2027-02-07 → 2027-02-14 (+7d) | 2027-02-21 → 2027-03-01 (+8d) | -36d → -42d |
| SDR-ST-CON-P1-4610 | Install Pole Part 2 | 2027-02-23 → 2027-03-02 (+7d) | 2027-03-15 → 2027-03-22 (+7d) | -36d → -42d |
| 11 | **Ring Main Unit** | 2027-07-03 → 2027-07-10 (+7d) | 2027-11-16 → 2027-11-23 (+7d) |  |
| 1 | **Leveling** | 2027-07-03 → 2027-07-10 (+7d) | 2027-07-25 → 2027-08-01 (+7d) |  |
| SDR-ST-CON-P1-5810 | Ring Main Unit leveling | 2027-07-03 → 2027-07-10 (+7d) | 2027-07-25 → 2027-08-01 (+7d) | -72d → -78d |
| 2 | **Lean Concrete** | 2027-09-20 → 2027-09-27 (+7d) | 2027-10-12 → 2027-10-19 (+7d) |  |
| SDR-ST-CON-P1-5850 | Ring Main Unit Lean Concrete | 2027-09-20 → 2027-09-27 (+7d) | 2027-10-12 → 2027-10-19 (+7d) | -111d → -117d |
| 3 | **Installation** | 2027-10-25 → 2027-11-01 (+7d) | 2027-11-16 → 2027-11-23 (+7d) |  |
| SDR-ST-CON-P1-5970 | Ring Main Unit installation for Street Lighting | 2027-10-25 → 2027-11-01 (+7d) | 2027-11-16 → 2027-11-23 (+7d) | -111d → -117d |
| 12 | **Feeder Pillars** | 2027-07-03 → 2027-07-10 (+7d) | 2027-09-26 → 2027-10-03 (+7d) |  |
| 1 | **Leveling** | 2027-07-03 → 2027-07-10 (+7d) | 2027-07-25 → 2027-08-01 (+7d) |  |
| SDR-ST-CON-P1-5820 | Feeder Pillars Leveling | 2027-07-03 → 2027-07-10 (+7d) | 2027-07-25 → 2027-08-01 (+7d) | -72d → -78d |
| 2 | **Lean Concrete** | 2027-07-26 → 2027-08-02 (+7d) | 2027-08-16 → 2027-08-23 (+7d) |  |

| ID | Task | Start | Finish | Total float |
| --- | --- | --- | --- | --- |
| SDR-ST-CON-P1-5860 | Feeder Pillars Lean Concrete | 2027-07-26 → 2027-08-02 (+7d) | 2027-08-16 → 2027-08-23 (+7d) | -70d → -76d |
| 3 | **Installation** | 2027-09-04 → 2027-09-11 (+7d) | 2027-09-26 → 2027-10-03 (+7d) |  |
| SDR-ST-CON-P1-5980 | Feeder Pillars Installation | 2027-09-04 → 2027-09-11 (+7d) | 2027-09-26 → 2027-10-03 (+7d) | -70d → -76d |
| 13 | **KWH Frame** | 2027-07-04 → 2027-07-11 (+7d) | 2027-10-28 → 2027-11-04 (+7d) |  |
| 1 | **Leveling** | 2027-07-04 → 2027-07-11 (+7d) | 2027-07-26 → 2027-08-02 (+7d) |  |
| SDR-ST-CON-P1-5830 | KWH meter mounting frame Leveling | 2027-07-04 → 2027-07-11 (+7d) | 2027-07-26 → 2027-08-02 (+7d) | -72d → -78d |
| 2 | **Lean Concrete** | 2027-09-13 → 2027-09-20 (+7d) | 2027-10-05 → 2027-10-12 (+7d) |  |
| SDR-ST-CON-P1-5870 | KWH meter mounting frame Lean Concrete | 2027-09-13 → 2027-09-20 (+7d) | 2027-10-05 → 2027-10-12 (+7d) | -95d → -101d |
| 3 | **Installation** | 2027-10-06 → 2027-10-13 (+7d) | 2027-10-28 → 2027-11-04 (+7d) |  |
| SDR-ST-CON-P1-5910 | KWH meter mounting frame installation | 2027-10-06 → 2027-10-13 (+7d) | 2027-10-28 → 2027-11-04 (+7d) | -95d → -101d |
| 14 | **Street Lighting Sub-station** | 2027-07-27 → 2027-08-03 (+7d) | 2027-11-18 → 2027-11-25 (+7d) |  |
| 1 | **Leveling** | 2027-07-27 → 2027-08-03 (+7d) | 2027-08-17 → 2027-08-24 (+7d) |  |
| SDR-ST-CON-P1-5900 | Unit Substation Leveling | 2027-07-27 → 2027-08-03 (+7d) | 2027-08-17 → 2027-08-24 (+7d) | -72d → -78d |
| 2 | **Lean Concrete** | 2027-10-07 → 2027-10-14 (+7d) | 2027-10-30 → 2027-11-06 (+7d) |  |
| SDR-ST-CON-P1-5990 | Unit Substation Lean Concrete | 2027-10-07 → 2027-10-14 (+7d) | 2027-10-30 → 2027-11-06 (+7d) | -102d → -108d |
| 3 | **Installation** | 2027-10-31 → 2027-11-07 (+7d) | 2027-11-18 → 2027-11-25 (+7d) |  |
| SDR-ST-CON-P1-6030 | Unit Substation Install for Street Lighting | 2027-10-31 → 2027-11-07 (+7d) | 2027-11-18 → 2027-11-25 (+7d) | -102d → -108d |
| 5 | **TELECOMMUNICATIONS WORKS** |  | 2027-04-24 → 2027-05-01 (+7d) |  |
| 3 | **ROAD - 01** |  | 2027-03-07 → 2027-03-18 (+11d) |  |
| 4 | **ROAD-01 N 1 (2X3)X50 mm MH-15 to MH-16** |  | 2027-03-04 → 2027-03-16 (+12d) |  |
| 3 | **Ducts** |  | 2027-03-04 → 2027-03-16 (+12d) |  |
| 2 | **Excavation** |  | 2026-12-29 → 2027-01-05 (+7d) |  |
| SDR-ST-CON-P1-1690 | Excavation for telecom trench Section 1 |  | 2026-12-14 → 2026-12-21 (+7d) | -48d → -54d |
| SDR-ST-CON-P1-2340 | Excavation for telecom trench Section 2 |  | 2026-12-29 → 2027-01-05 (+7d) | -48d → -54d |
| 5 | **Pipe laying** |  | 2027-01-14 → 2027-01-21 (+7d) |  |
| SDR-ST-CON-P1-3070 | HDPE Pipes for Telecom Installation |  | 2027-01-14 → 2027-01-21 (+7d) | -48d → -54d |
| 6 | **Backfilling** | 2027-01-16 → 2027-01-23 (+7d) | 2027-02-07 → 2027-02-14 (+7d) |  |
| SDR-ST-CON-P1-3680 | Backfilling over HDPE Telecom Pipes | 2027-01-16 → 2027-01-23 (+7d) | 2027-02-07 → 2027-02-14 (+7d) | -48d → -54d |
| 7 | **Pulling Cable** | 2027-02-08 → 2027-02-15 (+7d) | 2027-03-04 → 2027-03-16 (+12d) |  |
| SDR-ST-CON-P1-4310 | Pulling Cable | 2027-02-08 → 2027-02-15 (+7d) | 2027-03-04 → 2027-03-16 (+12d) | -48d → -54d |
| 4 | **Manholes** |  | 2027-01-12 → 2027-01-19 (+7d) |  |
| 4 | **Testting** | 2026-11-29 → 2026-12-06 (+7d) | 2026-12-21 → 2026-12-28 (+7d) |  |
| SDR-ST-CON-P1-4360 | Telecom Manhole finishing works | 2026-11-29 → 2026-12-06 (+7d) | 2026-12-21 → 2026-12-28 (+7d) | 30d → 25d |
| 5 | **Backfilling** | 2026-12-22 → 2026-12-29 (+7d) | 2027-01-12 → 2027-01-19 (+7d) |  |
| SDR-ST-CON-P1-4880 | Backfilling over Telecom Manhole | 2026-12-22 → 2026-12-29 (+7d) | 2027-01-12 → 2027-01-19 (+7d) | 30d → 25d |
| 2 | **ROAD-01 From 0 to 470 m (3) (2X3)X50 mm MH-12 to MH-14** |  | 2027-02-16 → 2027-02-24 (+8d) |  |
| 3 | **Ducts** |  | 2027-01-28 → 2027-02-04 (+7d) |  |
| 5 | **Pipe laying** |  | 2026-12-10 → 2026-12-17 (+7d) |  |
| SDR-ST-CON-P1-2940 | HDPE Pipes for Telecom Installation |  | 2026-12-10 → 2026-12-17 (+7d) | -16d → -22d |
| 6 | **Backfilling** | 2026-12-12 → 2026-12-19 (+7d) | 2027-01-04 → 2027-01-11 (+7d) |  |
| SDR-ST-CON-P1-3770 | Backfilling over HDPE Telecom Pipes | 2026-12-12 → 2026-12-19 (+7d) | 2027-01-04 → 2027-01-11 (+7d) | -16d → -22d |
| 7 | **Pulling Cable** | 2027-01-05 → 2027-01-12 (+7d) | 2027-01-28 → 2027-02-04 (+7d) |  |
| SDR-ST-CON-P1-4370 | Pulling Cable | 2027-01-05 → 2027-01-12 (+7d) | 2027-01-28 → 2027-02-04 (+7d) | -16d → -22d |
| 4 | **Manholes** |  | 2027-02-16 → 2027-02-24 (+8d) |  |
| 4 | **Testting** | 2026-12-30 → 2027-01-06 (+7d) | 2027-01-23 → 2027-01-30 (+7d) |  |
| SDR-ST-CON-P1-4630 | Telecom Manhole finishing works | 2026-12-30 → 2027-01-06 (+7d) | 2027-01-23 → 2027-01-30 (+7d) | -11d → -17d |
| 5 | **Backfilling** | 2027-01-24 → 2027-01-31 (+7d) | 2027-02-16 → 2027-02-24 (+8d) |  |
| SDR-ST-CON-P1-5140 | Backfilling over Telecom Manhole | 2027-01-24 → 2027-01-31 (+7d) | 2027-02-16 → 2027-02-24 (+8d) | -11d → -17d |
| 1 | **ROAD-01 From 470 to 1125 m (6) (2X3)X50 mm MH-10 to MH-11** |  | 2027-02-27 → 2027-03-06 (+7d) |  |
| 3 | **Ducts** |  | 2027-02-27 → 2027-03-06 (+7d) |  |
| 2 | **Excavation** |  | 2026-12-17 → 2026-12-24 (+7d) |  |
| SDR-ST-CON-P1-1790 | Excavation for telecom trench Section 2 |  | 2026-12-17 → 2026-12-24 (+7d) | -53d → -59d |
| 5 | **Pipe laying** |  | 2027-01-11 → 2027-01-18 (+7d) |  |
| SDR-ST-CON-P1-2510 | HDPE Pipes for Telecom Installation |  | 2027-01-11 → 2027-01-18 (+7d) | -53d → -59d |
| 6 | **Backfilling** | 2027-01-12 → 2027-01-19 (+7d) | 2027-02-01 → 2027-02-08 (+7d) |  |
| SDR-ST-CON-P1-3230 | Backfilling over HDPE Telecom Pipes | 2027-01-12 → 2027-01-19 (+7d) | 2027-02-01 → 2027-02-08 (+7d) | -53d → -59d |
| 7 | **Pulling Cable** | 2027-02-02 → 2027-02-09 (+7d) | 2027-02-27 → 2027-03-06 (+7d) |  |
| SDR-ST-CON-P1-4020 | Pulling Cable | 2027-02-02 → 2027-02-09 (+7d) | 2027-02-27 → 2027-03-06 (+7d) | -53d → -59d |
| 4 | **Manholes** |  | 2027-02-16 → 2027-02-24 (+8d) |  |
| 4 | **Testting** | 2026-12-30 → 2027-01-06 (+7d) | 2027-01-23 → 2027-01-30 (+7d) |  |
| SDR-ST-CON-P1-4150 | Telecom Manhole finishing works | 2026-12-30 → 2027-01-06 (+7d) | 2027-01-23 → 2027-01-30 (+7d) | 2d → -4d |
| 5 | **Backfilling** | 2027-01-24 → 2027-01-31 (+7d) | 2027-02-16 → 2027-02-24 (+8d) |  |
| SDR-ST-CON-P1-4740 | Backfilling over Telecom Manhole | 2027-01-24 → 2027-01-31 (+7d) | 2027-02-16 → 2027-02-24 (+8d) | 2d → -4d |
| 3 | **ROAD-01 From 1125 to 1765 m (7) (2X3)X50 mm MH-8 to MH-9** |  | 2027-03-07 → 2027-03-18 (+11d) |  |
| 3 | **Ducts** |  | 2027-03-07 → 2027-03-18 (+11d) |  |
| 2 | **Excavation** |  | 2026-12-22 → 2026-12-29 (+7d) |  |
| SDR-ST-CON-P1-2290 | Excavation for telecom trench Section 2 |  | 2026-12-22 → 2026-12-29 (+7d) | -33d → -39d |
| 5 | **Pipe laying** | 2026-12-23 → 2026-12-30 (+7d) | 2027-01-16 → 2027-01-23 (+7d) |  |
| SDR-ST-CON-P1-3010 | HDPE Pipes for Telecom Installation | 2026-12-23 → 2026-12-30 (+7d) | 2027-01-16 → 2027-01-23 (+7d) | -33d → -39d |
| 6 | **Backfilling** | 2027-01-17 → 2027-01-24 (+7d) | 2027-02-09 → 2027-02-16 (+7d) |  |

| ID | Task | Start | Finish | Total float |
| --- | --- | --- | --- | --- |
| SDR-ST-CON-P1-3630 | Backfilling over HDPE Telecom Pipes | 2027-01-17 → 2027-01-24 (+7d) | 2027-02-09 → 2027-02-16 (+7d) | -33d → -39d |
| 7 | **Pulling Cable** | 2027-02-10 → 2027-02-17 (+7d) | 2027-03-07 → 2027-03-18 (+11d) |  |
| SDR-ST-CON-P1-4240 | Pulling Cable | 2027-02-10 → 2027-02-17 (+7d) | 2027-03-07 → 2027-03-18 (+11d) | -33d → -39d |
| 4 | **Manholes** |  | 2027-01-10 → 2027-01-17 (+7d) |  |
| 4 | **Testting** | 2026-11-29 → 2026-12-06 (+7d) | 2026-12-19 → 2026-12-26 (+7d) |  |
| SDR-ST-CON-P1-4720 | Telecom Manhole finishing works | 2026-11-29 → 2026-12-06 (+7d) | 2026-12-19 → 2026-12-26 (+7d) | 27d → 21d |
| 5 | **Backfilling** | 2026-12-20 → 2026-12-27 (+7d) | 2027-01-10 → 2027-01-17 (+7d) |  |
| SDR-ST-CON-P1-5240 | Backfilling over Telecom Manhole | 2026-12-20 → 2026-12-27 (+7d) | 2027-01-10 → 2027-01-17 (+7d) | 27d → 21d |
| 4 | **ROAD - 02** |  | 2027-04-24 → 2027-05-01 (+7d) |  |
| 3 | **ROAD-01 From 0 to 400 m (9) (2X3)X50 mm MH-5 to MH-7** |  | 2027-04-05 → 2027-04-12 (+7d) |  |
| 3 | **Ducts** |  | 2027-04-05 → 2027-04-12 (+7d) |  |
| 2 | **Excavation** |  | 2027-01-16 → 2027-01-23 (+7d) |  |
| SDR-ST-CON-P1-1960 | Excavation for telecom trench Section 2 |  | 2027-01-16 → 2027-01-23 (+7d) | -81d → -87d |
| SDR-ST-CON-P1-1340 | Excavation for telecom trench Section 1 |  | 2026-12-22 → 2026-12-29 (+7d) | -81d → -87d |
| 5 | **Pipe laying** |  | 2027-02-09 → 2027-02-16 (+7d) |  |
| SDR-ST-CON-P1-2670 | HDPE Pipes for Telecom Installation |  | 2027-02-09 → 2027-02-16 (+7d) | -81d → -87d |
| 6 | **Backfilling** | 2027-02-10 → 2027-02-17 (+7d) | 2027-03-07 → 2027-03-18 (+11d) |  |
| SDR-ST-CON-P1-3440 | Backfilling over HDPE Telecom Pipes | 2027-02-10 → 2027-02-17 (+7d) | 2027-03-07 → 2027-03-18 (+11d) | -81d → -87d |
| 7 | **Pulling Cable** | 2027-03-08 → 2027-03-20 (+12d) | 2027-04-05 → 2027-04-12 (+7d) |  |
| SDR-ST-CON-P1-4270 | Pulling Cable | 2027-03-08 → 2027-03-20 (+12d) | 2027-04-05 → 2027-04-12 (+7d) | -81d → -87d |
| 4 | **Manholes** |  | 2027-01-16 → 2027-01-23 (+7d) |  |
| 4 | **Testting** | 2026-11-29 → 2026-12-06 (+7d) | 2026-12-22 → 2026-12-29 (+7d) |  |
| SDR-ST-CON-P1-4380 | Telecom Manhole finishing works | 2026-11-29 → 2026-12-06 (+7d) | 2026-12-22 → 2026-12-29 (+7d) | 20d → 14d |
| 5 | **Backfilling** | 2026-12-23 → 2026-12-30 (+7d) | 2027-01-16 → 2027-01-23 (+7d) |  |
| SDR-ST-CON-P1-4900 | Backfilling over Telecom Manhole | 2026-12-23 → 2026-12-30 (+7d) | 2027-01-16 → 2027-01-23 (+7d) | 20d → 14d |
| 1 | **ROAD-01 From 400 to 900 m (10) (2X3)X50 mm MH-1 to MH-4** |  | 2027-04-05 → 2027-04-12 (+7d) |  |
| 3 | **Ducts** | 2026-11-29 → 2026-12-06 (+7d) | 2027-04-05 → 2027-04-12 (+7d) |  |
| 2 | **Excavation** | 2026-11-29 → 2026-12-06 (+7d) | 2027-01-16 → 2027-01-23 (+7d) |  |
| SDR-ST-CON-P1-1290 | Excavation for telecom trench Section 1 | 2026-11-29 → 2026-12-06 (+7d) | 2026-12-22 → 2026-12-29 (+7d) | -75d → -81d |
| SDR-ST-CON-P1-1880 | Excavation for telecom trench Section 2 | 2026-12-23 → 2026-12-30 (+7d) | 2027-01-16 → 2027-01-23 (+7d) | -75d → -81d |
| 5 | **Pipe laying** | 2027-01-17 → 2027-01-24 (+7d) | 2027-02-09 → 2027-02-16 (+7d) |  |
| SDR-ST-CON-P1-2640 | HDPE Pipes for Telecom Installation | 2027-01-17 → 2027-01-24 (+7d) | 2027-02-09 → 2027-02-16 (+7d) | -75d → -81d |
| 6 | **Backfilling** | 2027-02-10 → 2027-02-17 (+7d) | 2027-03-07 → 2027-03-18 (+11d) |  |
| SDR-ST-CON-P1-3370 | Backfilling over HDPE Telecom Pipes | 2027-02-10 → 2027-02-17 (+7d) | 2027-03-07 → 2027-03-18 (+11d) | -75d → -81d |
| 7 | **Pulling Cable** | 2027-03-08 → 2027-03-20 (+12d) | 2027-04-05 → 2027-04-12 (+7d) |  |
| SDR-ST-CON-P1-4160 | Pulling Cable | 2027-03-08 → 2027-03-20 (+12d) | 2027-04-05 → 2027-04-12 (+7d) | -75d → -81d |
| 4 | **Manholes** |  | 2027-01-16 → 2027-01-23 (+7d) |  |
| 4 | **Testting** | 2026-11-29 → 2026-12-06 (+7d) | 2026-12-22 → 2026-12-29 (+7d) |  |
| SDR-ST-CON-P1-4280 | Telecom Manhole finishing works | 2026-11-29 → 2026-12-06 (+7d) | 2026-12-22 → 2026-12-29 (+7d) | 20d → 14d |
| 5 | **Backfilling** | 2026-12-23 → 2026-12-30 (+7d) | 2027-01-16 → 2027-01-23 (+7d) |  |
| SDR-ST-CON-P1-4820 | Backfilling over Telecom Manhole | 2026-12-23 → 2026-12-30 (+7d) | 2027-01-16 → 2027-01-23 (+7d) | 20d → 14d |
| 2 | **ROAD-01 From 900 to 1239 m (11) (2)X32 mm MH-1** |  | 2027-04-24 → 2027-05-01 (+7d) |  |
| 3 | **Ducts** |  | 2027-04-05 → 2027-04-12 (+7d) |  |
| 2 | **Excavation** |  | 2027-01-16 → 2027-01-23 (+7d) |  |
| SDR-ST-CON-P1-1390 | Excavation for telecom trench Section 1 |  | 2026-12-22 → 2026-12-29 (+7d) | -59d → -65d |
| SDR-ST-CON-P1-2070 | Excavation for telecom trench Section 2 |  | 2027-01-16 → 2027-01-23 (+7d) | -54d → -60d |
| 5 | **Pipe laying** | 2027-01-17 → 2027-01-24 (+7d) | 2027-02-09 → 2027-02-16 (+7d) |  |
| SDR-ST-CON-P1-2780 | HDPE Pipes for Telecom Installation | 2027-01-17 → 2027-01-24 (+7d) | 2027-02-09 → 2027-02-16 (+7d) | -54d → -60d |
| 6 | **Backfilling** | 2027-02-10 → 2027-02-17 (+7d) | 2027-03-07 → 2027-03-18 (+11d) |  |
| SDR-ST-CON-P1-3580 | Backfilling over HDPE Telecom Pipes | 2027-02-10 → 2027-02-17 (+7d) | 2027-03-07 → 2027-03-18 (+11d) | -54d → -60d |
| 7 | **Pulling Cable** | 2027-03-08 → 2027-03-20 (+12d) | 2027-04-05 → 2027-04-12 (+7d) |  |
| SDR-ST-CON-P1-4170 | Pulling Cable | 2027-03-08 → 2027-03-20 (+12d) | 2027-04-05 → 2027-04-12 (+7d) | -54d → -60d |
| 4 | **Manholes** | 2026-11-29 → 2026-12-06 (+7d) | 2027-04-24 → 2027-05-01 (+7d) |  |
| 1 | **Excavation** | 2026-11-29 → 2026-12-06 (+7d) | 2027-01-16 → 2027-01-23 (+7d) |  |
| SDR-ST-CON-P1-1380 | Excavation for Telecom Manhole Section 1 | 2026-11-29 → 2026-12-06 (+7d) | 2026-12-22 → 2026-12-29 (+7d) | -59d → -65d |
| SDR-ST-CON-P1-2080 | Excavation for Telecom Manhole Section 2 | 2026-12-23 → 2026-12-30 (+7d) | 2027-01-16 → 2027-01-23 (+7d) | -59d → -65d |
| 2 | **Bedding Work** | 2027-01-17 → 2027-01-24 (+7d) | 2027-02-07 → 2027-02-14 (+7d) |  |
| SDR-ST-CON-P1-2790 | Sand bedding for Telecom Manhole | 2027-01-17 → 2027-01-24 (+7d) | 2027-02-07 → 2027-02-14 (+7d) | -59d → -65d |
| 3 | **Install Manholes** | 2027-02-08 → 2027-02-15 (+7d) | 2027-03-04 → 2027-03-16 (+12d) |  |
| SDR-ST-CON-P1-3590 | Installation of Telecom Manhole | 2027-02-08 → 2027-02-15 (+7d) | 2027-03-04 → 2027-03-16 (+12d) | -59d → -65d |
| 4 | **Testting** | 2027-03-06 → 2027-03-17 (+11d) | 2027-04-03 → 2027-04-10 (+7d) |  |
| SDR-ST-CON-P1-4500 | Telecom Manhole finishing works | 2027-03-06 → 2027-03-17 (+11d) | 2027-04-03 → 2027-04-10 (+7d) | -59d → -65d |
| 5 | **Backfilling** | 2027-04-04 → 2027-04-11 (+7d) | 2027-04-24 → 2027-05-01 (+7d) |  |
| SDR-ST-CON-P1-5000 | Backfilling over Telecom Manhole | 2027-04-04 → 2027-04-11 (+7d) | 2027-04-24 → 2027-05-01 (+7d) | -59d → -65d |
| 13 | **LOW VOLTAGE** |  | 2027-06-16 → 2027-06-23 (+7d) |  |
| 1 | **ROAD - 01** |  | 2027-05-12 → 2027-05-25 (+13d) |  |
| 1 | **ROAD-01 From 470 to 1125 m (6)** |  | 2027-05-12 → 2027-05-25 (+13d) |  |
| 6 | **Excavation** |  | 2027-01-20 → 2027-01-27 (+7d) |  |
| SDR-ST-CON-P1-1670 | Excavation Works Part 1 |  | 2026-12-27 → 2027-01-03 (+7d) | -15d → -21d |
| SDR-ST-CON-P1-6230 | Excavation Works Part 2 | 2026-12-28 → 2027-01-04 (+7d) | 2027-01-20 → 2027-01-27 (+7d) | -15d → -21d |

| ID | Task | Start | Finish | Total float |
| --- | --- | --- | --- | --- |
| 7 | **Pipe laying** | 2027-01-21 → 2027-01-28 (+7d) | 2027-02-13 → 2027-02-20 (+7d) |  |
| SDR-ST-CON-P1-2330 | Pipe Laying | 2027-01-21 → 2027-01-28 (+7d) | 2027-02-13 → 2027-02-20 (+7d) | -15d → -21d |
| 8 | **Backfilling** | 2027-02-14 → 2027-02-21 (+7d) | 2027-03-15 → 2027-03-22 (+7d) |  |
| SDR-ST-CON-P1-2990 | Backfilling Works | 2027-02-14 → 2027-02-21 (+7d) | 2027-03-15 → 2027-03-22 (+7d) | 6d → 0d |
| 9 | **Pulling Cable** | 2027-04-19 → 2027-04-26 (+7d) | 2027-05-12 → 2027-05-25 (+13d) |  |
| SDR-ST-CON-P1-3880 | Pulling Cable | 2027-04-19 → 2027-04-26 (+7d) | 2027-05-12 → 2027-05-25 (+13d) | -23d → -29d |
| 2 | **ROAD - 02** |  | 2027-06-16 → 2027-06-23 (+7d) |  |
| 1 | **ROAD-01 From 400 to 900 m (10)** |  | 2027-04-25 → 2027-05-02 (+7d) |  |
| 6 | **Excavation** |  | 2027-01-26 → 2027-02-02 (+7d) |  |
| SDR-ST-CON-P1-1740 | Excavation Works Part 1 |  | 2027-01-02 → 2027-01-09 (+7d) | -8d → -14d |
| SDR-ST-CON-P1-6240 | Excavation Works Part 2 | 2027-01-03 → 2027-01-10 (+7d) | 2027-01-26 → 2027-02-02 (+7d) | -8d → -14d |
| 7 | **Pipe laying** | 2027-01-27 → 2027-02-03 (+7d) | 2027-02-18 → 2027-02-27 (+9d) |  |
| SDR-ST-CON-P1-2440 | Pipe Laying | 2027-01-27 → 2027-02-03 (+7d) | 2027-02-18 → 2027-02-27 (+9d) | -8d → -14d |
| 8 | **Backfilling** | 2027-02-20 → 2027-02-28 (+8d) | 2027-03-21 → 2027-03-28 (+7d) |  |
| SDR-ST-CON-P1-3170 | Backfilling Works | 2027-02-20 → 2027-02-28 (+8d) | 2027-03-21 → 2027-03-28 (+7d) | -8d → -14d |
| 9 | **Pulling Cable** | 2027-04-01 → 2027-04-08 (+7d) | 2027-04-25 → 2027-05-02 (+7d) |  |
| SDR-ST-CON-P1-4040 | Pulling Cable | 2027-04-01 → 2027-04-08 (+7d) | 2027-04-25 → 2027-05-02 (+7d) | -8d → -14d |
| 4 | **ROAD-01 From 900 to 1239 m (11)** |  | 2027-06-16 → 2027-06-23 (+7d) |  |
| 6 | **Excavation** |  | 2027-01-26 → 2027-02-02 (+7d) |  |
| SDR-ST-CON-P1-1750 | Excavation Works Part 1 |  | 2027-01-02 → 2027-01-09 (+7d) | -2d → -8d |
| SDR-ST-CON-P1-6250 | Excavation Works Part 2 | 2027-01-03 → 2027-01-10 (+7d) | 2027-01-26 → 2027-02-02 (+7d) | -2d → -8d |
| 7 | **Pipe laying** | 2027-01-27 → 2027-02-03 (+7d) | 2027-02-18 → 2027-02-27 (+9d) |  |
| SDR-ST-CON-P1-2450 | Pipe Laying | 2027-01-27 → 2027-02-03 (+7d) | 2027-02-18 → 2027-02-27 (+9d) | -2d → -8d |
| 8 | **Backfilling** | 2027-02-20 → 2027-02-28 (+8d) | 2027-03-21 → 2027-03-28 (+7d) |  |
| SDR-ST-CON-P1-3180 | Backfilling Works | 2027-02-20 → 2027-02-28 (+8d) | 2027-03-21 → 2027-03-28 (+7d) | -2d → -8d |
| 9 | **Pulling Cable** | 2027-05-24 → 2027-05-31 (+7d) | 2027-06-16 → 2027-06-23 (+7d) |  |
| SDR-ST-CON-P1-4070 | Pulling Cable | 2027-05-24 → 2027-05-31 (+7d) | 2027-06-16 → 2027-06-23 (+7d) | -40d → -46d |
| 10 | **PORTABLE WATER** |  | 2027-05-06 → 2027-05-13 (+7d) |  |
| 2 | **ROAD - 01** |  | 2027-05-06 → 2027-05-13 (+7d) |  |
| 2 | **ROAD-01 From 0 to 470 m (3)** |  | 2027-05-06 → 2027-05-13 (+7d) |  |
| 3 | **Valve Chambers & Valves & Fire Hydrant** | 2026-11-29 → 2026-12-06 (+7d) | 2027-05-06 → 2027-05-13 (+7d) |  |
| 3 | **Excavation** | 2026-11-29 → 2026-12-06 (+7d) | 2027-01-23 → 2027-01-30 (+7d) |  |
| SDR-ST-CON-P1-1490 | Excavation for Valve Chambers Section 1 | 2026-11-29 → 2026-12-06 (+7d) | 2026-12-22 → 2026-12-29 (+7d) | -41d → -47d |
| SDR-ST-CON-P1-2150 | Excavation for Valve Chambers Section 2 | 2026-12-30 → 2027-01-06 (+7d) | 2027-01-23 → 2027-01-30 (+7d) | -47d → -53d |
| 1 | **bedding Works** | 2027-01-24 → 2027-01-31 (+7d) | 2027-02-16 → 2027-02-24 (+8d) |  |
| SDR-ST-CON-P1-2850 | Sand bedding for Valve Chambers | 2027-01-24 → 2027-01-31 (+7d) | 2027-02-16 → 2027-02-24 (+8d) | -47d → -53d |
| 4 | **Install Chambers & Valves & Fire Hydrant** | 2027-02-17 → 2027-02-25 (+8d) | 2027-03-18 → 2027-03-25 (+7d) |  |
| SDR-ST-CON-P1-3560 | Install Chambers & Valves | 2027-02-17 → 2027-02-25 (+8d) | 2027-03-18 → 2027-03-25 (+7d) | -47d → -53d |
| 2 | **Testing** | 2027-03-20 → 2027-03-27 (+7d) | 2027-04-12 → 2027-04-19 (+7d) |  |
| SDR-ST-CON-P1-4470 | Testing for Chambers & Valves | 2027-03-20 → 2027-03-27 (+7d) | 2027-04-12 → 2027-04-19 (+7d) | -47d → -53d |
| 6 | **Backfilling** | 2027-04-13 → 2027-04-20 (+7d) | 2027-05-06 → 2027-05-13 (+7d) |  |
| SDR-ST-CON-P1-5030 | Backfilling for Chambers & Valves | 2027-04-13 → 2027-04-20 (+7d) | 2027-05-06 → 2027-05-13 (+7d) | -47d → -53d |
| 1 | **ROAD-01 From 470 to 1125 m (6)** |  | 2027-04-29 → 2027-05-06 (+7d) |  |
| 3 | **Valve Chambers & Valves & Fire Hydrant** | 2026-11-29 → 2026-12-06 (+7d) | 2027-04-29 → 2027-05-06 (+7d) |  |
| 3 | **Excavation** | 2026-11-29 → 2026-12-06 (+7d) | 2027-01-16 → 2027-01-23 (+7d) |  |
| SDR-ST-CON-P1-1420 | Excavation for Valve Chambers Section 1 | 2026-11-29 → 2026-12-06 (+7d) | 2026-12-22 → 2026-12-29 (+7d) | -36d → -42d |
| SDR-ST-CON-P1-2100 | Excavation for Valve Chambers Section 2 | 2026-12-23 → 2026-12-30 (+7d) | 2027-01-16 → 2027-01-23 (+7d) | -36d → -42d |
| 1 | **bedding Works** | 2027-01-17 → 2027-01-24 (+7d) | 2027-02-09 → 2027-02-16 (+7d) |  |
| SDR-ST-CON-P1-2820 | Sand bedding for Valve Chambers | 2027-01-17 → 2027-01-24 (+7d) | 2027-02-09 → 2027-02-16 (+7d) | -36d → -42d |
| 4 | **Install Chambers & Valves & Fire Hydrant** | 2027-02-10 → 2027-02-17 (+7d) | 2027-03-07 → 2027-03-18 (+11d) |  |
| SDR-ST-CON-P1-3660 | Install Chambers & Valves | 2027-02-10 → 2027-02-17 (+7d) | 2027-03-07 → 2027-03-18 (+11d) | -36d → -42d |
| 2 | **Testing** | 2027-03-08 → 2027-03-20 (+12d) | 2027-04-05 → 2027-04-12 (+7d) |  |
| SDR-ST-CON-P1-4550 | Testing for Chambers & Valves | 2027-03-08 → 2027-03-20 (+12d) | 2027-04-05 → 2027-04-12 (+7d) | -36d → -42d |
| 6 | **Backfilling** | 2027-04-06 → 2027-04-13 (+7d) | 2027-04-29 → 2027-05-06 (+7d) |  |
| SDR-ST-CON-P1-5100 | Backfilling for Chambers & Valves | 2027-04-06 → 2027-04-13 (+7d) | 2027-04-29 → 2027-05-06 (+7d) | -36d → -42d |
| 3 | **ROAD-01 From 1125 to 1765 m (7)** |  | 2027-04-29 → 2027-05-06 (+7d) |  |
| 3 | **Valve Chambers & Valves & Fire Hydrant** | 2026-11-29 → 2026-12-06 (+7d) | 2027-04-29 → 2027-05-06 (+7d) |  |
| 3 | **Excavation** | 2026-11-29 → 2026-12-06 (+7d) | 2027-01-16 → 2027-01-23 (+7d) |  |
| SDR-ST-CON-P1-1640 | Excavation for Valve Chambers Section 1 | 2026-11-29 → 2026-12-06 (+7d) | 2026-12-22 → 2026-12-29 (+7d) | -54d → -60d |
| SDR-ST-CON-P1-2230 | Excavation for Valve Chambers Section 2 | 2026-12-23 → 2026-12-30 (+7d) | 2027-01-16 → 2027-01-23 (+7d) | -54d → -60d |
| 1 | **bedding Works** | 2027-01-17 → 2027-01-24 (+7d) | 2027-02-09 → 2027-02-16 (+7d) |  |
| SDR-ST-CON-P1-2900 | Sand bedding for Valve Chambers | 2027-01-17 → 2027-01-24 (+7d) | 2027-02-09 → 2027-02-16 (+7d) | -54d → -60d |
| 4 | **Install Chambers & Valves & Fire Hydrant** | 2027-02-10 → 2027-02-17 (+7d) | 2027-03-07 → 2027-03-18 (+11d) |  |
| SDR-ST-CON-P1-3640 | Install Chambers & Valves | 2027-02-10 → 2027-02-17 (+7d) | 2027-03-07 → 2027-03-18 (+11d) | -54d → -60d |
| 2 | **Testing** | 2027-03-08 → 2027-03-20 (+12d) | 2027-04-05 → 2027-04-12 (+7d) |  |
| SDR-ST-CON-P1-4510 | Testing for Chambers & Valves | 2027-03-08 → 2027-03-20 (+12d) | 2027-04-05 → 2027-04-12 (+7d) | -47d → -53d |
| 6 | **Backfilling** | 2027-04-06 → 2027-04-13 (+7d) | 2027-04-29 → 2027-05-06 (+7d) |  |
| SDR-ST-CON-P1-5070 | Backfilling for Chambers & Valves | 2027-04-06 → 2027-04-13 (+7d) | 2027-04-29 → 2027-05-06 (+7d) | -47d → -53d |
| 3 | **ROAD - 02** |  | 2027-04-25 → 2027-05-02 (+7d) |  |
| 3 | **ROAD-01 From 0 to 400 m (9)** |  | 2027-04-25 → 2027-05-02 (+7d) |  |

| ID | Task | Start | Finish | Complete | Total float |
| --- | --- | --- | --- | --- | --- |
| 7 | **Pipes Work** |  | 2027-02-24 → 2026-11-12 (-104d) |  |  |
| 5 | **Testing** |  | 2026-12-10 → 2026-11-11 (-29d) |  |  |
| SDR-ST-CON-P1-4340 | Testing of PW HDPE Pipe 315 mm. |  | 2026-12-10 → 2026-11-11 A (-29d) | 50% → 100% | 45d → none |
| 9 | **Backfilling** |  | 2027-02-24 → 2026-11-12 (-104d) |  |  |
| SDR-ST-CON-P1-4910 | Backfilling of PW HDPE Pipe 315 mm. |  | 2027-02-24 → 2026-11-12 A (-104d) | 95% → 100% | 15d → none |
| 3 | **Valve Chambers & Valves & Fire Hydrant** | 2026-11-29 → 2026-12-06 (+7d) | 2027-04-25 → 2027-05-02 (+7d) |  |  |
| 3 | **Excavation** | 2026-11-29 → 2026-12-06 (+7d) | 2027-01-13 → 2027-01-20 (+7d) |  |  |
| SDR-ST-CON-P1-1940 | Excavation for Valve Chambers Section 1 | 2026-11-29 → 2026-12-06 (+7d) | 2026-12-21 → 2026-12-28 (+7d) |  | -56d → -62d |
| SDR-ST-CON-P1-2630 | Excavation for Valve Chambers Section 2 | 2026-12-22 → 2026-12-29 (+7d) | 2027-01-13 → 2027-01-20 (+7d) |  | -56d → -62d |
| 1 | **bedding Works** | 2027-01-14 → 2027-01-21 (+7d) | 2027-02-06 → 2027-02-13 (+7d) |  |  |
| SDR-ST-CON-P1-3400 | Sand bedding for Valve Chambers | 2027-01-14 → 2027-01-21 (+7d) | 2027-02-06 → 2027-02-13 (+7d) |  | -56d → -62d |
| 4 | **Install Chambers & Valves & Fire Hydrant** | 2027-02-07 → 2027-02-14 (+7d) | 2027-03-02 → 2027-03-14 (+12d) |  |  |
| SDR-ST-CON-P1-4330 | Install Chambers & Valves | 2027-02-07 → 2027-02-14 (+7d) | 2027-03-02 → 2027-03-14 (+12d) |  | -56d → -62d |
| 2 | **Testing** | 2027-03-03 → 2027-03-15 (+12d) | 2027-03-23 → 2027-03-30 (+7d) |  |  |
| SDR-ST-CON-P1-5060 | Testing for Chambers & Valves | 2027-03-03 → 2027-03-15 (+12d) | 2027-03-23 → 2027-03-30 (+7d) |  | -25d → -31d |
| 6 | **Backfilling** | 2027-04-01 → 2027-04-08 (+7d) | 2027-04-25 → 2027-05-02 (+7d) |  |  |
| SDR-ST-CON-P1-5730 | Backfilling for Chambers & Valves | 2027-04-01 → 2027-04-08 (+7d) | 2027-04-25 → 2027-05-02 (+7d) |  | -32d → -38d |
| 2 | **ROAD-01 From 400 to 900 m (10)** |  | 2027-04-25 → 2027-05-02 (+7d) |  |  |
| 7 | **Pipes Work** |  | 2026-12-07 → 2026-11-01 (-36d) |  |  |
| 5 | **Testing** | 2026-10-25 → 2026-10-11 (-14d) | 2026-12-07 → 2026-10-24 (-44d) |  |  |
| SDR-ST-CON-P1-4060 | Testing of PW HDPE Pipe 315 mm. | 2026-10-25 A → 2026-10-11 A (-14d) | 2026-12-07 → 2026-10-24 A (-44d) | 50% → 100% | 26d → none |
| 3 | **Valve Chambers & Valves & Fire Hydrant** | 2026-11-29 → 2026-12-06 (+7d) | 2027-04-25 → 2027-05-02 (+7d) |  |  |
| 3 | **Excavation** | 2026-11-29 → 2026-12-06 (+7d) | 2027-01-21 → 2027-01-28 (+7d) |  |  |
| SDR-ST-CON-P1-1860 | Excavation for Valve Chambers Section 1 | 2026-11-29 → 2026-12-06 (+7d) | 2026-12-21 → 2026-12-28 (+7d) |  | -60d → -66d |
| SDR-ST-CON-P1-2550 | Excavation for Valve Chambers Section 2 | 2026-12-30 → 2027-01-06 (+7d) | 2027-01-21 → 2027-01-28 (+7d) |  | -57d → -63d |
| 1 | **bedding Works** | 2027-01-23 → 2027-01-30 (+7d) | 2027-02-14 → 2027-02-21 (+7d) |  |  |
| SDR-ST-CON-P1-3310 | Sand bedding for Valve Chambers | 2027-01-23 → 2027-01-30 (+7d) | 2027-02-14 → 2027-02-21 (+7d) |  | -57d → -63d |
| 4 | **Install Chambers & Valves & Fire Hydrant** | 2027-02-15 → 2027-02-23 (+8d) | 2027-03-15 → 2027-03-22 (+7d) |  |  |
| SDR-ST-CON-P1-4210 | Install Chambers & Valves | 2027-02-15 → 2027-02-23 (+8d) | 2027-03-15 → 2027-03-22 (+7d) |  | -57d → -63d |
| 2 | **Testing** | 2027-03-16 → 2027-03-23 (+7d) | 2027-03-31 → 2027-04-07 (+7d) |  |  |
| SDR-ST-CON-P1-4990 | Testing for Chambers & Valves | 2027-03-16 → 2027-03-23 (+7d) | 2027-03-31 → 2027-04-07 (+7d) |  | -37d → -43d |
| 6 | **Backfilling** | 2027-04-01 → 2027-04-08 (+7d) | 2027-04-25 → 2027-05-02 (+7d) |  |  |
| SDR-ST-CON-P1-5710 | Backfilling for Chambers & Valves | 2027-04-01 → 2027-04-08 (+7d) | 2027-04-25 → 2027-05-02 (+7d) |  | -31d → -37d |
| 1 | **ROAD-01 From 900 to 1239 m (11)** |  | 2027-04-18 → 2027-04-25 (+7d) |  |  |
| 7 | **Pipes Work** |  | 2027-02-07 → 2026-11-16 (-83d) |  |  |
| 5 | **Testing** | 2026-12-30 → 2026-09-28 (-93d) | 2027-01-14 → 2026-11-14 (-61d) |  |  |
| SDR-ST-CON-P1-4090 | Testing of PW HDPE Pipe 315 mm. | 2026-12-30 → 2026-09-28 A (-93d) | 2027-01-14 → 2026-11-14 A (-61d) | 0% → 100% | -17d → none |
| 9 | **Backfilling** | 2027-01-16 → 2026-09-29 (-109d) | 2027-02-07 → 2026-11-16 (-83d) |  |  |
| SDR-ST-CON-P1-4660 | Backfilling of PW HDPE Pipe 315 mm. | 2027-01-16 → 2026-09-29 A (-109d) | 2027-02-07 → 2026-11-16 A (-83d) | 0% → 100% | -17d → none |
| 3 | **Valve Chambers & Valves & Fire Hydrant** | 2026-11-29 → 2026-12-06 (+7d) | 2027-04-18 → 2027-04-25 (+7d) |  |  |
| 3 | **Excavation** | 2026-11-29 → 2026-12-06 (+7d) | 2027-01-13 → 2027-01-20 (+7d) |  |  |
| SDR-ST-CON-P1-2020 | Excavation for Valve Chambers Section 1 | 2026-11-29 → 2026-12-06 (+7d) | 2026-12-21 → 2026-12-28 (+7d) |  | -64d → -70d |
| SDR-ST-CON-P1-2740 | Excavation for Valve Chambers Section 2 | 2026-12-22 → 2026-12-29 (+7d) | 2027-01-13 → 2027-01-20 (+7d) |  | -64d → -70d |
| 1 | **bedding Works** | 2027-01-14 → 2027-01-21 (+7d) | 2027-02-06 → 2027-02-13 (+7d) |  |  |
| SDR-ST-CON-P1-3550 | Sand bedding for Valve Chambers | 2027-01-14 → 2027-01-21 (+7d) | 2027-02-06 → 2027-02-13 (+7d) |  | -64d → -70d |
| 4 | **Install Chambers & Valves & Fire Hydrant** | 2027-02-08 → 2027-02-15 (+7d) | 2027-03-03 → 2027-03-15 (+12d) |  |  |
| SDR-ST-CON-P1-4460 | Install Chambers & Valves | 2027-02-08 → 2027-02-15 (+7d) | 2027-03-03 → 2027-03-15 (+12d) |  | -64d → -70d |
| 2 | **Testing** | 2027-03-04 → 2027-03-16 (+12d) | 2027-03-24 → 2027-03-31 (+7d) |  |  |
| SDR-ST-CON-P1-5190 | Testing for Chambers & Valves | 2027-03-04 → 2027-03-16 (+12d) | 2027-03-24 → 2027-03-31 (+7d) |  | -37d → -43d |
| 6 | **Backfilling** | 2027-03-25 → 2027-04-01 (+7d) | 2027-04-18 → 2027-04-25 (+7d) |  |  |
| SDR-ST-CON-P1-5750 | Backfilling for Chambers & Valves | 2027-03-25 → 2027-04-01 (+7d) | 2027-04-18 → 2027-04-25 (+7d) |  | -37d → -43d |
| 7 | **SEWARAGE NETWORK** |  | 2027-05-02 → 2026-12-06 (-147d) |  |  |
| 6 | **ROAD - 01** |  | 2027-05-02 → 2026-12-06 (-147d) |  |  |
| 2 | **ROAD-01 From 0 to 470 m (3) 110 mm HDPE** |  | 2027-03-20 → 2026-11-14 (-126d) |  |  |
| 7 | **Pipes Work** |  | 2027-01-14 → 2026-11-14 (-61d) |  |  |
| 3 | **Testing** | 2026-11-29 → 2026-09-26 (-64d) | 2026-12-21 → 2026-11-11 (-40d) |  |  |
| SDR-ST-CON-P1-4590 | Testing of 200 mm GRP Pipe. | 2026-11-29 → 2026-09-26 A (-64d) | 2026-12-21 → 2026-11-11 A (-40d) | 0% → 100% | -4d → none |
| 6 | **Backfilling** | 2026-12-22 → 2026-09-27 (-86d) | 2027-01-14 → 2026-11-14 (-61d) |  |  |
| SDR-ST-CON-P1-5570 | Backfilling of 200 mm GRP Pipe. | 2026-12-22 → 2026-09-27 A (-86d) | 2027-01-14 → 2026-11-14 A (-61d) | 0% → 100% | -4d → none |
| 4 | **Manholes** |  | 2027-03-20 → 2026-11-08 (-132d) |  |  |
| 4 | **Testing** | 2027-01-25 → 2026-10-12 (-105d) | 2027-02-17 → 2026-11-03 (-106d) |  |  |
| SDR-ST-CON-P1-4790 | Testing | 2027-01-25 → 2026-10-12 A (-105d) | 2027-02-17 → 2026-11-03 A (-106d) | 0% → 100% | 0d → none |
| 5 | **Backfilling** | 2027-02-18 → 2026-10-14 (-127d) | 2027-03-20 → 2026-11-08 (-132d) |  |  |
| SDR-ST-CON-P1-5720 | Backfilling | 2027-02-18 → 2026-10-14 A (-127d) | 2027-03-20 → 2026-11-08 A (-132d) | 0% → 100% | 0d → none |
| 1 | **ROAD-01 From 470 to 1125 m (6) 110 mm HDPE** |  | 2027-03-20 → 2026-11-18 (-122d) |  |  |
| 7 | **Pipes Work** |  | 2027-01-14 → 2026-11-10 (-65d) |  |  |
| 3 | **Testing** | 2026-11-29 → 2026-10-19 (-41d) | 2026-12-21 → 2026-11-09 (-42d) |  |  |
| SDR-ST-CON-P1-4120 | Testing of 200 mm GRP Pipe. | 2026-11-29 → 2026-10-19 A (-41d) | 2026-12-21 → 2026-11-09 A (-42d) | 0% → 100% | 2d → none |
| 6 | **Backfilling** | 2026-12-22 → 2026-10-21 (-62d) | 2027-01-14 → 2026-11-10 (-65d) |  |  |
| SDR-ST-CON-P1-4970 | Backfilling of 200 mm GRP Pipe. | 2026-12-22 → 2026-10-21 A (-62d) | 2027-01-14 → 2026-11-10 A (-65d) | 0% → 100% | 2d → none |

| ID | Task | Start | Finish | Complete | Total float |
| --- | --- | --- | --- | --- | --- |
| 4 | **Manholes** |  | 2027-03-20 → 2026-11-18 (-122d) |  |  |
| 4 | **Testing** | 2027-01-25 → 2026-10-09 (-108d) | 2027-02-17 → 2026-11-16 (-93d) |  |  |
| SDR-ST-CON-P1-4710 | Testing | 2027-01-25 → 2026-10-09 A (-108d) | 2027-02-17 → 2026-11-16 A (-93d) | 0% → 100% | -36d → none |
| 5 | **Backfilling** | 2027-02-18 → 2026-10-11 (-130d) | 2027-03-20 → 2026-11-18 (-122d) |  |  |
| SDR-ST-CON-P1-5700 | Backfilling | 2027-02-18 → 2026-10-11 A (-130d) | 2027-03-20 → 2026-11-18 A (-122d) | 0% → 100% | -1d → none |
| 3 | **ROAD-01 From 1125 to 1765 m (7) 110 mm HDPE** |  | 2027-05-02 → 2026-12-06 (-147d) |  |  |
| 7 | **Pipes Work** |  | 2027-02-01 → 2026-12-06 (-57d) |  |  |
| 2 | **Pipes Laying** | 2026-10-24 → 2026-10-22 (-2d) | 2026-12-14 → 2026-12-06 (-8d) |  |  |
| SDR-ST-CON-P1-3420 | 200 mm GRP Pipe Laying | 2026-10-24 A → 2026-10-22 A (-2d) | 2026-12-14 → 2026-12-06 (-8d) | 95% → 100% | -13d → 37d |
| 3 | **Testing** | 2026-12-15 → 2026-10-24 (-52d) | 2027-01-07 → 2026-11-12 (-56d) |  |  |
| SDR-ST-CON-P1-4180 | Testing of 200 mm GRP Pipe. | 2026-12-15 → 2026-10-24 A (-52d) | 2027-01-07 → 2026-11-12 A (-56d) | 0% → 100% | -13d → none |
| 6 | **Backfilling** | 2027-01-09 → 2026-10-25 (-76d) | 2027-02-01 → 2026-11-12 (-81d) |  |  |
| SDR-ST-CON-P1-5020 | Backfilling of 200 mm GRP Pipe. | 2027-01-09 → 2026-10-25 A (-76d) | 2027-02-01 → 2026-11-12 A (-81d) | 0% → 100% | -13d → none |
| 4 | **Manholes** | 2026-11-29 → 2026-10-25 (-35d) | 2027-05-02 → 2026-11-17 (-166d) |  |  |
| 1 | **Excavation** | 2026-11-29 → 2026-10-25 (-35d) | 2027-01-16 → 2026-11-15 (-62d) |  |  |
| SDR-ST-CON-P1-1660 | Excavation for manhole. Section 1 | 2026-11-29 → 2026-10-25 A (-35d) | 2026-12-22 → 2026-11-15 A (-37d) | 0% → 100% | -68d → none |
| SDR-ST-CON-P1-2310 | Excavation for manhole. Section 2 | 2026-12-23 → 2026-10-26 A (-58d) | 2027-01-16 → 2026-11-15 A (-62d) | 0% → 100% | -68d → none |
| 2 | **bedding Works** | 2027-01-17 → 2026-10-26 (-83d) | 2027-02-09 → 2026-11-15 (-86d) |  |  |
| SDR-ST-CON-P1-3030 | Sand bedding for manhole. | 2027-01-17 → 2026-10-26 A (-83d) | 2027-02-09 → 2026-11-15 A (-86d) | 0% → 100% | -68d → none |
| 3 | **Install Manholes** | 2027-02-10 → 2026-10-26 (-107d) | 2027-03-07 → 2026-11-15 (-112d) |  |  |
| SDR-ST-CON-P1-3910 | Manhole Installation | 2027-02-10 → 2026-10-26 A (-107d) | 2027-03-07 → 2026-11-15 A (-112d) | 0% → 100% | -68d → none |
| 4 | **Testing** | 2027-03-08 → 2026-10-30 (-129d) | 2027-04-05 → 2026-11-17 (-139d) |  |  |
| SDR-ST-CON-P1-4830 | Testing | 2027-03-08 → 2026-10-30 A (-129d) | 2027-04-05 → 2026-11-17 A (-139d) | 0% → 100% | -68d → none |
| 5 | **Backfilling** | 2027-04-12 → 2026-10-30 (-164d) | 2027-05-02 → 2026-11-17 (-166d) |  |  |
| SDR-ST-CON-P1-5740 | Backfilling | 2027-04-12 → 2026-10-30 A (-164d) | 2027-05-02 → 2026-11-17 A (-166d) | 0% → 100% | -68d → none |
| 1 | **ROAD - 02** |  | 2027-04-15 → 2026-12-06 (-130d) |  |  |
| 1 | **ROAD-01 From 400 to 900 m (10) 110 mm HDPE** |  | 2027-03-20 → 2026-12-06 (-104d) |  |  |
| 7 | **Pipes Work** |  | 2027-01-21 → 2026-12-06 (-46d) |  |  |
| 5 | **bedding Works** |  | 2026-12-02 → 2026-11-18 (-14d) |  |  |
| SDR-ST-CON-P1-3210 | Sand bedding for GRP Pipe 200mm Diameter |  | 2026-12-02 → 2026-11-18 A (-14d) | 95% → 100% | 9d → none |
| 2 | **Pipes Laying** |  | 2026-12-03 → 2026-12-06 (+3d) |  |  |
| SDR-ST-CON-P1-3800 | 200 mm GRP Pipe Laying |  | 2026-12-03 → 2026-12-06 (+3d) | 99% → 100% | 9d → 50d |
| 3 | **Testing** | 2026-12-05 → 2026-10-26 (-40d) | 2026-12-28 → 2026-11-18 (-40d) |  |  |
| SDR-ST-CON-P1-4580 | Testing of 200 mm GRP Pipe. | 2026-12-05 → 2026-10-26 A (-40d) | 2026-12-28 → 2026-11-18 A (-40d) | 0% → 100% | 9d → none |
| 6 | **Backfilling** | 2026-12-29 → 2026-10-27 (-63d) | 2027-01-21 → 2026-11-19 (-63d) |  |  |
| SDR-ST-CON-P1-5500 | Backfilling of 200 mm GRP Pipe. | 2026-12-29 → 2026-10-27 A (-63d) | 2027-01-21 → 2026-11-19 A (-63d) | 0% → 100% | 9d → none |
| 4 | **Manholes** |  | 2027-03-20 → 2026-10-24 (-147d) |  |  |
| 4 | **Testing** | 2027-01-25 → 2026-10-13 (-104d) | 2027-02-17 → 2026-10-22 (-118d) |  |  |
| SDR-ST-CON-P1-5120 | Testing | 2027-01-25 → 2026-10-13 A (-104d) | 2027-02-17 → 2026-10-22 A (-118d) | 0% → 100% | -35d → none |
| 5 | **Backfilling** | 2027-02-18 → 2026-10-13 (-128d) | 2027-03-20 → 2026-10-24 (-147d) |  |  |
| SDR-ST-CON-P1-5770 | Backfilling | 2027-02-18 → 2026-10-13 A (-128d) | 2027-03-20 → 2026-10-24 A (-147d) | 0% → 100% | -1d → none |
| 3 | **ROAD-01 From 900 to 1239 m (11) 110 mm HDPE** |  | 2027-04-15 → 2026-12-06 (-130d) |  |  |
| 7 | **Pipes Work** |  | 2027-02-27 → 2026-12-06 (-83d) |  |  |
| 5 | **bedding Works** | 2026-11-29 → 2026-09-19 (-71d) | 2026-12-09 → 2026-11-10 (-29d) |  |  |
| SDR-ST-CON-P1-3330 | Sand bedding for GRP Pipe 200mm Diameter | 2026-11-29 → 2026-09-19 A (-71d) | 2026-12-09 → 2026-11-10 A (-29d) | 0% → 100% | -21d → none |
| 2 | **Pipes Laying** | 2026-12-10 → 2026-09-20 (-81d) | 2027-01-03 → 2026-12-06 (-28d) |  |  |
| SDR-ST-CON-P1-3750 | 200 mm GRP Pipe Laying | 2026-12-10 → 2026-09-20 A (-81d) | 2027-01-03 → 2026-12-06 (-28d) | 0% → 100% | -21d → 50d |
| 3 | **Testing** | 2027-01-04 → 2026-09-26 (-100d) | 2027-01-27 → 2026-11-11 (-77d) |  |  |
| SDR-ST-CON-P1-4670 | Testing of 200 mm GRP Pipe. | 2027-01-04 → 2026-09-26 A (-100d) | 2027-01-27 → 2026-11-11 A (-77d) | 0% → 100% | -21d → none |
| 6 | **Backfilling** | 2027-02-02 → 2026-09-30 (-125d) | 2027-02-27 → 2026-11-12 (-107d) |  |  |
| SDR-ST-CON-P1-5670 | Backfilling of 200 mm GRP Pipe. | 2027-02-02 → 2026-09-30 A (-125d) | 2027-02-27 → 2026-11-12 A (-107d) | 0% → 100% | -21d → none |
| 4 | **Manholes** |  | 2027-04-15 → 2026-11-17 (-149d) |  |  |
| 3 | **Install Manholes** | 2027-01-25 → 2026-10-27 (-90d) | 2027-02-17 → 2026-11-15 (-94d) |  |  |
| SDR-ST-CON-P1-4560 | Manhole Installation | 2027-01-25 → 2026-10-27 A (-90d) | 2027-02-17 → 2026-11-15 A (-94d) | 0% → 100% | -35d → none |
| 4 | **Testing** | 2027-02-18 → 2026-10-28 (-113d) | 2027-03-20 → 2026-11-17 (-123d) |  |  |
| SDR-ST-CON-P1-5440 | Testing | 2027-02-18 → 2026-10-28 A (-113d) | 2027-03-20 → 2026-11-17 A (-123d) | 0% → 100% | -35d → none |
| 5 | **Backfilling** | 2027-03-23 → 2026-10-29 (-145d) | 2027-04-15 → 2026-11-17 (-149d) |  |  |
| SDR-ST-CON-P1-5800 | Backfilling | 2027-03-23 → 2026-10-29 A (-145d) | 2027-04-15 → 2026-11-17 A (-149d) | 0% → 100% | -35d → none |
| 11 | **STORM WATER** |  | 2027-06-03 → 2026-10-21 (-225d) |  |  |
| 2 | **ROAD N...** |  | 2027-06-03 → 2026-10-21 (-225d) |  |  |
| 8 | **Pipes Works** |  | 2027-06-03 → 2026-10-21 (-225d) |  |  |
| 6 | **Testing** | 2026-10-25 → 2026-09-16 (-39d) | 2027-01-03 → 2026-10-18 (-77d) |  |  |
| SDR-ST-CON-P1-3830 | Testing ST GRP Pipes | 2026-10-25 A → 2026-09-16 A (-39d) | 2027-01-03 → 2026-10-18 A (-77d) | 95% → 100% | -14d → none |
| 3 | **Backfilling** | 2026-10-26 → 2026-09-17 (-39d) | 2027-06-03 → 2026-10-21 (-225d) |  |  |
| SDR-ST-CON-P1-4760 | Backfilling ST GRP Pipes | 2026-10-26 A → 2026-09-17 A (-39d) | 2027-06-03 → 2026-10-21 A (-225d) | 95% → 100% | -84d → none |
| 3 | **Package-3** | 2026-11-29 → 2026-12-06 (+7d) | 2027-12-12 → 2027-12-19 (+7d) |  |  |
| 1 | **Site Works** | 2026-11-29 → 2026-12-06 (+7d) | 2027-01-07 → 2027-01-14 (+7d) |  |  |
| 1 | **Earthworks** | 2026-11-29 → 2026-12-06 (+7d) | 2027-01-07 → 2027-01-14 (+7d) |  |  |
| 2 | **Excavation** | 2026-11-29 → 2026-12-06 (+7d) | 2026-12-21 → 2026-12-28 (+7d) |  |  |
| SDR-ST-CON-P3-1000 | Excavation in all types of soil to the required depth includes removal of waste material | 2026-11-29 → 2026-12-06 (+7d) | 2026-12-21 → 2026-12-28 (+7d) |  | -119d → -125d |

| ID | Task | Start | Finish | Total float |
| --- | --- | --- | --- | --- |
| 1 | **Fill** | 2026-12-22 → 2026-12-29 (+7d) | 2027-01-07 → 2027-01-14 (+7d) |  |
| SDR-ST-CON-P3-1010 | Backfilling with improved and select fill material from the site or imported | 2026-12-22 → 2026-12-29 (+7d) | 2027-01-07 → 2027-01-14 (+7d) | -119d → -125d |
| 2 | **Platform Works** | 2027-01-09 → 2027-01-16 (+7d) | 2027-11-25 → 2027-12-02 (+7d) |  |
| 1 | **Platform** | 2027-01-09 → 2027-01-16 (+7d) | 2027-07-11 → 2027-07-18 (+7d) |  |
| 1 | **Earthworks** | 2027-01-09 → 2027-01-16 (+7d) | 2027-02-16 → 2027-02-24 (+8d) |  |
| 1 | **Excavation** | 2027-01-09 → 2027-01-16 (+7d) | 2027-01-26 → 2027-02-02 (+7d) |  |
| SDR-ST-CON-P3-1020 | Excavation in all types of soil to the required depth includes removal of waste material | 2027-01-09 → 2027-01-16 (+7d) | 2027-01-26 → 2027-02-02 (+7d) | -119d → -125d |
| 2 | **Fill** | 2027-01-27 → 2027-02-03 (+7d) | 2027-02-16 → 2027-02-24 (+8d) |  |
| SDR-ST-CON-P3-1030 | Backfilling with improved and select fill material from the site or imported Part 1 | 2027-01-27 → 2027-02-03 (+7d) | 2027-02-16 → 2027-02-24 (+8d) | -119d → -125d |
| SDR-ST-CON-P3-1040 | Backfilling with improved and select fill material from the site or imported Part 2 | 2027-01-27 → 2027-02-03 (+7d) | 2027-02-14 → 2027-02-21 (+7d) | -119d → -125d |
| 3 | **Concrete Works** | 2027-02-17 → 2027-02-25 (+8d) | 2027-07-11 → 2027-07-18 (+7d) |  |
| 1 | **Foundations** | 2027-02-17 → 2027-02-25 (+8d) | 2027-04-27 → 2027-05-04 (+7d) |  |
| SDR-ST-CON-P3-1060 | Pouring Concrete under Foundation 100 mm thickness lean | 2027-02-17 → 2027-02-25 (+8d) | 2027-03-01 → 2027-03-08 (+7d) | -119d → -125d |
| SDR-ST-CON-P3-1080 | Provide and lay 2 layers of waterproofing bitumenous membrane 4mm below footings | 2027-03-02 → 2027-03-14 (+12d) | 2027-03-15 → 2027-03-22 (+7d) | -119d → -125d |
| SDR-ST-CON-P3-1100 | Pouring Concrete for protecting waterproofing under the foundation 50 mm thickness | 2027-03-17 → 2027-03-24 (+7d) | 2027-03-28 → 2027-04-04 (+7d) | -119d → -125d |
| 1 | **Footings** | 2027-03-29 → 2027-04-05 (+7d) | 2027-04-27 → 2027-05-04 (+7d) |  |
| SDR-ST-CON-P3-1130 | Pouring concrete for footings Part 1 | 2027-03-29 → 2027-04-05 (+7d) | 2027-04-08 → 2027-04-15 (+7d) | -119d → -125d |
| SDR-ST-CON-P3-1150 | Pouring concrete for footings Part 2 | 2027-04-10 → 2027-04-17 (+7d) | 2027-04-20 → 2027-04-27 (+7d) | -119d → -125d |
| SDR-ST-CON-P3-1180 | Pouring concrete for footings Part 3 | 2027-04-10 → 2027-04-17 (+7d) | 2027-04-27 → 2027-05-04 (+7d) | -119d → -125d |
| 2 | **Substructure** | 2027-04-28 → 2027-05-05 (+7d) | 2027-06-01 → 2027-06-08 (+7d) |  |
| 1 | **Basement** | 2027-05-01 → 2027-05-08 (+7d) | 2027-05-15 → 2027-05-27 (+12d) |  |
| SDR-ST-CON-P3-1200 | Pouring concrete for Basement Part 1 | 2027-05-01 → 2027-05-08 (+7d) | 2027-05-11 → 2027-05-24 (+13d) | -119d → -125d |
| SDR-ST-CON-P3-1220 | Pouring concrete for Basement Part 2 | 2027-05-06 → 2027-05-13 (+7d) | 2027-05-15 → 2027-05-27 (+12d) | -98d → -104d |
| 2 | **Tank** | 2027-04-28 → 2027-05-05 (+7d) | 2027-05-11 → 2027-05-24 (+13d) |  |
| SDR-ST-CON-P3-1210 | Pouring concrete for Tank Part 1 | 2027-04-28 → 2027-05-05 (+7d) | 2027-05-04 → 2027-05-11 (+7d) | -95d → -101d |
| SDR-ST-CON-P3-1230 | Pouring concrete for Tank Part 2 | 2027-05-05 → 2027-05-12 (+7d) | 2027-05-11 → 2027-05-24 (+13d) | -95d → -101d |
| 3 | **Retaining Walls** | 2027-05-12 → 2027-05-25 (+13d) | 2027-06-01 → 2027-06-08 (+7d) |  |
| SDR-ST-CON-P3-1190 | Pouring concrete for Retaining Walls Part 1 | 2027-05-12 → 2027-05-25 (+13d) | 2027-05-25 → 2027-06-01 (+7d) | -119d → -125d |
| SDR-ST-CON-P3-1250 | Pouring concrete for Retaining Walls Part 2 | 2027-05-26 → 2027-06-02 (+7d) | 2027-06-01 → 2027-06-08 (+7d) | -119d → -125d |
| 3 | **Waterproofing Vertical** | 2027-06-02 → 2027-06-09 (+7d) | 2027-06-15 → 2027-06-22 (+7d) |  |
| SDR-ST-CON-P3-1300 | lay 2 layers of waterproofing bitumenous membrane 4mm including protection board for substructure vertical Part 1 | 2027-06-02 → 2027-06-09 (+7d) | 2027-06-06 → 2027-06-13 (+7d) | -119d → -125d |
| SDR-ST-CON-P3-1370 | lay 2 layers of waterproofing bitumenous membrane 4mm including protection board for substructure vertical Part 2 | 2027-06-07 → 2027-06-14 (+7d) | 2027-06-10 → 2027-06-17 (+7d) | -119d → -125d |
| SDR-ST-CON-P3-1430 | lay 2 layers of waterproofing bitumenous membrane 4mm including protection board for substructure vertical Part 3 | 2027-06-12 → 2027-06-19 (+7d) | 2027-06-15 → 2027-06-22 (+7d) | -119d → -125d |
| 4 | **Neck Walls** | 2027-06-17 → 2027-06-24 (+7d) | 2027-06-23 → 2027-06-30 (+7d) |  |
| SDR-ST-CON-P3-1270 | Pouring concrete for Neck Walls Part 1 | 2027-06-17 → 2027-06-24 (+7d) | 2027-06-22 → 2027-06-29 (+7d) | -119d → -125d |
| SDR-ST-CON-P3-1290 | Pouring concrete for Neck Walls Part 2 | 2027-06-19 → 2027-06-26 (+7d) | 2027-06-23 → 2027-06-30 (+7d) | -119d → -125d |
| 5 | **Preparation for Slab** | 2027-06-24 → 2027-07-01 (+7d) | 2027-06-28 → 2027-07-05 (+7d) |  |
| SDR-ST-CON-P3-1320 | Pouring Concrete under slab on grade and gound beams 50 mm thickness lean | 2027-06-24 → 2027-07-01 (+7d) | 2027-06-26 → 2027-07-03 (+7d) | -112d → -118d |
| SDR-ST-CON-P3-1360 | Supply and lay 250 micron thk polyethylene sheet below slab on grade and ground beams | 2027-06-27 → 2027-07-04 (+7d) | 2027-06-28 → 2027-07-05 (+7d) | -112d → -118d |
| 6 | **Slab on Grade** | 2027-06-29 → 2027-07-06 (+7d) | 2027-06-30 → 2027-07-07 (+7d) |  |
| SDR-ST-CON-P3-1380 | Pouring Concrete for Slab on grade | 2027-06-29 → 2027-07-06 (+7d) | 2027-06-30 → 2027-07-07 (+7d) | -112d → -118d |
| 7 | **Finishes** | 2027-07-05 → 2027-07-12 (+7d) | 2027-07-11 → 2027-07-18 (+7d) |  |
| 9 | **Troweled Finish** | 2027-07-05 → 2027-07-12 (+7d) | 2027-07-06 → 2027-07-13 (+7d) |  |
| SDR-ST-CON-P3-1400 | Pouring Concrete for Slab on grade with troweled finish Part 1 | 2027-07-05 → 2027-07-12 (+7d) | 2027-07-06 → 2027-07-13 (+7d) | -112d → -118d |
| SDR-ST-CON-P3-1500 | Pouring Concrete for Slab on grade with troweled finish Part 2 | 2027-07-05 → 2027-07-12 (+7d) | 2027-07-06 → 2027-07-13 (+7d) | -112d → -118d |
| 8 | **Exposed Aggregate Finish** | 2027-07-07 → 2027-07-14 (+7d) | 2027-07-11 → 2027-07-18 (+7d) |  |
| SDR-ST-CON-P3-1420 | Pouring Concrete for Slab on grade with exposed aggregate finish Part 1 | 2027-07-07 → 2027-07-14 (+7d) | 2027-07-08 → 2027-07-15 (+7d) | -112d → -118d |
| SDR-ST-CON-P3-1480 | Pouring Concrete for Slab on grade with exposed aggregate finish Part 2 | 2027-07-07 → 2027-07-14 (+7d) | 2027-07-08 → 2027-07-15 (+7d) | -112d → -118d |
| SDR-ST-CON-P3-1490 | Pouring Concrete for Slab on grade with exposed aggregate finish Part 3 | 2027-07-10 → 2027-07-17 (+7d) | 2027-07-11 → 2027-07-18 (+7d) | -112d → -118d |
| 3 | **Finishes & Architectural Works** | 2027-10-02 → 2027-10-09 (+7d) | 2027-11-25 → 2027-12-02 (+7d) |  |
| SDR-ST-CON-P3-1540 | Installation of metal steel 1200mm railing including all accessories Part 1 | 2027-10-02 → 2027-10-09 (+7d) | 2027-10-18 → 2027-10-25 (+7d) | -113d → -119d |
| SDR-ST-CON-P3-1590 | Installation of metal steel 1200mm railing including all accessories Part 2 | 2027-10-19 → 2027-10-26 (+7d) | 2027-11-04 → 2027-11-11 (+7d) | -113d → -119d |
| SDR-ST-CON-P3-1640 | Installation of metal steel 1200mm railing including all accessories Part3 | 2027-11-06 → 2027-11-13 (+7d) | 2027-11-14 → 2027-11-21 (+7d) | -113d → -119d |
| SDR-ST-CON-P3-1710 | Platform Paving & warning tiles | 2027-11-15 → 2027-11-22 (+7d) | 2027-11-18 → 2027-11-25 (+7d) | -113d → -119d |
| SDR-ST-CON-P3-1760 | Painting Part 1 | 2027-11-20 → 2027-11-27 (+7d) | 2027-11-25 → 2027-12-02 (+7d) | -113d → -119d |
| SDR-ST-CON-P3-1840 | Painting Part 2 | 2027-11-20 → 2027-11-27 (+7d) | 2027-11-25 → 2027-12-02 (+7d) | -108d → -114d |
| 5 | **Platform Electrical Works** | 2027-06-24 → 2027-07-01 (+7d) | 2027-07-19 → 2027-07-26 (+7d) |  |
| SDR-ST-CON-P3-1310 | cable conduits | 2027-06-24 → 2027-07-01 (+7d) | 2027-07-19 → 2027-07-26 (+7d) | -119d → -125d |
| 3 | **Canopy works** | 2027-02-21 → 2027-03-01 (+8d) | 2027-12-01 → 2027-12-08 (+7d) |  |
| 1 | **Civil and Architectural Works** | 2027-02-21 → 2027-03-01 (+8d) | 2027-04-25 → 2027-05-02 (+7d) |  |
| 1 | **Concrete** | 2027-02-21 → 2027-03-01 (+8d) | 2027-04-25 → 2027-05-02 (+7d) |  |
| SDR-ST-CON-P3-1050 | Pouring Concrete under the foundation 100 mm thickness lean | 2027-02-21 → 2027-03-01 (+8d) | 2027-03-08 → 2027-03-20 (+12d) | -111d → -117d |
| SDR-ST-CON-P3-1090 | Pouring Concrete for protecting waterproofing under the foundation 50 mm thickness | 2027-03-20 → 2027-03-27 (+7d) | 2027-04-01 → 2027-04-08 (+7d) | -87d → -93d |
| SDR-ST-CON-P3-1110 | Pouring Concrete for Footings | 2027-04-03 → 2027-04-10 (+7d) | 2027-04-15 → 2027-04-22 (+7d) | -87d → -93d |
| SDR-ST-CON-P3-1140 | Pouring Concrete for Coulumns necks | 2027-04-17 → 2027-04-24 (+7d) | 2027-04-25 → 2027-05-02 (+7d) | -63d → -65d |
| 4 | **Metals** | 2027-03-14 → 2027-03-21 (+7d) | 2027-12-01 → 2027-12-08 (+7d) |  |
| 2 | **Structural Steel Framing** | 2027-04-03 → 2027-04-10 (+7d) | 2027-08-06 → 2027-08-12 (+6d) |  |
| SDR-ST-CON-P3-1120 | Anchor Bolt Verification | 2027-04-03 → 2027-04-10 (+7d) | 2027-04-20 → 2027-04-27 (+7d) | -87d → -93d |
| SDR-ST-CON-P3-1160 | Erection of Columns Part 1 | 2027-04-21 → 2027-04-28 (+7d) | 2027-05-13 → 2027-05-26 (+13d) | -87d → -93d |
| SDR-ST-CON-P3-1240 | Erection of Columns Part 2 | 2027-05-15 → 2027-05-27 (+12d) | 2027-06-01 → 2027-06-08 (+7d) | -87d → -93d |

| ID | Task | Start | Finish | Total float |
| --- | --- | --- | --- | --- |
| SDR-ST-CON-P3-1260 | Erection of Rafters Part 1 | 2027-06-02 → 2027-06-09 (+7d) | 2027-06-20 → 2027-06-27 (+7d) | -87d → -93d |
| SDR-ST-CON-P3-1280 | Erection of Rafters Part 2 | 2027-06-05 → 2027-06-12 (+7d) | 2027-06-22 → 2027-06-29 (+7d) | -87d → -93d |
| SDR-ST-CON-P3-1330 | Installation of Bracing System Part 1 | 2027-06-23 → 2027-06-30 (+7d) | 2027-07-10 → 2027-07-17 (+7d) | -84d → -90d |
| SDR-ST-CON-P3-1340 | Installation of Beams Part 1 | 2027-06-23 → 2027-06-30 (+7d) | 2027-07-04 → 2027-07-11 (+7d) | -87d → -93d |
| SDR-ST-CON-P3-1350 | Installation of Girders Part 1 | 2027-06-24 → 2027-06-30 (+6d) | 2027-07-17 → 2027-07-22 (+5d) | -84d → -89d |
| SDR-ST-CON-P3-1390 | Installation of Beams Part 2 | 2027-07-05 → 2027-07-12 (+7d) | 2027-07-18 → 2027-07-25 (+7d) | -87d → -93d |
| SDR-ST-CON-P3-1410 | Installation of Bracing System Part 2 | 2027-07-11 → 2027-07-18 (+7d) | 2027-07-28 → 2027-08-04 (+7d) | -84d → -90d |
| SDR-ST-CON-P3-1440 | Installation of Girders Part 2 | 2027-07-18 → 2027-07-24 (+6d) | 2027-07-24 → 2027-07-29 (+5d) | -84d → -89d |
| SDR-ST-CON-P3-1460 | Installation of Connections (Bolting) | 2027-07-19 → 2027-07-26 (+7d) | 2027-08-01 → 2027-08-07 (+6d) | -87d → -93d |
| SDR-ST-CON-P3-1450 | Installation of Joists Part 1 | 2027-07-25 → 2027-07-31 (+6d) | 2027-08-06 → 2027-08-11 (+5d) | -80d → -85d |
| SDR-ST-CON-P3-1470 | Installation of Joists Part 2 | 2027-07-29 → 2027-08-05 (+7d) | 2027-08-06 → 2027-08-12 (+6d) | -84d → -90d |
| 3 | **Aluminum Cladding Panels** | 2027-08-26 → 2027-09-02 (+7d) | 2027-12-01 → 2027-12-08 (+7d) |  |
| 1 | **Steel Subframe Installation** | 2027-08-26 → 2027-09-02 (+7d) | 2027-12-01 → 2027-12-08 (+7d) |  |
| SDR-ST-CON-P3-1530 | Survey & Setting Out for Cladding | 2027-08-26 → 2027-09-02 (+7d) | 2027-09-04 → 2027-09-11 (+7d) | -101d → -107d |
| SDR-ST-CON-P3-1560 | Install Steel Subframe Supports Part 1 | 2027-09-09 → 2027-09-16 (+7d) | 2027-09-25 → 2027-10-02 (+7d) | -105d → -111d |
| SDR-ST-CON-P3-1620 | Install Steel Subframe Supports Part 2 | 2027-09-26 → 2027-10-03 (+7d) | 2027-10-16 → 2027-10-23 (+7d) | -105d → -111d |
| SDR-ST-CON-P3-1690 | Install Steel Subframe Supports Part 3 | 2027-10-17 → 2027-10-24 (+7d) | 2027-10-31 → 2027-11-07 (+7d) | -100d → -106d |
| SDR-ST-CON-P3-1720 | Alignment & Leveling of Subframe Part 1 | 2027-10-17 → 2027-10-24 (+7d) | 2027-10-28 → 2027-11-04 (+7d) | -98d → -104d |
| SDR-ST-CON-P3-1770 | Alignment & Leveling of Subframe Part 2 | 2027-11-01 → 2027-11-08 (+7d) | 2027-11-04 → 2027-11-11 (+7d) | -100d → -106d |
| SDR-ST-CON-P3-1830 | Fixing & Tightening of Subframe Connections Part 1 | 2027-11-06 → 2027-11-13 (+7d) | 2027-11-10 → 2027-11-17 (+7d) | -100d → -106d |
| SDR-ST-CON-P3-1880 | Fixing & Tightening of Subframe Connections Part 2 | 2027-11-27 → 2027-12-04 (+7d) | 2027-12-01 → 2027-12-08 (+7d) | -113d → -119d |
| 2 | **Aluminum Cladding Installation** | 2027-09-26 → 2027-10-03 (+7d) | 2027-11-18 → 2027-11-25 (+7d) |  |
| SDR-ST-CON-P3-1610 | Install Aluminum Panels (4mm Thick Part 1 | 2027-09-26 → 2027-10-03 (+7d) | 2027-10-10 → 2027-10-17 (+7d) | -105d → -111d |
| SDR-ST-CON-P3-1660 | Install Aluminum Panels (4mm Thick Part 2 | 2027-10-11 → 2027-10-18 (+7d) | 2027-10-24 → 2027-10-31 (+7d) | -105d → -111d |
| SDR-ST-CON-P3-1700 | Install Aluminum Panels (4mm Thick Part 3 | 2027-10-25 → 2027-11-01 (+7d) | 2027-11-01 → 2027-11-08 (+7d) | -105d → -111d |
| SDR-ST-CON-P3-1730 | Fix Panels with Snap Hooks & Fasteners Part 1 | 2027-11-02 → 2027-11-09 (+7d) | 2027-11-08 → 2027-11-15 (+7d) | -105d → -111d |
| SDR-ST-CON-P3-1750 | Fix Panels with Snap Hooks & Fasteners Part 2 | 2027-11-02 → 2027-11-09 (+7d) | 2027-11-07 → 2027-11-14 (+7d) | -105d → -111d |
| SDR-ST-CON-P3-1810 | Install Drainage System Part 1 | 2027-11-08 → 2027-11-15 (+7d) | 2027-11-11 → 2027-11-18 (+7d) | -105d → -111d |
| SDR-ST-CON-P3-1820 | Install Drainage System Part 2 | 2027-11-08 → 2027-11-15 (+7d) | 2027-11-09 → 2027-11-16 (+7d) | -105d → -111d |
| SDR-ST-CON-P3-1850 | Adjustment & Alignment of Panels Part 1 | 2027-11-10 → 2027-11-17 (+7d) | 2027-11-13 → 2027-11-20 (+7d) | -102d → -108d |
| SDR-ST-CON-P3-1860 | Adjustment & Alignment of Panels Part 2 | 2027-11-10 → 2027-11-17 (+7d) | 2027-11-13 → 2027-11-20 (+7d) | -102d → -108d |
| SDR-ST-CON-P3-1890 | Sealant & Finishing Works | 2027-11-14 → 2027-11-21 (+7d) | 2027-11-18 → 2027-11-25 (+7d) | -102d → -108d |
| 1 | **THERMAL & MOISTURE PROTECTION** | 2027-03-14 → 2027-03-21 (+7d) | 2027-05-31 → 2027-06-07 (+7d) |  |
| 1 | **Bituminous Sheet Waterproofing** | 2027-03-14 → 2027-03-21 (+7d) | 2027-05-31 → 2027-06-07 (+7d) |  |
| SDR-ST-CON-P3-1070 | Provide and lay 2 layers of waterproofing bitumenous membrane 4mm below footings | 2027-03-14 → 2027-03-21 (+7d) | 2027-03-18 → 2027-03-25 (+7d) | -111d → -117d |
| SDR-ST-CON-P3-1170 | Provide and lay 2 layers of waterproofing bitumenous membrane 4mm in contact with soil | 2027-05-26 → 2027-06-02 (+7d) | 2027-05-31 → 2027-06-07 (+7d) | -84d → -86d |
| 4 | **Electrical Works** | 2027-07-25 → 2027-07-31 (+6d) | 2027-12-12 → 2027-12-19 (+7d) |  |
| 1 | **Low-Voltage Electrical Power Conductors and Cables** | 2027-07-25 → 2027-07-31 (+6d) | 2027-08-15 → 2027-08-21 (+6d) |  |
| SDR-ST-CON-P3-1510 | Installtion and test low voltage cable including pulling of cable 600/1000V . | 2027-07-25 → 2027-07-31 (+6d) | 2027-08-15 → 2027-08-21 (+6d) | -84d → -89d |
| 2 | **Ondoor Lighting Points** | 2027-08-16 → 2027-08-22 (+6d) | 2027-09-08 → 2027-09-14 (+6d) |  |
| SDR-ST-CON-P3-1580 | Install, test, and commission all necessary components for outdoor lighting points. | 2027-08-16 → 2027-08-22 (+6d) | 2027-09-08 → 2027-09-14 (+6d) | -84d → -89d |
| 3 | **Outdoor Lighting Fixtures** | 2027-09-11 → 2027-09-16 (+5d) | 2027-11-03 → 2027-11-10 (+7d) |  |
| SDR-ST-CON-P3-1630 | Install of L10 recessed in ceiling light, lenght1535mmxwidth75mmxhieght105mm, LED 53.2w Part 1 | 2027-09-11 → 2027-09-16 (+5d) | 2027-10-04 → 2027-10-10 (+6d) | -84d → -89d |
| SDR-ST-CON-P3-1650 | Install of L10 recessed in ceiling light, lenght1535mmxwidth75mmxhieght105mm, LED 53.2w Part 2 | 2027-10-12 → 2027-10-19 (+7d) | 2027-11-03 → 2027-11-10 (+7d) | -111d → -117d |
| 4 | **CCTV** | 2027-07-25 → 2027-07-31 (+6d) | 2027-12-12 → 2027-12-19 (+7d) |  |
| SDR-ST-CON-P3-1520 | Install of Handhole (600x600x730mm) | 2027-07-25 → 2027-07-31 (+6d) | 2027-07-29 → 2027-08-04 (+6d) | -84d → -89d |
| SDR-ST-CON-P3-1550 | Install of 2 core 9/125um indoor -outdoor central tube | 2027-07-31 → 2027-08-05 (+5d) | 2027-08-07 → 2027-08-12 (+5d) | -84d → -89d |
| SDR-ST-CON-P3-1570 | Install of 4 Port (2 duplex) LC/UPC OS2 fiber patch panel | 2027-08-08 → 2027-08-14 (+6d) | 2027-08-21 → 2027-08-26 (+5d) | -84d → -89d |
| SDR-ST-CON-P3-1600 | Install of Pole mounted Filed Equipment cabinet (FEC) , with fan and ventilation | 2027-10-02 → 2027-10-09 (+7d) | 2027-10-23 → 2027-10-30 (+7d) | -119d → -125d |
| SDR-ST-CON-P3-1670 | Install of 8 Port Industrial PoE Switch 10/1000BaseT | 2027-10-24 → 2027-10-31 (+7d) | 2027-11-14 → 2027-11-21 (+7d) | -119d → -125d |
| SDR-ST-CON-P3-1680 | Install of 1.2KVA Industrial type UPS located at FEC | 2027-10-24 → 2027-10-31 (+7d) | 2027-11-14 → 2027-11-21 (+7d) | -119d → -125d |
| SDR-ST-CON-P3-1740 | Install of UTP CAT6 Patch Cord , connect the industrial switch with the cameras | 2027-11-15 → 2027-11-22 (+7d) | 2027-11-25 → 2027-12-02 (+7d) | -119d → -125d |
| SDR-ST-CON-P3-1780 | Install of 5MP IP PoE Bullet Camera, outdoor mounted on canopy ceiling Part 1. | 2027-11-27 → 2027-12-04 (+7d) | 2027-12-09 → 2027-12-16 (+7d) | -119d → -125d |
| SDR-ST-CON-P3-1790 | Install of 5MP IP PoE Bullet Camera, outdoor mounted on canopy ceiling Part 2. | 2027-11-27 → 2027-12-04 (+7d) | 2027-12-12 → 2027-12-19 (+7d) | -117d → -123d |
| 5 | **Voice Evacuation System** | 2027-11-27 → 2027-12-04 (+7d) | 2027-12-05 → 2027-12-12 (+7d) |  |
| SDR-ST-CON-P3-1800 | install, test of Suspended ceiling outdoor projector speaker, bi-directional, 20w Part 1 | 2027-11-27 → 2027-12-04 (+7d) | 2027-12-05 → 2027-12-12 (+7d) | -119d → -125d |
| SDR-ST-CON-P3-1870 | install, test of Suspended ceiling outdoor projector speaker, bi-directional, 20w Part 2 | 2027-11-27 → 2027-12-04 (+7d) | 2027-12-05 → 2027-12-12 (+7d) | -119d → -125d |
| 6 | **Testing and Comissioning** | 2027-04-22 → 2027-03-21 (-32d) | 2027-12-20 → 2027-12-27 (+7d) |  |
| 1 | **Civil Works** | 2027-09-25 → 2027-10-02 (+7d) | 2027-10-11 → 2027-10-18 (+7d) |  |
| SDR-ST-TC-1000 | Testing & Commissioning of road works | 2027-09-25 → 2027-10-02 (+7d) | 2027-10-11 → 2027-10-18 (+7d) | -111d → -117d |
| 2 | **Storm Water Drainage Network** | 2027-06-06 → 2027-06-08 (+2d) | 2027-06-23 → 2027-06-26 (+3d) |  |
| SDR-ST-TC-1010 | Testing & Commissioning of network work | 2027-06-06 → 2027-06-08 (+2d) | 2027-06-23 → 2027-06-26 (+3d) | -84d → -86d |
| 3 | **Sewerage Network** | 2027-04-22 → 2027-03-21 (-32d) | 2027-05-22 → 2027-04-13 (-39d) |  |
| SDR-ST-TC-1030 | Testing & Commissioning of Sewage Network | 2027-04-22 → 2027-03-21 (-32d) | 2027-05-22 → 2027-04-13 (-39d) | -29d → -1d |
| 5 | **Portable Water** | 2027-05-09 → 2027-05-22 (+13d) | 2027-06-06 → 2027-06-13 (+7d) |  |
| SDR-ST-TC-1020 | Testing & Commissioning of Potable Network | 2027-05-09 → 2027-05-22 (+13d) | 2027-06-06 → 2027-06-13 (+7d) | -43d → -49d |
| 6 | **Electrical Works** | 2027-11-25 → 2027-12-02 (+7d) | 2027-12-07 → 2027-12-14 (+7d) |  |
| SDR-ST-TC-1050 | Testing & Commissioning of Electrical Network | 2027-11-25 → 2027-12-02 (+7d) | 2027-12-07 → 2027-12-14 (+7d) | -106d → -112d |
| 8 | **CCTV Works** | 2027-12-13 → 2027-12-20 (+7d) | 2027-12-20 → 2027-12-27 (+7d) |  |
| SDR-ST-TC-1040 | Testing & Commissioning of medium voltage works | 2027-12-13 → 2027-12-20 (+7d) | 2027-12-20 → 2027-12-27 (+7d) | -117d → -123d |

| ID | Task | Start | Finish | Total float |
| --- | --- | --- | --- | --- |
| 7 | **Close Out** | 2027-05-01 → 2027-05-08 (+7d) | 2027-12-22 → 2027-12-29 (+7d) |  |
| 1 | **As Built Drawings** | 2027-05-01 → 2027-05-08 (+7d) | 2027-12-11 → 2027-12-18 (+7d) |  |
| 1 | **Civil** | 2027-09-23 → 2027-09-30 (+7d) | 2027-10-06 → 2027-10-13 (+7d) |  |
| SDR-ST-CO-1000 | Civil As-Built Drawing Submission | 2027-09-23 → 2027-09-30 (+7d) | 2027-09-30 → 2027-10-07 (+7d) | -110d → -116d |
| SDR-ST-CO-1010 | Civil As-Built Drawing Approvals | 2027-10-02 → 2027-10-09 (+7d) | 2027-10-06 → 2027-10-13 (+7d) | -110d → -116d |
| 2 | **Mechanical** | 2027-05-01 → 2027-05-08 (+7d) | 2027-06-10 → 2027-06-17 (+7d) |  |
| SDR-ST-CO-1020 | Mechanical As-Built Drawing Submission | 2027-05-01 → 2027-05-08 (+7d) | 2027-05-09 → 2027-05-22 (+13d) | -47d → -53d |
| SDR-ST-CO-1030 | Mechanical As-Built Drawing Approvals | 2027-06-02 → 2027-06-09 (+7d) | 2027-06-10 → 2027-06-17 (+7d) | -47d → -53d |
| 3 | **Electrical** | 2027-11-18 → 2027-11-25 (+7d) | 2027-12-11 → 2027-12-18 (+7d) |  |
| SDR-ST-CO-1040 | Electrical As-Built Drawing Submission | 2027-11-18 → 2027-11-25 (+7d) | 2027-11-29 → 2027-12-06 (+7d) | -110d → -116d |
| SDR-ST-CO-1100 | Electrical As-Built Drawing Approvals | 2027-12-01 → 2027-12-08 (+7d) | 2027-12-11 → 2027-12-18 (+7d) | -110d → -116d |
| 2 | **Training and Manuals** | 2027-11-27 → 2027-12-04 (+7d) | 2027-12-22 → 2027-12-29 (+7d) |  |
| SDR-ST-CO-1050 | Training and Manuals | 2027-11-27 → 2027-12-04 (+7d) | 2027-12-22 → 2027-12-29 (+7d) | -119d → -125d |
| 3 | **Demobilize Manpower** | 2027-11-27 → 2027-12-04 (+7d) | 2027-12-19 → 2027-12-26 (+7d) |  |
| SDR-ST-CO-1060 | Manpower Demobilize | 2027-11-27 → 2027-12-04 (+7d) | 2027-12-19 → 2027-12-26 (+7d) | -118d → -124d |
| 4 | **Demobilize Equipment** | 2027-11-27 → 2027-12-04 (+7d) | 2027-12-19 → 2027-12-26 (+7d) |  |
| SDR-ST-CO-1070 | Equipments Demobilize | 2027-11-27 → 2027-12-04 (+7d) | 2027-12-19 → 2027-12-26 (+7d) | -118d → -124d |
| 5 | **Removal of Site Offices and Structures** | 2027-11-27 → 2027-12-04 (+7d) | 2027-12-21 → 2027-12-28 (+7d) |  |
| SDR-ST-CO-1090 | Site Office Removal | 2027-11-27 → 2027-12-04 (+7d) | 2027-12-21 → 2027-12-28 (+7d) | -118d → -124d |
| 6 | **Handover** | 2027-12-08 → 2027-12-15 (+7d) | 2027-12-21 → 2027-12-28 (+7d) |  |
| SDR-ST-CO-1080 | Project Handover | 2027-12-08 → 2027-12-15 (+7d) | 2027-12-21 → 2027-12-28 (+7d) | -118d → -124d |
