# PLAYGROUNDS INITIATIVE - QASSIM, HAIL & TABUK - Recovery

How a schedule from Primavera P6 changed from version to version. A marks actual dates.

## Version 1 (data date 2026-06-24, saved 2026-07-13, file 01.Baseline Schedulel Recovery Schedule.01.xer)

| ID | WBS | Task | Duration | Start | Finish | Predecessors | Complete | Total float |
| --- | --- | --- | --- | --- | --- | --- | --- | --- |
|  | MS | **MILESTONES** |  | 2026-02-17 | 2026-12-16 |  |  |  |
|  | 1 | **GENERAL MILESTONES** |  | 2026-02-17 | 2026-12-16 |  |  |  |
| PG-GN-MS-10 |  | Project Commencement Date | 0d | 2026-02-17 A | 2026-02-17 A |  | 100% |  |
| PG-GN-MS-30 |  | Project Durations(Completed) | 101d | 2026-02-17 A | 2026-06-24 A | PG-GN-MS-10 SS | 100% |  |
| PG-GN-MS-30_R |  | Project Durations(Remaining) | 147.5d | 2026-06-25 | 2026-12-15 | PG-GN-MS-10 SS, PG-GN-MS-30 |  | 1.5d |
| PG-GN-MS-20 |  | Project Completion Date | 0d | 2026-12-16 | 2026-12-16 | PG-IN-MS-10, PG-IN-MS-20, PG-IN-MS-30, PG-IN-MS-40, PG-IN-MS-50, PG-IN-MS-60, PG-GN-MS-30_R |  | 0d |
|  | 2 | **CONTRACUAL MILESTONES** |  | 2026-05-05 | 2026-12-16 |  |  |  |
| PG-IN-MS-20 |  | Completion of Earthworks (Cut and fill) For Site Layout | 0d | 2026-05-05 A | 2026-05-05 A | PG-Q-CON-EX-CF-20, PG-H-CON-EX-CF-20, PG-T-CON-EX-CF-20 | 100% |  |
| PG-IN-MS-10 |  | Site Preparation, Work Plans, Schedule ,Drawings Submittals | 0d | 2026-08-04 | 2026-08-04 | PG-Q-MOB-CAM-40, PG-Q-GEN-10, PG-Q-GEN-20, PG-Q-GEN-30, PG-Q-GEN-40, PG-Q-MOB-CAM-30 FF, PG-Q-MOB-SO-30 FF, PG-Q-PR-LL-LS-MS-10, PG-Q-PR-LL-SP-MS-40, PG-Q-PR-LL-EL-MS-80, PG-Q-PR-LL-IR-MS-20, PG-Q-MOB-SO-50 FF, PG-Q-EN-EL-SD-SB-120 FF, PG-Q-EN-EL-SD-SB-140 FF, PG-Q-EN-AR-SD-SB-130 FF, PG-Q-EN-AR-SD-SB-40 FF, PG-Q-EN-ST-SD-SB-120 FF, PG-Q-EN-ST-SD-SB-100 FF, PG-Q-EN-ST-SD-SB-80 FF, PG-Q-EN-ST-SD-SB-60 FF, PG-Q-EN-ME-SD-SB-40 FF, PG-Q-EN-ME-SD-SB-80 FF, PG-Q-EN-ME-SD-SB-90 FF, PG-Q-EN-EL-SD-SB-10 FF, PG-Q-EN-EL-SD-SB-20 FF, PG-Q-EN-EL-SD-SB-30 FF, PG-Q-EN-EL-SD-SB-40 FF, PG-Q-EN-EL-SD-SB-50 FF, PG-Q-EN-EL-SD-SB-60 FF, PG-Q-EN-EL-SD-SB-80 FF, PG-Q-EN-EL-SD-SB-70 FF, PG-Q-EN-EL-SD-SB-130 FF, PG-Q-PR-LL-LS-MS-20 FF, PG-Q-PR-LL-SP-MS-20 FF, PG-Q-PR-LL-MT-MS-10 FF, PG-Q-PR-LL-MT-MS-20 FF, PG-Q-PR-LL-PB-MS-20 FF, PG-Q-PR-LL-IR-MS-10 FF, PG-Q-PR-LL-EL-MS-10 FF, PG-Q-PR-LL-EL-MS-40 FF, PG-Q-PR-LL-EL-MS-20 FF, PG-Q-PR-LL-EL-MS-30 FF, PG-Q-PR-LL-EL-MS-70 FF, PG-Q-PR-LL-EL-MS-60 FF, PG-Q-EN-ST-SD-SB-40 FF, PG-Q-EN-AR-SD-SB-60 FF, PG-Q-EN-AR-SD-SB-70 FF, PG-Q-EN-AR-SD-SB-90 FF, PG-Q-EN-AR-SD-SB-100 FF, PG-Q-EN-LS-SD-SB-20 FF, PG-Q-EN-LS-SD-SB-30 FF, PG-Q-EN-LS-SD-SB-70 FF, PG-Q-EN-LS-SD-SB-80 FF, PG-H-MOB-CAM-30 FF, PG-H-MOB-CAM-40 FF, PG-H-MOB-SO-30 FF, PG-H-MOB-SO-50 FF, PG-H-GEN-10 FF, PG-H-GEN-20 FF, PG-H-GEN-30 FF, PG-H-GEN-40 FF, PG-H-EN-AR-SD-SB-100 FF, PG-H-EN-AR-SD-SB-40 FF, PG-H-EN-AR-SD-SB-60 FF, PG-H-EN-AR-SD-SB-70 FF, PG-H-EN-AR-SD-SB-90 FF, PG-H-EN-EL-SD-SB-10 FF, PG-H-EN-EL-SD-SB-20 FF, PG-H-EN-EL-SD-SB-30 FF, PG-H-EN-EL-SD-SB-40 FF, PG-H-EN-EL-SD-SB-50 FF, PG-H-EN-EL-SD-SB-60 FF, PG-H-EN-EL-SD-SB-70 FF, PG-H-EN-EL-SD-SB-80 FF, PG-H-EN-LS-SD-SB-20 FF, PG-H-EN-LS-SD-SB-30 FF, PG-H-EN-LS-SD-SB-70 FF, PG-H-EN-LS-SD-SB-80 FF, PG-H-EN-ME-SD-SB-40 FF, PG-H-EN-ME-SD-SB-80 FF, PG-H-EN-ME-SD-SB-90 FF, PG-H-EN-ST-SD-SB-80 FF, PG-H-PR-LL-EL-MS-10_R FF, PG-H-PR-LL-EL-MS-20_R FF, PG-H-PR-LL-EL-MS-30_R FF, PG-H-PR-LL-EL-MS-40_R FF, PG-H-PR-LL-EL-MS-60_R FF, PG-H-PR-LL-EL-MS-70_R FF, PG-H-PR-LL-EL-MS-80_R FF, PG-H-PR-LL-IR-MS-10 FF, PG-H-PR-LL-IR-MS-20 FF, PG-H-PR-LL-LS-MS-10 FF, PG-H-PR-LL-LS-MS-20 FF, PG-H-PR-LL-MT-MS-10 FF, PG-H-PR-LL-MT-MS-20 FF, PG-H-PR-LL-PB-MS-20 FF, PG-H-PR-LL-SP-MS-20 FF, PG-T-EN-AR-SD-SB-100 FF, PG-T-EN-AR-SD-SB-130 FF, PG-T-EN-AR-SD-SB-40 FF, PG-T-EN-AR-SD-SB-60 FF, PG-T-EN-AR-SD-SB-70 FF, PG-T-EN-AR-SD-SB-90 FF, PG-T-EN-EL-SD-SB-10 FF, PG-T-EN-EL-SD-SB-120 FF, PG-T-EN-EL-SD-SB-130 FF, PG-T-EN-EL-SD-SB-140 FF, PG-T-EN-EL-SD-SB-20 FF, PG-T-EN-EL-SD-SB-30 FF, PG-T-EN-EL-SD-SB-40 FF, PG-T-EN-EL-SD-SB-50 FF, PG-T-EN-EL-SD-SB-60 FF, PG-T-EN-EL-SD-SB-70 FF, PG-T-EN-EL-SD-SB-80 FF, PG-T-EN-LS-SD-SB-20 FF, PG-T-EN-LS-SD-SB-30 FF, PG-T-EN-LS-SD-SB-70 FF, PG-T-EN-LS-SD-SB-80 FF, PG-T-EN-ME-SD-SB-40 FF, PG-T-EN-ME-SD-SB-80 FF, PG-T-EN-ME-SD-SB-90 FF, PG-T-EN-ST-SD-SB-100 FF, PG-T-EN-ST-SD-SB-120 FF, PG-T-EN-ST-SD-SB-40 FF, PG-T-EN-ST-SD-SB-60 FF, PG-T-EN-ST-SD-SB-80 FF, PG-T-GEN-10 FF, PG-T-GEN-20 FF, PG-T-GEN-30 FF, PG-T-GEN-40 FF, PG-T-MOB-CAM-30 FF, PG-T-MOB-CAM-40 FF, PG-T-MOB-SO-30 FF, PG-T-MOB-SO-50 FF, PG-T-PR-LL-EL-MS-10_R FF, PG-T-PR-LL-EL-MS-20_R FF, PG-T-PR-LL-EL-MS-30_R FF, PG-T-PR-LL-EL-MS-40_R FF, PG-T-PR-LL-EL-MS-60_R FF, PG-T-PR-LL-EL-MS-70_R FF, PG-T-PR-LL-EL-MS-80_R FF, PG-T-PR-LL-IR-MS-10 FF, PG-T-PR-LL-IR-MS-20 FF, PG-T-PR-LL-LS-MS-10 FF, PG-T-PR-LL-LS-MS-20 FF, PG-T-PR-LL-MT-MS-10 FF, PG-T-PR-LL-MT-MS-20 FF, PG-T-PR-LL-PB-MS-20 FF, PG-T-PR-LL-SP-MS-20 FF, PG-T-PR-LL-SP-MS-40 FF, PG-Q-PR-LL-LS-MS-10 FF, PG-Q-PR-LL-LS-MS-30, PG-Q-PR-LL-SP-MS-50_R, PG-Q-PR-LL-SP-MS-20, PG-Q-PR-LL-SP-MS-10, PG-Q-PR-LL-SP-MS-30, PG-Q-PR-LL-SP-MS-40 FF, PG-Q-PR-LL-CO-MS-10, PG-Q-PR-LL-MT-MS-20, PG-Q-PR-LL-MT-MS-10, PG-Q-PR-LL-PB-MS-10, PG-Q-PR-LL-PB-MS-20, PG-Q-PR-LL-IR-MS-10, PG-Q-PR-LL-IR-MS-20 FF, PG-Q-PR-LL-EL-MS-80 FF, PG-Q-PR-LL-EL-MS-50, PG-Q-PR-LL-EL-MS-40, PG-Q-PR-LL-EL-MS-10, PG-Q-PR-LL-EL-MS-20, PG-Q-PR-LL-EL-MS-70, PG-Q-PR-LL-EL-MS-30, PG-Q-PR-LL-EL-MS-60, PG-Q-PR-SL-LS-MS-10, PG-Q-PR-SL-LS-MS-30, PG-Q-PR-SL-LS-MS-40, PG-Q-PR-SL-LS-MS-20, PG-Q-PR-SL-LS-MS-80, PG-Q-PR-SL-LS-MS-60, PG-Q-PR-SL-LS-MS-70, PG-Q-PR-SL-CO-MS-40, PG-Q-PR-SL-CO-MS-20, PG-Q-PR-SL-CO-MS-50, PG-Q-PR-SL-CO-MS-10, PG-Q-PR-SL-AR-MS-50, PG-Q-PR-SL-AR-MS-70, PG-Q-PR-SL-AR-MS-20, PG-Q-PR-SL-AR-MS-40, PG-Q-PR-SL-AR-MS-10, PG-Q-PR-SL-AR-MS-30, PG-Q-PR-SL-AR-MS-90, PG-Q-PR-SL-AR-MS-100, PG-Q-PR-SL-AR-MS-80, PG-Q-PR-SL-AR-MS-110, PG-Q-PR-SL-AR-MS-60, PG-Q-PR-SL-AR-MS-120, PG-Q-PR-SL-MT-MS-10, PG-Q-PR-SL-MT-MS-20, PG-Q-PR-SL-AC-MS-20, PG-Q-PR-SL-AC-MS-30, PG-Q-PR-SL-AC-MS-40, PG-Q-PR-SL-AC-MS-10, PG-Q-PR-SL-PB-MS-10, PG-Q-PR-SL-PB-MS-30, PG-Q-PR-SL-PB-MS-20, PG-Q-PR-SL-IR-MS-20, PG-Q-PR-SL-IR-MS-10, PG-Q-PR-SL-EL-MS-10, PG-Q-PR-SL-FF-MS-10, PG-Q-EN-ME-SD-SB-70 FF, PG-Q-PR-SL-LS-MS-50 FF, PG-Q-PR-SL-MT-MS-30 FF |  | 6d |
| PG-IN-MS-30 |  | Completion of Toilet Building | 0d | 2026-10-28 | 2026-10-28 | PG-Q-CON-B-AR-RF-30, PG-Q-CON-B-AR-WF-50 FF, PG-Q-CON-B-AR-GF-80 FF, PG-Q-CON-B-AR-WF-60 FF, PG-Q-CON-B-GF-FF-10 FF, PG-H-CON-B-AR-GF-80 FF, PG-H-CON-B-AR-RF-30 FF, PG-H-CON-B-AR-WF-50 FF, PG-H-CON-B-AR-WF-60 FF, PG-H-CON-B-GF-FF-10 FF, PG-T-CON-B-AR-GF-80 FF, PG-T-CON-B-AR-RF-30 FF, PG-T-CON-B-AR-WF-50 FF, PG-T-CON-B-AR-WF-60 FF, PG-T-CON-B-GF-FF-10 FF, PG-T-CON-B-GF-AC-20 FF |  | 0d |
| PG-IN-MS-50 |  | Completion of Playground Works | 0d | 2026-12-07 | 2026-12-07 | PG-Q-CON-EX-BB-100, PG-Q-CON-EX-PD-80, PG-Q-CON-EX-FB-100 FF, PG-H-CON-EX-FB-100 FF, PG-T-CON-EX-BB-100 FF, PG-T-CON-EX-FB-100 FF, PG-T-CON-EX-PD-80 FF |  | 8d |
| PG-IN-MS-40 |  | Completion of Landscape Works | 0d | 2026-12-16 | 2026-12-16 | PG-Q-CON-EX-GN-SC-40, PG-Q-CON-EX-GN-SC-30 FF, PG-Q-CON-EX-LS-HS-60 FF, PG-Q-CON-EX-LS-SS-20_R FF, PG-H-CON-EX-GN-SC-30 FF, PG-H-CON-EX-GN-SC-40 FF, PG-H-CON-EX-LS-HS-60 FF, PG-H-CON-EX-LS-SS-20_R FF, PG-T-CON-EX-GN-SC-30 FF, PG-T-CON-EX-GN-SC-40 FF, PG-T-CON-EX-LS-HS-60 FF, PG-T-CON-EX-LS-SS-20_R FF |  | 0d |
| PG-IN-MS-60 |  | Substantial Completion - All Works | 0d | 2026-12-16 | 2026-12-16 | PG-Q-PCL-60, PG-H-PCL-60 FF, PG-T-PCL-60 FF |  | 0d |
|  | QASSIM | **QASSIM** |  | 2026-02-17 | 2026-12-16 |  |  |  |
|  | MOB | **MOBILIZATION** |  | 2026-02-17 | 2026-03-28 |  |  |  |
|  | CAM | **TEMPORARY CAMP** |  | 2026-02-17 | 2026-03-27 |  |  |  |
| PG-Q-MOB-CAM-10 |  | Temporary Underground Utilities works | 28.12d | 2026-02-17 A | 2026-03-27 A | PG-GN-MS-10 SS | 100% |  |
| PG-Q-MOB-CAM-20 |  | Temporary Porta-Cabins | 21.12d | 2026-02-26 A | 2026-03-27 A | PG-Q-MOB-CAM-10 | 100% |  |
| PG-Q-MOB-CAM-30 |  | Temporary Toilets | 21.12d | 2026-02-26 A | 2026-03-27 A | PG-Q-MOB-CAM-10 | 100% |  |
| PG-Q-MOB-CAM-40 |  | Temporary Mosque | 13.12d | 2026-03-08 A | 2026-03-27 A | PG-Q-MOB-CAM-20, PG-Q-MOB-CAM-30 | 100% |  |
|  | OF | **SITE OFFICES** |  | 2026-02-17 | 2026-03-28 |  |  |  |
| PG-Q-MOB-SO-10 |  | Temporary Underground Utilities works | 29.25d | 2026-02-17 A | 2026-03-28 A | PG-GN-MS-10 SS | 100% |  |
| PG-Q-MOB-SO-20 |  | Temporary Porta-Cabins | 22.25d | 2026-02-26 A | 2026-03-28 A | PG-Q-MOB-SO-10 | 100% |  |
| PG-Q-MOB-SO-30 |  | Temporary Toilets | 22.25d | 2026-02-26 A | 2026-03-28 A | PG-Q-MOB-SO-10 | 100% |  |
| PG-Q-MOB-SO-40 |  | Temporary Mosque | 16.25d | 2026-03-05 A | 2026-03-28 A | PG-Q-MOB-SO-20, PG-Q-MOB-SO-30 | 100% |  |
| PG-Q-MOB-SO-50 |  | Car Parking Area | 10.25d | 2026-03-12 A | 2026-03-28 A | PG-Q-MOB-SO-40, PG-Q-GEN-20, PG-Q-GEN-30, PG-Q-GEN-40 | 100% |  |
|  | GE.REQ | **GENERAL REQUIEREMENTS** |  | 2026-02-17 | 2026-04-29 |  |  |  |
| PG-Q-GEN-20 |  | HSSE Submission Plan | 57.25d | 2026-02-17 A | 2026-04-29 A | PG-GN-MS-10 SS | 100% |  |
| PG-Q-GEN-30 |  | Surveying report Submission Plan | 57.25d | 2026-02-17 A | 2026-04-29 A | PG-GN-MS-10 SS | 100% |  |
| PG-Q-GEN-40 |  | Baseline Submission | 6.25d | 2026-02-28 A | 2026-03-05 A | PG-GN-MS-10 SS | 100% |  |
| PG-Q-GEN-10 |  | QA/QC Submission Plan | 15.62d | 2026-03-12 A | 2026-04-04 A | PG-GN-MS-10 SS, PG-Q-GEN-30 | 100% |  |
|  | ENG | **ENGINEERING** |  | 2026-02-17 | 2026-08-16 |  |  |  |
|  | 1 | **SHOP DRAWINGS SUBMITTALS** |  | 2026-02-17 | 2026-08-04 |  |  |  |
|  | 1 | **STRUCTURAL DRAWINGS** |  | 2026-02-17 | 2026-07-06 |  |  |  |
|  | 1 | **PROJECT FENCE** |  | 2026-04-29 | 2026-05-20 |  |  |  |
| PG-Q-EN-ST-SD-SB-10 |  | Excavation Drawings | 19.25d | 2026-04-29 A | 2026-05-20 A | PG-GN-MS-10 SS | 100% |  |
| PG-Q-EN-ST-SD-SB-20 |  | Foundation Drawings | 19.25d | 2026-04-29 A | 2026-05-20 A | PG-Q-EN-ST-SD-SB-10, PG-Q-EN-ST-SD-SB-10 SS | 100% |  |
|  | 2 | **PADEL PLAYGROUND FENCE** |  | 2026-04-29 | 2026-05-20 |  |  |  |
| PG-Q-EN-ST-SD-SB-30 |  | Excavation Drawings | 19.25d | 2026-04-29 A | 2026-05-20 A | PG-Q-EN-ST-SD-SB-10, PG-Q-EN-ST-SD-SB-10 SS | 100% |  |
| PG-Q-EN-ST-SD-SB-40 |  | Foundation Drawings | 19.25d | 2026-04-29 A | 2026-05-20 A | PG-Q-EN-ST-SD-SB-30, PG-Q-EN-ST-SD-SB-30 SS | 100% |  |
|  | 3 | **AIR DOME** |  | 2026-06-25 | 2026-07-06 |  |  |  |
| PG-Q-EN-ST-SD-SB-50 |  | Excavation Drawings | 8d | 2026-06-25 | 2026-07-04 | PG-Q-EN-ST-SD-SB-30, PG-Q-EN-ST-SD-SB-30 SS |  | 0d |
| PG-Q-EN-ST-SD-SB-60 |  | Foundation Drawings | 10d | 2026-06-25 | 2026-07-06 | PG-Q-EN-ST-SD-SB-50 SS |  | 3d |
|  | 4 | **TOILET BUILDING** |  | 2026-02-17 | 2026-04-13 |  |  |  |
| PG-Q-EN-ST-SD-SB-70 |  | Excavation Drawings | 43.25d | 2026-02-17 A | 2026-04-13 A | PG-Q-EN-ST-SD-SB-10 SS | 100% |  |
| PG-Q-EN-ST-SD-SB-80 |  | Foundation Drawings | 41.25d | 2026-02-19 A | 2026-04-13 A | PG-Q-EN-ST-SD-SB-70 | 100% |  |
|  | 5 | **WATER STORAGE TANK** |  | 2026-02-19 | 2026-04-13 |  |  |  |
| PG-Q-EN-ST-SD-SB-90 |  | Excavation Drawings | 41.25d | 2026-02-19 A | 2026-04-13 A | PG-Q-EN-ST-SD-SB-70 | 100% |  |
| PG-Q-EN-ST-SD-SB-100 |  | Foundation Drawings | 39.25d | 2026-02-23 A | 2026-04-13 A | PG-Q-EN-ST-SD-SB-90 | 100% |  |
|  | 6 | **SEPTIC TANK** |  | 2026-04-28 | 2026-05-12 |  |  |  |
| PG-Q-EN-ST-SD-SB-110 |  | Reinforcement Detail Drawings | 13.25d | 2026-04-28 A | 2026-05-12 A | PG-Q-EN-ST-SD-SB-90 | 100% |  |
| PG-Q-EN-ST-SD-SB-120 |  | Concrete Detail Drawings | 13.25d | 2026-04-28 A | 2026-05-12 A | PG-Q-EN-ST-SD-SB-110, PG-Q-EN-ST-SD-SB-110 SS | 100% |  |
|  | 2 | **ARCHITECTURAL DRAWINGS** |  | 2026-02-19 | 2026-07-23 |  |  |  |
|  | 1 | **TOILET BUILDING** |  | 2026-02-19 | 2026-04-15 |  |  |  |
| PG-Q-EN-AR-SD-SB-10 |  | Ground Floor Plan | 40.33d | 2026-02-19 A | 2026-04-13 A | PG-Q-EN-ST-SD-SB-70 | 100% |  |
| PG-Q-EN-AR-SD-SB-20 |  | Roof Floor Plan | 37.25d | 2026-02-25 A | 2026-04-13 A | PG-Q-EN-AR-SD-SB-10 | 100% |  |
| PG-Q-EN-AR-SD-SB-50 |  | Floor Finish Layout | 36.23d | 2026-02-25 A | 2026-04-13 A | PG-Q-EN-AR-SD-SB-10 | 100% |  |
| PG-Q-EN-AR-SD-SB-60 |  | Reflected Ceiling Layout | 36.52d | 2026-02-25 A | 2026-04-13 A | PG-Q-EN-AR-SD-SB-10 | 100% |  |
| PG-Q-EN-AR-SD-SB-70 |  | Enlarged Toilets Layout | 38.33d | 2026-02-25 A | 2026-04-15 A | PG-Q-EN-AR-SD-SB-10 | 100% |  |
| PG-Q-EN-AR-SD-SB-100 |  | Cladding Details | 34.25d | 2026-03-01 A | 2026-04-13 A | PG-Q-EN-AR-SD-SB-50 | 100% |  |
| PG-Q-EN-AR-SD-SB-30 |  | Elevations | 34.05d | 2026-03-01 A | 2026-04-13 A | PG-Q-EN-AR-SD-SB-20 | 100% |  |
| PG-Q-EN-AR-SD-SB-80 |  | Doors & Windows Schedule | 35.23d | 2026-03-01 A | 2026-04-15 A | PG-Q-EN-AR-SD-SB-50 | 100% |  |
| PG-Q-EN-AR-SD-SB-90 |  | Aluminum Work | 35.23d | 2026-03-01 A | 2026-04-15 A | PG-Q-EN-AR-SD-SB-50 | 100% |  |
| PG-Q-EN-AR-SD-SB-40 |  | Sections | 31.52d | 2026-03-03 A | 2026-04-13 A | PG-Q-EN-AR-SD-SB-30 | 100% |  |
|  | 2 | **AIR DOME** |  | 2026-07-07 | 2026-07-23 |  |  |  |
| PG-Q-EN-AR-SD-SB-110 |  | Membrane & Insulation Details | 15d | 2026-07-07 | 2026-07-23 | PG-Q-EN-ST-SD-SB-60 |  | 9d |
| PG-Q-EN-AR-SD-SB-120 |  | Steel Cable System | 15d | 2026-07-07 | 2026-07-23 | PG-Q-EN-AR-SD-SB-110 SS |  | 9d |
| PG-Q-EN-AR-SD-SB-130 |  | Doors & Access Sytem Drawings | 15d | 2026-07-07 | 2026-07-23 | PG-Q-EN-AR-SD-SB-120 SS |  | 9d |
|  | 3 | **LANDSCAPE DRAWINGS** |  | 2026-02-23 | 2026-04-13 |  |  |  |
| PG-Q-EN-LS-SD-SB-10 |  | Hardscape Layout Plan | 36.25d | 2026-02-23 A | 2026-04-09 A | PG-Q-EN-ST-SD-SB-20, PG-Q-EN-ST-SD-SB-20 SS | 100% |  |

| ID | WBS | Task | Duration | Start | Finish | Predecessors | Complete | Total float |
| --- | --- | --- | --- | --- | --- | --- | --- | --- |
| PG-Q-EN-LS-SD-SB-100 |  | Padel Playground Layout | 39.25d | 2026-02-23 A | 2026-04-13 A | PG-Q-EN-ST-SD-SB-20, PG-Q-EN-ST-SD-SB-20 SS | 100% |  |
| PG-Q-EN-LS-SD-SB-110 |  | Basketball Playground Layout | 39.25d | 2026-02-23 A | 2026-04-13 A | PG-Q-EN-ST-SD-SB-20, PG-Q-EN-ST-SD-SB-20 SS | 100% |  |
| PG-Q-EN-LS-SD-SB-120 |  | Playground Details | 39.25d | 2026-02-23 A | 2026-04-13 A | PG-Q-EN-ST-SD-SB-20, PG-Q-EN-ST-SD-SB-20 SS | 100% |  |
| PG-Q-EN-LS-SD-SB-130 |  | Padel Fence Elevation & Details | 39.25d | 2026-02-23 A | 2026-04-13 A | PG-Q-EN-ST-SD-SB-20, PG-Q-EN-ST-SD-SB-20 SS | 100% |  |
| PG-Q-EN-LS-SD-SB-20 |  | Interlock Tile Details | 36.25d | 2026-02-23 A | 2026-04-09 A | PG-Q-EN-ST-SD-SB-20, PG-Q-EN-ST-SD-SB-20 SS | 100% |  |
| PG-Q-EN-LS-SD-SB-30 |  | Stamped Concrete Pattern & Section | 36.25d | 2026-02-23 A | 2026-04-09 A | PG-Q-EN-ST-SD-SB-20, PG-Q-EN-ST-SD-SB-20 SS | 100% |  |
| PG-Q-EN-LS-SD-SB-40 |  | Tartan Flooring Layout & Details | 36.25d | 2026-02-23 A | 2026-04-09 A | PG-Q-EN-ST-SD-SB-20, PG-Q-EN-ST-SD-SB-20 SS | 100% |  |
| PG-Q-EN-LS-SD-SB-50 |  | Bike Path Layout & Details | 36.25d | 2026-02-23 A | 2026-04-09 A | PG-Q-EN-ST-SD-SB-20, PG-Q-EN-ST-SD-SB-20 SS | 100% |  |
| PG-Q-EN-LS-SD-SB-60 |  | Walking Path layout & Details | 36.25d | 2026-02-23 A | 2026-04-09 A | PG-Q-EN-ST-SD-SB-20, PG-Q-EN-ST-SD-SB-20 SS | 100% |  |
| PG-Q-EN-LS-SD-SB-70 |  | Tree Planting Plan & Details | 39.25d | 2026-02-23 A | 2026-04-13 A | PG-Q-EN-ST-SD-SB-20, PG-Q-EN-ST-SD-SB-20 SS | 100% |  |
| PG-Q-EN-LS-SD-SB-80 |  | Traffic Sign Location & Details | 39.25d | 2026-02-23 A | 2026-04-13 A | PG-Q-EN-ST-SD-SB-20, PG-Q-EN-ST-SD-SB-20 SS | 100% |  |
| PG-Q-EN-LS-SD-SB-90 |  | Football Playground Layout | 39.25d | 2026-02-23 A | 2026-04-13 A | PG-Q-EN-ST-SD-SB-20, PG-Q-EN-ST-SD-SB-20 SS | 100% |  |
|  | 4 | **MECHANICAL DRAWINGS** |  | 2026-02-28 | 2026-07-15 |  |  |  |
|  | 1 | **WATER SUPPLY SYSTEM** |  | 2026-02-28 | 2026-04-09 |  |  |  |
| PG-Q-EN-ME-SD-SB-20 |  | Pump Room Layout | 32.25d | 2026-02-28 A | 2026-04-09 A | PG-Q-EN-LS-SD-SB-10 | 100% |  |
| PG-Q-EN-ME-SD-SB-10 |  | Cold & Hot Water Piping Layout | 28.25d | 2026-03-04 A | 2026-04-09 A | PG-Q-EN-ME-SD-SB-20 | 100% |  |
| PG-Q-EN-ME-SD-SB-30 |  | Booster Pump Details | 28.25d | 2026-03-04 A | 2026-04-09 A | PG-Q-EN-ME-SD-SB-20 | 100% |  |
| PG-Q-EN-ME-SD-SB-40 |  | GRP Water Tank Details | 24.25d | 2026-03-09 A | 2026-04-09 A | PG-Q-EN-ME-SD-SB-10, PG-Q-EN-ME-SD-SB-20 | 100% |  |
|  | 2 | **SEWER AND DRAINAGE SYSTEM** |  | 2026-03-04 | 2026-04-09 |  |  |  |
| PG-Q-EN-ME-SD-SB-50 |  | Drainage Layout | 28.25d | 2026-03-04 A | 2026-04-09 A | PG-Q-EN-ME-SD-SB-20 | 100% |  |
| PG-Q-EN-ME-SD-SB-60 |  | Floor Drains & Cleanouts Details | 24.25d | 2026-03-09 A | 2026-04-09 A | PG-Q-EN-ME-SD-SB-50 | 100% |  |
| PG-Q-EN-ME-SD-SB-70 |  | Inspection Chamber Details | 21.25d | 2026-03-12 A | 2026-04-09 A | PG-Q-EN-ME-SD-SB-60 | 100% |  |
|  | 3 | **IRRIGATION SYSTEM** |  | 2026-03-09 | 2026-04-09 |  |  |  |
| PG-Q-EN-ME-SD-SB-80 |  | HDPE Pipe Routing | 24.25d | 2026-03-09 A | 2026-04-09 A | PG-Q-EN-ME-SD-SB-50 | 100% |  |
| PG-Q-EN-ME-SD-SB-90 |  | Irrigation Network Layout | 21.25d | 2026-03-12 A | 2026-04-09 A | PG-Q-EN-ME-SD-SB-80 | 100% |  |
|  | 4 | **AIR DOME** |  | 2026-06-25 | 2026-07-15 |  |  |  |
| PG-Q-EN-ME-SD-SB-100 |  | Air Package and HVAC System Drawings | 18d | 2026-06-25 | 2026-07-15 | PG-Q-EN-ME-SD-SB-20 |  | 0d |
|  | 5 | **ELECTRICAL DRAWINGS** |  | 2026-05-11 | 2026-08-04 |  |  |  |
|  | 1 | **POWER AND LIGHTING SYSTEM** |  | 2026-05-11 | 2026-06-15 |  |  |  |
| PG-Q-EN-EL-SD-SB-10 |  | Main Distribution Board (MDB) Layout | 27.25d | 2026-05-11 A | 2026-06-15 A | PG-Q-EN-ME-SD-SB-20 | 100% |  |
| PG-Q-EN-EL-SD-SB-20 |  | Pump Room Power Panel | 27.25d | 2026-05-11 A | 2026-06-15 A | PG-Q-EN-EL-SD-SB-10, PG-Q-EN-EL-SD-SB-10 SS | 100% |  |
| PG-Q-EN-EL-SD-SB-30 |  | Street Lighting Power Panel | 27.25d | 2026-05-11 A | 2026-06-15 A | PG-Q-EN-EL-SD-SB-10, PG-Q-EN-EL-SD-SB-10 SS | 100% |  |
| PG-Q-EN-EL-SD-SB-40 |  | Site Lighting Pole Layout | 27.25d | 2026-05-11 A | 2026-06-15 A | PG-Q-EN-EL-SD-SB-30, PG-Q-EN-EL-SD-SB-30 SS | 100% |  |
|  | 2 | **ELV SYSTEM** |  | 2026-05-11 | 2026-06-15 |  |  |  |
| PG-Q-EN-EL-SD-SB-50 |  | Telecom & Data Layout | 27.25d | 2026-05-11 A | 2026-06-15 A | PG-Q-EN-ME-SD-SB-20 | 100% |  |
| PG-Q-EN-EL-SD-SB-60 |  | CCTV Camera Layout | 27.25d | 2026-05-11 A | 2026-06-15 A | PG-Q-EN-EL-SD-SB-50, PG-Q-EN-EL-SD-SB-50 SS | 100% |  |
| PG-Q-EN-EL-SD-SB-70 |  | Access Control Layout | 27.25d | 2026-05-11 A | 2026-06-15 A | PG-Q-EN-EL-SD-SB-60, PG-Q-EN-EL-SD-SB-60 SS | 100% |  |
| PG-Q-EN-EL-SD-SB-80 |  | AV System Layout | 27.25d | 2026-05-11 A | 2026-06-15 A | PG-Q-EN-EL-SD-SB-50, PG-Q-EN-EL-SD-SB-50 SS | 100% |  |
|  | 3 | **FIRE ALARM SYSTEM** |  | 2026-05-11 | 2026-06-15 |  |  |  |
| PG-Q-EN-EL-SD-SB-100 |  | Detector & Manual Call Point Details | 27.25d | 2026-05-11 A | 2026-06-15 A | PG-Q-EN-EL-SD-SB-90, PG-Q-EN-EL-SD-SB-90 SS | 100% |  |
| PG-Q-EN-EL-SD-SB-110 |  | Control Panel Wiring Diagram | 27.25d | 2026-05-11 A | 2026-06-15 A | PG-Q-EN-EL-SD-SB-100, PG-Q-EN-EL-SD-SB-100 SS | 100% |  |
| PG-Q-EN-EL-SD-SB-90 |  | Fire Alarm Layout | 27.25d | 2026-05-11 A | 2026-06-15 A | PG-Q-EN-ME-SD-SB-20 | 100% |  |
|  | 4 | **AIR DOME** |  | 2026-07-16 | 2026-08-04 |  |  |  |
| PG-Q-EN-EL-SD-SB-120 |  | Power & Lighting System Drawings | 10d | 2026-07-16 | 2026-07-27 | PG-Q-EN-EL-SD-SB-90, PG-Q-EN-ME-SD-SB-100 |  | 13d |
| PG-Q-EN-EL-SD-SB-130 |  | Generators Details | 15d | 2026-07-16 | 2026-08-02 | PG-Q-EN-ME-SD-SB-100 |  | 0d |
| PG-Q-EN-EL-SD-SB-140 |  | Smart Dome System Drawings | 17d | 2026-07-16 | 2026-08-04 | PG-Q-EN-ME-SD-SB-100 |  | 0d |
|  | 2 | **SHOP DRAWINGS APPROVALS** |  | 2026-02-19 | 2026-08-16 |  |  |  |
|  | 1 | **STRUCTURAL DRAWINGS** |  | 2026-02-19 | 2026-07-14 |  |  |  |
|  | 1 | **PROJECT FENCE** |  | 2026-05-13 | 2026-05-20 |  |  |  |
| PG-Q-EN-ST-SD-AP-10 |  | Excavation Drawings | 7.25d | 2026-05-13 A | 2026-05-20 A | PG-Q-EN-ST-SD-SB-10, PG-Q-EN-ST-SD-SB-10 SS | 100% |  |
| PG-Q-EN-ST-SD-AP-20 |  | Foundation Drawings | 7.25d | 2026-05-13 A | 2026-05-20 A | PG-Q-EN-ST-SD-SB-20, PG-Q-EN-ST-SD-AP-10, PG-Q-EN-ST-SD-SB-20 SS, PG-Q-EN-ST-SD-AP-10 SS | 100% |  |
|  | 2 | **PADEL PLAYGROUND FENCE** |  | 2026-05-11 | 2026-05-20 |  |  |  |
| PG-Q-EN-ST-SD-AP-30 |  | Excavation Drawings | 9.25d | 2026-05-11 A | 2026-05-20 A | PG-Q-EN-ST-SD-SB-30 | 100% |  |
| PG-Q-EN-ST-SD-AP-40 |  | Foundation Drawings | 9.25d | 2026-05-11 A | 2026-05-20 A | PG-Q-EN-ST-SD-SB-40, PG-Q-EN-ST-SD-AP-30 | 100% |  |
|  | 3 | **AIR DOME** |  | 2026-07-05 | 2026-07-14 |  |  |  |
| PG-Q-EN-ST-SD-AP-50 |  | Excavation Drawings | 4d | 2026-07-05 | 2026-07-08 | PG-Q-EN-ST-SD-SB-30, PG-Q-EN-ST-SD-SB-50 |  | 0d |
| PG-Q-EN-ST-SD-AP-60 |  | Foundation Drawings | 7d | 2026-07-07 | 2026-07-14 | PG-Q-EN-ST-SD-SB-30, PG-Q-EN-ST-SD-SB-60 |  | 3d |
|  | 4 | **TOILET BUILDING** |  | 2026-02-19 | 2026-04-16 |  |  |  |
| PG-Q-EN-ST-SD-AP-70 |  | Excavation Drawings | 44.25d | 2026-02-19 A | 2026-04-16 A | PG-Q-EN-ST-SD-SB-70 | 100% |  |
| PG-Q-EN-ST-SD-AP-80 |  | Foundation Drawings | 36.25d | 2026-03-02 A | 2026-04-16 A | PG-Q-EN-ST-SD-SB-80, PG-Q-EN-ST-SD-AP-70 | 100% |  |
|  | 5 | **WATER STORAGE TANK** |  | 2026-02-23 | 2026-04-16 |  |  |  |
| PG-Q-EN-ST-SD-AP-90 |  | Excavation Drawings | 42.25d | 2026-02-23 A | 2026-04-16 A | PG-Q-EN-ST-SD-SB-90 | 100% |  |
| PG-Q-EN-ST-SD-AP-100 |  | Foundation Drawings | 34.25d | 2026-03-04 A | 2026-04-16 A | PG-Q-EN-ST-SD-SB-100, PG-Q-EN-ST-SD-AP-90 | 100% |  |
|  | 6 | **SEPTIC TANK** |  | 2026-05-11 | 2026-05-13 |  |  |  |
| PG-Q-EN-ST-SD-AP-110 |  | Reinforcement Detail Drawings | 3.25d | 2026-05-11 A | 2026-05-13 A | PG-Q-EN-ST-SD-SB-110 | 100% |  |
| PG-Q-EN-ST-SD-AP-120 |  | Concrete Detail Drawings | 3.25d | 2026-05-11 A | 2026-05-13 A | PG-Q-EN-ST-SD-SB-120, PG-Q-EN-ST-SD-AP-110 | 100% |  |
|  | 2 | **ARCHITECTURAL DRAWINGS** |  | 2026-02-25 | 2026-08-01 |  |  |  |
|  | 1 | **TOILET BUILDING** |  | 2026-02-25 | 2026-04-16 |  |  |  |
| PG-Q-EN-AR-SD-AP-10 |  | Ground Floor Plan | 40.25d | 2026-02-25 A | 2026-04-16 A | PG-Q-EN-AR-SD-SB-10 | 100% |  |
| PG-Q-EN-AR-SD-AP-20 |  | Roof Floor Plan | 37.25d | 2026-03-01 A | 2026-04-16 A | PG-Q-EN-AR-SD-SB-20 | 100% |  |

| ID | WBS | Task | Duration | Start | Finish | Predecessors | Complete | Total float |
| --- | --- | --- | --- | --- | --- | --- | --- | --- |
| PG-Q-EN-AR-SD-AP-50 |  | Floor Finish Layout | 35.25d | 2026-03-03 A | 2026-04-16 A | PG-Q-EN-AR-SD-SB-50, PG-Q-EN-AR-SD-AP-10 | 100% |  |
| PG-Q-EN-AR-SD-AP-60 |  | Reflected Ceiling Layout | 35.25d | 2026-03-03 A | 2026-04-16 A | PG-Q-EN-AR-SD-SB-60, PG-Q-EN-AR-SD-AP-10 | 100% |  |
| PG-Q-EN-AR-SD-AP-70 |  | Enlarged Toilets Layout | 35.25d | 2026-03-03 A | 2026-04-16 A | PG-Q-EN-AR-SD-SB-70, PG-Q-EN-AR-SD-AP-10 | 100% |  |
| PG-Q-EN-AR-SD-AP-30 |  | Elevations | 34.25d | 2026-03-04 A | 2026-04-16 A | PG-Q-EN-AR-SD-SB-30, PG-Q-EN-AR-SD-AP-20 | 100% |  |
| PG-Q-EN-AR-SD-AP-80 |  | Doors & Windows Schedule | 34.25d | 2026-03-04 A | 2026-04-16 A | PG-Q-EN-AR-SD-SB-80 | 100% |  |
| PG-Q-EN-AR-SD-AP-100 |  | Cladding Details | 33.25d | 2026-03-05 A | 2026-04-16 A | PG-Q-EN-AR-SD-SB-100 | 100% |  |
| PG-Q-EN-AR-SD-AP-90 |  | Aluminum Work | 33.25d | 2026-03-05 A | 2026-04-16 A | PG-Q-EN-AR-SD-SB-90 | 100% |  |
| PG-Q-EN-AR-SD-AP-40 |  | Sections | 31.25d | 2026-03-08 A | 2026-04-16 A | PG-Q-EN-AR-SD-SB-40, PG-Q-EN-AR-SD-AP-30 | 100% |  |
|  | 2 | **AIR DOME** |  | 2026-07-25 | 2026-08-01 |  |  |  |
| PG-Q-EN-AR-SD-AP-110 |  | Membrane & Insulation Details | 7d | 2026-07-25 | 2026-08-01 | PG-Q-EN-AR-SD-SB-110 |  | 9d |
| PG-Q-EN-AR-SD-AP-120 |  | Steel Cable System | 7d | 2026-07-25 | 2026-08-01 | PG-Q-EN-AR-SD-SB-120 |  | 9d |
| PG-Q-EN-AR-SD-AP-130 |  | Doors & Access Sytem Drawings | 7d | 2026-07-25 | 2026-08-01 | PG-Q-EN-AR-SD-SB-130 |  | 9d |
|  | 3 | **LANDSCAPE DRAWINGS** |  | 2026-02-26 | 2026-04-16 |  |  |  |
| PG-Q-EN-LS-SD-AP-130 |  | Padel Fence Elevation & Details | 39.25d | 2026-02-26 A | 2026-04-16 A | PG-Q-EN-LS-SD-SB-130 | 100% |  |
| PG-Q-EN-LS-SD-AP-50 |  | Bike Path Layout & Details | 39.25d | 2026-02-26 A | 2026-04-16 A | PG-Q-EN-LS-SD-SB-50 | 100% |  |
| PG-Q-EN-LS-SD-AP-60 |  | Walking Path layout & Details | 39.25d | 2026-02-26 A | 2026-04-16 A | PG-Q-EN-LS-SD-SB-60 | 100% |  |
| PG-Q-EN-LS-SD-AP-80 |  | Traffic Sign Location & Details | 39.25d | 2026-02-26 A | 2026-04-16 A | PG-Q-EN-LS-SD-SB-80 | 100% |  |
| PG-Q-EN-LS-SD-AP-10 |  | Hardscape Layout Plan | 38.25d | 2026-02-28 A | 2026-04-16 A | PG-Q-EN-LS-SD-SB-10 | 100% |  |
| PG-Q-EN-LS-SD-AP-100 |  | Padel Playground Layout | 38.25d | 2026-02-28 A | 2026-04-16 A | PG-Q-EN-LS-SD-SB-100 | 100% |  |
| PG-Q-EN-LS-SD-AP-110 |  | Basketball Playground Layout | 38.25d | 2026-02-28 A | 2026-04-16 A | PG-Q-EN-LS-SD-SB-110 | 100% |  |
| PG-Q-EN-LS-SD-AP-120 |  | Playground Details | 38.25d | 2026-02-28 A | 2026-04-16 A | PG-Q-EN-LS-SD-SB-120 | 100% |  |
| PG-Q-EN-LS-SD-AP-40 |  | Tartan Flooring Layout & Details | 38.25d | 2026-02-28 A | 2026-04-16 A | PG-Q-EN-LS-SD-SB-40 | 100% |  |
| PG-Q-EN-LS-SD-AP-70 |  | Tree Planting Plan & Details | 38.25d | 2026-02-28 A | 2026-04-16 A | PG-Q-EN-LS-SD-SB-70 | 100% |  |
| PG-Q-EN-LS-SD-AP-90 |  | Football Playground Layout | 38.25d | 2026-02-28 A | 2026-04-16 A | PG-Q-EN-LS-SD-SB-90 | 100% |  |
| PG-Q-EN-LS-SD-AP-20 |  | Interlock Tile Details | 28.25d | 2026-03-11 A | 2026-04-16 A | PG-Q-EN-LS-SD-SB-20, PG-Q-EN-LS-SD-AP-10 | 100% |  |
| PG-Q-EN-LS-SD-AP-30 |  | Stamped Concrete Pattern & Section | 18.25d | 2026-03-28 A | 2026-04-16 A | PG-Q-EN-LS-SD-SB-30, PG-Q-EN-LS-SD-AP-20 | 100% |  |
|  | 4 | **MECHANICAL DRAWINGS** |  | 2026-03-09 | 2026-07-27 |  |  |  |
|  | 1 | **WATER SUPPLY SYSTEM** |  | 2026-03-09 | 2026-04-13 |  |  |  |
| PG-Q-EN-ME-SD-AP-10 |  | Cold & Hot Water Piping Layout | 27.25d | 2026-03-09 A | 2026-04-13 A | PG-Q-EN-ME-SD-SB-10 | 100% |  |
| PG-Q-EN-ME-SD-AP-30 |  | Booster Pump Details | 26.25d | 2026-03-10 A | 2026-04-13 A | PG-Q-EN-ME-SD-SB-30 | 100% |  |
| PG-Q-EN-ME-SD-AP-40 |  | GRP Water Tank Details | 22.32d | 2026-03-14 A | 2026-04-13 A | PG-Q-EN-ME-SD-SB-40 | 100% |  |
| PG-Q-EN-ME-SD-AP-20 |  | Pump Room Layout | 21.25d | 2026-03-16 A | 2026-04-13 A | PG-Q-EN-ME-SD-SB-20, PG-Q-EN-ME-SD-AP-10 | 100% |  |
|  | 2 | **SEWER AND DRAINAGE SYSTEM** |  | 2026-03-09 | 2026-04-13 |  |  |  |
| PG-Q-EN-ME-SD-AP-50 |  | Drainage Layout | 27.25d | 2026-03-09 A | 2026-04-13 A | PG-Q-EN-ME-SD-SB-50 | 100% |  |
| PG-Q-EN-ME-SD-AP-60 |  | Floor Drains & Cleanouts Details | 21.25d | 2026-03-16 A | 2026-04-13 A | PG-Q-EN-ME-SD-SB-60, PG-Q-EN-ME-SD-AP-50 | 100% |  |
| PG-Q-EN-ME-SD-AP-70 |  | Inspection Chamber Details | 21.25d | 2026-03-16 A | 2026-04-13 A | PG-Q-EN-ME-SD-SB-70 | 100% |  |
|  | 3 | **IRRIGATION SYSTEM** |  | 2026-03-12 | 2026-04-13 |  |  |  |
| PG-Q-EN-ME-SD-AP-80 |  | HDPE Pipe Routing | 24.25d | 2026-03-12 A | 2026-04-13 A | PG-Q-EN-ME-SD-SB-80 | 100% |  |
| PG-Q-EN-ME-SD-AP-90 |  | Irrigation Network Layout | 20.25d | 2026-03-17 A | 2026-04-13 A | PG-Q-EN-ME-SD-SB-90 | 100% |  |
|  | 4 | **AIR DOME** |  | 2026-07-16 | 2026-07-27 |  |  |  |
| PG-Q-EN-ME-SD-AP-100 |  | Air Package and HVAC System Drawings | 10d | 2026-07-16 | 2026-07-27 | PG-Q-EN-ME-SD-SB-100 |  | 13d |
|  | 5 | **ELECTRICAL DRAWINGS** |  | 2026-05-20 | 2026-08-16 |  |  |  |
|  | 1 | **POWER AND LIGHTING SYSTEM** |  | 2026-05-20 | 2026-06-16 |  |  |  |
| PG-Q-EN-EL-SD-AP-10 |  | Main Distribution Board (MDB) Layout | 20.25d | 2026-05-20 A | 2026-06-16 A | PG-Q-EN-EL-SD-SB-10, PG-Q-EN-EL-SD-SB-10 SS | 100% |  |
| PG-Q-EN-EL-SD-AP-20 |  | Pump Room Power Panel | 20.25d | 2026-05-20 A | 2026-06-16 A | PG-Q-EN-EL-SD-SB-20, PG-Q-EN-EL-SD-SB-20 SS | 100% |  |
| PG-Q-EN-EL-SD-AP-30 |  | Street Lighting Power Panel | 20.25d | 2026-05-20 A | 2026-06-16 A | PG-Q-EN-EL-SD-SB-30, PG-Q-EN-EL-SD-SB-30 SS | 100% |  |
| PG-Q-EN-EL-SD-AP-40 |  | Site Lighting Pole Layout | 20.25d | 2026-05-20 A | 2026-06-16 A | PG-Q-EN-EL-SD-SB-40, PG-Q-EN-EL-SD-SB-40 SS | 100% |  |
|  | 2 | **ELV SYSTEM** |  | 2026-05-20 | 2026-06-16 |  |  |  |
| PG-Q-EN-EL-SD-AP-50 |  | Telecom & Data Layout | 20.25d | 2026-05-20 A | 2026-06-16 A | PG-Q-EN-EL-SD-SB-50, PG-Q-EN-EL-SD-SB-50 SS | 100% |  |
| PG-Q-EN-EL-SD-AP-60 |  | CCTV Camera Layout | 20.25d | 2026-05-20 A | 2026-06-16 A | PG-Q-EN-EL-SD-SB-60, PG-Q-EN-EL-SD-SB-60 SS | 100% |  |
| PG-Q-EN-EL-SD-AP-70 |  | Access Control Layout | 20.25d | 2026-05-20 A | 2026-06-16 A | PG-Q-EN-EL-SD-SB-70, PG-Q-EN-EL-SD-SB-70 SS | 100% |  |
| PG-Q-EN-EL-SD-AP-80 |  | AV System Layout | 20.25d | 2026-05-20 A | 2026-06-16 A | PG-Q-EN-EL-SD-SB-80, PG-Q-EN-EL-SD-SB-80 SS | 100% |  |
|  | 3 | **FIRE ALARM SYSTEM** |  | 2026-05-20 | 2026-06-16 |  |  |  |
| PG-Q-EN-EL-SD-AP-100 |  | Detector & Manual Call Point Details | 20.25d | 2026-05-20 A | 2026-06-16 A | PG-Q-EN-EL-SD-SB-100, PG-Q-EN-EL-SD-SB-100 SS | 100% |  |
| PG-Q-EN-EL-SD-AP-110 |  | Control Panel Wiring Diagram | 20.25d | 2026-05-20 A | 2026-06-16 A | PG-Q-EN-EL-SD-SB-110, PG-Q-EN-EL-SD-SB-110 SS | 100% |  |
| PG-Q-EN-EL-SD-AP-90 |  | Fire Alarm Layout | 20.25d | 2026-05-20 A | 2026-06-16 A | PG-Q-EN-EL-SD-SB-90, PG-Q-EN-EL-SD-SB-90 SS | 100% |  |
|  | 4 | **AIR DOME** |  | 2026-07-28 | 2026-08-16 |  |  |  |
| PG-Q-EN-EL-SD-AP-120 |  | Power & Lighting System Drawings | 17d | 2026-07-28 | 2026-08-16 | PG-Q-EN-EL-SD-SB-120 |  | 14d |
| PG-Q-EN-EL-SD-AP-130 |  | Generators Details | 8d | 2026-08-03 | 2026-08-11 | PG-Q-EN-EL-SD-SB-130 |  | 0d |
| PG-Q-EN-EL-SD-AP-140 |  | Smart Dome System Drawings | 6d | 2026-08-05 | 2026-08-11 | PG-Q-EN-EL-SD-SB-140 |  | 0d |
|  | 3 | **MATERIAL SUBMITTALS** |  | 2026-02-17 | 2026-07-16 |  |  |  |
|  | 1 | **LONG LEAD ITEMS** |  | 2026-02-17 | 2026-07-16 |  |  |  |
|  | 2 | **EXTERNAL / LANDSCAPE WORK** |  | 2026-02-25 | 2026-05-05 |  |  |  |
| PG-Q-PR-LL-LS-MS-20 |  | Benches, Seats (Rectangular & Circular) | 56.25d | 2026-02-25 A | 2026-05-05 A | PG-Q-PR-SL-LS-MS-30 | 100% |  |
| PG-Q-PR-LL-LS-MS-10 |  | Bike and Walk Path Materials | 49.25d | 2026-03-05 A | 2026-05-05 A | PG-Q-PR-SL-LS-MS-10, PG-Q-EN-LS-SD-AP-50, PG-Q-EN-LS-SD-AP-60 | 100% |  |
| PG-Q-PR-LL-LS-MS-30 |  | Fence, gates and accessories | 49.25d | 2026-03-05 A | 2026-05-05 A | PG-Q-PR-SL-LS-MS-30, PG-Q-EN-LS-SD-AP-130 | 100% |  |
|  | 3 | **SPORTS & RECREATIONAL FACILITIES WORK** |  | 2026-02-17 | 2026-07-16 |  |  |  |
| PG-Q-PR-LL-SP-MS-50 |  | Air Dome Materials(Completed) | 101.25d | 2026-02-17 A | 2026-06-24 A | PG-GN-MS-10 SS | 100% |  |
| PG-Q-PR-LL-SP-MS-10 |  | Football Playground Materials (Flooring, goal post, nets, paints, etc) | 48.25d | 2026-03-07 A | 2026-05-05 A | PG-Q-EN-LS-SD-AP-90, PG-Q-EN-LS-SD-AP-120 | 100% |  |
| PG-Q-PR-LL-SP-MS-20 |  | Basketball Playground Materials (Flooring, basketball poll, nets, paints, etc) | 48.25d | 2026-03-07 A | 2026-05-05 A | PG-Q-EN-LS-SD-AP-120, PG-Q-EN-LS-SD-AP-110 | 100% |  |

| ID | WBS | Task | Duration | Start | Finish | Predecessors | Complete | Total float |
| --- | --- | --- | --- | --- | --- | --- | --- | --- |
| PG-Q-PR-LL-SP-MS-30 |  | Padel Playgound Materials (Flooring, fence, tempered glass, etc) | 48.25d | 2026-03-07 A | 2026-05-05 A | PG-Q-EN-LS-SD-AP-120, PG-Q-EN-LS-SD-AP-100 | 100% |  |
| PG-Q-PR-LL-SP-MS-40 |  | Tartan Floor | 48.25d | 2026-03-07 A | 2026-05-05 A | PG-Q-EN-LS-SD-AP-40 | 100% |  |
| PG-Q-PR-LL-SP-MS-50_R |  | Air Dome Materials(Remaining) | 19d | 2026-06-25 | 2026-07-16 | PG-GN-MS-10 SS, PG-Q-PR-LL-SP-MS-50 |  | 0d |
|  | 4 | **CONCRETE WORK** |  | 2026-03-04 | 2026-04-27 |  |  |  |
| PG-Q-PR-LL-CO-MS-10 |  | Autoclaved Aerated Panel | 43.25d | 2026-03-04 A | 2026-04-27 A | PG-Q-EN-AR-SD-AP-10, PG-Q-EN-AR-SD-AP-20 | 100% |  |
|  | 5 | **METAL WORK** |  | 2026-03-09 | 2026-05-06 |  |  |  |
| PG-Q-PR-LL-MT-MS-10 |  | Metal Doors | 47.25d | 2026-03-09 A | 2026-05-06 A | PG-Q-EN-AR-SD-AP-80 | 100% |  |
| PG-Q-PR-LL-MT-MS-20 |  | Curtain Wall | 47.25d | 2026-03-09 A | 2026-05-06 A | PG-Q-PR-LL-CO-MS-10 | 100% |  |
|  | 7 | **PLUMBING WORK** |  | 2026-03-10 | 2026-05-06 |  |  |  |
| PG-Q-PR-LL-PB-MS-10 |  | Booster Pump | 46.25d | 2026-03-10 A | 2026-05-06 A | PG-Q-EN-ME-SD-AP-30 SS | 100% |  |
| PG-Q-PR-LL-PB-MS-20 |  | GRP Sectional Panel Water Tanks (4x3x3m) | 42.25d | 2026-03-15 A | 2026-05-06 A | PG-Q-PR-LL-PB-MS-10 | 100% |  |
|  | 8 | **IRRIGATION WORK** |  | 2026-03-05 | 2026-05-06 |  |  |  |
| PG-Q-PR-LL-IR-MS-10 |  | HDPE Pipes | 50.25d | 2026-03-05 A | 2026-05-06 A | PG-Q-PR-LL-IR-MS-20 SS | 100% |  |
| PG-Q-PR-LL-IR-MS-20 |  | Irrigation Control System | 50.25d | 2026-03-05 A | 2026-05-06 A | PG-Q-PR-LL-EL-MS-50, PG-Q-PR-LL-EL-MS-50 SS | 100% |  |
|  | 9 | **ELECTRICAL WORK** |  | 2026-05-12 | 2026-06-15 |  |  |  |
| PG-Q-PR-LL-EL-MS-10 |  | Main Distribution Board | 26.25d | 2026-05-12 A | 2026-06-15 A | PG-Q-EN-EL-SD-AP-10 SS, PG-Q-EN-EL-SD-AP-10 FF | 100% |  |
| PG-Q-PR-LL-EL-MS-20 |  | Power Panels (Pump, Street Light) | 26.25d | 2026-05-12 A | 2026-06-15 A | PG-Q-PR-LL-EL-MS-10, PG-Q-PR-LL-EL-MS-10 SS | 100% |  |
| PG-Q-PR-LL-EL-MS-30 |  | Site Lighting Poles | 26.25d | 2026-05-12 A | 2026-06-15 A | PG-Q-EN-EL-SD-AP-30 SS, PG-Q-EN-EL-SD-AP-30 FF | 100% |  |
| PG-Q-PR-LL-EL-MS-40 |  | Lighting Fixtures | 26.25d | 2026-05-12 A | 2026-06-15 A | PG-Q-PR-LL-EL-MS-10 SS | 100% |  |
| PG-Q-PR-LL-EL-MS-50 |  | Grounding System Materials (Earth pit rod, LPS, etc) | 26.25d | 2026-05-12 A | 2026-06-15 A | PG-Q-PR-LL-SP-MS-50 SS | 100% |  |
| PG-Q-PR-LL-EL-MS-60 |  | Telecommunications & Data System Materials (Telephone outlet, CCTV, etc) | 26.25d | 2026-05-12 A | 2026-06-15 A | PG-Q-EN-EL-SD-AP-50, PG-Q-EN-EL-SD-AP-60 SS, PG-Q-EN-EL-SD-AP-50 FF, PG-Q-EN-EL-SD-AP-60 FF, PG-Q-EN-EL-SD-AP-50 SS | 100% |  |
| PG-Q-PR-LL-EL-MS-70 |  | Security and Access Control System Materials | 26.25d | 2026-05-12 A | 2026-06-15 A | PG-Q-EN-EL-SD-AP-80 SS, PG-Q-EN-EL-SD-AP-80 FF | 100% |  |
| PG-Q-PR-LL-EL-MS-80 |  | Fire Alarm System Materials | 26.25d | 2026-05-12 A | 2026-06-15 A | PG-Q-EN-EL-SD-AP-90, PG-Q-EN-EL-SD-AP-110 SS, PG-Q-EN-EL-SD-AP-90 FF, PG-Q-EN-EL-SD-AP-110 FF, PG-Q-EN-EL-SD-AP-90 SS | 100% |  |
|  | 2 | **SHORT LEAD ITEMS** |  | 2026-02-17 | 2026-03-27 |  |  |  |
|  | 2 | **EXTERNAL / LANDSCAPE WORK** |  | 2026-02-17 | 2026-03-16 |  |  |  |
| PG-Q-PR-SL-LS-MS-10 |  | Backfilling Materials | 23.25d | 2026-02-17 A | 2026-03-16 A | PG-GN-MS-10 SS | 100% |  |
| PG-Q-PR-SL-LS-MS-30 |  | Compacted Natural Ground Soil | 20.25d | 2026-02-21 A | 2026-03-16 A | PG-Q-PR-SL-LS-MS-10 | 100% |  |
| PG-Q-PR-SL-LS-MS-20 |  | Interlock tiles | 4.25d | 2026-03-12 A | 2026-03-16 A | PG-Q-PR-SL-LS-MS-10, PG-Q-PR-SL-LS-MS-40 | 100% |  |
| PG-Q-PR-SL-LS-MS-40 |  | Curb Stone | 4.25d | 2026-03-12 A | 2026-03-16 A | PG-Q-PR-SL-LS-MS-10, PG-Q-EN-LS-SD-AP-10 | 100% |  |
| PG-Q-PR-SL-LS-MS-50 |  | Thermoplastic pavement road marking | 4.25d | 2026-03-12 A | 2026-03-16 A | PG-Q-PR-SL-LS-MS-40 | 100% |  |
| PG-Q-PR-SL-LS-MS-60 |  | Traffic Signages | 4.25d | 2026-03-12 A | 2026-03-16 A | PG-Q-EN-LS-SD-AP-80 | 100% |  |
| PG-Q-PR-SL-LS-MS-70 |  | Trees | 4.25d | 2026-03-12 A | 2026-03-16 A | PG-Q-PR-SL-LS-MS-60, PG-Q-EN-LS-SD-AP-70 | 100% |  |
| PG-Q-PR-SL-LS-MS-80 |  | Lawn | 4.25d | 2026-03-12 A | 2026-03-16 A | PG-Q-PR-SL-LS-MS-60, PG-Q-EN-LS-SD-AP-70 | 100% |  |
|  | 3 | **CONCRETE WORK** |  | 2026-02-17 | 2026-03-27 |  |  |  |
| PG-Q-PR-SL-CO-MS-10 |  | Steel Rebar | 17.25d | 2026-02-17 A | 2026-03-09 A | PG-GN-MS-10 SS | 100% |  |
| PG-Q-PR-SL-CO-MS-20 |  | Concrete | 13.25d | 2026-02-23 A | 2026-03-09 A | PG-Q-PR-SL-CO-MS-10 | 100% |  |
| PG-Q-PR-SL-CO-MS-40 |  | CMU Block | 19.12d | 2026-03-01 A | 2026-03-27 A | PG-Q-PR-SL-CO-MS-20 | 100% |  |
| PG-Q-PR-SL-CO-MS-50 |  | Concrete Repair & Protection Materials | 19.12d | 2026-03-01 A | 2026-03-27 A | PG-Q-PR-SL-CO-MS-20 | 100% |  |
| PG-Q-PR-SL-CO-MS-30 |  | Screed | 9.25d | 2026-03-12 A | 2026-03-26 A | PG-Q-PR-SL-CO-MS-20, PG-Q-EN-AR-SD-AP-50 | 100% |  |
|  | 4 | **ARCHITECTURAL & FINISHES WORK** |  | 2026-02-21 | 2026-03-14 |  |  |  |
| PG-Q-PR-SL-AR-MS-40 |  | Cement Plaster | 18.25d | 2026-02-21 A | 2026-03-14 A | PG-Q-PR-SL-LS-MS-10 | 100% |  |
| PG-Q-PR-SL-AR-MS-50 |  | Acrylic Paint | 15.25d | 2026-02-25 A | 2026-03-14 A | PG-Q-PR-SL-AR-MS-40 | 100% |  |
| PG-Q-PR-SL-AR-MS-80 |  | Phenolic Partition | 10.25d | 2026-03-03 A | 2026-03-14 A | PG-Q-EN-AR-SD-AP-10 | 100% |  |
| PG-Q-PR-SL-AR-MS-90 |  | Glass Partition | 10.25d | 2026-03-03 A | 2026-03-14 A | PG-Q-EN-AR-SD-AP-10 | 100% |  |
| PG-Q-PR-SL-AR-MS-10 |  | Ceramic tiles | 4.25d | 2026-03-10 A | 2026-03-14 A | PG-Q-EN-AR-SD-AP-50 | 100% |  |
| PG-Q-PR-SL-AR-MS-100 |  | Gypsum Boards | 4.25d | 2026-03-10 A | 2026-03-14 A | PG-Q-EN-AR-SD-AP-60 | 100% |  |
| PG-Q-PR-SL-AR-MS-110 |  | Specialities Materials (Toilet accessories, lockers, logo, etc) | 4.25d | 2026-03-10 A | 2026-03-14 A | PG-Q-EN-AR-SD-AP-70 | 100% |  |
| PG-Q-PR-SL-AR-MS-120 |  | Waterproofing System Materials | 4.25d | 2026-03-10 A | 2026-03-14 A | PG-Q-EN-AR-SD-AP-50 | 100% |  |
| PG-Q-PR-SL-AR-MS-20 |  | Anti-slip Granite tiles | 4.25d | 2026-03-10 A | 2026-03-14 A | PG-Q-PR-SL-AR-MS-10 SS | 100% |  |
| PG-Q-PR-SL-AR-MS-30 |  | Epoxy Paint | 4.25d | 2026-03-10 A | 2026-03-14 A | PG-Q-EN-AR-SD-AP-50 | 100% |  |
| PG-Q-PR-SL-AR-MS-60 |  | Stone Cladding | 4.25d | 2026-03-10 A | 2026-03-14 A | PG-Q-EN-AR-SD-AP-100 | 100% |  |
| PG-Q-PR-SL-AR-MS-70 |  | Aluminum Plates | 4.25d | 2026-03-10 A | 2026-03-14 A | PG-Q-EN-AR-SD-AP-90 | 100% |  |
|  | 5 | **METAL WORK** |  | 2026-03-04 | 2026-03-16 |  |  |  |
| PG-Q-PR-SL-MT-MS-20 |  | Galvanized Steel Roof Scupper | 11.25d | 2026-03-04 A | 2026-03-16 A | PG-Q-EN-AR-SD-AP-20 | 100% |  |
| PG-Q-PR-SL-MT-MS-30 |  | Galvanized Steel Cover with frame | 11.25d | 2026-03-04 A | 2026-03-16 A | PG-Q-EN-AR-SD-AP-20 | 100% |  |
| PG-Q-PR-SL-MT-MS-10 |  | Galvanized Steel Ladder | 8.25d | 2026-03-08 A | 2026-03-16 A | PG-Q-EN-AR-SD-AP-20, PG-Q-EN-AR-SD-AP-30 | 100% |  |
|  | 6 | **HVAC WORK** |  | 2026-02-23 | 2026-03-16 |  |  |  |
| PG-Q-PR-SL-AC-MS-10 |  | Split Air Conditioning Unit | 19.25d | 2026-02-23 A | 2026-03-16 A | PG-Q-PR-SL-CO-MS-10 | 100% |  |
| PG-Q-PR-SL-AC-MS-20 |  | Air Duct | 15.25d | 2026-02-28 A | 2026-03-16 A | PG-Q-PR-SL-AC-MS-10 | 100% |  |
| PG-Q-PR-SL-AC-MS-30 |  | Diffusers and Grills | 11.25d | 2026-03-04 A | 2026-03-16 A | PG-Q-PR-SL-AC-MS-20 | 100% |  |
| PG-Q-PR-SL-AC-MS-40 |  | Exhaust fans | 11.25d | 2026-03-04 A | 2026-03-16 A | PG-Q-PR-SL-AC-MS-20 | 100% |  |
|  | 7 | **PLUMBING WORK** |  | 2026-03-12 | 2026-03-16 |  |  |  |
| PG-Q-PR-SL-PB-MS-10 |  | PPR Pipes & Valves | 4.25d | 2026-03-12 A | 2026-03-16 A | PG-Q-PR-SL-AC-MS-10, PG-Q-PR-SL-PB-MS-20 SS | 100% |  |
| PG-Q-PR-SL-PB-MS-20 |  | UPCV Pipes | 4.25d | 2026-03-12 A | 2026-03-16 A | PG-Q-PR-SL-MT-MS-20 | 100% |  |
| PG-Q-PR-SL-PB-MS-30 |  | Sanitary Drainage Fixtures | 4.25d | 2026-03-12 A | 2026-03-16 A | PG-Q-PR-SL-PB-MS-20 SS | 100% |  |
|  | 8 | **IRRIGATION WORK** |  | 2026-02-25 | 2026-03-16 |  |  |  |
| PG-Q-PR-SL-IR-MS-10 |  | Gate Valve including valve box | 17.25d | 2026-02-25 A | 2026-03-16 A | PG-Q-PR-SL-LS-MS-30 | 100% |  |
| PG-Q-PR-SL-IR-MS-20 |  | Bulbblers and Spreyers | 12.25d | 2026-03-03 A | 2026-03-16 A | PG-Q-PR-SL-IR-MS-10 | 100% |  |
|  | 9 | **ELECTRICAL WORK** |  | 2026-03-12 | 2026-03-16 |  |  |  |
| PG-Q-PR-SL-EL-MS-10 |  | Wiring Devices Materials | 4.25d | 2026-03-12 A | 2026-03-16 A | PG-Q-PR-SL-PB-MS-30 SS | 100% |  |

| ID | WBS | Task | Duration | Start | Finish | Predecessors | Complete | Total float |
| --- | --- | --- | --- | --- | --- | --- | --- | --- |
|  | 10 | **FIRE FIGHTING WORK** |  | 2026-03-12 | 2026-03-16 |  |  |  |
| PG-Q-PR-SL-FF-MS-10 |  | Fire Extinguishers | 4.25d | 2026-03-12 A | 2026-03-16 A | PG-Q-PR-SL-PB-MS-30 | 100% |  |
|  | 4 | **MATERIAL APPROVALS** |  | 2026-02-21 | 2026-07-18 |  |  |  |
|  | 1 | **LONG LEAD ITEMS** |  | 2026-03-02 | 2026-07-18 |  |  |  |
|  | 1 | **EXTERNAL / LANDSCAPE WORK** |  | 2026-05-11 | 2026-05-12 |  |  |  |
| PG-Q-PR-LL-LS-MA-10 |  | Bike and Walk Path Materials | 2d | 2026-05-11 A | 2026-05-12 A | PG-Q-PR-LL-LS-MS-10 | 100% |  |
| PG-Q-PR-LL-LS-MA-20 |  | Benches, Seats (Rectangular & Circular) | 2d | 2026-05-11 A | 2026-05-12 A | PG-Q-PR-LL-LS-MS-20 | 100% |  |
| PG-Q-PR-LL-LS-MA-30 |  | Fence, gates and accessories | 2d | 2026-05-11 A | 2026-05-12 A | PG-Q-PR-LL-LS-MS-30 | 100% |  |
|  | 3 | **SPORTS & RECREATIONAL FACILITIES WORK** |  | 2026-03-02 | 2026-06-30 |  |  |  |
| PG-Q-PR-LL-SP-MA-50 |  | Air Dome Materials(Completed) | 91d | 2026-03-02 A | 2026-06-24 A | PG-Q-PR-LL-SP-MS-50 SS | 100% |  |
| PG-Q-PR-LL-SP-MA-10 |  | Football Playground Materials (Flooring, goal post, nets, paints, etc) | 8d | 2026-05-12 A | 2026-05-20 A | PG-Q-PR-LL-SP-MS-10 | 100% |  |
| PG-Q-PR-LL-SP-MA-20 |  | Basketball Playground Materials (Flooring, basketball poll, nets, paints, etc) | 8d | 2026-05-12 A | 2026-05-20 A | PG-Q-PR-LL-SP-MS-20 | 100% |  |
| PG-Q-PR-LL-SP-MA-30 |  | Padel Playgound Materials (Flooring, fence, tempered glass, etc) | 8d | 2026-05-12 A | 2026-05-20 A | PG-Q-PR-LL-SP-MS-30 | 100% |  |
| PG-Q-PR-LL-SP-MA-40 |  | Tartan Floor | 8d | 2026-05-12 A | 2026-05-20 A | PG-Q-PR-LL-SP-MS-40 | 100% |  |
| PG-Q-PR-LL-SP-MA-50_R |  | Air Dome Materials(Remaining) | 5d | 2026-06-25 | 2026-06-30 | PG-Q-PR-LL-SP-MS-50_R SS, PG-Q-PR-LL-SP-MA-50 |  | 0d |
|  | 4 | **CONCRETE WORK** |  | 2026-03-09 | 2026-04-28 |  |  |  |
| PG-Q-PR-LL-CO-MA-10 |  | Autoclaved Aerated Panel | 40d | 2026-03-09 A | 2026-04-28 A | PG-Q-PR-LL-CO-MS-10 | 100% |  |
|  | 5 | **METAL WORK** |  | 2026-06-09 | 2026-07-18 |  |  |  |
| PG-Q-PR-LL-MT-MA-10 |  | Metal Doors(Completed) | 14d | 2026-06-09 A | 2026-06-24 A | PG-Q-PR-LL-MT-MS-10 | 100% |  |
| PG-Q-PR-LL-MT-MA-20 |  | Curtain Wall(Completed) | 14d | 2026-06-09 A | 2026-06-24 A | PG-Q-PR-LL-MT-MS-20 | 100% |  |
| PG-Q-PR-LL-MT-MA-10_R |  | Metal Doors(Remaining) | 15d | 2026-06-25 | 2026-07-12 | PG-Q-PR-LL-MT-MS-10, PG-Q-PR-LL-MT-MA-10 |  | 81d |
| PG-Q-PR-LL-MT-MA-20_R |  | Curtain Wall(Remaining) | 20d | 2026-06-25 | 2026-07-18 | PG-Q-PR-LL-MT-MS-20, PG-Q-PR-LL-MT-MA-20 |  | 79d |
|  | 7 | **PLUMBING WORK** |  | 2026-06-09 | 2026-07-18 |  |  |  |
| PG-Q-PR-LL-PB-MA-10 |  | Booster Pump(Completed) | 14d | 2026-06-09 A | 2026-06-24 A | PG-Q-PR-LL-PB-MS-10 | 100% |  |
| PG-Q-PR-LL-PB-MA-20 |  | GRP Sectional Panel Water Tanks (4x3x3m)(Completed) | 14d | 2026-06-09 A | 2026-06-24 A | PG-Q-PR-LL-PB-MS-20 | 100% |  |
| PG-Q-PR-LL-PB-MA-10_R |  | Booster Pump(Remaining) | 20d | 2026-06-25 | 2026-07-18 | PG-Q-PR-LL-PB-MS-10, PG-Q-PR-LL-PB-MA-10 |  | 42d |
| PG-Q-PR-LL-PB-MA-20_R |  | GRP Sectional Panel Water Tanks (4x3x3m)(Remaining) | 15d | 2026-06-25 | 2026-07-12 | PG-Q-PR-LL-PB-MS-20, PG-Q-PR-LL-PB-MA-20 |  | 38d |
|  | 8 | **IRRIGATION WORK** |  | 2026-03-11 | 2026-05-06 |  |  |  |
| PG-Q-PR-LL-IR-MA-10 |  | HDPE Pipes | 45d | 2026-03-11 A | 2026-05-06 A | PG-Q-PR-LL-IR-MS-10 | 100% |  |
| PG-Q-PR-LL-IR-MA-20 |  | Irrigation Control System | 45d | 2026-03-11 A | 2026-05-06 A | PG-Q-PR-LL-IR-MS-20 | 100% |  |
|  | 9 | **ELECTRICAL WORK** |  | 2026-05-12 | 2026-07-02 |  |  |  |
| PG-Q-PR-LL-EL-MA-10 |  | Main Distribution Board(Completed) | 34d | 2026-05-12 A | 2026-06-24 A | PG-Q-PR-LL-EL-MS-10, PG-Q-PR-LL-EL-MS-10 SS | 100% |  |
| PG-Q-PR-LL-EL-MA-20 |  | Power Panels (Pump, Street Light)(Completed) | 34d | 2026-05-12 A | 2026-06-24 A | PG-Q-PR-LL-EL-MS-20, PG-Q-PR-LL-EL-MS-20 SS | 100% |  |
| PG-Q-PR-LL-EL-MA-30 |  | Site Lighting Poles(Completed) | 34d | 2026-05-12 A | 2026-06-24 A | PG-Q-PR-LL-EL-MS-30, PG-Q-PR-LL-EL-MS-30 SS | 100% |  |
| PG-Q-PR-LL-EL-MA-40 |  | Lighting Fixtures(Completed) | 34d | 2026-05-12 A | 2026-06-24 A | PG-Q-PR-LL-EL-MS-40, PG-Q-PR-LL-EL-MS-40 SS | 100% |  |
| PG-Q-PR-LL-EL-MA-50 |  | Grounding System Materials (Earth pit rod, LPS, etc)(Completed) | 34d | 2026-05-12 A | 2026-06-24 A | PG-Q-PR-LL-EL-MS-50, PG-Q-PR-LL-EL-MS-50 SS | 100% |  |
| PG-Q-PR-LL-EL-MA-60 |  | Telecommunications & Data System Materials (Telephone outlet, CCTV, etc)(Completed) | 34d | 2026-05-12 A | 2026-06-24 A | PG-Q-PR-LL-EL-MS-60, PG-Q-PR-LL-EL-MS-60 SS | 100% |  |
| PG-Q-PR-LL-EL-MA-70 |  | Security and Access Control System Materials(Completed) | 34d | 2026-05-12 A | 2026-06-24 A | PG-Q-PR-LL-EL-MS-70, PG-Q-PR-LL-EL-MS-70 SS | 100% |  |
| PG-Q-PR-LL-EL-MA-80 |  | Fire Alarm System Materials(Completed) | 34d | 2026-05-12 A | 2026-06-24 A | PG-Q-PR-LL-EL-MS-80, PG-Q-PR-LL-EL-MS-80 SS | 100% |  |
| PG-Q-PR-LL-EL-MA-10_R |  | Main Distribution Board(Remaining) | 7d | 2026-06-25 | 2026-07-02 | PG-Q-PR-LL-EL-MS-10, PG-Q-PR-LL-EL-MS-10 SS, PG-Q-PR-LL-EL-MA-10 |  | 10d |
| PG-Q-PR-LL-EL-MA-20_R |  | Power Panels (Pump, Street Light)(Remaining) | 7d | 2026-06-25 | 2026-07-02 | PG-Q-PR-LL-EL-MS-20, PG-Q-PR-LL-EL-MS-20 SS, PG-Q-PR-LL-EL-MA-20 |  | 27d |
| PG-Q-PR-LL-EL-MA-30_R |  | Site Lighting Poles(Remaining) | 7d | 2026-06-25 | 2026-07-02 | PG-Q-PR-LL-EL-MS-30, PG-Q-PR-LL-EL-MS-30 SS, PG-Q-PR-LL-EL-MA-30 |  | 17d |
| PG-Q-PR-LL-EL-MA-40_R |  | Lighting Fixtures(Remaining) | 7d | 2026-06-25 | 2026-07-02 | PG-Q-PR-LL-EL-MS-40, PG-Q-PR-LL-EL-MS-40 SS, PG-Q-PR-LL-EL-MA-40 |  | 12d |
| PG-Q-PR-LL-EL-MA-50_R |  | Grounding System Materials (Earth pit rod, LPS, etc)(Remaining) | 7d | 2026-06-25 | 2026-07-02 | PG-Q-PR-LL-EL-MS-50, PG-Q-PR-LL-EL-MS-50 SS, PG-Q-PR-LL-EL-MA-50 |  | 7d |
| PG-Q-PR-LL-EL-MA-60_R |  | Telecommunications & Data System Materials (Telephone outlet, CCTV, etc)(Remaining) | 7d | 2026-06-25 | 2026-07-02 | PG-Q-PR-LL-EL-MS-60, PG-Q-PR-LL-EL-MS-60 SS, PG-Q-PR-LL-EL-MA-60 |  | 27d |
| PG-Q-PR-LL-EL-MA-70_R |  | Security and Access Control System Materials(Remaining) | 7d | 2026-06-25 | 2026-07-02 | PG-Q-PR-LL-EL-MS-70, PG-Q-PR-LL-EL-MS-70 SS, PG-Q-PR-LL-EL-MA-70 |  | 41d |
| PG-Q-PR-LL-EL-MA-80_R |  | Fire Alarm System Materials(Remaining) | 7d | 2026-06-25 | 2026-07-02 | PG-Q-PR-LL-EL-MS-80, PG-Q-PR-LL-EL-MS-80 SS, PG-Q-PR-LL-EL-MA-80 |  | 30d |
|  | 2 | **SHORT LEAD ITEMS** |  | 2026-02-21 | 2026-03-26 |  |  |  |
|  | 1 | **EXTERNAL / LANDSCAPE WORK** |  | 2026-02-21 | 2026-03-26 |  |  |  |
| PG-Q-PR-SL-LS-MA-10 |  | Backfilling Materials | 25d | 2026-02-21 A | 2026-03-26 A | PG-Q-PR-SL-LS-MS-10 | 100% |  |
| PG-Q-PR-SL-LS-MA-30 |  | Compacted Natural Ground Soil | 22d | 2026-02-25 A | 2026-03-26 A | PG-Q-PR-SL-LS-MS-30 | 100% |  |
| PG-Q-PR-SL-LS-MA-20 |  | Interlock tiles | 2d | 2026-03-25 A | 2026-03-26 A | PG-Q-PR-SL-LS-MS-20 | 100% |  |
| PG-Q-PR-SL-LS-MA-40 |  | Curb Stone | 2d | 2026-03-25 A | 2026-03-26 A | PG-Q-PR-SL-LS-MS-40 | 100% |  |
| PG-Q-PR-SL-LS-MA-50 |  | Thermoplastic pavement road marking | 2d | 2026-03-25 A | 2026-03-26 A | PG-Q-PR-SL-LS-MS-50 | 100% |  |
| PG-Q-PR-SL-LS-MA-60 |  | Traffic Signages | 2d | 2026-03-25 A | 2026-03-26 A | PG-Q-PR-SL-LS-MS-60 | 100% |  |
| PG-Q-PR-SL-LS-MA-70 |  | Trees | 2d | 2026-03-25 A | 2026-03-26 A | PG-Q-PR-SL-LS-MS-70 | 100% |  |
| PG-Q-PR-SL-LS-MA-80 |  | Lawn | 2d | 2026-03-25 A | 2026-03-26 A | PG-Q-PR-SL-LS-MS-80 | 100% |  |
|  | 3 | **CONCRETE WORK** |  | 2026-02-23 | 2026-03-26 |  |  |  |
| PG-Q-PR-SL-CO-MA-10 |  | Steel Rebar | 14d | 2026-02-23 A | 2026-03-10 A | PG-Q-PR-SL-CO-MS-10 | 100% |  |
| PG-Q-PR-SL-CO-MA-20 |  | Concrete | 9d | 2026-03-01 A | 2026-03-10 A | PG-Q-PR-SL-CO-MS-20 | 100% |  |
| PG-Q-PR-SL-CO-MA-40 |  | CMU Block | 15d | 2026-03-05 A | 2026-03-26 A | PG-Q-PR-SL-CO-MS-40 | 100% |  |
| PG-Q-PR-SL-CO-MA-50 |  | Concrete Repair & Protection Materials | 15d | 2026-03-05 A | 2026-03-26 A | PG-Q-PR-SL-CO-MS-50 | 100% |  |
| PG-Q-PR-SL-CO-MA-30 |  | Screed | 1d | 2026-03-26 A | 2026-03-26 A | PG-Q-PR-SL-CO-MS-30 | 100% |  |
|  | 4 | **ARCHITECTURAL & FINISHES WORK** |  | 2026-02-25 | 2026-03-16 |  |  |  |
| PG-Q-PR-SL-AR-MA-40 |  | Cement Plaster | 17d | 2026-02-25 A | 2026-03-16 A | PG-Q-PR-SL-AR-MS-40 | 100% |  |
| PG-Q-PR-SL-AR-MA-50 |  | Acrylic Paint | 14d | 2026-03-01 A | 2026-03-16 A | PG-Q-PR-SL-AR-MS-50 | 100% |  |
| PG-Q-PR-SL-AR-MA-10 |  | Ceramic tiles | 2d | 2026-03-15 A | 2026-03-16 A | PG-Q-PR-SL-AR-MS-10 | 100% |  |
| PG-Q-PR-SL-AR-MA-100 |  | Gypsum Boards | 2d | 2026-03-15 A | 2026-03-16 A | PG-Q-PR-SL-AR-MS-100 | 100% |  |
| PG-Q-PR-SL-AR-MA-110 |  | Specialities Materials (Toilet accessories, lockers, logo, etc) | 2d | 2026-03-15 A | 2026-03-16 A | PG-Q-PR-SL-AR-MS-110 | 100% |  |
| PG-Q-PR-SL-AR-MA-120 |  | Waterproofing System Materials | 2d | 2026-03-15 A | 2026-03-16 A | PG-Q-PR-SL-AR-MS-120 | 100% |  |

| ID | WBS | Task | Duration | Start | Finish | Predecessors | Complete | Total float |
| --- | --- | --- | --- | --- | --- | --- | --- | --- |
| PG-Q-PR-SL-AR-MA-20 |  | Anti-slip Granite tiles | 2d | 2026-03-15 A | 2026-03-16 A | PG-Q-PR-SL-AR-MS-20 | 100% |  |
| PG-Q-PR-SL-AR-MA-30 |  | Epoxy Paint | 2d | 2026-03-15 A | 2026-03-16 A | PG-Q-PR-SL-AR-MS-30 | 100% |  |
| PG-Q-PR-SL-AR-MA-60 |  | Stone Cladding | 2d | 2026-03-15 A | 2026-03-16 A | PG-Q-PR-SL-AR-MS-60 | 100% |  |
| PG-Q-PR-SL-AR-MA-70 |  | Aluminum Plates | 2d | 2026-03-15 A | 2026-03-16 A | PG-Q-PR-SL-AR-MS-70 | 100% |  |
| PG-Q-PR-SL-AR-MA-80 |  | Phenolic Partition | 2d | 2026-03-15 A | 2026-03-16 A | PG-Q-PR-SL-AR-MS-80 | 100% |  |
| PG-Q-PR-SL-AR-MA-90 |  | Glass Partition | 2d | 2026-03-15 A | 2026-03-16 A | PG-Q-PR-SL-AR-MS-90 | 100% |  |
|  | 5 | **METAL WORK** |  | 2026-03-09 | 2026-03-26 |  |  |  |
| PG-Q-PR-SL-MT-MA-20 |  | Galvanized Steel Roof Scupper | 12d | 2026-03-09 A | 2026-03-26 A | PG-Q-PR-SL-MT-MS-20 | 100% |  |
| PG-Q-PR-SL-MT-MA-30 |  | Galvanized Steel Cover with frame | 12d | 2026-03-09 A | 2026-03-26 A | PG-Q-PR-SL-MT-MS-30 | 100% |  |
| PG-Q-PR-SL-MT-MA-10 |  | Galvanized Steel Ladder | 9d | 2026-03-12 A | 2026-03-26 A | PG-Q-PR-SL-MT-MS-10 | 100% |  |
|  | 6 | **HVAC WORK** |  | 2026-02-28 | 2026-03-26 |  |  |  |
| PG-Q-PR-SL-AC-MA-10 |  | Split Air Conditioning Unit | 20d | 2026-02-28 A | 2026-03-26 A | PG-Q-PR-SL-AC-MS-10 | 100% |  |
| PG-Q-PR-SL-AC-MA-20 |  | Air Duct | 16d | 2026-03-04 A | 2026-03-26 A | PG-Q-PR-SL-AC-MS-20 | 100% |  |
| PG-Q-PR-SL-AC-MA-30 |  | Diffusers and Grills | 11d | 2026-03-10 A | 2026-03-26 A | PG-Q-PR-SL-AC-MS-30 | 100% |  |
| PG-Q-PR-SL-AC-MA-40 |  | Exhaust fans | 11d | 2026-03-10 A | 2026-03-26 A | PG-Q-PR-SL-AC-MS-40 | 100% |  |
|  | 7 | **PLUMBING WORK** |  | 2026-03-25 | 2026-03-26 |  |  |  |
| PG-Q-PR-SL-PB-MA-10 |  | PPR Pipes & Valves | 2d | 2026-03-25 A | 2026-03-26 A | PG-Q-PR-SL-PB-MS-10 | 100% |  |
| PG-Q-PR-SL-PB-MA-20 |  | UPCV Pipes | 2d | 2026-03-25 A | 2026-03-26 A | PG-Q-PR-SL-PB-MS-20 | 100% |  |
| PG-Q-PR-SL-PB-MA-30 |  | Sanitary Drainage Fixtures | 2d | 2026-03-25 A | 2026-03-26 A | PG-Q-PR-SL-PB-MS-30 | 100% |  |
|  | 8 | **IRRIGATION WORK** |  | 2026-03-03 | 2026-03-26 |  |  |  |
| PG-Q-PR-SL-IR-MA-10 |  | Gate Valve including valve box | 17d | 2026-03-03 A | 2026-03-26 A | PG-Q-PR-SL-IR-MS-10 | 100% |  |
| PG-Q-PR-SL-IR-MA-20 |  | Bulbblers and Spreyers | 12d | 2026-03-09 A | 2026-03-26 A | PG-Q-PR-SL-IR-MS-20 | 100% |  |
|  | 9 | **ELECTRICAL WORK** |  | 2026-03-25 | 2026-03-26 |  |  |  |
| PG-Q-PR-SL-EL-MA-10 |  | Wiring Devices Materials | 2d | 2026-03-25 A | 2026-03-26 A | PG-Q-PR-SL-EL-MS-10 | 100% |  |
|  | 10 | **FIRE FIGHTING WORK** |  | 2026-03-25 | 2026-03-26 |  |  |  |
| PG-Q-PR-SL-FF-MA-10 |  | Fire Extinguishers | 2d | 2026-03-25 A | 2026-03-26 A | PG-Q-PR-SL-FF-MS-10 | 100% |  |
|  | PR | **PROCUREMENT** |  | 2026-03-03 | 2026-08-27 |  |  |  |
|  | 1 | **LONG LEAD ITEMS** |  | 2026-03-18 | 2026-08-27 |  |  |  |
|  | 2 | **PURCHASE ORDER** |  | 2026-03-18 | 2026-07-12 |  |  |  |
|  | 1 | **EXTERNAL / LANDSCAPE WORK** |  | 2026-05-06 | 2026-05-11 |  |  |  |
| PG-Q-PR-LL-LS-PO-10 |  | Bike and Walk Path Materials | 5.25d | 2026-05-06 A | 2026-05-11 A | PG-Q-PR-LL-LS-MA-10 | 100% |  |
| PG-Q-PR-LL-LS-PO-20 |  | Benches, Seats (Rectangular & Circular) | 5.25d | 2026-05-06 A | 2026-05-11 A | PG-Q-PR-LL-LS-MA-20 | 100% |  |
| PG-Q-PR-LL-LS-PO-30 |  | Fence, gates and accessories | 5.25d | 2026-05-06 A | 2026-05-11 A | PG-Q-PR-LL-LS-MA-30 | 100% |  |
|  | 2 | **SPORTS & RECREATIONAL FACILITIES WORK** |  | 2026-03-26 | 2026-07-09 |  |  |  |
| PG-Q-PR-LL-SP-PO-40 |  | Tartan Floor | 36.25d | 2026-03-26 A | 2026-05-06 A | PG-Q-PR-LL-SP-MA-40, PG-Q-PR-LL-SP-MA-40 SS | 100% |  |
| PG-Q-PR-LL-SP-PO-10 |  | Football Playground Materials (Flooring, goal post, nets, paints, etc) | 35.25d | 2026-03-28 A | 2026-05-06 A | PG-Q-PR-LL-SP-MA-10, PG-Q-PR-LL-SP-MA-10 SS | 100% |  |
| PG-Q-PR-LL-SP-PO-20 |  | Basketball Playground Materials (Flooring, basketball poll, nets, paints, etc) | 35.25d | 2026-03-28 A | 2026-05-06 A | PG-Q-PR-LL-SP-MA-20, PG-Q-PR-LL-SP-MA-20 SS | 100% |  |
| PG-Q-PR-LL-SP-PO-30 |  | Padel Playgound Materials (Flooring, fence, tempered glass, etc) | 35.25d | 2026-03-28 A | 2026-05-06 A | PG-Q-PR-LL-SP-MA-30, PG-Q-PR-LL-SP-MA-30 SS | 100% |  |
| PG-Q-PR-LL-SP-PO-50 |  | Air Dome Materials | 8d | 2026-07-01 | 2026-07-09 | PG-Q-PR-LL-SP-MA-50_R |  | 0d |
|  | 3 | **CONCRETE WORK** |  | 2026-03-18 | 2026-05-06 |  |  |  |
| PG-Q-PR-LL-CO-PO-10 |  | Autoclaved Aerated Panel | 39.25d | 2026-03-18 A | 2026-05-06 A | PG-Q-PR-LL-CO-MA-10 | 100% |  |
|  | 5 | **METAL WORK** |  | 2026-03-26 | 2026-05-06 |  |  |  |
| PG-Q-PR-LL-MT-PO-10 |  | Metal Doors | 36.25d | 2026-03-26 A | 2026-05-06 A | PG-Q-PR-LL-MT-MS-10, PG-Q-PR-LL-MT-MA-10 SS | 100% |  |
| PG-Q-PR-LL-MT-PO-20 |  | Curtain Wall | 36.25d | 2026-03-26 A | 2026-05-06 A | PG-Q-PR-LL-MT-MS-20, PG-Q-PR-LL-MT-MA-20 SS | 100% |  |
|  | 7 | **PLUMBING WORK** |  | 2026-03-29 | 2026-05-06 |  |  |  |
| PG-Q-PR-LL-PB-PO-10 |  | Booster Pump | 34.25d | 2026-03-29 A | 2026-05-06 A | PG-Q-PR-LL-PB-MS-10, PG-Q-PR-LL-PB-MA-10 SS | 100% |  |
| PG-Q-PR-LL-PB-PO-20 |  | GRP Sectional Panel Water Tanks (4x3x3m) | 30.25d | 2026-04-02 A | 2026-05-06 A | PG-Q-PR-LL-PB-MS-20, PG-Q-PR-LL-PB-MA-20 SS | 100% |  |
|  | 8 | **IRRIGATION WORK** |  | 2026-03-25 | 2026-05-06 |  |  |  |
| PG-Q-PR-LL-IR-PO-10 |  | HDPE Pipes | 37.25d | 2026-03-25 A | 2026-05-06 A | PG-Q-PR-LL-IR-MA-10 | 100% |  |
| PG-Q-PR-LL-IR-PO-20 |  | Irrigation Control System | 37.25d | 2026-03-25 A | 2026-05-06 A | PG-Q-PR-LL-IR-MA-20 | 100% |  |
|  | 9 | **ELECTRICAL WORK** |  | 2026-05-13 | 2026-07-12 |  |  |  |
| PG-Q-PR-LL-EL-PO-10 |  | Main Distribution Board(Completed) | 33.25d | 2026-05-13 A | 2026-06-24 A | PG-Q-PR-LL-EL-MA-10 SS | 100% |  |
| PG-Q-PR-LL-EL-PO-20 |  | Power Panels (Pump, Street Light)(Completed) | 33.25d | 2026-05-13 A | 2026-06-24 A | PG-Q-PR-LL-EL-MA-20 SS | 100% |  |
| PG-Q-PR-LL-EL-PO-30 |  | Site Lighting Poles(Completed) | 33.25d | 2026-05-13 A | 2026-06-24 A | PG-Q-PR-LL-EL-MA-30 SS | 100% |  |
| PG-Q-PR-LL-EL-PO-40 |  | Lighting Fixtures(Completed) | 33.25d | 2026-05-13 A | 2026-06-24 A | PG-Q-PR-LL-EL-MA-40 SS | 100% |  |
| PG-Q-PR-LL-EL-PO-50 |  | Grounding System Materials (Earth pit rod, LPS, etc)(Completed) | 33.25d | 2026-05-13 A | 2026-06-24 A | PG-Q-PR-LL-EL-MA-50 SS | 100% |  |
| PG-Q-PR-LL-EL-PO-60 |  | Telecommunications & Data System Materials (Telephone outlet, CCTV, etc)(Completed) | 33.25d | 2026-05-13 A | 2026-06-24 A | PG-Q-PR-LL-EL-MA-60 SS | 100% |  |
| PG-Q-PR-LL-EL-PO-70 |  | Security and Access Control System Materials(Completed) | 33.25d | 2026-05-13 A | 2026-06-24 A | PG-Q-PR-LL-EL-MA-70 SS | 100% |  |
| PG-Q-PR-LL-EL-PO-80 |  | Fire Alarm System Materials(Completed) | 33.25d | 2026-05-13 A | 2026-06-24 A | PG-Q-PR-LL-EL-MA-80 SS | 100% |  |
| PG-Q-PR-LL-EL-PO-10_R |  | Main Distribution Board(Remaining) | 8d | 2026-07-04 | 2026-07-12 | PG-Q-PR-LL-EL-MA-10_R, PG-Q-PR-LL-EL-PO-10 |  | 10d |
| PG-Q-PR-LL-EL-PO-20_R |  | Power Panels (Pump, Street Light)(Remaining) | 8d | 2026-07-04 | 2026-07-12 | PG-Q-PR-LL-EL-MA-20_R, PG-Q-PR-LL-EL-PO-20 |  | 27d |
| PG-Q-PR-LL-EL-PO-30_R |  | Site Lighting Poles(Remaining) | 8d | 2026-07-04 | 2026-07-12 | PG-Q-PR-LL-EL-MA-30_R, PG-Q-PR-LL-EL-PO-30 |  | 17d |
| PG-Q-PR-LL-EL-PO-40_R |  | Lighting Fixtures(Remaining) | 8d | 2026-07-04 | 2026-07-12 | PG-Q-PR-LL-EL-MA-40_R, PG-Q-PR-LL-EL-PO-40 |  | 12d |
| PG-Q-PR-LL-EL-PO-50_R |  | Grounding System Materials (Earth pit rod, LPS, etc)(Remaining) | 8d | 2026-07-04 | 2026-07-12 | PG-Q-PR-LL-EL-MA-50_R, PG-Q-PR-LL-EL-PO-50 |  | 7d |
| PG-Q-PR-LL-EL-PO-60_R |  | Telecommunications & Data System Materials (Telephone outlet, CCTV, etc)(Remaining) | 8d | 2026-07-04 | 2026-07-12 | PG-Q-PR-LL-EL-MA-60_R, PG-Q-PR-LL-EL-PO-60 |  | 27d |
| PG-Q-PR-LL-EL-PO-70_R |  | Security and Access Control System Materials(Remaining) | 8d | 2026-07-04 | 2026-07-12 | PG-Q-PR-LL-EL-MA-70_R, PG-Q-PR-LL-EL-PO-70 |  | 41d |
| PG-Q-PR-LL-EL-PO-80_R |  | Fire Alarm System Materials(Remaining) | 8d | 2026-07-04 | 2026-07-12 | PG-Q-PR-LL-EL-MA-80_R, PG-Q-PR-LL-EL-PO-80 |  | 30d |
|  | 3 | **MANUFACTURE / FABRICATION** |  | 2026-05-05 | 2026-08-11 |  |  |  |
|  | 1 | **EXTERNAL / LANDSCAPE WORK** |  | 2026-05-05 | 2026-07-23 |  |  |  |
| PG-Q-PR-LL-LS-MF-10 |  | Bike and Walk Path Materials(Completed) | 40.25d | 2026-05-05 A | 2026-06-24 A | PG-Q-PR-LL-LS-PO-10 | 100% |  |

| ID | WBS | Task | Duration | Start | Finish | Predecessors | Complete | Total float |
| --- | --- | --- | --- | --- | --- | --- | --- | --- |
| PG-Q-PR-LL-LS-MF-20 |  | Benches, Seats (Rectangular & Circular)(Completed) | 40.25d | 2026-05-05 A | 2026-06-24 A | PG-Q-PR-LL-LS-PO-20 | 100% |  |
| PG-Q-PR-LL-LS-MF-30 |  | Fence, gates and accessories(Completed) | 40.25d | 2026-05-05 A | 2026-06-24 A | PG-Q-PR-LL-LS-PO-30 | 100% |  |
| PG-Q-PR-LL-LS-MF-10_R |  | Bike and Walk Path Materials(Remaining) | 10d | 2026-06-25 | 2026-07-06 | PG-Q-PR-LL-LS-PO-10, PG-Q-PR-LL-LS-MF-10 |  | 25d |
| PG-Q-PR-LL-LS-MF-20_R |  | Benches, Seats (Rectangular & Circular)(Remaining) | 25d | 2026-06-25 | 2026-07-23 | PG-Q-PR-LL-LS-PO-20, PG-Q-PR-LL-LS-MF-20 |  | 84d |
| PG-Q-PR-LL-LS-MF-30_R |  | Fence, gates and accessories(Remaining) | 25d | 2026-06-25 | 2026-07-23 | PG-Q-PR-LL-LS-PO-30, PG-Q-PR-LL-LS-MF-30 |  | 12d |
|  | 2 | **SPORTS & RECREATIONAL FACILITIES WORK** |  | 2026-05-05 | 2026-08-11 |  |  |  |
| PG-Q-PR-LL-SP-MF-10 |  | Football Playground Materials (Flooring, goal post, nets, paints, etc)(Completed) | 40.25d | 2026-05-05 A | 2026-06-24 A | PG-Q-PR-LL-SP-PO-10 | 100% |  |
| PG-Q-PR-LL-SP-MF-20 |  | Basketball Playground Materials (Flooring, basketball poll, nets, paints, etc)(Completed) | 40.25d | 2026-05-05 A | 2026-06-24 A | PG-Q-PR-LL-SP-PO-20 | 100% |  |
| PG-Q-PR-LL-SP-MF-30 |  | Padel Playgound Materials (Flooring, fence, tempered glass, etc)(Completed) | 40.25d | 2026-05-05 A | 2026-06-24 A | PG-Q-PR-LL-SP-PO-30 | 100% |  |
| PG-Q-PR-LL-SP-MF-40 |  | Tartan Floor(Completed) | 40.25d | 2026-05-05 A | 2026-06-24 A | PG-Q-PR-LL-SP-PO-40 | 100% |  |
| PG-Q-PR-LL-SP-MF-10_R |  | Football Playground Materials (Flooring, goal post, nets, paints, etc)(Remaining) | 25d | 2026-06-25 | 2026-07-23 | PG-Q-PR-LL-SP-PO-10, PG-Q-PR-LL-SP-MF-10 |  | 54d |
| PG-Q-PR-LL-SP-MF-20_R |  | Basketball Playground Materials (Flooring, basketball poll, nets, paints, etc)(Remaining) | 25d | 2026-06-25 | 2026-07-23 | PG-Q-PR-LL-SP-PO-20, PG-Q-PR-LL-SP-MF-20 |  | 57d |
| PG-Q-PR-LL-SP-MF-30_R |  | Padel Playgound Materials (Flooring, fence, tempered glass, etc)(Remaining) | 15d | 2026-06-25 | 2026-07-12 | PG-Q-PR-LL-SP-PO-30, PG-Q-PR-LL-SP-MF-30 |  | 22d |
| PG-Q-PR-LL-SP-MF-40_R |  | Tartan Floor(Remaining) | 25d | 2026-06-25 | 2026-07-23 | PG-Q-PR-LL-SP-PO-40, PG-Q-PR-LL-SP-MF-40 |  | 25d |
| PG-Q-PR-LL-SP-MF-50 |  | Air Dome Materials | 28d | 2026-07-11 | 2026-08-11 | PG-Q-PR-LL-SP-PO-50 |  | 0d |
|  | 3 | **CONCRETE WORK** |  | 2026-05-05 | 2026-07-12 |  |  |  |
| PG-Q-PR-LL-CO-MF-10 |  | Autoclaved Aerated Panel(Completed) | 40.25d | 2026-05-05 A | 2026-06-24 A | PG-Q-PR-LL-CO-PO-10 | 100% |  |
| PG-Q-PR-LL-CO-MF-10_R |  | Autoclaved Aerated Panel(Remaining) | 15d | 2026-06-25 | 2026-07-12 | PG-Q-PR-LL-CO-PO-10, PG-Q-PR-LL-CO-MF-10 |  | 7d |
|  | 5 | **METAL WORK** |  | 2026-05-05 | 2026-07-23 |  |  |  |
| PG-Q-PR-LL-MT-MF-10 |  | Metal Doors(Completed) | 40.25d | 2026-05-05 A | 2026-06-24 A | PG-Q-PR-LL-MT-PO-10 | 100% |  |
| PG-Q-PR-LL-MT-MF-20 |  | Curtain Wall(Completed) | 40.25d | 2026-05-05 A | 2026-06-24 A | PG-Q-PR-LL-MT-PO-20 | 100% |  |
| PG-Q-PR-LL-MT-MF-10_R |  | Metal Doors(Remaining) | 25d | 2026-06-25 | 2026-07-23 | PG-Q-PR-LL-MT-PO-10, PG-Q-PR-LL-MT-MF-10 |  | 56d |
| PG-Q-PR-LL-MT-MF-20_R |  | Curtain Wall(Remaining) | 25d | 2026-06-25 | 2026-07-23 | PG-Q-PR-LL-MT-PO-20, PG-Q-PR-LL-MT-MF-20 |  | 59d |
|  | 7 | **PLUMBING WORK** |  | 2026-05-05 | 2026-07-23 |  |  |  |
| PG-Q-PR-LL-PB-MF-10 |  | Booster Pump(Completed) | 40.25d | 2026-05-05 A | 2026-06-24 A | PG-Q-PR-LL-PB-PO-10 | 100% |  |
| PG-Q-PR-LL-PB-MF-20 |  | GRP Sectional Panel Water Tanks (4x3x3m)(Completed) | 40.25d | 2026-05-05 A | 2026-06-24 A | PG-Q-PR-LL-PB-PO-20 | 100% |  |
| PG-Q-PR-LL-PB-MF-10_R |  | Booster Pump(Remaining) | 25d | 2026-06-25 | 2026-07-23 | PG-Q-PR-LL-PB-PO-10, PG-Q-PR-LL-PB-MF-10 |  | 22d |
| PG-Q-PR-LL-PB-MF-20_R |  | GRP Sectional Panel Water Tanks (4x3x3m)(Remaining) | 25d | 2026-06-25 | 2026-07-23 | PG-Q-PR-LL-PB-PO-20, PG-Q-PR-LL-PB-MF-20 |  | 13d |
|  | 8 | **IRRIGATION WORK** |  | 2026-05-05 | 2026-07-06 |  |  |  |
| PG-Q-PR-LL-IR-MF-10 |  | HDPE Pipes(Completed) | 40.25d | 2026-05-05 A | 2026-06-24 A | PG-Q-PR-LL-IR-PO-10 | 100% |  |
| PG-Q-PR-LL-IR-MF-20 |  | Irrigation Control System(Completed) | 40.25d | 2026-05-05 A | 2026-06-24 A | PG-Q-PR-LL-IR-PO-20 | 100% |  |
| PG-Q-PR-LL-IR-MF-10_R |  | HDPE Pipes(Remaining) | 10d | 2026-06-25 | 2026-07-06 | PG-Q-PR-LL-IR-PO-10, PG-Q-PR-LL-IR-MF-10 |  | 28.4d |
| PG-Q-PR-LL-IR-MF-20_R |  | Irrigation Control System(Remaining) | 10d | 2026-06-25 | 2026-07-06 | PG-Q-PR-LL-IR-PO-20, PG-Q-PR-LL-IR-MF-20 |  | 30d |
|  | 9 | **ELECTRICAL WORK** |  | 2026-05-12 | 2026-08-10 |  |  |  |
| PG-Q-PR-LL-EL-MF-10 |  | Main Distribution Board(Completed) | 34.25d | 2026-05-12 A | 2026-06-24 A | PG-Q-PR-LL-EL-PO-10 SS | 100% |  |
| PG-Q-PR-LL-EL-MF-20 |  | Power Panels (Pump, Street Light)(Completed) | 34.25d | 2026-05-12 A | 2026-06-24 A | PG-Q-PR-LL-EL-PO-20 SS | 100% |  |
| PG-Q-PR-LL-EL-MF-30 |  | Site Lighting Poles(Completed) | 34.25d | 2026-05-12 A | 2026-06-24 A | PG-Q-PR-LL-EL-PO-30 SS | 100% |  |
| PG-Q-PR-LL-EL-MF-40 |  | Lighting Fixtures(Completed) | 34.25d | 2026-05-12 A | 2026-06-24 A | PG-Q-PR-LL-EL-PO-40 SS | 100% |  |
| PG-Q-PR-LL-EL-MF-50 |  | Grounding System Materials (Earth pit rod, LPS, etc)(Completed) | 34.25d | 2026-05-12 A | 2026-06-24 A | PG-Q-PR-LL-EL-PO-50 SS | 100% |  |
| PG-Q-PR-LL-EL-MF-60 |  | Telecommunications & Data System Materials (Telephone outlet, CCTV, etc)(Completed) | 34.25d | 2026-05-12 A | 2026-06-24 A | PG-Q-PR-LL-EL-PO-60 SS | 100% |  |
| PG-Q-PR-LL-EL-MF-70 |  | Security and Access Control System Materials(Completed) | 34.25d | 2026-05-12 A | 2026-06-24 A | PG-Q-PR-LL-EL-PO-70 SS | 100% |  |
| PG-Q-PR-LL-EL-MF-80 |  | Fire Alarm System Materials(Completed) | 34.25d | 2026-05-12 A | 2026-06-24 A | PG-Q-PR-LL-EL-PO-80 SS | 100% |  |
| PG-Q-PR-LL-EL-MF-10_R |  | Main Distribution Board(Remaining) | 25d | 2026-07-13 | 2026-08-10 | PG-Q-PR-LL-EL-PO-10_R, PG-Q-PR-LL-EL-MF-10 |  | 10d |
| PG-Q-PR-LL-EL-MF-20_R |  | Power Panels (Pump, Street Light)(Remaining) | 15d | 2026-07-13 | 2026-07-29 | PG-Q-PR-LL-EL-PO-20_R, PG-Q-PR-LL-EL-MF-20 |  | 27d |
| PG-Q-PR-LL-EL-MF-30_R |  | Site Lighting Poles(Remaining) | 25d | 2026-07-13 | 2026-08-10 | PG-Q-PR-LL-EL-PO-30_R, PG-Q-PR-LL-EL-MF-30 |  | 17d |
| PG-Q-PR-LL-EL-MF-40_R |  | Lighting Fixtures(Remaining) | 25d | 2026-07-13 | 2026-08-10 | PG-Q-PR-LL-EL-PO-40_R, PG-Q-PR-LL-EL-MF-40 |  | 12d |
| PG-Q-PR-LL-EL-MF-50_R |  | Grounding System Materials (Earth pit rod, LPS, etc)(Remaining) | 25d | 2026-07-13 | 2026-08-10 | PG-Q-PR-LL-EL-PO-50_R, PG-Q-PR-LL-EL-MF-50 |  | 7d |
| PG-Q-PR-LL-EL-MF-60_R |  | Telecommunications & Data System Materials (Telephone outlet, CCTV, etc)(Remaining) | 25d | 2026-07-13 | 2026-08-10 | PG-Q-PR-LL-EL-PO-60_R, PG-Q-PR-LL-EL-MF-60 |  | 27d |
| PG-Q-PR-LL-EL-MF-70_R |  | Security and Access Control System Materials(Remaining) | 25d | 2026-07-13 | 2026-08-10 | PG-Q-PR-LL-EL-PO-70_R, PG-Q-PR-LL-EL-MF-70 |  | 41d |
| PG-Q-PR-LL-EL-MF-80_R |  | Fire Alarm System Materials(Remaining) | 25d | 2026-07-13 | 2026-08-10 | PG-Q-PR-LL-EL-PO-80_R, PG-Q-PR-LL-EL-MF-80 |  | 30d |
|  | 4 | **DELIVERY TO SITE** |  | 2026-05-06 | 2026-08-27 |  |  |  |
|  | 1 | **EXTERNAL / LANDSCAPE WORK** |  | 2026-05-06 | 2026-08-10 |  |  |  |
| PG-Q-PR-LL-LS-DL-10 |  | Bike and Walk Path Materials(Completed) | 39d | 2026-05-06 A | 2026-06-24 A | PG-Q-PR-LL-LS-MF-10 SS | 100% |  |
| PG-Q-PR-LL-LS-DL-20 |  | Benches, Seats (Rectangular & Circular)(Completed) | 39d | 2026-05-06 A | 2026-06-24 A | PG-Q-PR-LL-LS-MF-20 SS | 100% |  |
| PG-Q-PR-LL-LS-DL-30 |  | Fence, gates and accessories(Completed) | 39d | 2026-05-06 A | 2026-06-24 A | PG-Q-PR-LL-LS-MF-30 SS | 100% |  |
| PG-Q-PR-LL-LS-DL-10_R |  | Bike and Walk Path Materials(Remaining) | 9d | 2026-07-07 | 2026-07-16 | PG-Q-PR-LL-LS-MF-10_R, PG-Q-PR-LL-LS-DL-10 |  | 25d |
| PG-Q-PR-LL-LS-DL-20_R |  | Benches, Seats (Rectangular & Circular)(Remaining) | 15d | 2026-07-25 | 2026-08-10 | PG-Q-PR-LL-LS-MF-20_R, PG-Q-PR-LL-LS-DL-20 |  | 84d |
| PG-Q-PR-LL-LS-DL-30_R |  | Fence, gates and accessories(Remaining) | 15d | 2026-07-25 | 2026-08-10 | PG-Q-PR-LL-LS-MF-30_R, PG-Q-PR-LL-LS-DL-30 |  | 12d |
|  | 2 | **SPORTS & RECREATIONAL FACILITIES WORK** |  | 2026-05-06 | 2026-08-23 |  |  |  |
| PG-Q-PR-LL-SP-DL-10 |  | Football Playground Materials (Flooring, goal post, nets, paints, etc)(Completed) | 39d | 2026-05-06 A | 2026-06-24 A | PG-Q-PR-LL-SP-MF-10 SS | 100% |  |
| PG-Q-PR-LL-SP-DL-20 |  | Basketball Playground Materials (Flooring, basketball poll, nets, paints, etc)(Completed) | 39d | 2026-05-06 A | 2026-06-24 A | PG-Q-PR-LL-SP-MF-20 SS | 100% |  |
| PG-Q-PR-LL-SP-DL-30 |  | Padel Playgound Materials (Fence, tempered glass, etc)(Completed) | 39d | 2026-05-06 A | 2026-06-24 A | PG-Q-PR-LL-SP-MF-30 SS | 100% |  |
| PG-Q-PR-LL-SP-DL-40 |  | Tartan Floor(Completed) | 39d | 2026-05-06 A | 2026-06-24 A | PG-Q-PR-LL-SP-MF-40 SS | 100% |  |
| PG-Q-PR-LL-SP-DL-30_R |  | Padel Playgound Materials (Fence, tempered glass, etc)(Remaining) | 15d | 2026-07-13 | 2026-07-29 | PG-Q-PR-LL-SP-MF-30_R, PG-Q-PR-LL-SP-DL-30 |  | 22d |
| PG-Q-PR-LL-SP-DL-10_R |  | Football Playground Materials (Flooring, goal post, nets, paints, etc)(Remaining) | 15d | 2026-07-25 | 2026-08-10 | PG-Q-PR-LL-SP-MF-10_R, PG-Q-PR-LL-SP-DL-10 |  | 54d |
| PG-Q-PR-LL-SP-DL-20_R |  | Basketball Playground Materials (Flooring, basketball poll, nets, paints, etc)(Remaining) | 15d | 2026-07-25 | 2026-08-10 | PG-Q-PR-LL-SP-MF-20_R, PG-Q-PR-LL-SP-DL-20 |  | 57d |
| PG-Q-PR-LL-SP-DL-40_R |  | Tartan Floor(Remaining) | 15d | 2026-07-25 | 2026-08-10 | PG-Q-PR-LL-SP-MF-40_R, PG-Q-PR-LL-SP-DL-40 |  | 25d |
| PG-Q-PR-LL-SP-DL-50 |  | Air Dome Materials | 10d | 2026-08-12 | 2026-08-23 | PG-Q-PR-LL-SP-MF-50, PG-Q-EN-AR-SD-AP-130, PG-Q-EN-AR-SD-AP-120, PG-Q-EN-AR-SD-AP-110, PG-Q-EN-ME-SD-AP-100, PG-Q-EN-EL-SD-AP-130, PG-Q-EN-EL-SD-AP-140 |  | 0d |
|  | 3 | **CONCRETE WORK** |  | 2026-05-06 | 2026-07-23 |  |  |  |
| PG-Q-PR-LL-CO-DL-10 |  | Autoclaved Aerated Panel(Completed) | 39d | 2026-05-06 A | 2026-06-24 A | PG-Q-PR-LL-CO-MF-10 SS | 100% |  |

| ID | WBS | Task | Duration | Start | Finish | Predecessors | Complete | Total float |
| --- | --- | --- | --- | --- | --- | --- | --- | --- |
| PG-Q-PR-LL-CO-DL-10_R |  | Autoclaved Aerated Panel(Remaining) | 10d | 2026-07-13 | 2026-07-23 | PG-Q-PR-LL-CO-MF-10_R, PG-Q-PR-LL-CO-DL-10 |  | 7d |
|  | 5 | **METAL WORK** |  | 2026-05-06 | 2026-08-10 |  |  |  |
| PG-Q-PR-LL-MT-DL-10 |  | Metal Doors(Completed) | 39d | 2026-05-06 A | 2026-06-24 A | PG-Q-PR-LL-MT-MF-10 SS | 100% |  |
| PG-Q-PR-LL-MT-DL-20 |  | Curtain Wall(Completed) | 39d | 2026-05-06 A | 2026-06-24 A | PG-Q-PR-LL-MT-MF-20 SS | 100% |  |
| PG-Q-PR-LL-MT-DL-10_R |  | Metal Doors(Remaining) | 15d | 2026-07-25 | 2026-08-10 | PG-Q-PR-LL-MT-MF-10_R, PG-Q-PR-LL-MT-DL-10 |  | 56d |
| PG-Q-PR-LL-MT-DL-20_R |  | Curtain Wall(Remaining) | 15d | 2026-07-25 | 2026-08-10 | PG-Q-PR-LL-MT-MF-20_R, PG-Q-PR-LL-MT-DL-20 |  | 59d |
|  | 7 | **PLUMBING WORK** |  | 2026-05-06 | 2026-08-10 |  |  |  |
| PG-Q-PR-LL-PB-DL-10 |  | Booster Pump(Completed) | 39d | 2026-05-06 A | 2026-06-24 A | PG-Q-PR-LL-PB-MF-10 SS | 100% |  |
| PG-Q-PR-LL-PB-DL-20 |  | GRP Sectional Panel Water Tanks (4x3x3m)(Completed) | 39d | 2026-05-06 A | 2026-06-24 A | PG-Q-PR-LL-PB-MF-20 SS | 100% |  |
| PG-Q-PR-LL-PB-DL-10_R |  | Booster Pump(Remaining) | 15d | 2026-07-25 | 2026-08-10 | PG-Q-PR-LL-PB-MF-10_R, PG-Q-PR-LL-PB-DL-10 |  | 22d |
| PG-Q-PR-LL-PB-DL-20_R |  | GRP Sectional Panel Water Tanks (4x3x3m)(Remaining) | 15d | 2026-07-25 | 2026-08-10 | PG-Q-PR-LL-PB-MF-20_R, PG-Q-PR-LL-PB-DL-20 |  | 13d |
|  | 8 | **IRRIGATION WORK** |  | 2026-05-06 | 2026-07-15 |  |  |  |
| PG-Q-PR-LL-IR-DL-10 |  | HDPE Pipes(Completed) | 39d | 2026-05-06 A | 2026-06-24 A | PG-Q-PR-LL-IR-MF-10 SS | 100% |  |
| PG-Q-PR-LL-IR-DL-20 |  | Irrigation Control System(Completed) | 39d | 2026-05-06 A | 2026-06-24 A | PG-Q-PR-LL-IR-MF-20 SS | 100% |  |
| PG-Q-PR-LL-IR-DL-10_R |  | HDPE Pipes(Remaining) | 7d | 2026-07-07 | 2026-07-14 | PG-Q-PR-LL-IR-MF-10_R, PG-Q-PR-LL-IR-DL-10 |  | 28.4d |
| PG-Q-PR-LL-IR-DL-20_R |  | Irrigation Control System(Remaining) | 8d | 2026-07-07 | 2026-07-15 | PG-Q-PR-LL-IR-MF-20_R, PG-Q-PR-LL-IR-DL-20 |  | 30d |
|  | 9 | **ELECTRICAL WORK** |  | 2026-05-13 | 2026-08-27 |  |  |  |
| PG-Q-PR-LL-EL-DL-10 |  | Main Distribution Board(Completed) | 33d | 2026-05-13 A | 2026-06-24 A | PG-Q-PR-LL-EL-MF-10 SS | 100% |  |
| PG-Q-PR-LL-EL-DL-20 |  | Power Panels (Pump, Street Light)(Completed) | 33d | 2026-05-13 A | 2026-06-24 A | PG-Q-PR-LL-EL-MF-20 SS | 100% |  |
| PG-Q-PR-LL-EL-DL-30 |  | Site Lighting Poles(Completed) | 33d | 2026-05-13 A | 2026-06-24 A | PG-Q-PR-LL-EL-MF-30 SS | 100% |  |
| PG-Q-PR-LL-EL-DL-40 |  | Lighting Fixtures(Completed) | 33d | 2026-05-13 A | 2026-06-24 A | PG-Q-PR-LL-EL-MF-40 SS | 100% |  |
| PG-Q-PR-LL-EL-DL-50 |  | Grounding System Materials (Earth pit rod, LPS, etc)(Completed) | 33d | 2026-05-13 A | 2026-06-24 A | PG-Q-PR-LL-EL-MF-50 SS | 100% |  |
| PG-Q-PR-LL-EL-DL-60 |  | Telecommunications & Data System Materials (Telephone outlet, CCTV, etc)(Completed) | 33d | 2026-05-13 A | 2026-06-24 A | PG-Q-PR-LL-EL-MF-60 SS | 100% |  |
| PG-Q-PR-LL-EL-DL-70 |  | Security and Access Control System Materials(Completed) | 33d | 2026-05-13 A | 2026-06-24 A | PG-Q-PR-LL-EL-MF-70 SS | 100% |  |
| PG-Q-PR-LL-EL-DL-80 |  | Fire Alarm System Materials(Completed) | 33d | 2026-05-13 A | 2026-06-24 A | PG-Q-PR-LL-EL-MF-80 SS | 100% |  |
| PG-Q-PR-LL-EL-DL-20_R |  | Power Panels (Pump, Street Light)(Remaining) | 10d | 2026-07-30 | 2026-08-10 | PG-Q-PR-LL-EL-MF-20_R, PG-Q-PR-LL-EL-DL-20 |  | 27d |
| PG-Q-PR-LL-EL-DL-10_R |  | Main Distribution Board(Remaining) | 15d | 2026-08-11 | 2026-08-27 | PG-Q-PR-LL-EL-MF-10_R, PG-Q-PR-LL-EL-DL-10 |  | 10d |
| PG-Q-PR-LL-EL-DL-30_R |  | Site Lighting Poles(Remaining) | 15d | 2026-08-11 | 2026-08-27 | PG-Q-PR-LL-EL-MF-30_R, PG-Q-PR-LL-EL-DL-30 |  | 17d |
| PG-Q-PR-LL-EL-DL-40_R |  | Lighting Fixtures(Remaining) | 15d | 2026-08-11 | 2026-08-27 | PG-Q-PR-LL-EL-MF-40_R, PG-Q-PR-LL-EL-DL-40 |  | 12d |
| PG-Q-PR-LL-EL-DL-50_R |  | Grounding System Materials (Earth pit rod, LPS, etc)(Remaining) | 15d | 2026-08-11 | 2026-08-27 | PG-Q-PR-LL-EL-MF-50_R, PG-Q-PR-LL-EL-DL-50 |  | 7d |
| PG-Q-PR-LL-EL-DL-60_R |  | Telecommunications & Data System Materials (Telephone outlet, CCTV, etc)(Remaining) | 15d | 2026-08-11 | 2026-08-27 | PG-Q-PR-LL-EL-MF-60_R, PG-Q-PR-LL-EL-DL-60 |  | 27d |
| PG-Q-PR-LL-EL-DL-70_R |  | Security and Access Control System Materials(Remaining) | 15d | 2026-08-11 | 2026-08-27 | PG-Q-PR-LL-EL-MF-70_R, PG-Q-PR-LL-EL-DL-70 |  | 41d |
| PG-Q-PR-LL-EL-DL-80_R |  | Fire Alarm System Materials(Remaining) | 15d | 2026-08-11 | 2026-08-27 | PG-Q-PR-LL-EL-MF-80_R, PG-Q-PR-LL-EL-DL-80 |  | 30d |
|  | 2 | **SHORT LEAD ITEMS** |  | 2026-03-03 | 2026-07-12 |  |  |  |
|  | 1 | **MATERIAL SUBMITTALS** |  |  |  |  |  |  |
|  | 2 | **PURCHASE ORDER** |  | 2026-03-03 | 2026-05-20 |  |  |  |
|  | 1 | **EXTERNAL / LANDSCAPE WORK** |  | 2026-03-03 | 2026-05-12 |  |  |  |
| PG-Q-PR-SL-LS-PO-10 |  | Backfilling Materials | 40.25d | 2026-03-03 A | 2026-04-22 A | PG-Q-PR-SL-LS-MA-10 | 100% |  |
| PG-Q-PR-SL-LS-PO-30 |  | Compacted Natural Ground Soil | 37.25d | 2026-03-07 A | 2026-04-22 A | PG-Q-PR-SL-LS-MA-30 | 100% |  |
| PG-Q-PR-SL-LS-PO-40 |  | Curb Stone | 28.25d | 2026-03-29 A | 2026-04-29 A | PG-Q-PR-SL-LS-MA-40 | 100% |  |
| PG-Q-PR-SL-LS-PO-20 |  | Interlock tiles | 25.25d | 2026-04-01 A | 2026-04-29 A | PG-Q-PR-SL-LS-MA-20 | 100% |  |
| PG-Q-PR-SL-LS-PO-50 |  | Thermoplastic pavement road marking | 2.25d | 2026-05-11 A | 2026-05-12 A | PG-Q-PR-SL-LS-MA-50 | 100% |  |
| PG-Q-PR-SL-LS-PO-60 |  | Traffic Signages | 2.25d | 2026-05-11 A | 2026-05-12 A | PG-Q-PR-SL-LS-MA-60 | 100% |  |
| PG-Q-PR-SL-LS-PO-70 |  | Trees | 2.25d | 2026-05-11 A | 2026-05-12 A | PG-Q-PR-SL-LS-MA-70 | 100% |  |
| PG-Q-PR-SL-LS-PO-80 |  | Lawn | 2.25d | 2026-05-11 A | 2026-05-12 A | PG-Q-PR-SL-LS-MA-80 | 100% |  |
|  | 3 | **CONCRETE WORK** |  | 2026-03-04 | 2026-04-22 |  |  |  |
| PG-Q-PR-SL-CO-PO-10 |  | Steel Rebar | 39.25d | 2026-03-04 A | 2026-04-22 A | PG-Q-PR-SL-CO-MA-10 | 100% |  |
| PG-Q-PR-SL-CO-PO-20 |  | Concrete | 34.25d | 2026-03-10 A | 2026-04-22 A | PG-Q-PR-SL-CO-MA-20 | 100% |  |
| PG-Q-PR-SL-CO-PO-40 |  | CMU Block | 30.25d | 2026-03-15 A | 2026-04-22 A | PG-Q-PR-SL-CO-MA-40 | 100% |  |
| PG-Q-PR-SL-CO-PO-50 |  | Concrete Repair & Protection Materials | 30.25d | 2026-03-15 A | 2026-04-22 A | PG-Q-PR-SL-CO-MA-50 | 100% |  |
| PG-Q-PR-SL-CO-PO-30 |  | Screed | 19.25d | 2026-04-01 A | 2026-04-22 A | PG-Q-PR-SL-CO-MA-30 | 100% |  |
|  | 4 | **ARCHITECTURAL & FINISHES WORK** |  | 2026-03-07 | 2026-05-05 |  |  |  |
| PG-Q-PR-SL-AR-PO-40 |  | Cement Plaster | 48.25d | 2026-03-07 A | 2026-05-05 A | PG-Q-PR-SL-AR-MA-40 | 100% |  |
| PG-Q-PR-SL-AR-PO-50 |  | Acrylic Paint | 45.25d | 2026-03-10 A | 2026-05-05 A | PG-Q-PR-SL-AR-MA-50 | 100% |  |
| PG-Q-PR-SL-AR-PO-80 |  | Phenolic Partition | 40.25d | 2026-03-16 A | 2026-05-05 A | PG-Q-PR-SL-AR-MA-80 | 100% |  |
| PG-Q-PR-SL-AR-PO-90 |  | Glass Partition | 40.25d | 2026-03-16 A | 2026-05-05 A | PG-Q-PR-SL-AR-MA-90 | 100% |  |
| PG-Q-PR-SL-AR-PO-10 |  | Ceramic tiles | 32.25d | 2026-03-30 A | 2026-05-05 A | PG-Q-PR-SL-AR-MA-10 | 100% |  |
| PG-Q-PR-SL-AR-PO-100 |  | Gypsum Boards | 32.25d | 2026-03-30 A | 2026-05-05 A | PG-Q-PR-SL-AR-MA-100 | 100% |  |
| PG-Q-PR-SL-AR-PO-110 |  | Specialities Materials (Toilet accessories, lockers, logo, etc) | 32.25d | 2026-03-30 A | 2026-05-05 A | PG-Q-PR-SL-AR-MA-110 | 100% |  |
| PG-Q-PR-SL-AR-PO-120 |  | Waterproofing System Materials | 32.25d | 2026-03-30 A | 2026-05-05 A | PG-Q-PR-SL-AR-MA-120 | 100% |  |
| PG-Q-PR-SL-AR-PO-20 |  | Anti-slip Granite tiles | 32.25d | 2026-03-30 A | 2026-05-05 A | PG-Q-PR-SL-AR-MA-20 | 100% |  |
| PG-Q-PR-SL-AR-PO-30 |  | Epoxy Paint | 32.25d | 2026-03-30 A | 2026-05-05 A | PG-Q-PR-SL-AR-MA-30 | 100% |  |
| PG-Q-PR-SL-AR-PO-60 |  | Stone Cladding | 30.25d | 2026-04-01 A | 2026-05-05 A | PG-Q-PR-SL-AR-MA-60 | 100% |  |
| PG-Q-PR-SL-AR-PO-70 |  | Aluminum Plates | 30.25d | 2026-04-01 A | 2026-05-05 A | PG-Q-PR-SL-AR-MA-70 | 100% |  |
|  | 5 | **METAL WORK** |  | 2026-03-25 | 2026-05-05 |  |  |  |
| PG-Q-PR-SL-MT-PO-10 |  | Galvanized Steel Ladder | 36.25d | 2026-03-25 A | 2026-05-05 A | PG-Q-PR-SL-MT-MA-10 | 100% |  |
| PG-Q-PR-SL-MT-PO-20 |  | Galvanized Steel Roof Scupper | 2.25d | 2026-05-04 A | 2026-05-05 A | PG-Q-PR-SL-MT-MA-20, PG-Q-PR-SL-MT-PO-10 | 100% |  |
| PG-Q-PR-SL-MT-PO-30 |  | Galvanized Steel Cover with frame | 2.25d | 2026-05-04 A | 2026-05-05 A | PG-Q-PR-SL-MT-MA-30, PG-Q-PR-SL-MT-PO-20 | 100% |  |
|  | 6 | **HVAC WORK** |  | 2026-03-09 | 2026-05-05 |  |  |  |
| PG-Q-PR-SL-AC-PO-10 |  | Split Air Conditioning Unit | 46.25d | 2026-03-09 A | 2026-05-05 A | PG-Q-PR-SL-AC-MA-10 | 100% |  |

| ID | WBS | Task | Duration | Start | Finish | Predecessors | Complete | Total float |
| --- | --- | --- | --- | --- | --- | --- | --- | --- |
| PG-Q-PR-SL-AC-PO-20 |  | Air Duct | 42.25d | 2026-03-14 A | 2026-05-05 A | PG-Q-PR-SL-AC-MA-20 | 100% |  |
| PG-Q-PR-SL-AC-PO-30 |  | Diffusers and Grills | 34.25d | 2026-03-28 A | 2026-05-05 A | PG-Q-PR-SL-AC-MA-30, PG-Q-PR-SL-AC-PO-20 | 100% |  |
| PG-Q-PR-SL-AC-PO-40 |  | Exhaust fans | 27.25d | 2026-04-05 A | 2026-05-05 A | PG-Q-PR-SL-AC-MA-40, PG-Q-PR-SL-AC-PO-10 | 100% |  |
|  | 7 | **PLUMBING WORK** |  | 2026-03-29 | 2026-05-05 |  |  |  |
| PG-Q-PR-SL-PB-PO-10 |  | PPR Pipes & Valves | 33.25d | 2026-03-29 A | 2026-05-05 A | PG-Q-PR-SL-PB-MA-10 | 100% |  |
| PG-Q-PR-SL-PB-PO-20 |  | UPCV Pipes | 33.25d | 2026-03-29 A | 2026-05-05 A | PG-Q-PR-SL-PB-MA-20 | 100% |  |
| PG-Q-PR-SL-PB-PO-30 |  | Sanitary Drainage Fixtures | 33.25d | 2026-03-29 A | 2026-05-05 A | PG-Q-PR-SL-PB-MA-30 | 100% |  |
|  | 8 | **IRRIGATION WORK** |  | 2026-03-12 | 2026-05-05 |  |  |  |
| PG-Q-PR-SL-IR-PO-10 |  | Gate Valve including valve box | 43.25d | 2026-03-12 A | 2026-05-05 A | PG-Q-PR-SL-IR-MA-10 | 100% |  |
| PG-Q-PR-SL-IR-PO-20 |  | Bulbblers and Spreyers | 38.25d | 2026-03-18 A | 2026-05-05 A | PG-Q-PR-SL-IR-MA-20 | 100% |  |
|  | 9 | **ELECTRICAL WORK** |  | 2026-05-12 | 2026-05-20 |  |  |  |
| PG-Q-PR-SL-EL-PO-10 |  | Wiring Devices Materials | 8.25d | 2026-05-12 A | 2026-05-20 A | PG-Q-PR-SL-EL-MA-10 | 100% |  |
|  | 10 | **FIRE FIGHTING WORK** |  | 2026-04-01 | 2026-05-05 |  |  |  |
| PG-Q-PR-SL-FF-PO-10 |  | Fire Extinguishers | 30.25d | 2026-04-01 A | 2026-05-05 A | PG-Q-PR-SL-FF-MA-10 | 100% |  |
|  | 3 | **DELIVERY TO SITE** |  | 2026-03-05 | 2026-07-12 |  |  |  |
|  | 1 | **EXTERNAL / LANDSCAPE WORK** |  | 2026-03-05 | 2026-07-08 |  |  |  |
| PG-Q-PR-SL-LS-DL-10 |  | Backfilling Materials | 39d | 2026-03-05 A | 2026-04-24 A | PG-Q-PR-SL-LS-PO-10 | 100% |  |
| PG-Q-PR-SL-LS-DL-20 |  | Interlock tiles | 12d | 2026-04-30 A | 2026-05-13 A | PG-Q-PR-SL-LS-PO-20, PG-Q-PR-SL-LS-DL-10 | 100% |  |
| PG-Q-PR-SL-LS-DL-30 |  | Compacted Natural Ground Soil | 12d | 2026-04-30 A | 2026-05-13 A | PG-Q-PR-SL-LS-PO-30 | 100% |  |
| PG-Q-PR-SL-LS-DL-40 |  | Curb Stone | 12d | 2026-04-30 A | 2026-05-13 A | PG-Q-PR-SL-LS-PO-40, PG-Q-PR-SL-LS-DL-10 | 100% |  |
| PG-Q-PR-SL-LS-DL-50 |  | Thermoplastic pavement road marking(Completed) | 39d | 2026-05-06 A | 2026-06-24 A | PG-Q-PR-SL-LS-PO-50, PG-Q-PR-SL-LS-DL-40 | 100% |  |
| PG-Q-PR-SL-LS-DL-60 |  | Traffic Signages(Completed) | 39d | 2026-05-06 A | 2026-06-24 A | PG-Q-PR-SL-LS-PO-60, PG-Q-PR-SL-LS-DL-50 SS | 100% |  |
| PG-Q-PR-SL-LS-DL-70 |  | Trees(Completed) | 39d | 2026-05-06 A | 2026-06-24 A | PG-Q-PR-SL-LS-PO-70, PG-Q-PR-SL-LS-DL-60 SS | 100% |  |
| PG-Q-PR-SL-LS-DL-80 |  | Lawn(Completed) | 39d | 2026-05-06 A | 2026-06-24 A | PG-Q-PR-SL-LS-PO-80, PG-Q-PR-SL-LS-DL-70 SS | 100% |  |
| PG-Q-PR-SL-LS-DL-50_R |  | Thermoplastic pavement road marking(Remaining) | 12d | 2026-06-25 | 2026-07-08 | PG-Q-PR-SL-LS-PO-50, PG-Q-PR-SL-LS-DL-40, PG-Q-PR-SL-LS-DL-50 |  | 85d |
| PG-Q-PR-SL-LS-DL-60_R |  | Traffic Signages(Remaining) | 12d | 2026-06-25 | 2026-07-08 | PG-Q-PR-SL-LS-PO-60, PG-Q-PR-SL-LS-DL-50_R SS, PG-Q-PR-SL-LS-DL-60 |  | 85d |
| PG-Q-PR-SL-LS-DL-70_R |  | Trees(Remaining) | 12d | 2026-06-25 | 2026-07-08 | PG-Q-PR-SL-LS-PO-70, PG-Q-PR-SL-LS-DL-60_R SS, PG-Q-PR-SL-LS-DL-70 |  | 85d |
| PG-Q-PR-SL-LS-DL-80_R |  | Lawn(Remaining) | 12d | 2026-06-25 | 2026-07-08 | PG-Q-PR-SL-LS-PO-80, PG-Q-PR-SL-LS-DL-70_R SS, PG-Q-PR-SL-LS-DL-80 |  | 85d |
|  | 3 | **CONCRETE WORK** |  | 2026-03-12 | 2026-05-13 |  |  |  |
| PG-Q-PR-SL-CO-DL-20 |  | Concrete | 50d | 2026-03-12 A | 2026-05-13 A | PG-Q-PR-SL-CO-PO-20, PG-Q-PR-SL-CO-DL-10, PG-Q-PR-SL-CO-DL-10 SS | 100% |  |
| PG-Q-PR-SL-CO-DL-10 |  | Steel Rebar | 18d | 2026-04-23 A | 2026-05-13 A | PG-Q-PR-SL-CO-PO-10 | 100% |  |
| PG-Q-PR-SL-CO-DL-30 |  | Screed | 18d | 2026-04-23 A | 2026-05-13 A | PG-Q-PR-SL-CO-PO-30, PG-Q-PR-SL-CO-DL-20 | 100% |  |
| PG-Q-PR-SL-CO-DL-40 |  | CMU Block | 18d | 2026-04-23 A | 2026-05-13 A | PG-Q-PR-SL-CO-PO-40, PG-Q-PR-SL-CO-DL-30, PG-Q-PR-SL-CO-DL-30 SS | 100% |  |
| PG-Q-PR-SL-CO-DL-50 |  | Concrete Repair & Protection Materials | 18d | 2026-04-23 A | 2026-05-13 A | PG-Q-PR-SL-CO-PO-50, PG-Q-PR-SL-CO-DL-40, PG-Q-PR-SL-CO-DL-40 SS | 100% |  |
|  | 4 | **ARCHITECTURAL & FINISHES WORK** |  | 2026-05-06 | 2026-05-13 |  |  |  |
| PG-Q-PR-SL-AR-DL-10 |  | Ceramic tiles | 7d | 2026-05-06 A | 2026-05-13 A | PG-Q-PR-SL-AR-PO-10 | 100% |  |
| PG-Q-PR-SL-AR-DL-100 |  | Gypsum Boards | 7d | 2026-05-06 A | 2026-05-13 A | PG-Q-PR-SL-AR-PO-100 | 100% |  |
| PG-Q-PR-SL-AR-DL-110 |  | Specialities Materials (Toilet accessories, lockers, logo, etc) | 7d | 2026-05-06 A | 2026-05-13 A | PG-Q-PR-SL-AR-PO-110 | 100% |  |
| PG-Q-PR-SL-AR-DL-120 |  | Waterproofing System Materials | 7d | 2026-05-06 A | 2026-05-13 A | PG-Q-PR-SL-AR-PO-120 | 100% |  |
| PG-Q-PR-SL-AR-DL-20 |  | Anti-slip Granite tiles | 7d | 2026-05-06 A | 2026-05-13 A | PG-Q-PR-SL-AR-PO-20, PG-Q-PR-SL-AR-DL-10 | 100% |  |
| PG-Q-PR-SL-AR-DL-30 |  | Epoxy Paint | 7d | 2026-05-06 A | 2026-05-13 A | PG-Q-PR-SL-AR-PO-30, PG-Q-PR-SL-AR-DL-20 | 100% |  |
| PG-Q-PR-SL-AR-DL-40 |  | Cement Plaster | 7d | 2026-05-06 A | 2026-05-13 A | PG-Q-PR-SL-AR-PO-40 | 100% |  |
| PG-Q-PR-SL-AR-DL-50 |  | Acrylic Paint | 7d | 2026-05-06 A | 2026-05-13 A | PG-Q-PR-SL-AR-PO-50, PG-Q-PR-SL-AR-DL-40 | 100% |  |
| PG-Q-PR-SL-AR-DL-60 |  | Stone Cladding | 7d | 2026-05-06 A | 2026-05-13 A | PG-Q-PR-SL-AR-PO-60, PG-Q-PR-SL-AR-DL-50 | 100% |  |
| PG-Q-PR-SL-AR-DL-70 |  | Aluminum Plates | 7d | 2026-05-06 A | 2026-05-13 A | PG-Q-PR-SL-AR-PO-70, PG-Q-PR-SL-AR-DL-50 | 100% |  |
| PG-Q-PR-SL-AR-DL-80 |  | Phenolic Partition | 7d | 2026-05-06 A | 2026-05-13 A | PG-Q-PR-SL-AR-PO-80 | 100% |  |
| PG-Q-PR-SL-AR-DL-90 |  | Glass Partition | 7d | 2026-05-06 A | 2026-05-13 A | PG-Q-PR-SL-AR-PO-90 | 100% |  |
|  | 5 | **METAL WORK** |  | 2026-05-06 | 2026-07-08 |  |  |  |
| PG-Q-PR-SL-MT-DL-10 |  | Galvanized Steel Ladder(Completed) | 39d | 2026-05-06 A | 2026-06-24 A | PG-Q-PR-SL-MT-PO-10 | 100% |  |
| PG-Q-PR-SL-MT-DL-20 |  | Galvanized Steel Roof Scupper(Completed) | 39d | 2026-05-06 A | 2026-06-24 A | PG-Q-PR-SL-MT-PO-20, PG-Q-PR-SL-MT-DL-10 SS | 100% |  |
| PG-Q-PR-SL-MT-DL-30 |  | Galvanized Steel Cover with frame(Completed) | 39d | 2026-05-06 A | 2026-06-24 A | PG-Q-PR-SL-MT-PO-30, PG-Q-PR-SL-MT-DL-20 SS | 100% |  |
| PG-Q-PR-SL-MT-DL-10_R |  | Galvanized Steel Ladder(Remaining) | 12d | 2026-06-25 | 2026-07-08 | PG-Q-PR-SL-MT-PO-10, PG-Q-PR-SL-MT-DL-10 |  | 93d |
| PG-Q-PR-SL-MT-DL-20_R |  | Galvanized Steel Roof Scupper(Remaining) | 12d | 2026-06-25 | 2026-07-08 | PG-Q-PR-SL-MT-PO-20, PG-Q-PR-SL-MT-DL-10_R SS, PG-Q-PR-SL-MT-DL-20 |  | 93d |
| PG-Q-PR-SL-MT-DL-30_R |  | Galvanized Steel Cover with frame(Remaining) | 12d | 2026-06-25 | 2026-07-08 | PG-Q-PR-SL-MT-PO-30, PG-Q-PR-SL-MT-DL-20_R SS, PG-Q-PR-SL-MT-DL-30 |  | 93d |
|  | 6 | **HVAC WORK** |  | 2026-05-06 | 2026-07-08 |  |  |  |
| PG-Q-PR-SL-AC-DL-10 |  | Split Air Conditioning Unit(Completed) | 39d | 2026-05-06 A | 2026-06-24 A | PG-Q-PR-SL-AC-PO-10 | 100% |  |
| PG-Q-PR-SL-AC-DL-20 |  | Air Duct(Completed) | 39d | 2026-05-06 A | 2026-06-24 A | PG-Q-PR-SL-AC-PO-20 | 100% |  |
| PG-Q-PR-SL-AC-DL-30 |  | Diffusers and Grills(Completed) | 39d | 2026-05-06 A | 2026-06-24 A | PG-Q-PR-SL-AC-PO-30, PG-Q-PR-SL-AC-DL-20 SS | 100% |  |
| PG-Q-PR-SL-AC-DL-40 |  | Exhaust fans(Completed) | 39d | 2026-05-06 A | 2026-06-24 A | PG-Q-PR-SL-AC-PO-40, PG-Q-PR-SL-AC-DL-20 SS | 100% |  |
| PG-Q-PR-SL-AC-DL-10_R |  | Split Air Conditioning Unit(Remaining) | 12d | 2026-06-25 | 2026-07-08 | PG-Q-PR-SL-AC-PO-10, PG-Q-PR-SL-AC-DL-10 |  | 45d |
| PG-Q-PR-SL-AC-DL-20_R |  | Air Duct(Remaining) | 12d | 2026-06-25 | 2026-07-08 | PG-Q-PR-SL-AC-PO-20, PG-Q-PR-SL-AC-DL-20 |  | 38d |
| PG-Q-PR-SL-AC-DL-30_R |  | Diffusers and Grills(Remaining) | 12d | 2026-06-25 | 2026-07-08 | PG-Q-PR-SL-AC-PO-30, PG-Q-PR-SL-AC-DL-20_R SS, PG-Q-PR-SL-AC-DL-30 |  | 45d |
| PG-Q-PR-SL-AC-DL-40_R |  | Exhaust fans(Remaining) | 12d | 2026-06-25 | 2026-07-08 | PG-Q-PR-SL-AC-PO-40, PG-Q-PR-SL-AC-DL-20_R SS, PG-Q-PR-SL-AC-DL-40 |  | 38d |
|  | 7 | **PLUMBING WORK** |  | 2026-05-06 | 2026-05-13 |  |  |  |
| PG-Q-PR-SL-PB-DL-10 |  | PPR Pipes & Valves | 7d | 2026-05-06 A | 2026-05-13 A | PG-Q-PR-SL-PB-PO-10 | 100% |  |
| PG-Q-PR-SL-PB-DL-20 |  | UPCV Pipes | 7d | 2026-05-06 A | 2026-05-13 A | PG-Q-PR-SL-PB-PO-20 | 100% |  |
| PG-Q-PR-SL-PB-DL-30 |  | Sanitary Drainage Fixtures | 7d | 2026-05-06 A | 2026-05-13 A | PG-Q-PR-SL-PB-PO-30, PG-Q-PR-SL-PB-DL-20 | 100% |  |
|  | 8 | **IRRIGATION WORK** |  | 2026-05-06 | 2026-07-08 |  |  |  |
| PG-Q-PR-SL-IR-DL-10 |  | Gate Valve including valve box(Completed) | 39d | 2026-05-06 A | 2026-06-24 A | PG-Q-PR-SL-IR-PO-10 | 100% |  |
| PG-Q-PR-SL-IR-DL-20 |  | Bulbblers and Spreyers(Completed) | 39d | 2026-05-06 A | 2026-06-24 A | PG-Q-PR-SL-IR-PO-20 | 100% |  |

| ID | WBS | Task | Duration | Start | Finish | Predecessors | Complete | Total float |
| --- | --- | --- | --- | --- | --- | --- | --- | --- |
| PG-Q-PR-SL-IR-DL-10_R |  | Gate Valve including valve box(Remaining) | 12d | 2026-06-25 | 2026-07-08 | PG-Q-PR-SL-IR-PO-10, PG-Q-PR-SL-IR-DL-10 |  | 33.4d |
| PG-Q-PR-SL-IR-DL-20_R |  | Bulbblers and Spreyers(Remaining) | 12d | 2026-06-25 | 2026-07-08 | PG-Q-PR-SL-IR-PO-20, PG-Q-PR-SL-IR-DL-20 |  | 39d |
|  | 9 | **ELECTRICAL WORK** |  | 2026-05-11 | 2026-07-12 |  |  |  |
| PG-Q-PR-SL-EL-DL-10 |  | Wiring Devices Materials(Completed) | 35d | 2026-05-11 A | 2026-06-24 A | PG-Q-PR-SL-EL-PO-10, PG-Q-PR-SL-EL-PO-10 SS | 100% |  |
| PG-Q-PR-SL-EL-DL-10_R |  | Wiring Devices Materials(Remaining) | 15d | 2026-06-25 | 2026-07-12 | PG-Q-PR-SL-EL-PO-10, PG-Q-PR-SL-EL-PO-10 SS, PG-Q-PR-SL-EL-DL-10 |  | 25d |
|  | 10 | **FIRE FIGHTING WORK** |  | 2026-05-06 | 2026-07-08 |  |  |  |
| PG-Q-PR-SL-FF-DL-10 |  | Fire Extinguishers(Completed) | 39d | 2026-05-06 A | 2026-06-24 A | PG-Q-PR-SL-FF-PO-10 | 100% |  |
| PG-Q-PR-SL-FF-DL-10_R |  | Fire Extinguishers(Remaining) | 12d | 2026-06-25 | 2026-07-08 | PG-Q-PR-SL-FF-PO-10, PG-Q-PR-SL-FF-DL-10 |  | 48d |
|  | CO | **CONSTRUCTION STAGE** |  | 2026-03-24 | 2026-12-16 |  |  |  |
|  | EX.SIT | **PLAYGROUND AND LANDSCAPING WORKS** |  | 2026-03-24 | 2026-12-16 |  |  |  |
|  | CF | **CUT AND FILL** |  | 2026-03-24 | 2026-05-06 |  |  |  |
| PG-Q-CON-EX-CF-10 |  | Existing Soil Excavation Works | 36d | 2026-03-24 A | 2026-05-04 A | PG-Q-EN-ST-SD-AP-10, PG-Q-EN-ST-SD-AP-30, PG-Q-MOB-SO-20, PG-Q-GEN-10, PG-Q-EN-ST-SD-AP-10 FF, PG-Q-EN-ST-SD-AP-30 FF, PG-Q-EN-ST-SD-AP-10 SS, PG-GN-MS-10 | 100% |  |
| PG-Q-CON-EX-CF-20 |  | Soil Replacement Works | 27d | 2026-04-05 A | 2026-05-05 A | PG-Q-CON-EX-CF-10, PG-Q-PR-SL-LS-DL-30, PG-Q-CON-EX-CF-10 SS, PG-Q-PR-SL-LS-DL-30 SS | 100% |  |
| PG-Q-CON-EX-CF-30 |  | Levelling & Backfilling Works | 18d | 2026-04-16 A | 2026-05-06 A | PG-Q-CON-EX-CF-20, PG-Q-PR-SL-LS-DL-10, PG-Q-MOB-CAM-40 | 100% |  |
|  | 1 | **PLAYGROUND WORKS** |  | 2026-04-21 | 2026-12-02 |  |  |  |
|  | FP | **FOOTBALL PLAYGROUND WORKS** |  | 2026-04-21 | 2026-11-17 |  |  |  |
| PG-Q-CON-EX-FB-10 |  | Subgrade Preparation and Compaction | 13.9d | 2026-04-21 A | 2026-05-06 A | PG-Q-EN-LS-SD-AP-90, PG-Q-CON-EX-CF-10, PG-Q-CON-EX-CF-20, PG-Q-CON-EX-CF-30 | 100% |  |
| PG-Q-CON-EX-FB-20 |  | Sub-Base Laying and Compaction | 10d | 2026-04-26 A | 2026-05-06 A | PG-Q-CON-EX-FB-10 | 100% |  |
| PG-Q-CON-EX-FB-30 |  | Base Course Laying and Compaction | 33d | 2026-05-06 A | 2026-06-17 A | PG-Q-CON-EX-FB-20, PG-Q-CON-EX-FB-10 | 100% |  |
| PG-Q-CON-EX-FB-40 |  | Tartan flooring(Completed) | 7d | 2026-06-17 A | 2026-06-24 A | PG-Q-CON-EX-FB-30, PG-Q-EN-LS-SD-AP-40, PG-Q-PR-LL-SP-DL-40 SS, PG-Q-PR-LL-SP-DL-10 SS, PG-Q-CON-EX-FB-10 | 100% |  |
| PG-Q-CON-EX-FB-80 |  | Fine Grading & Leveling | 10d | 2026-06-25 | 2026-07-06 | PG-Q-CON-EX-FB-10 |  | 2d |
| PG-Q-CON-EX-FB-70 |  | Topsoil Placement | 12d | 2026-07-07 | 2026-07-20 | PG-Q-CON-EX-FB-10, PG-Q-CON-EX-FB-80 |  | 2d |
| PG-Q-CON-EX-FB-50 |  | Goal Post Foundation | 25d | 2026-07-21 | 2026-08-18 | PG-Q-CON-EX-FB-10, PG-Q-CON-EX-FB-70 |  | 25d |
| PG-Q-CON-EX-FB-120 |  | Installation of Lighting System | 12d | 2026-08-19 | 2026-09-01 | PG-Q-CON-EX-FB-10, PG-Q-CON-EX-FB-50 |  | 25d |
| PG-Q-CON-EX-FB-90 |  | Turfing / Seeding Works | 10d | 2026-09-02 | 2026-09-13 | PG-Q-CON-EX-FB-10, PG-Q-CON-EX-FB-120 |  | 25d |
| PG-Q-CON-EX-FB-40_R |  | Tartan flooring(Remaining) | 15d | 2026-09-14 | 2026-10-01 | PG-Q-CON-EX-FB-30, PG-Q-EN-LS-SD-AP-40, PG-Q-PR-LL-SP-DL-40_R SS, PG-Q-PR-LL-SP-DL-10_R, PG-Q-CON-EX-FB-40, PG-Q-CON-EX-FB-10, PG-Q-CON-EX-FB-90 |  | 25d |
| PG-Q-CON-EX-FB-60 |  | Goal Post Installation & Alignment | 15d | 2026-10-03 | 2026-10-19 | PG-Q-CON-EX-FB-10, PG-Q-CON-EX-FB-40_R |  | 25d |
| PG-Q-CON-EX-FB-110 |  | Install Playground Benches | 17d | 2026-10-20 | 2026-11-08 | PG-Q-PR-LL-LS-DL-20_R, PG-Q-CON-EX-FB-10, PG-Q-CON-EX-FB-60 |  | 25d |
| PG-Q-CON-EX-FB-100 |  | Markings and Signages | 8d | 2026-11-09 | 2026-11-17 | PG-Q-CON-EX-FB-10, PG-Q-CON-EX-FB-110 |  | 25d |
|  | BP | **BASKETBALL PLAYGROUND WORKS** |  | 2026-04-30 | 2026-11-17 |  |  |  |
| PG-Q-CON-EX-BB-10 |  | Subgrade Preparation and Compaction | 5.9d | 2026-04-30 A | 2026-05-06 A | PG-Q-CON-EX-FB-10, PG-Q-EN-LS-SD-AP-110, PG-Q-EN-LS-SD-AP-120, PG-Q-CON-EX-FB-30 SS | 100% |  |
| PG-Q-CON-EX-BB-20 |  | Sub-Base Laying and Compaction | 1.1d | 2026-05-05 A | 2026-05-06 A | PG-Q-CON-EX-BB-10, PG-Q-CON-EX-FB-20 | 100% |  |
| PG-Q-CON-EX-BB-30 |  | Base Course Laying and Compaction | 33d | 2026-05-06 A | 2026-06-17 A | PG-Q-CON-EX-BB-20, PG-Q-CON-EX-BB-10 | 100% |  |
| PG-Q-CON-EX-BB-70 |  | Floor Surface Curing(Completed) | 7d | 2026-06-17 A | 2026-06-24 A | PG-Q-CON-EX-BB-30, PG-Q-CON-EX-BB-10 | 100% |  |
| PG-Q-CON-EX-BB-50 |  | Basketball Pole Foundation | 25d | 2026-06-25 | 2026-07-23 | PG-Q-CON-EX-BB-30, PG-Q-CON-EX-BB-10 |  | 25d |
| PG-Q-CON-EX-BB-70_R |  | Floor Surface Curing(Remaining) | 15d | 2026-07-25 | 2026-08-10 | PG-Q-CON-EX-BB-70, PG-Q-CON-EX-BB-10, PG-Q-CON-EX-BB-50 |  | 25d |
| PG-Q-CON-EX-BB-40 |  | Tartan flooring | 17d | 2026-08-11 | 2026-08-30 | PG-Q-CON-EX-BB-30, PG-Q-EN-LS-SD-AP-40, PG-Q-PR-LL-SP-DL-40_R, PG-Q-CON-EX-BB-10, PG-Q-CON-EX-BB-70_R |  | 25d |
| PG-Q-CON-EX-BB-80 |  | Court Line Marking | 15d | 2026-08-31 | 2026-09-16 | PG-Q-CON-EX-BB-10, PG-Q-CON-EX-BB-40 |  | 25d |
| PG-Q-CON-EX-BB-60 |  | Basketball Pole Installation & Alignment | 17d | 2026-09-17 | 2026-10-07 | PG-Q-PR-LL-SP-DL-20_R, PG-Q-CON-EX-BB-10, PG-Q-CON-EX-BB-80 |  | 25d |
| PG-Q-CON-EX-BB-90 |  | Backboard & Hoop Installation | 17d | 2026-10-08 | 2026-10-27 | PG-Q-CON-EX-BB-10, PG-Q-CON-EX-BB-60 |  | 25d |
| PG-Q-CON-EX-BB-100 |  | Install Playground Benches | 18d | 2026-10-28 | 2026-11-17 | PG-Q-PR-LL-LS-DL-20_R, PG-Q-CON-EX-BB-10, PG-Q-CON-EX-BB-90 |  | 25d |
|  | PP | **PADEL PLAYGROUND WORKS** |  | 2026-05-06 | 2026-12-02 |  |  |  |
| PG-Q-CON-EX-PD-10 |  | Excavation For Fence Footing(Completed) | 39d | 2026-05-06 A | 2026-06-24 A | PG-Q-CON-EX-CF-30, PG-Q-EN-ST-SD-AP-30, PG-Q-EN-LS-SD-AP-120, PG-Q-CON-EX-BB-20, PG-Q-EN-ST-SD-AP-30 FF | 100% |  |
| PG-Q-CON-EX-PD-20 |  | RC Foundations For Fence(Completed) | 27d | 2026-05-20 A | 2026-06-24 A | PG-Q-EN-ST-SD-AP-40, PG-Q-EN-ST-SD-AP-30, PG-Q-CON-EX-PD-10 SS | 100% |  |
| PG-Q-CON-EX-PD-30 |  | Tartan Flooring Layers(Completed) | 7d | 2026-06-17 A | 2026-06-24 A | PG-Q-EN-LS-SD-AP-40, PG-Q-CON-EX-FB-30, PG-Q-CON-EX-PD-20 SS, PG-Q-PR-LL-SP-DL-40 SS | 100% |  |
| PG-Q-CON-EX-PD-10_R |  | Excavation For Fence Footing(Remaining) | 7d | 2026-06-25 | 2026-07-02 | PG-Q-CON-EX-CF-30, PG-Q-EN-ST-SD-AP-30, PG-Q-EN-LS-SD-AP-120, PG-Q-CON-EX-BB-20, PG-Q-EN-ST-SD-AP-30 FF, PG-Q-CON-EX-PD-10 |  | 25d |
| PG-Q-CON-EX-PD-20_R |  | RC Foundations For Fence(Remaining) | 20d | 2026-07-04 | 2026-07-26 | PG-Q-EN-ST-SD-AP-40, PG-Q-EN-ST-SD-AP-30, PG-Q-CON-EX-PD-20, PG-Q-CON-EX-PD-10_R |  | 25d |
| PG-Q-CON-EX-PD-40 |  | Steel Structure & Fence Supports Installation | 18d | 2026-08-11 | 2026-08-31 | PG-Q-EN-LS-SD-AP-130, PG-Q-EN-LS-SD-AP-100, PG-Q-PR-LL-LS-DL-30_R, PG-Q-PR-LL-SP-DL-30_R, PG-Q-PR-LL-SP-DL-30_R FF, PG-Q-CON-EX-PD-20_R |  | 12d |
| PG-Q-CON-EX-PD-60 |  | Chain Link Fence & Gates Installation | 16d | 2026-09-01 | 2026-09-19 | PG-Q-EN-LS-SD-AP-130, PG-Q-CON-EX-PD-40 |  | 12d |
| PG-Q-CON-EX-PD-50 |  | Tempered Glass Installation | 17d | 2026-09-20 | 2026-10-10 | PG-Q-EN-LS-SD-AP-130, PG-Q-CON-EX-PD-60 |  | 12d |
| PG-Q-CON-EX-PD-30_R |  | Tartan Flooring Layers(Remaining) | 16d | 2026-10-11 | 2026-10-28 | PG-Q-EN-LS-SD-AP-40, PG-Q-CON-EX-FB-30, PG-Q-PR-LL-SP-DL-40_R SS, PG-Q-CON-EX-PD-30, PG-Q-CON-EX-PD-50 |  | 12d |
| PG-Q-CON-EX-PD-70 |  | Court Accessories Installation | 15d | 2026-10-29 | 2026-11-15 | PG-Q-CON-EX-PD-30_R |  | 12d |
| PG-Q-CON-EX-PD-80 |  | Install Playground Benches | 15d | 2026-11-16 | 2026-12-02 | PG-Q-PR-LL-LS-DL-20_R, PG-Q-CON-EX-PD-70 |  | 12d |
|  | GN.SI | **GENERAL SITE WORKS** |  | 2026-04-16 | 2026-12-16 |  |  |  |
|  | 1 | **FENCE WORKS** |  | 2026-04-16 | 2026-09-13 |  |  |  |
| PG-Q-CON-EX-GN-FN-10 |  | Excavation for fence foundation | 3d | 2026-04-16 A | 2026-04-19 A | PG-Q-CON-EX-CF-30 SS, PG-Q-EN-ST-SD-AP-10, PG-Q-PR-SL-LS-DL-10, PG-GN-MS-10, PG-Q-EN-ST-SD-AP-10 SS | 100% |  |
| PG-Q-CON-EX-GN-FN-20 |  | Concrete Foundations for Fence | 10d | 2026-07-21 | 2026-08-01 | PG-Q-CON-EX-GN-FN-10, PG-Q-EN-ST-SD-AP-20, PG-Q-PR-SL-CO-DL-10, PG-Q-PR-SL-CO-DL-20, PG-Q-PR-SL-CO-DL-10 SS, PG-GN-MS-10, PG-Q-EN-ST-SD-AP-20 SS, PG-Q-CON-EX-GN-FN-10 FF, PG-Q-CON-EX-FB-70 |  | 2d |
| PG-Q-CON-EX-GN-FN-30 |  | Installation of Galvanized Steel Posts & Framing | 12d | 2026-08-02 | 2026-08-15 | PG-Q-PR-SL-LS-MS-30, PG-Q-PR-LL-LS-DL-30 SS, PG-Q-CON-EX-GN-FN-10, PG-Q-CON-EX-GN-FN-20 |  | 2d |
| PG-Q-CON-EX-GN-FN-40 |  | Fixing of Chain Link Mesh, Tensioning & Bracing | 15d | 2026-08-16 | 2026-09-01 | PG-Q-CON-EX-GN-FN-30, PG-Q-EN-ST-SD-AP-20, PG-Q-PR-LL-LS-DL-30 SS, PG-Q-CON-EX-GN-FN-10 |  | 2d |
| PG-Q-CON-EX-GN-FN-50 |  | Installation of Gates | 10d | 2026-09-02 | 2026-09-13 | PG-Q-CON-EX-GN-FN-40, PG-Q-CON-EX-GN-FN-20, PG-Q-CON-EX-GN-FN-10 |  | 2d |
|  | 5 | **MECHANICAL WORK** |  | 2026-05-12 | 2026-08-18 |  |  |  |
|  | 2 | **STORM WATER AND UTILITY WORK** |  | 2026-05-12 | 2026-08-16 |  |  |  |
| PG-Q-CON-EX-GN-M-10 |  | Excavation | 2d | 2026-05-12 A | 2026-05-13 A | PG-Q-CON-EX-GN-FN-10, PG-Q-CON-EX-GN-FN-10 FF, PG-Q-CON-EX-CF-30, PG-Q-EN-ST-SD-AP-10 | 100% |  |
| PG-Q-CON-EX-GN-M-20 |  | Bedding preparation & level control(Completed) | 27d | 2026-05-20 A | 2026-06-24 A | PG-Q-CON-EX-GN-M-10 | 100% |  |
| PG-Q-CON-EX-GN-M-30 |  | Manhole Installation(Completed) | 7d | 2026-06-17 A | 2026-06-24 A | PG-Q-CON-EX-GN-M-20 SS | 100% |  |
| PG-Q-CON-EX-GN-M-20_R |  | Bedding preparation & level control(Remaining) | 8d | 2026-06-25 | 2026-07-04 | PG-Q-CON-EX-GN-M-10, PG-Q-CON-EX-GN-M-20 |  | 15d |
| PG-Q-CON-EX-GN-M-30_R |  | Manhole Installation(Remaining) | 6d | 2026-07-05 | 2026-07-11 | PG-Q-CON-EX-GN-M-20_R, PG-Q-CON-EX-GN-M-30, PG-Q-CON-EX-GN-M-10 |  | 15d |
| PG-Q-CON-EX-GN-M-40 |  | 150 mm uPVC pipe laying & jointing | 6d | 2026-07-12 | 2026-07-18 | PG-Q-CON-EX-GN-M-30_R, PG-Q-CON-EX-GN-M-10 |  | 15d |
| PG-Q-CON-EX-GN-M-50 |  | Concrete Encasement | 7d | 2026-07-19 | 2026-07-26 | PG-Q-CON-EX-GN-M-40, PG-Q-PR-SL-CO-DL-10, PG-Q-PR-SL-CO-DL-20, PG-Q-CON-EX-GN-M-10 |  | 15d |
| PG-Q-CON-EX-GN-M-60 |  | Backfilling & Compaction | 6d | 2026-07-27 | 2026-08-02 | PG-Q-CON-EX-GN-M-50, PG-Q-PR-SL-LS-DL-10, PG-Q-CON-EX-GN-M-10 |  | 15d |

| ID | WBS | Task | Duration | Start | Finish | Predecessors | Complete | Total float |
| --- | --- | --- | --- | --- | --- | --- | --- | --- |
| PG-Q-CON-EX-GN-M-70 |  | Surface Reinstatement & Civil Works | 6d | 2026-08-10 | 2026-08-16 | PG-Q-CON-EX-GN-M-60, PG-Q-PR-SL-CO-DL-50, PG-Q-CON-EX-GN-M-100, PG-Q-CON-EX-GN-M-10 |  | 15d |
|  | IR.SY | **IRRIGATION SYSTEM WORKS** |  | 2026-06-17 | 2026-08-09 |  |  |  |
| PG-Q-CON-EX-GN-M-80 |  | Installation of HDPE Irrigation Pipe Network with Gate Valve and Box(Completed) | 7d | 2026-06-17 A | 2026-06-24 A | PG-Q-EN-ME-SD-AP-80, PG-Q-EN-ME-SD-AP-90, PG-Q-CON-EX-GN-M-20 SS, PG-Q-PR-LL-IR-DL-10 SS, PG-Q-PR-SL-IR-DL-10 SS | 100% |  |
| PG-Q-CON-EX-GN-M-80_R |  | Installation of HDPE Irrigation Pipe Network with Gate Valve and Box(Remaining) | 2.6d | 2026-07-30 | 2026-08-02 | PG-Q-CON-EX-GN-M-60 FF, PG-Q-EN-ME-SD-AP-80, PG-Q-EN-ME-SD-AP-90, PG-Q-CON-EX-GN-M-20_R, PG-Q-PR-LL-IR-DL-10_R, PG-Q-PR-SL-IR-DL-10_R, PG-Q-CON-EX-GN-M-80 |  | 15d |
| PG-Q-CON-EX-GN-M-90 |  | Installation of Irrigation Control System | 3d | 2026-08-03 | 2026-08-05 | PG-Q-CON-EX-GN-M-80_R, PG-Q-PR-LL-IR-DL-20_R |  | 15d |
| PG-Q-CON-EX-GN-M-100 |  | Installation of Bubblers and Sprinklers | 3d | 2026-08-06 | 2026-08-09 | PG-Q-CON-EX-GN-M-90, PG-Q-PR-SL-IR-DL-20_R, PG-Q-CON-EX-GN-M-80_R |  | 15d |
|  | 1 | **FIRE PROTECTION SYSTEM** |  | 2026-08-17 | 2026-08-18 |  |  |  |
| PG-Q-CON-EX-GN-M-110 |  | Fire Extinguisher Installation | 2d | 2026-08-17 | 2026-08-18 | PG-Q-CON-EX-GN-M-70, PG-Q-PR-SL-FF-DL-10_R |  | 15d |
|  | 2 | **ELECTRICAL WORK** |  | 2026-05-20 | 2026-11-01 |  |  |  |
|  | 1 | **POWER, LIGHTING & GROUNDING** |  | 2026-05-20 | 2026-09-20 |  |  |  |
| PG-Q-CON-EX-GN-E-10 |  | Excavation(Completed) | 27d | 2026-05-20 A | 2026-06-24 A | PG-Q-CON-EX-FB-30 | 100% |  |
| PG-Q-CON-EX-GN-E-20 |  | Foundation Work for Site Lighting Poles(Completed) | 13d | 2026-06-10 A | 2026-06-24 A | PG-Q-PR-SL-CO-DL-10, PG-Q-PR-SL-CO-DL-20, PG-Q-CON-EX-GN-E-10 SS | 100% |  |
| PG-Q-CON-EX-GN-E-10_R |  | Excavation(Remaining) | 3d | 2026-08-13 | 2026-08-16 | PG-Q-CON-EX-GN-M-70 FF, PG-Q-CON-EX-GN-E-10 |  | 16.5d |
| PG-Q-CON-EX-GN-E-20_R |  | Foundation Work for Site Lighting Poles(Remaining) | 3.5d | 2026-08-13 | 2026-08-17 | PG-Q-PR-SL-CO-DL-10, PG-Q-PR-SL-CO-DL-20, PG-Q-CON-EX-GN-E-10_R SS, PG-Q-CON-EX-GN-E-20 |  | 16.5d |
| PG-Q-CON-EX-GN-E-30 |  | Lightning Protection System (LPS) | 3d | 2026-08-29 | 2026-08-31 | PG-Q-CON-EX-GN-E-20_R, PG-Q-PR-LL-EL-DL-50_R, PG-Q-CON-EX-GN-M-110, PG-Q-CON-EX-GN-E-10_R |  | 7d |
| PG-Q-CON-EX-GN-E-40 |  | KWH Meter and MDB Installation | 2d | 2026-09-01 | 2026-09-02 | PG-Q-CON-EX-GN-E-30, PG-Q-EN-EL-SD-AP-10, PG-Q-PR-LL-EL-DL-10_R, PG-Q-CON-EX-GN-E-10_R |  | 7d |
| PG-Q-CON-EX-GN-E-50 |  | Power Panels and Distribution Boards | 5d | 2026-09-03 | 2026-09-08 | PG-Q-CON-EX-GN-E-40, PG-Q-EN-EL-SD-AP-20, PG-Q-PR-LL-EL-DL-20_R, PG-Q-CON-EX-GN-E-10_R |  | 7d |
| PG-Q-CON-EX-GN-E-60 |  | Site Lighting Poles Installation | 3d | 2026-09-09 | 2026-09-12 | PG-Q-CON-EX-GN-E-50, PG-Q-EN-EL-SD-AP-30, PG-Q-EN-EL-SD-AP-40, PG-Q-PR-LL-EL-DL-30_R, PG-Q-CON-EX-GN-E-10_R |  | 7d |
| PG-Q-CON-EX-GN-E-70 |  | Wiring Works | 3d | 2026-09-13 | 2026-09-15 | PG-Q-CON-EX-GN-E-60, PG-Q-PR-SL-EL-DL-10_R, PG-Q-CON-EX-GN-E-10_R |  | 7d |
| PG-Q-CON-EX-GN-E-80 |  | Lighting Fixtures with outlets Installation | 4d | 2026-09-16 | 2026-09-20 | PG-Q-CON-EX-GN-E-70, PG-Q-PR-LL-EL-DL-40_R, PG-Q-CON-EX-GN-E-10_R |  | 7d |
|  | 2 | **ELV SYSTEMS (TELECOM, DATA, AV & CCTV)** |  | 2026-09-21 | 2026-10-20 |  |  |  |
| PG-Q-CON-EX-GN-E-90 |  | ELV Containment & Cabling Works | 3d | 2026-09-21 | 2026-09-24 | PG-Q-CON-EX-GN-E-80, PG-Q-PR-LL-EL-DL-60_R |  | 7d |
| PG-Q-CON-EX-GN-E-100 |  | Fiber Optic Pull Box Installation | 3d | 2026-09-26 | 2026-09-28 | PG-Q-CON-EX-GN-E-90, PG-Q-EN-EL-SD-AP-50, PG-Q-PR-LL-EL-DL-60_R |  | 7d |
| PG-Q-CON-EX-GN-E-110 |  | Telephone and Data Outlet Installation | 4d | 2026-09-29 | 2026-10-03 | PG-Q-CON-EX-GN-E-100, PG-Q-EN-EL-SD-AP-50, PG-Q-PR-LL-EL-DL-60_R, PG-Q-CON-EX-GN-E-90 |  | 7d |
| PG-Q-CON-EX-GN-E-120 |  | Telecom Equipment and AV HDMI Installation | 4d | 2026-10-04 | 2026-10-07 | PG-Q-CON-EX-GN-E-110, PG-Q-EN-EL-SD-AP-80, PG-Q-PR-LL-EL-DL-60_R, PG-Q-CON-EX-GN-E-90 |  | 7d |
| PG-Q-CON-EX-GN-E-130 |  | CCTV Rack / Cabinet Installation | 4d | 2026-10-08 | 2026-10-12 | PG-Q-CON-EX-GN-E-120, PG-Q-EN-EL-SD-AP-60, PG-Q-PR-LL-EL-DL-70_R, PG-Q-CON-EX-GN-E-90 |  | 7d |
| PG-Q-CON-EX-GN-E-140 |  | NVR and CCTV Monitor Installation | 4d | 2026-10-13 | 2026-10-17 | PG-Q-CON-EX-GN-E-130, PG-Q-EN-EL-SD-AP-70, PG-Q-PR-LL-EL-DL-70_R, PG-Q-CON-EX-GN-E-90 |  | 7d |
| PG-Q-CON-EX-GN-E-150 |  | IP Camera Installation | 3d | 2026-10-18 | 2026-10-20 | PG-Q-CON-EX-GN-E-140, PG-Q-PR-LL-EL-DL-70_R, PG-Q-CON-EX-GN-E-90 |  | 7d |
|  | 3 | **FIRE ALARM SYSTEM** |  | 2026-09-26 | 2026-11-01 |  |  |  |
| PG-Q-CON-EX-GN-E-160 |  | Fire Alarm Containment & Cabling | 8d | 2026-09-26 | 2026-10-04 | PG-Q-EN-EL-SD-AP-110, PG-Q-EN-EL-SD-AP-90, PG-Q-PR-LL-EL-DL-80_R, PG-Q-CON-EX-GN-E-90 |  | 7d |
| PG-Q-CON-EX-GN-E-170 |  | Fire Alarm Control Panel (FACP) Installation | 8d | 2026-10-05 | 2026-10-13 | PG-Q-CON-EX-GN-E-160, PG-Q-EN-EL-SD-AP-110 |  | 7d |
| PG-Q-CON-EX-GN-E-180 |  | Initiating Devices (Detectors & Manual Pull Station) | 8d | 2026-10-14 | 2026-10-22 | PG-Q-CON-EX-GN-E-170, PG-Q-EN-EL-SD-AP-100, PG-Q-CON-EX-GN-E-160 |  | 7d |
| PG-Q-CON-EX-GN-E-190 |  | Notification Appliances (Strobe with Sounder) | 8d | 2026-10-24 | 2026-11-01 | PG-Q-CON-EX-GN-E-180, PG-Q-CON-EX-GN-E-160 |  | 7d |
|  | 3 | **PARKING WORK** |  | 2026-06-17 | 2026-11-09 |  |  |  |
| PG-Q-CON-EX-GN-PR-20 |  | Interlock tiles(Completed) | 7d | 2026-06-17 A | 2026-06-24 A | PG-Q-EN-LS-SD-AP-20, PG-Q-PR-SL-LS-DL-20 | 100% |  |
| PG-Q-CON-EX-GN-PR-10 |  | Installlation of Parking Accessories | 5d | 2026-10-29 | 2026-11-03 | PG-Q-CON-EX-GN-E-150, PG-IN-MS-30 |  | 0d |
| PG-Q-CON-EX-GN-PR-20_R |  | Interlock tiles(Remaining) | 2.75d | 2026-11-01 | 2026-11-03 | PG-Q-CON-EX-GN-PR-10 FF, PG-Q-CON-B-AR-RF-30 FF, PG-Q-CON-B-AR-WF-60 FF, PG-Q-CON-B-AR-GF-80 FF, PG-Q-EN-LS-SD-AP-20, PG-Q-PR-SL-LS-DL-20, PG-Q-CON-EX-GN-PR-20 |  | 0d |
| PG-Q-CON-EX-GN-PR-30 |  | Marking & Signages | 5d | 2026-11-04 | 2026-11-09 | PG-Q-CON-EX-GN-PR-20_R, PG-Q-EN-LS-SD-AP-80, PG-Q-PR-SL-LS-DL-50_R, PG-Q-PR-SL-LS-DL-60_R, PG-Q-CON-EX-GN-E-190 FF |  | 0d |
|  | 4 | **SERVICE CONNECTION** |  | 2026-11-10 | 2026-12-16 |  |  |  |
| PG-Q-CON-EX-GN-SC-10 |  | Excavation & Trench Preparation | 8d | 2026-11-10 | 2026-11-18 | PG-Q-CON-EX-GN-PR-30 |  | 0d |
| PG-Q-CON-EX-GN-SC-20 |  | HDPE Pipe Laying & Valve Installation | 8d | 2026-11-19 | 2026-11-28 | PG-Q-CON-EX-GN-SC-10 |  | 0d |
| PG-Q-CON-EX-GN-SC-30 |  | Connection to City Network | 8d | 2026-11-29 | 2026-12-07 | PG-Q-CON-EX-GN-SC-20, PG-Q-CON-EX-GN-SC-10 |  | 0d |
| PG-Q-CON-EX-GN-SC-40 |  | Backfilling | 8d | 2026-12-08 | 2026-12-16 | PG-Q-PR-SL-LS-DL-10, PG-Q-CON-EX-GN-SC-30, PG-Q-CON-EX-GN-SC-10 |  | 0d |
|  | LS | **LANDSCAPING WORKS** |  | 2026-05-30 | 2026-12-14 |  |  |  |
|  | HSP | **HARDSCAPE WORK** |  | 2026-05-30 | 2026-12-14 |  |  |  |
| PG-Q-CON-EX-LS-HS-10 |  | Curbstone Installation(Completed) | 22d | 2026-05-30 A | 2026-06-24 A | PG-Q-EN-LS-SD-AP-10, PG-Q-PR-SL-LS-DL-40, PG-Q-CON-EX-TW-ST-70, PG-Q-CON-EX-TW-ST-70 FF | 100% |  |
| PG-Q-CON-EX-LS-HS-20 |  | Interlock Tiles Grey Scale with Black Marble Chips(Completed) | 22d | 2026-05-30 A | 2026-06-24 A | PG-Q-CON-EX-LS-HS-10 SS | 100% |  |
| PG-Q-CON-EX-LS-HS-40 |  | Bike Path and Walking Path Construction(Completed) | 22d | 2026-05-30 A | 2026-06-24 A | PG-Q-EN-LS-SD-AP-50, PG-Q-EN-LS-SD-AP-60, PG-Q-CON-EX-LS-HS-30 SS, PG-Q-PR-LL-LS-DL-10 SS | 100% |  |
| PG-Q-CON-EX-LS-HS-30 |  | Stamped Concrete Floor(Completed) | 13d | 2026-06-10 A | 2026-06-24 A | PG-Q-EN-LS-SD-AP-30, PG-Q-CON-EX-LS-HS-20 SS | 100% |  |
| PG-Q-CON-EX-LS-HS-50 |  | Install Recycled Precast Concrete Seats(Completed) | 7d | 2026-06-17 A | 2026-06-24 A | PG-Q-CON-EX-LS-HS-40 SS, PG-Q-PR-LL-LS-DL-20 SS | 100% |  |
| PG-Q-CON-EX-LS-HS-40_R |  | Bike Path and Walking Path Construction(Remaining) | 17d | 2026-07-18 | 2026-08-05 | PG-Q-EN-LS-SD-AP-50, PG-Q-EN-LS-SD-AP-60, PG-Q-PR-LL-LS-DL-10_R, PG-Q-CON-EX-LS-HS-40 |  | 25d |
| PG-Q-CON-EX-LS-HS-10_R |  | Curbstone Installation(Remaining) | 10d | 2026-09-02 | 2026-09-13 | PG-Q-CON-EX-GN-FN-50 FF, PG-Q-EN-LS-SD-AP-10, PG-Q-PR-SL-LS-DL-40, PG-Q-CON-EX-TW-ST-70, PG-Q-CON-EX-TW-ST-70 FF, PG-Q-CON-EX-LS-HS-10, PG-Q-CON-EX-TW-IR-40, PG-Q-CON-EX-LS-HS-40_R |  | 2d |
| PG-Q-CON-EX-LS-HS-30_R |  | Stamped Concrete Floor(Remaining) | 13d | 2026-09-14 | 2026-09-29 | PG-Q-EN-LS-SD-AP-30, PG-Q-CON-EX-LS-HS-30, PG-Q-CON-EX-LS-HS-10_R |  | 2d |
| PG-Q-CON-EX-LS-HS-20_R |  | Interlock Tiles Grey Scale with Black Marble Chips(Remaining) | 13d | 2026-09-30 | 2026-10-14 | PG-Q-CON-EX-LS-HS-20, PG-Q-CON-EX-LS-HS-30_R |  | 2d |
| PG-Q-CON-EX-LS-HS-50_R |  | Install Recycled Precast Concrete Seats(Remaining) | 10d | 2026-11-22 | 2026-12-02 | PG-Q-PR-LL-LS-DL-20_R SS, PG-Q-CON-EX-LS-HS-50, PG-Q-CON-EX-LS-SS-10 |  | 2d |
| PG-Q-CON-EX-LS-HS-60 |  | Install Recycled Precast Concrete Trash Bins | 10d | 2026-12-03 | 2026-12-14 | PG-Q-CON-EX-LS-HS-50_R |  | 2d |
|  | SSP | **SOFTSCAPE WORK** |  | 2026-06-10 | 2026-11-21 |  |  |  |
| PG-Q-CON-EX-LS-SS-20 |  | Lawn Area Preparation & Planting / Turfing(Completed) | 13d | 2026-06-10 A | 2026-06-24 A | PG-Q-EN-LS-SD-AP-70, PG-Q-PR-SL-LS-DL-80 SS | 100% |  |
| PG-Q-CON-EX-LS-SS-20_R |  | Lawn Area Preparation & Planting / Turfing(Remaining) | 15d | 2026-10-15 | 2026-11-01 | PG-Q-EN-LS-SD-AP-70, PG-Q-PR-SL-LS-DL-80_R, PG-Q-CON-EX-LS-SS-20, PG-Q-CON-EX-LS-HS-20_R |  | 2d |
| PG-Q-CON-EX-LS-SS-10 |  | Planting Trees | 17d | 2026-11-02 | 2026-11-21 | PG-Q-EN-LS-SD-AP-70, PG-Q-PR-SL-LS-DL-70_R, PG-Q-CON-EX-LS-SS-20_R |  | 2d |
|  | W.T | **TANK WORKS** |  | 2026-05-13 | 2026-08-19 |  |  |  |
|  | 1 | **SEPTIC TANK** |  | 2026-05-13 | 2026-06-24 |  |  |  |
| PG-Q-CON-EX-TW-ST-10 |  | Excavation | 29d | 2026-05-13 A | 2026-06-20 A | PG-Q-CON-EX-CF-30 SS | 100% |  |
| PG-Q-CON-EX-TW-ST-20 |  | PCC / Lean Concrete laying | 24d | 2026-05-20 A | 2026-06-21 A | PG-Q-CON-EX-TW-ST-10, PG-Q-CON-EX-TW-ST-10 SS | 100% |  |
| PG-Q-CON-EX-TW-ST-40 |  | RCC Wall | 4d | 2026-06-20 A | 2026-06-23 A | PG-Q-CON-EX-TW-ST-30 | 100% |  |
| PG-Q-CON-EX-TW-ST-30 |  | RCC Foundation | 2d | 2026-06-21 A | 2026-06-22 A | PG-Q-CON-EX-TW-ST-20, PG-Q-EN-ST-SD-AP-110, PG-Q-EN-ST-SD-AP-120 | 100% |  |
| PG-Q-CON-EX-TW-ST-50 |  | RCC Slab | 4d | 2026-06-21 A | 2026-06-24 A | PG-Q-CON-EX-TW-ST-40 | 100% |  |
| PG-Q-CON-EX-TW-ST-60 |  | Finishing Work | 3d | 2026-06-22 A | 2026-06-24 A | PG-Q-CON-EX-TW-ST-50 | 100% |  |
| PG-Q-CON-EX-TW-ST-70 |  | Backfilling | 2d | 2026-06-23 A | 2026-06-24 A | PG-Q-CON-EX-TW-ST-60 | 100% |  |
|  | 2 | **WATER STORAGE TANK** |  | 2026-05-13 | 2026-08-19 |  |  |  |

| ID | WBS | Task | Duration | Start | Finish | Predecessors | Complete | Total float |
| --- | --- | --- | --- | --- | --- | --- | --- | --- |
| PG-Q-CON-EX-TW-IR-10 |  | Excavation(Completed) | 33d | 2026-05-13 A | 2026-06-24 A | PG-Q-EN-ST-SD-AP-90, PG-Q-CON-EX-TW-ST-70, PG-Q-CON-EX-TW-ST-70 FF | 100% |  |
| PG-Q-CON-EX-TW-IR-10_R |  | Excavation(Remaining) | 7d | 2026-06-25 | 2026-07-02 | PG-Q-EN-ST-SD-AP-90, PG-Q-CON-EX-TW-ST-70, PG-Q-CON-EX-TW-ST-70 FF, PG-Q-CON-EX-TW-IR-10 |  | 24d |
| PG-Q-CON-EX-TW-IR-20 |  | RCC Foundation | 15d | 2026-07-04 | 2026-07-20 | PG-Q-CON-EX-TW-IR-10_R, PG-Q-EN-ST-SD-AP-100 |  | 24d |
| PG-Q-CON-EX-TW-IR-30 |  | Backfilling | 7d | 2026-07-21 | 2026-07-28 | PG-Q-CON-EX-TW-IR-20, PG-Q-CON-EX-TW-IR-10_R |  | 24d |
| PG-Q-CON-EX-TW-IR-40 |  | GRP Water Tank Installation | 8d | 2026-08-11 | 2026-08-19 | PG-Q-CON-EX-TW-IR-30, PG-Q-EN-ME-SD-AP-40, PG-Q-PR-LL-PB-DL-20_R, PG-Q-PR-LL-PB-MA-20_R, PG-Q-CON-EX-TW-IR-10_R |  | 13d |
|  | AD | **AIR DOME CONSTRUCTION** |  | 2026-05-13 | 2026-11-26 |  |  |  |
|  | 1 | **CIVIL WORK** |  | 2026-05-13 | 2026-09-10 |  |  |  |
| PG-Q-CON-EX-AD-CL-10 |  | Excavation For Footing(Completed) | 33d | 2026-05-13 A | 2026-06-24 A | PG-Q-CON-EX-FB-10 | 100% |  |
| PG-Q-CON-EX-AD-CL-10_R |  | Excavation For Footing(Remaining) | 6d | 2026-07-09 | 2026-07-15 | PG-Q-EN-ST-SD-AP-50, PG-Q-CON-EX-FB-10, PG-Q-EN-ST-SD-AP-50 FF, PG-Q-CON-EX-AD-CL-10 |  | 0d |
| PG-Q-CON-EX-AD-CL-20 |  | Anti-Termite Treatment | 2d | 2026-07-16 | 2026-07-18 | PG-Q-CON-EX-AD-CL-10_R |  | 0d |
| PG-Q-CON-EX-AD-CL-30 |  | PCC / Blinding Concrete | 3d | 2026-07-19 | 2026-07-21 | PG-Q-CON-EX-AD-CL-20, PG-Q-EN-ST-SD-AP-60 |  | 0d |
| PG-Q-CON-EX-AD-CL-40 |  | RCC Foundation Works | 12d | 2026-07-22 | 2026-08-04 | PG-Q-CON-EX-AD-CL-30, PG-Q-EN-ST-SD-AP-60, PG-Q-PR-SL-CO-DL-10, PG-Q-PR-SL-CO-DL-20, PG-Q-EN-ST-SD-SB-50, PG-Q-EN-ST-SD-SB-60 |  | 0d |
| PG-Q-CON-EX-AD-CL-50 |  | Backfilling with Compaction | 6d | 2026-08-05 | 2026-08-11 | PG-Q-CON-EX-AD-CL-40, PG-Q-PR-SL-LS-DL-10 |  | 0d |
| PG-Q-CON-EX-AD-CL-60 |  | Installation of Anchorage System | 8d | 2026-08-12 | 2026-08-20 | PG-Q-CON-EX-AD-CL-50, PG-Q-PR-LL-SP-DL-50 SS, PG-IN-MS-10 |  | 0d |
| PG-Q-CON-EX-AD-CL-70 |  | Installation of Steel Cable Structural System | 10d | 2026-08-22 | 2026-09-01 | PG-Q-CON-EX-AD-CL-60, PG-Q-EN-AR-SD-AP-120 |  | 0d |
| PG-Q-CON-EX-AD-CL-80 |  | Installation of Membrane System | 8d | 2026-09-02 | 2026-09-10 | PG-Q-CON-EX-AD-CL-70, PG-Q-EN-AR-SD-AP-110 |  | 0d |
|  | 2 | **ARCHITECTURAL WORK** |  | 2026-10-27 | 2026-11-26 |  |  |  |
| PG-Q-CON-EX-AD-AR-10 |  | Installation of Thermal Insulation System | 8d | 2026-10-27 | 2026-11-04 | PG-Q-CON-EX-AD-CL-80, PG-Q-PR-LL-SP-DL-50, PG-Q-EN-AR-SD-AP-110, PG-Q-CON-EX-AD-EL-50, PG-Q-CON-EX-AD-EL-20, PG-Q-CON-EX-AD-CL-80 FF |  | 0d |
| PG-Q-CON-EX-AD-AR-40 |  | Final Fixing of Accessories & Finishes | 8d | 2026-11-05 | 2026-11-14 | PG-Q-CON-EX-AD-CL-80, PG-Q-CON-EX-AD-AR-10 |  | 0d |
| PG-Q-CON-EX-AD-AR-20 |  | Installation of Doors & Access Systems | 6d | 2026-11-15 | 2026-11-21 | PG-Q-CON-EX-AD-AR-10, PG-Q-EN-AR-SD-AP-130, PG-Q-CON-EX-AD-AR-40 |  | 0d |
| PG-Q-CON-EX-AD-AR-30 |  | Installation of Logo | 5d | 2026-11-22 | 2026-11-26 | PG-Q-CON-EX-AD-AR-20, PG-Q-CON-EX-AD-AR-40 |  | 0d |
|  | 3 | **MECHANICAL WORK** |  | 2026-09-12 | 2026-09-30 |  |  |  |
| PG-Q-CON-EX-AD-ME-10 |  | Installation of Main Air Package Units | 5d | 2026-09-12 | 2026-09-16 | PG-Q-EN-ME-SD-AP-100, PG-Q-CON-EX-AD-CL-80 |  | 0d |
| PG-Q-CON-EX-AD-ME-20 |  | Installation of Backup Air Package Unit | 5d | 2026-09-17 | 2026-09-22 | PG-Q-CON-EX-AD-ME-10, PG-Q-EN-ME-SD-AP-100 |  | 0d |
| PG-Q-CON-EX-AD-ME-30 |  | Installation of Complete HVAC System | 6d | 2026-09-24 | 2026-09-30 | PG-Q-CON-EX-AD-ME-20, PG-Q-CON-EX-AD-EL-10, PG-Q-EN-ME-SD-AP-100 |  | 0d |
|  | 4 | **ELECTRICAL WORK** |  | 2026-08-17 | 2026-10-26 |  |  |  |
| PG-Q-CON-EX-AD-EL-10 |  | Installation of Electrical Boxes & MDBs | 12d | 2026-08-17 | 2026-08-30 | PG-Q-EN-EL-SD-AP-120 |  | 14d |
| PG-Q-CON-EX-AD-EL-20 |  | Installation of Lighting System | 12d | 2026-08-31 | 2026-09-13 | PG-Q-CON-EX-AD-EL-10, PG-Q-EN-EL-SD-AP-120 |  | 14d |
| PG-Q-CON-EX-AD-EL-30 |  | Electrical Connections to Main Power Source (Excluding kWh Meter) | 5d | 2026-10-01 | 2026-10-06 | PG-Q-CON-EX-AD-EL-20, PG-Q-CON-EX-AD-ME-30 |  | 0d |
| PG-Q-CON-EX-AD-EL-40 |  | Installation of Backup Generator | 6d | 2026-10-07 | 2026-10-13 | PG-Q-CON-EX-AD-EL-30, PG-Q-EN-EL-SD-AP-130 |  | 0d |
| PG-Q-CON-EX-AD-EL-50 |  | Installation of Smart Dome System | 11d | 2026-10-14 | 2026-10-26 | PG-Q-CON-EX-AD-EL-40, PG-Q-EN-EL-SD-AP-140 |  | 0d |
|  | B | **TOILET BUILDING WORKS** |  | 2026-05-06 | 2026-10-20 |  |  |  |
|  | CVL | **CIVIL WORK** |  | 2026-05-06 | 2026-10-19 |  |  |  |
|  | ST | **STRUCTURAL WORK** |  | 2026-05-06 | 2026-08-04 |  |  |  |
| PG-Q-CON-B-STR-10 |  | Excavation up to bottom of footing | 7d | 2026-05-06 A | 2026-05-13 A | PG-Q-EN-ST-SD-AP-70, PG-Q-MOB-CAM-40 | 100% |  |
| PG-Q-CON-B-STR-20 |  | Anti-termite treatment and Polyethene Sheet | 2d | 2026-05-12 A | 2026-05-13 A | PG-Q-CON-B-STR-10 | 100% |  |
| PG-Q-CON-B-STR-30 |  | Backfilling with selected fill material (under footing) | 1d | 2026-05-13 A | 2026-05-13 A | PG-Q-CON-B-STR-20, PG-Q-PR-SL-LS-DL-10 | 100% |  |
| PG-Q-CON-B-STR-40 |  | Raft Foundation Work | 21d | 2026-05-13 A | 2026-06-10 A | PG-Q-CON-B-STR-30, PG-Q-EN-ST-SD-AP-80, PG-Q-PR-SL-CO-DL-10, PG-Q-PR-SL-CO-DL-20 | 100% |  |
| PG-Q-CON-B-STR-50 |  | Autoclaved aerated panel (walls) | 4d | 2026-07-25 | 2026-07-28 | PG-Q-CON-B-STR-40, PG-Q-PR-LL-CO-DL-10_R |  | 7d |
| PG-Q-CON-B-STR-60 |  | Autoclaved aerated panel (ceiling) | 3d | 2026-07-29 | 2026-08-01 | PG-Q-CON-B-STR-50, PG-Q-PR-LL-CO-DL-10_R |  | 7d |
| PG-Q-CON-B-STR-70 |  | Autoclaved aerated panel (parapet) | 3d | 2026-08-02 | 2026-08-04 | PG-Q-CON-B-STR-60, PG-Q-PR-LL-CO-DL-10_R |  | 7d |
|  | AR | **ARCHITECTURAL WORK** |  | 2026-08-05 | 2026-10-19 |  |  |  |
|  | 1 | **GENERAL FINISHES** |  | 2026-08-05 | 2026-10-19 |  |  |  |
| PG-Q-CON-B-AR-GF-10 |  | Block Works | 6d | 2026-08-05 | 2026-08-11 | PG-Q-CON-B-STR-70, PG-Q-EN-AR-SD-AP-10, PG-Q-EN-AR-SD-AP-40, PG-Q-PR-SL-CO-DL-40 |  | 7d |
| PG-Q-CON-B-AR-GF-20 |  | Plaster | 7d | 2026-08-12 | 2026-08-19 | PG-Q-CON-B-AR-GF-10, PG-Q-CON-B-GF-EL-10, PG-Q-PR-SL-AR-DL-40 |  | 7d |
| PG-Q-CON-B-AR-GF-30 |  | False Ceiling Installation & Finishing | 7d | 2026-08-20 | 2026-08-27 | PG-Q-CON-B-AR-GF-20, PG-Q-CON-B-GF-DR-20, PG-Q-EN-AR-SD-AP-60, PG-Q-PR-SL-AR-DL-100 |  | 7d |
| PG-Q-CON-B-AR-GF-40 |  | Wall Paint | 12d | 2026-09-16 | 2026-09-30 | PG-Q-CON-B-AR-GF-30, PG-Q-PR-SL-AR-DL-50, PG-Q-CON-B-GF-EL-20 |  | 7d |
| PG-Q-CON-B-AR-GF-50 |  | Epoxy Flooring | 6d | 2026-10-01 | 2026-10-07 | PG-Q-CON-B-AR-GF-40, PG-Q-EN-AR-SD-AP-50, PG-Q-PR-SL-AR-DL-30 |  | 7d |
| PG-Q-CON-B-AR-GF-80 |  | Facade Finishing Work | 8d | 2026-10-01 | 2026-10-10 | PG-Q-EN-AR-SD-AP-90, PG-Q-EN-AR-SD-AP-100, PG-Q-PR-LL-MT-DL-20_R, PG-Q-PR-SL-AR-DL-60, PG-Q-PR-SL-AR-DL-70, PG-Q-CON-B-AR-GF-50 SS, PG-Q-PR-LL-MT-MA-20_R |  | 16d |
| PG-Q-CON-B-AR-GF-60 |  | Install Doors & Windows | 5d | 2026-10-08 | 2026-10-13 | PG-Q-CON-B-AR-GF-50, PG-Q-EN-AR-SD-AP-30, PG-Q-EN-AR-SD-AP-80, PG-Q-EN-AR-SD-AP-40, PG-Q-PR-LL-MT-DL-10_R, PG-Q-PR-LL-MT-MA-10_R |  | 7d |
| PG-Q-CON-B-AR-GF-70 |  | Lockers and Furniture Installation | 5d | 2026-10-14 | 2026-10-19 | PG-Q-CON-B-AR-GF-60, PG-Q-CON-B-AR-GF-80 SS |  | 7d |
|  | 2 | **WET AREA FINISHES** |  | 2026-08-20 | 2026-10-14 |  |  |  |
| PG-Q-CON-B-AR-WF-10 |  | False Ceiling Installation & Finishing | 7d | 2026-08-20 | 2026-08-27 | PG-Q-CON-B-AR-GF-30 SS, PG-Q-EN-AR-SD-AP-60, PG-Q-PR-SL-AR-DL-100 |  | 7d |
| PG-Q-CON-B-AR-WF-20 |  | Wall Tiles and Partition Work | 6d | 2026-09-16 | 2026-09-22 | PG-Q-CON-B-AR-WF-10, PG-Q-CON-B-AR-GF-40 SS, PG-Q-EN-AR-SD-AP-70, PG-Q-EN-AR-SD-AP-30, PG-Q-PR-SL-AR-DL-10, PG-Q-PR-SL-AR-DL-80, PG-Q-PR-SL-AR-DL-90, PG-Q-CON-B-GF-WS-20 |  | 12d |
| PG-Q-CON-B-AR-WF-30 |  | Waterproofing on Floor | 6d | 2026-09-24 | 2026-09-30 | PG-Q-CON-B-AR-WF-20, PG-Q-EN-AR-SD-AP-50, PG-Q-PR-SL-CO-DL-30, PG-Q-PR-SL-AR-DL-120 |  | 12d |
| PG-Q-CON-B-AR-WF-40 |  | Floor Tiles Works | 6d | 2026-10-01 | 2026-10-07 | PG-Q-CON-B-AR-WF-30, PG-Q-PR-SL-AR-DL-20 |  | 12d |
| PG-Q-CON-B-AR-WF-50 |  | Toliet accessories Installation Works | 6d | 2026-10-08 | 2026-10-14 | PG-Q-CON-B-AR-WF-40, PG-Q-EN-AR-SD-AP-70, PG-Q-PR-SL-AR-DL-110 |  | 12d |
| PG-Q-CON-B-AR-WF-60 |  | Install Doors | 5d | 2026-10-08 | 2026-10-13 | PG-Q-EN-AR-SD-AP-30, PG-Q-EN-AR-SD-AP-80, PG-Q-EN-AR-SD-AP-40, PG-Q-PR-LL-MT-DL-10_R, PG-Q-CON-B-AR-WF-40 |  | 13d |
|  | 3 | **ROOF FINISHES** |  | 2026-10-01 | 2026-10-19 |  |  |  |
| PG-Q-CON-B-AR-RF-10 |  | Waterproofing on Floor | 4d | 2026-10-01 | 2026-10-05 | PG-Q-CON-B-AR-WF-30, PG-Q-EN-AR-SD-AP-20, PG-Q-PR-SL-CO-DL-30, PG-Q-PR-SL-AR-DL-120 |  | 12d |
| PG-Q-CON-B-AR-RF-20 |  | Epoxy Flooring and Finishes | 6d | 2026-10-06 | 2026-10-12 | PG-Q-CON-B-AR-RF-10, PG-Q-PR-SL-AR-DL-30 |  | 12d |
| PG-Q-CON-B-AR-RF-30 |  | Steel ladder and Steel roof scupper Installation | 1d | 2026-10-19 | 2026-10-19 | PG-Q-CON-B-AR-RF-20, PG-Q-PR-SL-MT-DL-10_R, PG-Q-PR-SL-MT-DL-20_R, PG-Q-PR-SL-MT-DL-30_R, PG-Q-CON-B-AR-GF-70 FF |  | 7d |
|  | MEP | **MEP WORK** |  | 2026-06-16 | 2026-10-20 |  |  |  |
|  | MEC | **MECANICAL WORKS** |  | 2026-06-16 | 2026-10-20 |  |  |  |
|  | FF | **FIRE FIGHTING SYSTEM** |  | 2026-10-20 | 2026-10-20 |  |  |  |
| PG-Q-CON-B-GF-FF-10 |  | Fire Extinguisher Installation | 1d | 2026-10-20 | 2026-10-20 | PG-Q-PR-SL-FF-DL-10_R, PG-Q-CON-B-AR-RF-30 |  | 7d |
|  | DS | **SEWER AND DRAINAGE SYSTEM** |  | 2026-06-16 | 2026-09-02 |  |  |  |
| PG-Q-CON-B-GF-DR-10 |  | Sewer and Drainge System Main Lines Installation | 2d | 2026-06-16 A | 2026-06-17 A | PG-Q-CON-B-GF-WS-10, PG-Q-EN-ME-SD-AP-50, PG-Q-PR-SL-PB-DL-20 | 100% |  |
| PG-Q-CON-B-GF-DR-20 |  | Sewer and Drainge System Pipes and fittings Installation | 2d | 2026-06-16 A | 2026-06-17 A | PG-Q-CON-B-GF-DR-10, PG-Q-EN-ME-SD-AP-60, PG-Q-EN-ME-SD-AP-70, PG-Q-PR-SL-PB-DL-20, PG-Q-PR-SL-PB-DL-30, PG-Q-CON-B-GF-WS-10 | 100% |  |
| PG-Q-CON-B-GF-DR-30 |  | Sanitaryware Installation (Final Fix) | 2d | 2026-09-01 | 2026-09-02 | PG-Q-CON-B-GF-DR-20, PG-Q-CON-B-GF-WS-30, PG-Q-EN-ME-SD-AP-70, PG-Q-CON-B-GF-WS-20 |  | 7d |

| ID | WBS | Task | Duration | Start | Finish | Predecessors | Complete | Total float |
| --- | --- | --- | --- | --- | --- | --- | --- | --- |
|  | HV | **HVAC SYSTEM** |  | 2026-08-12 | 2026-08-23 |  |  |  |
| PG-Q-CON-B-GF-AC-10 |  | Duct Work and Exhaust Fan Installation | 7d | 2026-08-12 | 2026-08-19 | PG-Q-CON-B-AR-GF-10, PG-Q-PR-SL-AC-DL-20_R, PG-Q-PR-SL-AC-DL-40_R |  | 9d |
| PG-Q-CON-B-GF-AC-20 |  | Split AC, Grills & Diffuser Installation | 3d | 2026-08-20 | 2026-08-23 | PG-Q-CON-B-GF-AC-10, PG-Q-CON-B-AR-GF-20, PG-Q-PR-SL-AC-DL-10_R, PG-Q-PR-SL-AC-DL-30_R |  | 9d |
|  | WS | **WATER SUPPLY SYSTEM** |  | 2026-06-16 | 2026-08-31 |  |  |  |
| PG-Q-CON-B-GF-WS-10 |  | Water Supply Main Lines Installation | 2d | 2026-06-16 A | 2026-06-17 A | PG-Q-EN-ME-SD-AP-10, PG-Q-PR-SL-PB-DL-10, PG-Q-EN-AR-SD-AP-10 | 100% |  |
| PG-Q-CON-B-GF-WS-20 |  | Water Supply Pipes Installation (Cold and Hot Water) | 2d | 2026-08-24 | 2026-08-25 | PG-Q-CON-B-GF-WS-10, PG-Q-CON-B-GF-AC-20, PG-Q-EN-ME-SD-AP-10, PG-Q-PR-SL-PB-DL-10, PG-Q-CON-B-GF-AC-10 |  | 9d |
| PG-Q-CON-B-GF-WS-30 |  | Water Supply Accesories and Booster pump Installation | 3d | 2026-08-29 | 2026-08-31 | PG-Q-CON-B-GF-WS-20, PG-Q-CON-B-AR-WF-10, PG-Q-EN-ME-SD-AP-20, PG-Q-EN-ME-SD-AP-30, PG-Q-PR-LL-PB-DL-10_R, PG-Q-PR-LL-PB-MA-10_R |  | 7d |
|  | ELC | **ELECTRICAL WORKS** |  | 2026-07-13 | 2026-09-15 |  |  |  |
| PG-Q-CON-B-GF-EL-10 |  | Pipes & Conduits Installation | 8d | 2026-07-13 | 2026-07-21 | PG-Q-CON-B-GF-DR-10, PG-Q-PR-SL-EL-DL-10_R |  | 25d |
| PG-Q-CON-B-GF-EL-50 |  | Electrical Light Fixtures Installation | 2d | 2026-09-03 | 2026-09-05 | PG-Q-CON-B-GF-DR-30, PG-Q-PR-LL-EL-DL-40_R |  | 7d |
| PG-Q-CON-B-GF-EL-30 |  | Fire Alarm Devices Installation | 3d | 2026-09-06 | 2026-09-08 | PG-Q-CON-B-GF-EL-50 |  | 7d |
| PG-Q-CON-B-GF-EL-40 |  | Telecom & CCTV Devices Installation | 3d | 2026-09-09 | 2026-09-12 | PG-Q-CON-B-GF-EL-30 |  | 7d |
| PG-Q-CON-B-GF-EL-20 |  | Electrical & ELV Wiring Works | 3d | 2026-09-13 | 2026-09-15 | PG-Q-CON-B-GF-EL-40 |  | 7d |
|  | TE & CO | **PROJECT CLOSOUT** |  | 2026-05-22 | 2026-12-16 |  |  |  |
| PG-Q-PCL-10 |  | Testing, Commessioning for All Systems(Completed) | 25d | 2026-05-22 A | 2026-06-24 A | PG-Q-CON-EX-LS-SS-20 SS | 100% |  |
| PG-Q-PCL-10_R |  | Testing, Commessioning for All Systems(Remaining) | 10.8d | 2026-11-15 | 2026-11-26 | PG-Q-CON-B-GF-EL-20 FF, PG-Q-CON-B-GF-WS-30 FF, PG-Q-CON-B-GF-AC-20 FF, PG-Q-CON-B-GF-DR-30 FF, PG-Q-CON-B-GF-FF-10 FF, PG-Q-CON-EX-AD-AR-30 FF, PG-Q-CON-EX-AD-EL-50 FF, PG-Q-CON-EX-AD-ME-30 FF, PG-Q-CON-EX-LS-SS-20_R SS, PG-Q-PCL-10 |  | 0d |
| PG-Q-PCL-20 |  | As-Built Drawings | 15d | 2026-11-15 | 2026-12-02 | PG-Q-PCL-10_R SS |  | 8.8d |
| PG-Q-PCL-30 |  | Snag list Submission | 3d | 2026-11-28 | 2026-11-30 | PG-Q-PCL-10_R, PG-Q-CON-EX-AD-AR-30 |  | 0d |
| PG-Q-PCL-40 |  | Snag list Closeout | 10d | 2026-12-01 | 2026-12-12 | PG-Q-PCL-30, PG-Q-PCL-20 FF |  | 0d |
| PG-Q-PCL-50 |  | Issuing Approvals | 3d | 2026-12-13 | 2026-12-15 | PG-Q-PCL-40, PG-Q-PCL-20 |  | 0d |
| PG-Q-PCL-60 |  | Handing Over | 1d | 2026-12-16 | 2026-12-16 | PG-Q-PCL-50 |  | 0d |
|  | HAIL | **HAIL** |  | 2026-02-17 | 2026-12-16 |  |  |  |
|  | MOB | **MOBILIZATION** |  | 2026-02-17 | 2026-03-28 |  |  |  |
|  | CAM | **TEMPORARY CAMP** |  | 2026-02-17 | 2026-03-27 |  |  |  |
| PG-H-MOB-CAM-10 |  | Temporary Underground Utilities works | 28.12d | 2026-02-17 A | 2026-03-27 A | PG-GN-MS-10 SS | 100% |  |
| PG-H-MOB-CAM-20 |  | Temporary Porta-Cabins | 21.12d | 2026-02-26 A | 2026-03-27 A | PG-H-MOB-CAM-10 | 100% |  |
| PG-H-MOB-CAM-30 |  | Temporary Toilets | 21.12d | 2026-02-26 A | 2026-03-27 A | PG-H-MOB-CAM-10 | 100% |  |
| PG-H-MOB-CAM-40 |  | Temporary Mosque | 13.12d | 2026-03-08 A | 2026-03-27 A | PG-H-MOB-CAM-20, PG-H-MOB-CAM-30 | 100% |  |
|  | OF | **SITE OFFICES** |  | 2026-02-17 | 2026-03-28 |  |  |  |
| PG-H-MOB-SO-10 |  | Temporary Underground Utilities works | 29.25d | 2026-02-17 A | 2026-03-28 A | PG-GN-MS-10 SS | 100% |  |
| PG-H-MOB-SO-20 |  | Temporary Porta-Cabins | 23.25d | 2026-02-25 A | 2026-03-28 A | PG-H-MOB-SO-10 | 100% |  |
| PG-H-MOB-SO-30 |  | Temporary Toilets | 23.25d | 2026-02-25 A | 2026-03-28 A | PG-H-MOB-SO-10 | 100% |  |
| PG-H-MOB-SO-40 |  | Temporary Mosque | 17.25d | 2026-03-04 A | 2026-03-28 A | PG-H-MOB-SO-20, PG-H-MOB-SO-30 | 100% |  |
| PG-H-MOB-SO-50 |  | Car Parking Area | 10.25d | 2026-03-12 A | 2026-03-28 A | PG-H-MOB-SO-40, PG-H-GEN-20, PG-H-GEN-30, PG-H-GEN-40 | 100% |  |
|  | GE.REQ | **GENERAL REQUIEREMENTS** |  | 2026-02-17 | 2026-04-22 |  |  |  |
| PG-H-GEN-20 |  | HSSE Submission Plan | 51.25d | 2026-02-17 A | 2026-04-22 A | PG-GN-MS-10 SS | 100% |  |
| PG-H-GEN-30 |  | Surveying report Submission Plan | 51.25d | 2026-02-17 A | 2026-04-22 A | PG-GN-MS-10 SS | 100% |  |
| PG-H-GEN-40 |  | Baseline Submission | 6.25d | 2026-02-28 A | 2026-03-05 A | PG-GN-MS-10 SS | 100% |  |
| PG-H-GEN-10 |  | QA/QC Submission Plan | 16.25d | 2026-03-12 A | 2026-04-04 A | PG-H-GEN-30, PG-GN-MS-10 SS | 100% |  |
|  | ENG | **ENGINEERING** |  | 2026-02-17 | 2026-07-14 |  |  |  |
|  | 1 | **SHOP DRAWINGS SUBMITTALS** |  | 2026-02-17 | 2026-06-15 |  |  |  |
|  | 1 | **STRUCTURAL DRAWINGS** |  | 2026-02-17 | 2026-05-04 |  |  |  |
|  | 1 | **PROJECT FENCE** |  | 2026-02-17 | 2026-04-29 |  |  |  |
| PG-H-EN-ST-SD-SB-10 |  | Excavation Drawings | 57.25d | 2026-02-17 A | 2026-04-29 A | PG-GN-MS-10 SS | 100% |  |
| PG-H-EN-ST-SD-SB-20 |  | Foundation Drawings | 55.25d | 2026-02-19 A | 2026-04-29 A | PG-H-EN-ST-SD-SB-10 | 100% |  |
|  | 4 | **TOILET BUILDING** |  | 2026-02-19 | 2026-04-13 |  |  |  |
| PG-H-EN-ST-SD-SB-30 |  | Excavation Drawings | 41.25d | 2026-02-19 A | 2026-04-13 A | PG-H-EN-ST-SD-SB-10 | 100% |  |
| PG-H-EN-ST-SD-SB-40 |  | Foundation Drawings | 39.25d | 2026-02-23 A | 2026-04-13 A | PG-H-EN-ST-SD-SB-30 | 100% |  |
|  | 5 | **WATER STORAGE TANK** |  | 2026-02-23 | 2026-04-13 |  |  |  |
| PG-H-EN-ST-SD-SB-60 |  | Excavation Drawings | 39.25d | 2026-02-23 A | 2026-04-13 A | PG-H-EN-ST-SD-SB-30 | 100% |  |
| PG-H-EN-ST-SD-SB-50 |  | Foundation Drawings | 37.25d | 2026-02-25 A | 2026-04-13 A | PG-H-EN-ST-SD-SB-60 | 100% |  |
|  | 6 | **SEPTIC TANK** |  | 2026-02-25 | 2026-05-04 |  |  |  |
| PG-H-EN-ST-SD-SB-70 |  | Reinforcement Detail Drawings | 55.25d | 2026-02-25 A | 2026-05-04 A | PG-H-EN-ST-SD-SB-60 | 100% |  |
| PG-H-EN-ST-SD-SB-80 |  | Concrete Detail Drawings | 52.25d | 2026-03-01 A | 2026-05-04 A | PG-H-EN-ST-SD-SB-70, PG-H-EN-ST-SD-SB-70 SS | 100% |  |
|  | 2 | **ARCHITECTURAL DRAWINGS** |  | 2026-02-23 | 2026-04-13 |  |  |  |
|  | 1 | **TOILET BUILDING** |  | 2026-02-23 | 2026-04-13 |  |  |  |
| PG-H-EN-AR-SD-SB-10 |  | Ground Floor Plan | 36.25d | 2026-02-23 A | 2026-04-09 A | PG-H-EN-ST-SD-SB-30 | 100% |  |
| PG-H-EN-AR-SD-SB-20 |  | Roof Floor Plan | 35.25d | 2026-02-28 A | 2026-04-13 A | PG-H-EN-AR-SD-SB-10 | 100% |  |
| PG-H-EN-AR-SD-SB-50 |  | Floor Finish Layout | 31.62d | 2026-02-28 A | 2026-04-09 A | PG-H-EN-AR-SD-SB-10 | 100% |  |
| PG-H-EN-AR-SD-SB-60 |  | Reflected Ceiling Layout | 32.25d | 2026-02-28 A | 2026-04-09 A | PG-H-EN-AR-SD-SB-10 | 100% |  |
| PG-H-EN-AR-SD-SB-70 |  | Enlarged Toilets Layout | 35.25d | 2026-02-28 A | 2026-04-13 A | PG-H-EN-AR-SD-SB-10 | 100% |  |
| PG-H-EN-AR-SD-SB-100 |  | Cladding Details | 32.25d | 2026-03-03 A | 2026-04-13 A | PG-H-EN-AR-SD-SB-50 | 100% |  |
| PG-H-EN-AR-SD-SB-30 |  | Elevations | 29.25d | 2026-03-03 A | 2026-04-09 A | PG-H-EN-AR-SD-SB-20 | 100% |  |
| PG-H-EN-AR-SD-SB-80 |  | Doors & Windows Schedule | 32.25d | 2026-03-03 A | 2026-04-13 A | PG-H-EN-AR-SD-SB-50 | 100% |  |
| PG-H-EN-AR-SD-SB-90 |  | Aluminum Work | 32.25d | 2026-03-03 A | 2026-04-13 A | PG-H-EN-AR-SD-SB-50 | 100% |  |
| PG-H-EN-AR-SD-SB-40 |  | Sections | 27.25d | 2026-03-05 A | 2026-04-09 A | PG-H-EN-AR-SD-SB-30 | 100% |  |
|  | 3 | **LANDSCAPE DRAWINGS** |  | 2026-02-24 | 2026-04-13 |  |  |  |
| PG-H-EN-LS-SD-SB-10 |  | Hardscape Layout Plan | 38.25d | 2026-02-24 A | 2026-04-13 A | PG-H-EN-ST-SD-SB-20 | 100% |  |
| PG-H-EN-LS-SD-SB-100 |  | Playground Details | 35.25d | 2026-02-24 A | 2026-04-09 A | PG-H-EN-ST-SD-SB-20 | 100% |  |
| PG-H-EN-LS-SD-SB-20 |  | Interlock Tile Details | 35.25d | 2026-02-24 A | 2026-04-09 A | PG-H-EN-ST-SD-SB-20 | 100% |  |

| ID | WBS | Task | Duration | Start | Finish | Predecessors | Complete |
| --- | --- | --- | --- | --- | --- | --- | --- |
| PG-H-EN-LS-SD-SB-30 |  | Stamped Concrete Pattern & Section | 38.25d | 2026-02-24 A | 2026-04-13 A | PG-H-EN-ST-SD-SB-20 | 100% |
| PG-H-EN-LS-SD-SB-40 |  | Tartan Flooring Layout & Details | 38.25d | 2026-02-24 A | 2026-04-13 A | PG-H-EN-ST-SD-SB-20 | 100% |
| PG-H-EN-LS-SD-SB-50 |  | Bike Path Layout & Details | 35.25d | 2026-02-24 A | 2026-04-09 A | PG-H-EN-ST-SD-SB-20 | 100% |
| PG-H-EN-LS-SD-SB-60 |  | Walking Path layout & Details | 35.25d | 2026-02-24 A | 2026-04-09 A | PG-H-EN-ST-SD-SB-20 | 100% |
| PG-H-EN-LS-SD-SB-70 |  | Tree Planting Plan & Details | 35.25d | 2026-02-24 A | 2026-04-09 A | PG-H-EN-ST-SD-SB-20 | 100% |
| PG-H-EN-LS-SD-SB-80 |  | Traffic Sign Location & Details | 38.25d | 2026-02-24 A | 2026-04-13 A | PG-H-EN-ST-SD-SB-20 | 100% |
| PG-H-EN-LS-SD-SB-90 |  | Football Playground Layout | 38.25d | 2026-02-24 A | 2026-04-13 A | PG-H-EN-ST-SD-SB-20 | 100% |
|  | 4 | **MECHANICAL DRAWINGS** |  | 2026-03-01 | 2026-05-04 |  |  |
|  | 1 | **WATER SUPPLY SYSTEM** |  | 2026-03-01 | 2026-04-09 |  |  |
| PG-H-EN-ME-SD-SB-20 |  | Pump Room Layout | 31.25d | 2026-03-01 A | 2026-04-09 A | PG-H-EN-LS-SD-SB-10 | 100% |
| PG-H-EN-ME-SD-SB-10 |  | Cold & Hot Water Piping Layout | 27.25d | 2026-03-05 A | 2026-04-09 A | PG-H-EN-ME-SD-SB-20 | 100% |
| PG-H-EN-ME-SD-SB-30 |  | Booster Pump Details | 27.25d | 2026-03-05 A | 2026-04-09 A | PG-H-EN-ME-SD-SB-20 | 100% |
| PG-H-EN-ME-SD-SB-40 |  | GRP Water Tank Details | 23.25d | 2026-03-10 A | 2026-04-09 A | PG-H-EN-ME-SD-SB-10, PG-H-EN-ME-SD-SB-20 | 100% |
|  | 2 | **SEWER AND DRAINAGE SYSTEM** |  | 2026-03-05 | 2026-04-09 |  |  |
| PG-H-EN-ME-SD-SB-50 |  | Drainage Layout | 27.25d | 2026-03-05 A | 2026-04-09 A | PG-H-EN-ME-SD-SB-20 | 100% |
| PG-H-EN-ME-SD-SB-60 |  | Floor Drains & Cleanouts Details | 23.25d | 2026-03-10 A | 2026-04-09 A | PG-H-EN-ME-SD-SB-50 | 100% |
| PG-H-EN-ME-SD-SB-70 |  | Inspection Chamber Details | 20.25d | 2026-03-14 A | 2026-04-09 A | PG-H-EN-ME-SD-SB-60 | 100% |
|  | 3 | **IRRIGATION SYSTEM** |  | 2026-03-10 | 2026-05-04 |  |  |
| PG-H-EN-ME-SD-SB-80 |  | HDPE Pipe Routing | 44.25d | 2026-03-10 A | 2026-05-04 A | PG-H-EN-ME-SD-SB-50 | 100% |
| PG-H-EN-ME-SD-SB-90 |  | Irrigation Network Layout | 41.25d | 2026-03-14 A | 2026-05-04 A | PG-H-EN-ME-SD-SB-80, PG-H-EN-ME-SD-SB-80 SS | 100% |
|  | 5 | **ELECTRICAL DRAWINGS** |  | 2026-05-11 | 2026-06-15 |  |  |
|  | 1 | **POWER AND LIGHTING SYSTEM** |  | 2026-05-11 | 2026-06-15 |  |  |
| PG-H-EN-EL-SD-SB-10 |  | Main Distribution Board (MDB) Layout | 27.25d | 2026-05-11 A | 2026-06-15 A | PG-H-EN-ME-SD-SB-20 | 100% |
| PG-H-EN-EL-SD-SB-20 |  | Pump Room Power Panel | 27.25d | 2026-05-11 A | 2026-06-15 A | PG-H-EN-EL-SD-SB-10, PG-H-EN-EL-SD-SB-10 SS | 100% |
| PG-H-EN-EL-SD-SB-30 |  | Street Lighting Power Panel | 27.25d | 2026-05-11 A | 2026-06-15 A | PG-H-EN-EL-SD-SB-10, PG-H-EN-EL-SD-SB-10 SS | 100% |
| PG-H-EN-EL-SD-SB-40 |  | Site Lighting Pole Layout | 27.25d | 2026-05-11 A | 2026-06-15 A | PG-H-EN-EL-SD-SB-30, PG-H-EN-EL-SD-SB-30 SS | 100% |
|  | 2 | **ELV SYSTEM** |  | 2026-05-11 | 2026-06-15 |  |  |
| PG-H-EN-EL-SD-SB-50 |  | Telecom & Data Layout | 27.25d | 2026-05-11 A | 2026-06-15 A | PG-H-EN-ME-SD-SB-20 | 100% |
| PG-H-EN-EL-SD-SB-60 |  | CCTV Camera Layout | 27.25d | 2026-05-11 A | 2026-06-15 A | PG-H-EN-EL-SD-SB-50, PG-H-EN-EL-SD-SB-50 SS | 100% |
| PG-H-EN-EL-SD-SB-70 |  | Access Control Layout | 27.25d | 2026-05-11 A | 2026-06-15 A | PG-H-EN-EL-SD-SB-60, PG-H-EN-EL-SD-SB-60 SS | 100% |
| PG-H-EN-EL-SD-SB-80 |  | AV System Layout | 27.25d | 2026-05-11 A | 2026-06-15 A | PG-H-EN-EL-SD-SB-50, PG-H-EN-EL-SD-SB-50 SS | 100% |
|  | 3 | **FIRE ALARM SYSTEM** |  | 2026-05-11 | 2026-06-15 |  |  |
| PG-H-EN-EL-SD-SB-100 |  | Detector & Manual Call Point Details | 27.25d | 2026-05-11 A | 2026-06-15 A | PG-H-EN-EL-SD-SB-90, PG-H-EN-EL-SD-SB-90 SS | 100% |
| PG-H-EN-EL-SD-SB-110 |  | Control Panel Wiring Diagram | 27.25d | 2026-05-11 A | 2026-06-15 A | PG-H-EN-EL-SD-SB-100, PG-H-EN-EL-SD-SB-100 SS | 100% |
| PG-H-EN-EL-SD-SB-90 |  | Fire Alarm Layout | 27.25d | 2026-05-11 A | 2026-06-15 A | PG-H-EN-ME-SD-SB-20 | 100% |
|  | 2 | **SHOP DRAWINGS APPROVALS** |  | 2026-02-19 | 2026-06-16 |  |  |
|  | 1 | **STRUCTURAL DRAWINGS** |  | 2026-02-19 | 2026-05-06 |  |  |
|  | 1 | **PROJECT FENCE** |  | 2026-02-19 | 2026-04-29 |  |  |
| PG-H-EN-ST-SD-AP-10 |  | Excavation Drawings | 55.25d | 2026-02-19 A | 2026-04-29 A | PG-H-EN-ST-SD-SB-10 | 100% |
| PG-H-EN-ST-SD-AP-20 |  | Foundation Drawings | 52.25d | 2026-02-24 A | 2026-04-29 A | PG-H-EN-ST-SD-SB-20, PG-H-EN-ST-SD-AP-10 | 100% |
|  | 4 | **TOILET BUILDING** |  | 2026-02-23 | 2026-04-16 |  |  |
| PG-H-EN-ST-SD-AP-30 |  | Excavation Drawings | 42.25d | 2026-02-23 A | 2026-04-16 A | PG-H-EN-ST-SD-SB-30 | 100% |
| PG-H-EN-ST-SD-AP-40 |  | Foundation Drawings | 39.25d | 2026-02-26 A | 2026-04-16 A | PG-H-EN-ST-SD-SB-40, PG-H-EN-ST-SD-AP-30 | 100% |
|  | 5 | **WATER STORAGE TANK** |  | 2026-02-25 | 2026-04-16 |  |  |
| PG-H-EN-ST-SD-AP-50 |  | Excavation Drawings | 40.25d | 2026-02-25 A | 2026-04-16 A | PG-H-EN-ST-SD-SB-60 | 100% |
| PG-H-EN-ST-SD-AP-60 |  | Foundation Drawings | 37.25d | 2026-03-01 A | 2026-04-16 A | PG-H-EN-ST-SD-SB-50, PG-H-EN-ST-SD-AP-50 | 100% |
|  | 6 | **SEPTIC TANK** |  | 2026-03-01 | 2026-05-06 |  |  |
| PG-H-EN-ST-SD-AP-70 |  | Reinforcement Detail Drawings | 54.25d | 2026-03-01 A | 2026-05-06 A | PG-H-EN-ST-SD-SB-70 | 100% |
| PG-H-EN-ST-SD-AP-80 |  | Concrete Detail Drawings | 51.25d | 2026-03-04 A | 2026-05-06 A | PG-H-EN-ST-SD-SB-80, PG-H-EN-ST-SD-AP-70 | 100% |
|  | 2 | **ARCHITECTURAL DRAWINGS** |  | 2026-02-28 | 2026-04-16 |  |  |
|  | 1 | **TOILET BUILDING** |  | 2026-02-28 | 2026-04-16 |  |  |
| PG-H-EN-AR-SD-AP-10 |  | Ground Floor Plan | 38.25d | 2026-02-28 A | 2026-04-16 A | PG-H-EN-AR-SD-SB-10 | 100% |
| PG-H-EN-AR-SD-AP-20 |  | Roof Floor Plan | 35.25d | 2026-03-03 A | 2026-04-16 A | PG-H-EN-AR-SD-SB-20 | 100% |
| PG-H-EN-AR-SD-AP-50 |  | Floor Finish Layout | 33.25d | 2026-03-05 A | 2026-04-16 A | PG-H-EN-AR-SD-SB-50, PG-H-EN-AR-SD-AP-10 | 100% |
| PG-H-EN-AR-SD-AP-60 |  | Reflected Ceiling Layout | 33.25d | 2026-03-05 A | 2026-04-16 A | PG-H-EN-AR-SD-SB-60, PG-H-EN-AR-SD-AP-10 | 100% |
| PG-H-EN-AR-SD-AP-70 |  | Enlarged Toilets Layout | 33.25d | 2026-03-05 A | 2026-04-16 A | PG-H-EN-AR-SD-SB-70, PG-H-EN-AR-SD-AP-10 | 100% |
| PG-H-EN-AR-SD-AP-30 |  | Elevations | 32.25d | 2026-03-07 A | 2026-04-16 A | PG-H-EN-AR-SD-SB-30, PG-H-EN-AR-SD-AP-20 | 100% |
| PG-H-EN-AR-SD-AP-80 |  | Doors & Windows Schedule | 32.25d | 2026-03-07 A | 2026-04-16 A | PG-H-EN-AR-SD-SB-80 | 100% |
| PG-H-EN-AR-SD-AP-100 |  | Cladding Details | 31.25d | 2026-03-08 A | 2026-04-16 A | PG-H-EN-AR-SD-SB-100 | 100% |
| PG-H-EN-AR-SD-AP-90 |  | Aluminum Work | 31.25d | 2026-03-08 A | 2026-04-16 A | PG-H-EN-AR-SD-SB-90 | 100% |
| PG-H-EN-AR-SD-AP-40 |  | Sections | 29.25d | 2026-03-10 A | 2026-04-16 A | PG-H-EN-AR-SD-SB-40, PG-H-EN-AR-SD-AP-30 | 100% |
|  | 3 | **LANDSCAPE DRAWINGS** |  | 2026-02-28 | 2026-04-16 |  |  |
| PG-H-EN-LS-SD-AP-50 |  | Bike Path Layout & Details | 38.25d | 2026-02-28 A | 2026-04-16 A | PG-H-EN-LS-SD-SB-50 | 100% |
| PG-H-EN-LS-SD-AP-60 |  | Walking Path layout & Details | 38.25d | 2026-02-28 A | 2026-04-16 A | PG-H-EN-LS-SD-SB-60 | 100% |
| PG-H-EN-LS-SD-AP-80 |  | Traffic Sign Location & Details | 38.25d | 2026-02-28 A | 2026-04-16 A | PG-H-EN-LS-SD-SB-80 | 100% |
| PG-H-EN-LS-SD-AP-10 |  | Hardscape Layout Plan | 37.25d | 2026-03-01 A | 2026-04-16 A | PG-H-EN-LS-SD-SB-10 | 100% |
| PG-H-EN-LS-SD-AP-100 |  | Playground Details | 37.25d | 2026-03-01 A | 2026-04-16 A | PG-H-EN-LS-SD-SB-100 | 100% |
| PG-H-EN-LS-SD-AP-40 |  | Tartan Flooring Layout & Details | 37.25d | 2026-03-01 A | 2026-04-16 A | PG-H-EN-LS-SD-SB-40 | 100% |
| PG-H-EN-LS-SD-AP-70 |  | Tree Planting Plan & Details | 37.25d | 2026-03-01 A | 2026-04-16 A | PG-H-EN-LS-SD-SB-70 | 100% |
| PG-H-EN-LS-SD-AP-90 |  | Football Playground Layout | 37.25d | 2026-03-01 A | 2026-04-16 A | PG-H-EN-LS-SD-SB-90 | 100% |

| ID | WBS | Task | Duration | Start | Finish | Predecessors | Complete | Total float |
| --- | --- | --- | --- | --- | --- | --- | --- | --- |
| PG-H-EN-LS-SD-AP-20 |  | Interlock Tile Details | 29.25d | 2026-03-10 A | 2026-04-16 A | PG-H-EN-LS-SD-SB-20, PG-H-EN-LS-SD-AP-10 | 100% |  |
| PG-H-EN-LS-SD-AP-30 |  | Stamped Concrete Pattern & Section | 23.25d | 2026-03-17 A | 2026-04-16 A | PG-H-EN-LS-SD-SB-30, PG-H-EN-LS-SD-AP-20 | 100% |  |
|  | 4 | **MECHANICAL DRAWINGS** |  | 2026-03-10 | 2026-05-06 |  |  |  |
|  | 1 | **WATER SUPPLY SYSTEM** |  | 2026-03-10 | 2026-04-13 |  |  |  |
| PG-H-EN-ME-SD-AP-10 |  | Cold & Hot Water Piping Layout | 26.25d | 2026-03-10 A | 2026-04-13 A | PG-H-EN-ME-SD-SB-10 | 100% |  |
| PG-H-EN-ME-SD-AP-30 |  | Booster Pump Details | 25.25d | 2026-03-11 A | 2026-04-13 A | PG-H-EN-ME-SD-SB-30 | 100% |  |
| PG-H-EN-ME-SD-AP-40 |  | GRP Water Tank Details | 22.25d | 2026-03-15 A | 2026-04-13 A | PG-H-EN-ME-SD-SB-40 | 100% |  |
| PG-H-EN-ME-SD-AP-20 |  | Pump Room Layout | 20.25d | 2026-03-17 A | 2026-04-13 A | PG-H-EN-ME-SD-SB-20, PG-H-EN-ME-SD-AP-10 | 100% |  |
|  | 2 | **SEWER AND DRAINAGE SYSTEM** |  | 2026-03-10 | 2026-04-13 |  |  |  |
| PG-H-EN-ME-SD-AP-50 |  | Drainage Layout | 26.25d | 2026-03-10 A | 2026-04-13 A | PG-H-EN-ME-SD-SB-50 | 100% |  |
| PG-H-EN-ME-SD-AP-60 |  | Floor Drains & Cleanouts Details | 20.25d | 2026-03-17 A | 2026-04-13 A | PG-H-EN-ME-SD-SB-60, PG-H-EN-ME-SD-AP-50 | 100% |  |
| PG-H-EN-ME-SD-AP-70 |  | Inspection Chamber Details | 20.25d | 2026-03-17 A | 2026-04-13 A | PG-H-EN-ME-SD-SB-70 | 100% |  |
|  | 3 | **IRRIGATION SYSTEM** |  | 2026-03-14 | 2026-05-06 |  |  |  |
| PG-H-EN-ME-SD-AP-80 |  | HDPE Pipe Routing | 43.25d | 2026-03-14 A | 2026-05-06 A | PG-H-EN-ME-SD-SB-80 | 100% |  |
| PG-H-EN-ME-SD-AP-90 |  | Irrigation Network Layout | 39.25d | 2026-03-18 A | 2026-05-06 A | PG-H-EN-ME-SD-SB-90 | 100% |  |
|  | 5 | **ELECTRICAL DRAWINGS** |  | 2026-05-12 | 2026-06-16 |  |  |  |
|  | 1 | **POWER AND LIGHTING SYSTEM** |  | 2026-05-12 | 2026-06-16 |  |  |  |
| PG-H-EN-EL-SD-AP-10 |  | Main Distribution Board (MDB) Layout | 27.25d | 2026-05-12 A | 2026-06-16 A | PG-H-EN-EL-SD-SB-10, PG-H-EN-EL-SD-SB-10 SS | 100% |  |
| PG-H-EN-EL-SD-AP-20 |  | Pump Room Power Panel | 27.25d | 2026-05-12 A | 2026-06-16 A | PG-H-EN-EL-SD-SB-20, PG-H-EN-EL-SD-SB-20 SS | 100% |  |
| PG-H-EN-EL-SD-AP-30 |  | Street Lighting Power Panel | 27.25d | 2026-05-12 A | 2026-06-16 A | PG-H-EN-EL-SD-SB-30, PG-H-EN-EL-SD-SB-30 SS | 100% |  |
| PG-H-EN-EL-SD-AP-40 |  | Site Lighting Pole Layout | 27.25d | 2026-05-12 A | 2026-06-16 A | PG-H-EN-EL-SD-SB-40, PG-H-EN-EL-SD-SB-40 SS | 100% |  |
|  | 2 | **ELV SYSTEM** |  | 2026-05-12 | 2026-06-16 |  |  |  |
| PG-H-EN-EL-SD-AP-50 |  | Telecom & Data Layout | 27.25d | 2026-05-12 A | 2026-06-16 A | PG-H-EN-EL-SD-SB-50, PG-H-EN-EL-SD-SB-50 SS | 100% |  |
| PG-H-EN-EL-SD-AP-60 |  | CCTV Camera Layout | 27.25d | 2026-05-12 A | 2026-06-16 A | PG-H-EN-EL-SD-SB-60, PG-H-EN-EL-SD-SB-60 SS | 100% |  |
| PG-H-EN-EL-SD-AP-70 |  | Access Control Layout | 27.25d | 2026-05-12 A | 2026-06-16 A | PG-H-EN-EL-SD-SB-70, PG-H-EN-EL-SD-SB-70 SS | 100% |  |
| PG-H-EN-EL-SD-AP-80 |  | AV System Layout | 27.25d | 2026-05-12 A | 2026-06-16 A | PG-H-EN-EL-SD-SB-80, PG-H-EN-EL-SD-SB-80 SS | 100% |  |
|  | 3 | **FIRE ALARM SYSTEM** |  | 2026-05-12 | 2026-06-16 |  |  |  |
| PG-H-EN-EL-SD-AP-100 |  | Detector & Manual Call Point Details | 27.25d | 2026-05-12 A | 2026-06-16 A | PG-H-EN-EL-SD-SB-100, PG-H-EN-EL-SD-SB-100 SS | 100% |  |
| PG-H-EN-EL-SD-AP-110 |  | Control Panel Wiring Diagram | 27.25d | 2026-05-12 A | 2026-06-16 A | PG-H-EN-EL-SD-SB-110, PG-H-EN-EL-SD-SB-110 SS | 100% |  |
| PG-H-EN-EL-SD-AP-90 |  | Fire Alarm Layout | 27.25d | 2026-05-12 A | 2026-06-16 A | PG-H-EN-EL-SD-SB-90, PG-H-EN-EL-SD-SB-90 SS | 100% |  |
|  | 3 | **MATERIAL SUBMITTALS** |  | 2026-02-17 | 2026-07-06 |  |  |  |
|  | 1 | **LONG LEAD ITEMS** |  | 2026-02-21 | 2026-07-06 |  |  |  |
|  | 2 | **EXTERNAL / LANDSCAPE WORK** |  | 2026-02-25 | 2026-05-05 |  |  |  |
| PG-H-PR-LL-LS-MS-20 |  | Benches, Seats (Rectangular & Circular) | 56.25d | 2026-02-25 A | 2026-05-05 A | PG-H-PR-SL-LS-MS-30 | 100% |  |
| PG-H-PR-LL-LS-MS-30 |  | Fence, gates and accessories | 56.25d | 2026-02-25 A | 2026-05-05 A | PG-H-PR-SL-LS-MS-30 | 100% |  |
| PG-H-PR-LL-LS-MS-10 |  | Bike and Walk Path Materials | 48.25d | 2026-03-07 A | 2026-05-05 A | PG-H-PR-SL-LS-MS-10, PG-H-EN-LS-SD-AP-50, PG-H-EN-LS-SD-AP-60 | 100% |  |
|  | 3 | **SPORTS & RECREATIONAL FACILITIES WORK** |  | 2026-03-08 | 2026-05-05 |  |  |  |
| PG-H-PR-LL-SP-MS-10 |  | Football Playground Materials (Flooring, goal post, nets, paints, etc) | 47.25d | 2026-03-08 A | 2026-05-05 A | PG-H-EN-LS-SD-AP-90, PG-H-EN-LS-SD-AP-100 | 100% |  |
| PG-H-PR-LL-SP-MS-20 |  | Tartan Floor | 47.25d | 2026-03-08 A | 2026-05-05 A | PG-H-EN-LS-SD-AP-40 | 100% |  |
|  | 4 | **CONCRETE WORK** |  | 2026-03-07 | 2026-04-27 |  |  |  |
| PG-H-PR-LL-CO-MS-10 |  | Autoclaved Aerated Panel | 41.25d | 2026-03-07 A | 2026-04-27 A | PG-H-EN-AR-SD-AP-10, PG-H-EN-AR-SD-AP-20 | 100% |  |
|  | 5 | **METAL WORK** |  | 2026-03-11 | 2026-05-05 |  |  |  |
| PG-H-PR-LL-MT-MS-10 |  | Metal Doors | 44.25d | 2026-03-11 A | 2026-05-05 A | PG-H-EN-AR-SD-AP-80 | 100% |  |
| PG-H-PR-LL-MT-MS-20 |  | Curtain Wall | 44.25d | 2026-03-11 A | 2026-05-05 A | PG-H-PR-LL-CO-MS-10 | 100% |  |
|  | 7 | **PLUMBING WORK** |  | 2026-03-11 | 2026-05-05 |  |  |  |
| PG-H-PR-LL-PB-MS-10 |  | Booster Pump | 44.25d | 2026-03-11 A | 2026-05-05 A | PG-H-EN-ME-SD-AP-30 SS | 100% |  |
| PG-H-PR-LL-PB-MS-20 |  | GRP Sectional Panel Water Tanks (4x3x3m) | 40.25d | 2026-03-16 A | 2026-05-05 A | PG-H-PR-LL-PB-MS-10 | 100% |  |
|  | 8 | **IRRIGATION WORK** |  | 2026-02-21 | 2026-05-06 |  |  |  |
| PG-H-PR-LL-IR-MS-10 |  | HDPE Pipes | 60.25d | 2026-02-21 A | 2026-05-06 A | PG-H-PR-LL-IR-MS-20 SS | 100% |  |
| PG-H-PR-LL-IR-MS-20 |  | Irrigation Control System | 60.25d | 2026-02-21 A | 2026-05-06 A | PG-H-PR-LL-EL-MS-50 SS | 100% |  |
|  | 9 | **ELECTRICAL WORK** |  | 2026-05-12 | 2026-07-06 |  |  |  |
| PG-H-PR-LL-EL-MS-10 |  | Main Distribution Board(Completed) | 34.25d | 2026-05-12 A | 2026-06-24 A | PG-H-EN-EL-SD-AP-10 SS | 100% |  |
| PG-H-PR-LL-EL-MS-20 |  | Power Panels (Pump, Street Light)(Completed) | 34.25d | 2026-05-12 A | 2026-06-24 A | PG-H-PR-LL-EL-MS-10 SS | 100% |  |
| PG-H-PR-LL-EL-MS-30 |  | Site Lighting Poles(Completed) | 34.25d | 2026-05-12 A | 2026-06-24 A | PG-H-EN-EL-SD-AP-30 SS | 100% |  |
| PG-H-PR-LL-EL-MS-40 |  | Lighting Fixtures(Completed) | 34.25d | 2026-05-12 A | 2026-06-24 A | PG-H-PR-LL-EL-MS-10 SS | 100% |  |
| PG-H-PR-LL-EL-MS-50 |  | Grounding System Materials (Earth pit rod, LPS, etc)(Completed) | 34.25d | 2026-05-12 A | 2026-06-24 A | PG-GN-MS-10 SS | 100% |  |
| PG-H-PR-LL-EL-MS-60 |  | Telecommunications & Data System Materials (Telephone outlet, CCTV, etc)(Completed) | 34.25d | 2026-05-12 A | 2026-06-24 A | PG-H-EN-EL-SD-AP-50, PG-H-EN-EL-SD-AP-60 SS, PG-H-EN-EL-SD-AP-50 SS | 100% |  |
| PG-H-PR-LL-EL-MS-70 |  | Security and Access Control System Materials(Completed) | 34.25d | 2026-05-12 A | 2026-06-24 A | PG-H-EN-EL-SD-AP-80 SS | 100% |  |
| PG-H-PR-LL-EL-MS-80 |  | Fire Alarm System Materials(Completed) | 34.25d | 2026-05-12 A | 2026-06-24 A | PG-H-EN-EL-SD-AP-90, PG-H-EN-EL-SD-AP-110 SS, PG-H-EN-EL-SD-AP-90 SS | 100% |  |
| PG-H-PR-LL-EL-MS-10_R |  | Main Distribution Board(Remaining) | 8d | 2026-06-25 | 2026-07-04 | PG-H-EN-EL-SD-AP-10 SS, PG-H-PR-LL-EL-MS-10 |  | 15d |
| PG-H-PR-LL-EL-MS-20_R |  | Power Panels (Pump, Street Light)(Remaining) | 8d | 2026-06-25 | 2026-07-04 | PG-H-PR-LL-EL-MS-10_R SS, PG-H-PR-LL-EL-MS-20 |  | 29d |
| PG-H-PR-LL-EL-MS-30_R |  | Site Lighting Poles(Remaining) | 10d | 2026-06-25 | 2026-07-06 | PG-H-EN-EL-SD-AP-30 SS, PG-H-PR-LL-EL-MS-30 |  | 18d |
| PG-H-PR-LL-EL-MS-40_R |  | Lighting Fixtures(Remaining) | 10d | 2026-06-25 | 2026-07-06 | PG-H-PR-LL-EL-MS-10_R SS, PG-H-PR-LL-EL-MS-40 |  | 15d |
| PG-H-PR-LL-EL-MS-50_R |  | Grounding System Materials (Earth pit rod, LPS, etc)(Remaining) | 7d | 2026-06-25 | 2026-07-02 | PG-GN-MS-10 SS, PG-H-PR-LL-EL-MS-50 |  | 17d |
| PG-H-PR-LL-EL-MS-60_R |  | Telecommunications & Data System Materials (Telephone outlet, CCTV, etc)(Remaining) | 10d | 2026-06-25 | 2026-07-06 | PG-H-EN-EL-SD-AP-50, PG-H-EN-EL-SD-AP-60 SS, PG-H-EN-EL-SD-AP-50 SS, PG-H-PR-LL-EL-MS-60 |  | 28d |
| PG-H-PR-LL-EL-MS-70_R |  | Security and Access Control System Materials(Remaining) | 10d | 2026-06-25 | 2026-07-06 | PG-H-EN-EL-SD-AP-80 SS, PG-H-PR-LL-EL-MS-70 |  | 31d |
| PG-H-PR-LL-EL-MS-80_R |  | Fire Alarm System Materials(Remaining) | 10d | 2026-06-25 | 2026-07-06 | PG-H-EN-EL-SD-AP-90, PG-H-EN-EL-SD-AP-110 SS, PG-H-EN-EL-SD-AP-90 SS, PG-H-PR-LL-EL-MS-80 |  | 31d |
|  | 2 | **SHORT LEAD ITEMS** |  | 2026-02-17 | 2026-03-26 |  |  |  |
|  | 2 | **EXTERNAL / LANDSCAPE WORK** |  | 2026-02-17 | 2026-03-16 |  |  |  |
| PG-H-PR-SL-LS-MS-10 |  | Backfilling Materials | 23.25d | 2026-02-17 A | 2026-03-16 A | PG-GN-MS-10 SS | 100% |  |

| ID | WBS | Task | Duration | Start | Finish | Predecessors | Complete |
| --- | --- | --- | --- | --- | --- | --- | --- |
| PG-H-PR-SL-LS-MS-30 |  | Compacted Natural Ground Soil | 20.25d | 2026-02-21 A | 2026-03-16 A | PG-H-PR-SL-LS-MS-10 | 100% |
| PG-H-PR-SL-LS-MS-60 |  | Traffic Signages | 8.25d | 2026-03-08 A | 2026-03-16 A | PG-H-EN-LS-SD-AP-80 | 100% |
| PG-H-PR-SL-LS-MS-20 |  | Interlock tiles | 4.25d | 2026-03-12 A | 2026-03-16 A | PG-H-PR-SL-LS-MS-10, PG-H-EN-LS-SD-AP-20 | 100% |
| PG-H-PR-SL-LS-MS-40 |  | Curb Stone | 4.25d | 2026-03-12 A | 2026-03-16 A | PG-H-PR-SL-LS-MS-10, PG-H-EN-LS-SD-AP-10 | 100% |
| PG-H-PR-SL-LS-MS-50 |  | Thermoplastic pavement road marking | 4.25d | 2026-03-12 A | 2026-03-16 A | PG-H-PR-SL-LS-MS-40 | 100% |
| PG-H-PR-SL-LS-MS-70 |  | Trees | 4.25d | 2026-03-12 A | 2026-03-16 A | PG-H-PR-SL-LS-MS-60, PG-H-EN-LS-SD-AP-70 | 100% |
| PG-H-PR-SL-LS-MS-80 |  | Lawn | 4.25d | 2026-03-12 A | 2026-03-16 A | PG-H-PR-SL-LS-MS-60, PG-H-EN-LS-SD-AP-70 | 100% |
|  | 3 | **CONCRETE WORK** |  | 2026-02-17 | 2026-03-26 |  |  |
| PG-H-PR-SL-CO-MS-10 |  | Steel Rebar | 17.25d | 2026-02-17 A | 2026-03-09 A | PG-GN-MS-10 SS | 100% |
| PG-H-PR-SL-CO-MS-20 |  | Concrete | 13.25d | 2026-02-23 A | 2026-03-09 A | PG-H-PR-SL-CO-MS-10 | 100% |
| PG-H-PR-SL-CO-MS-40 |  | CMU Block | 19.25d | 2026-03-01 A | 2026-03-26 A | PG-H-PR-SL-CO-MS-20 | 100% |
| PG-H-PR-SL-CO-MS-50 |  | Concrete Repair & Protection Materials | 19.25d | 2026-03-01 A | 2026-03-26 A | PG-H-PR-SL-CO-MS-20 | 100% |
| PG-H-PR-SL-CO-MS-30 |  | Screed | 10.25d | 2026-03-11 A | 2026-03-26 A | PG-H-PR-SL-CO-MS-20, PG-H-EN-AR-SD-AP-50 | 100% |
|  | 4 | **ARCHITECTURAL & FINISHES WORK** |  | 2026-03-10 | 2026-03-14 |  |  |
| PG-H-PR-SL-AR-MS-10 |  | Ceramic tiles | 4.25d | 2026-03-10 A | 2026-03-14 A | PG-H-EN-AR-SD-AP-50 | 100% |
| PG-H-PR-SL-AR-MS-100 |  | Gypsum Boards | 4.25d | 2026-03-10 A | 2026-03-14 A | PG-H-EN-AR-SD-AP-60 | 100% |
| PG-H-PR-SL-AR-MS-110 |  | Specialities Materials (Toilet accessories, lockers, logo, etc) | 4.25d | 2026-03-10 A | 2026-03-14 A | PG-H-EN-AR-SD-AP-70 | 100% |
| PG-H-PR-SL-AR-MS-120 |  | Waterproofing System Materials | 4.25d | 2026-03-10 A | 2026-03-14 A | PG-H-EN-AR-SD-AP-50 | 100% |
| PG-H-PR-SL-AR-MS-20 |  | Anti-slip Granite tiles | 4.25d | 2026-03-10 A | 2026-03-14 A | PG-H-PR-SL-AR-MS-10, PG-H-EN-AR-SD-AP-50 | 100% |
| PG-H-PR-SL-AR-MS-30 |  | Epoxy Paint | 4.25d | 2026-03-10 A | 2026-03-14 A | PG-H-EN-AR-SD-AP-50 | 100% |
| PG-H-PR-SL-AR-MS-40 |  | Cement Plaster | 4.25d | 2026-03-10 A | 2026-03-14 A | PG-H-EN-AR-SD-AP-50 | 100% |
| PG-H-PR-SL-AR-MS-50 |  | Acrylic Paint | 4.25d | 2026-03-10 A | 2026-03-14 A | PG-H-PR-SL-AR-MS-40, PG-H-EN-AR-SD-AP-10, PG-H-EN-AR-SD-AP-30 | 100% |
| PG-H-PR-SL-AR-MS-60 |  | Stone Cladding | 4.25d | 2026-03-10 A | 2026-03-14 A | PG-H-EN-AR-SD-AP-100 | 100% |
| PG-H-PR-SL-AR-MS-70 |  | Aluminum Plates | 4.25d | 2026-03-10 A | 2026-03-14 A | PG-H-EN-AR-SD-AP-90 | 100% |
| PG-H-PR-SL-AR-MS-80 |  | Phenolic Partition | 4.25d | 2026-03-10 A | 2026-03-14 A | PG-H-EN-AR-SD-AP-10 | 100% |
| PG-H-PR-SL-AR-MS-90 |  | Glass Partition | 4.25d | 2026-03-10 A | 2026-03-14 A | PG-H-EN-AR-SD-AP-10 | 100% |
|  | 5 | **METAL WORK** |  | 2026-03-07 | 2026-03-16 |  |  |
| PG-H-PR-SL-MT-MS-20 |  | Galvanized Steel Roof Scupper | 9.25d | 2026-03-07 A | 2026-03-16 A | PG-H-EN-AR-SD-AP-20 | 100% |
| PG-H-PR-SL-MT-MS-30 |  | Galvanized Steel Cover with frame | 9.25d | 2026-03-07 A | 2026-03-16 A | PG-H-EN-AR-SD-AP-20 | 100% |
| PG-H-PR-SL-MT-MS-10 |  | Galvanized Steel Ladder | 4.25d | 2026-03-12 A | 2026-03-16 A | PG-H-EN-AR-SD-AP-20, PG-H-EN-AR-SD-AP-30 | 100% |
|  | 6 | **HVAC WORK** |  | 2026-02-23 | 2026-03-16 |  |  |
| PG-H-PR-SL-AC-MS-10 |  | Split Air Conditioning Unit | 19.25d | 2026-02-23 A | 2026-03-16 A | PG-H-PR-SL-CO-MS-10 | 100% |
| PG-H-PR-SL-AC-MS-20 |  | Air Duct | 15.25d | 2026-02-28 A | 2026-03-16 A | PG-H-PR-SL-AC-MS-10 | 100% |
| PG-H-PR-SL-AC-MS-30 |  | Diffusers and Grills | 11.25d | 2026-03-04 A | 2026-03-16 A | PG-H-PR-SL-AC-MS-20 | 100% |
| PG-H-PR-SL-AC-MS-40 |  | Exhaust fans | 11.25d | 2026-03-04 A | 2026-03-16 A | PG-H-PR-SL-AC-MS-20 | 100% |
|  | 7 | **PLUMBING WORK** |  | 2026-03-12 | 2026-03-16 |  |  |
| PG-H-PR-SL-PB-MS-10 |  | PPR Pipes & Valves | 4.25d | 2026-03-12 A | 2026-03-16 A | PG-H-EN-ME-SD-AP-10 | 100% |
| PG-H-PR-SL-PB-MS-20 |  | UPCV Pipes | 4.25d | 2026-03-12 A | 2026-03-16 A | PG-H-EN-ME-SD-AP-10, PG-H-EN-ME-SD-AP-50 | 100% |
| PG-H-PR-SL-PB-MS-30 |  | Sanitary Drainage Fixtures | 4.25d | 2026-03-12 A | 2026-03-16 A | PG-H-PR-SL-PB-MS-20, PG-H-EN-ME-SD-AP-60, PG-H-EN-ME-SD-AP-70 | 100% |
|  | 8 | **IRRIGATION WORK** |  | 2026-03-12 | 2026-03-16 |  |  |
| PG-H-PR-SL-IR-MS-10 |  | Gate Valve including valve box | 4.25d | 2026-03-12 A | 2026-03-16 A | PG-H-EN-ME-SD-AP-80, PG-H-EN-ME-SD-AP-90, PG-H-EN-ME-SD-SB-50 | 100% |
| PG-H-PR-SL-IR-MS-20 |  | Bulbblers and Spreyers | 4.25d | 2026-03-12 A | 2026-03-16 A | PG-H-EN-ME-SD-AP-90, PG-H-EN-ME-SD-SB-50 | 100% |
|  | 9 | **ELECTRICAL WORK** |  | 2026-03-12 | 2026-03-16 |  |  |
| PG-H-PR-SL-EL-MS-10 |  | Wiring Devices Materials | 4.25d | 2026-03-12 A | 2026-03-16 A | PG-H-PR-SL-PB-MS-30 | 100% |
|  | 10 | **FIRE FIGHTING WORK** |  | 2026-03-12 | 2026-03-16 |  |  |
| PG-H-PR-SL-FF-MS-10 |  | Fire Extinguishers | 4.25d | 2026-03-12 A | 2026-03-16 A | PG-H-PR-SL-PB-MS-30 | 100% |
|  | 4 | **MATERIAL APPROVALS** |  | 2026-02-21 | 2026-07-14 |  |  |
|  | 1 | **LONG LEAD ITEMS** |  | 2026-02-25 | 2026-07-14 |  |  |
|  | 1 | **EXTERNAL / LANDSCAPE WORK** |  | 2026-02-25 | 2026-05-06 |  |  |
| PG-H-PR-LL-LS-MA-20 |  | Benches, Seats (Rectangular & Circular) | 57d | 2026-02-25 A | 2026-05-06 A | PG-H-PR-LL-LS-MS-20 SS | 100% |
| PG-H-PR-LL-LS-MA-30 |  | Fence, gates and accessories | 51d | 2026-03-04 A | 2026-05-06 A | PG-H-PR-LL-LS-MS-30 | 100% |
| PG-H-PR-LL-LS-MA-10 |  | Bike and Walk Path Materials | 41d | 2026-03-16 A | 2026-05-06 A | PG-H-PR-LL-LS-MS-10 | 100% |
|  | 3 | **SPORTS & RECREATIONAL FACILITIES WORK** |  | 2026-03-14 | 2026-05-06 |  |  |
| PG-H-PR-LL-SP-MA-20 |  | Tartan Floor | 43d | 2026-03-14 A | 2026-05-06 A | PG-H-PR-LL-SP-MS-20 | 100% |
| PG-H-PR-LL-SP-MA-10 |  | Football Playground Materials (Flooring, goal post, nets, paints, etc) | 42d | 2026-03-15 A | 2026-05-06 A | PG-H-PR-LL-SP-MS-10 | 100% |
|  | 4 | **CONCRETE WORK** |  | 2026-03-11 | 2026-05-06 |  |  |
| PG-H-PR-LL-CO-MA-10 |  | Autoclaved Aerated Panel | 45d | 2026-03-11 A | 2026-05-06 A | PG-H-PR-LL-CO-MS-10 | 100% |
|  | 5 | **METAL WORK** |  | 2026-03-15 | 2026-05-06 |  |  |
| PG-H-PR-LL-MT-MA-10 |  | Metal Doors | 42d | 2026-03-15 A | 2026-05-06 A | PG-H-PR-LL-MT-MS-10 | 100% |
| PG-H-PR-LL-MT-MA-20 |  | Curtain Wall | 42d | 2026-03-15 A | 2026-05-06 A | PG-H-PR-LL-MT-MS-20 | 100% |
|  | 7 | **PLUMBING WORK** |  | 2026-03-16 | 2026-05-06 |  |  |
| PG-H-PR-LL-PB-MA-10 |  | Booster Pump | 41d | 2026-03-16 A | 2026-05-06 A | PG-H-PR-LL-PB-MS-10 | 100% |
| PG-H-PR-LL-PB-MA-20 |  | GRP Sectional Panel Water Tanks (4x3x3m) | 38d | 2026-03-24 A | 2026-05-06 A | PG-H-PR-LL-PB-MS-20 | 100% |
|  | 8 | **IRRIGATION WORK** |  | 2026-02-28 | 2026-05-06 |  |  |
| PG-H-PR-LL-IR-MA-10 |  | HDPE Pipes | 55d | 2026-02-28 A | 2026-05-06 A | PG-H-PR-LL-IR-MS-10 | 100% |
| PG-H-PR-LL-IR-MA-20 |  | Irrigation Control System | 55d | 2026-02-28 A | 2026-05-06 A | PG-H-PR-LL-IR-MS-20 | 100% |
|  | 9 | **ELECTRICAL WORK** |  | 2026-05-12 | 2026-07-14 |  |  |
| PG-H-PR-LL-EL-MA-10 |  | Main Distribution Board(Completed) | 34d | 2026-05-12 A | 2026-06-24 A | PG-H-PR-LL-EL-MS-10 SS | 100% |
| PG-H-PR-LL-EL-MA-20 |  | Power Panels (Pump, Street Light)(Completed) | 34d | 2026-05-12 A | 2026-06-24 A | PG-H-PR-LL-EL-MS-20 SS | 100% |
| PG-H-PR-LL-EL-MA-30 |  | Site Lighting Poles(Completed) | 34d | 2026-05-12 A | 2026-06-24 A | PG-H-PR-LL-EL-MS-30 SS | 100% |

| ID | WBS | Task | Duration | Start | Finish | Predecessors | Complete | Total float |
| --- | --- | --- | --- | --- | --- | --- | --- | --- |
| PG-H-PR-LL-EL-MA-40 |  | Lighting Fixtures(Completed) | 34d | 2026-05-12 A | 2026-06-24 A | PG-H-PR-LL-EL-MS-40 SS | 100% |  |
| PG-H-PR-LL-EL-MA-50 |  | Grounding System Materials (Earth pit rod, LPS, etc)(Completed) | 34d | 2026-05-12 A | 2026-06-24 A | PG-H-PR-LL-EL-MS-50 SS | 100% |  |
| PG-H-PR-LL-EL-MA-60 |  | Telecommunications & Data System Materials (Telephone outlet, CCTV, etc)(Completed) | 34d | 2026-05-12 A | 2026-06-24 A | PG-H-PR-LL-EL-MS-60 SS | 100% |  |
| PG-H-PR-LL-EL-MA-70 |  | Security and Access Control System Materials(Completed) | 34d | 2026-05-12 A | 2026-06-24 A | PG-H-PR-LL-EL-MS-70 SS | 100% |  |
| PG-H-PR-LL-EL-MA-80 |  | Fire Alarm System Materials(Completed) | 34d | 2026-05-12 A | 2026-06-24 A | PG-H-PR-LL-EL-MS-80 SS | 100% |  |
| PG-H-PR-LL-EL-MA-10_R |  | Main Distribution Board(Remaining) | 10d | 2026-06-25 | 2026-07-06 | PG-H-PR-LL-EL-MS-10_R SS, PG-H-PR-LL-EL-MA-10 |  | 27d |
| PG-H-PR-LL-EL-MA-20_R |  | Power Panels (Pump, Street Light)(Remaining) | 10d | 2026-06-25 | 2026-07-06 | PG-H-PR-LL-EL-MS-20_R SS, PG-H-PR-LL-EL-MA-20 |  | 29d |
| PG-H-PR-LL-EL-MA-30_R |  | Site Lighting Poles(Remaining) | 10d | 2026-06-25 | 2026-07-06 | PG-H-PR-LL-EL-MS-30_R SS, PG-H-PR-LL-EL-MA-30 |  | 18d |
| PG-H-PR-LL-EL-MA-40_R |  | Lighting Fixtures(Remaining) | 10d | 2026-06-25 | 2026-07-06 | PG-H-PR-LL-EL-MS-40_R SS, PG-H-PR-LL-EL-MA-40 |  | 15d |
| PG-H-PR-LL-EL-MA-60_R |  | Telecommunications & Data System Materials (Telephone outlet, CCTV, etc)(Remaining) | 10d | 2026-06-25 | 2026-07-06 | PG-H-PR-LL-EL-MS-60_R SS, PG-H-PR-LL-EL-MA-60 |  | 28d |
| PG-H-PR-LL-EL-MA-70_R |  | Security and Access Control System Materials(Remaining) | 10d | 2026-06-25 | 2026-07-06 | PG-H-PR-LL-EL-MS-70_R SS, PG-H-PR-LL-EL-MA-70 |  | 42d |
| PG-H-PR-LL-EL-MA-80_R |  | Fire Alarm System Materials(Remaining) | 10d | 2026-06-25 | 2026-07-06 | PG-H-PR-LL-EL-MS-80_R SS, PG-H-PR-LL-EL-MA-80 |  | 31d |
| PG-H-PR-LL-EL-MA-50_R |  | Grounding System Materials (Earth pit rod, LPS, etc)(Remaining) | 10d | 2026-07-04 | 2026-07-14 | PG-H-PR-LL-EL-MS-50_R, PG-H-PR-LL-EL-MA-50 |  | 17d |
|  | 2 | **SHORT LEAD ITEMS** |  | 2026-02-21 | 2026-03-26 |  |  |  |
|  | 1 | **EXTERNAL / LANDSCAPE WORK** |  | 2026-02-21 | 2026-03-26 |  |  |  |
| PG-H-PR-SL-LS-MA-10 |  | Backfilling Materials | 25d | 2026-02-21 A | 2026-03-26 A | PG-H-PR-SL-LS-MS-10 | 100% |  |
| PG-H-PR-SL-LS-MA-30 |  | Compacted Natural Ground Soil | 22d | 2026-02-25 A | 2026-03-26 A | PG-H-PR-SL-LS-MS-30 | 100% |  |
| PG-H-PR-SL-LS-MA-60 |  | Traffic Signages | 10d | 2026-03-11 A | 2026-03-26 A | PG-H-PR-SL-LS-MS-60 | 100% |  |
| PG-H-PR-SL-LS-MA-70 |  | Trees | 7d | 2026-03-15 A | 2026-03-26 A | PG-H-PR-SL-LS-MS-70 | 100% |  |
| PG-H-PR-SL-LS-MA-80 |  | Lawn | 7d | 2026-03-15 A | 2026-03-26 A | PG-H-PR-SL-LS-MS-80 | 100% |  |
| PG-H-PR-SL-LS-MA-20 |  | Interlock tiles | 2d | 2026-03-25 A | 2026-03-26 A | PG-H-PR-SL-LS-MS-20 | 100% |  |
| PG-H-PR-SL-LS-MA-40 |  | Curb Stone | 2d | 2026-03-25 A | 2026-03-26 A | PG-H-PR-SL-LS-MS-40 | 100% |  |
| PG-H-PR-SL-LS-MA-50 |  | Thermoplastic pavement road marking | 2d | 2026-03-25 A | 2026-03-26 A | PG-H-PR-SL-LS-MS-50 | 100% |  |
|  | 3 | **CONCRETE WORK** |  | 2026-02-23 | 2026-03-26 |  |  |  |
| PG-H-PR-SL-CO-MA-10 |  | Steel Rebar | 14d | 2026-02-23 A | 2026-03-10 A | PG-H-PR-SL-CO-MS-10 | 100% |  |
| PG-H-PR-SL-CO-MA-20 |  | Concrete | 9d | 2026-03-01 A | 2026-03-10 A | PG-H-PR-SL-CO-MS-20 | 100% |  |
| PG-H-PR-SL-CO-MA-40 |  | CMU Block | 15d | 2026-03-05 A | 2026-03-26 A | PG-H-PR-SL-CO-MS-40 | 100% |  |
| PG-H-PR-SL-CO-MA-50 |  | Concrete Repair & Protection Materials | 15d | 2026-03-05 A | 2026-03-26 A | PG-H-PR-SL-CO-MS-50 | 100% |  |
| PG-H-PR-SL-CO-MA-30 |  | Screed | 1d | 2026-03-26 A | 2026-03-26 A | PG-H-PR-SL-CO-MS-30 | 100% |  |
|  | 4 | **ARCHITECTURAL & FINISHES WORK** |  | 2026-03-15 | 2026-03-16 |  |  |  |
| PG-H-PR-SL-AR-MA-10 |  | Ceramic tiles | 2d | 2026-03-15 A | 2026-03-16 A | PG-H-PR-SL-AR-MS-10 | 100% |  |
| PG-H-PR-SL-AR-MA-100 |  | Gypsum Boards | 2d | 2026-03-15 A | 2026-03-16 A | PG-H-PR-SL-AR-MS-100 | 100% |  |
| PG-H-PR-SL-AR-MA-110 |  | Specialities Materials (Toilet accessories, lockers, logo, etc) | 2d | 2026-03-15 A | 2026-03-16 A | PG-H-PR-SL-AR-MS-110 | 100% |  |
| PG-H-PR-SL-AR-MA-120 |  | Waterproofing System Materials | 2d | 2026-03-15 A | 2026-03-16 A | PG-H-PR-SL-AR-MS-120 | 100% |  |
| PG-H-PR-SL-AR-MA-20 |  | Anti-slip Granite tiles | 2d | 2026-03-15 A | 2026-03-16 A | PG-H-PR-SL-AR-MS-20 | 100% |  |
| PG-H-PR-SL-AR-MA-30 |  | Epoxy Paint | 2d | 2026-03-15 A | 2026-03-16 A | PG-H-PR-SL-AR-MS-30 | 100% |  |
| PG-H-PR-SL-AR-MA-40 |  | Cement Plaster | 2d | 2026-03-15 A | 2026-03-16 A | PG-H-PR-SL-AR-MS-40 | 100% |  |
| PG-H-PR-SL-AR-MA-50 |  | Acrylic Paint | 2d | 2026-03-15 A | 2026-03-16 A | PG-H-PR-SL-AR-MS-50 | 100% |  |
| PG-H-PR-SL-AR-MA-60 |  | Stone Cladding | 2d | 2026-03-15 A | 2026-03-16 A | PG-H-PR-SL-AR-MS-60 | 100% |  |
| PG-H-PR-SL-AR-MA-70 |  | Aluminum Plates | 2d | 2026-03-15 A | 2026-03-16 A | PG-H-PR-SL-AR-MS-70 | 100% |  |
| PG-H-PR-SL-AR-MA-80 |  | Phenolic Partition | 2d | 2026-03-15 A | 2026-03-16 A | PG-H-PR-SL-AR-MS-80 | 100% |  |
| PG-H-PR-SL-AR-MA-90 |  | Glass Partition | 2d | 2026-03-15 A | 2026-03-16 A | PG-H-PR-SL-AR-MS-90 | 100% |  |
|  | 5 | **METAL WORK** |  | 2026-03-11 | 2026-03-26 |  |  |  |
| PG-H-PR-SL-MT-MA-20 |  | Galvanized Steel Roof Scupper | 10d | 2026-03-11 A | 2026-03-26 A | PG-H-PR-SL-MT-MS-20 | 100% |  |
| PG-H-PR-SL-MT-MA-30 |  | Galvanized Steel Cover with frame | 10d | 2026-03-11 A | 2026-03-26 A | PG-H-PR-SL-MT-MS-30 | 100% |  |
| PG-H-PR-SL-MT-MA-10 |  | Galvanized Steel Ladder | 7d | 2026-03-15 A | 2026-03-26 A | PG-H-PR-SL-MT-MS-10 | 100% |  |
|  | 6 | **HVAC WORK** |  | 2026-02-28 | 2026-03-26 |  |  |  |
| PG-H-PR-SL-AC-MA-10 |  | Split Air Conditioning Unit | 20d | 2026-02-28 A | 2026-03-26 A | PG-H-PR-SL-AC-MS-10 | 100% |  |
| PG-H-PR-SL-AC-MA-20 |  | Air Duct | 16d | 2026-03-04 A | 2026-03-26 A | PG-H-PR-SL-AC-MS-20 | 100% |  |
| PG-H-PR-SL-AC-MA-30 |  | Diffusers and Grills | 2d | 2026-03-25 A | 2026-03-26 A | PG-H-PR-SL-AC-MS-30 | 100% |  |
| PG-H-PR-SL-AC-MA-40 |  | Exhaust fans | 2d | 2026-03-25 A | 2026-03-26 A | PG-H-PR-SL-AC-MS-40 | 100% |  |
|  | 7 | **PLUMBING WORK** |  | 2026-03-25 | 2026-03-26 |  |  |  |
| PG-H-PR-SL-PB-MA-10 |  | PPR Pipes & Valves | 2d | 2026-03-25 A | 2026-03-26 A | PG-H-PR-SL-PB-MS-10 | 100% |  |
| PG-H-PR-SL-PB-MA-20 |  | UPCV Pipes | 2d | 2026-03-25 A | 2026-03-26 A | PG-H-PR-SL-PB-MS-20 | 100% |  |
| PG-H-PR-SL-PB-MA-30 |  | Sanitary Drainage Fixtures | 2d | 2026-03-25 A | 2026-03-26 A | PG-H-PR-SL-PB-MS-30 | 100% |  |
|  | 8 | **IRRIGATION WORK** |  | 2026-03-25 | 2026-03-26 |  |  |  |
| PG-H-PR-SL-IR-MA-10 |  | Gate Valve including valve box | 2d | 2026-03-25 A | 2026-03-26 A | PG-H-PR-SL-IR-MS-10 | 100% |  |
| PG-H-PR-SL-IR-MA-20 |  | Bulbblers and Spreyers | 2d | 2026-03-25 A | 2026-03-26 A | PG-H-PR-SL-IR-MS-20 | 100% |  |
|  | 9 | **ELECTRICAL WORK** |  | 2026-03-25 | 2026-03-26 |  |  |  |
| PG-H-PR-SL-EL-MA-10 |  | Wiring Devices Materials | 2d | 2026-03-25 A | 2026-03-26 A | PG-H-PR-SL-EL-MS-10 | 100% |  |
|  | 10 | **FIRE FIGHTING WORK** |  | 2026-03-25 | 2026-03-26 |  |  |  |
| PG-H-PR-SL-FF-MA-10 |  | Fire Extinguishers | 2d | 2026-03-25 A | 2026-03-26 A | PG-H-PR-SL-FF-MS-10 | 100% |  |
|  | PR | **PROCUREMENT** |  | 2026-02-26 | 2026-08-26 |  |  |  |
|  | 1 | **LONG LEAD ITEMS** |  | 2026-03-05 | 2026-08-26 |  |  |  |
|  | 2 | **PURCHASE ORDER** |  | 2026-03-05 | 2026-07-22 |  |  |  |
|  | 1 | **EXTERNAL / LANDSCAPE WORK** |  | 2026-03-07 | 2026-05-06 |  |  |  |
| PG-H-PR-LL-LS-PO-20 |  | Benches, Seats (Rectangular & Circular) | 49.25d | 2026-03-07 A | 2026-05-06 A | PG-H-PR-LL-LS-MA-20 | 100% |  |
| PG-H-PR-LL-LS-PO-30 |  | Fence, gates and accessories | 43.25d | 2026-03-14 A | 2026-05-06 A | PG-H-PR-LL-LS-MA-30 | 100% |  |
| PG-H-PR-LL-LS-PO-10 |  | Bike and Walk Path Materials | 33.25d | 2026-03-30 A | 2026-05-06 A | PG-H-PR-LL-LS-MA-10 | 100% |  |
|  | 2 | **SPORTS & RECREATIONAL FACILITIES WORK** |  | 2026-03-28 | 2026-05-06 |  |  |  |

| ID | WBS | Task | Duration | Start | Finish | Predecessors | Complete | Total float |
| --- | --- | --- | --- | --- | --- | --- | --- | --- |
| PG-H-PR-LL-SP-PO-20 |  | Tartan Floor | 35.25d | 2026-03-28 A | 2026-05-06 A | PG-H-PR-LL-SP-MA-20 | 100% |  |
| PG-H-PR-LL-SP-PO-10 |  | Football Playground Materials (Flooring, goal post, nets, paints, etc) | 34.25d | 2026-03-29 A | 2026-05-06 A | PG-H-PR-LL-SP-MA-10 | 100% |  |
|  | 3 | **CONCRETE WORK** |  | 2026-03-18 | 2026-05-06 |  |  |  |
| PG-H-PR-LL-CO-PO-10 |  | Autoclaved Aerated Panel | 39.25d | 2026-03-18 A | 2026-05-06 A | PG-H-PR-LL-CO-MA-10 | 100% |  |
|  | 5 | **METAL WORK** |  | 2026-03-24 | 2026-05-06 |  |  |  |
| PG-H-PR-LL-MT-PO-10 |  | Metal Doors | 38.25d | 2026-03-24 A | 2026-05-06 A | PG-H-PR-LL-MT-MA-10 | 100% |  |
| PG-H-PR-LL-MT-PO-20 |  | Curtain Wall | 38.25d | 2026-03-24 A | 2026-05-06 A | PG-H-PR-LL-MT-MA-20 | 100% |  |
|  | 7 | **PLUMBING WORK** |  | 2026-03-29 | 2026-05-06 |  |  |  |
| PG-H-PR-LL-PB-PO-10 |  | Booster Pump | 34.25d | 2026-03-29 A | 2026-05-06 A | PG-H-PR-LL-PB-MA-10 | 100% |  |
| PG-H-PR-LL-PB-PO-20 |  | GRP Sectional Panel Water Tanks (4x3x3m) | 33.25d | 2026-03-30 A | 2026-05-06 A | PG-H-PR-LL-PB-MA-20 | 100% |  |
|  | 8 | **IRRIGATION WORK** |  | 2026-03-05 | 2026-05-06 |  |  |  |
| PG-H-PR-LL-IR-PO-20 |  | Irrigation Control System | 50.25d | 2026-03-05 A | 2026-05-06 A | PG-H-PR-LL-IR-MA-20 | 100% |  |
| PG-H-PR-LL-IR-PO-10 |  | HDPE Pipes | 49.25d | 2026-03-07 A | 2026-05-06 A | PG-H-PR-LL-IR-MA-10 | 100% |  |
|  | 9 | **ELECTRICAL WORK** |  | 2026-05-11 | 2026-07-22 |  |  |  |
| PG-H-PR-LL-EL-PO-10 |  | Main Distribution Board(Completed) | 35.25d | 2026-05-11 A | 2026-06-24 A | PG-H-PR-LL-EL-MA-10 SS | 100% |  |
| PG-H-PR-LL-EL-PO-20 |  | Power Panels (Pump, Street Light)(Completed) | 35.25d | 2026-05-11 A | 2026-06-24 A | PG-H-PR-LL-EL-MA-20 SS | 100% |  |
| PG-H-PR-LL-EL-PO-30 |  | Site Lighting Poles(Completed) | 35.25d | 2026-05-11 A | 2026-06-24 A | PG-H-PR-LL-EL-MA-30 SS | 100% |  |
| PG-H-PR-LL-EL-PO-40 |  | Lighting Fixtures(Completed) | 35.25d | 2026-05-11 A | 2026-06-24 A | PG-H-PR-LL-EL-MA-40 SS | 100% |  |
| PG-H-PR-LL-EL-PO-50 |  | Grounding System Materials (Earth pit rod, LPS, etc)(Completed) | 35.25d | 2026-05-11 A | 2026-06-24 A | PG-H-PR-LL-EL-MA-50 SS | 100% |  |
| PG-H-PR-LL-EL-PO-60 |  | Telecommunications & Data System Materials (Telephone outlet, CCTV, etc)(Completed) | 35.25d | 2026-05-11 A | 2026-06-24 A | PG-H-PR-LL-EL-MA-60 SS | 100% |  |
| PG-H-PR-LL-EL-PO-70 |  | Security and Access Control System Materials(Completed) | 35.25d | 2026-05-11 A | 2026-06-24 A | PG-H-PR-LL-EL-MA-70 SS | 100% |  |
| PG-H-PR-LL-EL-PO-80 |  | Fire Alarm System Materials(Completed) | 35.25d | 2026-05-11 A | 2026-06-24 A | PG-H-PR-LL-EL-MA-80 SS | 100% |  |
| PG-H-PR-LL-EL-PO-10_R |  | Main Distribution Board(Remaining) | 7d | 2026-07-07 | 2026-07-14 | PG-H-PR-LL-EL-PO-10, PG-H-PR-LL-EL-MA-10_R |  | 27d |
| PG-H-PR-LL-EL-PO-20_R |  | Power Panels (Pump, Street Light)(Remaining) | 7d | 2026-07-07 | 2026-07-14 | PG-H-PR-LL-EL-PO-20, PG-H-PR-LL-EL-MA-20_R |  | 29d |
| PG-H-PR-LL-EL-PO-30_R |  | Site Lighting Poles(Remaining) | 7d | 2026-07-07 | 2026-07-14 | PG-H-PR-LL-EL-PO-30, PG-H-PR-LL-EL-MA-30_R |  | 18d |
| PG-H-PR-LL-EL-PO-40_R |  | Lighting Fixtures(Remaining) | 7d | 2026-07-07 | 2026-07-14 | PG-H-PR-LL-EL-PO-40, PG-H-PR-LL-EL-MA-40_R |  | 15d |
| PG-H-PR-LL-EL-PO-60_R |  | Telecommunications & Data System Materials (Telephone outlet, CCTV, etc)(Remaining) | 7d | 2026-07-07 | 2026-07-14 | PG-H-PR-LL-EL-PO-60, PG-H-PR-LL-EL-MA-60_R |  | 28d |
| PG-H-PR-LL-EL-PO-70_R |  | Security and Access Control System Materials(Remaining) | 7d | 2026-07-07 | 2026-07-14 | PG-H-PR-LL-EL-PO-70, PG-H-PR-LL-EL-MA-70_R |  | 42d |
| PG-H-PR-LL-EL-PO-80_R |  | Fire Alarm System Materials(Remaining) | 7d | 2026-07-07 | 2026-07-14 | PG-H-PR-LL-EL-PO-80, PG-H-PR-LL-EL-MA-80_R |  | 31d |
| PG-H-PR-LL-EL-PO-50_R |  | Grounding System Materials (Earth pit rod, LPS, etc)(Remaining) | 7d | 2026-07-15 | 2026-07-22 | PG-H-PR-LL-EL-PO-50, PG-H-PR-LL-EL-MA-50_R |  | 17d |
|  | 3 | **MANUFACTURE / FABRICATION** |  | 2026-04-01 | 2026-08-12 |  |  |  |
|  | 1 | **EXTERNAL / LANDSCAPE WORK** |  | 2026-05-05 | 2026-07-23 |  |  |  |
| PG-H-PR-LL-LS-MF-10 |  | Bike and Walk Path Materials(Completed) | 40.25d | 2026-05-05 A | 2026-06-24 A | PG-H-PR-LL-LS-PO-10 | 100% |  |
| PG-H-PR-LL-LS-MF-20 |  | Benches, Seats (Rectangular & Circular)(Completed) | 40.25d | 2026-05-05 A | 2026-06-24 A | PG-H-PR-LL-LS-PO-20 | 100% |  |
| PG-H-PR-LL-LS-MF-30 |  | Fence, gates and accessories(Completed) | 40.25d | 2026-05-05 A | 2026-06-24 A | PG-H-PR-LL-LS-PO-30 | 100% |  |
| PG-H-PR-LL-LS-MF-10_R |  | Bike and Walk Path Materials(Remaining) | 25d | 2026-06-25 | 2026-07-23 | PG-H-PR-LL-LS-PO-10, PG-H-PR-LL-LS-MF-10 |  | 52.6d |
| PG-H-PR-LL-LS-MF-20_R |  | Benches, Seats (Rectangular & Circular)(Remaining) | 25d | 2026-06-25 | 2026-07-23 | PG-H-PR-LL-LS-PO-20, PG-H-PR-LL-LS-MF-20 |  | 72.6d |
| PG-H-PR-LL-LS-MF-30_R |  | Fence, gates and accessories(Remaining) | 5d | 2026-06-25 | 2026-06-30 | PG-H-PR-LL-LS-PO-30, PG-H-PR-LL-LS-MF-30 |  | 14.6d |
|  | 2 | **SPORTS & RECREATIONAL FACILITIES WORK** |  | 2026-05-05 | 2026-07-23 |  |  |  |
| PG-H-PR-LL-SP-MF-10 |  | Football Playground Materials (Flooring, goal post, nets, paints, etc)(Completed) | 40.25d | 2026-05-05 A | 2026-06-24 A | PG-H-PR-LL-SP-PO-10 | 100% |  |
| PG-H-PR-LL-SP-MF-20 |  | Tartan Floor(Completed) | 40.25d | 2026-05-05 A | 2026-06-24 A | PG-H-PR-LL-SP-PO-20 | 100% |  |
| PG-H-PR-LL-SP-MF-10_R |  | Football Playground Materials (Flooring, goal post, nets, paints, etc)(Remaining) | 25d | 2026-06-25 | 2026-07-23 | PG-H-PR-LL-SP-PO-10, PG-H-PR-LL-SP-MF-10 |  | 59d |
| PG-H-PR-LL-SP-MF-20_R |  | Tartan Floor(Remaining) | 25d | 2026-06-25 | 2026-07-23 | PG-H-PR-LL-SP-PO-20, PG-H-PR-LL-SP-MF-20 |  | 59d |
|  | 3 | **CONCRETE WORK** |  | 2026-04-01 | 2026-07-06 |  |  |  |
| PG-H-PR-LL-CO-MF-10 |  | Autoclaved Aerated Panel(Completed) | 69.25d | 2026-04-01 A | 2026-06-24 A | PG-H-PR-LL-CO-PO-10, PG-H-PR-LL-CO-PO-10 SS | 100% |  |
| PG-H-PR-LL-CO-MF-10_R |  | Autoclaved Aerated Panel(Remaining) | 10d | 2026-06-25 | 2026-07-06 | PG-H-PR-LL-CO-PO-10, PG-H-PR-LL-CO-PO-10 SS, PG-H-PR-LL-CO-MF-10 |  | 18d |
|  | 5 | **METAL WORK** |  | 2026-05-05 | 2026-07-23 |  |  |  |
| PG-H-PR-LL-MT-MF-10 |  | Metal Doors(Completed) | 40.25d | 2026-05-05 A | 2026-06-24 A | PG-H-PR-LL-MT-PO-10 | 100% |  |
| PG-H-PR-LL-MT-MF-20 |  | Curtain Wall(Completed) | 40.25d | 2026-05-05 A | 2026-06-24 A | PG-H-PR-LL-MT-PO-20 | 100% |  |
| PG-H-PR-LL-MT-MF-10_R |  | Metal Doors(Remaining) | 25d | 2026-06-25 | 2026-07-23 | PG-H-PR-LL-MT-PO-10, PG-H-PR-LL-MT-MF-10 |  | 57d |
| PG-H-PR-LL-MT-MF-20_R |  | Curtain Wall(Remaining) | 25d | 2026-06-25 | 2026-07-23 | PG-H-PR-LL-MT-PO-20, PG-H-PR-LL-MT-MF-20 |  | 57d |
|  | 7 | **PLUMBING WORK** |  | 2026-05-05 | 2026-07-23 |  |  |  |
| PG-H-PR-LL-PB-MF-10 |  | Booster Pump(Completed) | 40.25d | 2026-05-05 A | 2026-06-24 A | PG-H-PR-LL-PB-PO-10 | 100% |  |
| PG-H-PR-LL-PB-MF-20 |  | GRP Sectional Panel Water Tanks (4x3x3m)(Completed) | 40.25d | 2026-05-05 A | 2026-06-24 A | PG-H-PR-LL-PB-PO-20 | 100% |  |
| PG-H-PR-LL-PB-MF-10_R |  | Booster Pump(Remaining) | 25d | 2026-06-25 | 2026-07-23 | PG-H-PR-LL-PB-PO-10, PG-H-PR-LL-PB-MF-10 |  | 27d |
| PG-H-PR-LL-PB-MF-20_R |  | GRP Sectional Panel Water Tanks (4x3x3m)(Remaining) | 25d | 2026-06-25 | 2026-07-23 | PG-H-PR-LL-PB-PO-20, PG-H-PR-LL-PB-MF-20 |  | 32.6d |
|  | 8 | **IRRIGATION WORK** |  | 2026-05-05 | 2026-07-08 |  |  |  |
| PG-H-PR-LL-IR-MF-10 |  | HDPE Pipes(Completed) | 40.25d | 2026-05-05 A | 2026-06-24 A | PG-H-PR-LL-IR-PO-10 | 100% |  |
| PG-H-PR-LL-IR-MF-20 |  | Irrigation Control System(Completed) | 40.25d | 2026-05-05 A | 2026-06-24 A | PG-H-PR-LL-IR-PO-20 | 100% |  |
| PG-H-PR-LL-IR-MF-10_R |  | HDPE Pipes(Remaining) | 12d | 2026-06-25 | 2026-07-08 | PG-H-PR-LL-IR-PO-10, PG-H-PR-LL-IR-MF-10 |  | 26.1d |
| PG-H-PR-LL-IR-MF-20_R |  | Irrigation Control System(Remaining) | 12d | 2026-06-25 | 2026-07-08 | PG-H-PR-LL-IR-PO-20, PG-H-PR-LL-IR-MF-20 |  | 28.5d |
|  | 9 | **ELECTRICAL WORK** |  | 2026-05-12 | 2026-08-12 |  |  |  |
| PG-H-PR-LL-EL-MF-10 |  | Main Distribution Board(Completed) | 34.25d | 2026-05-12 A | 2026-06-24 A | PG-H-PR-LL-EL-PO-10 SS | 100% |  |
| PG-H-PR-LL-EL-MF-20 |  | Power Panels (Pump, Street Light)(Completed) | 34.25d | 2026-05-12 A | 2026-06-24 A | PG-H-PR-LL-EL-PO-20 SS | 100% |  |
| PG-H-PR-LL-EL-MF-30 |  | Site Lighting Poles(Completed) | 34.25d | 2026-05-12 A | 2026-06-24 A | PG-H-PR-LL-EL-PO-30 SS | 100% |  |
| PG-H-PR-LL-EL-MF-40 |  | Lighting Fixtures(Completed) | 34.25d | 2026-05-12 A | 2026-06-24 A | PG-H-PR-LL-EL-PO-40 SS | 100% |  |
| PG-H-PR-LL-EL-MF-50 |  | Grounding System Materials (Earth pit rod, LPS, etc)(Completed) | 34.25d | 2026-05-12 A | 2026-06-24 A | PG-H-PR-LL-EL-PO-50 SS | 100% |  |
| PG-H-PR-LL-EL-MF-60 |  | Telecommunications & Data System Materials (Telephone outlet, CCTV, etc)(Completed) | 34.25d | 2026-05-12 A | 2026-06-24 A | PG-H-PR-LL-EL-PO-60 SS | 100% |  |
| PG-H-PR-LL-EL-MF-70 |  | Security and Access Control System Materials(Completed) | 34.25d | 2026-05-12 A | 2026-06-24 A | PG-H-PR-LL-EL-PO-70 SS | 100% |  |
| PG-H-PR-LL-EL-MF-80 |  | Fire Alarm System Materials(Completed) | 34.25d | 2026-05-12 A | 2026-06-24 A | PG-H-PR-LL-EL-PO-80 SS | 100% |  |

| ID | WBS | Task | Duration | Start | Finish | Predecessors | Complete | Total float |
| --- | --- | --- | --- | --- | --- | --- | --- | --- |
| PG-H-PR-LL-EL-MF-10_R |  | Main Distribution Board(Remaining) | 13d | 2026-07-15 | 2026-07-29 | PG-H-PR-LL-EL-PO-10_R, PG-H-PR-LL-EL-MF-10 |  | 27d |
| PG-H-PR-LL-EL-MF-20_R |  | Power Panels (Pump, Street Light)(Remaining) | 13d | 2026-07-15 | 2026-07-29 | PG-H-PR-LL-EL-PO-20_R, PG-H-PR-LL-EL-MF-20 |  | 29d |
| PG-H-PR-LL-EL-MF-30_R |  | Site Lighting Poles(Remaining) | 25d | 2026-07-15 | 2026-08-12 | PG-H-PR-LL-EL-PO-30_R, PG-H-PR-LL-EL-MF-30 |  | 18d |
| PG-H-PR-LL-EL-MF-40_R |  | Lighting Fixtures(Remaining) | 25d | 2026-07-15 | 2026-08-12 | PG-H-PR-LL-EL-PO-40_R, PG-H-PR-LL-EL-MF-40 |  | 15d |
| PG-H-PR-LL-EL-MF-60_R |  | Telecommunications & Data System Materials (Telephone outlet, CCTV, etc)(Remaining) | 25d | 2026-07-15 | 2026-08-12 | PG-H-PR-LL-EL-PO-60_R, PG-H-PR-LL-EL-MF-60 |  | 28d |
| PG-H-PR-LL-EL-MF-70_R |  | Security and Access Control System Materials(Remaining) | 25d | 2026-07-15 | 2026-08-12 | PG-H-PR-LL-EL-PO-70_R, PG-H-PR-LL-EL-MF-70 |  | 42d |
| PG-H-PR-LL-EL-MF-80_R |  | Fire Alarm System Materials(Remaining) | 25d | 2026-07-15 | 2026-08-12 | PG-H-PR-LL-EL-PO-80_R, PG-H-PR-LL-EL-MF-80 |  | 31d |
| PG-H-PR-LL-EL-MF-50_R |  | Grounding System Materials (Earth pit rod, LPS, etc)(Remaining) | 13d | 2026-07-23 | 2026-08-06 | PG-H-PR-LL-EL-PO-50_R, PG-H-PR-LL-EL-MF-50 |  | 17d |
|  | 4 | **DELIVERY TO SITE** |  | 2026-05-06 | 2026-08-26 |  |  |  |
|  | 1 | **EXTERNAL / LANDSCAPE WORK** |  | 2026-05-06 | 2026-08-06 |  |  |  |
| PG-H-PR-LL-LS-DL-10 |  | Bike and Walk Path Materials(Completed) | 38d | 2026-05-06 A | 2026-06-24 A | PG-H-PR-LL-LS-MF-10 SS | 100% |  |
| PG-H-PR-LL-LS-DL-20 |  | Benches, Seats (Rectangular & Circular)(Completed) | 38d | 2026-05-06 A | 2026-06-24 A | PG-H-PR-LL-LS-MF-20 SS | 100% |  |
| PG-H-PR-LL-LS-DL-30 |  | Fence, gates and accessories(Completed) | 38d | 2026-05-06 A | 2026-06-24 A | PG-H-PR-LL-LS-MF-30 SS | 100% |  |
| PG-H-PR-LL-LS-DL-30_R |  | Fence, gates and accessories(Remaining) | 5d | 2026-07-01 | 2026-07-06 | PG-H-PR-LL-LS-MF-30_R, PG-H-PR-LL-LS-DL-30 |  | 14.6d |
| PG-H-PR-LL-LS-DL-10_R |  | Bike and Walk Path Materials(Remaining) | 12d | 2026-07-25 | 2026-08-06 | PG-H-PR-LL-LS-MF-10_R, PG-H-PR-LL-LS-DL-10 |  | 52.6d |
| PG-H-PR-LL-LS-DL-20_R |  | Benches, Seats (Rectangular & Circular)(Remaining) | 12d | 2026-07-25 | 2026-08-06 | PG-H-PR-LL-LS-MF-20_R, PG-H-PR-LL-LS-DL-20 |  | 72.6d |
|  | 2 | **SPORTS & RECREATIONAL FACILITIES WORK** |  | 2026-05-06 | 2026-08-06 |  |  |  |
| PG-H-PR-LL-SP-DL-10 |  | Football Playground Materials (Flooring, goal post, nets, paints, etc)(Completed) | 38d | 2026-05-06 A | 2026-06-24 A | PG-H-PR-LL-SP-MF-10 SS | 100% |  |
| PG-H-PR-LL-SP-DL-20 |  | Tartan Floor(Completed) | 38d | 2026-05-06 A | 2026-06-24 A | PG-H-PR-LL-SP-MF-20 SS | 100% |  |
| PG-H-PR-LL-SP-DL-10_R |  | Football Playground Materials (Flooring, goal post, nets, paints, etc)(Remaining) | 12d | 2026-07-25 | 2026-08-06 | PG-H-PR-LL-SP-MF-10_R, PG-H-PR-LL-SP-DL-10 |  | 59d |
| PG-H-PR-LL-SP-DL-20_R |  | Tartan Floor(Remaining) | 12d | 2026-07-25 | 2026-08-06 | PG-H-PR-LL-SP-MF-20_R, PG-H-PR-LL-SP-DL-20 |  | 59d |
|  | 3 | **CONCRETE WORK** |  | 2026-05-06 | 2026-07-12 |  |  |  |
| PG-H-PR-LL-CO-DL-10 |  | Autoclaved Aerated Panel(Completed) | 38d | 2026-05-06 A | 2026-06-24 A | PG-H-PR-LL-CO-MF-10 SS | 100% |  |
| PG-H-PR-LL-CO-DL-10_R |  | Autoclaved Aerated Panel(Remaining) | 5d | 2026-07-07 | 2026-07-12 | PG-H-PR-LL-CO-DL-10, PG-H-PR-LL-CO-MF-10_R |  | 18d |
|  | 5 | **METAL WORK** |  | 2026-05-06 | 2026-08-06 |  |  |  |
| PG-H-PR-LL-MT-DL-10 |  | Metal Doors(Completed) | 38d | 2026-05-06 A | 2026-06-24 A | PG-H-PR-LL-MT-MF-10 SS | 100% |  |
| PG-H-PR-LL-MT-DL-20 |  | Curtain Wall(Completed) | 38d | 2026-05-06 A | 2026-06-24 A | PG-H-PR-LL-MT-MF-20 SS | 100% |  |
| PG-H-PR-LL-MT-DL-10_R |  | Metal Doors(Remaining) | 12d | 2026-07-25 | 2026-08-06 | PG-H-PR-LL-MT-MF-10_R, PG-H-PR-LL-MT-DL-10 |  | 57d |
| PG-H-PR-LL-MT-DL-20_R |  | Curtain Wall(Remaining) | 12d | 2026-07-25 | 2026-08-06 | PG-H-PR-LL-MT-MF-20_R, PG-H-PR-LL-MT-DL-20 |  | 57d |
|  | 7 | **PLUMBING WORK** |  | 2026-05-06 | 2026-08-06 |  |  |  |
| PG-H-PR-LL-PB-DL-10 |  | Booster Pump(Completed) | 38d | 2026-05-06 A | 2026-06-24 A | PG-H-PR-LL-PB-MF-10 SS | 100% |  |
| PG-H-PR-LL-PB-DL-20 |  | GRP Sectional Panel Water Tanks (4x3x3m)(Completed) | 38d | 2026-05-06 A | 2026-06-24 A | PG-H-PR-LL-PB-MF-20 SS | 100% |  |
| PG-H-PR-LL-PB-DL-10_R |  | Booster Pump(Remaining) | 12d | 2026-07-25 | 2026-08-06 | PG-H-PR-LL-PB-MF-10_R, PG-H-PR-LL-PB-DL-10 |  | 27d |
| PG-H-PR-LL-PB-DL-20_R |  | GRP Sectional Panel Water Tanks (4x3x3m)(Remaining) | 12d | 2026-07-25 | 2026-08-06 | PG-H-PR-LL-PB-MF-20_R, PG-H-PR-LL-PB-DL-20 |  | 32.6d |
|  | 8 | **IRRIGATION WORK** |  | 2026-05-06 | 2026-07-18 |  |  |  |
| PG-H-PR-LL-IR-DL-10 |  | HDPE Pipes(Completed) | 38d | 2026-05-06 A | 2026-06-24 A | PG-H-PR-LL-IR-MF-10 SS | 100% |  |
| PG-H-PR-LL-IR-DL-20 |  | Irrigation Control System(Completed) | 38d | 2026-05-06 A | 2026-06-24 A | PG-H-PR-LL-IR-MF-20 SS | 100% |  |
| PG-H-PR-LL-IR-DL-10_R |  | HDPE Pipes(Remaining) | 8d | 2026-07-09 | 2026-07-18 | PG-H-PR-LL-IR-MF-10_R, PG-H-PR-LL-IR-DL-10 |  | 26.1d |
| PG-H-PR-LL-IR-DL-20_R |  | Irrigation Control System(Remaining) | 8d | 2026-07-09 | 2026-07-18 | PG-H-PR-LL-IR-MF-20_R, PG-H-PR-LL-IR-DL-20 |  | 28.5d |
|  | 9 | **ELECTRICAL WORK** |  | 2026-05-13 | 2026-08-26 |  |  |  |
| PG-H-PR-LL-EL-DL-10 |  | Main Distribution Board(Completed) | 33d | 2026-05-13 A | 2026-06-24 A | PG-H-PR-LL-EL-MF-10 SS | 100% |  |
| PG-H-PR-LL-EL-DL-20 |  | Power Panels (Pump, Street Light)(Completed) | 33d | 2026-05-13 A | 2026-06-24 A | PG-H-PR-LL-EL-MF-20 SS | 100% |  |
| PG-H-PR-LL-EL-DL-30 |  | Site Lighting Poles(Completed) | 33d | 2026-05-13 A | 2026-06-24 A | PG-H-PR-LL-EL-MF-30 SS | 100% |  |
| PG-H-PR-LL-EL-DL-40 |  | Lighting Fixtures(Completed) | 33d | 2026-05-13 A | 2026-06-24 A | PG-H-PR-LL-EL-MF-40 SS | 100% |  |
| PG-H-PR-LL-EL-DL-50 |  | Grounding System Materials (Earth pit rod, LPS, etc)(Completed) | 33d | 2026-05-13 A | 2026-06-24 A | PG-H-PR-LL-EL-MF-50 SS | 100% |  |
| PG-H-PR-LL-EL-DL-60 |  | Telecommunications & Data System Materials (Telephone outlet, CCTV, etc)(Completed) | 33d | 2026-05-13 A | 2026-06-24 A | PG-H-PR-LL-EL-MF-60 SS | 100% |  |
| PG-H-PR-LL-EL-DL-70 |  | Security and Access Control System Materials(Completed) | 33d | 2026-05-13 A | 2026-06-24 A | PG-H-PR-LL-EL-MF-70 SS | 100% |  |
| PG-H-PR-LL-EL-DL-80 |  | Fire Alarm System Materials(Completed) | 33d | 2026-05-13 A | 2026-06-24 A | PG-H-PR-LL-EL-MF-80 SS | 100% |  |
| PG-H-PR-LL-EL-DL-10_R |  | Main Distribution Board(Remaining) | 8d | 2026-07-30 | 2026-08-08 | PG-H-PR-LL-EL-DL-10, PG-H-PR-LL-EL-MF-10_R |  | 27d |
| PG-H-PR-LL-EL-DL-20_R |  | Power Panels (Pump, Street Light)(Remaining) | 8d | 2026-07-30 | 2026-08-08 | PG-H-PR-LL-EL-DL-20, PG-H-PR-LL-EL-MF-20_R |  | 29d |
| PG-H-PR-LL-EL-DL-50_R |  | Grounding System Materials (Earth pit rod, LPS, etc)(Remaining) | 8d | 2026-08-08 | 2026-08-16 | PG-H-PR-LL-EL-DL-50, PG-H-PR-LL-EL-MF-50_R |  | 17d |
| PG-H-PR-LL-EL-DL-30_R |  | Site Lighting Poles(Remaining) | 12d | 2026-08-13 | 2026-08-26 | PG-H-PR-LL-EL-DL-30, PG-H-PR-LL-EL-MF-30_R |  | 18d |
| PG-H-PR-LL-EL-DL-40_R |  | Lighting Fixtures(Remaining) | 12d | 2026-08-13 | 2026-08-26 | PG-H-PR-LL-EL-DL-40, PG-H-PR-LL-EL-MF-40_R |  | 15d |
| PG-H-PR-LL-EL-DL-60_R |  | Telecommunications & Data System Materials (Telephone outlet, CCTV, etc)(Remaining) | 12d | 2026-08-13 | 2026-08-26 | PG-H-PR-LL-EL-DL-60, PG-H-PR-LL-EL-MF-60_R |  | 28d |
| PG-H-PR-LL-EL-DL-70_R |  | Security and Access Control System Materials(Remaining) | 12d | 2026-08-13 | 2026-08-26 | PG-H-PR-LL-EL-DL-70, PG-H-PR-LL-EL-MF-70_R |  | 42d |
| PG-H-PR-LL-EL-DL-80_R |  | Fire Alarm System Materials(Remaining) | 12d | 2026-08-13 | 2026-08-26 | PG-H-PR-LL-EL-DL-80, PG-H-PR-LL-EL-MF-80_R |  | 31d |
|  | 2 | **SHORT LEAD ITEMS** |  | 2026-02-26 | 2026-07-16 |  |  |  |
|  | 1 | **MATERIAL SUBMITTALS** |  |  |  |  |  |  |
|  | 2 | **PURCHASE ORDER** |  | 2026-02-26 | 2026-07-02 |  |  |  |
|  | 1 | **EXTERNAL / LANDSCAPE WORK** |  | 2026-02-26 | 2026-07-02 |  |  |  |
| PG-H-PR-SL-LS-PO-10 |  | Backfilling Materials | 44.25d | 2026-02-26 A | 2026-04-22 A | PG-H-PR-SL-LS-MA-10 | 100% |  |
| PG-H-PR-SL-LS-PO-30 |  | Compacted Natural Ground Soil | 42.25d | 2026-03-01 A | 2026-04-22 A | PG-H-PR-SL-LS-MA-30 | 100% |  |
| PG-H-PR-SL-LS-PO-20 |  | Interlock tiles | 27.25d | 2026-03-30 A | 2026-04-29 A | PG-H-PR-SL-LS-MA-20 | 100% |  |
| PG-H-PR-SL-LS-PO-40 |  | Curb Stone | 22.25d | 2026-04-05 A | 2026-04-29 A | PG-H-PR-SL-LS-MA-40 | 100% |  |
| PG-H-PR-SL-LS-PO-50 |  | Thermoplastic pavement road marking(Completed) | 36.25d | 2026-05-10 A | 2026-06-24 A | PG-H-PR-SL-LS-MA-50 | 100% |  |
| PG-H-PR-SL-LS-PO-60 |  | Traffic Signages(Completed) | 36.25d | 2026-05-10 A | 2026-06-24 A | PG-H-PR-SL-LS-MA-60 | 100% |  |
| PG-H-PR-SL-LS-PO-70 |  | Trees(Completed) | 36.25d | 2026-05-10 A | 2026-06-24 A | PG-H-PR-SL-LS-MA-70 | 100% |  |
| PG-H-PR-SL-LS-PO-80 |  | Lawn(Completed) | 36.25d | 2026-05-10 A | 2026-06-24 A | PG-H-PR-SL-LS-MA-80 | 100% |  |
| PG-H-PR-SL-LS-PO-50_R |  | Thermoplastic pavement road marking(Remaining) | 7d | 2026-06-25 | 2026-07-02 | PG-H-PR-SL-LS-MA-50, PG-H-PR-SL-LS-PO-50 |  | 68.6d |
| PG-H-PR-SL-LS-PO-60_R |  | Traffic Signages(Remaining) | 7d | 2026-06-25 | 2026-07-02 | PG-H-PR-SL-LS-MA-60, PG-H-PR-SL-LS-PO-60 |  | 68.6d |

| ID | WBS | Task | Duration | Start | Finish | Predecessors | Complete | Total float |
| --- | --- | --- | --- | --- | --- | --- | --- | --- |
| PG-H-PR-SL-LS-PO-70_R |  | Trees(Remaining) | 7d | 2026-06-25 | 2026-07-02 | PG-H-PR-SL-LS-MA-70, PG-H-PR-SL-LS-PO-70 |  | 68.6d |
| PG-H-PR-SL-LS-PO-80_R |  | Lawn(Remaining) | 7d | 2026-06-25 | 2026-07-02 | PG-H-PR-SL-LS-MA-80, PG-H-PR-SL-LS-PO-80 |  | 92.1d |
|  | 3 | **CONCRETE WORK** |  | 2026-03-02 | 2026-04-22 |  |  |  |
| PG-H-PR-SL-CO-PO-10 |  | Steel Rebar | 41.25d | 2026-03-02 A | 2026-04-22 A | PG-H-PR-SL-CO-MA-10 | 100% |  |
| PG-H-PR-SL-CO-PO-20 |  | Concrete | 36.25d | 2026-03-08 A | 2026-04-22 A | PG-H-PR-SL-CO-MA-20 | 100% |  |
| PG-H-PR-SL-CO-PO-40 |  | CMU Block | 33.25d | 2026-03-11 A | 2026-04-22 A | PG-H-PR-SL-CO-MA-40 | 100% |  |
| PG-H-PR-SL-CO-PO-50 |  | Concrete Repair & Protection Materials | 32.25d | 2026-03-12 A | 2026-04-22 A | PG-H-PR-SL-CO-MA-50 | 100% |  |
| PG-H-PR-SL-CO-PO-30 |  | Screed | 23.25d | 2026-03-28 A | 2026-04-22 A | PG-H-PR-SL-CO-MA-30 | 100% |  |
|  | 4 | **ARCHITECTURAL & FINISHES WORK** |  | 2026-05-05 | 2026-05-12 |  |  |  |
| PG-H-PR-SL-AR-PO-10 |  | Ceramic tiles | 7.25d | 2026-05-05 A | 2026-05-12 A | PG-H-PR-SL-AR-MA-10 | 100% |  |
| PG-H-PR-SL-AR-PO-100 |  | Gypsum Boards | 7.25d | 2026-05-05 A | 2026-05-12 A | PG-H-PR-SL-AR-MA-100 | 100% |  |
| PG-H-PR-SL-AR-PO-110 |  | Specialities Materials (Toilet accessories, lockers, logo, etc) | 7.25d | 2026-05-05 A | 2026-05-12 A | PG-H-PR-SL-AR-MA-110 | 100% |  |
| PG-H-PR-SL-AR-PO-120 |  | Waterproofing System Materials | 7.25d | 2026-05-05 A | 2026-05-12 A | PG-H-PR-SL-AR-MA-120 | 100% |  |
| PG-H-PR-SL-AR-PO-20 |  | Anti-slip Granite tiles | 7.25d | 2026-05-05 A | 2026-05-12 A | PG-H-PR-SL-AR-MA-20 | 100% |  |
| PG-H-PR-SL-AR-PO-30 |  | Epoxy Paint | 7.25d | 2026-05-05 A | 2026-05-12 A | PG-H-PR-SL-AR-MA-30 | 100% |  |
| PG-H-PR-SL-AR-PO-40 |  | Cement Plaster | 7.25d | 2026-05-05 A | 2026-05-12 A | PG-H-PR-SL-AR-MA-40 | 100% |  |
| PG-H-PR-SL-AR-PO-50 |  | Acrylic Paint | 7.25d | 2026-05-05 A | 2026-05-12 A | PG-H-PR-SL-AR-MA-50 | 100% |  |
| PG-H-PR-SL-AR-PO-60 |  | Stone Cladding | 7.25d | 2026-05-05 A | 2026-05-12 A | PG-H-PR-SL-AR-MA-60 | 100% |  |
| PG-H-PR-SL-AR-PO-70 |  | Aluminum Plates | 7.25d | 2026-05-05 A | 2026-05-12 A | PG-H-PR-SL-AR-MA-70 | 100% |  |
| PG-H-PR-SL-AR-PO-80 |  | Phenolic Partition | 7.25d | 2026-05-05 A | 2026-05-12 A | PG-H-PR-SL-AR-MA-80 | 100% |  |
| PG-H-PR-SL-AR-PO-90 |  | Glass Partition | 7.25d | 2026-05-05 A | 2026-05-12 A | PG-H-PR-SL-AR-MA-90 | 100% |  |
|  | 5 | **METAL WORK** |  | 2026-05-05 | 2026-05-12 |  |  |  |
| PG-H-PR-SL-MT-PO-10 |  | Galvanized Steel Ladder | 7.25d | 2026-05-05 A | 2026-05-12 A | PG-H-PR-SL-MT-MA-10 | 100% |  |
| PG-H-PR-SL-MT-PO-20 |  | Galvanized Steel Roof Scupper | 7.25d | 2026-05-05 A | 2026-05-12 A | PG-H-PR-SL-MT-MA-20, PG-H-PR-SL-MT-PO-10 | 100% |  |
| PG-H-PR-SL-MT-PO-30 |  | Galvanized Steel Cover with frame | 7.25d | 2026-05-05 A | 2026-05-12 A | PG-H-PR-SL-MT-MA-30, PG-H-PR-SL-MT-PO-20 | 100% |  |
|  | 6 | **HVAC WORK** |  | 2026-05-05 | 2026-05-12 |  |  |  |
| PG-H-PR-SL-AC-PO-10 |  | Split Air Conditioning Unit | 7.25d | 2026-05-05 A | 2026-05-12 A | PG-H-PR-SL-AC-MA-10 | 100% |  |
| PG-H-PR-SL-AC-PO-20 |  | Air Duct | 7.25d | 2026-05-05 A | 2026-05-12 A | PG-H-PR-SL-AC-MA-20 | 100% |  |
| PG-H-PR-SL-AC-PO-30 |  | Diffusers and Grills | 7.25d | 2026-05-05 A | 2026-05-12 A | PG-H-PR-SL-AC-MA-30, PG-H-PR-SL-AC-PO-20 | 100% |  |
| PG-H-PR-SL-AC-PO-40 |  | Exhaust fans | 7.25d | 2026-05-05 A | 2026-05-12 A | PG-H-PR-SL-AC-MA-40, PG-H-PR-SL-AC-PO-10 | 100% |  |
|  | 7 | **PLUMBING WORK** |  | 2026-05-05 | 2026-05-12 |  |  |  |
| PG-H-PR-SL-PB-PO-10 |  | PPR Pipes & Valves | 7.25d | 2026-05-05 A | 2026-05-12 A | PG-H-PR-SL-PB-MA-10 | 100% |  |
| PG-H-PR-SL-PB-PO-20 |  | UPCV Pipes | 7.25d | 2026-05-05 A | 2026-05-12 A | PG-H-PR-SL-PB-MA-20 | 100% |  |
| PG-H-PR-SL-PB-PO-30 |  | Sanitary Drainage Fixtures | 7.25d | 2026-05-05 A | 2026-05-12 A | PG-H-PR-SL-PB-MA-30 | 100% |  |
|  | 8 | **IRRIGATION WORK** |  | 2026-05-05 | 2026-07-02 |  |  |  |
| PG-H-PR-SL-IR-PO-10 |  | Gate Valve including valve box(Completed) | 40.25d | 2026-05-05 A | 2026-06-24 A | PG-H-PR-SL-IR-MA-10, PG-H-EN-ME-SD-AP-80, PG-H-EN-ME-SD-AP-90 | 100% |  |
| PG-H-PR-SL-IR-PO-20 |  | Bulbblers and Spreyers(Completed) | 40.25d | 2026-05-05 A | 2026-06-24 A | PG-H-PR-SL-IR-MA-20, PG-H-EN-ME-SD-AP-90 | 100% |  |
| PG-H-PR-SL-IR-PO-10_R |  | Gate Valve including valve box(Remaining) | 7d | 2026-06-25 | 2026-07-02 | PG-H-PR-SL-IR-MA-10, PG-H-EN-ME-SD-AP-80, PG-H-EN-ME-SD-AP-90, PG-H-PR-SL-IR-PO-10 |  | 27.1d |
| PG-H-PR-SL-IR-PO-20_R |  | Bulbblers and Spreyers(Remaining) | 7d | 2026-06-25 | 2026-07-02 | PG-H-PR-SL-IR-MA-20, PG-H-EN-ME-SD-AP-90, PG-H-PR-SL-IR-PO-20 |  | 32.5d |
|  | 9 | **ELECTRICAL WORK** |  | 2026-05-12 | 2026-07-02 |  |  |  |
| PG-H-PR-SL-EL-PO-10 |  | Wiring Devices Materials(Completed) | 34.25d | 2026-05-12 A | 2026-06-24 A | PG-H-PR-SL-EL-MA-10 | 100% |  |
| PG-H-PR-SL-EL-PO-10_R |  | Wiring Devices Materials(Remaining) | 7d | 2026-06-25 | 2026-07-02 | PG-H-PR-SL-EL-MA-10, PG-H-PR-SL-EL-PO-10 |  | 34d |
|  | 10 | **FIRE FIGHTING WORK** |  | 2026-05-12 | 2026-07-02 |  |  |  |
| PG-H-PR-SL-FF-PO-10 |  | Fire Extinguishers(Completed) | 34.25d | 2026-05-12 A | 2026-06-24 A | PG-H-PR-SL-FF-MA-10 | 100% |  |
| PG-H-PR-SL-FF-PO-10_R |  | Fire Extinguishers(Remaining) | 7d | 2026-06-25 | 2026-07-02 | PG-H-PR-SL-FF-MA-10, PG-H-PR-SL-FF-PO-10 |  | 41d |
|  | 3 | **DELIVERY TO SITE** |  | 2026-03-01 | 2026-07-16 |  |  |  |
|  | 1 | **EXTERNAL / LANDSCAPE WORK** |  | 2026-03-01 | 2026-07-16 |  |  |  |
| PG-H-PR-SL-LS-DL-10 |  | Backfilling Materials | 43d | 2026-03-01 A | 2026-04-24 A | PG-H-PR-SL-LS-PO-10 | 100% |  |
| PG-H-PR-SL-LS-DL-30 |  | Compacted Natural Ground Soil | 41d | 2026-03-03 A | 2026-04-24 A | PG-H-PR-SL-LS-PO-30 | 100% |  |
| PG-H-PR-SL-LS-DL-20 |  | Interlock tiles | 12d | 2026-04-30 A | 2026-05-13 A | PG-H-PR-SL-LS-PO-20, PG-H-PR-SL-LS-DL-10 | 100% |  |
| PG-H-PR-SL-LS-DL-40 |  | Curb Stone | 12d | 2026-04-30 A | 2026-05-13 A | PG-H-PR-SL-LS-PO-40, PG-H-PR-SL-LS-DL-10 | 100% |  |
| PG-H-PR-SL-LS-DL-50 |  | Thermoplastic pavement road marking(Completed) | 33d | 2026-05-13 A | 2026-06-24 A | PG-H-PR-SL-LS-DL-40, PG-H-PR-SL-LS-PO-50 SS | 100% |  |
| PG-H-PR-SL-LS-DL-60 |  | Traffic Signages(Completed) | 33d | 2026-05-13 A | 2026-06-24 A | PG-H-PR-SL-LS-PO-60 SS, PG-H-PR-SL-LS-DL-50 SS | 100% |  |
| PG-H-PR-SL-LS-DL-70 |  | Trees(Completed) | 33d | 2026-05-13 A | 2026-06-24 A | PG-H-PR-SL-LS-PO-70 SS, PG-H-PR-SL-LS-DL-60 SS | 100% |  |
| PG-H-PR-SL-LS-DL-80 |  | Lawn(Completed) | 33d | 2026-05-13 A | 2026-06-24 A | PG-H-PR-SL-LS-PO-80 SS, PG-H-PR-SL-LS-DL-70 SS | 100% |  |
| PG-H-PR-SL-LS-DL-50_R |  | Thermoplastic pavement road marking(Remaining) | 12d | 2026-07-04 | 2026-07-16 | PG-H-PR-SL-LS-DL-40, PG-H-PR-SL-LS-PO-50_R, PG-H-PR-SL-LS-DL-50 |  | 68.6d |
| PG-H-PR-SL-LS-DL-60_R |  | Traffic Signages(Remaining) | 12d | 2026-07-04 | 2026-07-16 | PG-H-PR-SL-LS-PO-60_R, PG-H-PR-SL-LS-DL-50_R SS, PG-H-PR-SL-LS-DL-60 |  | 68.6d |
| PG-H-PR-SL-LS-DL-70_R |  | Trees(Remaining) | 12d | 2026-07-04 | 2026-07-16 | PG-H-PR-SL-LS-PO-70_R, PG-H-PR-SL-LS-DL-60_R SS, PG-H-PR-SL-LS-DL-70 |  | 68.6d |
| PG-H-PR-SL-LS-DL-80_R |  | Lawn(Remaining) | 12d | 2026-07-04 | 2026-07-16 | PG-H-PR-SL-LS-PO-80_R, PG-H-PR-SL-LS-DL-70_R SS, PG-H-PR-SL-LS-DL-80 |  | 92.1d |
|  | 3 | **CONCRETE WORK** |  | 2026-03-10 | 2026-05-13 |  |  |  |
| PG-H-PR-SL-CO-DL-20 |  | Concrete | 35d | 2026-03-10 A | 2026-04-24 A | PG-H-PR-SL-CO-PO-20, PG-H-PR-SL-CO-DL-10, PG-H-PR-SL-CO-DL-10 SS | 100% |  |
| PG-H-PR-SL-CO-DL-10 |  | Steel Rebar | 12d | 2026-04-23 A | 2026-05-06 A | PG-H-PR-SL-CO-PO-10 | 100% |  |
| PG-H-PR-SL-CO-DL-30 |  | Screed | 18d | 2026-04-23 A | 2026-05-13 A | PG-H-PR-SL-CO-PO-30, PG-H-PR-SL-CO-DL-20 | 100% |  |
| PG-H-PR-SL-CO-DL-40 |  | CMU Block | 18d | 2026-04-23 A | 2026-05-13 A | PG-H-PR-SL-CO-PO-40, PG-H-PR-SL-CO-DL-30, PG-H-PR-SL-CO-DL-30 SS | 100% |  |
| PG-H-PR-SL-CO-DL-50 |  | Concrete Repair & Protection Materials | 18d | 2026-04-23 A | 2026-05-13 A | PG-H-PR-SL-CO-PO-50, PG-H-PR-SL-CO-DL-40, PG-H-PR-SL-CO-DL-40 SS | 100% |  |
|  | 4 | **ARCHITECTURAL & FINISHES WORK** |  | 2026-05-06 | 2026-05-12 |  |  |  |
| PG-H-PR-SL-AR-DL-10 |  | Ceramic tiles | 6d | 2026-05-06 A | 2026-05-12 A | PG-H-PR-SL-AR-PO-10 | 100% |  |
| PG-H-PR-SL-AR-DL-100 |  | Gypsum Boards | 6d | 2026-05-06 A | 2026-05-12 A | PG-H-PR-SL-AR-PO-100 | 100% |  |
| PG-H-PR-SL-AR-DL-110 |  | Specialities Materials (Toilet accessories, lockers, logo, etc) | 6d | 2026-05-06 A | 2026-05-12 A | PG-H-PR-SL-AR-PO-110 | 100% |  |
| PG-H-PR-SL-AR-DL-120 |  | Waterproofing System Materials | 6d | 2026-05-06 A | 2026-05-12 A | PG-H-PR-SL-AR-PO-120 | 100% |  |

| ID | WBS | Task | Duration | Start | Finish | Predecessors | Complete | Total float |
| --- | --- | --- | --- | --- | --- | --- | --- | --- |
| PG-H-PR-SL-AR-DL-20 |  | Anti-slip Granite tiles | 6d | 2026-05-06 A | 2026-05-12 A | PG-H-PR-SL-AR-PO-20, PG-H-PR-SL-AR-DL-10 | 100% |  |
| PG-H-PR-SL-AR-DL-30 |  | Epoxy Paint | 6d | 2026-05-06 A | 2026-05-12 A | PG-H-PR-SL-AR-PO-30, PG-H-PR-SL-AR-DL-20 | 100% |  |
| PG-H-PR-SL-AR-DL-40 |  | Cement Plaster | 6d | 2026-05-06 A | 2026-05-12 A | PG-H-PR-SL-AR-PO-40 | 100% |  |
| PG-H-PR-SL-AR-DL-50 |  | Acrylic Paint | 6d | 2026-05-06 A | 2026-05-12 A | PG-H-PR-SL-AR-PO-50, PG-H-PR-SL-AR-DL-40 | 100% |  |
| PG-H-PR-SL-AR-DL-60 |  | Stone Cladding | 6d | 2026-05-06 A | 2026-05-12 A | PG-H-PR-SL-AR-PO-60, PG-H-PR-SL-AR-DL-50 | 100% |  |
| PG-H-PR-SL-AR-DL-70 |  | Aluminum Plates | 6d | 2026-05-06 A | 2026-05-12 A | PG-H-PR-SL-AR-PO-70, PG-H-PR-SL-AR-DL-50 | 100% |  |
| PG-H-PR-SL-AR-DL-80 |  | Phenolic Partition | 6d | 2026-05-06 A | 2026-05-12 A | PG-H-PR-SL-AR-PO-80 | 100% |  |
| PG-H-PR-SL-AR-DL-90 |  | Glass Partition | 6d | 2026-05-06 A | 2026-05-12 A | PG-H-PR-SL-AR-PO-90 | 100% |  |
|  | 5 | **METAL WORK** |  | 2026-05-06 | 2026-05-12 |  |  |  |
| PG-H-PR-SL-MT-DL-10 |  | Galvanized Steel Ladder | 6d | 2026-05-06 A | 2026-05-12 A | PG-H-PR-SL-MT-PO-10 | 100% |  |
| PG-H-PR-SL-MT-DL-20 |  | Galvanized Steel Roof Scupper | 6d | 2026-05-06 A | 2026-05-12 A | PG-H-PR-SL-MT-PO-20, PG-H-PR-SL-MT-DL-10 | 100% |  |
| PG-H-PR-SL-MT-DL-30 |  | Galvanized Steel Cover with frame | 6d | 2026-05-06 A | 2026-05-12 A | PG-H-PR-SL-MT-PO-30, PG-H-PR-SL-MT-DL-20 | 100% |  |
|  | 6 | **HVAC WORK** |  | 2026-05-06 | 2026-05-12 |  |  |  |
| PG-H-PR-SL-AC-DL-10 |  | Split Air Conditioning Unit | 6d | 2026-05-06 A | 2026-05-12 A | PG-H-PR-SL-AC-PO-10 | 100% |  |
| PG-H-PR-SL-AC-DL-20 |  | Air Duct | 6d | 2026-05-06 A | 2026-05-12 A | PG-H-PR-SL-AC-PO-20 | 100% |  |
| PG-H-PR-SL-AC-DL-30 |  | Diffusers and Grills | 6d | 2026-05-06 A | 2026-05-12 A | PG-H-PR-SL-AC-PO-30, PG-H-PR-SL-AC-DL-20 | 100% |  |
| PG-H-PR-SL-AC-DL-40 |  | Exhaust fans | 6d | 2026-05-06 A | 2026-05-12 A | PG-H-PR-SL-AC-PO-40, PG-H-PR-SL-AC-DL-20 | 100% |  |
|  | 7 | **PLUMBING WORK** |  | 2026-05-06 | 2026-05-12 |  |  |  |
| PG-H-PR-SL-PB-DL-10 |  | PPR Pipes & Valves | 6d | 2026-05-06 A | 2026-05-12 A | PG-H-PR-SL-PB-PO-10 | 100% |  |
| PG-H-PR-SL-PB-DL-20 |  | UPCV Pipes | 6d | 2026-05-06 A | 2026-05-12 A | PG-H-PR-SL-PB-PO-20 | 100% |  |
| PG-H-PR-SL-PB-DL-30 |  | Sanitary Drainage Fixtures | 6d | 2026-05-06 A | 2026-05-12 A | PG-H-PR-SL-PB-PO-30, PG-H-PR-SL-PB-DL-20 | 100% |  |
|  | 8 | **IRRIGATION WORK** |  | 2026-05-06 | 2026-07-16 |  |  |  |
| PG-H-PR-SL-IR-DL-10 |  | Gate Valve including valve box(Completed) | 39d | 2026-05-06 A | 2026-06-24 A | PG-H-PR-SL-IR-PO-10 SS | 100% |  |
| PG-H-PR-SL-IR-DL-20 |  | Bulbblers and Spreyers(Completed) | 39d | 2026-05-06 A | 2026-06-24 A | PG-H-PR-SL-IR-PO-20 SS | 100% |  |
| PG-H-PR-SL-IR-DL-10_R |  | Gate Valve including valve box(Remaining) | 12d | 2026-07-04 | 2026-07-16 | PG-H-PR-SL-IR-PO-10_R, PG-H-PR-SL-IR-DL-10 |  | 27.1d |
| PG-H-PR-SL-IR-DL-20_R |  | Bulbblers and Spreyers(Remaining) | 12d | 2026-07-04 | 2026-07-16 | PG-H-PR-SL-IR-PO-20_R, PG-H-PR-SL-IR-DL-20 |  | 32.5d |
|  | 9 | **ELECTRICAL WORK** |  | 2026-05-20 | 2026-07-16 |  |  |  |
| PG-H-PR-SL-EL-DL-10 |  | Wiring Devices Materials(Completed) | 27d | 2026-05-20 A | 2026-06-24 A | PG-H-PR-SL-EL-PO-10 SS | 100% |  |
| PG-H-PR-SL-EL-DL-10_R |  | Wiring Devices Materials(Remaining) | 12d | 2026-07-04 | 2026-07-16 | PG-H-PR-SL-EL-PO-10_R, PG-H-PR-SL-EL-DL-10 |  | 34d |
|  | 10 | **FIRE FIGHTING WORK** |  | 2026-05-20 | 2026-07-16 |  |  |  |
| PG-H-PR-SL-FF-DL-10 |  | Fire Extinguishers(Completed) | 27d | 2026-05-20 A | 2026-06-24 A | PG-H-PR-SL-FF-PO-10 SS | 100% |  |
| PG-H-PR-SL-FF-DL-10_R |  | Fire Extinguishers(Remaining) | 12d | 2026-07-04 | 2026-07-16 | PG-H-PR-SL-FF-PO-10_R, PG-H-PR-SL-FF-DL-10 |  | 41d |
|  | CO | **CONSTRUCTION STAGE** |  | 2026-04-05 | 2026-11-26 |  |  |  |
|  | EX.SIT | **PLAYGROUND AND LANDSCAPING WORKS** |  | 2026-04-05 | 2026-11-26 |  |  |  |
|  | CF | **CUT AND FILL** |  | 2026-04-05 | 2026-05-06 |  |  |  |
| PG-H-CON-EX-CF-10 |  | Existing Soil Excavation Works | 26d | 2026-04-05 A | 2026-05-04 A | PG-H-EN-ST-SD-AP-10, PG-H-MOB-SO-20, PG-H-MOB-SO-50, PG-Q-CON-EX-CF-10, PG-Q-CON-EX-CF-10 SS | 100% |  |
| PG-H-CON-EX-CF-20 |  | Soil Replacement Works | 21d | 2026-04-12 A | 2026-05-05 A | PG-H-CON-EX-CF-10, PG-H-PR-SL-LS-DL-30, PG-H-CON-EX-CF-10 SS | 100% |  |
| PG-H-CON-EX-CF-30 |  | Levelling & Backfilling Works | 18d | 2026-04-16 A | 2026-05-06 A | PG-H-CON-EX-CF-20, PG-H-PR-SL-LS-DL-10, PG-H-MOB-CAM-40 | 100% |  |
|  | 1 | **PLAYGROUND WORKS** |  | 2026-04-19 | 2026-11-17 |  |  |  |
|  | FP | **FOOTBALL PLAYGROUND WORKS** |  | 2026-04-19 | 2026-11-17 |  |  |  |
| PG-H-CON-EX-FB-10 |  | Subgrade Preparation and Compaction | 16d | 2026-04-19 A | 2026-05-06 A | PG-H-EN-LS-SD-AP-90, PG-H-CON-EX-CF-10, PG-H-CON-EX-CF-20, PG-H-CON-EX-CF-30 | 100% |  |
| PG-H-CON-EX-FB-20 |  | Sub-Base Laying and Compaction | 12d | 2026-04-23 A | 2026-05-06 A | PG-H-CON-EX-FB-10 | 100% |  |
| PG-H-CON-EX-FB-30 |  | Base Course Laying and Compaction | 33d | 2026-05-06 A | 2026-06-17 A | PG-H-CON-EX-FB-20 | 100% |  |
| PG-H-CON-EX-FB-70 |  | Topsoil Placement(Completed) | 33d | 2026-05-13 A | 2026-06-24 A | PG-H-CON-EX-FB-20 | 100% |  |
| PG-H-CON-EX-FB-40 |  | Tartan flooring(Completed) | 7d | 2026-06-17 A | 2026-06-24 A | PG-H-CON-EX-FB-30, PG-H-EN-LS-SD-AP-40, PG-H-PR-LL-SP-DL-20 SS, PG-H-PR-LL-SP-DL-10 SS | 100% |  |
| PG-H-CON-EX-FB-80 |  | Fine Grading & Leveling | 15d | 2026-06-25 | 2026-07-12 | PG-H-CON-EX-FB-30 |  | 0.6d |
| PG-H-CON-EX-FB-70_R |  | Topsoil Placement(Remaining) | 14d | 2026-07-13 | 2026-07-28 | PG-H-CON-EX-FB-70, PG-H-CON-EX-FB-80 |  | 25d |
| PG-H-CON-EX-FB-50 |  | Goal Post Foundation | 17d | 2026-07-29 | 2026-08-17 | PG-H-CON-EX-FB-70_R |  | 25d |
| PG-H-CON-EX-FB-120 |  | Installation of Lighting System | 13d | 2026-08-18 | 2026-09-01 | PG-H-CON-EX-FB-50 |  | 25d |
| PG-H-CON-EX-FB-90 |  | Turfing / Seeding Works | 12d | 2026-09-02 | 2026-09-15 | PG-H-CON-EX-FB-120 |  | 25d |
| PG-H-CON-EX-FB-40_R |  | Tartan flooring(Remaining) | 15d | 2026-09-16 | 2026-10-04 | PG-H-EN-LS-SD-AP-40, PG-H-PR-LL-SP-DL-20_R, PG-H-PR-LL-SP-DL-10_R, PG-H-CON-EX-FB-40, PG-H-CON-EX-FB-90 |  | 25d |
| PG-H-CON-EX-FB-60 |  | Goal Post Installation & Alignment | 13d | 2026-10-05 | 2026-10-19 | PG-H-CON-EX-FB-40_R |  | 25d |
| PG-H-CON-EX-FB-110 |  | Install Playground Benches | 15d | 2026-10-20 | 2026-11-05 | PG-H-PR-LL-LS-DL-20_R, PG-H-CON-EX-FB-60 |  | 25d |
| PG-H-CON-EX-FB-100 |  | Markings and Signages | 10d | 2026-11-07 | 2026-11-17 | PG-H-CON-EX-FB-110 |  | 25d |
|  | GN.SI | **GENERAL SITE WORKS** |  | 2026-04-16 | 2026-11-26 |  |  |  |
|  | 1 | **FENCE WORKS** |  | 2026-04-16 | 2026-08-16 |  |  |  |
| PG-H-CON-EX-GN-FN-10 |  | Excavation for fence foundation | 3d | 2026-04-16 A | 2026-04-19 A | PG-H-CON-EX-CF-30, PG-H-EN-ST-SD-AP-10, PG-H-PR-SL-LS-DL-10 | 100% |  |
| PG-H-CON-EX-GN-FN-20 |  | Concrete Foundations for Fence | 9d | 2026-07-13 | 2026-07-22 | PG-H-CON-EX-GN-FN-10, PG-H-EN-ST-SD-AP-20, PG-H-PR-SL-CO-DL-10, PG-H-PR-SL-CO-DL-20, PG-H-PR-SL-CO-DL-10 SS, PG-H-CON-EX-FB-80 |  | 0.6d |
| PG-H-CON-EX-GN-FN-30 |  | Installation of Galvanized Steel Posts & Framing | 9d | 2026-07-23 | 2026-08-02 | PG-H-CON-EX-GN-FN-20, PG-H-PR-LL-LS-DL-30_R, PG-H-PR-LL-LS-DL-30_R FF, PG-H-PR-LL-LS-DL-30_R SS |  | 0.6d |
| PG-H-CON-EX-GN-FN-40 |  | Fixing of Chain Link Mesh, Tensioning & Bracing | 8d | 2026-08-03 | 2026-08-11 | PG-H-CON-EX-GN-FN-30 |  | 0.6d |
| PG-H-CON-EX-GN-FN-50 |  | Installation of Gates | 4d | 2026-08-12 | 2026-08-16 | PG-H-CON-EX-GN-FN-40 |  | 0.6d |
|  | 5 | **MECHANICAL WORK** |  | 2026-05-12 | 2026-08-06 |  |  |  |
|  | 2 | **STORM WATER AND UTILITY WORK** |  | 2026-05-12 | 2026-08-04 |  |  |  |
| PG-H-CON-EX-GN-M-10 |  | Excavation | 2d | 2026-05-12 A | 2026-05-13 A | PG-H-CON-EX-GN-FN-10, PG-H-CON-EX-GN-FN-10 FF, PG-H-CON-EX-CF-30 | 100% |  |
| PG-H-CON-EX-GN-M-20 |  | Bedding preparation & level control(Completed) | 27d | 2026-05-20 A | 2026-06-24 A | PG-H-CON-EX-GN-M-10 | 100% |  |
| PG-H-CON-EX-GN-M-20_R |  | Bedding preparation & level control(Remaining) | 10d | 2026-06-25 | 2026-07-06 | PG-H-CON-EX-GN-M-10, PG-H-CON-EX-GN-M-20 |  | 23.5d |
| PG-H-CON-EX-GN-M-30 |  | Manhole Installation | 5d | 2026-07-07 | 2026-07-12 | PG-H-CON-EX-GN-M-20_R, PG-H-CON-EX-GN-M-20_R SS |  | 23.5d |
| PG-H-CON-EX-GN-M-40 |  | 150 mm uPVC pipe laying & jointing | 4d | 2026-07-13 | 2026-07-16 | PG-H-CON-EX-GN-M-30 |  | 23.5d |
| PG-H-CON-EX-GN-M-50 |  | Concrete Encasement | 3d | 2026-07-18 | 2026-07-20 | PG-H-CON-EX-GN-M-40, PG-H-PR-SL-CO-DL-10, PG-H-PR-SL-CO-DL-20 |  | 23.5d |
| PG-H-CON-EX-GN-M-60 |  | Backfilling & Compaction | 3d | 2026-07-21 | 2026-07-23 | PG-H-CON-EX-GN-M-50, PG-H-PR-SL-LS-DL-10 |  | 23.5d |

| ID | WBS | Task | Duration | Start | Finish | Predecessors | Complete | Total float |
| --- | --- | --- | --- | --- | --- | --- | --- | --- |
| PG-H-CON-EX-GN-M-70 |  | Surface Reinstatement & Civil Works | 4d | 2026-08-01 | 2026-08-04 | PG-H-CON-EX-GN-M-60, PG-H-PR-SL-CO-DL-50, PG-H-CON-EX-GN-M-100 |  | 23.5d |
|  | IR.SY | **IRRIGATION SYSTEM WORKS** |  | 2026-06-02 | 2026-07-30 |  |  |  |
| PG-H-CON-EX-GN-M-80 |  | Installation of HDPE Irrigation Pipe Network with Gate Valve and Box(Completed) | 19.8d | 2026-06-02 A | 2026-06-24 A | PG-H-EN-ME-SD-AP-80, PG-H-EN-ME-SD-AP-90, PG-H-CON-EX-GN-M-20 SS, PG-H-PR-LL-IR-DL-10 SS, PG-H-PR-SL-IR-DL-10 SS | 100% |  |
| PG-H-CON-EX-GN-M-80_R |  | Installation of HDPE Irrigation Pipe Network with Gate Valve and Box(Remaining) | 2.4d | 2026-07-21 | 2026-07-23 | PG-H-CON-EX-GN-M-60 FF, PG-H-EN-ME-SD-AP-80, PG-H-EN-ME-SD-AP-90, PG-H-CON-EX-GN-M-20_R SS, PG-H-PR-LL-IR-DL-10_R, PG-H-PR-SL-IR-DL-10_R, PG-H-CON-EX-GN-M-80 |  | 23.5d |
| PG-H-CON-EX-GN-M-90 |  | Installation of Irrigation Control System | 3d | 2026-07-25 | 2026-07-27 | PG-H-CON-EX-GN-M-80_R, PG-H-PR-LL-IR-DL-20_R |  | 23.5d |
| PG-H-CON-EX-GN-M-100 |  | Installation of Bubblers and Sprinklers | 3d | 2026-07-28 | 2026-07-30 | PG-H-CON-EX-GN-M-90, PG-H-PR-SL-IR-DL-20_R |  | 23.5d |
|  | 1 | **FIRE PROTECTION SYSTEM** |  | 2026-08-05 | 2026-08-06 |  |  |  |
| PG-H-CON-EX-GN-M-110 |  | Fire Extinguisher Installation | 2d | 2026-08-05 | 2026-08-06 | PG-H-CON-EX-GN-M-70, PG-H-PR-SL-FF-DL-10_R |  | 25d |
|  | 2 | **ELECTRICAL WORK** |  | 2026-05-20 | 2026-10-20 |  |  |  |
|  | 1 | **POWER, LIGHTING & GROUNDING** |  | 2026-05-20 | 2026-09-08 |  |  |  |
| PG-H-CON-EX-GN-E-10 |  | Excavation(Completed) | 27d | 2026-05-20 A | 2026-06-24 A | PG-H-CON-EX-FB-30 | 100% |  |
| PG-H-CON-EX-GN-E-20 |  | Foundation Work for Site Lighting Poles(Completed) | 13d | 2026-06-10 A | 2026-06-24 A | PG-H-PR-SL-CO-DL-10, PG-H-PR-SL-CO-DL-20, PG-H-CON-EX-GN-E-10 SS | 100% |  |
| PG-H-CON-EX-GN-E-10_R |  | Excavation(Remaining) | 1d | 2026-08-04 | 2026-08-04 | PG-H-CON-EX-GN-M-70 FF, PG-H-CON-EX-GN-E-10 |  | 23.5d |
| PG-H-CON-EX-GN-E-20_R |  | Foundation Work for Site Lighting Poles(Remaining) | 3.5d | 2026-08-05 | 2026-08-09 | PG-H-PR-SL-CO-DL-10, PG-H-PR-SL-CO-DL-20, PG-H-CON-EX-GN-E-20, PG-H-CON-EX-GN-E-10_R |  | 23.5d |
| PG-H-CON-EX-GN-E-30 |  | Lightning Protection System (LPS) | 3d | 2026-08-17 | 2026-08-19 | PG-H-CON-EX-GN-E-20_R, PG-H-PR-LL-EL-DL-50_R, PG-H-CON-EX-GN-M-110 |  | 17d |
| PG-H-CON-EX-GN-E-40 |  | KWH Meter and MDB Installation | 2d | 2026-08-20 | 2026-08-22 | PG-H-CON-EX-GN-E-30, PG-H-EN-EL-SD-AP-10, PG-H-PR-LL-EL-DL-10_R |  | 17d |
| PG-H-CON-EX-GN-E-50 |  | Power Panels and Distribution Boards | 5d | 2026-08-23 | 2026-08-27 | PG-H-CON-EX-GN-E-40, PG-H-EN-EL-SD-AP-20, PG-H-PR-LL-EL-DL-20_R |  | 17d |
| PG-H-CON-EX-GN-E-60 |  | Site Lighting Poles Installation | 3d | 2026-08-29 | 2026-08-31 | PG-H-CON-EX-GN-E-50, PG-H-EN-EL-SD-AP-30, PG-H-EN-EL-SD-AP-40, PG-H-PR-LL-EL-DL-30_R |  | 17d |
| PG-H-CON-EX-GN-E-70 |  | Wiring Works | 3d | 2026-09-01 | 2026-09-03 | PG-H-CON-EX-GN-E-60, PG-H-PR-SL-EL-DL-10_R |  | 17d |
| PG-H-CON-EX-GN-E-80 |  | Lighting Fixtures with outlets Installation | 4d | 2026-09-05 | 2026-09-08 | PG-H-CON-EX-GN-E-70, PG-H-PR-LL-EL-DL-40_R |  | 17d |
|  | 2 | **ELV SYSTEMS (TELECOM, DATA, AV & CCTV)** |  | 2026-09-09 | 2026-10-08 |  |  |  |
| PG-H-CON-EX-GN-E-90 |  | ELV Containment & Cabling Works | 3d | 2026-09-09 | 2026-09-12 | PG-H-CON-EX-GN-E-80, PG-H-PR-LL-EL-DL-60_R |  | 17d |
| PG-H-CON-EX-GN-E-100 |  | Fiber Optic Pull Box Installation | 3d | 2026-09-13 | 2026-09-15 | PG-H-CON-EX-GN-E-90, PG-H-EN-EL-SD-AP-50, PG-H-PR-LL-EL-DL-60_R |  | 17d |
| PG-H-CON-EX-GN-E-110 |  | Telephone and Data Outlet Installation | 4d | 2026-09-16 | 2026-09-20 | PG-H-CON-EX-GN-E-100, PG-H-EN-EL-SD-AP-50, PG-H-PR-LL-EL-DL-60_R |  | 17d |
| PG-H-CON-EX-GN-E-120 |  | Telecom Equipment and AV HDMI Installation | 4d | 2026-09-21 | 2026-09-26 | PG-H-CON-EX-GN-E-110, PG-H-EN-EL-SD-AP-80, PG-H-PR-LL-EL-DL-60_R |  | 17d |
| PG-H-CON-EX-GN-E-130 |  | CCTV Rack / Cabinet Installation | 4d | 2026-09-27 | 2026-09-30 | PG-H-CON-EX-GN-E-120, PG-H-EN-EL-SD-AP-60, PG-H-PR-LL-EL-DL-70_R |  | 17d |
| PG-H-CON-EX-GN-E-140 |  | NVR and CCTV Monitor Installation | 4d | 2026-10-01 | 2026-10-05 | PG-H-CON-EX-GN-E-130, PG-H-EN-EL-SD-AP-70, PG-H-PR-LL-EL-DL-70_R |  | 17d |
| PG-H-CON-EX-GN-E-150 |  | IP Camera Installation | 3d | 2026-10-06 | 2026-10-08 | PG-H-CON-EX-GN-E-140, PG-H-PR-LL-EL-DL-70_R |  | 17d |
|  | 3 | **FIRE ALARM SYSTEM** |  | 2026-09-13 | 2026-10-20 |  |  |  |
| PG-H-CON-EX-GN-E-160 |  | Fire Alarm Containment & Cabling | 8d | 2026-09-13 | 2026-09-21 | PG-H-EN-EL-SD-AP-110, PG-H-EN-EL-SD-AP-90, PG-H-PR-LL-EL-DL-80_R, PG-H-CON-EX-GN-E-90 |  | 17d |
| PG-H-CON-EX-GN-E-170 |  | Fire Alarm Control Panel (FACP) Installation | 8d | 2026-09-22 | 2026-10-01 | PG-H-CON-EX-GN-E-160, PG-H-EN-EL-SD-AP-110 |  | 17d |
| PG-H-CON-EX-GN-E-180 |  | Initiating Devices (Detectors & Manual Pull Station) | 8d | 2026-10-03 | 2026-10-11 | PG-H-CON-EX-GN-E-170, PG-H-EN-EL-SD-AP-100 |  | 17d |
| PG-H-CON-EX-GN-E-190 |  | Notification Appliances (Strobe with Sounder) | 8d | 2026-10-12 | 2026-10-20 | PG-H-CON-EX-GN-E-180 |  | 17d |
|  | 3 | **PARKING WORK** |  | 2026-06-17 | 2026-10-20 |  |  |  |
| PG-H-CON-EX-GN-PR-20 |  | Interlock tiles(Completed) | 7d | 2026-06-17 A | 2026-06-24 A | PG-H-EN-LS-SD-AP-20, PG-H-PR-SL-LS-DL-20 | 100% |  |
| PG-H-CON-EX-GN-PR-10 |  | Installlation of Parking Accessories | 5d | 2026-10-10 | 2026-10-14 | PG-H-CON-EX-GN-E-150 |  | 17d |
| PG-H-CON-EX-GN-PR-20_R |  | Interlock tiles(Remaining) | 2.75d | 2026-10-12 | 2026-10-14 | PG-H-CON-EX-GN-PR-10 FF, PG-H-CON-B-AR-RF-30 FF, PG-H-CON-B-AR-WF-60 FF, PG-H-CON-B-AR-GF-70 FF, PG-H-EN-LS-SD-AP-20, PG-H-PR-SL-LS-DL-20, PG-H-CON-EX-GN-PR-20 |  | 17d |
| PG-H-CON-EX-GN-PR-30 |  | Marking & Signages | 5d | 2026-10-15 | 2026-10-20 | PG-H-CON-EX-GN-PR-20_R, PG-H-EN-LS-SD-AP-80, PG-H-PR-SL-LS-DL-50_R, PG-H-PR-SL-LS-DL-60_R, PG-H-CON-EX-GN-E-190 FF |  | 17d |
|  | 4 | **SERVICE CONNECTION** |  | 2026-10-21 | 2026-11-26 |  |  |  |
| PG-H-CON-EX-GN-SC-10 |  | Excavation & Trench Preparation | 8d | 2026-10-21 | 2026-10-29 | PG-H-CON-EX-GN-PR-30 |  | 17d |
| PG-H-CON-EX-GN-SC-20 |  | HDPE Pipe Laying & Valve Installation | 8d | 2026-10-31 | 2026-11-08 | PG-H-CON-EX-GN-SC-10 |  | 17d |
| PG-H-CON-EX-GN-SC-30 |  | Connection to City Network | 8d | 2026-11-09 | 2026-11-17 | PG-H-CON-EX-GN-SC-20 |  | 17d |
| PG-H-CON-EX-GN-SC-40 |  | Backfilling | 8d | 2026-11-18 | 2026-11-26 | PG-H-PR-SL-LS-DL-10, PG-H-CON-EX-GN-SC-30 |  | 17d |
|  | LS | **LANDSCAPING WORKS** |  | 2026-05-30 | 2026-11-09 |  |  |  |
|  | HSP | **HARDSCAPE WORK** |  | 2026-05-30 | 2026-11-09 |  |  |  |
| PG-H-CON-EX-LS-HS-10 |  | Curbstone Installation(Completed) | 22d | 2026-05-30 A | 2026-06-24 A | PG-H-EN-LS-SD-AP-10, PG-H-PR-SL-LS-DL-40 | 100% |  |
| PG-H-CON-EX-LS-HS-20 |  | Interlock Tiles Grey Scale with Black Marble Chips(Completed) | 22d | 2026-05-30 A | 2026-06-24 A | PG-H-CON-EX-LS-HS-10 SS | 100% |  |
| PG-H-CON-EX-LS-HS-40 |  | Bike Path and Walking Path Construction(Completed) | 22d | 2026-05-30 A | 2026-06-24 A | PG-H-EN-LS-SD-AP-50, PG-H-EN-LS-SD-AP-60, PG-H-CON-EX-LS-HS-30 SS, PG-H-PR-LL-LS-DL-10 SS | 100% |  |
| PG-H-CON-EX-LS-HS-50 |  | Install Recycled Precast Concrete Seats(Completed) | 22d | 2026-05-30 A | 2026-06-24 A | PG-H-CON-EX-LS-HS-40 SS, PG-H-PR-LL-LS-DL-20 SS | 100% |  |
| PG-H-CON-EX-LS-HS-30 |  | Stamped Concrete Floor(Completed) | 13d | 2026-06-10 A | 2026-06-24 A | PG-H-EN-LS-SD-AP-30, PG-H-CON-EX-LS-HS-20 SS | 100% |  |
| PG-H-CON-EX-LS-HS-10_R |  | Curbstone Installation(Remaining) | 8d | 2026-09-10 | 2026-09-19 | PG-H-CON-EX-GN-FN-50 FF, PG-H-CON-EX-TW-IR-40 FF, PG-H-CON-EX-TW-ST-70 FF, PG-H-EN-LS-SD-AP-10, PG-H-PR-SL-LS-DL-40, PG-H-CON-EX-LS-HS-10 |  | 0.6d |
| PG-H-CON-EX-LS-HS-20_R |  | Interlock Tiles Grey Scale with Black Marble Chips(Remaining) | 13d | 2026-09-20 | 2026-10-05 | PG-H-CON-EX-LS-HS-10_R, PG-H-CON-EX-LS-HS-20 |  | 0.6d |
| PG-H-CON-EX-LS-HS-30_R |  | Stamped Concrete Floor(Remaining) | 15d | 2026-09-20 | 2026-10-07 | PG-H-EN-LS-SD-AP-30, PG-H-CON-EX-LS-HS-20_R SS, PG-H-CON-EX-LS-HS-30 |  | 0.6d |
| PG-H-CON-EX-LS-HS-40_R |  | Bike Path and Walking Path Construction(Remaining) | 8d | 2026-10-08 | 2026-10-17 | PG-H-CON-EX-LS-SS-10 FF, PG-H-EN-LS-SD-AP-50, PG-H-EN-LS-SD-AP-60, PG-H-PR-LL-LS-DL-10_R, PG-H-CON-EX-LS-HS-40, PG-H-CON-EX-LS-HS-30_R |  | 0.6d |
| PG-H-CON-EX-LS-HS-50_R |  | Install Recycled Precast Concrete Seats(Remaining) | 10d | 2026-10-18 | 2026-10-28 | PG-H-PR-LL-LS-DL-20_R SS, PG-H-CON-EX-LS-HS-50, PG-H-CON-EX-LS-HS-40_R |  | 0.6d |
| PG-H-CON-EX-LS-HS-60 |  | Install Recycled Precast Concrete Trash Bins | 10d | 2026-10-29 | 2026-11-09 | PG-H-CON-EX-LS-HS-50_R |  | 0.6d |
|  | SSP | **SOFTSCAPE WORK** |  | 2026-06-03 | 2026-11-09 |  |  |  |
| PG-H-CON-EX-LS-SS-20 |  | Lawn Area Preparation & Planting / Turfing(Completed) | 18.75d | 2026-06-03 A | 2026-06-24 A | PG-H-EN-LS-SD-AP-70, PG-H-PR-SL-LS-DL-80 SS | 100% |  |
| PG-H-CON-EX-LS-SS-10 |  | Planting Trees | 10d | 2026-10-06 | 2026-10-17 | PG-H-EN-LS-SD-AP-70, PG-H-PR-SL-LS-DL-70_R, PG-H-CON-EX-LS-HS-20_R |  | 0.6d |
| PG-H-CON-EX-LS-SS-20_R |  | Lawn Area Preparation & Planting / Turfing(Remaining) | 6.5d | 2026-11-02 | 2026-11-09 | PG-H-CON-EX-LS-SS-10 FF, PG-H-CON-EX-LS-HS-60 FF, PG-H-EN-LS-SD-AP-70, PG-H-PR-SL-LS-DL-80_R, PG-H-CON-EX-LS-SS-20 |  | 0.6d |
|  | W.T | **TANK WORKS** |  | 2026-05-13 | 2026-09-19 |  |  |  |
|  | 1 | **SEPTIC TANK** |  | 2026-05-13 | 2026-08-31 |  |  |  |
| PG-H-CON-EX-TW-ST-10 |  | Excavation | 32d | 2026-05-13 A | 2026-06-23 A | PG-H-CON-EX-CF-30 | 100% |  |
| PG-H-CON-EX-TW-ST-20 |  | PCC / Lean Concrete laying | 27d | 2026-05-20 A | 2026-06-24 A | PG-H-CON-EX-TW-ST-10, PG-H-CON-EX-TW-ST-10 SS | 100% |  |
| PG-H-CON-EX-TW-ST-30 |  | RCC Foundation(Completed) | 13d | 2026-06-10 A | 2026-06-24 A | PG-H-CON-EX-TW-ST-20, PG-H-EN-ST-SD-AP-70, PG-H-EN-ST-SD-AP-80, PG-H-CON-EX-TW-ST-20 SS | 100% |  |
| PG-H-CON-EX-TW-ST-30_R |  | RCC Foundation(Remaining) | 6d | 2026-06-25 | 2026-07-01 | PG-H-CON-EX-TW-ST-20, PG-H-EN-ST-SD-AP-70, PG-H-EN-ST-SD-AP-80, PG-H-CON-EX-TW-ST-20 SS, PG-H-CON-EX-TW-ST-30 |  | 25.6d |
| PG-H-CON-EX-TW-ST-40 |  | RCC Wall | 7d | 2026-07-02 | 2026-07-09 | PG-H-CON-EX-TW-ST-30_R |  | 25.6d |
| PG-H-CON-EX-TW-ST-50 |  | RCC Slab | 7d | 2026-07-11 | 2026-07-18 | PG-H-CON-EX-TW-ST-40 |  | 25.6d |
| PG-H-CON-EX-TW-ST-60 |  | Finishing Work | 7d | 2026-08-17 | 2026-08-24 | PG-H-CON-EX-TW-ST-50, PG-H-CON-EX-GN-FN-50 |  | 0.6d |
| PG-H-CON-EX-TW-ST-70 |  | Backfilling | 6d | 2026-08-25 | 2026-08-31 | PG-H-CON-EX-TW-ST-60 |  | 0.6d |

| ID | WBS | Task | Duration | Start | Finish | Predecessors | Complete | Total float |
| --- | --- | --- | --- | --- | --- | --- | --- | --- |
|  | 2 | **WATER STORAGE TANK** |  | 2026-05-13 | 2026-09-19 |  |  |  |
| PG-H-CON-EX-TW-IR-10 |  | Excavation(Completed) | 33d | 2026-05-13 A | 2026-06-24 A | PG-H-EN-ST-SD-AP-50 | 100% |  |
| PG-H-CON-EX-TW-IR-10_R |  | Excavation(Remaining) | 3d | 2026-08-29 | 2026-08-31 | PG-H-CON-EX-TW-ST-70 FF, PG-H-EN-ST-SD-AP-50, PG-H-CON-EX-TW-IR-10 |  | 0.6d |
| PG-H-CON-EX-TW-IR-20 |  | RCC Foundation | 6d | 2026-09-01 | 2026-09-07 | PG-H-CON-EX-TW-IR-10_R, PG-H-EN-ST-SD-AP-60 |  | 0.6d |
| PG-H-CON-EX-TW-IR-30 |  | Backfilling | 5d | 2026-09-08 | 2026-09-13 | PG-H-CON-EX-TW-IR-20 |  | 0.6d |
| PG-H-CON-EX-TW-IR-40 |  | GRP Water Tank Installation | 5d | 2026-09-14 | 2026-09-19 | PG-H-CON-EX-TW-IR-30, PG-H-EN-ME-SD-AP-40, PG-H-PR-LL-PB-DL-20_R |  | 0.6d |
|  | B | **TOILET BUILDING WORKS** |  | 2026-05-12 | 2026-10-12 |  |  |  |
|  | CVL | **CIVIL WORK** |  | 2026-05-12 | 2026-10-12 |  |  |  |
|  | ST | **STRUCTURAL WORK** |  | 2026-05-12 | 2026-07-22 |  |  |  |
| PG-H-CON-B-STR-10 |  | Excavation up to bottom of footing | 2d | 2026-05-12 A | 2026-05-13 A | PG-H-EN-ST-SD-AP-30, PG-Q-MOB-CAM-40 | 100% |  |
| PG-H-CON-B-STR-20 |  | Anti-termite treatment and Polyethene Sheet | 2d | 2026-05-12 A | 2026-05-13 A | PG-H-CON-B-STR-10 | 100% |  |
| PG-H-CON-B-STR-30 |  | Backfilling with selected fill material (under footing) | 1d | 2026-05-13 A | 2026-05-13 A | PG-H-CON-B-STR-20, PG-H-PR-SL-LS-DL-10 | 100% |  |
| PG-H-CON-B-STR-40 |  | Raft Foundation Work | 27d | 2026-05-13 A | 2026-06-17 A | PG-H-CON-B-STR-30, PG-H-EN-ST-SD-AP-40, PG-H-PR-SL-CO-DL-10, PG-H-PR-SL-CO-DL-20 | 100% |  |
| PG-H-CON-B-STR-50 |  | Autoclaved aerated panel (walls) | 4d | 2026-07-13 | 2026-07-16 | PG-H-CON-B-STR-40, PG-H-PR-LL-CO-DL-10_R |  | 18d |
| PG-H-CON-B-STR-60 |  | Autoclaved aerated panel (ceiling) | 3d | 2026-07-18 | 2026-07-20 | PG-H-CON-B-STR-50, PG-H-PR-LL-CO-DL-10_R |  | 18d |
| PG-H-CON-B-STR-70 |  | Autoclaved aerated panel (parapet) | 2d | 2026-07-21 | 2026-07-22 | PG-H-CON-B-STR-60, PG-H-PR-LL-CO-DL-10_R |  | 18d |
|  | AR | **ARCHITECTURAL WORK** |  | 2026-07-23 | 2026-10-12 |  |  |  |
|  | 1 | **GENERAL FINISHES** |  | 2026-07-23 | 2026-10-12 |  |  |  |
| PG-H-CON-B-AR-GF-10 |  | Block Works | 4d | 2026-07-23 | 2026-07-27 | PG-H-CON-B-STR-70, PG-H-EN-AR-SD-AP-10, PG-H-EN-AR-SD-AP-40, PG-H-PR-SL-CO-DL-40 |  | 18d |
| PG-H-CON-B-AR-GF-20 |  | Plaster | 4d | 2026-08-08 | 2026-08-11 | PG-H-CON-B-AR-GF-10, PG-H-CON-B-GF-EL-10, PG-H-PR-SL-AR-DL-40 |  | 18d |
| PG-H-CON-B-AR-GF-30 |  | False Ceiling Installation & Finishing | 8d | 2026-08-20 | 2026-08-29 | PG-H-CON-B-AR-GF-20, PG-H-CON-B-GF-DR-20, PG-H-EN-AR-SD-AP-60, PG-H-PR-SL-AR-DL-100 |  | 24d |
| PG-H-CON-B-AR-GF-40 |  | Wall Paint | 3d | 2026-09-09 | 2026-09-12 | PG-H-CON-B-AR-GF-30, PG-H-PR-SL-AR-DL-50, PG-H-CON-B-GF-EL-50 |  | 15d |
| PG-H-CON-B-AR-GF-50 |  | Epoxy Flooring | 7d | 2026-09-13 | 2026-09-20 | PG-H-CON-B-AR-GF-40, PG-H-EN-AR-SD-AP-50, PG-H-PR-SL-AR-DL-30 |  | 19d |
| PG-H-CON-B-AR-GF-60 |  | Install Doors & Windows | 5d | 2026-09-21 | 2026-09-27 | PG-H-CON-B-AR-GF-50, PG-H-EN-AR-SD-AP-30, PG-H-EN-AR-SD-AP-80, PG-H-EN-AR-SD-AP-40, PG-H-PR-LL-MT-DL-10_R |  | 19d |
| PG-H-CON-B-AR-GF-70 |  | Facade Finishing Work | 18d | 2026-09-21 | 2026-10-12 | PG-H-EN-AR-SD-AP-90, PG-H-EN-AR-SD-AP-100, PG-H-PR-LL-MT-DL-20_R, PG-H-PR-SL-AR-DL-60, PG-H-PR-SL-AR-DL-70, PG-H-CON-B-AR-GF-50 |  | 19d |
| PG-H-CON-B-AR-GF-80 |  | Lockers and Furniture Installation | 7d | 2026-09-28 | 2026-10-05 | PG-H-CON-B-AR-GF-60, PG-H-CON-B-AR-GF-70 SS |  | 19d |
|  | 2 | **WET AREA FINISHES** |  | 2026-08-12 | 2026-10-11 |  |  |  |
| PG-H-CON-B-AR-WF-10 |  | False Ceiling Installation & Finishing | 4d | 2026-08-12 | 2026-08-16 | PG-H-EN-AR-SD-AP-60, PG-H-PR-SL-AR-DL-100, PG-H-CON-B-AR-GF-20 |  | 19d |
| PG-H-CON-B-AR-WF-20 |  | Wall Tiles and Partition Work | 3d | 2026-09-13 | 2026-09-15 | PG-H-CON-B-AR-WF-10, PG-H-CON-B-AR-GF-40, PG-H-EN-AR-SD-AP-70, PG-H-EN-AR-SD-AP-30, PG-H-PR-SL-AR-DL-10, PG-H-PR-SL-AR-DL-80, PG-H-PR-SL-AR-DL-90, PG-H-CON-B-GF-WS-20 |  | 15d |
| PG-H-CON-B-AR-WF-30 |  | Waterproofing on Floor | 2d | 2026-09-16 | 2026-09-17 | PG-H-CON-B-AR-WF-20, PG-H-EN-AR-SD-AP-50, PG-H-PR-SL-CO-DL-30, PG-H-PR-SL-AR-DL-120 |  | 15d |
| PG-H-CON-B-AR-WF-40 |  | Floor Tiles Works | 10d | 2026-09-19 | 2026-09-30 | PG-H-CON-B-AR-WF-30, PG-H-PR-SL-AR-DL-20 |  | 15d |
| PG-H-CON-B-AR-WF-50 |  | Toliet accessories Installation Works | 9d | 2026-10-01 | 2026-10-11 | PG-H-CON-B-AR-WF-40, PG-H-EN-AR-SD-AP-70, PG-H-PR-SL-AR-DL-110 |  | 15d |
| PG-H-CON-B-AR-WF-60 |  | Install Doors | 4d | 2026-10-01 | 2026-10-05 | PG-H-EN-AR-SD-AP-30, PG-H-EN-AR-SD-AP-80, PG-H-EN-AR-SD-AP-40, PG-H-PR-LL-MT-DL-10_R, PG-H-CON-B-AR-WF-40 |  | 20d |
|  | 3 | **ROOF FINISHES** |  | 2026-09-19 | 2026-10-05 |  |  |  |
| PG-H-CON-B-AR-RF-10 |  | Waterproofing on Floor | 4d | 2026-09-19 | 2026-09-22 | PG-H-CON-B-AR-WF-30, PG-H-EN-AR-SD-AP-20, PG-H-PR-SL-CO-DL-30, PG-H-PR-SL-AR-DL-120 |  | 25d |
| PG-H-CON-B-AR-RF-20 |  | Epoxy Flooring and Finishes | 2d | 2026-09-24 | 2026-09-26 | PG-H-CON-B-AR-RF-10, PG-H-PR-SL-AR-DL-30 |  | 25d |
| PG-H-CON-B-AR-RF-30 |  | Steel ladder and Steel roof scupper Installation | 2d | 2026-10-04 | 2026-10-05 | PG-H-PR-SL-MT-DL-10, PG-H-PR-SL-MT-DL-20, PG-H-PR-SL-MT-DL-30, PG-H-CON-B-AR-GF-80 FF, PG-H-CON-B-AR-RF-20 |  | 19d |
|  | MEP | **MEP WORK** |  | 2026-07-28 | 2026-10-06 |  |  |  |
|  | MEC | **MECANICAL WORKS** |  | 2026-07-28 | 2026-10-06 |  |  |  |
|  | FF | **FIRE FIGHTING SYSTEM** |  | 2026-10-06 | 2026-10-06 |  |  |  |
| PG-H-CON-B-GF-FF-10 |  | Fire Extinguisher Installation | 1d | 2026-10-06 | 2026-10-06 | PG-H-PR-SL-FF-DL-10_R, PG-H-CON-B-AR-RF-30 |  | 19d |
|  | DS | **SEWER AND DRAINAGE SYSTEM** |  | 2026-08-03 | 2026-08-23 |  |  |  |
| PG-H-CON-B-GF-DR-10 |  | Sewer and Drainge System Main Lines Installation | 2d | 2026-08-03 | 2026-08-04 | PG-H-CON-B-GF-WS-10, PG-H-EN-ME-SD-AP-50, PG-H-PR-SL-PB-DL-20 |  | 18d |
| PG-H-CON-B-GF-DR-20 |  | Sewer and Drainge System Pipes and fittings Installation | 2d | 2026-08-18 | 2026-08-19 | PG-H-CON-B-GF-DR-10, PG-H-CON-B-GF-WS-20, PG-H-EN-ME-SD-AP-60, PG-H-EN-ME-SD-AP-70, PG-H-PR-SL-PB-DL-20, PG-H-PR-SL-PB-DL-30 |  | 19d |
| PG-H-CON-B-GF-DR-30 |  | Sanitaryware Installation (Final Fix) | 2d | 2026-08-22 | 2026-08-23 | PG-H-CON-B-GF-DR-20, PG-H-CON-B-GF-WS-30, PG-H-EN-ME-SD-AP-70 |  | 18d |
|  | HV | **HVAC SYSTEM** |  | 2026-07-28 | 2026-08-15 |  |  |  |
| PG-H-CON-B-GF-AC-10 |  | Duct Work and Exhaust Fan Installation | 3d | 2026-07-28 | 2026-07-30 | PG-H-CON-B-AR-GF-10, PG-H-PR-SL-AC-DL-20, PG-H-PR-SL-AC-DL-40 |  | 18d |
| PG-H-CON-B-GF-AC-20 |  | Split AC, Grills & Diffuser Installation | 3d | 2026-08-12 | 2026-08-15 | PG-H-CON-B-GF-AC-10, PG-H-CON-B-AR-GF-20, PG-H-PR-SL-AC-DL-10, PG-H-PR-SL-AC-DL-30 |  | 18d |
|  | WS | **WATER SUPPLY SYSTEM** |  | 2026-08-01 | 2026-08-20 |  |  |  |
| PG-H-CON-B-GF-WS-10 |  | Water Supply Main Lines Installation | 2d | 2026-08-01 | 2026-08-02 | PG-H-CON-B-GF-AC-10, PG-H-EN-ME-SD-AP-10, PG-H-PR-SL-PB-DL-10 |  | 18d |
| PG-H-CON-B-GF-WS-20 |  | Water Supply Pipes Installation (Cold and Hot Water) | 2d | 2026-08-16 | 2026-08-17 | PG-H-CON-B-GF-WS-10, PG-H-CON-B-GF-AC-20, PG-H-EN-ME-SD-AP-10, PG-H-PR-SL-PB-DL-10 |  | 18d |
| PG-H-CON-B-GF-WS-30 |  | Water Supply Accesories and Booster pump Installation | 3d | 2026-08-18 | 2026-08-20 | PG-H-CON-B-GF-WS-20, PG-H-CON-B-AR-WF-10, PG-H-EN-ME-SD-AP-20, PG-H-EN-ME-SD-AP-30, PG-H-PR-LL-PB-DL-10_R |  | 18d |
|  | ELC | **ELECTRICAL WORKS** |  | 2026-08-05 | 2026-09-08 |  |  |  |
| PG-H-CON-B-GF-EL-10 |  | Pipes & Conduits Installation | 2d | 2026-08-05 | 2026-08-06 | PG-H-CON-B-GF-DR-10, PG-H-PR-SL-EL-DL-10_R |  | 18d |
| PG-H-CON-B-GF-EL-20 |  | Electrical Light Fixtures Installation | 2d | 2026-08-27 | 2026-08-29 | PG-H-CON-B-GF-DR-30, PG-H-PR-LL-EL-DL-40_R |  | 15d |
| PG-H-CON-B-GF-EL-30 |  | Fire Alarm Devices Installation | 3d | 2026-08-30 | 2026-09-01 | PG-H-CON-B-GF-EL-20 |  | 15d |
| PG-H-CON-B-GF-EL-40 |  | Telecom & CCTV Devices Installation | 3d | 2026-09-02 | 2026-09-05 | PG-H-CON-B-GF-EL-30 |  | 15d |
| PG-H-CON-B-GF-EL-50 |  | Electrical & ELV Wiring Works | 3d | 2026-09-06 | 2026-09-08 | PG-H-CON-B-GF-EL-40 |  | 15d |
|  | TE & CO | **PROJECT CLOSOUT** |  | 2026-05-25 | 2026-12-16 |  |  |  |
| PG-H-PCL-10 |  | Testing, Commessioning for All Systems(Completed) | 22.8d | 2026-05-25 A | 2026-06-24 A | PG-H-CON-EX-LS-SS-20 SS | 100% |  |
| PG-H-PCL-10_R |  | Testing, Commessioning for All Systems(Remaining) | 9.9d | 2026-11-02 | 2026-11-14 | PG-H-CON-B-GF-EL-50 FF, PG-H-CON-B-GF-WS-30 FF, PG-H-CON-B-GF-AC-20 FF, PG-H-CON-B-GF-DR-30 FF, PG-H-CON-B-GF-FF-10 FF, PG-H-CON-EX-LS-SS-20_R SS, PG-H-PCL-10 |  | 0.6d |
| PG-H-PCL-20 |  | As-Built Drawings | 18d | 2026-11-14 | 2026-12-05 | PG-H-PCL-10_R |  | 4.6d |
| PG-H-PCL-30 |  | Snag list Submission | 8d | 2026-11-14 | 2026-11-23 | PG-H-PCL-10_R |  | 0.6d |
| PG-H-PCL-40 |  | Snag list Closeout | 14d | 2026-11-23 | 2026-12-09 | PG-H-PCL-30 |  | 0.6d |
| PG-H-PCL-50 |  | Issuing Approvals | 3d | 2026-12-09 | 2026-12-13 | PG-H-PCL-40, PG-H-PCL-20 |  | 0.6d |
| PG-H-PCL-60 |  | Handing Over | 3d | 2026-12-13 | 2026-12-16 | PG-H-PCL-50 |  | 0.6d |
|  | TABUK | **TABUK** |  | 2026-02-17 | 2026-12-16 |  |  |  |
|  | MOB | **MOBILIZATION** |  | 2026-02-17 | 2026-04-14 |  |  |  |
|  | CAM | **TEMPORARY CAMP** |  | 2026-02-17 | 2026-04-13 |  |  |  |
| PG-T-MOB-CAM-10 |  | Temporary Underground Utilities works | 43.25d | 2026-02-17 A | 2026-04-13 A | PG-GN-MS-10 SS | 100% |  |

| ID | WBS | Task | Duration | Start | Finish | Predecessors | Complete | Total float |
| --- | --- | --- | --- | --- | --- | --- | --- | --- |
| PG-T-MOB-CAM-20 |  | Temporary Porta-Cabins | 36.25d | 2026-02-26 A | 2026-04-13 A | PG-T-MOB-CAM-10 | 100% |  |
| PG-T-MOB-CAM-30 |  | Temporary Toilets | 36.25d | 2026-02-26 A | 2026-04-13 A | PG-T-MOB-CAM-10 | 100% |  |
| PG-T-MOB-CAM-40 |  | Temporary Mosque | 28.25d | 2026-03-08 A | 2026-04-13 A | PG-T-MOB-CAM-20, PG-T-MOB-CAM-30 | 100% |  |
|  | OF | **SITE OFFICES** |  | 2026-02-17 | 2026-04-14 |  |  |  |
| PG-T-MOB-SO-10 |  | Temporary Underground Utilities works | 44.25d | 2026-02-17 A | 2026-04-14 A | PG-GN-MS-10 SS | 100% |  |
| PG-T-MOB-SO-20 |  | Temporary Porta-Cabins | 38.25d | 2026-02-25 A | 2026-04-14 A | PG-T-MOB-SO-10 | 100% |  |
| PG-T-MOB-SO-30 |  | Temporary Toilets | 38.25d | 2026-02-25 A | 2026-04-14 A | PG-T-MOB-SO-10 | 100% |  |
| PG-T-MOB-SO-40 |  | Temporary Mosque | 32.25d | 2026-03-04 A | 2026-04-14 A | PG-T-MOB-SO-20, PG-T-MOB-SO-30 | 100% |  |
| PG-T-MOB-SO-50 |  | Car Parking Area | 25.25d | 2026-03-12 A | 2026-04-14 A | PG-T-MOB-SO-40, PG-T-GEN-20, PG-T-GEN-30, PG-T-GEN-40 | 100% |  |
|  | GE.REQ | **GENERAL REQUIEREMENTS** |  | 2026-02-17 | 2026-04-14 |  |  |  |
| PG-T-GEN-20 |  | HSSE Submission Plan | 35.25d | 2026-02-17 A | 2026-04-04 A | PG-GN-MS-10 SS | 100% |  |
| PG-T-GEN-30 |  | Surveying report Submission Plan | 44.25d | 2026-02-17 A | 2026-04-14 A | PG-GN-MS-10 SS | 100% |  |
| PG-T-GEN-40 |  | Baseline Submission | 6.25d | 2026-02-28 A | 2026-03-05 A | PG-GN-MS-10 SS | 100% |  |
| PG-T-GEN-10 |  | QA/QC Submission Plan | 16.25d | 2026-03-12 A | 2026-04-04 A | PG-T-GEN-30, PG-GN-MS-10 SS | 100% |  |
|  | ENG | **ENGINEERING** |  | 2026-02-17 | 2026-08-12 |  |  |  |
|  | 1 | **SHOP DRAWINGS SUBMITTALS** |  | 2026-02-17 | 2026-08-04 |  |  |  |
|  | 1 | **STRUCTURAL DRAWINGS** |  | 2026-02-17 | 2026-07-18 |  |  |  |
|  | 1 | **PROJECT FENCE** |  | 2026-02-17 | 2026-05-06 |  |  |  |
| PG-T-EN-ST-SD-SB-10 |  | Excavation Drawings | 63.25d | 2026-02-17 A | 2026-05-06 A | PG-GN-MS-10 SS | 100% |  |
| PG-T-EN-ST-SD-SB-20 |  | Foundation Drawings | 61.25d | 2026-02-19 A | 2026-05-06 A | PG-T-EN-ST-SD-SB-10, PG-T-EN-ST-SD-SB-10 SS | 100% |  |
|  | 2 | **PADEL PLAYGROUND FENCE** |  | 2026-02-17 | 2026-05-06 |  |  |  |
| PG-T-EN-ST-SD-SB-30 |  | Excavation Drawings | 63.25d | 2026-02-17 A | 2026-05-06 A | PG-T-EN-ST-SD-SB-10 SS | 100% |  |
| PG-T-EN-ST-SD-SB-40 |  | Foundation Drawings | 61.25d | 2026-02-19 A | 2026-05-06 A | PG-T-EN-ST-SD-SB-30, PG-T-EN-ST-SD-SB-30 SS | 100% |  |
|  | 3 | **AIR DOME** |  | 2026-06-25 | 2026-07-18 |  |  |  |
| PG-T-EN-ST-SD-SB-50 |  | Excavation Drawings | 10d | 2026-06-25 | 2026-07-06 | PG-T-EN-ST-SD-SB-30 SS |  | 0d |
| PG-T-EN-ST-SD-SB-60 |  | Foundation Drawings | 10d | 2026-07-07 | 2026-07-18 | PG-T-EN-ST-SD-SB-50, PG-T-EN-ST-SD-SB-50 SS |  | 0d |
|  | 4 | **TOILET BUILDING** |  | 2026-02-19 | 2026-04-13 |  |  |  |
| PG-T-EN-ST-SD-SB-70 |  | Excavation Drawings | 41.25d | 2026-02-19 A | 2026-04-13 A | PG-T-EN-ST-SD-SB-10, PG-T-EN-ST-SD-SB-10 SS | 100% |  |
| PG-T-EN-ST-SD-SB-80 |  | Foundation Drawings | 39.25d | 2026-02-23 A | 2026-04-13 A | PG-T-EN-ST-SD-SB-70 | 100% |  |
|  | 5 | **WATER STORAGE TANK** |  | 2026-02-23 | 2026-04-13 |  |  |  |
| PG-T-EN-ST-SD-SB-90 |  | Excavation Drawings | 39.25d | 2026-02-23 A | 2026-04-13 A | PG-T-EN-ST-SD-SB-70 | 100% |  |
| PG-T-EN-ST-SD-SB-100 |  | Foundation Drawings | 37.25d | 2026-02-25 A | 2026-04-13 A | PG-T-EN-ST-SD-SB-90 | 100% |  |
|  | 6 | **SEPTIC TANK** |  | 2026-02-25 | 2026-05-06 |  |  |  |
| PG-T-EN-ST-SD-SB-110 |  | Reinforcement Detail Drawings | 57.25d | 2026-02-25 A | 2026-05-06 A | PG-T-EN-ST-SD-SB-90 | 100% |  |
| PG-T-EN-ST-SD-SB-120 |  | Concrete Detail Drawings | 54.25d | 2026-03-01 A | 2026-05-06 A | PG-T-EN-ST-SD-SB-110, PG-T-EN-ST-SD-SB-110 SS | 100% |  |
|  | 2 | **ARCHITECTURAL DRAWINGS** |  | 2026-02-23 | 2026-08-04 |  |  |  |
|  | 1 | **TOILET BUILDING** |  | 2026-02-23 | 2026-04-14 |  |  |  |
| PG-T-EN-AR-SD-SB-10 |  | Ground Floor Plan | 40.25d | 2026-02-23 A | 2026-04-14 A | PG-T-EN-ST-SD-SB-70 | 100% |  |
| PG-T-EN-AR-SD-SB-20 |  | Roof Floor Plan | 35.25d | 2026-02-28 A | 2026-04-13 A | PG-T-EN-AR-SD-SB-10 | 100% |  |
| PG-T-EN-AR-SD-SB-50 |  | Floor Finish Layout | 35.62d | 2026-02-28 A | 2026-04-14 A | PG-T-EN-AR-SD-SB-10 | 100% |  |
| PG-T-EN-AR-SD-SB-60 |  | Reflected Ceiling Layout | 36.25d | 2026-02-28 A | 2026-04-14 A | PG-T-EN-AR-SD-SB-10 | 100% |  |
| PG-T-EN-AR-SD-SB-70 |  | Enlarged Toilets Layout | 36.25d | 2026-02-28 A | 2026-04-14 A | PG-T-EN-AR-SD-SB-10 | 100% |  |
| PG-T-EN-AR-SD-SB-100 |  | Cladding Details | 32.25d | 2026-03-03 A | 2026-04-13 A | PG-T-EN-AR-SD-SB-50 | 100% |  |
| PG-T-EN-AR-SD-SB-30 |  | Elevations | 33.25d | 2026-03-03 A | 2026-04-14 A | PG-T-EN-AR-SD-SB-20 | 100% |  |
| PG-T-EN-AR-SD-SB-80 |  | Doors & Windows Schedule | 33.25d | 2026-03-03 A | 2026-04-14 A | PG-T-EN-AR-SD-SB-50 | 100% |  |
| PG-T-EN-AR-SD-SB-90 |  | Aluminum Work | 33.25d | 2026-03-03 A | 2026-04-14 A | PG-T-EN-AR-SD-SB-50 | 100% |  |
| PG-T-EN-AR-SD-SB-40 |  | Sections | 31.25d | 2026-03-05 A | 2026-04-14 A | PG-T-EN-AR-SD-SB-30 | 100% |  |
|  | 2 | **AIR DOME** |  | 2026-07-19 | 2026-08-04 |  |  |  |
| PG-T-EN-AR-SD-SB-110 |  | Membrane & Insulation Details | 15d | 2026-07-19 | 2026-08-04 | PG-T-EN-ST-SD-SB-60 |  | 3d |
| PG-T-EN-AR-SD-SB-120 |  | Steel Cable System | 15d | 2026-07-19 | 2026-08-04 | PG-T-EN-AR-SD-SB-110 SS |  | 3d |
| PG-T-EN-AR-SD-SB-130 |  | Doors & Access Sytem Drawings | 15d | 2026-07-19 | 2026-08-04 | PG-T-EN-AR-SD-SB-120 SS |  | 3d |
|  | 3 | **LANDSCAPE DRAWINGS** |  | 2026-02-23 | 2026-04-14 |  |  |  |
| PG-T-EN-LS-SD-SB-10 |  | Hardscape Layout Plan | 40.25d | 2026-02-23 A | 2026-04-14 A | PG-T-EN-ST-SD-SB-20, PG-T-EN-ST-SD-SB-20 SS | 100% |  |
| PG-T-EN-LS-SD-SB-100 |  | Padel Playground Layout | 40.25d | 2026-02-23 A | 2026-04-14 A | PG-T-EN-ST-SD-SB-20, PG-T-EN-ST-SD-SB-20 SS | 100% |  |
| PG-T-EN-LS-SD-SB-110 |  | Basketball Playground Layout | 40.25d | 2026-02-23 A | 2026-04-14 A | PG-T-EN-ST-SD-SB-20, PG-T-EN-ST-SD-SB-20 SS | 100% |  |
| PG-T-EN-LS-SD-SB-120 |  | Playground Details | 40.25d | 2026-02-23 A | 2026-04-14 A | PG-T-EN-ST-SD-SB-20, PG-T-EN-ST-SD-SB-20 SS | 100% |  |
| PG-T-EN-LS-SD-SB-130 |  | Padel Fence Elevation & Details | 40.25d | 2026-02-23 A | 2026-04-14 A | PG-T-EN-ST-SD-SB-20, PG-T-EN-ST-SD-SB-20 SS | 100% |  |
| PG-T-EN-LS-SD-SB-20 |  | Interlock Tile Details | 40.25d | 2026-02-23 A | 2026-04-14 A | PG-T-EN-ST-SD-SB-20, PG-T-EN-ST-SD-SB-20 SS | 100% |  |
| PG-T-EN-LS-SD-SB-30 |  | Stamped Concrete Pattern & Section | 40.25d | 2026-02-23 A | 2026-04-14 A | PG-T-EN-ST-SD-SB-20, PG-T-EN-ST-SD-SB-20 SS | 100% |  |
| PG-T-EN-LS-SD-SB-40 |  | Tartan Flooring Layout & Details | 40.25d | 2026-02-23 A | 2026-04-14 A | PG-T-EN-ST-SD-SB-20, PG-T-EN-ST-SD-SB-20 SS | 100% |  |
| PG-T-EN-LS-SD-SB-50 |  | Bike Path Layout & Details | 40.25d | 2026-02-23 A | 2026-04-14 A | PG-T-EN-ST-SD-SB-20, PG-T-EN-ST-SD-SB-20 SS | 100% |  |
| PG-T-EN-LS-SD-SB-60 |  | Walking Path layout & Details | 40.25d | 2026-02-23 A | 2026-04-14 A | PG-T-EN-ST-SD-SB-20, PG-T-EN-ST-SD-SB-20 SS | 100% |  |
| PG-T-EN-LS-SD-SB-70 |  | Tree Planting Plan & Details | 40.25d | 2026-02-23 A | 2026-04-14 A | PG-T-EN-ST-SD-SB-20, PG-T-EN-ST-SD-SB-20 SS | 100% |  |
| PG-T-EN-LS-SD-SB-80 |  | Traffic Sign Location & Details | 40.25d | 2026-02-23 A | 2026-04-14 A | PG-T-EN-ST-SD-SB-20, PG-T-EN-ST-SD-SB-20 SS | 100% |  |
| PG-T-EN-LS-SD-SB-90 |  | Football Playground Layout | 40.25d | 2026-02-23 A | 2026-04-14 A | PG-T-EN-ST-SD-SB-20, PG-T-EN-ST-SD-SB-20 SS | 100% |  |
|  | 4 | **MECHANICAL DRAWINGS** |  | 2026-02-28 | 2026-07-12 |  |  |  |
|  | 1 | **WATER SUPPLY SYSTEM** |  | 2026-02-28 | 2026-04-09 |  |  |  |
| PG-T-EN-ME-SD-SB-20 |  | Pump Room Layout | 32.25d | 2026-02-28 A | 2026-04-09 A | PG-T-EN-LS-SD-SB-10 | 100% |  |
| PG-T-EN-ME-SD-SB-10 |  | Cold & Hot Water Piping Layout | 28.25d | 2026-03-04 A | 2026-04-09 A | PG-T-EN-ME-SD-SB-20 | 100% |  |
| PG-T-EN-ME-SD-SB-30 |  | Booster Pump Details | 28.25d | 2026-03-04 A | 2026-04-09 A | PG-T-EN-ME-SD-SB-20 | 100% |  |

| ID | WBS | Task | Duration | Start | Finish | Predecessors | Complete | Total float |
| --- | --- | --- | --- | --- | --- | --- | --- | --- |
| PG-T-EN-ME-SD-SB-40 |  | GRP Water Tank Details | 24.25d | 2026-03-09 A | 2026-04-09 A | PG-T-EN-ME-SD-SB-10, PG-T-EN-ME-SD-SB-20 | 100% |  |
|  | 2 | **SEWER AND DRAINAGE SYSTEM** |  | 2026-03-04 | 2026-04-09 |  |  |  |
| PG-T-EN-ME-SD-SB-50 |  | Drainage Layout | 28.25d | 2026-03-04 A | 2026-04-09 A | PG-T-EN-ME-SD-SB-20 | 100% |  |
| PG-T-EN-ME-SD-SB-60 |  | Floor Drains & Cleanouts Details | 24.25d | 2026-03-09 A | 2026-04-09 A | PG-T-EN-ME-SD-SB-50 | 100% |  |
| PG-T-EN-ME-SD-SB-70 |  | Inspection Chamber Details | 21.25d | 2026-03-12 A | 2026-04-09 A | PG-T-EN-ME-SD-SB-60 | 100% |  |
|  | 3 | **IRRIGATION SYSTEM** |  | 2026-03-09 | 2026-05-06 |  |  |  |
| PG-T-EN-ME-SD-SB-80 |  | HDPE Pipe Routing | 47.25d | 2026-03-09 A | 2026-05-06 A | PG-T-EN-ME-SD-SB-50 | 100% |  |
| PG-T-EN-ME-SD-SB-90 |  | Irrigation Network Layout | 44.25d | 2026-03-12 A | 2026-05-06 A | PG-T-EN-ME-SD-SB-80 | 100% |  |
|  | 4 | **AIR DOME** |  | 2026-06-25 | 2026-07-12 |  |  |  |
| PG-T-EN-ME-SD-SB-100 |  | Air Package and HVAC System Drawings | 15d | 2026-06-25 | 2026-07-12 | PG-T-EN-ME-SD-SB-20 |  | 7d |
|  | 5 | **ELECTRICAL DRAWINGS** |  | 2026-05-10 | 2026-07-29 |  |  |  |
|  | 1 | **POWER AND LIGHTING SYSTEM** |  | 2026-05-10 | 2026-05-20 |  |  |  |
| PG-T-EN-EL-SD-SB-10 |  | Main Distribution Board (MDB) Layout | 10.25d | 2026-05-10 A | 2026-05-20 A | PG-T-EN-ME-SD-SB-20 | 100% |  |
| PG-T-EN-EL-SD-SB-20 |  | Pump Room Power Panel | 10.25d | 2026-05-10 A | 2026-05-20 A | PG-T-EN-EL-SD-SB-10, PG-T-EN-EL-SD-SB-10 SS | 100% |  |
| PG-T-EN-EL-SD-SB-30 |  | Street Lighting Power Panel | 10.25d | 2026-05-10 A | 2026-05-20 A | PG-T-EN-EL-SD-SB-10, PG-T-EN-EL-SD-SB-10 SS | 100% |  |
| PG-T-EN-EL-SD-SB-40 |  | Site Lighting Pole Layout | 10.25d | 2026-05-10 A | 2026-05-20 A | PG-T-EN-EL-SD-SB-30, PG-T-EN-EL-SD-SB-30 SS | 100% |  |
|  | 2 | **ELV SYSTEM** |  | 2026-05-10 | 2026-05-20 |  |  |  |
| PG-T-EN-EL-SD-SB-50 |  | Telecom & Data Layout | 10.25d | 2026-05-10 A | 2026-05-20 A | PG-T-EN-ME-SD-SB-20 | 100% |  |
| PG-T-EN-EL-SD-SB-60 |  | CCTV Camera Layout | 10.25d | 2026-05-10 A | 2026-05-20 A | PG-T-EN-EL-SD-SB-50, PG-T-EN-EL-SD-SB-50 SS | 100% |  |
| PG-T-EN-EL-SD-SB-70 |  | Access Control Layout | 10.25d | 2026-05-10 A | 2026-05-20 A | PG-T-EN-EL-SD-SB-60, PG-T-EN-EL-SD-SB-60 SS | 100% |  |
| PG-T-EN-EL-SD-SB-80 |  | AV System Layout | 10.25d | 2026-05-10 A | 2026-05-20 A | PG-T-EN-EL-SD-SB-50, PG-T-EN-EL-SD-SB-50 SS | 100% |  |
|  | 3 | **FIRE ALARM SYSTEM** |  | 2026-05-10 | 2026-05-20 |  |  |  |
| PG-T-EN-EL-SD-SB-100 |  | Detector & Manual Call Point Details | 10.25d | 2026-05-10 A | 2026-05-20 A | PG-T-EN-EL-SD-SB-90, PG-T-EN-EL-SD-SB-90 SS | 100% |  |
| PG-T-EN-EL-SD-SB-110 |  | Control Panel Wiring Diagram | 10.25d | 2026-05-10 A | 2026-05-20 A | PG-T-EN-EL-SD-SB-100, PG-T-EN-EL-SD-SB-100 SS | 100% |  |
| PG-T-EN-EL-SD-SB-90 |  | Fire Alarm Layout | 10.25d | 2026-05-10 A | 2026-05-20 A | PG-T-EN-ME-SD-SB-20 | 100% |  |
|  | 4 | **AIR DOME** |  | 2026-06-25 | 2026-07-29 |  |  |  |
| PG-T-EN-EL-SD-SB-130 |  | Generators Details | 15d | 2026-06-25 | 2026-07-12 | PG-T-EN-ME-SD-SB-100 SS |  | 22d |
| PG-T-EN-EL-SD-SB-120 |  | Power & Lighting System Drawings | 15d | 2026-07-13 | 2026-07-29 | PG-T-EN-EL-SD-SB-90, PG-T-EN-ME-SD-SB-100 |  | 7d |
| PG-T-EN-EL-SD-SB-140 |  | Smart Dome System Drawings | 15d | 2026-07-13 | 2026-07-29 | PG-T-EN-ME-SD-SB-100 |  | 7d |
|  | 2 | **SHOP DRAWINGS APPROVALS** |  | 2026-02-19 | 2026-08-12 |  |  |  |
|  | 1 | **STRUCTURAL DRAWINGS** |  | 2026-02-19 | 2026-07-23 |  |  |  |
|  | 1 | **PROJECT FENCE** |  | 2026-02-19 | 2026-05-06 |  |  |  |
| PG-T-EN-ST-SD-AP-10 |  | Excavation Drawings | 61.25d | 2026-02-19 A | 2026-05-06 A | PG-T-EN-ST-SD-SB-10 | 100% |  |
| PG-T-EN-ST-SD-AP-20 |  | Foundation Drawings | 58.25d | 2026-02-24 A | 2026-05-06 A | PG-T-EN-ST-SD-SB-20, PG-T-EN-ST-SD-AP-10 | 100% |  |
|  | 2 | **PADEL PLAYGROUND FENCE** |  | 2026-02-19 | 2026-05-06 |  |  |  |
| PG-T-EN-ST-SD-AP-30 |  | Excavation Drawings | 61.25d | 2026-02-19 A | 2026-05-06 A | PG-T-EN-ST-SD-SB-30 | 100% |  |
| PG-T-EN-ST-SD-AP-40 |  | Foundation Drawings | 58.25d | 2026-02-24 A | 2026-05-06 A | PG-T-EN-ST-SD-SB-40, PG-T-EN-ST-SD-AP-30 | 100% |  |
|  | 3 | **AIR DOME** |  | 2026-07-07 | 2026-07-23 |  |  |  |
| PG-T-EN-ST-SD-AP-50 |  | Excavation Drawings | 5d | 2026-07-07 | 2026-07-12 | PG-T-EN-ST-SD-SB-50 |  | 5d |
| PG-T-EN-ST-SD-AP-60 |  | Foundation Drawings | 5d | 2026-07-19 | 2026-07-23 | PG-T-EN-ST-SD-SB-60, PG-T-EN-ST-SD-AP-50 |  | 0d |
|  | 4 | **TOILET BUILDING** |  | 2026-02-23 | 2026-04-16 |  |  |  |
| PG-T-EN-ST-SD-AP-70 |  | Excavation Drawings | 42.25d | 2026-02-23 A | 2026-04-16 A | PG-T-EN-ST-SD-SB-70 | 100% |  |
| PG-T-EN-ST-SD-AP-80 |  | Foundation Drawings | 39.25d | 2026-02-26 A | 2026-04-16 A | PG-T-EN-ST-SD-SB-80, PG-T-EN-ST-SD-AP-70 | 100% |  |
|  | 5 | **WATER STORAGE TANK** |  | 2026-02-25 | 2026-04-16 |  |  |  |
| PG-T-EN-ST-SD-AP-90 |  | Excavation Drawings | 40.25d | 2026-02-25 A | 2026-04-16 A | PG-T-EN-ST-SD-SB-90 | 100% |  |
| PG-T-EN-ST-SD-AP-100 |  | Foundation Drawings | 37.25d | 2026-03-01 A | 2026-04-16 A | PG-T-EN-ST-SD-SB-100, PG-T-EN-ST-SD-AP-90 | 100% |  |
|  | 6 | **SEPTIC TANK** |  | 2026-03-01 | 2026-05-06 |  |  |  |
| PG-T-EN-ST-SD-AP-110 |  | Reinforcement Detail Drawings | 54.25d | 2026-03-01 A | 2026-05-06 A | PG-T-EN-ST-SD-SB-110 | 100% |  |
| PG-T-EN-ST-SD-AP-120 |  | Concrete Detail Drawings | 51.25d | 2026-03-04 A | 2026-05-06 A | PG-T-EN-ST-SD-SB-120, PG-T-EN-ST-SD-AP-110 | 100% |  |
|  | 2 | **ARCHITECTURAL DRAWINGS** |  | 2026-02-28 | 2026-08-12 |  |  |  |
|  | 1 | **TOILET BUILDING** |  | 2026-02-28 | 2026-04-16 |  |  |  |
| PG-T-EN-AR-SD-AP-10 |  | Ground Floor Plan | 38.25d | 2026-02-28 A | 2026-04-16 A | PG-T-EN-AR-SD-SB-10 | 100% |  |
| PG-T-EN-AR-SD-AP-20 |  | Roof Floor Plan | 35.25d | 2026-03-03 A | 2026-04-16 A | PG-T-EN-AR-SD-SB-20 | 100% |  |
| PG-T-EN-AR-SD-AP-50 |  | Floor Finish Layout | 33.25d | 2026-03-05 A | 2026-04-16 A | PG-T-EN-AR-SD-SB-50, PG-T-EN-AR-SD-AP-10 | 100% |  |
| PG-T-EN-AR-SD-AP-60 |  | Reflected Ceiling Layout | 33.25d | 2026-03-05 A | 2026-04-16 A | PG-T-EN-AR-SD-SB-60, PG-T-EN-AR-SD-AP-10 | 100% |  |
| PG-T-EN-AR-SD-AP-70 |  | Enlarged Toilets Layout | 33.25d | 2026-03-05 A | 2026-04-16 A | PG-T-EN-AR-SD-SB-70, PG-T-EN-AR-SD-AP-10 | 100% |  |
| PG-T-EN-AR-SD-AP-30 |  | Elevations | 32.25d | 2026-03-07 A | 2026-04-16 A | PG-T-EN-AR-SD-SB-30, PG-T-EN-AR-SD-AP-20 | 100% |  |
| PG-T-EN-AR-SD-AP-80 |  | Doors & Windows Schedule | 32.25d | 2026-03-07 A | 2026-04-16 A | PG-T-EN-AR-SD-SB-80 | 100% |  |
| PG-T-EN-AR-SD-AP-100 |  | Cladding Details | 31.25d | 2026-03-08 A | 2026-04-16 A | PG-T-EN-AR-SD-SB-100 | 100% |  |
| PG-T-EN-AR-SD-AP-90 |  | Aluminum Work | 31.25d | 2026-03-08 A | 2026-04-16 A | PG-T-EN-AR-SD-SB-90 | 100% |  |
| PG-T-EN-AR-SD-AP-40 |  | Sections | 29.25d | 2026-03-10 A | 2026-04-16 A | PG-T-EN-AR-SD-SB-40, PG-T-EN-AR-SD-AP-30 | 100% |  |
|  | 2 | **AIR DOME** |  | 2026-08-05 | 2026-08-12 |  |  |  |
| PG-T-EN-AR-SD-AP-110 |  | Membrane & Insulation Details | 7d | 2026-08-05 | 2026-08-12 | PG-T-EN-AR-SD-SB-110 |  | 20d |
| PG-T-EN-AR-SD-AP-120 |  | Steel Cable System | 7d | 2026-08-05 | 2026-08-12 | PG-T-EN-AR-SD-SB-120 |  | 11d |
| PG-T-EN-AR-SD-AP-130 |  | Doors & Access Sytem Drawings | 7d | 2026-08-05 | 2026-08-12 | PG-T-EN-AR-SD-SB-130 |  | 3d |
|  | 3 | **LANDSCAPE DRAWINGS** |  | 2026-02-26 | 2026-04-16 |  |  |  |
| PG-T-EN-LS-SD-AP-130 |  | Padel Fence Elevation & Details | 39.25d | 2026-02-26 A | 2026-04-16 A | PG-T-EN-LS-SD-SB-130 | 100% |  |
| PG-T-EN-LS-SD-AP-50 |  | Bike Path Layout & Details | 39.25d | 2026-02-26 A | 2026-04-16 A | PG-T-EN-LS-SD-SB-50 | 100% |  |
| PG-T-EN-LS-SD-AP-60 |  | Walking Path layout & Details | 39.25d | 2026-02-26 A | 2026-04-16 A | PG-T-EN-LS-SD-SB-60 | 100% |  |
| PG-T-EN-LS-SD-AP-80 |  | Traffic Sign Location & Details | 39.25d | 2026-02-26 A | 2026-04-16 A | PG-T-EN-LS-SD-SB-80 | 100% |  |

| ID | WBS | Task | Duration | Start | Finish | Predecessors | Complete | Total float |
| --- | --- | --- | --- | --- | --- | --- | --- | --- |
| PG-T-EN-LS-SD-AP-10 |  | Hardscape Layout Plan | 38.25d | 2026-02-28 A | 2026-04-16 A | PG-T-EN-LS-SD-SB-10 | 100% |  |
| PG-T-EN-LS-SD-AP-100 |  | Padel Playground Layout | 38.25d | 2026-02-28 A | 2026-04-16 A | PG-T-EN-LS-SD-SB-100 | 100% |  |
| PG-T-EN-LS-SD-AP-110 |  | Basketball Playground Layout | 38.25d | 2026-02-28 A | 2026-04-16 A | PG-T-EN-LS-SD-SB-110 | 100% |  |
| PG-T-EN-LS-SD-AP-120 |  | Playground Details | 38.25d | 2026-02-28 A | 2026-04-16 A | PG-T-EN-LS-SD-SB-120 | 100% |  |
| PG-T-EN-LS-SD-AP-40 |  | Tartan Flooring Layout & Details | 38.25d | 2026-02-28 A | 2026-04-16 A | PG-T-EN-LS-SD-SB-40 | 100% |  |
| PG-T-EN-LS-SD-AP-70 |  | Tree Planting Plan & Details | 38.25d | 2026-02-28 A | 2026-04-16 A | PG-T-EN-LS-SD-SB-70 | 100% |  |
| PG-T-EN-LS-SD-AP-90 |  | Football Playground Layout | 38.25d | 2026-02-28 A | 2026-04-16 A | PG-T-EN-LS-SD-SB-90 | 100% |  |
| PG-T-EN-LS-SD-AP-20 |  | Interlock Tile Details | 30.25d | 2026-03-09 A | 2026-04-16 A | PG-T-EN-LS-SD-SB-20, PG-T-EN-LS-SD-AP-10 | 100% |  |
| PG-T-EN-LS-SD-AP-30 |  | Stamped Concrete Pattern & Section | 24.25d | 2026-03-16 A | 2026-04-16 A | PG-T-EN-LS-SD-SB-30, PG-T-EN-LS-SD-AP-20 | 100% |  |
|  | 4 | **MECHANICAL DRAWINGS** |  | 2026-03-09 | 2026-07-23 |  |  |  |
|  | 1 | **WATER SUPPLY SYSTEM** |  | 2026-03-09 | 2026-04-13 |  |  |  |
| PG-T-EN-ME-SD-AP-10 |  | Cold & Hot Water Piping Layout | 27.25d | 2026-03-09 A | 2026-04-13 A | PG-T-EN-ME-SD-SB-10 | 100% |  |
| PG-T-EN-ME-SD-AP-30 |  | Booster Pump Details | 26.25d | 2026-03-10 A | 2026-04-13 A | PG-T-EN-ME-SD-SB-30 | 100% |  |
| PG-T-EN-ME-SD-AP-40 |  | GRP Water Tank Details | 23.25d | 2026-03-14 A | 2026-04-13 A | PG-T-EN-ME-SD-SB-40 | 100% |  |
| PG-T-EN-ME-SD-AP-20 |  | Pump Room Layout | 21.25d | 2026-03-16 A | 2026-04-13 A | PG-T-EN-ME-SD-SB-20, PG-T-EN-ME-SD-AP-10 | 100% |  |
|  | 2 | **SEWER AND DRAINAGE SYSTEM** |  | 2026-03-09 | 2026-04-13 |  |  |  |
| PG-T-EN-ME-SD-AP-50 |  | Drainage Layout | 27.25d | 2026-03-09 A | 2026-04-13 A | PG-T-EN-ME-SD-SB-50 | 100% |  |
| PG-T-EN-ME-SD-AP-60 |  | Floor Drains & Cleanouts Details | 21.25d | 2026-03-16 A | 2026-04-13 A | PG-T-EN-ME-SD-SB-60, PG-T-EN-ME-SD-AP-50 | 100% |  |
| PG-T-EN-ME-SD-AP-70 |  | Inspection Chamber Details | 21.25d | 2026-03-16 A | 2026-04-13 A | PG-T-EN-ME-SD-SB-70 | 100% |  |
|  | 3 | **IRRIGATION SYSTEM** |  | 2026-03-12 | 2026-05-06 |  |  |  |
| PG-T-EN-ME-SD-AP-80 |  | HDPE Pipe Routing | 44.25d | 2026-03-12 A | 2026-05-06 A | PG-T-EN-ME-SD-SB-80 | 100% |  |
| PG-T-EN-ME-SD-AP-90 |  | Irrigation Network Layout | 40.25d | 2026-03-17 A | 2026-05-06 A | PG-T-EN-ME-SD-SB-90 | 100% |  |
|  | 4 | **AIR DOME** |  | 2026-07-13 | 2026-07-23 |  |  |  |
| PG-T-EN-ME-SD-AP-100 |  | Air Package and HVAC System Drawings | 10d | 2026-07-13 | 2026-07-23 | PG-T-EN-ME-SD-SB-100 |  | 20d |
|  | 5 | **ELECTRICAL DRAWINGS** |  | 2026-05-11 | 2026-08-08 |  |  |  |
|  | 1 | **POWER AND LIGHTING SYSTEM** |  | 2026-05-11 | 2026-06-16 |  |  |  |
| PG-T-EN-EL-SD-AP-10 |  | Main Distribution Board (MDB) Layout | 28.25d | 2026-05-11 A | 2026-06-16 A | PG-T-EN-EL-SD-SB-10, PG-T-EN-EL-SD-SB-10 SS | 100% |  |
| PG-T-EN-EL-SD-AP-20 |  | Pump Room Power Panel | 28.25d | 2026-05-11 A | 2026-06-16 A | PG-T-EN-EL-SD-SB-20, PG-T-EN-EL-SD-SB-20 SS | 100% |  |
| PG-T-EN-EL-SD-AP-30 |  | Street Lighting Power Panel | 28.25d | 2026-05-11 A | 2026-06-16 A | PG-T-EN-EL-SD-SB-30, PG-T-EN-EL-SD-SB-30 SS | 100% |  |
| PG-T-EN-EL-SD-AP-40 |  | Site Lighting Pole Layout | 28.25d | 2026-05-11 A | 2026-06-16 A | PG-T-EN-EL-SD-SB-40, PG-T-EN-EL-SD-SB-40 SS | 100% |  |
|  | 2 | **ELV SYSTEM** |  | 2026-05-11 | 2026-06-16 |  |  |  |
| PG-T-EN-EL-SD-AP-50 |  | Telecom & Data Layout | 28.25d | 2026-05-11 A | 2026-06-16 A | PG-T-EN-EL-SD-SB-50, PG-T-EN-EL-SD-SB-50 SS | 100% |  |
| PG-T-EN-EL-SD-AP-60 |  | CCTV Camera Layout | 28.25d | 2026-05-11 A | 2026-06-16 A | PG-T-EN-EL-SD-SB-60, PG-T-EN-EL-SD-SB-60 SS | 100% |  |
| PG-T-EN-EL-SD-AP-70 |  | Access Control Layout | 28.25d | 2026-05-11 A | 2026-06-16 A | PG-T-EN-EL-SD-SB-70, PG-T-EN-EL-SD-SB-70 SS | 100% |  |
| PG-T-EN-EL-SD-AP-80 |  | AV System Layout | 28.25d | 2026-05-11 A | 2026-06-16 A | PG-T-EN-EL-SD-SB-80, PG-T-EN-EL-SD-SB-80 SS | 100% |  |
|  | 3 | **FIRE ALARM SYSTEM** |  | 2026-05-11 | 2026-06-16 |  |  |  |
| PG-T-EN-EL-SD-AP-100 |  | Detector & Manual Call Point Details | 28.25d | 2026-05-11 A | 2026-06-16 A | PG-T-EN-EL-SD-SB-100, PG-T-EN-EL-SD-SB-100 SS | 100% |  |
| PG-T-EN-EL-SD-AP-110 |  | Control Panel Wiring Diagram | 28.25d | 2026-05-11 A | 2026-06-16 A | PG-T-EN-EL-SD-SB-110, PG-T-EN-EL-SD-SB-110 SS | 100% |  |
| PG-T-EN-EL-SD-AP-90 |  | Fire Alarm Layout | 28.25d | 2026-05-11 A | 2026-06-16 A | PG-T-EN-EL-SD-SB-90, PG-T-EN-EL-SD-SB-90 SS | 100% |  |
|  | 4 | **AIR DOME** |  | 2026-07-13 | 2026-08-08 |  |  |  |
| PG-T-EN-EL-SD-AP-130 |  | Generators Details | 8d | 2026-07-13 | 2026-07-21 | PG-T-EN-EL-SD-SB-130 |  | 22d |
| PG-T-EN-EL-SD-AP-120 |  | Power & Lighting System Drawings | 8d | 2026-07-30 | 2026-08-08 | PG-T-EN-EL-SD-SB-120 |  | 7d |
| PG-T-EN-EL-SD-AP-140 |  | Smart Dome System Drawings | 8d | 2026-07-30 | 2026-08-08 | PG-T-EN-EL-SD-SB-140 |  | 7d |
|  | 3 | **MATERIAL SUBMITTALS** |  | 2026-02-17 | 2026-07-11 |  |  |  |
|  | 1 | **LONG LEAD ITEMS** |  | 2026-02-17 | 2026-07-11 |  |  |  |
|  | 2 | **EXTERNAL / LANDSCAPE WORK** |  | 2026-02-25 | 2026-05-06 |  |  |  |
| PG-T-PR-LL-LS-MS-20 |  | Benches, Seats (Rectangular & Circular) | 57.25d | 2026-02-25 A | 2026-05-06 A | PG-T-PR-SL-LS-MS-30 | 100% |  |
| PG-T-PR-LL-LS-MS-10 |  | Bike and Walk Path Materials | 50.25d | 2026-03-05 A | 2026-05-06 A | PG-T-PR-SL-LS-MS-10, PG-T-EN-LS-SD-AP-50, PG-T-EN-LS-SD-AP-60 | 100% |  |
| PG-T-PR-LL-LS-MS-30 |  | Fence, gates and accessories | 50.25d | 2026-03-05 A | 2026-05-06 A | PG-T-PR-SL-LS-MS-30, PG-T-EN-LS-SD-AP-130 | 100% |  |
|  | 3 | **SPORTS & RECREATIONAL FACILITIES WORK** |  | 2026-02-17 | 2026-07-05 |  |  |  |
| PG-T-PR-LL-SP-MS-50 |  | Air Dome Materials(Completed) | 101.25d | 2026-02-17 A | 2026-06-24 A | PG-GN-MS-10 SS | 100% |  |
| PG-T-PR-LL-SP-MS-10 |  | Football Playground Materials (Flooring, goal post, nets, paints, etc) | 49.25d | 2026-03-07 A | 2026-05-06 A | PG-T-EN-LS-SD-AP-90, PG-T-EN-LS-SD-AP-120 | 100% |  |
| PG-T-PR-LL-SP-MS-20 |  | Basketball Playground Materials (Flooring, basketball poll, nets, paints, etc) | 49.25d | 2026-03-07 A | 2026-05-06 A | PG-T-EN-LS-SD-AP-120, PG-T-EN-LS-SD-AP-110 | 100% |  |
| PG-T-PR-LL-SP-MS-30 |  | Padel Playgound Materials (Flooring, fence, tempered glass, etc) | 49.25d | 2026-03-07 A | 2026-05-06 A | PG-T-EN-LS-SD-AP-120, PG-T-EN-LS-SD-AP-100 | 100% |  |
| PG-T-PR-LL-SP-MS-40 |  | Tartan Floor | 49.25d | 2026-03-07 A | 2026-05-06 A | PG-T-EN-LS-SD-AP-40 | 100% |  |
| PG-T-PR-LL-SP-MS-50_R |  | Air Dome Materials(Remaining) | 9d | 2026-06-25 | 2026-07-05 | PG-GN-MS-10 SS, PG-T-PR-LL-SP-MS-50 |  | 0d |
|  | 4 | **CONCRETE WORK** |  | 2026-03-07 | 2026-04-27 |  |  |  |
| PG-T-PR-LL-CO-MS-10 |  | Autoclaved Aerated Panel | 41.25d | 2026-03-07 A | 2026-04-27 A | PG-T-EN-AR-SD-AP-10, PG-T-EN-AR-SD-AP-20 | 100% |  |
|  | 5 | **METAL WORK** |  | 2026-03-11 | 2026-05-06 |  |  |  |
| PG-T-PR-LL-MT-MS-10 |  | Metal Doors | 45.25d | 2026-03-11 A | 2026-05-06 A | PG-T-EN-AR-SD-AP-80 | 100% |  |
| PG-T-PR-LL-MT-MS-20 |  | Curtain Wall | 45.25d | 2026-03-11 A | 2026-05-06 A | PG-T-PR-LL-CO-MS-10 | 100% |  |
|  | 7 | **PLUMBING WORK** |  | 2026-03-10 | 2026-05-06 |  |  |  |
| PG-T-PR-LL-PB-MS-10 |  | Booster Pump | 46.25d | 2026-03-10 A | 2026-05-06 A | PG-T-EN-ME-SD-AP-30 SS | 100% |  |
| PG-T-PR-LL-PB-MS-20 |  | GRP Sectional Panel Water Tanks (4x3x3m) | 42.25d | 2026-03-15 A | 2026-05-06 A | PG-T-PR-LL-PB-MS-10 | 100% |  |
|  | 8 | **IRRIGATION WORK** |  | 2026-03-05 | 2026-05-06 |  |  |  |
| PG-T-PR-LL-IR-MS-10 |  | HDPE Pipes | 50.25d | 2026-03-05 A | 2026-05-06 A | PG-T-PR-LL-IR-MS-20 SS | 100% |  |
| PG-T-PR-LL-IR-MS-20 |  | Irrigation Control System | 50.25d | 2026-03-05 A | 2026-05-06 A | PG-T-PR-LL-EL-MS-50 SS | 100% |  |
|  | 9 | **ELECTRICAL WORK** |  | 2026-05-11 | 2026-07-11 |  |  |  |
| PG-T-PR-LL-EL-MS-10 |  | Main Distribution Board(Completed) | 35.25d | 2026-05-11 A | 2026-06-24 A | PG-T-EN-EL-SD-AP-10 SS | 100% |  |
| PG-T-PR-LL-EL-MS-20 |  | Power Panels (Pump, Street Light)(Completed) | 35.25d | 2026-05-11 A | 2026-06-24 A | PG-T-PR-LL-EL-MS-10 SS | 100% |  |

| ID | WBS | Task | Duration | Start | Finish | Predecessors | Complete | Total float |
| --- | --- | --- | --- | --- | --- | --- | --- | --- |
| PG-T-PR-LL-EL-MS-30 |  | Site Lighting Poles(Completed) | 35.25d | 2026-05-11 A | 2026-06-24 A | PG-T-EN-EL-SD-AP-30 SS | 100% |  |
| PG-T-PR-LL-EL-MS-40 |  | Lighting Fixtures(Completed) | 35.25d | 2026-05-11 A | 2026-06-24 A | PG-T-PR-LL-EL-MS-10 SS | 100% |  |
| PG-T-PR-LL-EL-MS-50 |  | Grounding System Materials (Earth pit rod, LPS, etc)(Completed) | 35.25d | 2026-05-11 A | 2026-06-24 A | PG-T-PR-LL-SP-MS-50 SS | 100% |  |
| PG-T-PR-LL-EL-MS-60 |  | Telecommunications & Data System Materials (Telephone outlet, CCTV, etc)(Completed) | 35.25d | 2026-05-11 A | 2026-06-24 A | PG-T-EN-EL-SD-AP-50, PG-T-EN-EL-SD-AP-60 SS, PG-T-EN-EL-SD-AP-50 SS | 100% |  |
| PG-T-PR-LL-EL-MS-70 |  | Security and Access Control System Materials(Completed) | 35.25d | 2026-05-11 A | 2026-06-24 A | PG-T-EN-EL-SD-AP-80 SS | 100% |  |
| PG-T-PR-LL-EL-MS-80 |  | Fire Alarm System Materials(Completed) | 35.25d | 2026-05-11 A | 2026-06-24 A | PG-T-EN-EL-SD-AP-90, PG-T-EN-EL-SD-AP-110 SS, PG-T-EN-EL-SD-AP-90 SS | 100% |  |
| PG-T-PR-LL-EL-MS-10_R |  | Main Distribution Board(Remaining) | 10d | 2026-06-25 | 2026-07-06 | PG-T-EN-EL-SD-AP-10 SS, PG-T-PR-LL-EL-MS-10 |  | 2d |
| PG-T-PR-LL-EL-MS-20_R |  | Power Panels (Pump, Street Light)(Remaining) | 10d | 2026-06-25 | 2026-07-06 | PG-T-PR-LL-EL-MS-10_R SS, PG-T-PR-LL-EL-MS-20 |  | 7d |
| PG-T-PR-LL-EL-MS-30_R |  | Site Lighting Poles(Remaining) | 10d | 2026-06-25 | 2026-07-06 | PG-T-EN-EL-SD-AP-30 SS, PG-T-PR-LL-EL-MS-30 |  | 14d |
| PG-T-PR-LL-EL-MS-40_R |  | Lighting Fixtures(Remaining) | 10d | 2026-06-25 | 2026-07-06 | PG-T-PR-LL-EL-MS-10_R SS, PG-T-PR-LL-EL-MS-40 |  | 10d |
| PG-T-PR-LL-EL-MS-60_R |  | Telecommunications & Data System Materials (Telephone outlet, CCTV, etc)(Remaining) | 10d | 2026-06-25 | 2026-07-06 | PG-T-EN-EL-SD-AP-50, PG-T-EN-EL-SD-AP-60 SS, PG-T-EN-EL-SD-AP-50 SS, PG-T-PR-LL-EL-MS-60 |  | 30d |
| PG-T-PR-LL-EL-MS-70_R |  | Security and Access Control System Materials(Remaining) | 10d | 2026-06-25 | 2026-07-06 | PG-T-EN-EL-SD-AP-80 SS, PG-T-PR-LL-EL-MS-70 |  | 31d |
| PG-T-PR-LL-EL-MS-80_R |  | Fire Alarm System Materials(Remaining) | 10d | 2026-06-25 | 2026-07-06 | PG-T-EN-EL-SD-AP-90, PG-T-EN-EL-SD-AP-110 SS, PG-T-EN-EL-SD-AP-90 SS, PG-T-PR-LL-EL-MS-80 |  | 31d |
| PG-T-PR-LL-EL-MS-50_R |  | Grounding System Materials (Earth pit rod, LPS, etc)(Remaining) | 5d | 2026-07-06 | 2026-07-11 | PG-T-PR-LL-SP-MS-50_R, PG-T-PR-LL-EL-MS-50 |  | 17d |
|  | 2 | **SHORT LEAD ITEMS** |  | 2026-02-17 | 2026-03-26 |  |  |  |
|  | 2 | **EXTERNAL / LANDSCAPE WORK** |  | 2026-02-17 | 2026-03-16 |  |  |  |
| PG-T-PR-SL-LS-MS-10 |  | Backfilling Materials | 23.25d | 2026-02-17 A | 2026-03-16 A | PG-GN-MS-10 SS | 100% |  |
| PG-T-PR-SL-LS-MS-30 |  | Compacted Natural Ground Soil | 20.25d | 2026-02-21 A | 2026-03-16 A | PG-T-PR-SL-LS-MS-10 | 100% |  |
| PG-T-PR-SL-LS-MS-60 |  | Traffic Signages | 9.25d | 2026-03-07 A | 2026-03-16 A | PG-T-EN-LS-SD-AP-80 | 100% |  |
| PG-T-PR-SL-LS-MS-40 |  | Curb Stone | 7.25d | 2026-03-09 A | 2026-03-16 A | PG-T-PR-SL-LS-MS-10, PG-T-EN-LS-SD-AP-10 | 100% |  |
| PG-T-PR-SL-LS-MS-20 |  | Interlock tiles | 4.25d | 2026-03-12 A | 2026-03-16 A | PG-T-PR-SL-LS-MS-10, PG-T-EN-LS-SD-AP-20 | 100% |  |
| PG-T-PR-SL-LS-MS-50 |  | Thermoplastic pavement road marking | 4.25d | 2026-03-12 A | 2026-03-16 A | PG-T-PR-SL-LS-MS-40 | 100% |  |
| PG-T-PR-SL-LS-MS-70 |  | Trees | 4.25d | 2026-03-12 A | 2026-03-16 A | PG-T-PR-SL-LS-MS-60, PG-T-EN-LS-SD-AP-70 | 100% |  |
| PG-T-PR-SL-LS-MS-80 |  | Lawn | 4.25d | 2026-03-12 A | 2026-03-16 A | PG-T-PR-SL-LS-MS-60, PG-T-EN-LS-SD-AP-70 | 100% |  |
|  | 3 | **CONCRETE WORK** |  | 2026-02-17 | 2026-03-26 |  |  |  |
| PG-T-PR-SL-CO-MS-10 |  | Steel Rebar | 17.25d | 2026-02-17 A | 2026-03-09 A | PG-GN-MS-10 SS | 100% |  |
| PG-T-PR-SL-CO-MS-20 |  | Concrete | 13.25d | 2026-02-23 A | 2026-03-09 A | PG-T-PR-SL-CO-MS-10 | 100% |  |
| PG-T-PR-SL-CO-MS-40 |  | CMU Block | 19.25d | 2026-03-01 A | 2026-03-26 A | PG-T-PR-SL-CO-MS-20 | 100% |  |
| PG-T-PR-SL-CO-MS-50 |  | Concrete Repair & Protection Materials | 19.25d | 2026-03-01 A | 2026-03-26 A | PG-T-PR-SL-CO-MS-20 | 100% |  |
| PG-T-PR-SL-CO-MS-30 |  | Screed | 10.25d | 2026-03-11 A | 2026-03-26 A | PG-T-PR-SL-CO-MS-20, PG-T-EN-AR-SD-AP-50 | 100% |  |
|  | 4 | **ARCHITECTURAL & FINISHES WORK** |  | 2026-03-10 | 2026-03-14 |  |  |  |
| PG-T-PR-SL-AR-MS-10 |  | Ceramic tiles | 4.25d | 2026-03-10 A | 2026-03-14 A | PG-T-EN-AR-SD-AP-50 | 100% |  |
| PG-T-PR-SL-AR-MS-100 |  | Specialities Materials (Toilet accessories, lockers, logo, etc) | 4.25d | 2026-03-10 A | 2026-03-14 A | PG-T-EN-AR-SD-AP-70 | 100% |  |
| PG-T-PR-SL-AR-MS-110 |  | Waterproofing System Materials | 4.25d | 2026-03-10 A | 2026-03-14 A | PG-T-EN-AR-SD-AP-50 | 100% |  |
| PG-T-PR-SL-AR-MS-20 |  | Anti-slip Granite tiles | 4.25d | 2026-03-10 A | 2026-03-14 A | PG-T-PR-SL-AR-MS-10, PG-T-EN-AR-SD-AP-50 | 100% |  |
| PG-T-PR-SL-AR-MS-30 |  | Epoxy Paint | 4.25d | 2026-03-10 A | 2026-03-14 A | PG-T-EN-AR-SD-AP-50 | 100% |  |
| PG-T-PR-SL-AR-MS-40 |  | Cement Plaster | 4.25d | 2026-03-10 A | 2026-03-14 A | PG-T-EN-AR-SD-AP-50 | 100% |  |
| PG-T-PR-SL-AR-MS-50 |  | Acrylic Paint | 4.25d | 2026-03-10 A | 2026-03-14 A | PG-T-PR-SL-AR-MS-40, PG-T-EN-AR-SD-AP-10, PG-T-EN-AR-SD-AP-30 | 100% |  |
| PG-T-PR-SL-AR-MS-60 |  | Stone Cladding | 4.25d | 2026-03-10 A | 2026-03-14 A | PG-T-EN-AR-SD-AP-100 | 100% |  |
| PG-T-PR-SL-AR-MS-70 |  | Phenolic Partition | 4.25d | 2026-03-10 A | 2026-03-14 A | PG-T-EN-AR-SD-AP-10 | 100% |  |
| PG-T-PR-SL-AR-MS-80 |  | Glass Partition | 4.25d | 2026-03-10 A | 2026-03-14 A | PG-T-EN-AR-SD-AP-10 | 100% |  |
| PG-T-PR-SL-AR-MS-90 |  | Gypsum Boards | 4.25d | 2026-03-10 A | 2026-03-14 A | PG-T-EN-AR-SD-AP-60 | 100% |  |
|  | 5 | **METAL WORK** |  | 2026-03-07 | 2026-03-16 |  |  |  |
| PG-T-PR-SL-MT-MS-20 |  | Galvanized Steel Roof Scupper | 9.25d | 2026-03-07 A | 2026-03-16 A | PG-T-EN-AR-SD-AP-20 | 100% |  |
| PG-T-PR-SL-MT-MS-30 |  | Galvanized Steel Cover with frame | 9.25d | 2026-03-07 A | 2026-03-16 A | PG-T-EN-AR-SD-AP-20 | 100% |  |
| PG-T-PR-SL-MT-MS-10 |  | Galvanized Steel Ladder | 4.25d | 2026-03-12 A | 2026-03-16 A | PG-T-EN-AR-SD-AP-20, PG-T-EN-AR-SD-AP-30 | 100% |  |
|  | 6 | **HVAC WORK** |  | 2026-02-23 | 2026-03-16 |  |  |  |
| PG-T-PR-SL-AC-MS-10 |  | Split Air Conditioning Unit | 19.25d | 2026-02-23 A | 2026-03-16 A | PG-T-PR-SL-CO-MS-10 | 100% |  |
| PG-T-PR-SL-AC-MS-20 |  | Air Duct | 15.25d | 2026-02-28 A | 2026-03-16 A | PG-T-PR-SL-AC-MS-10 | 100% |  |
| PG-T-PR-SL-AC-MS-30 |  | Diffusers and Grills | 11.25d | 2026-03-04 A | 2026-03-16 A | PG-T-PR-SL-AC-MS-20 | 100% |  |
| PG-T-PR-SL-AC-MS-40 |  | Exhaust fans | 11.25d | 2026-03-04 A | 2026-03-16 A | PG-T-PR-SL-AC-MS-20 | 100% |  |
|  | 7 | **PLUMBING WORK** |  | 2026-03-12 | 2026-03-16 |  |  |  |
| PG-T-PR-SL-PB-MS-10 |  | PPR Pipes & Valves | 4.25d | 2026-03-12 A | 2026-03-16 A | PG-T-EN-ME-SD-AP-10 | 100% |  |
| PG-T-PR-SL-PB-MS-20 |  | UPCV Pipes | 4.25d | 2026-03-12 A | 2026-03-16 A | PG-T-EN-ME-SD-AP-10, PG-T-EN-ME-SD-AP-50 | 100% |  |
| PG-T-PR-SL-PB-MS-30 |  | Sanitary Drainage Fixtures | 4.25d | 2026-03-12 A | 2026-03-16 A | PG-T-PR-SL-PB-MS-20, PG-T-EN-ME-SD-AP-60, PG-T-EN-ME-SD-AP-70 | 100% |  |
|  | 8 | **IRRIGATION WORK** |  | 2026-03-12 | 2026-03-16 |  |  |  |
| PG-T-PR-SL-IR-MS-10 |  | Gate Valve including valve box | 4.25d | 2026-03-12 A | 2026-03-16 A | PG-T-EN-ME-SD-AP-80, PG-T-EN-ME-SD-AP-90, PG-T-EN-ME-SD-SB-50 | 100% |  |
| PG-T-PR-SL-IR-MS-20 |  | Bulbblers and Spreyers | 4.25d | 2026-03-12 A | 2026-03-16 A | PG-T-EN-ME-SD-AP-90, PG-T-EN-ME-SD-SB-50 | 100% |  |
|  | 9 | **ELECTRICAL WORK** |  | 2026-03-12 | 2026-03-16 |  |  |  |
| PG-T-PR-SL-EL-MS-10 |  | Wiring Devices Materials | 4.25d | 2026-03-12 A | 2026-03-16 A | PG-T-PR-SL-PB-MS-30 | 100% |  |
|  | 10 | **FIRE FIGHTING WORK** |  | 2026-03-12 | 2026-03-16 |  |  |  |
| PG-T-PR-SL-FF-MS-10 |  | Fire Extinguishers | 4.25d | 2026-03-12 A | 2026-03-16 A | PG-T-PR-SL-PB-MS-30 | 100% |  |
|  | 4 | **MATERIAL APPROVALS** |  | 2026-02-21 | 2026-07-13 |  |  |  |
|  | 1 | **LONG LEAD ITEMS** |  | 2026-02-25 | 2026-07-13 |  |  |  |
|  | 1 | **EXTERNAL / LANDSCAPE WORK** |  | 2026-02-25 | 2026-05-05 |  |  |  |
| PG-T-PR-LL-LS-MA-20 |  | Benches, Seats (Rectangular & Circular) | 56d | 2026-02-25 A | 2026-05-05 A | PG-T-PR-LL-LS-MS-20 SS | 100% |  |
| PG-T-PR-LL-LS-MA-30 |  | Fence, gates and accessories | 43d | 2026-03-12 A | 2026-05-05 A | PG-T-PR-LL-LS-MS-30 | 100% |  |
| PG-T-PR-LL-LS-MA-10 |  | Bike and Walk Path Materials | 41d | 2026-03-15 A | 2026-05-05 A | PG-T-PR-LL-LS-MS-10 | 100% |  |
|  | 3 | **SPORTS & RECREATIONAL FACILITIES WORK** |  | 2026-03-02 | 2026-07-11 |  |  |  |
| PG-T-PR-LL-SP-MA-50 |  | Air Dome Materials(Completed) | 91d | 2026-03-02 A | 2026-06-24 A | PG-T-PR-LL-SP-MS-50 SS | 100% |  |

| ID | WBS | Task | Duration | Start | Finish | Predecessors | Complete | Total float |
| --- | --- | --- | --- | --- | --- | --- | --- | --- |
| PG-T-PR-LL-SP-MA-40 |  | Tartan Floor | 43d | 2026-03-12 A | 2026-05-05 A | PG-T-PR-LL-SP-MS-40 | 100% |  |
| PG-T-PR-LL-SP-MA-10 |  | Football Playground Materials (Flooring, goal post, nets, paints, etc) | 42d | 2026-03-14 A | 2026-05-05 A | PG-T-PR-LL-SP-MS-10 | 100% |  |
| PG-T-PR-LL-SP-MA-20 |  | Basketball Playground Materials (Flooring, basketball poll, nets, paints, etc) | 42d | 2026-03-14 A | 2026-05-05 A | PG-T-PR-LL-SP-MS-20 | 100% |  |
| PG-T-PR-LL-SP-MA-30 |  | Padel Playgound Materials (Flooring, fence, tempered glass, etc) | 42d | 2026-03-14 A | 2026-05-05 A | PG-T-PR-LL-SP-MS-30 | 100% |  |
| PG-T-PR-LL-SP-MA-50_R |  | Air Dome Materials(Remaining) | 5d | 2026-07-06 | 2026-07-11 | PG-T-PR-LL-SP-MS-50_R, PG-T-PR-LL-SP-MA-50 |  | 0d |
|  | 4 | **CONCRETE WORK** |  | 2026-03-11 | 2026-04-28 |  |  |  |
| PG-T-PR-LL-CO-MA-10 |  | Autoclaved Aerated Panel | 38d | 2026-03-11 A | 2026-04-28 A | PG-T-PR-LL-CO-MS-10 | 100% |  |
|  | 5 | **METAL WORK** |  | 2026-03-15 | 2026-05-06 |  |  |  |
| PG-T-PR-LL-MT-MA-10 |  | Metal Doors | 42d | 2026-03-15 A | 2026-05-06 A | PG-T-PR-LL-MT-MS-10 | 100% |  |
| PG-T-PR-LL-MT-MA-20 |  | Curtain Wall | 42d | 2026-03-15 A | 2026-05-06 A | PG-T-PR-LL-MT-MS-20 | 100% |  |
|  | 7 | **PLUMBING WORK** |  | 2026-03-15 | 2026-05-06 |  |  |  |
| PG-T-PR-LL-PB-MA-10 |  | Booster Pump | 42d | 2026-03-15 A | 2026-05-06 A | PG-T-PR-LL-PB-MS-10 | 100% |  |
| PG-T-PR-LL-PB-MA-20 |  | GRP Sectional Panel Water Tanks (4x3x3m) | 38d | 2026-03-24 A | 2026-05-06 A | PG-T-PR-LL-PB-MS-20 | 100% |  |
|  | 8 | **IRRIGATION WORK** |  | 2026-03-11 | 2026-05-06 |  |  |  |
| PG-T-PR-LL-IR-MA-10 |  | HDPE Pipes | 45d | 2026-03-11 A | 2026-05-06 A | PG-T-PR-LL-IR-MS-10 | 100% |  |
| PG-T-PR-LL-IR-MA-20 |  | Irrigation Control System | 45d | 2026-03-11 A | 2026-05-06 A | PG-T-PR-LL-IR-MS-20 | 100% |  |
|  | 9 | **ELECTRICAL WORK** |  | 2026-05-12 | 2026-07-13 |  |  |  |
| PG-T-PR-LL-EL-MA-10 |  | Main Distribution Board(Completed) | 34d | 2026-05-12 A | 2026-06-24 A | PG-T-PR-LL-EL-MS-10 SS | 100% |  |
| PG-T-PR-LL-EL-MA-20 |  | Power Panels (Pump, Street Light)(Completed) | 34d | 2026-05-12 A | 2026-06-24 A | PG-T-PR-LL-EL-MS-20 SS | 100% |  |
| PG-T-PR-LL-EL-MA-30 |  | Site Lighting Poles(Completed) | 34d | 2026-05-12 A | 2026-06-24 A | PG-T-PR-LL-EL-MS-30 SS | 100% |  |
| PG-T-PR-LL-EL-MA-40 |  | Lighting Fixtures(Completed) | 34d | 2026-05-12 A | 2026-06-24 A | PG-T-PR-LL-EL-MS-40 SS | 100% |  |
| PG-T-PR-LL-EL-MA-50 |  | Grounding System Materials (Earth pit rod, LPS, etc)(Completed) | 34d | 2026-05-12 A | 2026-06-24 A | PG-T-PR-LL-EL-MS-50 SS | 100% |  |
| PG-T-PR-LL-EL-MA-60 |  | Telecommunications & Data System Materials (Telephone outlet, CCTV, etc)(Completed) | 34d | 2026-05-12 A | 2026-06-24 A | PG-T-PR-LL-EL-MS-60 SS | 100% |  |
| PG-T-PR-LL-EL-MA-70 |  | Security and Access Control System Materials(Completed) | 34d | 2026-05-12 A | 2026-06-24 A | PG-T-PR-LL-EL-MS-70 SS | 100% |  |
| PG-T-PR-LL-EL-MA-80 |  | Fire Alarm System Materials(Completed) | 34d | 2026-05-12 A | 2026-06-24 A | PG-T-PR-LL-EL-MS-80 SS | 100% |  |
| PG-T-PR-LL-EL-MA-10_R |  | Main Distribution Board(Remaining) | 7d | 2026-06-25 | 2026-07-02 | PG-T-PR-LL-EL-MS-10_R SS, PG-T-PR-LL-EL-MA-10 |  | 2d |
| PG-T-PR-LL-EL-MA-20_R |  | Power Panels (Pump, Street Light)(Remaining) | 7d | 2026-06-25 | 2026-07-02 | PG-T-PR-LL-EL-MS-20_R SS, PG-T-PR-LL-EL-MA-20 |  | 7d |
| PG-T-PR-LL-EL-MA-30_R |  | Site Lighting Poles(Remaining) | 7d | 2026-06-25 | 2026-07-02 | PG-T-PR-LL-EL-MS-30_R SS, PG-T-PR-LL-EL-MA-30 |  | 14d |
| PG-T-PR-LL-EL-MA-40_R |  | Lighting Fixtures(Remaining) | 7d | 2026-06-25 | 2026-07-02 | PG-T-PR-LL-EL-MS-40_R SS, PG-T-PR-LL-EL-MA-40 |  | 10d |
| PG-T-PR-LL-EL-MA-60_R |  | Telecommunications & Data System Materials (Telephone outlet, CCTV, etc)(Remaining) | 7d | 2026-06-25 | 2026-07-02 | PG-T-PR-LL-EL-MS-60_R SS, PG-T-PR-LL-EL-MA-60 |  | 30d |
| PG-T-PR-LL-EL-MA-70_R |  | Security and Access Control System Materials(Remaining) | 7d | 2026-06-25 | 2026-07-02 | PG-T-PR-LL-EL-MS-70_R SS, PG-T-PR-LL-EL-MA-70 |  | 44d |
| PG-T-PR-LL-EL-MA-80_R |  | Fire Alarm System Materials(Remaining) | 7d | 2026-06-25 | 2026-07-02 | PG-T-PR-LL-EL-MS-80_R SS, PG-T-PR-LL-EL-MA-80 |  | 37d |
| PG-T-PR-LL-EL-MA-50_R |  | Grounding System Materials (Earth pit rod, LPS, etc)(Remaining) | 2d | 2026-07-12 | 2026-07-13 | PG-T-PR-LL-EL-MS-50_R, PG-T-PR-LL-EL-MA-50 |  | 17d |
|  | 2 | **SHORT LEAD ITEMS** |  | 2026-02-21 | 2026-03-26 |  |  |  |
|  | 1 | **EXTERNAL / LANDSCAPE WORK** |  | 2026-02-21 | 2026-03-26 |  |  |  |
| PG-T-PR-SL-LS-MA-10 |  | Backfilling Materials | 25d | 2026-02-21 A | 2026-03-26 A | PG-T-PR-SL-LS-MS-10 | 100% |  |
| PG-T-PR-SL-LS-MA-30 |  | Compacted Natural Ground Soil | 22d | 2026-02-25 A | 2026-03-26 A | PG-T-PR-SL-LS-MS-30 | 100% |  |
| PG-T-PR-SL-LS-MA-60 |  | Traffic Signages | 11d | 2026-03-10 A | 2026-03-26 A | PG-T-PR-SL-LS-MS-60 | 100% |  |
| PG-T-PR-SL-LS-MA-70 |  | Trees | 8d | 2026-03-14 A | 2026-03-26 A | PG-T-PR-SL-LS-MS-70 | 100% |  |
| PG-T-PR-SL-LS-MA-80 |  | Lawn | 8d | 2026-03-14 A | 2026-03-26 A | PG-T-PR-SL-LS-MS-80 | 100% |  |
| PG-T-PR-SL-LS-MA-50 |  | Thermoplastic pavement road marking | 6d | 2026-03-16 A | 2026-03-26 A | PG-T-PR-SL-LS-MS-50 | 100% |  |
| PG-T-PR-SL-LS-MA-20 |  | Interlock tiles | 2d | 2026-03-25 A | 2026-03-26 A | PG-T-PR-SL-LS-MS-20 | 100% |  |
| PG-T-PR-SL-LS-MA-40 |  | Curb Stone | 2d | 2026-03-25 A | 2026-03-26 A | PG-T-PR-SL-LS-MS-40 | 100% |  |
|  | 3 | **CONCRETE WORK** |  | 2026-02-23 | 2026-03-26 |  |  |  |
| PG-T-PR-SL-CO-MA-10 |  | Steel Rebar | 14d | 2026-02-23 A | 2026-03-10 A | PG-T-PR-SL-CO-MS-10 | 100% |  |
| PG-T-PR-SL-CO-MA-20 |  | Concrete | 9d | 2026-03-01 A | 2026-03-10 A | PG-T-PR-SL-CO-MS-20 | 100% |  |
| PG-T-PR-SL-CO-MA-40 |  | CMU Block | 15d | 2026-03-05 A | 2026-03-26 A | PG-T-PR-SL-CO-MS-40 | 100% |  |
| PG-T-PR-SL-CO-MA-50 |  | Concrete Repair & Protection Materials | 15d | 2026-03-05 A | 2026-03-26 A | PG-T-PR-SL-CO-MS-50 | 100% |  |
| PG-T-PR-SL-CO-MA-30 |  | Screed | 1d | 2026-03-26 A | 2026-03-26 A | PG-T-PR-SL-CO-MS-30 | 100% |  |
|  | 4 | **ARCHITECTURAL & FINISHES WORK** |  | 2026-03-15 | 2026-03-16 |  |  |  |
| PG-T-PR-SL-AR-MA-10 |  | Ceramic tiles | 2d | 2026-03-15 A | 2026-03-16 A | PG-T-PR-SL-AR-MS-10 | 100% |  |
| PG-T-PR-SL-AR-MA-100 |  | Specialities Materials (Toilet accessories, lockers, logo, etc) | 2d | 2026-03-15 A | 2026-03-16 A | PG-T-PR-SL-AR-MS-100 | 100% |  |
| PG-T-PR-SL-AR-MA-110 |  | Waterproofing System Materials | 2d | 2026-03-15 A | 2026-03-16 A | PG-T-PR-SL-AR-MS-110 | 100% |  |
| PG-T-PR-SL-AR-MA-20 |  | Anti-slip Granite tiles | 2d | 2026-03-15 A | 2026-03-16 A | PG-T-PR-SL-AR-MS-20 | 100% |  |
| PG-T-PR-SL-AR-MA-30 |  | Epoxy Paint | 2d | 2026-03-15 A | 2026-03-16 A | PG-T-PR-SL-AR-MS-30 | 100% |  |
| PG-T-PR-SL-AR-MA-40 |  | Cement Plaster | 2d | 2026-03-15 A | 2026-03-16 A | PG-T-PR-SL-AR-MS-40 | 100% |  |
| PG-T-PR-SL-AR-MA-50 |  | Acrylic Paint | 2d | 2026-03-15 A | 2026-03-16 A | PG-T-PR-SL-AR-MS-50 | 100% |  |
| PG-T-PR-SL-AR-MA-60 |  | Stone Cladding | 2d | 2026-03-15 A | 2026-03-16 A | PG-T-PR-SL-AR-MS-60 | 100% |  |
| PG-T-PR-SL-AR-MA-70 |  | Phenolic Partition | 2d | 2026-03-15 A | 2026-03-16 A | PG-T-PR-SL-AR-MS-70 | 100% |  |
| PG-T-PR-SL-AR-MA-80 |  | Glass Partition | 2d | 2026-03-15 A | 2026-03-16 A | PG-T-PR-SL-AR-MS-80 | 100% |  |
| PG-T-PR-SL-AR-MA-90 |  | Gypsum Boards | 2d | 2026-03-15 A | 2026-03-16 A | PG-T-PR-SL-AR-MS-90 | 100% |  |
|  | 5 | **METAL WORK** |  | 2026-03-11 | 2026-03-26 |  |  |  |
| PG-T-PR-SL-MT-MA-20 |  | Galvanized Steel Roof Scupper | 10d | 2026-03-11 A | 2026-03-26 A | PG-T-PR-SL-MT-MS-20 | 100% |  |
| PG-T-PR-SL-MT-MA-30 |  | Galvanized Steel Cover with frame | 10d | 2026-03-11 A | 2026-03-26 A | PG-T-PR-SL-MT-MS-30 | 100% |  |
| PG-T-PR-SL-MT-MA-10 |  | Galvanized Steel Ladder | 7d | 2026-03-15 A | 2026-03-26 A | PG-T-PR-SL-MT-MS-10 | 100% |  |
|  | 6 | **HVAC WORK** |  | 2026-02-28 | 2026-03-26 |  |  |  |
| PG-T-PR-SL-AC-MA-10 |  | Split Air Conditioning Unit | 20d | 2026-02-28 A | 2026-03-26 A | PG-T-PR-SL-AC-MS-10 | 100% |  |
| PG-T-PR-SL-AC-MA-20 |  | Air Duct | 16d | 2026-03-04 A | 2026-03-26 A | PG-T-PR-SL-AC-MS-20 | 100% |  |
| PG-T-PR-SL-AC-MA-30 |  | Diffusers and Grills | 2d | 2026-03-25 A | 2026-03-26 A | PG-T-PR-SL-AC-MS-30 | 100% |  |
| PG-T-PR-SL-AC-MA-40 |  | Exhaust fans | 2d | 2026-03-25 A | 2026-03-26 A | PG-T-PR-SL-AC-MS-40 | 100% |  |

| ID | WBS | Task | Duration | Start | Finish | Predecessors | Complete | Total float |
| --- | --- | --- | --- | --- | --- | --- | --- | --- |
|  | 7 | **PLUMBING WORK** |  | 2026-03-25 | 2026-03-26 |  |  |  |
| PG-T-PR-SL-PB-MA-10 |  | PPR Pipes & Valves | 2d | 2026-03-25 A | 2026-03-26 A | PG-T-PR-SL-PB-MS-10 | 100% |  |
| PG-T-PR-SL-PB-MA-20 |  | UPCV Pipes | 2d | 2026-03-25 A | 2026-03-26 A | PG-T-PR-SL-PB-MS-20 | 100% |  |
| PG-T-PR-SL-PB-MA-30 |  | Sanitary Drainage Fixtures | 2d | 2026-03-25 A | 2026-03-26 A | PG-T-PR-SL-PB-MS-30 | 100% |  |
|  | 8 | **IRRIGATION WORK** |  | 2026-03-25 | 2026-03-26 |  |  |  |
| PG-T-PR-SL-IR-MA-10 |  | Gate Valve including valve box | 2d | 2026-03-25 A | 2026-03-26 A | PG-T-PR-SL-IR-MS-10 | 100% |  |
| PG-T-PR-SL-IR-MA-20 |  | Bulbblers and Spreyers | 2d | 2026-03-25 A | 2026-03-26 A | PG-T-PR-SL-IR-MS-20 | 100% |  |
|  | 9 | **ELECTRICAL WORK** |  | 2026-03-25 | 2026-03-26 |  |  |  |
| PG-T-PR-SL-EL-MA-10 |  | Wiring Devices Materials | 2d | 2026-03-25 A | 2026-03-26 A | PG-T-PR-SL-EL-MS-10 | 100% |  |
|  | 10 | **FIRE FIGHTING WORK** |  | 2026-03-25 | 2026-03-26 |  |  |  |
| PG-T-PR-SL-FF-MA-10 |  | Fire Extinguishers | 2d | 2026-03-25 A | 2026-03-26 A | PG-T-PR-SL-FF-MS-10 | 100% |  |
|  | PR | **PROCUREMENT** |  | 2026-02-26 | 2026-08-27 |  |  |  |
|  | 1 | **LONG LEAD ITEMS** |  | 2026-03-07 | 2026-08-27 |  |  |  |
|  | 2 | **PURCHASE ORDER** |  | 2026-03-07 | 2026-07-16 |  |  |  |
|  | 1 | **EXTERNAL / LANDSCAPE WORK** |  | 2026-03-07 | 2026-05-06 |  |  |  |
| PG-T-PR-LL-LS-PO-20 |  | Benches, Seats (Rectangular & Circular) | 49.25d | 2026-03-07 A | 2026-05-06 A | PG-T-PR-LL-LS-MA-20 | 100% |  |
| PG-T-PR-LL-LS-PO-30 |  | Fence, gates and accessories | 36.25d | 2026-03-26 A | 2026-05-06 A | PG-T-PR-LL-LS-MA-30 | 100% |  |
| PG-T-PR-LL-LS-PO-10 |  | Bike and Walk Path Materials | 34.25d | 2026-03-29 A | 2026-05-06 A | PG-T-PR-LL-LS-MA-10 | 100% |  |
|  | 2 | **SPORTS & RECREATIONAL FACILITIES WORK** |  | 2026-03-26 | 2026-07-16 |  |  |  |
| PG-T-PR-LL-SP-PO-40 |  | Tartan Floor | 36.25d | 2026-03-26 A | 2026-05-06 A | PG-T-PR-LL-SP-MA-40 | 100% |  |
| PG-T-PR-LL-SP-PO-10 |  | Football Playground Materials (Flooring, goal post, nets, paints, etc) | 35.25d | 2026-03-28 A | 2026-05-06 A | PG-T-PR-LL-SP-MA-10 | 100% |  |
| PG-T-PR-LL-SP-PO-20 |  | Basketball Playground Materials (Flooring, basketball poll, nets, paints, etc) | 35.25d | 2026-03-28 A | 2026-05-06 A | PG-T-PR-LL-SP-MA-20 | 100% |  |
| PG-T-PR-LL-SP-PO-30 |  | Padel Playgound Materials (Flooring, fence, tempered glass, etc) | 35.25d | 2026-03-28 A | 2026-05-06 A | PG-T-PR-LL-SP-MA-30 | 100% |  |
| PG-T-PR-LL-SP-PO-50 |  | Air Dome Materials | 5d | 2026-07-12 | 2026-07-16 | PG-T-PR-LL-SP-MA-50_R |  | 0d |
|  | 3 | **CONCRETE WORK** |  | 2026-03-18 | 2026-05-06 |  |  |  |
| PG-T-PR-LL-CO-PO-10 |  | Autoclaved Aerated Panel | 39.25d | 2026-03-18 A | 2026-05-06 A | PG-T-PR-LL-CO-MA-10 | 100% |  |
|  | 5 | **METAL WORK** |  | 2026-03-24 | 2026-05-06 |  |  |  |
| PG-T-PR-LL-MT-PO-10 |  | Metal Doors | 38.25d | 2026-03-24 A | 2026-05-06 A | PG-T-PR-LL-MT-MA-10 | 100% |  |
| PG-T-PR-LL-MT-PO-20 |  | Curtain Wall | 38.25d | 2026-03-24 A | 2026-05-06 A | PG-T-PR-LL-MT-MA-20 | 100% |  |
|  | 7 | **PLUMBING WORK** |  | 2026-03-28 | 2026-05-06 |  |  |  |
| PG-T-PR-LL-PB-PO-10 |  | Booster Pump | 35.25d | 2026-03-28 A | 2026-05-06 A | PG-T-PR-LL-PB-MA-10 | 100% |  |
| PG-T-PR-LL-PB-PO-20 |  | GRP Sectional Panel Water Tanks (4x3x3m) | 33.25d | 2026-03-30 A | 2026-05-06 A | PG-T-PR-LL-PB-MA-20 | 100% |  |
|  | 8 | **IRRIGATION WORK** |  | 2026-03-17 | 2026-05-06 |  |  |  |
| PG-T-PR-LL-IR-PO-20 |  | Irrigation Control System | 40.25d | 2026-03-17 A | 2026-05-06 A | PG-T-PR-LL-IR-MA-20 | 100% |  |
| PG-T-PR-LL-IR-PO-10 |  | HDPE Pipes | 39.25d | 2026-03-18 A | 2026-05-06 A | PG-T-PR-LL-IR-MA-10 | 100% |  |
|  | 9 | **ELECTRICAL WORK** |  | 2026-05-11 | 2026-07-16 |  |  |  |
| PG-T-PR-LL-EL-PO-10 |  | Main Distribution Board(Completed) | 35.25d | 2026-05-11 A | 2026-06-24 A | PG-T-PR-LL-EL-MA-10 SS | 100% |  |
| PG-T-PR-LL-EL-PO-20 |  | Power Panels (Pump, Street Light)(Completed) | 35.25d | 2026-05-11 A | 2026-06-24 A | PG-T-PR-LL-EL-MA-20 SS | 100% |  |
| PG-T-PR-LL-EL-PO-30 |  | Site Lighting Poles(Completed) | 35.25d | 2026-05-11 A | 2026-06-24 A | PG-T-PR-LL-EL-MA-30 SS | 100% |  |
| PG-T-PR-LL-EL-PO-40 |  | Lighting Fixtures(Completed) | 35.25d | 2026-05-11 A | 2026-06-24 A | PG-T-PR-LL-EL-MA-40 SS | 100% |  |
| PG-T-PR-LL-EL-PO-50 |  | Grounding System Materials (Earth pit rod, LPS, etc)(Completed) | 35.25d | 2026-05-11 A | 2026-06-24 A | PG-T-PR-LL-EL-MA-50 SS | 100% |  |
| PG-T-PR-LL-EL-PO-60 |  | Telecommunications & Data System Materials (Telephone outlet, CCTV, etc)(Completed) | 35.25d | 2026-05-11 A | 2026-06-24 A | PG-T-PR-LL-EL-MA-60 SS | 100% |  |
| PG-T-PR-LL-EL-PO-70 |  | Security and Access Control System Materials(Completed) | 35.25d | 2026-05-11 A | 2026-06-24 A | PG-T-PR-LL-EL-MA-70 SS | 100% |  |
| PG-T-PR-LL-EL-PO-80 |  | Fire Alarm System Materials(Completed) | 35.25d | 2026-05-11 A | 2026-06-24 A | PG-T-PR-LL-EL-MA-80 SS | 100% |  |
| PG-T-PR-LL-EL-PO-10_R |  | Main Distribution Board(Remaining) | 8d | 2026-07-04 | 2026-07-12 | PG-T-PR-LL-EL-MA-10_R, PG-T-PR-LL-EL-PO-10 |  | 2d |
| PG-T-PR-LL-EL-PO-20_R |  | Power Panels (Pump, Street Light)(Remaining) | 8d | 2026-07-04 | 2026-07-12 | PG-T-PR-LL-EL-MA-20_R, PG-T-PR-LL-EL-PO-20 |  | 7d |
| PG-T-PR-LL-EL-PO-30_R |  | Site Lighting Poles(Remaining) | 8d | 2026-07-04 | 2026-07-12 | PG-T-PR-LL-EL-MA-30_R, PG-T-PR-LL-EL-PO-30 |  | 14d |
| PG-T-PR-LL-EL-PO-40_R |  | Lighting Fixtures(Remaining) | 8d | 2026-07-04 | 2026-07-12 | PG-T-PR-LL-EL-MA-40_R, PG-T-PR-LL-EL-PO-40 |  | 10d |
| PG-T-PR-LL-EL-PO-60_R |  | Telecommunications & Data System Materials (Telephone outlet, CCTV, etc)(Remaining) | 8d | 2026-07-04 | 2026-07-12 | PG-T-PR-LL-EL-MA-60_R, PG-T-PR-LL-EL-PO-60 |  | 30d |
| PG-T-PR-LL-EL-PO-70_R |  | Security and Access Control System Materials(Remaining) | 8d | 2026-07-04 | 2026-07-12 | PG-T-PR-LL-EL-MA-70_R, PG-T-PR-LL-EL-PO-70 |  | 44d |
| PG-T-PR-LL-EL-PO-80_R |  | Fire Alarm System Materials(Remaining) | 8d | 2026-07-04 | 2026-07-12 | PG-T-PR-LL-EL-MA-80_R, PG-T-PR-LL-EL-PO-80 |  | 37d |
| PG-T-PR-LL-EL-PO-50_R |  | Grounding System Materials (Earth pit rod, LPS, etc)(Remaining) | 3d | 2026-07-14 | 2026-07-16 | PG-T-PR-LL-EL-MA-50_R, PG-T-PR-LL-EL-PO-50 |  | 17d |
|  | 3 | **MANUFACTURE / FABRICATION** |  | 2026-04-29 | 2026-08-16 |  |  |  |
|  | 1 | **EXTERNAL / LANDSCAPE WORK** |  | 2026-05-06 | 2026-07-23 |  |  |  |
| PG-T-PR-LL-LS-MF-10 |  | Bike and Walk Path Materials(Completed) | 39.25d | 2026-05-06 A | 2026-06-24 A | PG-T-PR-LL-LS-PO-10 | 100% |  |
| PG-T-PR-LL-LS-MF-20 |  | Benches, Seats (Rectangular & Circular)(Completed) | 39.25d | 2026-05-06 A | 2026-06-24 A | PG-T-PR-LL-LS-PO-20 | 100% |  |
| PG-T-PR-LL-LS-MF-30 |  | Fence, gates and accessories(Completed) | 39.25d | 2026-05-06 A | 2026-06-24 A | PG-T-PR-LL-LS-PO-30 | 100% |  |
| PG-T-PR-LL-LS-MF-10_R |  | Bike and Walk Path Materials(Remaining) | 25d | 2026-06-25 | 2026-07-23 | PG-T-PR-LL-LS-PO-10, PG-T-PR-LL-LS-MF-10 |  | 68.2d |
| PG-T-PR-LL-LS-MF-20_R |  | Benches, Seats (Rectangular & Circular)(Remaining) | 25d | 2026-06-25 | 2026-07-23 | PG-T-PR-LL-LS-PO-20, PG-T-PR-LL-LS-MF-20 |  | 88.2d |
| PG-T-PR-LL-LS-MF-30_R |  | Fence, gates and accessories(Remaining) | 6d | 2026-06-25 | 2026-07-01 | PG-T-PR-LL-LS-PO-30, PG-T-PR-LL-LS-MF-30 |  | 21.2d |
|  | 2 | **SPORTS & RECREATIONAL FACILITIES WORK** |  | 2026-05-06 | 2026-08-16 |  |  |  |
| PG-T-PR-LL-SP-MF-10 |  | Football Playground Materials (Flooring, goal post, nets, paints, etc)(Completed) | 39.25d | 2026-05-06 A | 2026-06-24 A | PG-T-PR-LL-SP-PO-10 | 100% |  |
| PG-T-PR-LL-SP-MF-20 |  | Basketball Playground Materials (Flooring, basketball poll, nets, paints, etc)(Completed) | 39.25d | 2026-05-06 A | 2026-06-24 A | PG-T-PR-LL-SP-PO-20 | 100% |  |
| PG-T-PR-LL-SP-MF-30 |  | Padel Playgound Materials (Flooring, fence, tempered glass, etc)(Completed) | 39.25d | 2026-05-06 A | 2026-06-24 A | PG-T-PR-LL-SP-PO-30 | 100% |  |
| PG-T-PR-LL-SP-MF-40 |  | Tartan Floor(Completed) | 39.25d | 2026-05-06 A | 2026-06-24 A | PG-T-PR-LL-SP-PO-40 | 100% |  |
| PG-T-PR-LL-SP-MF-10_R |  | Football Playground Materials (Flooring, goal post, nets, paints, etc)(Remaining) | 25d | 2026-06-25 | 2026-07-23 | PG-T-PR-LL-SP-PO-10, PG-T-PR-LL-SP-MF-10 |  | 60d |
| PG-T-PR-LL-SP-MF-20_R |  | Basketball Playground Materials (Flooring, basketball poll, nets, paints, etc)(Remaining) | 25d | 2026-06-25 | 2026-07-23 | PG-T-PR-LL-SP-PO-20, PG-T-PR-LL-SP-MF-20 |  | 61d |
| PG-T-PR-LL-SP-MF-30_R |  | Padel Playgound Materials (Flooring, fence, tempered glass, etc)(Remaining) | 25d | 2026-06-25 | 2026-07-23 | PG-T-PR-LL-SP-PO-30, PG-T-PR-LL-SP-MF-30 |  | 8d |
| PG-T-PR-LL-SP-MF-40_R |  | Tartan Floor(Remaining) | 25d | 2026-06-25 | 2026-07-23 | PG-T-PR-LL-SP-PO-40, PG-T-PR-LL-SP-MF-40 |  | 28d |
| PG-T-PR-LL-SP-MF-50 |  | Air Dome Materials | 26d | 2026-07-18 | 2026-08-16 | PG-T-PR-LL-SP-PO-50, PG-T-PR-LL-SP-PO-50 SS |  | 0d |

| ID | WBS | Task | Duration | Start | Finish | Predecessors | Complete | Total float |
| --- | --- | --- | --- | --- | --- | --- | --- | --- |
|  | 3 | **CONCRETE WORK** |  | 2026-04-29 | 2026-06-30 |  |  |  |
| PG-T-PR-LL-CO-MF-10 |  | Autoclaved Aerated Panel(Completed) | 45.25d | 2026-04-29 A | 2026-06-24 A | PG-T-PR-LL-CO-PO-10, PG-T-PR-LL-CO-PO-10 SS | 100% |  |
| PG-T-PR-LL-CO-MF-10_R |  | Autoclaved Aerated Panel(Remaining) | 5d | 2026-06-25 | 2026-06-30 | PG-T-PR-LL-CO-PO-10, PG-T-PR-LL-CO-PO-10 SS, PG-T-PR-LL-CO-MF-10 |  | 0d |
|  | 5 | **METAL WORK** |  | 2026-05-06 | 2026-07-23 |  |  |  |
| PG-T-PR-LL-MT-MF-10 |  | Metal Doors(Completed) | 39.25d | 2026-05-06 A | 2026-06-24 A | PG-T-PR-LL-MT-PO-10 | 100% |  |
| PG-T-PR-LL-MT-MF-20 |  | Curtain Wall(Completed) | 39.25d | 2026-05-06 A | 2026-06-24 A | PG-T-PR-LL-MT-PO-20 | 100% |  |
| PG-T-PR-LL-MT-MF-10_R |  | Metal Doors(Remaining) | 25d | 2026-06-25 | 2026-07-23 | PG-T-PR-LL-MT-PO-10, PG-T-PR-LL-MT-MF-10 |  | 62d |
| PG-T-PR-LL-MT-MF-20_R |  | Curtain Wall(Remaining) | 25d | 2026-06-25 | 2026-07-23 | PG-T-PR-LL-MT-PO-20, PG-T-PR-LL-MT-MF-20 |  | 57d |
|  | 7 | **PLUMBING WORK** |  | 2026-05-06 | 2026-07-23 |  |  |  |
| PG-T-PR-LL-PB-MF-10 |  | Booster Pump(Completed) | 39.25d | 2026-05-06 A | 2026-06-24 A | PG-T-PR-LL-PB-PO-10 | 100% |  |
| PG-T-PR-LL-PB-MF-20 |  | GRP Sectional Panel Water Tanks (4x3x3m)(Completed) | 39.25d | 2026-05-06 A | 2026-06-24 A | PG-T-PR-LL-PB-PO-20 | 100% |  |
| PG-T-PR-LL-PB-MF-10_R |  | Booster Pump(Remaining) | 25d | 2026-06-25 | 2026-07-23 | PG-T-PR-LL-PB-PO-10, PG-T-PR-LL-PB-MF-10 |  | 20d |
| PG-T-PR-LL-PB-MF-20_R |  | GRP Sectional Panel Water Tanks (4x3x3m)(Remaining) | 25d | 2026-06-25 | 2026-07-23 | PG-T-PR-LL-PB-PO-20, PG-T-PR-LL-PB-MF-20 |  | 43.2d |
|  | 8 | **IRRIGATION WORK** |  | 2026-05-06 | 2026-07-01 |  |  |  |
| PG-T-PR-LL-IR-MF-10 |  | HDPE Pipes(Completed) | 39.25d | 2026-05-06 A | 2026-06-24 A | PG-T-PR-LL-IR-PO-10 | 100% |  |
| PG-T-PR-LL-IR-MF-20 |  | Irrigation Control System(Completed) | 39.25d | 2026-05-06 A | 2026-06-24 A | PG-T-PR-LL-IR-PO-20 | 100% |  |
| PG-T-PR-LL-IR-MF-10_R |  | HDPE Pipes(Remaining) | 5.1d | 2026-06-25 | 2026-07-01 | PG-T-PR-LL-IR-PO-10, PG-T-PR-LL-IR-MF-10 |  | 13d |
| PG-T-PR-LL-IR-MF-20_R |  | Irrigation Control System(Remaining) | 5.1d | 2026-06-25 | 2026-07-01 | PG-T-PR-LL-IR-PO-20, PG-T-PR-LL-IR-MF-20 |  | 16.9d |
|  | 9 | **ELECTRICAL WORK** |  | 2026-05-12 | 2026-08-10 |  |  |  |
| PG-T-PR-LL-EL-MF-10 |  | Main Distribution Board(Completed) | 34.25d | 2026-05-12 A | 2026-06-24 A | PG-T-PR-LL-EL-PO-10 SS | 100% |  |
| PG-T-PR-LL-EL-MF-20 |  | Power Panels (Pump, Street Light)(Completed) | 34.25d | 2026-05-12 A | 2026-06-24 A | PG-T-PR-LL-EL-PO-20 SS | 100% |  |
| PG-T-PR-LL-EL-MF-30 |  | Site Lighting Poles(Completed) | 34.25d | 2026-05-12 A | 2026-06-24 A | PG-T-PR-LL-EL-PO-30 SS | 100% |  |
| PG-T-PR-LL-EL-MF-40 |  | Lighting Fixtures(Completed) | 34.25d | 2026-05-12 A | 2026-06-24 A | PG-T-PR-LL-EL-PO-40 SS | 100% |  |
| PG-T-PR-LL-EL-MF-50 |  | Grounding System Materials (Earth pit rod, LPS, etc)(Completed) | 34.25d | 2026-05-12 A | 2026-06-24 A | PG-T-PR-LL-EL-PO-50 SS | 100% |  |
| PG-T-PR-LL-EL-MF-60 |  | Telecommunications & Data System Materials (Telephone outlet, CCTV, etc)(Completed) | 34.25d | 2026-05-12 A | 2026-06-24 A | PG-T-PR-LL-EL-PO-60 SS | 100% |  |
| PG-T-PR-LL-EL-MF-70 |  | Security and Access Control System Materials(Completed) | 34.25d | 2026-05-12 A | 2026-06-24 A | PG-T-PR-LL-EL-PO-70 SS | 100% |  |
| PG-T-PR-LL-EL-MF-80 |  | Fire Alarm System Materials(Completed) | 34.25d | 2026-05-12 A | 2026-06-24 A | PG-T-PR-LL-EL-PO-80 SS | 100% |  |
| PG-T-PR-LL-EL-MF-10_R |  | Main Distribution Board(Remaining) | 25d | 2026-07-13 | 2026-08-10 | PG-T-PR-LL-EL-PO-10_R, PG-T-PR-LL-EL-MF-10 |  | 2d |
| PG-T-PR-LL-EL-MF-20_R |  | Power Panels (Pump, Street Light)(Remaining) | 25d | 2026-07-13 | 2026-08-10 | PG-T-PR-LL-EL-PO-20_R, PG-T-PR-LL-EL-MF-20 |  | 7d |
| PG-T-PR-LL-EL-MF-30_R |  | Site Lighting Poles(Remaining) | 25d | 2026-07-13 | 2026-08-10 | PG-T-PR-LL-EL-PO-30_R, PG-T-PR-LL-EL-MF-30 |  | 14d |
| PG-T-PR-LL-EL-MF-40_R |  | Lighting Fixtures(Remaining) | 25d | 2026-07-13 | 2026-08-10 | PG-T-PR-LL-EL-PO-40_R, PG-T-PR-LL-EL-MF-40 |  | 10d |
| PG-T-PR-LL-EL-MF-60_R |  | Telecommunications & Data System Materials (Telephone outlet, CCTV, etc)(Remaining) | 25d | 2026-07-13 | 2026-08-10 | PG-T-PR-LL-EL-PO-60_R, PG-T-PR-LL-EL-MF-60 |  | 30d |
| PG-T-PR-LL-EL-MF-70_R |  | Security and Access Control System Materials(Remaining) | 25d | 2026-07-13 | 2026-08-10 | PG-T-PR-LL-EL-PO-70_R, PG-T-PR-LL-EL-MF-70 |  | 44d |
| PG-T-PR-LL-EL-MF-80_R |  | Fire Alarm System Materials(Remaining) | 25d | 2026-07-13 | 2026-08-10 | PG-T-PR-LL-EL-PO-80_R, PG-T-PR-LL-EL-MF-80 |  | 37d |
| PG-T-PR-LL-EL-MF-50_R |  | Grounding System Materials (Earth pit rod, LPS, etc)(Remaining) | 6d | 2026-07-18 | 2026-07-23 | PG-T-PR-LL-EL-PO-50_R, PG-T-PR-LL-EL-MF-50 |  | 17d |
|  | 4 | **DELIVERY TO SITE** |  | 2026-05-06 | 2026-08-27 |  |  |  |
|  | 1 | **EXTERNAL / LANDSCAPE WORK** |  | 2026-05-06 | 2026-08-06 |  |  |  |
| PG-T-PR-LL-LS-DL-10 |  | Bike and Walk Path Materials(Completed) | 39d | 2026-05-06 A | 2026-06-24 A | PG-T-PR-LL-LS-MF-10 SS | 100% |  |
| PG-T-PR-LL-LS-DL-20 |  | Benches, Seats (Rectangular & Circular)(Completed) | 39d | 2026-05-06 A | 2026-06-24 A | PG-T-PR-LL-LS-MF-20 SS | 100% |  |
| PG-T-PR-LL-LS-DL-30 |  | Fence, gates and accessories(Completed) | 39d | 2026-05-06 A | 2026-06-24 A | PG-T-PR-LL-LS-MF-30 SS | 100% |  |
| PG-T-PR-LL-LS-DL-30_R |  | Fence, gates and accessories(Remaining) | 5d | 2026-07-02 | 2026-07-07 | PG-T-PR-LL-LS-MF-30_R, PG-T-PR-LL-LS-DL-30 |  | 21.2d |
| PG-T-PR-LL-LS-DL-10_R |  | Bike and Walk Path Materials(Remaining) | 12d | 2026-07-25 | 2026-08-06 | PG-T-PR-LL-LS-MF-10_R, PG-T-PR-LL-LS-DL-10 |  | 68.2d |
| PG-T-PR-LL-LS-DL-20_R |  | Benches, Seats (Rectangular & Circular)(Remaining) | 12d | 2026-07-25 | 2026-08-06 | PG-T-PR-LL-LS-MF-20_R, PG-T-PR-LL-LS-DL-20 |  | 88.2d |
|  | 2 | **SPORTS & RECREATIONAL FACILITIES WORK** |  | 2026-05-06 | 2026-08-27 |  |  |  |
| PG-T-PR-LL-SP-DL-10 |  | Football Playground Materials (Flooring, goal post, nets, paints, etc)(Completed) | 39d | 2026-05-06 A | 2026-06-24 A | PG-T-PR-LL-SP-MF-10 SS | 100% |  |
| PG-T-PR-LL-SP-DL-20 |  | Basketball Playground Materials (Flooring, basketball poll, nets, paints, etc)(Completed) | 39d | 2026-05-06 A | 2026-06-24 A | PG-T-PR-LL-SP-MF-20 SS | 100% |  |
| PG-T-PR-LL-SP-DL-30 |  | Padel Playgound Materials (Fence, tempered glass, etc)(Completed) | 39d | 2026-05-06 A | 2026-06-24 A | PG-T-PR-LL-SP-MF-30 SS | 100% |  |
| PG-T-PR-LL-SP-DL-40 |  | Tartan Floor(Completed) | 39d | 2026-05-06 A | 2026-06-24 A | PG-T-PR-LL-SP-MF-40 SS | 100% |  |
| PG-T-PR-LL-SP-DL-10_R |  | Football Playground Materials (Flooring, goal post, nets, paints, etc)(Remaining) | 12d | 2026-07-25 | 2026-08-06 | PG-T-PR-LL-SP-MF-10_R, PG-T-PR-LL-SP-DL-10 |  | 60d |
| PG-T-PR-LL-SP-DL-20_R |  | Basketball Playground Materials (Flooring, basketball poll, nets, paints, etc)(Remaining) | 12d | 2026-07-25 | 2026-08-06 | PG-T-PR-LL-SP-MF-20_R, PG-T-PR-LL-SP-DL-20 |  | 61d |
| PG-T-PR-LL-SP-DL-30_R |  | Padel Playgound Materials (Fence, tempered glass, etc)(Remaining) | 12d | 2026-07-25 | 2026-08-06 | PG-T-PR-LL-SP-MF-30_R, PG-T-PR-LL-SP-DL-30 |  | 8d |
| PG-T-PR-LL-SP-DL-40_R |  | Tartan Floor(Remaining) | 12d | 2026-07-25 | 2026-08-06 | PG-T-PR-LL-SP-MF-40_R, PG-T-PR-LL-SP-DL-40 |  | 28d |
| PG-T-PR-LL-SP-DL-50 |  | Air Dome Materials | 10d | 2026-08-17 | 2026-08-27 | PG-T-PR-LL-SP-MF-50, PG-T-PR-LL-SP-MF-50 SS, PG-T-PR-LL-SP-MF-50 FF, PG-T-EN-AR-SD-AP-130, PG-T-EN-ME-SD-AP-100, PG-T-EN-EL-SD-AP-140, PG-T-EN-EL-SD-AP-120, PG-T-EN-EL-SD-AP-130 |  | 0d |
|  | 3 | **CONCRETE WORK** |  | 2026-05-06 | 2026-07-06 |  |  |  |
| PG-T-PR-LL-CO-DL-10 |  | Autoclaved Aerated Panel(Completed) | 39d | 2026-05-06 A | 2026-06-24 A | PG-T-PR-LL-CO-MF-10 SS | 100% |  |
| PG-T-PR-LL-CO-DL-10_R |  | Autoclaved Aerated Panel(Remaining) | 5d | 2026-07-01 | 2026-07-06 | PG-T-PR-LL-CO-MF-10_R, PG-T-PR-LL-CO-DL-10 |  | 0d |
|  | 5 | **METAL WORK** |  | 2026-05-06 | 2026-08-06 |  |  |  |
| PG-T-PR-LL-MT-DL-10 |  | Metal Doors(Completed) | 39d | 2026-05-06 A | 2026-06-24 A | PG-T-PR-LL-MT-MF-10 SS | 100% |  |
| PG-T-PR-LL-MT-DL-20 |  | Curtain Wall(Completed) | 39d | 2026-05-06 A | 2026-06-24 A | PG-T-PR-LL-MT-MF-20 SS | 100% |  |
| PG-T-PR-LL-MT-DL-10_R |  | Metal Doors(Remaining) | 12d | 2026-07-25 | 2026-08-06 | PG-T-PR-LL-MT-MF-10_R, PG-T-PR-LL-MT-DL-10 |  | 62d |
| PG-T-PR-LL-MT-DL-20_R |  | Curtain Wall(Remaining) | 12d | 2026-07-25 | 2026-08-06 | PG-T-PR-LL-MT-MF-20_R, PG-T-PR-LL-MT-DL-20 |  | 57d |
|  | 7 | **PLUMBING WORK** |  | 2026-05-06 | 2026-08-06 |  |  |  |
| PG-T-PR-LL-PB-DL-10 |  | Booster Pump(Completed) | 39d | 2026-05-06 A | 2026-06-24 A | PG-T-PR-LL-PB-MF-10 SS | 100% |  |
| PG-T-PR-LL-PB-DL-20 |  | GRP Sectional Panel Water Tanks (4x3x3m)(Completed) | 39d | 2026-05-06 A | 2026-06-24 A | PG-T-PR-LL-PB-MF-20 SS | 100% |  |
| PG-T-PR-LL-PB-DL-10_R |  | Booster Pump(Remaining) | 12d | 2026-07-25 | 2026-08-06 | PG-T-PR-LL-PB-MF-10_R, PG-T-PR-LL-PB-DL-10 |  | 20d |
| PG-T-PR-LL-PB-DL-20_R |  | GRP Sectional Panel Water Tanks (4x3x3m)(Remaining) | 12d | 2026-07-25 | 2026-08-06 | PG-T-PR-LL-PB-MF-20_R, PG-T-PR-LL-PB-DL-20 |  | 43.2d |
|  | 8 | **IRRIGATION WORK** |  | 2026-05-06 | 2026-07-06 |  |  |  |
| PG-T-PR-LL-IR-DL-10 |  | HDPE Pipes(Completed) | 39d | 2026-05-06 A | 2026-06-24 A | PG-T-PR-LL-IR-MF-10 SS | 100% |  |
| PG-T-PR-LL-IR-DL-20 |  | Irrigation Control System(Completed) | 39d | 2026-05-06 A | 2026-06-24 A | PG-T-PR-LL-IR-MF-20 SS | 100% |  |
| PG-T-PR-LL-IR-DL-10_R |  | HDPE Pipes(Remaining) | 4d | 2026-07-01 | 2026-07-06 | PG-T-PR-LL-IR-MF-10_R, PG-T-PR-LL-IR-DL-10 |  | 13d |

| ID | WBS | Task | Duration | Start | Finish | Predecessors | Complete | Total float |
| --- | --- | --- | --- | --- | --- | --- | --- | --- |
| PG-T-PR-LL-IR-DL-20_R |  | Irrigation Control System(Remaining) | 4d | 2026-07-01 | 2026-07-06 | PG-T-PR-LL-IR-MF-20_R, PG-T-PR-LL-IR-DL-20 |  | 16.9d |
|  | 9 | **ELECTRICAL WORK** |  | 2026-05-13 | 2026-08-24 |  |  |  |
| PG-T-PR-LL-EL-DL-10 |  | Main Distribution Board(Completed) | 33d | 2026-05-13 A | 2026-06-24 A | PG-T-PR-LL-EL-MF-10 SS | 100% |  |
| PG-T-PR-LL-EL-DL-20 |  | Power Panels (Pump, Street Light)(Completed) | 33d | 2026-05-13 A | 2026-06-24 A | PG-T-PR-LL-EL-MF-20 SS | 100% |  |
| PG-T-PR-LL-EL-DL-30 |  | Site Lighting Poles(Completed) | 33d | 2026-05-13 A | 2026-06-24 A | PG-T-PR-LL-EL-MF-30 SS | 100% |  |
| PG-T-PR-LL-EL-DL-40 |  | Lighting Fixtures(Completed) | 33d | 2026-05-13 A | 2026-06-24 A | PG-T-PR-LL-EL-MF-40 SS | 100% |  |
| PG-T-PR-LL-EL-DL-50 |  | Grounding System Materials (Earth pit rod, LPS, etc)(Completed) | 33d | 2026-05-13 A | 2026-06-24 A | PG-T-PR-LL-EL-MF-50 SS | 100% |  |
| PG-T-PR-LL-EL-DL-60 |  | Telecommunications & Data System Materials (Telephone outlet, CCTV, etc)(Completed) | 33d | 2026-05-13 A | 2026-06-24 A | PG-T-PR-LL-EL-MF-60 SS | 100% |  |
| PG-T-PR-LL-EL-DL-70 |  | Security and Access Control System Materials(Completed) | 33d | 2026-05-13 A | 2026-06-24 A | PG-T-PR-LL-EL-MF-70 SS | 100% |  |
| PG-T-PR-LL-EL-DL-80 |  | Fire Alarm System Materials(Completed) | 33d | 2026-05-13 A | 2026-06-24 A | PG-T-PR-LL-EL-MF-80 SS | 100% |  |
| PG-T-PR-LL-EL-DL-50_R |  | Grounding System Materials (Earth pit rod, LPS, etc)(Remaining) | 4d | 2026-07-25 | 2026-07-28 | PG-T-PR-LL-EL-MF-50_R, PG-T-PR-LL-EL-DL-50 |  | 17d |
| PG-T-PR-LL-EL-DL-10_R |  | Main Distribution Board(Remaining) | 12d | 2026-08-11 | 2026-08-24 | PG-T-PR-LL-EL-MF-10_R, PG-T-PR-LL-EL-DL-10 |  | 2d |
| PG-T-PR-LL-EL-DL-20_R |  | Power Panels (Pump, Street Light)(Remaining) | 12d | 2026-08-11 | 2026-08-24 | PG-T-PR-LL-EL-MF-20_R, PG-T-PR-LL-EL-DL-20 |  | 7d |
| PG-T-PR-LL-EL-DL-30_R |  | Site Lighting Poles(Remaining) | 12d | 2026-08-11 | 2026-08-24 | PG-T-PR-LL-EL-MF-30_R, PG-T-PR-LL-EL-DL-30 |  | 14d |
| PG-T-PR-LL-EL-DL-40_R |  | Lighting Fixtures(Remaining) | 12d | 2026-08-11 | 2026-08-24 | PG-T-PR-LL-EL-MF-40_R, PG-T-PR-LL-EL-DL-40 |  | 10d |
| PG-T-PR-LL-EL-DL-60_R |  | Telecommunications & Data System Materials (Telephone outlet, CCTV, etc)(Remaining) | 12d | 2026-08-11 | 2026-08-24 | PG-T-PR-LL-EL-MF-60_R, PG-T-PR-LL-EL-DL-60 |  | 30d |
| PG-T-PR-LL-EL-DL-70_R |  | Security and Access Control System Materials(Remaining) | 12d | 2026-08-11 | 2026-08-24 | PG-T-PR-LL-EL-MF-70_R, PG-T-PR-LL-EL-DL-70 |  | 44d |
| PG-T-PR-LL-EL-DL-80_R |  | Fire Alarm System Materials(Remaining) | 12d | 2026-08-11 | 2026-08-24 | PG-T-PR-LL-EL-MF-80_R, PG-T-PR-LL-EL-DL-80 |  | 37d |
|  | 2 | **SHORT LEAD ITEMS** |  | 2026-02-26 | 2026-07-22 |  |  |  |
|  | 1 | **MATERIAL SUBMITTALS** |  |  |  |  |  |  |
|  | 2 | **PURCHASE ORDER** |  | 2026-02-26 | 2026-07-11 |  |  |  |
|  | 1 | **EXTERNAL / LANDSCAPE WORK** |  | 2026-02-26 | 2026-07-11 |  |  |  |
| PG-T-PR-SL-LS-PO-10 |  | Backfilling Materials | 44.25d | 2026-02-26 A | 2026-04-22 A | PG-T-PR-SL-LS-MA-10 | 100% |  |
| PG-T-PR-SL-LS-PO-30 |  | Compacted Natural Ground Soil | 42.25d | 2026-03-01 A | 2026-04-22 A | PG-T-PR-SL-LS-MA-30 | 100% |  |
| PG-T-PR-SL-LS-PO-20 |  | Interlock tiles | 28.25d | 2026-03-29 A | 2026-04-29 A | PG-T-PR-SL-LS-MA-20 | 100% |  |
| PG-T-PR-SL-LS-PO-40 |  | Curb Stone | 23.25d | 2026-04-04 A | 2026-04-29 A | PG-T-PR-SL-LS-MA-40 | 100% |  |
| PG-T-PR-SL-LS-PO-50 |  | Thermoplastic pavement road marking(Completed) | 35.25d | 2026-05-11 A | 2026-06-24 A | PG-T-PR-SL-LS-MA-50 | 100% |  |
| PG-T-PR-SL-LS-PO-60 |  | Traffic Signages(Completed) | 35.25d | 2026-05-11 A | 2026-06-24 A | PG-T-PR-SL-LS-MA-60 | 100% |  |
| PG-T-PR-SL-LS-PO-70 |  | Trees(Completed) | 35.25d | 2026-05-11 A | 2026-06-24 A | PG-T-PR-SL-LS-MA-70 | 100% |  |
| PG-T-PR-SL-LS-PO-80 |  | Lawn(Completed) | 35.25d | 2026-05-11 A | 2026-06-24 A | PG-T-PR-SL-LS-MA-80 | 100% |  |
| PG-T-PR-SL-LS-PO-50_R |  | Thermoplastic pavement road marking(Remaining) | 7d | 2026-06-25 | 2026-07-02 | PG-T-PR-SL-LS-MA-50, PG-T-PR-SL-LS-PO-50 |  | 77.2d |
| PG-T-PR-SL-LS-PO-70_R |  | Trees(Remaining) | 7d | 2026-06-25 | 2026-07-02 | PG-T-PR-SL-LS-MA-70, PG-T-PR-SL-LS-PO-70 |  | 84.2d |
| PG-T-PR-SL-LS-PO-80_R |  | Lawn(Remaining) | 7d | 2026-06-25 | 2026-07-02 | PG-T-PR-SL-LS-MA-80, PG-T-PR-SL-LS-PO-80 |  | 110.2d |
| PG-T-PR-SL-LS-PO-60_R |  | Traffic Signages(Remaining) | 7d | 2026-07-04 | 2026-07-11 | PG-T-PR-SL-LS-MA-60, PG-T-PR-SL-LS-PO-60, PG-T-PR-SL-LS-PO-50_R |  | 77.2d |
|  | 3 | **CONCRETE WORK** |  | 2026-03-02 | 2026-04-22 |  |  |  |
| PG-T-PR-SL-CO-PO-10 |  | Steel Rebar | 41.25d | 2026-03-02 A | 2026-04-22 A | PG-T-PR-SL-CO-MA-10 | 100% |  |
| PG-T-PR-SL-CO-PO-20 |  | Concrete | 36.25d | 2026-03-08 A | 2026-04-22 A | PG-T-PR-SL-CO-MA-20 | 100% |  |
| PG-T-PR-SL-CO-PO-40 |  | CMU Block | 33.25d | 2026-03-11 A | 2026-04-22 A | PG-T-PR-SL-CO-MA-40 | 100% |  |
| PG-T-PR-SL-CO-PO-50 |  | Concrete Repair & Protection Materials | 32.25d | 2026-03-12 A | 2026-04-22 A | PG-T-PR-SL-CO-MA-50 | 100% |  |
| PG-T-PR-SL-CO-PO-30 |  | Screed | 23.25d | 2026-03-28 A | 2026-04-22 A | PG-T-PR-SL-CO-MA-30 | 100% |  |
|  | 4 | **ARCHITECTURAL & FINISHES WORK** |  | 2026-05-05 | 2026-05-12 |  |  |  |
| PG-T-PR-SL-AR-PO-10 |  | Ceramic tiles | 7.25d | 2026-05-05 A | 2026-05-12 A | PG-T-PR-SL-AR-MA-10 | 100% |  |
| PG-T-PR-SL-AR-PO-100 |  | Specialities Materials (Toilet accessories, lockers, logo, etc) | 7.25d | 2026-05-05 A | 2026-05-12 A | PG-T-PR-SL-AR-MA-100 | 100% |  |
| PG-T-PR-SL-AR-PO-110 |  | Waterproofing System Materials | 7.25d | 2026-05-05 A | 2026-05-12 A | PG-T-PR-SL-AR-MA-110 | 100% |  |
| PG-T-PR-SL-AR-PO-20 |  | Anti-slip Granite tiles | 7.25d | 2026-05-05 A | 2026-05-12 A | PG-T-PR-SL-AR-MA-20 | 100% |  |
| PG-T-PR-SL-AR-PO-30 |  | Epoxy Paint | 7.25d | 2026-05-05 A | 2026-05-12 A | PG-T-PR-SL-AR-MA-30 | 100% |  |
| PG-T-PR-SL-AR-PO-40 |  | Cement Plaster | 7.25d | 2026-05-05 A | 2026-05-12 A | PG-T-PR-SL-AR-MA-40 | 100% |  |
| PG-T-PR-SL-AR-PO-50 |  | Acrylic Paint | 7.25d | 2026-05-05 A | 2026-05-12 A | PG-T-PR-SL-AR-MA-50 | 100% |  |
| PG-T-PR-SL-AR-PO-60 |  | Stone Cladding | 7.25d | 2026-05-05 A | 2026-05-12 A | PG-T-PR-SL-AR-MA-60 | 100% |  |
| PG-T-PR-SL-AR-PO-70 |  | Phenolic Partition | 7.25d | 2026-05-05 A | 2026-05-12 A | PG-T-PR-SL-AR-MA-70 | 100% |  |
| PG-T-PR-SL-AR-PO-80 |  | Glass Partition | 7.25d | 2026-05-05 A | 2026-05-12 A | PG-T-PR-SL-AR-MA-80 | 100% |  |
| PG-T-PR-SL-AR-PO-90 |  | Gypsum Boards | 7.25d | 2026-05-05 A | 2026-05-12 A | PG-T-PR-SL-AR-MA-90 | 100% |  |
|  | 5 | **METAL WORK** |  | 2026-05-05 | 2026-05-12 |  |  |  |
| PG-T-PR-SL-MT-PO-10 |  | Galvanized Steel Ladder | 7.25d | 2026-05-05 A | 2026-05-12 A | PG-T-PR-SL-MT-MA-10 | 100% |  |
| PG-T-PR-SL-MT-PO-20 |  | Galvanized Steel Roof Scupper | 7.25d | 2026-05-05 A | 2026-05-12 A | PG-T-PR-SL-MT-MA-20, PG-T-PR-SL-MT-PO-10 | 100% |  |
| PG-T-PR-SL-MT-PO-30 |  | Galvanized Steel Cover with frame | 7.25d | 2026-05-05 A | 2026-05-12 A | PG-T-PR-SL-MT-MA-30, PG-T-PR-SL-MT-PO-20 | 100% |  |
|  | 6 | **HVAC WORK** |  | 2026-05-05 | 2026-05-12 |  |  |  |
| PG-T-PR-SL-AC-PO-10 |  | Split Air Conditioning Unit | 7.25d | 2026-05-05 A | 2026-05-12 A | PG-T-PR-SL-AC-MA-10 | 100% |  |
| PG-T-PR-SL-AC-PO-20 |  | Air Duct | 7.25d | 2026-05-05 A | 2026-05-12 A | PG-T-PR-SL-AC-MA-20 | 100% |  |
| PG-T-PR-SL-AC-PO-30 |  | Diffusers and Grills | 7.25d | 2026-05-05 A | 2026-05-12 A | PG-T-PR-SL-AC-MA-30, PG-T-PR-SL-AC-PO-20 | 100% |  |
| PG-T-PR-SL-AC-PO-40 |  | Exhaust fans | 7.25d | 2026-05-05 A | 2026-05-12 A | PG-T-PR-SL-AC-MA-40, PG-T-PR-SL-AC-PO-10 | 100% |  |
|  | 7 | **PLUMBING WORK** |  | 2026-05-05 | 2026-05-12 |  |  |  |
| PG-T-PR-SL-PB-PO-10 |  | PPR Pipes & Valves | 7.25d | 2026-05-05 A | 2026-05-12 A | PG-T-PR-SL-PB-MA-10 | 100% |  |
| PG-T-PR-SL-PB-PO-20 |  | UPCV Pipes | 7.25d | 2026-05-05 A | 2026-05-12 A | PG-T-PR-SL-PB-MA-20 | 100% |  |
| PG-T-PR-SL-PB-PO-30 |  | Sanitary Drainage Fixtures | 7.25d | 2026-05-05 A | 2026-05-12 A | PG-T-PR-SL-PB-MA-30 | 100% |  |
|  | 8 | **IRRIGATION WORK** |  | 2026-05-05 | 2026-05-12 |  |  |  |
| PG-T-PR-SL-IR-PO-10 |  | Gate Valve including valve box | 7.25d | 2026-05-05 A | 2026-05-12 A | PG-T-PR-SL-IR-MA-10, PG-T-EN-ME-SD-AP-80, PG-T-EN-ME-SD-AP-90 | 100% |  |
| PG-T-PR-SL-IR-PO-20 |  | Bulbblers and Spreyers | 7.25d | 2026-05-05 A | 2026-05-12 A | PG-T-PR-SL-IR-MA-20, PG-T-EN-ME-SD-AP-90 | 100% |  |
|  | 9 | **ELECTRICAL WORK** |  | 2026-05-11 | 2026-07-02 |  |  |  |
| PG-T-PR-SL-EL-PO-10 |  | Wiring Devices Materials(Completed) | 35.25d | 2026-05-11 A | 2026-06-24 A | PG-T-PR-SL-EL-MA-10 | 100% |  |

| ID | WBS | Task | Duration | Start | Finish | Predecessors | Complete | Total float |
| --- | --- | --- | --- | --- | --- | --- | --- | --- |
| PG-T-PR-SL-EL-PO-10_R |  | Wiring Devices Materials(Remaining) | 7d | 2026-06-25 | 2026-07-02 | PG-T-PR-SL-EL-MA-10, PG-T-PR-SL-EL-PO-10 |  | 24d |
|  | 10 | **FIRE FIGHTING WORK** |  | 2026-05-11 | 2026-06-29 |  |  |  |
| PG-T-PR-SL-FF-PO-10 |  | Fire Extinguishers(Completed) | 35.25d | 2026-05-11 A | 2026-06-24 A | PG-T-PR-SL-FF-MA-10 | 100% |  |
| PG-T-PR-SL-FF-PO-10_R |  | Fire Extinguishers(Remaining) | 4d | 2026-06-25 | 2026-06-29 | PG-T-PR-SL-FF-MA-10, PG-T-PR-SL-FF-PO-10 |  | 28d |
|  | 3 | **DELIVERY TO SITE** |  | 2026-03-01 | 2026-07-22 |  |  |  |
|  | 1 | **EXTERNAL / LANDSCAPE WORK** |  | 2026-03-01 | 2026-07-22 |  |  |  |
| PG-T-PR-SL-LS-DL-10 |  | Backfilling Materials | 43d | 2026-03-01 A | 2026-04-24 A | PG-T-PR-SL-LS-PO-10 | 100% |  |
| PG-T-PR-SL-LS-DL-30 |  | Compacted Natural Ground Soil | 41d | 2026-03-03 A | 2026-04-24 A | PG-T-PR-SL-LS-PO-30 | 100% |  |
| PG-T-PR-SL-LS-DL-20 |  | Interlock tiles | 13d | 2026-04-29 A | 2026-05-13 A | PG-T-PR-SL-LS-PO-20, PG-T-PR-SL-LS-DL-10 | 100% |  |
| PG-T-PR-SL-LS-DL-40 |  | Curb Stone | 13d | 2026-04-29 A | 2026-05-13 A | PG-T-PR-SL-LS-PO-40, PG-T-PR-SL-LS-DL-10 | 100% |  |
| PG-T-PR-SL-LS-DL-50 |  | Thermoplastic pavement road marking | 1d | 2026-05-13 A | 2026-05-13 A | PG-T-PR-SL-LS-DL-40, PG-T-PR-SL-LS-PO-50 SS | 100% |  |
| PG-T-PR-SL-LS-DL-60 |  | Traffic Signages(Completed) | 33d | 2026-05-13 A | 2026-06-24 A | PG-T-PR-SL-LS-DL-50, PG-T-PR-SL-LS-PO-60 SS | 100% |  |
| PG-T-PR-SL-LS-DL-70 |  | Trees(Completed) | 33d | 2026-05-13 A | 2026-06-24 A | PG-T-PR-SL-LS-PO-70 SS, PG-T-PR-SL-LS-DL-60 SS | 100% |  |
| PG-T-PR-SL-LS-DL-80 |  | Lawn(Completed) | 33d | 2026-05-13 A | 2026-06-24 A | PG-T-PR-SL-LS-PO-80 SS, PG-T-PR-SL-LS-DL-70 SS | 100% |  |
| PG-T-PR-SL-LS-DL-60_R |  | Traffic Signages(Remaining) | 10d | 2026-07-12 | 2026-07-22 | PG-T-PR-SL-LS-DL-50, PG-T-PR-SL-LS-PO-60_R, PG-T-PR-SL-LS-DL-60 |  | 77.2d |
| PG-T-PR-SL-LS-DL-70_R |  | Trees(Remaining) | 10d | 2026-07-12 | 2026-07-22 | PG-T-PR-SL-LS-PO-70_R, PG-T-PR-SL-LS-DL-60_R SS, PG-T-PR-SL-LS-DL-70 |  | 77.2d |
| PG-T-PR-SL-LS-DL-80_R |  | Lawn(Remaining) | 10d | 2026-07-12 | 2026-07-22 | PG-T-PR-SL-LS-PO-80_R, PG-T-PR-SL-LS-DL-70_R SS, PG-T-PR-SL-LS-DL-80 |  | 103.2d |
|  | 3 | **CONCRETE WORK** |  | 2026-03-10 | 2026-05-13 |  |  |  |
| PG-T-PR-SL-CO-DL-20 |  | Concrete | 35d | 2026-03-10 A | 2026-04-24 A | PG-T-PR-SL-CO-PO-20, PG-T-PR-SL-CO-DL-10, PG-T-PR-SL-CO-DL-10 SS | 100% |  |
| PG-T-PR-SL-CO-DL-10 |  | Steel Rebar | 18d | 2026-04-23 A | 2026-05-13 A | PG-T-PR-SL-CO-PO-10 | 100% |  |
| PG-T-PR-SL-CO-DL-30 |  | Screed | 18d | 2026-04-23 A | 2026-05-13 A | PG-T-PR-SL-CO-PO-30, PG-T-PR-SL-CO-DL-20 | 100% |  |
| PG-T-PR-SL-CO-DL-40 |  | CMU Block | 18d | 2026-04-23 A | 2026-05-13 A | PG-T-PR-SL-CO-PO-40, PG-T-PR-SL-CO-DL-30, PG-T-PR-SL-CO-DL-30 SS | 100% |  |
| PG-T-PR-SL-CO-DL-50 |  | Concrete Repair & Protection Materials | 18d | 2026-04-23 A | 2026-05-13 A | PG-T-PR-SL-CO-PO-50, PG-T-PR-SL-CO-DL-40, PG-T-PR-SL-CO-DL-40 SS | 100% |  |
|  | 4 | **ARCHITECTURAL & FINISHES WORK** |  | 2026-05-06 | 2026-05-13 |  |  |  |
| PG-T-PR-SL-AR-DL-10 |  | Ceramic tiles | 7d | 2026-05-06 A | 2026-05-13 A | PG-T-PR-SL-AR-PO-10 | 100% |  |
| PG-T-PR-SL-AR-DL-100 |  | Specialities Materials (Toilet accessories, lockers, logo, etc) | 7d | 2026-05-06 A | 2026-05-13 A | PG-T-PR-SL-AR-PO-100 | 100% |  |
| PG-T-PR-SL-AR-DL-110 |  | Waterproofing System Materials | 7d | 2026-05-06 A | 2026-05-13 A | PG-T-PR-SL-AR-PO-110 | 100% |  |
| PG-T-PR-SL-AR-DL-20 |  | Anti-slip Granite tiles | 7d | 2026-05-06 A | 2026-05-13 A | PG-T-PR-SL-AR-PO-20, PG-T-PR-SL-AR-DL-10 | 100% |  |
| PG-T-PR-SL-AR-DL-30 |  | Epoxy Paint | 7d | 2026-05-06 A | 2026-05-13 A | PG-T-PR-SL-AR-PO-30, PG-T-PR-SL-AR-DL-20 | 100% |  |
| PG-T-PR-SL-AR-DL-40 |  | Cement Plaster | 7d | 2026-05-06 A | 2026-05-13 A | PG-T-PR-SL-AR-PO-40 | 100% |  |
| PG-T-PR-SL-AR-DL-50 |  | Acrylic Paint | 7d | 2026-05-06 A | 2026-05-13 A | PG-T-PR-SL-AR-PO-50, PG-T-PR-SL-AR-DL-40 | 100% |  |
| PG-T-PR-SL-AR-DL-60 |  | Stone Cladding | 7d | 2026-05-06 A | 2026-05-13 A | PG-T-PR-SL-AR-PO-60, PG-T-PR-SL-AR-DL-50 | 100% |  |
| PG-T-PR-SL-AR-DL-70 |  | Phenolic Partition | 7d | 2026-05-06 A | 2026-05-13 A | PG-T-PR-SL-AR-PO-70 | 100% |  |
| PG-T-PR-SL-AR-DL-80 |  | Glass Partition | 7d | 2026-05-06 A | 2026-05-13 A | PG-T-PR-SL-AR-PO-80 | 100% |  |
| PG-T-PR-SL-AR-DL-90 |  | Gypsum Boards | 7d | 2026-05-06 A | 2026-05-13 A | PG-T-PR-SL-AR-PO-90 | 100% |  |
|  | 5 | **METAL WORK** |  | 2026-05-06 | 2026-07-08 |  |  |  |
| PG-T-PR-SL-MT-DL-10 |  | Galvanized Steel Ladder(Completed) | 39d | 2026-05-06 A | 2026-06-24 A | PG-T-PR-SL-MT-PO-10 | 100% |  |
| PG-T-PR-SL-MT-DL-20 |  | Galvanized Steel Roof Scupper(Completed) | 39d | 2026-05-06 A | 2026-06-24 A | PG-T-PR-SL-MT-PO-20, PG-T-PR-SL-MT-DL-10 SS | 100% |  |
| PG-T-PR-SL-MT-DL-30 |  | Galvanized Steel Cover with frame(Completed) | 39d | 2026-05-06 A | 2026-06-24 A | PG-T-PR-SL-MT-PO-30, PG-T-PR-SL-MT-DL-20 SS | 100% |  |
| PG-T-PR-SL-MT-DL-10_R |  | Galvanized Steel Ladder(Remaining) | 12d | 2026-06-25 | 2026-07-08 | PG-T-PR-SL-MT-PO-10, PG-T-PR-SL-MT-DL-10 |  | 90d |
| PG-T-PR-SL-MT-DL-20_R |  | Galvanized Steel Roof Scupper(Remaining) | 12d | 2026-06-25 | 2026-07-08 | PG-T-PR-SL-MT-PO-20, PG-T-PR-SL-MT-DL-10_R SS, PG-T-PR-SL-MT-DL-20 |  | 90d |
| PG-T-PR-SL-MT-DL-30_R |  | Galvanized Steel Cover with frame(Remaining) | 12d | 2026-06-25 | 2026-07-08 | PG-T-PR-SL-MT-PO-30, PG-T-PR-SL-MT-DL-20_R SS, PG-T-PR-SL-MT-DL-30 |  | 90d |
|  | 6 | **HVAC WORK** |  | 2026-05-06 | 2026-05-13 |  |  |  |
| PG-T-PR-SL-AC-DL-10 |  | Split Air Conditioning Unit | 7d | 2026-05-06 A | 2026-05-13 A | PG-T-PR-SL-AC-PO-10 | 100% |  |
| PG-T-PR-SL-AC-DL-20 |  | Air Duct | 7d | 2026-05-06 A | 2026-05-13 A | PG-T-PR-SL-AC-PO-20 | 100% |  |
| PG-T-PR-SL-AC-DL-30 |  | Diffusers and Grills | 7d | 2026-05-06 A | 2026-05-13 A | PG-T-PR-SL-AC-PO-30, PG-T-PR-SL-AC-DL-20 | 100% |  |
| PG-T-PR-SL-AC-DL-40 |  | Exhaust fans | 7d | 2026-05-06 A | 2026-05-13 A | PG-T-PR-SL-AC-PO-40, PG-T-PR-SL-AC-DL-20 | 100% |  |
|  | 7 | **PLUMBING WORK** |  | 2026-05-06 | 2026-05-13 |  |  |  |
| PG-T-PR-SL-PB-DL-10 |  | PPR Pipes & Valves | 7d | 2026-05-06 A | 2026-05-13 A | PG-T-PR-SL-PB-PO-10 | 100% |  |
| PG-T-PR-SL-PB-DL-20 |  | UPCV Pipes | 7d | 2026-05-06 A | 2026-05-13 A | PG-T-PR-SL-PB-PO-20 | 100% |  |
| PG-T-PR-SL-PB-DL-30 |  | Sanitary Drainage Fixtures | 7d | 2026-05-06 A | 2026-05-13 A | PG-T-PR-SL-PB-PO-30, PG-T-PR-SL-PB-DL-20 | 100% |  |
|  | 8 | **IRRIGATION WORK** |  | 2026-05-06 | 2026-07-05 |  |  |  |
| PG-T-PR-SL-IR-DL-10 |  | Gate Valve including valve box(Completed) | 39d | 2026-05-06 A | 2026-06-24 A | PG-T-PR-SL-IR-PO-10 | 100% |  |
| PG-T-PR-SL-IR-DL-20 |  | Bulbblers and Spreyers(Completed) | 39d | 2026-05-06 A | 2026-06-24 A | PG-T-PR-SL-IR-PO-20 | 100% |  |
| PG-T-PR-SL-IR-DL-10_R |  | Gate Valve including valve box(Remaining) | 8.5d | 2026-06-25 | 2026-07-05 | PG-T-PR-SL-IR-PO-10, PG-T-PR-SL-IR-DL-10 |  | 13.6d |
| PG-T-PR-SL-IR-DL-20_R |  | Bulbblers and Spreyers(Remaining) | 8.5d | 2026-06-25 | 2026-07-05 | PG-T-PR-SL-IR-PO-20, PG-T-PR-SL-IR-DL-20 |  | 23.5d |
|  | 9 | **ELECTRICAL WORK** |  | 2026-05-13 | 2026-07-16 |  |  |  |
| PG-T-PR-SL-EL-DL-10 |  | Wiring Devices Materials(Completed) | 33d | 2026-05-13 A | 2026-06-24 A | PG-T-PR-SL-EL-PO-10 SS | 100% |  |
| PG-T-PR-SL-EL-DL-10_R |  | Wiring Devices Materials(Remaining) | 12d | 2026-07-04 | 2026-07-16 | PG-T-PR-SL-EL-PO-10_R, PG-T-PR-SL-EL-DL-10 |  | 24d |
|  | 10 | **FIRE FIGHTING WORK** |  | 2026-05-13 | 2026-07-09 |  |  |  |
| PG-T-PR-SL-FF-DL-10 |  | Fire Extinguishers(Completed) | 33d | 2026-05-13 A | 2026-06-24 A | PG-T-PR-SL-FF-PO-10 SS | 100% |  |
| PG-T-PR-SL-FF-DL-10_R |  | Fire Extinguishers(Remaining) | 9d | 2026-06-30 | 2026-07-09 | PG-T-PR-SL-FF-PO-10_R, PG-T-PR-SL-FF-DL-10 |  | 28d |
|  | CO | **CONSTRUCTION STAGE** |  | 2026-03-24 | 2026-12-14 |  |  |  |
|  | EX.SIT | **PLAYGROUND AND LANDSCAPING WORKS** |  | 2026-03-24 | 2026-12-14 |  |  |  |
|  | CF | **CUT AND FILL** |  | 2026-03-24 | 2026-05-06 |  |  |  |
| PG-T-CON-EX-CF-10 |  | Existing Soil Excavation Works | 22d | 2026-03-24 A | 2026-04-18 A | PG-T-EN-ST-SD-AP-10, PG-T-EN-ST-SD-AP-30, PG-T-MOB-SO-20, PG-T-GEN-10, PG-GN-MS-10 | 100% |  |
| PG-T-CON-EX-CF-20 |  | Soil Replacement Works | 18d | 2026-04-07 A | 2026-04-27 A | PG-T-CON-EX-CF-10, PG-T-PR-SL-LS-DL-30 | 100% |  |
| PG-T-CON-EX-CF-30 |  | Levelling & Backfilling Works | 17d | 2026-04-18 A | 2026-05-06 A | PG-T-CON-EX-CF-20, PG-T-PR-SL-LS-DL-10, PG-T-MOB-CAM-40 | 100% |  |
|  | 1 | **PLAYGROUND WORKS** |  | 2026-04-23 | 2026-12-07 |  |  |  |
|  | FP | **FOOTBALL PLAYGROUND WORKS** |  | 2026-04-23 | 2026-11-17 |  |  |  |

| ID | WBS | Task | Duration | Start | Finish | Predecessors | Complete | Total float |
| --- | --- | --- | --- | --- | --- | --- | --- | --- |
| PG-T-CON-EX-FB-10 |  | Subgrade Preparation and Compaction | 12d | 2026-04-23 A | 2026-05-06 A | PG-T-EN-LS-SD-AP-90, PG-T-CON-EX-CF-10, PG-T-CON-EX-CF-20, PG-T-CON-EX-CF-30, PG-T-EN-ST-SD-AP-10, PG-T-EN-ST-SD-AP-30 | 100% |  |
| PG-T-CON-EX-FB-20 |  | Sub-Base Laying and Compaction | 8d | 2026-04-28 A | 2026-05-06 A | PG-T-CON-EX-FB-10 | 100% |  |
| PG-T-CON-EX-FB-30 |  | Base Course Laying and Compaction | 33d | 2026-05-06 A | 2026-06-17 A | PG-T-CON-EX-FB-20 | 100% |  |
| PG-T-CON-EX-FB-70 |  | Topsoil Placement(Completed) | 33d | 2026-05-13 A | 2026-06-24 A | PG-T-CON-EX-FB-20 | 100% |  |
| PG-T-CON-EX-FB-80 |  | Fine Grading & Leveling | 15d | 2026-06-25 | 2026-07-12 | PG-T-CON-EX-FB-30 |  | 5.2d |
| PG-T-CON-EX-FB-70_R |  | Topsoil Placement(Remaining) | 15d | 2026-07-13 | 2026-07-29 | PG-T-CON-EX-FB-70, PG-T-CON-EX-FB-80 |  | 25d |
| PG-T-CON-EX-FB-50 |  | Goal Post Foundation | 17d | 2026-07-30 | 2026-08-18 | PG-T-CON-EX-FB-70_R |  | 25d |
| PG-T-CON-EX-FB-120 |  | Installation of Lighting System | 13d | 2026-08-19 | 2026-09-02 | PG-T-CON-EX-FB-50 |  | 25d |
| PG-T-CON-EX-FB-90 |  | Turfing / Seeding Works | 12d | 2026-09-03 | 2026-09-16 | PG-T-CON-EX-FB-120 |  | 25d |
| PG-T-CON-EX-FB-40 |  | Tartan flooring | 15d | 2026-09-17 | 2026-10-05 | PG-T-CON-EX-FB-30, PG-T-EN-LS-SD-AP-40, PG-T-PR-LL-SP-DL-40_R, PG-T-PR-LL-SP-DL-10_R, PG-T-CON-EX-FB-90 |  | 25d |
| PG-T-CON-EX-FB-60 |  | Goal Post Installation & Alignment | 15d | 2026-10-06 | 2026-10-22 | PG-T-CON-EX-FB-40 |  | 25d |
| PG-T-CON-EX-FB-110 |  | Install Playground Benches | 12d | 2026-10-24 | 2026-11-05 | PG-T-PR-LL-LS-DL-20_R, PG-T-CON-EX-FB-60 |  | 25d |
| PG-T-CON-EX-FB-100 |  | Markings and Signages | 10d | 2026-11-07 | 2026-11-17 | PG-T-CON-EX-FB-110 |  | 25d |
|  | BP | **BASKETBALL PLAYGROUND WORKS** |  | 2026-05-06 | 2026-11-17 |  |  |  |
| PG-T-CON-EX-BB-10 |  | Subgrade Preparation and Compaction | 1d | 2026-05-06 A | 2026-05-06 A | PG-T-CON-EX-FB-10, PG-T-EN-LS-SD-AP-110, PG-T-EN-LS-SD-AP-120, PG-T-CON-EX-FB-30 SS | 100% |  |
| PG-T-CON-EX-BB-20 |  | Sub-Base Laying and Compaction | 1d | 2026-05-06 A | 2026-05-06 A | PG-T-CON-EX-BB-10, PG-T-CON-EX-FB-20 | 100% |  |
| PG-T-CON-EX-BB-30 |  | Base Course Laying and Compaction | 33d | 2026-05-06 A | 2026-06-17 A | PG-T-CON-EX-BB-20 | 100% |  |
| PG-T-CON-EX-BB-70 |  | Floor Surface Curing(Completed) | 7d | 2026-06-17 A | 2026-06-24 A | PG-T-CON-EX-BB-30 | 100% |  |
| PG-T-CON-EX-BB-50 |  | Basketball Pole Foundation | 25d | 2026-06-25 | 2026-07-23 | PG-T-CON-EX-BB-30 |  | 25d |
| PG-T-CON-EX-BB-70_R |  | Floor Surface Curing(Remaining) | 15d | 2026-07-25 | 2026-08-10 | PG-T-CON-EX-BB-70, PG-T-CON-EX-BB-50 |  | 25d |
| PG-T-CON-EX-BB-40 |  | Tartan flooring | 17d | 2026-08-11 | 2026-08-30 | PG-T-CON-EX-BB-30, PG-T-EN-LS-SD-AP-40, PG-T-PR-LL-SP-DL-40_R, PG-T-CON-EX-BB-70_R |  | 25d |
| PG-T-CON-EX-BB-80 |  | Court Line Marking | 16d | 2026-08-31 | 2026-09-17 | PG-T-CON-EX-BB-40 |  | 25d |
| PG-T-CON-EX-BB-60 |  | Basketball Pole Installation & Alignment | 18d | 2026-09-19 | 2026-10-10 | PG-T-PR-LL-SP-DL-20_R, PG-T-CON-EX-BB-80 |  | 25d |
| PG-T-CON-EX-BB-90 |  | Backboard & Hoop Installation | 17d | 2026-10-11 | 2026-10-29 | PG-T-CON-EX-BB-60 |  | 25d |
| PG-T-CON-EX-BB-100 |  | Install Playground Benches | 16d | 2026-10-31 | 2026-11-17 | PG-T-PR-LL-LS-DL-20_R, PG-T-CON-EX-BB-90 |  | 25d |
|  | PP | **PADEL PLAYGROUND WORKS** |  | 2026-05-06 | 2026-12-07 |  |  |  |
| PG-T-CON-EX-PD-10 |  | Excavation For Fence Footing(Completed) | 39d | 2026-05-06 A | 2026-06-24 A | PG-T-CON-EX-CF-30, PG-T-EN-ST-SD-AP-30, PG-T-EN-LS-SD-AP-120, PG-T-CON-EX-BB-20 | 100% |  |
| PG-T-CON-EX-PD-20 |  | RC Foundations For Fence(Completed) | 13d | 2026-06-10 A | 2026-06-24 A | PG-T-EN-ST-SD-AP-40, PG-T-CON-EX-PD-10 SS | 100% |  |
| PG-T-CON-EX-PD-30 |  | Tartan Flooring Layers(Completed) | 7d | 2026-06-17 A | 2026-06-24 A | PG-T-EN-LS-SD-AP-40, PG-T-CON-EX-PD-20 SS, PG-T-PR-LL-SP-DL-40 SS | 100% |  |
| PG-T-CON-EX-PD-10_R |  | Excavation For Fence Footing(Remaining) | 8d | 2026-06-25 | 2026-07-04 | PG-T-CON-EX-CF-30, PG-T-EN-ST-SD-AP-30, PG-T-EN-LS-SD-AP-120, PG-T-CON-EX-BB-20, PG-T-CON-EX-PD-10 |  | 17d |
| PG-T-CON-EX-PD-20_R |  | RC Foundations For Fence(Remaining) | 20d | 2026-07-05 | 2026-07-27 | PG-T-EN-ST-SD-AP-40, PG-T-CON-EX-PD-10_R, PG-T-CON-EX-PD-20 |  | 17d |
| PG-T-CON-EX-PD-40 |  | Steel Structure & Fence Supports Installation | 20d | 2026-08-08 | 2026-08-30 | PG-T-EN-LS-SD-AP-130, PG-T-EN-LS-SD-AP-100, PG-T-PR-LL-LS-DL-30_R, PG-T-PR-LL-SP-DL-30_R, PG-T-PR-LL-SP-DL-30_R FF, PG-T-CON-EX-PD-20_R |  | 8d |
| PG-T-CON-EX-PD-60 |  | Chain Link Fence & Gates Installation | 18d | 2026-08-31 | 2026-09-20 | PG-T-EN-LS-SD-AP-130, PG-T-CON-EX-PD-40 |  | 8d |
| PG-T-CON-EX-PD-50 |  | Tempered Glass Installation | 18d | 2026-09-21 | 2026-10-12 | PG-T-EN-LS-SD-AP-130, PG-T-CON-EX-PD-60 |  | 8d |
| PG-T-CON-EX-PD-30_R |  | Tartan Flooring Layers(Remaining) | 17d | 2026-10-13 | 2026-11-01 | PG-T-EN-LS-SD-AP-40, PG-T-PR-LL-SP-DL-40_R SS, PG-T-CON-EX-PD-30, PG-T-CON-EX-PD-50 |  | 8d |
| PG-T-CON-EX-PD-70 |  | Court Accessories Installation | 16d | 2026-11-02 | 2026-11-19 | PG-T-CON-EX-PD-30_R |  | 8d |
| PG-T-CON-EX-PD-80 |  | Install Playground Benches | 15d | 2026-11-21 | 2026-12-07 | PG-T-PR-LL-LS-DL-20_R, PG-T-CON-EX-PD-70 |  | 8d |
|  | GN.SI | **GENERAL SITE WORKS** |  | 2026-04-16 | 2026-12-14 |  |  |  |
|  | 1 | **FENCE WORKS** |  | 2026-04-16 | 2026-08-17 |  |  |  |
| PG-T-CON-EX-GN-FN-10 |  | Excavation for fence foundation | 3d | 2026-04-16 A | 2026-04-19 A | PG-T-CON-EX-CF-30, PG-T-EN-ST-SD-AP-10, PG-T-CON-EX-CF-30 SS, PG-GN-MS-10 | 100% |  |
| PG-T-CON-EX-GN-FN-20 |  | Concrete Foundations for Fence | 12d | 2026-07-13 | 2026-07-26 | PG-T-CON-EX-GN-FN-10, PG-T-EN-ST-SD-AP-20, PG-T-PR-SL-CO-DL-10, PG-T-PR-SL-CO-DL-20, PG-T-PR-SL-CO-DL-10 SS, PG-GN-MS-10, PG-T-CON-EX-FB-80 |  | 5.2d |
| PG-T-CON-EX-GN-FN-30 |  | Installation of Galvanized Steel Posts & Framing | 7d | 2026-07-27 | 2026-08-03 | PG-T-CON-EX-GN-FN-20, PG-T-PR-LL-LS-DL-30_R, PG-T-PR-LL-LS-DL-30_R FF, PG-T-PR-LL-LS-DL-30_R SS |  | 5.2d |
| PG-T-CON-EX-GN-FN-40 |  | Fixing of Chain Link Mesh, Tensioning & Bracing | 6d | 2026-08-04 | 2026-08-10 | PG-T-CON-EX-GN-FN-30, PG-T-EN-ST-SD-AP-20 |  | 5.2d |
| PG-T-CON-EX-GN-FN-50 |  | Installation of Gates | 6d | 2026-08-11 | 2026-08-17 | PG-T-CON-EX-GN-FN-40 |  | 5.2d |
|  | 5 | **MECHANICAL WORK** |  | 2026-05-12 | 2026-08-10 |  |  |  |
|  | 2 | **STORM WATER AND UTILITY WORK** |  | 2026-05-12 | 2026-08-04 |  |  |  |
| PG-T-CON-EX-GN-M-10 |  | Excavation | 2d | 2026-05-12 A | 2026-05-13 A | PG-T-CON-EX-GN-FN-10, PG-T-CON-EX-GN-FN-10 FF, PG-T-EN-ST-SD-AP-10 | 100% |  |
| PG-T-CON-EX-GN-M-20 |  | Bedding preparation & level control(Completed) | 13d | 2026-06-10 A | 2026-06-24 A | PG-T-CON-EX-GN-M-10 | 100% |  |
| PG-T-CON-EX-GN-M-20_R |  | Bedding preparation & level control(Remaining) | 5d | 2026-06-25 | 2026-06-30 | PG-T-CON-EX-GN-M-10, PG-T-CON-EX-GN-M-20 |  | 6d |
| PG-T-CON-EX-GN-M-30 |  | Manhole Installation | 5d | 2026-07-01 | 2026-07-06 | PG-T-CON-EX-GN-M-20_R |  | 6d |
| PG-T-CON-EX-GN-M-40 |  | 150 mm uPVC pipe laying & jointing | 4d | 2026-07-07 | 2026-07-11 | PG-T-CON-EX-GN-M-30 |  | 6d |
| PG-T-CON-EX-GN-M-50 |  | Concrete Encasement | 3d | 2026-07-12 | 2026-07-14 | PG-T-CON-EX-GN-M-40, PG-T-PR-SL-CO-DL-10, PG-T-PR-SL-CO-DL-20 |  | 6d |
| PG-T-CON-EX-GN-M-60 |  | Backfilling & Compaction | 3d | 2026-07-15 | 2026-07-18 | PG-T-CON-EX-GN-M-50, PG-T-PR-SL-LS-DL-10 |  | 6d |
| PG-T-CON-EX-GN-M-70 |  | Surface Reinstatement & Civil Works | 4d | 2026-08-01 | 2026-08-04 | PG-T-CON-EX-GN-M-60, PG-T-PR-SL-CO-DL-50, PG-T-CON-EX-GN-M-100 |  | 6d |
|  | IR.SY | **IRRIGATION SYSTEM WORKS** |  | 2026-06-02 | 2026-07-30 |  |  |  |
| PG-T-CON-EX-GN-M-80 |  | Installation of HDPE Irrigation Pipe Network with Gate Valve and Box(Completed) | 20d | 2026-06-02 A | 2026-06-24 A | PG-T-EN-ME-SD-AP-80, PG-T-EN-ME-SD-AP-90, PG-T-CON-EX-GN-M-20 SS, PG-T-PR-LL-IR-DL-10 SS, PG-T-PR-SL-IR-DL-10 SS | 100% |  |
| PG-T-CON-EX-GN-M-80_R |  | Installation of HDPE Irrigation Pipe Network with Gate Valve and Box(Remaining) | 3.9d | 2026-07-14 | 2026-07-18 | PG-T-CON-EX-GN-M-60 FF, PG-T-EN-ME-SD-AP-80, PG-T-EN-ME-SD-AP-90, PG-T-CON-EX-GN-M-20_R SS, PG-T-PR-LL-IR-DL-10_R, PG-T-PR-SL-IR-DL-10_R, PG-T-CON-EX-GN-M-80 |  | 6d |
| PG-T-CON-EX-GN-M-90 |  | Installation of Irrigation Control System | 6d | 2026-07-19 | 2026-07-25 | PG-T-CON-EX-GN-M-80_R, PG-T-PR-LL-IR-DL-20_R |  | 6d |
| PG-T-CON-EX-GN-M-100 |  | Installation of Bubblers and Sprinklers | 5d | 2026-07-26 | 2026-07-30 | PG-T-CON-EX-GN-M-90, PG-T-PR-SL-IR-DL-20_R |  | 6d |
|  | 1 | **FIRE PROTECTION SYSTEM** |  | 2026-08-05 | 2026-08-10 |  |  |  |
| PG-T-CON-EX-GN-M-110 |  | Fire Extinguisher Installation | 5d | 2026-08-05 | 2026-08-10 | PG-T-CON-EX-GN-M-70, PG-T-PR-SL-FF-DL-10_R |  | 6d |
|  | 2 | **ELECTRICAL WORK** |  | 2026-06-08 | 2026-11-07 |  |  |  |
|  | 1 | **POWER, LIGHTING & GROUNDING** |  | 2026-06-08 | 2026-09-27 |  |  |  |
| PG-T-CON-EX-GN-E-10 |  | Excavation | 3d | 2026-06-08 A | 2026-06-10 A | PG-T-PR-SL-CO-DL-50 | 100% |  |
| PG-T-CON-EX-GN-E-20 |  | Foundation Work for Site Lighting Poles(Completed) | 13d | 2026-06-10 A | 2026-06-24 A | PG-T-CON-EX-GN-E-10, PG-T-PR-SL-CO-DL-10, PG-T-PR-SL-CO-DL-20 | 100% |  |
| PG-T-CON-EX-GN-E-20_R |  | Foundation Work for Site Lighting Poles(Remaining) | 21d | 2026-06-25 | 2026-07-19 | PG-T-CON-EX-GN-E-10, PG-T-PR-SL-CO-DL-10, PG-T-PR-SL-CO-DL-20, PG-T-CON-EX-GN-E-20 |  | 25d |
| PG-T-CON-EX-GN-E-30 |  | Lightning Protection System (LPS) | 8d | 2026-08-11 | 2026-08-19 | PG-T-CON-EX-GN-E-20_R, PG-T-PR-LL-EL-DL-50_R, PG-T-CON-EX-GN-M-110, PG-T-CON-EX-GN-M-70 |  | 6d |
| PG-T-CON-EX-GN-E-40 |  | KWH Meter and MDB Installation | 5d | 2026-08-25 | 2026-08-30 | PG-T-CON-EX-GN-E-30, PG-T-EN-EL-SD-AP-10, PG-T-PR-LL-EL-DL-10_R |  | 2d |
| PG-T-CON-EX-GN-E-50 |  | Power Panels and Distribution Boards | 7d | 2026-08-31 | 2026-09-07 | PG-T-CON-EX-GN-E-40, PG-T-EN-EL-SD-AP-20, PG-T-PR-LL-EL-DL-20_R |  | 2d |
| PG-T-CON-EX-GN-E-60 |  | Site Lighting Poles Installation | 6d | 2026-09-08 | 2026-09-14 | PG-T-CON-EX-GN-E-50, PG-T-EN-EL-SD-AP-30, PG-T-EN-EL-SD-AP-40, PG-T-PR-LL-EL-DL-30_R |  | 2d |

| ID | WBS | Task | Duration | Start | Finish | Predecessors | Complete | Total float |
| --- | --- | --- | --- | --- | --- | --- | --- | --- |
| PG-T-CON-EX-GN-E-70 |  | Wiring Works | 4d | 2026-09-15 | 2026-09-19 | PG-T-CON-EX-GN-E-60, PG-T-PR-SL-EL-DL-10_R |  | 2d |
| PG-T-CON-EX-GN-E-80 |  | Lighting Fixtures with outlets Installation | 6d | 2026-09-20 | 2026-09-27 | PG-T-CON-EX-GN-E-70, PG-T-PR-LL-EL-DL-40_R |  | 2d |
|  | 2 | **ELV SYSTEMS (TELECOM, DATA, AV & CCTV)** |  | 2026-09-28 | 2026-10-26 |  |  |  |
| PG-T-CON-EX-GN-E-90 |  | ELV Containment & Cabling Works | 3d | 2026-09-28 | 2026-09-30 | PG-T-CON-EX-GN-E-80, PG-T-PR-LL-EL-DL-60_R |  | 2d |
| PG-T-CON-EX-GN-E-100 |  | Fiber Optic Pull Box Installation | 3d | 2026-10-01 | 2026-10-04 | PG-T-CON-EX-GN-E-90, PG-T-EN-EL-SD-AP-50, PG-T-PR-LL-EL-DL-60_R |  | 2d |
| PG-T-CON-EX-GN-E-110 |  | Telephone and Data Outlet Installation | 4d | 2026-10-05 | 2026-10-08 | PG-T-CON-EX-GN-E-100, PG-T-EN-EL-SD-AP-50, PG-T-PR-LL-EL-DL-60_R |  | 2d |
| PG-T-CON-EX-GN-E-120 |  | Telecom Equipment and AV HDMI Installation | 4d | 2026-10-10 | 2026-10-13 | PG-T-CON-EX-GN-E-110, PG-T-EN-EL-SD-AP-80, PG-T-PR-LL-EL-DL-60_R |  | 2d |
| PG-T-CON-EX-GN-E-130 |  | CCTV Rack / Cabinet Installation | 4d | 2026-10-14 | 2026-10-18 | PG-T-CON-EX-GN-E-120, PG-T-EN-EL-SD-AP-60, PG-T-PR-LL-EL-DL-70_R |  | 2d |
| PG-T-CON-EX-GN-E-140 |  | NVR and CCTV Monitor Installation | 4d | 2026-10-19 | 2026-10-22 | PG-T-CON-EX-GN-E-130, PG-T-EN-EL-SD-AP-70, PG-T-PR-LL-EL-DL-70_R |  | 2d |
| PG-T-CON-EX-GN-E-150 |  | IP Camera Installation | 3d | 2026-10-24 | 2026-10-26 | PG-T-CON-EX-GN-E-140, PG-T-PR-LL-EL-DL-70_R |  | 2d |
|  | 3 | **FIRE ALARM SYSTEM** |  | 2026-10-01 | 2026-11-07 |  |  |  |
| PG-T-CON-EX-GN-E-160 |  | Fire Alarm Containment & Cabling | 8d | 2026-10-01 | 2026-10-10 | PG-T-EN-EL-SD-AP-110, PG-T-EN-EL-SD-AP-90, PG-T-PR-LL-EL-DL-80_R, PG-T-CON-EX-GN-E-90 |  | 6d |
| PG-T-CON-EX-GN-E-170 |  | Fire Alarm Control Panel (FACP) Installation | 8d | 2026-10-11 | 2026-10-19 | PG-T-CON-EX-GN-E-160, PG-T-EN-EL-SD-AP-110 |  | 6d |
| PG-T-CON-EX-GN-E-180 |  | Initiating Devices (Detectors & Manual Pull Station) | 8d | 2026-10-20 | 2026-10-28 | PG-T-CON-EX-GN-E-170, PG-T-EN-EL-SD-AP-100 |  | 6d |
| PG-T-CON-EX-GN-E-190 |  | Notification Appliances (Strobe with Sounder) | 8d | 2026-10-29 | 2026-11-07 | PG-T-CON-EX-GN-E-180 |  | 6d |
|  | 3 | **PARKING WORK** |  | 2026-06-17 | 2026-11-11 |  |  |  |
| PG-T-CON-EX-GN-PR-20 |  | Interlock tiles(Completed) | 7d | 2026-06-17 A | 2026-06-24 A | PG-T-EN-LS-SD-AP-20, PG-T-PR-SL-LS-DL-20 | 100% |  |
| PG-T-CON-EX-GN-PR-10 |  | Installlation of Parking Accessories | 7d | 2026-10-27 | 2026-11-03 | PG-T-CON-EX-GN-E-150 |  | 2d |
| PG-T-CON-EX-GN-PR-20_R |  | Interlock tiles(Remaining) | 7d | 2026-10-27 | 2026-11-03 | PG-T-CON-EX-GN-PR-10 FF, PG-T-CON-B-AR-RF-30 FF, PG-T-CON-B-AR-WF-60 FF, PG-T-CON-B-AR-GF-80 FF, PG-T-EN-LS-SD-AP-20, PG-T-PR-SL-LS-DL-20, PG-T-CON-EX-GN-PR-20 |  | 2d |
| PG-T-CON-EX-GN-PR-30 |  | Marking & Signages | 7d | 2026-11-04 | 2026-11-11 | PG-T-CON-EX-GN-PR-20_R, PG-T-EN-LS-SD-AP-80, PG-T-PR-SL-LS-DL-50, PG-T-PR-SL-LS-DL-60_R, PG-T-CON-EX-GN-E-190 FF |  | 2d |
|  | 4 | **SERVICE CONNECTION** |  | 2026-06-10 | 2026-12-14 |  |  |  |
| PG-T-CON-EX-GN-SC-10 |  | Excavation & Trench Preparation(Completed) | 13d | 2026-06-10 A | 2026-06-24 A | PG-T-CON-EX-GN-PR-20 | 100% |  |
| PG-T-CON-EX-GN-SC-10_R |  | Excavation & Trench Preparation(Remaining) | 7d | 2026-11-04 | 2026-11-11 | PG-T-CON-EX-GN-PR-30 FF, PG-T-CON-EX-GN-SC-10 |  | 2d |
| PG-T-CON-EX-GN-SC-20 |  | HDPE Pipe Laying & Valve Installation | 10d | 2026-11-12 | 2026-11-23 | PG-T-CON-EX-GN-SC-10_R |  | 2d |
| PG-T-CON-EX-GN-SC-30 |  | Connection to City Network | 10d | 2026-11-24 | 2026-12-05 | PG-T-CON-EX-GN-SC-20 |  | 2d |
| PG-T-CON-EX-GN-SC-40 |  | Backfilling | 8d | 2026-12-06 | 2026-12-14 | PG-T-PR-SL-LS-DL-10, PG-T-CON-EX-GN-SC-30 |  | 2d |
|  | LS | **LANDSCAPING WORKS** |  | 2026-05-30 | 2026-11-22 |  |  |  |
|  | HSP | **HARDSCAPE WORK** |  | 2026-05-30 | 2026-11-22 |  |  |  |
| PG-T-CON-EX-LS-HS-10 |  | Curbstone Installation(Completed) | 22d | 2026-05-30 A | 2026-06-24 A | PG-T-EN-LS-SD-AP-10, PG-T-PR-SL-LS-DL-40 | 100% |  |
| PG-T-CON-EX-LS-HS-20 |  | Interlock Tiles Grey Scale with Black Marble Chips(Completed) | 22d | 2026-05-30 A | 2026-06-24 A | PG-T-CON-EX-LS-HS-10 SS | 100% |  |
| PG-T-CON-EX-LS-HS-40 |  | Bike Path and Walking Path Construction(Completed) | 22d | 2026-05-30 A | 2026-06-24 A | PG-T-EN-LS-SD-AP-50, PG-T-EN-LS-SD-AP-60, PG-T-CON-EX-LS-HS-30 SS, PG-T-PR-LL-LS-DL-10 SS | 100% |  |
| PG-T-CON-EX-LS-HS-50 |  | Install Recycled Precast Concrete Seats(Completed) | 22d | 2026-05-30 A | 2026-06-24 A | PG-T-CON-EX-LS-HS-40 SS, PG-T-PR-LL-LS-DL-20 SS | 100% |  |
| PG-T-CON-EX-LS-HS-30 |  | Stamped Concrete Floor(Completed) | 13d | 2026-06-10 A | 2026-06-24 A | PG-T-EN-LS-SD-AP-30, PG-T-CON-EX-LS-HS-20 SS | 100% |  |
| PG-T-CON-EX-LS-HS-10_R |  | Curbstone Installation(Remaining) | 8d | 2026-09-17 | 2026-09-27 | PG-T-CON-EX-GN-FN-50 FF, PG-T-CON-EX-TW-IR-40 FF, PG-T-CON-EX-TW-ST-70 FF, PG-T-EN-LS-SD-AP-10, PG-T-PR-SL-LS-DL-40, PG-T-CON-EX-LS-HS-10 |  | 5.2d |
| PG-T-CON-EX-LS-HS-20_R |  | Interlock Tiles Grey Scale with Black Marble Chips(Remaining) | 10d | 2026-09-28 | 2026-10-08 | PG-T-CON-EX-LS-HS-10_R, PG-T-CON-EX-LS-HS-20 |  | 5.2d |
| PG-T-CON-EX-LS-HS-30_R |  | Stamped Concrete Floor(Remaining) | 10d | 2026-10-10 | 2026-10-20 | PG-T-EN-LS-SD-AP-30, PG-T-CON-EX-LS-HS-20_R, PG-T-CON-EX-LS-HS-30 |  | 5.2d |
| PG-T-CON-EX-LS-HS-40_R |  | Bike Path and Walking Path Construction(Remaining) | 8d | 2026-10-21 | 2026-10-29 | PG-T-CON-EX-LS-SS-10 FF, PG-T-EN-LS-SD-AP-50, PG-T-EN-LS-SD-AP-60, PG-T-CON-EX-LS-HS-30_R, PG-T-PR-LL-LS-DL-10_R, PG-T-CON-EX-LS-HS-40 |  | 5.2d |
| PG-T-CON-EX-LS-HS-50_R |  | Install Recycled Precast Concrete Seats(Remaining) | 10d | 2026-10-31 | 2026-11-10 | PG-T-CON-EX-LS-HS-40_R, PG-T-PR-LL-LS-DL-20_R SS, PG-T-CON-EX-LS-HS-50 |  | 5.2d |
| PG-T-CON-EX-LS-HS-60 |  | Install Recycled Precast Concrete Trash Bins | 10d | 2026-11-11 | 2026-11-22 | PG-T-CON-EX-LS-HS-50_R |  | 5.2d |
|  | SSP | **SOFTSCAPE WORK** |  | 2026-06-10 | 2026-11-22 |  |  |  |
| PG-T-CON-EX-LS-SS-20 |  | Lawn Area Preparation & Planting / Turfing(Completed) | 13d | 2026-06-10 A | 2026-06-24 A | PG-T-EN-LS-SD-AP-70, PG-T-PR-SL-LS-DL-80 SS | 100% |  |
| PG-T-CON-EX-LS-SS-10 |  | Planting Trees | 12d | 2026-10-10 | 2026-10-22 | PG-T-EN-LS-SD-AP-70, PG-T-PR-SL-LS-DL-70_R, PG-T-CON-EX-LS-HS-20_R |  | 11.2d |
| PG-T-CON-EX-LS-SS-20_R |  | Lawn Area Preparation & Planting / Turfing(Remaining) | 6d | 2026-11-16 | 2026-11-22 | PG-T-CON-EX-LS-SS-10 FF, PG-T-CON-EX-LS-HS-60 FF, PG-T-EN-LS-SD-AP-70, PG-T-PR-SL-LS-DL-80_R, PG-T-CON-EX-LS-SS-20 |  | 5.2d |
|  | W.T | **TANK WORKS** |  | 2026-05-13 | 2026-09-27 |  |  |  |
|  | 1 | **SEPTIC TANK** |  | 2026-05-13 | 2026-09-03 |  |  |  |
| PG-T-CON-EX-TW-ST-10 |  | Excavation | 21d | 2026-05-13 A | 2026-06-10 A | PG-T-CON-EX-CF-30 | 100% |  |
| PG-T-CON-EX-TW-ST-20 |  | PCC / Lean Concrete laying | 27d | 2026-05-20 A | 2026-06-24 A | PG-T-CON-EX-TW-ST-10, PG-T-CON-EX-TW-ST-10 SS | 100% |  |
| PG-T-CON-EX-TW-ST-30 |  | RCC Foundation(Completed) | 1d | 2026-06-24 A | 2026-06-24 A | PG-T-CON-EX-TW-ST-20, PG-T-EN-ST-SD-AP-110, PG-T-EN-ST-SD-AP-120, PG-T-CON-EX-TW-ST-20 SS | 100% |  |
| PG-T-CON-EX-TW-ST-30_R |  | RCC Foundation(Remaining) | 10d | 2026-06-25 | 2026-07-06 | PG-T-CON-EX-TW-ST-20, PG-T-EN-ST-SD-AP-110, PG-T-EN-ST-SD-AP-120, PG-T-CON-EX-TW-ST-20 SS, PG-T-CON-EX-TW-ST-30 |  | 19.2d |
| PG-T-CON-EX-TW-ST-40 |  | RCC Wall | 9d | 2026-07-07 | 2026-07-16 | PG-T-CON-EX-TW-ST-30_R |  | 19.2d |
| PG-T-CON-EX-TW-ST-50 |  | RCC Slab | 13d | 2026-07-18 | 2026-08-01 | PG-T-CON-EX-TW-ST-40 |  | 19.2d |
| PG-T-CON-EX-TW-ST-60 |  | Finishing Work | 8d | 2026-08-18 | 2026-08-26 | PG-T-CON-EX-TW-ST-50, PG-T-CON-EX-GN-FN-50 |  | 5.2d |
| PG-T-CON-EX-TW-ST-70 |  | Backfilling | 7d | 2026-08-27 | 2026-09-03 | PG-T-CON-EX-TW-ST-60 |  | 5.2d |
|  | 2 | **WATER STORAGE TANK** |  | 2026-05-13 | 2026-09-27 |  |  |  |
| PG-T-CON-EX-TW-IR-10 |  | Excavation(Completed) | 33d | 2026-05-13 A | 2026-06-24 A | PG-T-EN-ST-SD-AP-90 | 100% |  |
| PG-T-CON-EX-TW-IR-20 |  | RCC Foundation(Completed) | 13d | 2026-06-10 A | 2026-06-24 A | PG-T-EN-ST-SD-AP-100, PG-T-CON-EX-TW-IR-10 SS | 100% |  |
| PG-T-CON-EX-TW-IR-10_R |  | Excavation(Remaining) | 6d | 2026-08-29 | 2026-09-03 | PG-T-CON-EX-TW-ST-70 FF, PG-T-EN-ST-SD-AP-90, PG-T-CON-EX-TW-IR-10 |  | 5.2d |
| PG-T-CON-EX-TW-IR-20_R |  | RCC Foundation(Remaining) | 8d | 2026-09-05 | 2026-09-13 | PG-T-EN-ST-SD-AP-100, PG-T-CON-EX-TW-IR-10_R, PG-T-CON-EX-TW-IR-20 |  | 5.2d |
| PG-T-CON-EX-TW-IR-30 |  | Backfilling | 6d | 2026-09-14 | 2026-09-20 | PG-T-CON-EX-TW-IR-20_R |  | 5.2d |
| PG-T-CON-EX-TW-IR-40 |  | GRP Water Tank Installation | 5d | 2026-09-21 | 2026-09-27 | PG-T-CON-EX-TW-IR-30, PG-T-EN-ME-SD-AP-40, PG-T-PR-LL-PB-DL-20_R |  | 5.2d |
|  | AD | **AIR DOME CONSTRUCTION** |  | 2026-05-13 | 2026-12-03 |  |  |  |
|  | 1 | **CIVIL WORK** |  | 2026-05-13 | 2026-09-14 |  |  |  |
| PG-T-CON-EX-AD-CL-10 |  | Excavation For Footing(Completed) | 33d | 2026-05-13 A | 2026-06-24 A | PG-T-CON-EX-FB-10 | 100% |  |
| PG-T-CON-EX-AD-CL-10_R |  | Excavation For Footing(Remaining) | 7d | 2026-07-05 | 2026-07-12 | PG-T-EN-ST-SD-AP-50 FF, PG-T-CON-EX-FB-10, PG-T-CON-EX-AD-CL-10 |  | 9d |
| PG-T-CON-EX-AD-CL-20 |  | Anti-Termite Treatment | 1d | 2026-07-13 | 2026-07-13 | PG-T-CON-EX-AD-CL-10_R |  | 9d |
| PG-T-CON-EX-AD-CL-30 |  | PCC / Blinding Concrete | 3d | 2026-07-25 | 2026-07-27 | PG-T-CON-EX-AD-CL-20, PG-T-EN-ST-SD-AP-60 |  | 0d |
| PG-T-CON-EX-AD-CL-40 |  | RCC Foundation Works | 9d | 2026-07-28 | 2026-08-06 | PG-T-CON-EX-AD-CL-30, PG-T-EN-ST-SD-AP-60, PG-T-PR-SL-CO-DL-10, PG-T-PR-SL-CO-DL-20 |  | 0d |
| PG-T-CON-EX-AD-CL-50 |  | Backfilling with Compaction | 8d | 2026-08-08 | 2026-08-16 | PG-T-CON-EX-AD-CL-40, PG-T-PR-SL-LS-DL-10 |  | 0d |
| PG-T-CON-EX-AD-CL-60 |  | Installation of Anchorage System | 8d | 2026-08-17 | 2026-08-25 | PG-T-CON-EX-AD-CL-50, PG-T-PR-LL-SP-DL-50 SS |  | 0d |
| PG-T-CON-EX-AD-CL-70 |  | Installation of Steel Cable Structural System | 9d | 2026-08-26 | 2026-09-05 | PG-T-CON-EX-AD-CL-60, PG-T-EN-AR-SD-AP-120 |  | 0d |

| ID | WBS | Task | Duration | Start | Finish | Predecessors | Complete | Total float |
| --- | --- | --- | --- | --- | --- | --- | --- | --- |
| PG-T-CON-EX-AD-CL-80 |  | Installation of Membrane System | 8d | 2026-09-06 | 2026-09-14 | PG-T-CON-EX-AD-CL-70, PG-T-EN-AR-SD-AP-110 |  | 0d |
|  | 2 | **ARCHITECTURAL WORK** |  | 2026-11-05 | 2026-12-03 |  |  |  |
| PG-T-CON-EX-AD-AR-10 |  | Installation of Thermal Insulation System | 7d | 2026-11-05 | 2026-11-12 | PG-T-CON-EX-AD-CL-80, PG-T-PR-LL-SP-DL-50, PG-T-EN-AR-SD-AP-110, PG-T-CON-EX-AD-EL-50, PG-T-CON-EX-AD-EL-20, PG-T-CON-EX-AD-CL-80 FF |  | 0d |
| PG-T-CON-EX-AD-AR-40 |  | Final Fixing of Accessories & Finishes | 7d | 2026-11-14 | 2026-11-21 | PG-T-CON-EX-AD-CL-80, PG-T-CON-EX-AD-AR-10 |  | 0d |
| PG-T-CON-EX-AD-AR-20 |  | Installation of Doors & Access Systems | 6d | 2026-11-22 | 2026-11-28 | PG-T-CON-EX-AD-AR-10, PG-T-EN-AR-SD-AP-130, PG-T-CON-EX-AD-AR-40 |  | 0d |
| PG-T-CON-EX-AD-AR-30 |  | Installation of Logo | 5d | 2026-11-29 | 2026-12-03 | PG-T-CON-EX-AD-AR-20, PG-T-CON-EX-AD-AR-40 |  | 0d |
|  | 3 | **MECHANICAL WORK** |  | 2026-09-15 | 2026-10-12 |  |  |  |
| PG-T-CON-EX-AD-ME-10 |  | Installation of Main Air Package Units | 5d | 2026-09-15 | 2026-09-20 | PG-T-PR-LL-SP-DL-50, PG-T-EN-ME-SD-AP-100, PG-T-CON-EX-AD-CL-80 |  | 0d |
| PG-T-CON-EX-AD-ME-20 |  | Installation of Backup Air Package Unit | 5d | 2026-09-21 | 2026-09-27 | PG-T-CON-EX-AD-ME-10, PG-T-EN-ME-SD-AP-100 |  | 0d |
| PG-T-CON-EX-AD-ME-30 |  | Installation of Complete HVAC System | 6d | 2026-10-06 | 2026-10-12 | PG-T-CON-EX-AD-ME-20, PG-T-CON-EX-AD-EL-10, PG-T-EN-ME-SD-AP-100 |  | 1d |
|  | 4 | **ELECTRICAL WORK** |  | 2026-09-28 | 2026-11-04 |  |  |  |
| PG-T-CON-EX-AD-EL-10 |  | Installation of Electrical Boxes & MDBs | 7d | 2026-09-28 | 2026-10-05 | PG-T-PR-LL-SP-DL-50, PG-T-EN-EL-SD-AP-120, PG-T-CON-EX-AD-ME-20 |  | 0d |
| PG-T-CON-EX-AD-EL-20 |  | Installation of Lighting System | 7d | 2026-10-06 | 2026-10-13 | PG-T-CON-EX-AD-EL-10, PG-T-EN-EL-SD-AP-120 |  | 0d |
| PG-T-CON-EX-AD-EL-30 |  | Electrical Connections to Main Power Source (Excluding kWh Meter) | 5d | 2026-10-14 | 2026-10-19 | PG-T-CON-EX-AD-EL-20, PG-T-CON-EX-AD-ME-30 |  | 0d |
| PG-T-CON-EX-AD-EL-40 |  | Installation of Backup Generator | 6d | 2026-10-20 | 2026-10-26 | PG-T-CON-EX-AD-EL-30, PG-T-EN-EL-SD-AP-130 |  | 0d |
| PG-T-CON-EX-AD-EL-50 |  | Installation of Smart Dome System | 8d | 2026-10-27 | 2026-11-04 | PG-T-CON-EX-AD-EL-40, PG-T-EN-EL-SD-AP-140 |  | 0d |
|  | B | **TOILET BUILDING WORKS** |  | 2026-05-12 | 2026-10-28 |  |  |  |
|  | CVL | **CIVIL WORK** |  | 2026-05-12 | 2026-10-26 |  |  |  |
|  | ST | **STRUCTURAL WORK** |  | 2026-05-12 | 2026-08-01 |  |  |  |
| PG-T-CON-B-STR-10 |  | Excavation up to bottom of footing | 2d | 2026-05-12 A | 2026-05-13 A | PG-T-EN-ST-SD-AP-70, PG-Q-MOB-CAM-40 | 100% |  |
| PG-T-CON-B-STR-20 |  | Anti-termite treatment and Polyethene Sheet | 2d | 2026-05-12 A | 2026-05-13 A | PG-T-CON-B-STR-10 | 100% |  |
| PG-T-CON-B-STR-30 |  | Backfilling with selected fill material (under footing) | 1d | 2026-05-13 A | 2026-05-13 A | PG-T-CON-B-STR-20, PG-T-PR-SL-LS-DL-10 | 100% |  |
| PG-T-CON-B-STR-40 |  | Raft Foundation Work | 27d | 2026-05-13 A | 2026-06-17 A | PG-T-CON-B-STR-30, PG-T-EN-ST-SD-AP-80, PG-T-PR-SL-CO-DL-10, PG-T-PR-SL-CO-DL-20 | 100% |  |
| PG-T-CON-B-STR-50 |  | Autoclaved aerated panel (walls) | 9d | 2026-07-07 | 2026-07-16 | PG-T-CON-B-STR-40, PG-T-PR-LL-CO-DL-10_R |  | 0d |
| PG-T-CON-B-STR-60 |  | Autoclaved aerated panel (ceiling) | 9d | 2026-07-18 | 2026-07-27 | PG-T-CON-B-STR-50, PG-T-PR-LL-CO-DL-10_R |  | 0d |
| PG-T-CON-B-STR-70 |  | Autoclaved aerated panel (parapet) | 4d | 2026-07-28 | 2026-08-01 | PG-T-CON-B-STR-60, PG-T-PR-LL-CO-DL-10_R |  | 0d |
|  | AR | **ARCHITECTURAL WORK** |  | 2026-08-02 | 2026-10-26 |  |  |  |
|  | 1 | **GENERAL FINISHES** |  | 2026-08-02 | 2026-10-21 |  |  |  |
| PG-T-CON-B-AR-GF-10 |  | Block Works | 6d | 2026-08-02 | 2026-08-08 | PG-T-CON-B-STR-70, PG-T-EN-AR-SD-AP-10, PG-T-EN-AR-SD-AP-40, PG-T-PR-SL-CO-DL-40 |  | 0d |
| PG-T-CON-B-AR-GF-20 |  | Plaster | 7d | 2026-08-18 | 2026-08-25 | PG-T-CON-B-AR-GF-10, PG-T-CON-B-GF-EL-10, PG-T-PR-SL-AR-DL-40 |  | 0d |
| PG-T-CON-B-AR-GF-30 |  | False Ceiling Installation & Finishing | 8d | 2026-08-26 | 2026-09-03 | PG-T-CON-B-AR-GF-20, PG-T-CON-B-GF-DR-20_R, PG-T-EN-AR-SD-AP-60, PG-T-PR-SL-AR-DL-90 |  | 0d |
| PG-T-CON-B-AR-GF-40 |  | Wall Paint | 10d | 2026-09-19 | 2026-09-30 | PG-T-CON-B-AR-GF-30, PG-T-PR-SL-AR-DL-50, PG-T-CON-B-GF-EL-20 |  | 0d |
| PG-T-CON-B-AR-GF-50 |  | Epoxy Flooring | 7d | 2026-10-01 | 2026-10-08 | PG-T-CON-B-AR-GF-40, PG-T-EN-AR-SD-AP-50, PG-T-PR-SL-AR-DL-30 |  | 4d |
| PG-T-CON-B-AR-GF-60 |  | Install Doors & Windows | 4d | 2026-10-10 | 2026-10-13 | PG-T-CON-B-AR-GF-50, PG-T-EN-AR-SD-AP-30, PG-T-EN-AR-SD-AP-80, PG-T-EN-AR-SD-AP-40, PG-T-PR-LL-MT-DL-10_R |  | 9d |
| PG-T-CON-B-AR-GF-80 |  | Facade Finishing Work | 9d | 2026-10-10 | 2026-10-19 | PG-T-EN-AR-SD-AP-90, PG-T-EN-AR-SD-AP-100, PG-T-PR-LL-MT-DL-20_R, PG-T-PR-SL-AR-DL-60, PG-T-CON-B-AR-GF-50 |  | 4d |
| PG-T-CON-B-AR-GF-70 |  | Lockers and Furniture Installation | 2d | 2026-10-20 | 2026-10-21 | PG-T-CON-B-AR-GF-60, PG-T-CON-B-AR-GF-80 |  | 4d |
|  | 2 | **WET AREA FINISHES** |  | 2026-08-26 | 2026-10-13 |  |  |  |
| PG-T-CON-B-AR-WF-10 |  | False Ceiling Installation & Finishing | 4d | 2026-08-26 | 2026-08-30 | PG-T-CON-B-AR-GF-30 SS, PG-T-EN-AR-SD-AP-60, PG-T-PR-SL-AR-DL-90 |  | 0d |
| PG-T-CON-B-AR-WF-20 |  | Wall Tiles and Partition Work | 3d | 2026-10-01 | 2026-10-04 | PG-T-CON-B-AR-WF-10, PG-T-CON-B-AR-GF-40, PG-T-EN-AR-SD-AP-70, PG-T-EN-AR-SD-AP-30, PG-T-PR-SL-AR-DL-10, PG-T-PR-SL-AR-DL-70, PG-T-PR-SL-AR-DL-80, PG-T-CON-B-GF-WS-20 |  | 0d |
| PG-T-CON-B-AR-WF-30 |  | Waterproofing on Floor | 2d | 2026-10-05 | 2026-10-06 | PG-T-CON-B-AR-WF-20, PG-T-EN-AR-SD-AP-50, PG-T-PR-SL-CO-DL-30, PG-T-PR-SL-AR-DL-110 |  | 0d |
| PG-T-CON-B-AR-WF-40 |  | Floor Tiles Works | 3d | 2026-10-07 | 2026-10-10 | PG-T-CON-B-AR-WF-30, PG-T-PR-SL-AR-DL-20 |  | 13d |
| PG-T-CON-B-AR-WF-50 |  | Toliet accessories Installation Works | 3d | 2026-10-11 | 2026-10-13 | PG-T-CON-B-AR-WF-40, PG-T-EN-AR-SD-AP-70, PG-T-PR-SL-AR-DL-100 |  | 13d |
| PG-T-CON-B-AR-WF-60 |  | Install Doors | 2d | 2026-10-11 | 2026-10-12 | PG-T-EN-AR-SD-AP-30, PG-T-EN-AR-SD-AP-80, PG-T-EN-AR-SD-AP-40, PG-T-PR-LL-MT-DL-10_R, PG-T-CON-B-AR-WF-40 |  | 14d |
|  | 3 | **ROOF FINISHES** |  | 2026-10-07 | 2026-10-26 |  |  |  |
| PG-T-CON-B-AR-RF-10 |  | Waterproofing on Floor | 7d | 2026-10-07 | 2026-10-14 | PG-T-CON-B-AR-WF-30, PG-T-EN-AR-SD-AP-20, PG-T-PR-SL-CO-DL-30, PG-T-PR-SL-AR-DL-110 |  | 0d |
| PG-T-CON-B-AR-RF-20 |  | Epoxy Flooring and Finishes | 7d | 2026-10-15 | 2026-10-22 | PG-T-CON-B-AR-RF-10, PG-T-PR-SL-AR-DL-30 |  | 0d |
| PG-T-CON-B-AR-RF-30 |  | Steel ladder and Steel roof scupper Installation | 3d | 2026-10-24 | 2026-10-26 | PG-T-CON-B-AR-RF-20, PG-T-PR-SL-MT-DL-10_R, PG-T-PR-SL-MT-DL-20_R, PG-T-PR-SL-MT-DL-30_R, PG-T-CON-B-AR-GF-70 FF |  | 0d |
|  | MEP | **MEP WORK** |  | 2026-06-16 | 2026-10-28 |  |  |  |
|  | MEC | **MECANICAL WORKS** |  | 2026-06-16 | 2026-10-28 |  |  |  |
|  | FF | **FIRE FIGHTING SYSTEM** |  | 2026-10-27 | 2026-10-28 |  |  |  |
| PG-T-CON-B-GF-FF-10 |  | Fire Extinguisher Installation | 2d | 2026-10-27 | 2026-10-28 | PG-T-PR-SL-FF-DL-10_R, PG-T-CON-B-AR-RF-30 |  | 0d |
|  | DS | **SEWER AND DRAINAGE SYSTEM** |  | 2026-06-16 | 2026-09-05 |  |  |  |
| PG-T-CON-B-GF-DR-10 |  | Sewer and Drainge System Main Lines Installation(Completed) | 8d | 2026-06-16 A | 2026-06-24 A | PG-T-EN-ME-SD-AP-50, PG-T-PR-SL-PB-DL-20 | 100% |  |
| PG-T-CON-B-GF-DR-20 |  | Sewer and Drainge System Pipes and fittings Installation(Completed) | 8d | 2026-06-16 A | 2026-06-24 A | PG-T-EN-ME-SD-AP-60, PG-T-EN-ME-SD-AP-70, PG-T-PR-SL-PB-DL-20, PG-T-PR-SL-PB-DL-30, PG-T-CON-B-GF-DR-10 SS | 100% |  |
| PG-T-CON-B-GF-DR-10_R |  | Sewer and Drainge System Main Lines Installation(Remaining) | 1.4d | 2026-08-12 | 2026-08-13 | PG-T-CON-B-GF-WS-10 FF, PG-T-EN-ME-SD-AP-50, PG-T-PR-SL-PB-DL-20, PG-T-CON-B-GF-DR-10 |  | 0d |
| PG-T-CON-B-GF-DR-20_R |  | Sewer and Drainge System Pipes and fittings Installation(Remaining) | 1.4d | 2026-08-15 | 2026-08-16 | PG-T-CON-B-GF-WS-20 FF, PG-T-EN-ME-SD-AP-60, PG-T-EN-ME-SD-AP-70, PG-T-PR-SL-PB-DL-20, PG-T-PR-SL-PB-DL-30, PG-T-CON-B-GF-DR-10_R SS, PG-T-CON-B-GF-DR-20 |  | 8d |
| PG-T-CON-B-GF-DR-30 |  | Sanitaryware Installation (Final Fix) | 2d | 2026-09-03 | 2026-09-05 | PG-T-CON-B-GF-DR-20_R, PG-T-CON-B-GF-WS-30, PG-T-EN-ME-SD-AP-70 |  | 0d |
|  | HV | **HVAC SYSTEM** |  | 2026-08-09 | 2026-10-12 |  |  |  |
| PG-T-CON-B-GF-AC-10 |  | Duct Work and Exhaust Fan Installation | 3d | 2026-08-09 | 2026-08-11 | PG-T-CON-B-AR-GF-10, PG-T-PR-SL-AC-DL-20, PG-T-PR-SL-AC-DL-40 |  | 0d |
| PG-T-CON-B-GF-AC-20 |  | Split AC, Grills & Diffuser Installation | 2d | 2026-10-11 | 2026-10-12 | PG-T-CON-B-GF-AC-10, PG-T-CON-B-AR-GF-20, PG-T-PR-SL-AC-DL-10, PG-T-PR-SL-AC-DL-30, PG-T-CON-B-AR-WF-40 |  | 14d |
|  | WS | **WATER SUPPLY SYSTEM** |  | 2026-08-12 | 2026-09-02 |  |  |  |
| PG-T-CON-B-GF-WS-10 |  | Water Supply Main Lines Installation | 2d | 2026-08-12 | 2026-08-13 | PG-T-CON-B-GF-AC-10, PG-T-EN-ME-SD-AP-10, PG-T-PR-SL-PB-DL-10 |  | 0d |
| PG-T-CON-B-GF-WS-20 |  | Water Supply Pipes Installation (Cold and Hot Water) | 2d | 2026-08-15 | 2026-08-16 | PG-T-CON-B-GF-WS-10, PG-T-EN-ME-SD-AP-10, PG-T-PR-SL-PB-DL-10 |  | 8d |
| PG-T-CON-B-GF-WS-30 |  | Water Supply Accesories and Booster pump Installation | 3d | 2026-08-31 | 2026-09-02 | PG-T-CON-B-GF-WS-20, PG-T-CON-B-AR-WF-10, PG-T-EN-ME-SD-AP-20, PG-T-EN-ME-SD-AP-30, PG-T-PR-LL-PB-DL-10_R |  | 0d |
|  | ELC | **ELECTRICAL WORKS** |  | 2026-08-15 | 2026-09-17 |  |  |  |
| PG-T-CON-B-GF-EL-10 |  | Pipes & Conduits Installation | 3d | 2026-08-15 | 2026-08-17 | PG-T-CON-B-GF-DR-10_R, PG-T-PR-SL-EL-DL-10_R |  | 0d |
| PG-T-CON-B-GF-EL-50 |  | Electrical Light Fixtures Installation | 2d | 2026-09-06 | 2026-09-07 | PG-T-CON-B-GF-DR-30, PG-T-PR-LL-EL-DL-40_R |  | 0d |
| PG-T-CON-B-GF-EL-30 |  | Fire Alarm Devices Installation | 3d | 2026-09-08 | 2026-09-10 | PG-T-CON-B-GF-EL-50 |  | 0d |
| PG-T-CON-B-GF-EL-40 |  | Telecom & CCTV Devices Installation | 3d | 2026-09-12 | 2026-09-14 | PG-T-CON-B-GF-EL-30 |  | 0d |
| PG-T-CON-B-GF-EL-20 |  | Electrical & ELV Wiring Works | 3d | 2026-09-15 | 2026-09-17 | PG-T-CON-B-GF-EL-40 |  | 0d |

| ID | WBS | Task | Duration | Start | Finish | Predecessors | Complete | Total float |
| --- | --- | --- | --- | --- | --- | --- | --- | --- |
|  | TE & CO | **PROJECT CLOSOUT** |  | 2026-05-25 | 2026-12-16 |  |  |  |
| PG-T-PCL-10 |  | Testing, Commessioning for All Systems(Completed) | 23d | 2026-05-25 A | 2026-06-24 A | PG-T-CON-EX-LS-SS-20 SS | 100% |  |
| PG-T-PCL-10_R |  | Testing, Commessioning for All Systems(Remaining) | 10.8d | 2026-11-22 | 2026-12-03 | PG-T-CON-B-GF-EL-20 FF, PG-T-CON-B-GF-WS-30 FF, PG-T-CON-B-GF-AC-20 FF, PG-T-CON-B-GF-DR-30 FF, PG-T-CON-B-GF-FF-10 FF, PG-T-CON-EX-AD-AR-30 FF, PG-T-CON-EX-AD-EL-50 FF, PG-T-CON-EX-AD-ME-30 FF, PG-T-CON-EX-LS-SS-20_R SS, PG-T-PCL-10 |  | 0d |
| PG-T-PCL-20 |  | As-Built Drawings | 15d | 2026-11-22 | 2026-12-09 | PG-T-PCL-10_R SS |  | 4.8d |
| PG-T-PCL-30 |  | Snag list Submission | 2d | 2026-12-05 | 2026-12-06 | PG-T-PCL-10_R, PG-T-CON-EX-AD-AR-30 |  | 0d |
| PG-T-PCL-40 |  | Snag list Closeout | 7d | 2026-12-07 | 2026-12-14 | PG-T-PCL-30, PG-T-PCL-20 FF |  | 0d |
| PG-T-PCL-50 |  | Issuing Approvals | 1d | 2026-12-15 | 2026-12-15 | PG-T-PCL-40, PG-T-PCL-20 |  | 0d |
| PG-T-PCL-60 |  | Handing Over | 1d | 2026-12-16 | 2026-12-16 | PG-T-PCL-50 |  | 0d |

## Version 2 (data date 2026-09-25, saved 2026-09-26, file 02. MLTX-02-003-UPS Level 5 - 2026-09-27.xer)

Last finish 2026-12-16 → 2027-01-27 (+42d). Complete tasks 1254 → 1556.

Changed:

| ID | Task | Start | Finish | Complete | Total float | Predecessors |
| --- | --- | --- | --- | --- | --- | --- |
| MS | **MILESTONES** |  | 2026-12-16 → 2027-01-27 (+42d) |  |  |  |
| 1 | **GENERAL MILESTONES** |  | 2026-12-16 → 2027-01-27 (+42d) |  |  |  |
| PG-GN-MS-30_R | Project Durations(Remaining) | 2026-06-25 → 2026-07-01 A (+6d) | 2026-12-15 → 2026-12-20 (+5d) | 0% → 50% | 1.5d → -2.75d |  |
| PG-GN-MS-20 | Project Completion Date | 2026-12-16 → 2027-01-27 (+42d) | 2026-12-16 → 2027-01-27 (+42d) |  | 0d → -35.4d |  |
| 2 | **CONTRACUAL MILESTONES** |  | 2026-12-16 → 2027-01-27 (+42d) |  |  |  |
| PG-IN-MS-10 | Site Preparation, Work Plans, Schedule ,Drawings Submittals | 2026-08-04 → 2026-09-16 A (+43d) | 2026-08-04 → 2026-09-16 A (+43d) | 0% → 100% | 6d → none |  |
| PG-IN-MS-30 | Completion of Toilet Building | 2026-10-28 → 2026-11-17 (+20d) | 2026-10-28 → 2026-11-17 (+20d) |  | 0d → 2.7d |  |
| PG-IN-MS-50 | Completion of Playground Works | 2026-12-07 → 2026-12-06 (-1d) | 2026-12-07 → 2026-12-06 (-1d) |  | 8d → 9.3d |  |
| PG-IN-MS-40 | Completion of Landscape Works | 2026-12-16 → 2027-01-20 (+35d) | 2026-12-16 → 2027-01-20 (+35d) |  | 0d → -29.4d |  |
| PG-IN-MS-60 | Substantial Completion - All Works | 2026-12-16 → 2027-01-27 (+42d) | 2026-12-16 → 2027-01-27 (+42d) |  | 0d → -35.4d |  |
| QASSIM | **QASSIM** |  | 2026-12-16 → 2027-01-19 (+34d) |  |  |  |
| ENG | **ENGINEERING** |  | 2026-08-16 → 2026-10-18 (+63d) |  |  |  |
| 1 | **SHOP DRAWINGS SUBMITTALS** |  | 2026-08-04 → 2026-09-27 (+54d) |  |  |  |
| 1 | **STRUCTURAL DRAWINGS** |  | 2026-07-06 → 2026-07-11 (+5d) |  |  |  |
| 3 | **AIR DOME** | 2026-06-25 → 2026-07-01 (+6d) | 2026-07-06 → 2026-07-11 (+5d) |  |  |  |
| PG-Q-EN-ST-SD-SB-50 | Excavation Drawings | 2026-06-25 → 2026-07-01 A (+6d) | 2026-07-04 → 2026-07-02 A (-2d) | 0% → 100% | 0d → none |  |
| PG-Q-EN-ST-SD-SB-60 | Foundation Drawings | 2026-06-25 → 2026-07-07 A (+12d) | 2026-07-06 → 2026-07-11 A (+5d) | 0% → 100% | 3d → none |  |
| 2 | **ARCHITECTURAL DRAWINGS** |  | 2026-07-23 → 2026-09-10 (+49d) |  |  |  |
| 2 | **AIR DOME** | 2026-07-07 → 2026-08-14 (+38d) | 2026-07-23 → 2026-09-10 (+49d) |  |  |  |
| PG-Q-EN-AR-SD-SB-110 | Membrane & Insulation Details | 2026-07-07 → 2026-08-14 A (+38d) | 2026-07-23 → 2026-09-10 A (+49d) | 0% → 100% | 9d → none |  |
| PG-Q-EN-AR-SD-SB-120 | Steel Cable System | 2026-07-07 → 2026-08-14 A (+38d) | 2026-07-23 → 2026-09-10 A (+49d) | 0% → 100% | 9d → none |  |
| PG-Q-EN-AR-SD-SB-130 | Doors & Access Sytem Drawings | 2026-07-07 → 2026-08-14 A (+38d) | 2026-07-23 → 2026-09-10 A (+49d) | 0% → 100% | 9d → none |  |
| 4 | **MECHANICAL DRAWINGS** |  | 2026-07-15 → 2026-09-27 (+74d) |  |  |  |
| 4 | **AIR DOME** | 2026-06-25 → 2026-07-30 (+35d) | 2026-07-15 → 2026-09-27 (+74d) |  |  |  |
| PG-Q-EN-ME-SD-SB-100 | Air Package and HVAC System Drawings | 2026-06-25 → 2026-07-30 A (+35d) | 2026-07-15 → 2026-09-27 (+74d) | 0% → 90% | 0d → -28.4d |  |
| 5 | **ELECTRICAL DRAWINGS** |  | 2026-08-04 → 2026-09-27 (+54d) |  |  |  |
| 4 | **AIR DOME** | 2026-07-16 → 2026-07-30 (+14d) | 2026-08-04 → 2026-09-27 (+54d) |  |  |  |
| PG-Q-EN-EL-SD-SB-120 | Power & Lighting System Drawings | 2026-07-16 → 2026-07-30 A (+14d) | 2026-07-27 → 2026-09-26 (+61d) | 0% → 90% | 13d → -27.6d | PG-Q-EN-EL-SD-SB-90, PG-Q-EN-ME-SD-SB-100 → PG-Q-EN-EL-SD-SB-90, PG-Q-EN-ME-SD-SB-100 SS |
| PG-Q-EN-EL-SD-SB-130 | Generators Details | 2026-07-16 → 2026-07-30 A (+14d) | 2026-08-02 → 2026-09-27 (+56d) | 0% → 90% | 0d → -28.1d | PG-Q-EN-ME-SD-SB-100 → PG-Q-EN-ME-SD-SB-100 SS |
| PG-Q-EN-EL-SD-SB-140 | Smart Dome System Drawings | 2026-07-16 → 2026-07-30 A (+14d) | 2026-08-04 → 2026-09-27 (+54d) | 0% → 90% | 0d → -28.3d | PG-Q-EN-ME-SD-SB-100 → PG-Q-EN-ME-SD-SB-100 SS |
| 2 | **SHOP DRAWINGS APPROVALS** |  | 2026-08-16 → 2026-09-21 (+36d) |  |  |  |
| 1 | **STRUCTURAL DRAWINGS** |  | 2026-07-14 → 2026-07-12 (-2d) |  |  |  |
| 3 | **AIR DOME** | 2026-07-05 → 2026-07-06 (+1d) | 2026-07-14 → 2026-07-12 (-2d) |  |  |  |
| PG-Q-EN-ST-SD-AP-50 | Excavation Drawings | 2026-07-05 → 2026-07-06 A (+1d) | 2026-07-08 → 2026-07-07 A (-1d) | 0% → 100% | 0d → none |  |
| PG-Q-EN-ST-SD-AP-60 | Foundation Drawings | 2026-07-07 → 2026-07-08 A (+1d) | 2026-07-14 → 2026-07-12 A (-2d) | 0% → 100% | 3d → none | PG-Q-EN-ST-SD-SB-30, PG-Q-EN-ST-SD-SB-60 → PG-Q-EN-ST-SD-SB-30, PG-Q-EN-ST-SD-SB-60 SS |
| 2 | **ARCHITECTURAL DRAWINGS** |  | 2026-08-01 → 2026-09-21 (+51d) |  |  |  |
| 2 | **AIR DOME** | 2026-07-25 → 2026-08-20 (+26d) | 2026-08-01 → 2026-09-21 (+51d) |  |  |  |
| PG-Q-EN-AR-SD-AP-110 | Membrane & Insulation Details | 2026-07-25 → 2026-08-20 A (+26d) | 2026-08-01 → 2026-09-21 A (+51d) | 0% → 100% | 9d → none | PG-Q-EN-AR-SD-SB-110 → PG-Q-EN-AR-SD-SB-110, PG-Q-EN-AR-SD-SB-110 SS |
| PG-Q-EN-AR-SD-AP-120 | Steel Cable System | 2026-07-25 → 2026-08-20 A (+26d) | 2026-08-01 → 2026-09-21 A (+51d) | 0% → 100% | 9d → none | PG-Q-EN-AR-SD-SB-120 → PG-Q-EN-AR-SD-SB-120, PG-Q-EN-AR-SD-SB-120 SS |
| PG-Q-EN-AR-SD-AP-130 | Doors & Access Sytem Drawings | 2026-07-25 → 2026-08-20 A (+26d) | 2026-08-01 → 2026-09-21 A (+51d) | 0% → 100% | 9d → none | PG-Q-EN-AR-SD-SB-130 → PG-Q-EN-AR-SD-SB-130, PG-Q-EN-AR-SD-SB-130 SS |
| 4 | **MECHANICAL DRAWINGS** |  | 2026-07-27 → 2026-09-21 (+56d) |  |  |  |
| 4 | **AIR DOME** | 2026-07-16 → 2026-08-20 (+35d) | 2026-07-27 → 2026-09-21 (+56d) |  |  |  |
| PG-Q-EN-ME-SD-AP-100 | Air Package and HVAC System Drawings | 2026-07-16 → 2026-08-20 A (+35d) | 2026-07-27 → 2026-09-21 A (+56d) | 0% → 100% | 13d → none | PG-Q-EN-ME-SD-SB-100 → PG-Q-EN-ME-SD-SB-100, PG-Q-EN-ME-SD-SB-100 SS |
| 5 | **ELECTRICAL DRAWINGS** |  | 2026-08-16 → 2026-09-21 (+36d) |  |  |  |
| 4 | **AIR DOME** | 2026-07-28 → 2026-08-20 (+23d) | 2026-08-16 → 2026-09-21 (+36d) |  |  |  |
| PG-Q-EN-EL-SD-AP-120 | Power & Lighting System Drawings | 2026-07-28 → 2026-08-20 A (+23d) | 2026-08-16 → 2026-09-21 A (+36d) | 0% → 100% | 14d → none | PG-Q-EN-EL-SD-SB-120 → PG-Q-EN-EL-SD-SB-120, PG-Q-EN-EL-SD-SB-120 SS |
| PG-Q-EN-EL-SD-AP-130 | Generators Details | 2026-08-03 → 2026-08-20 A (+17d) | 2026-08-11 → 2026-09-21 A (+41d) | 0% → 100% | 0d → none | PG-Q-EN-EL-SD-SB-130 → PG-Q-EN-EL-SD-SB-130, PG-Q-EN-EL-SD-SB-130 SS |
| PG-Q-EN-EL-SD-AP-140 | Smart Dome System Drawings | 2026-08-05 → 2026-08-20 A (+15d) | 2026-08-11 → 2026-09-21 A (+41d) | 0% → 100% | 0d → none | PG-Q-EN-EL-SD-SB-140 → PG-Q-EN-EL-SD-SB-140, PG-Q-EN-EL-SD-SB-140 SS |
| 3 | **MATERIAL SUBMITTALS** |  | 2026-07-16 → 2026-08-20 (+35d) |  |  |  |
| 1 | **LONG LEAD ITEMS** |  | 2026-07-16 → 2026-08-20 (+35d) |  |  |  |
| 3 | **SPORTS & RECREATIONAL FACILITIES WORK** |  | 2026-07-16 → 2026-08-20 (+35d) |  |  |  |
| PG-Q-PR-LL-SP-MS-50_R | Air Dome Materials(Remaining) | 2026-06-25 → 2026-06-30 A (+5d) | 2026-07-16 → 2026-08-20 A (+35d) | 0% → 100% | 0d → none |  |
| 4 | **MATERIAL APPROVALS** |  | 2026-07-18 → 2026-10-18 (+92d) |  |  |  |
| 1 | **LONG LEAD ITEMS** |  | 2026-07-18 → 2026-10-18 (+92d) |  |  |  |
| 3 | **SPORTS & RECREATIONAL FACILITIES WORK** |  | 2026-06-30 → 2026-09-19 (+81d) |  |  |  |
| PG-Q-PR-LL-SP-MA-50_R | Air Dome Materials(Remaining) | 2026-06-25 → 2026-07-02 A (+7d) | 2026-06-30 → 2026-09-19 A (+81d) | 0% → 100% | 0d → none |  |
| 5 | **METAL WORK** |  | 2026-07-18 → 2026-10-18 (+92d) |  |  |  |
| PG-Q-PR-LL-MT-MA-10_R | Metal Doors(Remaining) | 2026-06-25 → 2026-09-26 (+93d) | 2026-07-12 → 2026-10-12 (+92d) |  | 81d → 26.2d |  |
| PG-Q-PR-LL-MT-MA-20_R | Curtain Wall(Remaining) | 2026-06-25 → 2026-09-26 (+93d) | 2026-07-18 → 2026-10-18 (+92d) |  | 79d → 22.7d |  |
| 7 | **PLUMBING WORK** | 2026-06-09 → 2026-05-20 (-20d) | 2026-07-18 → 2026-06-24 (-24d) |  |  |  |
| PG-Q-PR-LL-PB-MA-10_R | Booster Pump(Remaining) | 2026-06-25 → 2026-05-20 A (-36d) | 2026-07-18 → 2026-05-21 A (-58d) | 0% → 100% | 42d → none |  |
| PG-Q-PR-LL-PB-MA-20_R | GRP Sectional Panel Water Tanks (4x3x3m)(Remaining) | 2026-06-25 → 2026-06-03 A (-22d) | 2026-07-12 → 2026-06-06 A (-36d) | 0% → 100% | 38d → none |  |
| 9 | **ELECTRICAL WORK** |  | 2026-07-02 → 2026-09-16 (+76d) |  |  |  |
| PG-Q-PR-LL-EL-MA-40_R | Lighting Fixtures(Remaining) | 2026-06-25 → 2026-07-12 A (+17d) | 2026-07-02 → 2026-07-23 A (+21d) | 0% → 100% | 12d → none |  |
| PG-Q-PR-LL-EL-MA-10_R | Main Distribution Board(Remaining) | 2026-06-25 → 2026-07-30 A (+35d) | 2026-07-02 → 2026-09-16 A (+76d) | 0% → 100% | 10d → none |  |
| PG-Q-PR-LL-EL-MA-20_R | Power Panels (Pump, Street Light)(Remaining) | 2026-06-25 → 2026-07-30 A (+35d) | 2026-07-02 → 2026-09-16 A (+76d) | 0% → 100% | 27d → none |  |
| PG-Q-PR-LL-EL-MA-30_R | Site Lighting Poles(Remaining) | 2026-06-25 → 2026-07-30 A (+35d) | 2026-07-02 → 2026-09-16 A (+76d) | 0% → 100% | 17d → none |  |
| PG-Q-PR-LL-EL-MA-50_R | Grounding System Materials (Earth pit rod, LPS, etc)(Remaining) | 2026-06-25 → 2026-07-30 A (+35d) | 2026-07-02 → 2026-09-16 A (+76d) | 0% → 100% | 7d → none |  |
| PG-Q-PR-LL-EL-MA-60_R | Telecommunications & Data System Materials (Telephone outlet, CCTV, etc)(Remaining) | 2026-06-25 → 2026-07-30 A (+35d) | 2026-07-02 → 2026-09-16 A (+76d) | 0% → 100% | 27d → none |  |
| PG-Q-PR-LL-EL-MA-70_R | Security and Access Control System Materials(Remaining) | 2026-06-25 → 2026-08-27 A (+63d) | 2026-07-02 → 2026-09-16 A (+76d) | 0% → 100% | 41d → none |  |

| ID | Task | Start | Finish | Complete | Total float | Predecessors |
| --- | --- | --- | --- | --- | --- | --- |
| PG-Q-PR-LL-EL-MA-80_R | Fire Alarm System Materials(Remaining) | 2026-06-25 → 2026-08-27 A (+63d) | 2026-07-02 → 2026-09-16 A (+76d) | 0% → 100% | 30d → none |  |
| PR | **PROCUREMENT** |  | 2026-08-27 → 2026-11-10 (+75d) |  |  |  |
| 1 | **LONG LEAD ITEMS** |  | 2026-08-27 → 2026-11-10 (+75d) |  |  |  |
| 2 | **PURCHASE ORDER** |  | 2026-07-12 → 2026-09-16 (+66d) |  |  |  |
| PG-Q-PR-LL-SP-PO-50 | Air Dome Materials | 2026-07-01 → 2026-07-08 A (+7d) | 2026-07-09 A | 0% → 100% | 0d → none | PG-Q-PR-LL-SP-MA-50_R → PG-Q-PR-LL-SP-MA-50_R SS |
| 9 | **ELECTRICAL WORK** |  | 2026-07-12 → 2026-09-16 (+66d) |  |  |  |
| PG-Q-PR-LL-EL-PO-40_R | Lighting Fixtures(Remaining) | 2026-07-04 → 2026-07-23 A (+19d) | 2026-07-12 → 2026-09-16 A (+66d) | 0% → 100% | 12d → none |  |
| PG-Q-PR-LL-EL-PO-10_R | Main Distribution Board(Remaining) | 2026-07-04 → 2026-08-14 A (+41d) | 2026-07-12 → 2026-09-16 A (+66d) | 0% → 100% | 10d → none | PG-Q-PR-LL-EL-MA-10_R, PG-Q-PR-LL-EL-PO-10 → PG-Q-PR-LL-EL-PO-10, PG-Q-PR-LL-EL-MA-10_R SS |
| PG-Q-PR-LL-EL-PO-20_R | Power Panels (Pump, Street Light)(Remaining) | 2026-07-04 → 2026-08-14 A (+41d) | 2026-07-12 → 2026-09-16 A (+66d) | 0% → 100% | 27d → none | PG-Q-PR-LL-EL-MA-20_R, PG-Q-PR-LL-EL-PO-20 → PG-Q-PR-LL-EL-PO-20, PG-Q-PR-LL-EL-MA-20_R SS |
| PG-Q-PR-LL-EL-PO-30_R | Site Lighting Poles(Remaining) | 2026-07-04 → 2026-08-14 A (+41d) | 2026-07-12 → 2026-09-16 A (+66d) | 0% → 100% | 17d → none | PG-Q-PR-LL-EL-MA-30_R, PG-Q-PR-LL-EL-PO-30 → PG-Q-PR-LL-EL-PO-30, PG-Q-PR-LL-EL-MA-30_R SS |
| PG-Q-PR-LL-EL-PO-50_R | Grounding System Materials (Earth pit rod, LPS, etc)(Remaining) | 2026-07-04 → 2026-08-27 A (+54d) | 2026-07-12 → 2026-09-16 A (+66d) | 0% → 100% | 7d → none | PG-Q-PR-LL-EL-MA-50_R, PG-Q-PR-LL-EL-PO-50 → PG-Q-PR-LL-EL-MA-50_R, PG-Q-PR-LL-EL-PO-50, PG-Q-PR-LL-EL-MA-50_R SS |
| PG-Q-PR-LL-EL-PO-60_R | Telecommunications & Data System Materials (Telephone outlet, CCTV, etc)(Remaining) | 2026-07-04 → 2026-08-27 A (+54d) | 2026-07-12 → 2026-09-16 A (+66d) | 0% → 100% | 27d → none | PG-Q-PR-LL-EL-MA-60_R, PG-Q-PR-LL-EL-PO-60 → PG-Q-PR-LL-EL-MA-60_R, PG-Q-PR-LL-EL-PO-60, PG-Q-PR-LL-EL-MA-60_R SS |
| PG-Q-PR-LL-EL-PO-70_R | Security and Access Control System Materials(Remaining) | 2026-07-04 → 2026-08-27 A (+54d) | 2026-07-12 → 2026-09-16 A (+66d) | 0% → 100% | 41d → none | PG-Q-PR-LL-EL-MA-70_R, PG-Q-PR-LL-EL-PO-70 → PG-Q-PR-LL-EL-MA-70_R, PG-Q-PR-LL-EL-PO-70, PG-Q-PR-LL-EL-MA-70_R SS |
| PG-Q-PR-LL-EL-PO-80_R | Fire Alarm System Materials(Remaining) | 2026-07-04 → 2026-08-27 A (+54d) | 2026-07-12 → 2026-09-16 A (+66d) | 0% → 100% | 30d → none | PG-Q-PR-LL-EL-MA-80_R, PG-Q-PR-LL-EL-PO-80 → PG-Q-PR-LL-EL-MA-80_R, PG-Q-PR-LL-EL-PO-80, PG-Q-PR-LL-EL-MA-80_R SS |
| 3 | **MANUFACTURE / FABRICATION** |  | 2026-08-11 → 2026-10-24 (+74d) |  |  |  |
| 1 | **EXTERNAL / LANDSCAPE WORK** |  | 2026-07-23 → 2026-09-16 (+55d) |  |  |  |
| PG-Q-PR-LL-LS-MF-10_R | Bike and Walk Path Materials(Remaining) | 2026-06-25 → 2026-07-30 A (+35d) | 2026-07-06 → 2026-09-16 A (+72d) | 0% → 100% | 25d → none |  |
| PG-Q-PR-LL-LS-MF-20_R | Benches, Seats (Rectangular & Circular)(Remaining) | 2026-06-25 → 2026-07-30 A (+35d) | 2026-07-23 → 2026-09-16 A (+55d) | 0% → 100% | 84d → none |  |
| PG-Q-PR-LL-LS-MF-30_R | Fence, gates and accessories(Remaining) | 2026-06-25 → 2026-08-14 A (+50d) | 2026-07-23 → 2026-09-16 A (+55d) | 0% → 100% | 12d → none |  |
| 2 | **SPORTS & RECREATIONAL FACILITIES WORK** |  | 2026-08-11 → 2026-09-16 (+36d) |  |  |  |
| PG-Q-PR-LL-SP-MF-40_R | Tartan Floor(Remaining) | 2026-06-25 → 2026-07-22 A (+27d) | 2026-07-23 → 2026-09-16 A (+55d) | 0% → 100% | 25d → none |  |
| PG-Q-PR-LL-SP-MF-10_R | Football Playground Materials (Flooring, goal post, nets, paints, etc)(Remaining) | 2026-06-25 → 2026-07-30 A (+35d) | 2026-07-23 → 2026-09-16 A (+55d) | 0% → 100% | 54d → none |  |
| PG-Q-PR-LL-SP-MF-30_R | Padel Playgound Materials (Flooring, fence, tempered glass, etc)(Remaining) | 2026-06-25 → 2026-07-30 A (+35d) | 2026-07-12 → 2026-09-16 A (+66d) | 0% → 100% | 22d → none |  |
| PG-Q-PR-LL-SP-MF-20_R | Basketball Playground Materials (Flooring, basketball poll, nets, paints, etc)(Remaining) | 2026-06-25 → 2026-08-14 A (+50d) | 2026-07-23 → 2026-09-16 A (+55d) | 0% → 100% | 57d → none |  |
| PG-Q-PR-LL-SP-MF-50 | Air Dome Materials | 2026-07-11 → 2026-08-27 A (+47d) | 2026-08-11 → 2026-09-16 A (+36d) | 0% → 100% | 0d → none |  |
| 3 | **CONCRETE WORK** |  | 2026-07-12 → 2026-06-24 (-18d) |  |  |  |
| PG-Q-PR-LL-CO-MF-10_R | Autoclaved Aerated Panel(Remaining) | 2026-06-25 → 2026-06-01 A (-24d) | 2026-07-12 → 2026-06-04 A (-38d) | 0% → 100% | 7d → none |  |
| 5 | **METAL WORK** |  | 2026-07-23 → 2026-10-24 (+93d) |  |  |  |
| PG-Q-PR-LL-MT-MF-10_R | Metal Doors(Remaining) | 2026-06-25 → 2026-09-26 (+93d) | 2026-07-23 → 2026-10-24 (+93d) |  | 56d → 8.7d |  |
| PG-Q-PR-LL-MT-MF-20_R | Curtain Wall(Remaining) | 2026-06-25 → 2026-09-26 (+93d) | 2026-07-23 → 2026-10-24 (+93d) |  | 59d → 2.7d |  |
| 7 | **PLUMBING WORK** |  | 2026-07-23 → 2026-06-24 (-29d) |  |  |  |
| PG-Q-PR-LL-PB-MF-20_R | GRP Sectional Panel Water Tanks (4x3x3m)(Remaining) | 2026-06-25 → 2026-06-06 A (-19d) | 2026-07-23 → 2026-06-09 A (-44d) | 0% → 100% | 13d → none |  |
| PG-Q-PR-LL-PB-MF-10_R | Booster Pump(Remaining) | 2026-06-25 → 2026-06-11 A (-14d) | 2026-07-23 → 2026-06-15 A (-38d) | 0% → 100% | 22d → none |  |
| 8 | **IRRIGATION WORK** |  | 2026-07-06 → 2026-09-16 (+72d) |  |  |  |
| PG-Q-PR-LL-IR-MF-10_R | HDPE Pipes(Remaining) | 2026-06-25 → 2026-06-02 A (-23d) | 2026-07-06 → 2026-06-04 A (-32d) | 0% → 100% | 28.4d → none |  |
| PG-Q-PR-LL-IR-MF-20_R | Irrigation Control System(Remaining) | 2026-06-25 → 2026-07-30 A (+35d) | 2026-07-06 → 2026-09-16 A (+72d) | 0% → 100% | 30d → none |  |
| 9 | **ELECTRICAL WORK** |  | 2026-08-10 → 2026-09-16 (+37d) |  |  |  |
| PG-Q-PR-LL-EL-MF-10_R | Main Distribution Board(Remaining) | 2026-07-13 → 2026-08-14 A (+32d) | 2026-08-10 → 2026-09-16 A (+37d) | 0% → 100% | 10d → none | PG-Q-PR-LL-EL-PO-10_R, PG-Q-PR-LL-EL-MF-10 → PG-Q-PR-LL-EL-MF-10, PG-Q-PR-LL-EL-PO-10_R SS |
| PG-Q-PR-LL-EL-MF-20_R | Power Panels (Pump, Street Light)(Remaining) | 2026-07-13 → 2026-08-14 A (+32d) | 2026-07-29 → 2026-09-16 A (+49d) | 0% → 100% | 27d → none | PG-Q-PR-LL-EL-PO-20_R, PG-Q-PR-LL-EL-MF-20 → PG-Q-PR-LL-EL-MF-20, PG-Q-PR-LL-EL-PO-20_R SS |
| PG-Q-PR-LL-EL-MF-30_R | Site Lighting Poles(Remaining) | 2026-07-13 → 2026-08-14 A (+32d) | 2026-08-10 → 2026-09-16 A (+37d) | 0% → 100% | 17d → none | PG-Q-PR-LL-EL-PO-30_R, PG-Q-PR-LL-EL-MF-30 → PG-Q-PR-LL-EL-MF-30, PG-Q-PR-LL-EL-PO-30_R SS |
| PG-Q-PR-LL-EL-MF-40_R | Lighting Fixtures(Remaining) | 2026-07-13 → 2026-08-14 A (+32d) | 2026-08-10 → 2026-09-16 A (+37d) | 0% → 100% | 12d → none | PG-Q-PR-LL-EL-PO-40_R, PG-Q-PR-LL-EL-MF-40 → PG-Q-PR-LL-EL-MF-40, PG-Q-PR-LL-EL-PO-40_R SS |
| PG-Q-PR-LL-EL-MF-50_R | Grounding System Materials (Earth pit rod, LPS, etc)(Remaining) | 2026-07-13 → 2026-08-27 A (+45d) | 2026-08-10 → 2026-09-16 A (+37d) | 0% → 100% | 7d → none | PG-Q-PR-LL-EL-PO-50_R, PG-Q-PR-LL-EL-MF-50 → PG-Q-PR-LL-EL-PO-50_R, PG-Q-PR-LL-EL-MF-50, PG-Q-PR-LL-EL-PO-50_R SS |
| PG-Q-PR-LL-EL-MF-60_R | Telecommunications & Data System Materials (Telephone outlet, CCTV, etc)(Remaining) | 2026-07-13 → 2026-08-27 A (+45d) | 2026-08-10 → 2026-09-16 A (+37d) | 0% → 100% | 27d → none | PG-Q-PR-LL-EL-PO-60_R, PG-Q-PR-LL-EL-MF-60 → PG-Q-PR-LL-EL-PO-60_R, PG-Q-PR-LL-EL-MF-60, PG-Q-PR-LL-EL-PO-60_R SS |
| PG-Q-PR-LL-EL-MF-70_R | Security and Access Control System Materials(Remaining) | 2026-07-13 → 2026-08-27 A (+45d) | 2026-08-10 → 2026-09-16 A (+37d) | 0% → 100% | 41d → none | PG-Q-PR-LL-EL-PO-70_R, PG-Q-PR-LL-EL-MF-70 → PG-Q-PR-LL-EL-PO-70_R, PG-Q-PR-LL-EL-MF-70, PG-Q-PR-LL-EL-PO-70_R SS |
| PG-Q-PR-LL-EL-MF-80_R | Fire Alarm System Materials(Remaining) | 2026-07-13 → 2026-08-27 A (+45d) | 2026-08-10 → 2026-09-16 A (+37d) | 0% → 100% | 30d → none | PG-Q-PR-LL-EL-PO-80_R, PG-Q-PR-LL-EL-MF-80 → PG-Q-PR-LL-EL-PO-80_R, PG-Q-PR-LL-EL-MF-80, PG-Q-PR-LL-EL-PO-80_R SS |
| 4 | **DELIVERY TO SITE** |  | 2026-08-27 → 2026-11-10 (+75d) |  |  |  |
| 1 | **EXTERNAL / LANDSCAPE WORK** |  | 2026-08-10 → 2026-09-30 (+51d) |  |  |  |
| PG-Q-PR-LL-LS-DL-10_R | Bike and Walk Path Materials(Remaining) | 2026-07-07 → 2026-08-14 A (+38d) | 2026-07-16 → 2026-09-26 (+72d) | 0% → 90% | 25d → 34.15d | PG-Q-PR-LL-LS-MF-10_R, PG-Q-PR-LL-LS-DL-10 → PG-Q-PR-LL-LS-DL-10, PG-Q-PR-LL-LS-MF-10_R SS |
| PG-Q-PR-LL-LS-DL-20_R | Benches, Seats (Rectangular & Circular)(Remaining) | 2026-07-25 → 2026-08-14 A (+20d) | 2026-08-10 → 2026-09-30 (+51d) | 0% → 70% | 84d → 48.5d | PG-Q-PR-LL-LS-MF-20_R, PG-Q-PR-LL-LS-DL-20 → PG-Q-PR-LL-LS-DL-20, PG-Q-PR-LL-LS-MF-20_R SS |
| PG-Q-PR-LL-LS-DL-30_R | Fence, gates and accessories(Remaining) | 2026-07-25 → 2026-08-14 A (+20d) | 2026-08-10 → 2026-09-30 (+51d) | 0% → 70% | 12d → 9.3d | PG-Q-PR-LL-LS-MF-30_R, PG-Q-PR-LL-LS-DL-30 → PG-Q-PR-LL-LS-DL-30, PG-Q-PR-LL-LS-MF-30_R SS |
| 2 | **SPORTS & RECREATIONAL FACILITIES WORK** |  | 2026-08-23 → 2026-10-05 (+43d) |  |  |  |
| PG-Q-PR-LL-SP-DL-10_R | Football Playground Materials (Flooring, goal post, nets, paints, etc)(Remaining) | 2026-07-25 → 2026-08-14 A (+20d) | 2026-08-10 → 2026-09-28 (+49d) | 0% → 80% | 54d → 47.1d | PG-Q-PR-LL-SP-MF-10_R, PG-Q-PR-LL-SP-DL-10 → PG-Q-PR-LL-SP-DL-10, PG-Q-PR-LL-SP-MF-10_R SS |
| PG-Q-PR-LL-SP-DL-20_R | Basketball Playground Materials (Flooring, basketball poll, nets, paints, etc)(Remaining) | 2026-07-25 → 2026-08-14 A (+20d) | 2026-08-10 → 2026-09-28 (+49d) | 0% → 80% | 57d → 29.6d | PG-Q-PR-LL-SP-MF-20_R, PG-Q-PR-LL-SP-DL-20 → PG-Q-PR-LL-SP-DL-20, PG-Q-PR-LL-SP-MF-20_R SS |
| PG-Q-PR-LL-SP-DL-30_R | Padel Playgound Materials (Fence, tempered glass, etc)(Remaining) | 2026-07-13 → 2026-08-14 A (+32d) | 2026-07-29 → 2026-09-28 (+61d) | 0% → 80% | 22d → 10.8d | PG-Q-PR-LL-SP-MF-30_R, PG-Q-PR-LL-SP-DL-30 → PG-Q-PR-LL-SP-DL-30, PG-Q-PR-LL-SP-MF-30_R SS |
| PG-Q-PR-LL-SP-DL-40_R | Tartan Floor(Remaining) | 2026-07-25 → 2026-08-14 A (+20d) | 2026-08-10 → 2026-09-28 (+49d) | 0% → 80% | 25d → 26.6d | PG-Q-PR-LL-SP-MF-40_R, PG-Q-PR-LL-SP-DL-40 → PG-Q-PR-LL-SP-DL-40, PG-Q-PR-LL-SP-MF-40_R SS |
| PG-Q-PR-LL-SP-DL-50 | Air Dome Materials | 2026-08-12 → 2026-08-25 A (+13d) | 2026-08-23 → 2026-10-05 (+43d) | 0% → 30% | 0d → -28.4d | PG-Q-PR-LL-SP-MF-50, PG-Q-EN-AR-SD-AP-130, PG-Q-EN-AR-SD-AP-120, PG-Q-EN-AR-SD-AP-110, PG-Q-EN-ME-SD-AP-100, PG-Q-EN-EL-SD-AP-130, PG-Q-EN-EL-SD-AP-140 → PG-Q-PR-LL-SP-MF-50, PG-Q-EN-AR-SD-AP-130, PG-Q-EN-AR-SD-AP-120, PG-Q-EN-AR-SD-AP-110, PG-Q-EN-ME-SD-AP-100, PG-Q-EN-EL-SD-AP-130, PG-Q-EN-EL-SD-AP-140, PG-Q-PR-LL-SP-MF-50 FF, PG-Q-EN-AR-SD-AP-130 SS, PG-Q-EN-AR-SD-AP-120 SS, PG-Q-EN-AR-SD-AP-110 SS, PG-Q-EN-ME-SD-AP-100 SS, PG-Q-EN-EL-SD-AP-130 SS, PG-Q-EN-EL-SD-AP-140 SS |
| 3 | **CONCRETE WORK** |  | 2026-07-23 → 2026-07-05 (-18d) |  |  |  |
| PG-Q-PR-LL-CO-DL-10_R | Autoclaved Aerated Panel(Remaining) | 2026-07-13 → 2026-07-04 A (-9d) | 2026-07-23 → 2026-07-05 A (-18d) | 0% → 100% | 7d → none |  |
| 5 | **METAL WORK** |  | 2026-08-10 → 2026-11-10 (+92d) |  |  |  |
| PG-Q-PR-LL-MT-DL-10_R | Metal Doors(Remaining) | 2026-07-25 → 2026-08-27 A (+33d) | 2026-08-10 → 2026-11-02 (+84d) | 0% → 50% | 56d → 8.7d | PG-Q-PR-LL-MT-MF-10_R, PG-Q-PR-LL-MT-DL-10 → PG-Q-PR-LL-MT-MF-10_R, PG-Q-PR-LL-MT-DL-10, PG-Q-PR-LL-MT-MF-10_R FF |
| PG-Q-PR-LL-MT-DL-20_R | Curtain Wall(Remaining) | 2026-07-25 → 2026-10-25 (+92d) | 2026-08-10 → 2026-11-10 (+92d) |  | 59d → 2.7d | PG-Q-PR-LL-MT-MF-20_R, PG-Q-PR-LL-MT-DL-20 → PG-Q-PR-LL-MT-MF-20_R, PG-Q-PR-LL-MT-DL-20, PG-Q-PR-LL-MT-MF-20_R FF |
| 7 | **PLUMBING WORK** |  | 2026-08-10 → 2026-09-30 (+51d) |  |  |  |
| PG-Q-PR-LL-PB-DL-20_R | GRP Sectional Panel Water Tanks (4x3x3m)(Remaining) | 2026-07-25 → 2026-08-14 A (+20d) | 2026-08-10 → 2026-09-30 (+51d) | 0% → 70% | 13d → 22.55d |  |
| PG-Q-PR-LL-PB-DL-10_R | Booster Pump(Remaining) | 2026-07-25 → 2026-08-20 A (+26d) | 2026-08-10 → 2026-09-30 (+51d) | 0% → 70% | 22d → 34.7d |  |
| 8 | **IRRIGATION WORK** |  | 2026-07-15 → 2026-09-27 (+74d) |  |  |  |
| PG-Q-PR-LL-IR-DL-10_R | HDPE Pipes(Remaining) | 2026-07-07 → 2026-08-14 A (+38d) | 2026-07-14 → 2026-08-27 A (+44d) | 0% → 100% | 28.4d → none |  |
| PG-Q-PR-LL-IR-DL-20_R | Irrigation Control System(Remaining) | 2026-07-07 → 2026-08-20 A (+44d) | 2026-07-15 → 2026-09-27 (+74d) | 0% → 80% | 30d → -7.25d | PG-Q-PR-LL-IR-MF-20_R, PG-Q-PR-LL-IR-DL-20 → PG-Q-PR-LL-IR-MF-20_R, PG-Q-PR-LL-IR-DL-20, PG-Q-PR-LL-IR-MF-20_R SS |
| 9 | **ELECTRICAL WORK** |  | 2026-08-27 → 2026-10-01 (+35d) |  |  |  |
| PG-Q-PR-LL-EL-DL-10_R | Main Distribution Board(Remaining) | 2026-08-11 → 2026-08-14 A (+3d) | 2026-08-27 → 2026-10-01 (+35d) | 0% → 65% | 10d → -0.65d | PG-Q-PR-LL-EL-MF-10_R, PG-Q-PR-LL-EL-DL-10 → PG-Q-PR-LL-EL-DL-10, PG-Q-PR-LL-EL-MF-10_R SS |
| PG-Q-PR-LL-EL-DL-20_R | Power Panels (Pump, Street Light)(Remaining) | 2026-07-30 → 2026-08-14 A (+15d) | 2026-08-10 → 2026-09-29 (+50d) | 0% → 65% | 27d → 3.1d | PG-Q-PR-LL-EL-MF-20_R, PG-Q-PR-LL-EL-DL-20 → PG-Q-PR-LL-EL-DL-20, PG-Q-PR-LL-EL-MF-20_R SS |

| ID | Task | Start | Finish | Complete | Total float | Predecessors |
| --- | --- | --- | --- | --- | --- | --- |
| PG-Q-PR-LL-EL-DL-30_R | Site Lighting Poles(Remaining) | 2026-08-11 → 2026-08-14 A (+3d) | 2026-08-27 → 2026-10-01 (+35d) | 0% → 65% | 17d → 6.35d | PG-Q-PR-LL-EL-MF-30_R, PG-Q-PR-LL-EL-DL-30 → PG-Q-PR-LL-EL-DL-30, PG-Q-PR-LL-EL-MF-30_R SS |
| PG-Q-PR-LL-EL-DL-40_R | Lighting Fixtures(Remaining) | 2026-08-11 → 2026-08-14 A (+3d) | 2026-08-27 → 2026-10-01 (+35d) | 0% → 65% | 12d → 9.95d | PG-Q-PR-LL-EL-MF-40_R, PG-Q-PR-LL-EL-DL-40 → PG-Q-PR-LL-EL-DL-40, PG-Q-PR-LL-EL-MF-40_R SS |
| PG-Q-PR-LL-EL-DL-50_R | Grounding System Materials (Earth pit rod, LPS, etc)(Remaining) | 2026-08-11 → 2026-08-27 A (+16d) | 2026-08-27 → 2026-10-01 (+35d) | 0% → 65% | 7d → -1.25d | PG-Q-PR-LL-EL-MF-50_R, PG-Q-PR-LL-EL-DL-50 → PG-Q-PR-LL-EL-MF-50_R, PG-Q-PR-LL-EL-DL-50, PG-Q-PR-LL-EL-MF-50_R SS |
| PG-Q-PR-LL-EL-DL-60_R | Telecommunications & Data System Materials (Telephone outlet, CCTV, etc)(Remaining) | 2026-08-11 → 2026-08-27 A (+16d) | 2026-08-27 → 2026-10-01 (+35d) | 0% → 65% | 27d → 13.95d | PG-Q-PR-LL-EL-MF-60_R, PG-Q-PR-LL-EL-DL-60 → PG-Q-PR-LL-EL-MF-60_R, PG-Q-PR-LL-EL-DL-60, PG-Q-PR-LL-EL-MF-60_R SS |
| PG-Q-PR-LL-EL-DL-70_R | Security and Access Control System Materials(Remaining) | 2026-08-11 → 2026-08-27 A (+16d) | 2026-08-27 → 2026-10-01 (+35d) | 0% → 65% | 41d → 32.45d | PG-Q-PR-LL-EL-MF-70_R, PG-Q-PR-LL-EL-DL-70 → PG-Q-PR-LL-EL-MF-70_R, PG-Q-PR-LL-EL-DL-70, PG-Q-PR-LL-EL-MF-70_R SS |
| PG-Q-PR-LL-EL-DL-80_R | Fire Alarm System Materials(Remaining) | 2026-08-11 → 2026-08-27 A (+16d) | 2026-08-27 → 2026-10-01 (+35d) | 0% → 65% | 30d → 16.95d | PG-Q-PR-LL-EL-MF-80_R, PG-Q-PR-LL-EL-DL-80 → PG-Q-PR-LL-EL-MF-80_R, PG-Q-PR-LL-EL-DL-80, PG-Q-PR-LL-EL-MF-80_R SS |
| 2 | **SHORT LEAD ITEMS** |  | 2026-07-12 → 2026-10-12 (+92d) |  |  |  |
| 3 | **DELIVERY TO SITE** |  | 2026-07-12 → 2026-10-12 (+92d) |  |  |  |
| 1 | **EXTERNAL / LANDSCAPE WORK** |  | 2026-07-08 → 2026-10-04 (+88d) |  |  |  |
| PG-Q-PR-SL-LS-DL-50_R | Thermoplastic pavement road marking(Remaining) | 2026-06-25 → 2026-08-27 A (+63d) | 2026-07-08 → 2026-10-04 (+88d) | 0% → 35% | 85d → 29.2d |  |
| PG-Q-PR-SL-LS-DL-60_R | Traffic Signages(Remaining) | 2026-06-25 → 2026-08-27 A (+63d) | 2026-07-08 → 2026-10-04 (+88d) | 0% → 35% | 85d → 29.2d |  |
| PG-Q-PR-SL-LS-DL-70_R | Trees(Remaining) | 2026-06-25 → 2026-08-27 A (+63d) | 2026-07-08 → 2026-10-04 (+88d) | 0% → 35% | 85d → 29.2d |  |
| PG-Q-PR-SL-LS-DL-80_R | Lawn(Remaining) | 2026-06-25 → 2026-08-27 A (+63d) | 2026-07-08 → 2026-10-04 (+88d) | 0% → 35% | 85d → 29.2d |  |
| 5 | **METAL WORK** |  | 2026-07-08 → 2026-10-08 (+92d) |  |  |  |
| PG-Q-PR-SL-MT-DL-10_R | Galvanized Steel Ladder(Remaining) | 2026-06-25 → 2026-09-26 (+93d) | 2026-07-08 → 2026-10-08 (+92d) |  | 93d → 34.7d |  |
| PG-Q-PR-SL-MT-DL-20_R | Galvanized Steel Roof Scupper(Remaining) | 2026-06-25 → 2026-09-26 (+93d) | 2026-07-08 → 2026-10-08 (+92d) |  | 93d → 34.7d |  |
| PG-Q-PR-SL-MT-DL-30_R | Galvanized Steel Cover with frame(Remaining) | 2026-06-25 → 2026-09-26 (+93d) | 2026-07-08 → 2026-10-08 (+92d) |  | 93d → 34.7d |  |
| 6 | **HVAC WORK** |  | 2026-07-08 → 2026-10-04 (+88d) |  |  |  |
| PG-Q-PR-SL-AC-DL-10_R | Split Air Conditioning Unit(Remaining) | 2026-06-25 → 2026-08-27 A (+63d) | 2026-07-08 → 2026-10-04 (+88d) | 0% → 40% | 45d → 29d |  |
| PG-Q-PR-SL-AC-DL-20_R | Air Duct(Remaining) | 2026-06-25 → 2026-08-27 A (+63d) | 2026-07-08 → 2026-10-04 (+88d) | 0% → 40% | 38d → 29d |  |
| PG-Q-PR-SL-AC-DL-30_R | Diffusers and Grills(Remaining) | 2026-06-25 → 2026-08-27 A (+63d) | 2026-07-08 → 2026-10-04 (+88d) | 0% → 40% | 45d → 29d |  |
| PG-Q-PR-SL-AC-DL-40_R | Exhaust fans(Remaining) | 2026-06-25 → 2026-08-27 A (+63d) | 2026-07-08 → 2026-10-04 (+88d) | 0% → 40% | 38d → 29d |  |
| 8 | **IRRIGATION WORK** |  | 2026-07-08 → 2026-09-30 (+84d) |  |  |  |
| PG-Q-PR-SL-IR-DL-10_R | Gate Valve including valve box(Remaining) | 2026-06-25 → 2026-08-14 A (+50d) | 2026-07-08 → 2026-09-30 (+84d) | 0% → 65% | 33.4d → -5.96d |  |
| PG-Q-PR-SL-IR-DL-20_R | Bulbblers and Spreyers(Remaining) | 2026-06-25 → 2026-08-20 A (+56d) | 2026-07-08 → 2026-09-30 (+84d) | 0% → 65% | 39d → -9.25d |  |
| 9 | **ELECTRICAL WORK** |  | 2026-07-12 → 2026-10-12 (+92d) |  |  |  |
| PG-Q-PR-SL-EL-DL-10_R | Wiring Devices Materials(Remaining) | 2026-06-25 → 2026-09-26 (+93d) | 2026-07-12 → 2026-10-12 (+92d) |  | 25d → -2.8d |  |
| 10 | **FIRE FIGHTING WORK** |  | 2026-07-08 → 2026-10-08 (+92d) |  |  |  |
| PG-Q-PR-SL-FF-DL-10_R | Fire Extinguishers(Remaining) | 2026-06-25 → 2026-09-26 (+93d) | 2026-07-08 → 2026-10-08 (+92d) |  | 48d → -10d |  |
| CO | **CONSTRUCTION STAGE** |  | 2026-12-16 → 2027-01-11 (+26d) |  |  |  |
| EX.SIT | **PLAYGROUND AND LANDSCAPING WORKS** |  | 2026-12-16 → 2027-01-11 (+26d) |  |  |  |
| 1 | **PLAYGROUND WORKS** |  | 2026-12-02 → 2026-12-06 (+4d) |  |  |  |
| FP | **FOOTBALL PLAYGROUND WORKS** |  | 2026-11-17 → 2026-10-25 (-23d) |  |  |  |
| PG-Q-CON-EX-FB-80 | Fine Grading & Leveling | 2026-06-25 → 2026-07-09 A (+14d) | 2026-07-06 → 2026-07-11 A (+5d) | 0% → 100% | 2d → none |  |
| PG-Q-CON-EX-FB-40_R | Tartan flooring(Remaining) | 2026-09-14 → 2026-07-12 A (-64d) | 2026-10-01 → 2026-08-14 A (-48d) | 0% → 100% | 25d → none | PG-Q-CON-EX-FB-30, PG-Q-EN-LS-SD-AP-40, PG-Q-PR-LL-SP-DL-40_R SS, PG-Q-PR-LL-SP-DL-10_R, PG-Q-CON-EX-FB-40, PG-Q-CON-EX-FB-10, PG-Q-CON-EX-FB-90 → PG-Q-CON-EX-FB-30, PG-Q-EN-LS-SD-AP-40, PG-Q-CON-EX-FB-40, PG-Q-CON-EX-FB-10, PG-Q-PR-LL-SP-DL-40_R FF, PG-Q-PR-LL-SP-DL-10_R FF, PG-Q-CON-EX-FB-90 FF, PG-Q-PR-LL-SP-DL-40_R SS, PG-Q-PR-LL-SP-DL-10_R SS, PG-Q-CON-EX-FB-90 SS |
| PG-Q-CON-EX-FB-70 | Topsoil Placement | 2026-07-07 → 2026-07-12 A (+5d) | 2026-07-20 → 2026-08-14 A (+25d) | 0% → 100% | 2d → none |  |
| PG-Q-CON-EX-FB-50 | Goal Post Foundation | 2026-07-21 → 2026-08-06 A (+16d) | 2026-08-18 → 2026-08-27 A (+9d) | 0% → 100% | 25d → none |  |
| PG-Q-CON-EX-FB-90 | Turfing / Seeding Works | 2026-09-02 → 2026-08-14 A (-19d) | 2026-09-13 → 2026-09-30 (+17d) | 0% → 75% | 25d → 45.8d | PG-Q-CON-EX-FB-10, PG-Q-CON-EX-FB-120 → PG-Q-CON-EX-FB-10, PG-Q-CON-EX-FB-120, PG-Q-CON-EX-FB-120 FF |
| PG-Q-CON-EX-FB-120 | Installation of Lighting System | 2026-08-19 → 2026-08-20 A (+1d) | 2026-09-01 → 2026-09-27 (+26d) | 0% → 85% | 25d → 45.8d | PG-Q-CON-EX-FB-10, PG-Q-CON-EX-FB-50 → PG-Q-CON-EX-FB-10, PG-Q-CON-EX-FB-50, PG-Q-CON-EX-FB-50 SS |
| PG-Q-CON-EX-FB-110 | Install Playground Benches | 2026-10-20 → 2026-08-27 A (-54d) | 2026-11-08 → 2026-10-15 (-24d) | 0% → 55% | 25d → 45.8d | PG-Q-PR-LL-LS-DL-20_R, PG-Q-CON-EX-FB-10, PG-Q-CON-EX-FB-60 → PG-Q-PR-LL-LS-DL-20_R, PG-Q-CON-EX-FB-10, PG-Q-CON-EX-FB-60, PG-Q-PR-LL-LS-DL-20_R SS, PG-Q-CON-EX-FB-60 SS |
| PG-Q-CON-EX-FB-60 | Goal Post Installation & Alignment | 2026-10-03 → 2026-08-27 A (-37d) | 2026-10-19 → 2026-10-06 (-13d) | 0% → 65% | 25d → 45.8d |  |
| PG-Q-CON-EX-FB-100 | Markings and Signages | 2026-11-09 → 2026-10-15 (-25d) | 2026-11-17 → 2026-10-25 (-23d) |  | 25d → 45.8d |  |
| BP | **BASKETBALL PLAYGROUND WORKS** |  | 2026-11-17 → 2026-11-16 (-1d) |  |  |  |
| PG-Q-CON-EX-BB-40 | Tartan flooring | 2026-08-11 → 2026-07-30 A (-12d) | 2026-08-30 → 2026-08-14 A (-16d) | 0% → 100% | 25d → none | PG-Q-CON-EX-BB-30, PG-Q-EN-LS-SD-AP-40, PG-Q-PR-LL-SP-DL-40_R, PG-Q-CON-EX-BB-10, PG-Q-CON-EX-BB-70_R → PG-Q-CON-EX-BB-30, PG-Q-EN-LS-SD-AP-40, PG-Q-CON-EX-BB-10, PG-Q-PR-LL-SP-DL-40_R FF, PG-Q-CON-EX-BB-70_R FF, PG-Q-PR-LL-SP-DL-40_R SS |
| PG-Q-CON-EX-BB-50 | Basketball Pole Foundation | 2026-06-25 → 2026-08-06 A (+42d) | 2026-07-23 → 2026-08-13 A (+21d) | 0% → 100% | 25d → none |  |
| PG-Q-CON-EX-BB-70_R | Floor Surface Curing(Remaining) | 2026-07-25 → 2026-08-06 A (+12d) | 2026-08-10 → 2026-08-14 A (+4d) | 0% → 100% | 25d → none |  |
| PG-Q-CON-EX-BB-60 | Basketball Pole Installation & Alignment | 2026-09-17 → 2026-08-20 A (-28d) | 2026-10-07 → 2026-10-06 (-1d) | 0% → 80% | 25d → 26.6d | PG-Q-PR-LL-SP-DL-20_R, PG-Q-CON-EX-BB-10, PG-Q-CON-EX-BB-80 → PG-Q-PR-LL-SP-DL-20_R, PG-Q-CON-EX-BB-10, PG-Q-CON-EX-BB-80, PG-Q-PR-LL-SP-DL-20_R SS, PG-Q-CON-EX-BB-80 SS |
| PG-Q-CON-EX-BB-80 | Court Line Marking | 2026-08-31 → 2026-08-20 A (-11d) | 2026-09-16 → 2026-10-01 (+15d) | 0% → 80% | 25d → 26.6d |  |
| PG-Q-CON-EX-BB-90 | Backboard & Hoop Installation | 2026-10-08 → 2026-10-06 (-2d) | 2026-10-27 → 2026-10-26 (-1d) |  | 25d → 26.6d |  |
| PG-Q-CON-EX-BB-100 | Install Playground Benches | 2026-10-28 → 2026-10-26 (-2d) | 2026-11-17 → 2026-11-16 (-1d) |  | 25d → 26.6d |  |
| PP | **PADEL PLAYGROUND WORKS** |  | 2026-12-02 → 2026-12-06 (+4d) |  |  |  |
| PG-Q-CON-EX-PD-10_R | Excavation For Fence Footing(Remaining) | 2026-06-25 → 2026-08-06 A (+42d) | 2026-07-02 → 2026-08-14 A (+43d) | 0% → 100% | 25d → none |  |
| PG-Q-CON-EX-PD-30_R | Tartan Flooring Layers(Remaining) | 2026-10-11 → 2026-08-06 A (-66d) | 2026-10-28 → 2026-11-01 (+4d) | 0% → 90% | 12d → 9.3d | PG-Q-EN-LS-SD-AP-40, PG-Q-CON-EX-FB-30, PG-Q-PR-LL-SP-DL-40_R SS, PG-Q-CON-EX-PD-30, PG-Q-CON-EX-PD-50 → PG-Q-EN-LS-SD-AP-40, PG-Q-CON-EX-FB-30, PG-Q-PR-LL-SP-DL-40_R SS, PG-Q-CON-EX-PD-30, PG-Q-CON-EX-PD-50 FF |
| PG-Q-CON-EX-PD-20_R | RC Foundations For Fence(Remaining) | 2026-07-04 → 2026-08-07 A (+34d) | 2026-07-26 → 2026-08-27 A (+32d) | 0% → 100% | 25d → none | PG-Q-EN-ST-SD-AP-40, PG-Q-EN-ST-SD-AP-30, PG-Q-CON-EX-PD-20, PG-Q-CON-EX-PD-10_R → PG-Q-EN-ST-SD-AP-40, PG-Q-EN-ST-SD-AP-30, PG-Q-CON-EX-PD-20, PG-Q-CON-EX-PD-10_R SS |
| PG-Q-CON-EX-PD-40 | Steel Structure & Fence Supports Installation | 2026-08-11 → 2026-08-20 A (+9d) | 2026-08-31 → 2026-10-06 (+36d) | 0% → 70% | 12d → 9.3d | PG-Q-EN-LS-SD-AP-130, PG-Q-EN-LS-SD-AP-100, PG-Q-PR-LL-LS-DL-30_R, PG-Q-PR-LL-SP-DL-30_R, PG-Q-PR-LL-SP-DL-30_R FF, PG-Q-CON-EX-PD-20_R → PG-Q-EN-LS-SD-AP-130, PG-Q-EN-LS-SD-AP-100, PG-Q-PR-LL-LS-DL-30_R, PG-Q-PR-LL-SP-DL-30_R, PG-Q-PR-LL-SP-DL-30_R FF, PG-Q-CON-EX-PD-20_R, PG-Q-PR-LL-LS-DL-30_R SS, PG-Q-PR-LL-SP-DL-30_R SS, PG-Q-CON-EX-PD-20_R SS |
| PG-Q-CON-EX-PD-60 | Chain Link Fence & Gates Installation | 2026-09-01 → 2026-08-20 A (-12d) | 2026-09-19 → 2026-10-12 (+23d) | 0% → 70% | 12d → 9.3d | PG-Q-EN-LS-SD-AP-130, PG-Q-CON-EX-PD-40 → PG-Q-EN-LS-SD-AP-130, PG-Q-CON-EX-PD-40, PG-Q-CON-EX-PD-40 SS |
| PG-Q-CON-EX-PD-50 | Tempered Glass Installation | 2026-09-20 → 2026-10-12 (+22d) | 2026-10-10 → 2026-11-01 (+22d) |  | 12d → 9.3d |  |
| PG-Q-CON-EX-PD-70 | Court Accessories Installation | 2026-10-29 → 2026-11-01 (+3d) | 2026-11-15 → 2026-11-18 (+3d) |  | 12d → 9.3d |  |
| PG-Q-CON-EX-PD-80 | Install Playground Benches | 2026-11-16 → 2026-11-18 (+2d) | 2026-12-02 → 2026-12-06 (+4d) |  | 12d → 9.3d |  |
| GN.SI | **GENERAL SITE WORKS** |  | 2026-12-16 → 2027-01-11 (+26d) |  |  |  |
| 1 | **FENCE WORKS** |  | 2026-09-13 → 2026-10-26 (+43d) |  |  |  |
| PG-Q-CON-EX-GN-FN-20 | Concrete Foundations for Fence | 2026-07-21 → 2026-08-13 A (+23d) | 2026-08-01 → 2026-08-20 A (+19d) | 0% → 100% | 2d → none |  |
| PG-Q-CON-EX-GN-FN-30 | Installation of Galvanized Steel Posts & Framing | 2026-08-02 → 2026-08-20 A (+18d) | 2026-08-15 → 2026-09-27 (+43d) | 0% → 85% | 2d → 8.25d |  |
| PG-Q-CON-EX-GN-FN-40 | Fixing of Chain Link Mesh, Tensioning & Bracing | 2026-08-16 → 2026-09-27 (+42d) | 2026-09-01 → 2026-10-14 (+43d) |  | 2d → 8.25d |  |
| PG-Q-CON-EX-GN-FN-50 | Installation of Gates | 2026-09-02 → 2026-10-14 (+42d) | 2026-09-13 → 2026-10-26 (+43d) |  | 2d → 8.25d |  |
| 5 | **MECHANICAL WORK** |  | 2026-08-18 → 2026-10-25 (+68d) |  |  |  |
| 2 | **STORM WATER AND UTILITY WORK** |  | 2026-08-16 → 2026-10-22 (+67d) |  |  |  |
| PG-Q-CON-EX-GN-M-20_R | Bedding preparation & level control(Remaining) | 2026-06-25 → 2026-08-07 A (+43d) | 2026-07-04 → 2026-08-27 A (+54d) | 0% → 100% | 15d → none |  |
| PG-Q-CON-EX-GN-M-30_R | Manhole Installation(Remaining) | 2026-07-05 → 2026-08-20 A (+46d) | 2026-07-11 → 2026-09-27 (+78d) | 0% → 80% | 15d → -21.05d | PG-Q-CON-EX-GN-M-20_R, PG-Q-CON-EX-GN-M-30, PG-Q-CON-EX-GN-M-10 → PG-Q-CON-EX-GN-M-20_R, PG-Q-CON-EX-GN-M-30, PG-Q-CON-EX-GN-M-10, PG-Q-CON-EX-GN-M-20_R SS |
| PG-Q-CON-EX-GN-M-40 | 150 mm uPVC pipe laying & jointing | 2026-07-12 → 2026-08-20 A (+39d) | 2026-07-18 → 2026-09-28 (+72d) | 0% → 80% | 15d → -21.05d | PG-Q-CON-EX-GN-M-30_R, PG-Q-CON-EX-GN-M-10 → PG-Q-CON-EX-GN-M-30_R, PG-Q-CON-EX-GN-M-10, PG-Q-CON-EX-GN-M-30_R SS |

| ID | Task | Start | Finish | Complete | Total float | Predecessors |
| --- | --- | --- | --- | --- | --- | --- |
| PG-Q-CON-EX-GN-M-50 | Concrete Encasement | 2026-07-19 → 2026-09-28 (+71d) | 2026-07-26 → 2026-10-06 (+72d) |  | 15d → -21.05d |  |
| PG-Q-CON-EX-GN-M-60 | Backfilling & Compaction | 2026-07-27 → 2026-10-06 (+71d) | 2026-08-02 → 2026-10-13 (+72d) |  | 15d → -21.05d |  |
| PG-Q-CON-EX-GN-M-70 | Surface Reinstatement & Civil Works | 2026-08-10 → 2026-10-15 (+66d) | 2026-08-16 → 2026-10-22 (+67d) |  | 15d → -21.05d |  |
| IR.SY | **IRRIGATION SYSTEM WORKS** |  | 2026-08-09 → 2026-10-15 (+67d) |  |  |  |
| PG-Q-CON-EX-GN-M-80_R | Installation of HDPE Irrigation Pipe Network with Gate Valve and Box(Remaining) | 2026-07-30 → 2026-08-06 A (+7d) | 2026-08-02 → 2026-10-13 (+72d) | 0% → 88% | 15d → -21.05d | PG-Q-CON-EX-GN-M-60 FF, PG-Q-EN-ME-SD-AP-80, PG-Q-EN-ME-SD-AP-90, PG-Q-CON-EX-GN-M-20_R, PG-Q-PR-LL-IR-DL-10_R, PG-Q-PR-SL-IR-DL-10_R, PG-Q-CON-EX-GN-M-80 → PG-Q-CON-EX-GN-M-60 FF, PG-Q-EN-ME-SD-AP-80, PG-Q-EN-ME-SD-AP-90, PG-Q-CON-EX-GN-M-80, PG-Q-CON-EX-GN-M-20_R SS, PG-Q-PR-LL-IR-DL-10_R SS, PG-Q-PR-SL-IR-DL-10_R SS |
| PG-Q-CON-EX-GN-M-90 | Installation of Irrigation Control System | 2026-08-03 → 2026-08-20 A (+17d) | 2026-08-05 → 2026-10-13 (+69d) | 0% → 80% | 15d → -21.05d | PG-Q-CON-EX-GN-M-80_R, PG-Q-PR-LL-IR-DL-20_R → PG-Q-CON-EX-GN-M-80_R, PG-Q-PR-LL-IR-DL-20_R, PG-Q-CON-EX-GN-M-80_R SS, PG-Q-PR-LL-IR-DL-20_R SS |
| PG-Q-CON-EX-GN-M-100 | Installation of Bubblers and Sprinklers | 2026-08-06 → 2026-08-27 A (+21d) | 2026-08-09 → 2026-10-15 (+67d) | 0% → 65% | 15d → -21.05d | PG-Q-CON-EX-GN-M-90, PG-Q-PR-SL-IR-DL-20_R, PG-Q-CON-EX-GN-M-80_R → PG-Q-CON-EX-GN-M-90, PG-Q-PR-SL-IR-DL-20_R, PG-Q-CON-EX-GN-M-80_R, PG-Q-CON-EX-GN-M-90 SS, PG-Q-PR-SL-IR-DL-20_R SS, PG-Q-CON-EX-GN-M-80_R SS |
| 1 | **FIRE PROTECTION SYSTEM** | 2026-08-17 → 2026-10-22 (+66d) | 2026-08-18 → 2026-10-25 (+68d) |  |  |  |
| PG-Q-CON-EX-GN-M-110 | Fire Extinguisher Installation | 2026-08-17 → 2026-10-22 (+66d) | 2026-08-18 → 2026-10-25 (+68d) |  | 15d → -21.05d |  |
| 2 | **ELECTRICAL WORK** |  | 2026-11-01 → 2026-12-22 (+51d) |  |  |  |
| 1 | **POWER, LIGHTING & GROUNDING** |  | 2026-09-20 → 2026-11-11 (+52d) |  |  |  |
| PG-Q-CON-EX-GN-E-10_R | Excavation(Remaining) | 2026-08-13 → 2026-07-16 A (-28d) | 2026-08-16 → 2026-08-27 A (+11d) | 0% → 100% | 16.5d → none | PG-Q-CON-EX-GN-M-70 FF, PG-Q-CON-EX-GN-E-10 → PG-Q-CON-EX-GN-M-70 FF, PG-Q-CON-EX-GN-E-10, PG-Q-PR-SL-CO-DL-50 |
| PG-Q-CON-EX-GN-E-20_R | Foundation Work for Site Lighting Poles(Remaining) | 2026-08-13 → 2026-08-20 A (+7d) | 2026-08-17 → 2026-10-22 (+66d) | 0% → 80% | 16.5d → -19.75d |  |
| PG-Q-CON-EX-GN-E-60 | Site Lighting Poles Installation | 2026-09-09 → 2026-08-20 A (-20d) | 2026-09-12 → 2026-11-03 (+52d) | 0% → 80% | 7d → -21.05d | PG-Q-CON-EX-GN-E-50, PG-Q-EN-EL-SD-AP-30, PG-Q-EN-EL-SD-AP-40, PG-Q-PR-LL-EL-DL-30_R, PG-Q-CON-EX-GN-E-10_R → PG-Q-CON-EX-GN-E-50, PG-Q-EN-EL-SD-AP-30, PG-Q-EN-EL-SD-AP-40, PG-Q-PR-LL-EL-DL-30_R, PG-Q-CON-EX-GN-E-10_R, PG-Q-CON-EX-GN-E-50 FF, PG-Q-PR-LL-EL-DL-30_R SS, PG-Q-CON-EX-GN-E-10_R SS |
| PG-Q-CON-EX-GN-E-30 | Lightning Protection System (LPS) | 2026-08-29 → 2026-08-27 A (-2d) | 2026-08-31 → 2026-10-25 (+55d) | 0% → 80% | 7d → -21.05d | PG-Q-CON-EX-GN-E-20_R, PG-Q-PR-LL-EL-DL-50_R, PG-Q-CON-EX-GN-M-110, PG-Q-CON-EX-GN-E-10_R → PG-Q-CON-EX-GN-E-20_R, PG-Q-PR-LL-EL-DL-50_R, PG-Q-CON-EX-GN-M-110, PG-Q-CON-EX-GN-E-10_R, PG-Q-CON-EX-GN-E-20_R SS, PG-Q-PR-LL-EL-DL-50_R SS, PG-Q-CON-EX-GN-M-110 FF |
| PG-Q-CON-EX-GN-E-40 | KWH Meter and MDB Installation | 2026-09-01 → 2026-10-25 (+54d) | 2026-09-02 → 2026-10-27 (+55d) |  | 7d → -21.05d | PG-Q-CON-EX-GN-E-30, PG-Q-EN-EL-SD-AP-10, PG-Q-PR-LL-EL-DL-10_R, PG-Q-CON-EX-GN-E-10_R → PG-Q-CON-EX-GN-E-30, PG-Q-EN-EL-SD-AP-10, PG-Q-PR-LL-EL-DL-10_R, PG-Q-CON-EX-GN-E-10_R, PG-Q-CON-EX-GN-M-70 |
| PG-Q-CON-EX-GN-E-50 | Power Panels and Distribution Boards | 2026-09-03 → 2026-10-27 (+54d) | 2026-09-08 → 2026-11-02 (+55d) |  | 7d → -21.05d |  |
| PG-Q-CON-EX-GN-E-70 | Wiring Works | 2026-09-13 → 2026-11-03 (+51d) | 2026-09-15 → 2026-11-07 (+53d) |  | 7d → -21.05d |  |
| PG-Q-CON-EX-GN-E-80 | Lighting Fixtures with outlets Installation | 2026-09-16 → 2026-11-07 (+52d) | 2026-09-20 → 2026-11-11 (+52d) |  | 7d → -21.05d |  |
| 2 | **ELV SYSTEMS (TELECOM, DATA, AV & CCTV)** | 2026-09-21 → 2026-11-11 (+51d) | 2026-10-20 → 2026-12-10 (+51d) |  |  |  |
| PG-Q-CON-EX-GN-E-90 | ELV Containment & Cabling Works | 2026-09-21 → 2026-11-11 (+51d) | 2026-09-24 → 2026-11-15 (+52d) |  | 7d → -21.05d |  |
| PG-Q-CON-EX-GN-E-100 | Fiber Optic Pull Box Installation | 2026-09-26 → 2026-11-15 (+50d) | 2026-09-28 → 2026-11-18 (+51d) |  | 7d → -16.55d |  |
| PG-Q-CON-EX-GN-E-110 | Telephone and Data Outlet Installation | 2026-09-29 → 2026-11-18 (+50d) | 2026-10-03 → 2026-11-23 (+51d) |  | 7d → -16.55d |  |
| PG-Q-CON-EX-GN-E-120 | Telecom Equipment and AV HDMI Installation | 2026-10-04 → 2026-11-23 (+50d) | 2026-10-07 → 2026-11-28 (+52d) |  | 7d → -16.55d |  |
| PG-Q-CON-EX-GN-E-130 | CCTV Rack / Cabinet Installation | 2026-10-08 → 2026-11-28 (+51d) | 2026-10-12 → 2026-12-02 (+51d) |  | 7d → -16.55d |  |
| PG-Q-CON-EX-GN-E-140 | NVR and CCTV Monitor Installation | 2026-10-13 → 2026-12-02 (+50d) | 2026-10-17 → 2026-12-07 (+51d) |  | 7d → -16.55d |  |
| PG-Q-CON-EX-GN-E-150 | IP Camera Installation | 2026-10-18 → 2026-12-07 (+50d) | 2026-10-20 → 2026-12-10 (+51d) |  | 7d → -16.55d |  |
| 3 | **FIRE ALARM SYSTEM** | 2026-09-26 → 2026-11-15 (+50d) | 2026-11-01 → 2026-12-22 (+51d) |  |  |  |
| PG-Q-CON-EX-GN-E-160 | Fire Alarm Containment & Cabling | 2026-09-26 → 2026-11-15 (+50d) | 2026-10-04 → 2026-11-24 (+51d) |  | 7d → -21.05d |  |
| PG-Q-CON-EX-GN-E-170 | Fire Alarm Control Panel (FACP) Installation | 2026-10-05 → 2026-11-24 (+50d) | 2026-10-13 → 2026-12-03 (+51d) |  | 7d → -21.05d |  |
| PG-Q-CON-EX-GN-E-180 | Initiating Devices (Detectors & Manual Pull Station) | 2026-10-14 → 2026-12-03 (+50d) | 2026-10-22 → 2026-12-13 (+52d) |  | 7d → -21.05d |  |
| PG-Q-CON-EX-GN-E-190 | Notification Appliances (Strobe with Sounder) | 2026-10-24 → 2026-12-13 (+50d) | 2026-11-01 → 2026-12-22 (+51d) |  | 7d → -21.05d |  |
| 3 | **PARKING WORK** |  | 2026-11-09 → 2026-12-22 (+43d) |  |  |  |
| PG-Q-CON-EX-GN-PR-20_R | Interlock tiles(Remaining) | 2026-11-01 → 2026-07-06 A (-118d) | 2026-11-03 → 2026-07-10 A (-116d) | 0% → 100% | 0d → none | PG-Q-CON-EX-GN-PR-10 FF, PG-Q-CON-B-AR-RF-30 FF, PG-Q-CON-B-AR-WF-60 FF, PG-Q-CON-B-AR-GF-80 FF, PG-Q-EN-LS-SD-AP-20, PG-Q-PR-SL-LS-DL-20, PG-Q-CON-EX-GN-PR-20 → PG-Q-EN-LS-SD-AP-20, PG-Q-PR-SL-LS-DL-20, PG-Q-CON-EX-GN-PR-20, PG-Q-EN-EL-SD-AP-70, PG-Q-PR-SL-AR-DL-30, PG-Q-EN-AR-SD-AP-30, PG-Q-EN-AR-SD-AP-90 |
| PG-Q-CON-EX-GN-PR-10 | Installlation of Parking Accessories | 2026-10-29 → 2026-08-20 A (-70d) | 2026-11-03 → 2026-12-10 (+37d) | 0% → 90% | 0d → -16.55d | PG-Q-CON-EX-GN-E-150, PG-IN-MS-30 → PG-Q-CON-EX-GN-E-150, PG-IN-MS-30, PG-Q-CON-EX-GN-E-150 FF, PG-IN-MS-30 FF |
| PG-Q-CON-EX-GN-PR-30 | Marking & Signages | 2026-11-04 → 2026-12-16 (+42d) | 2026-11-09 → 2026-12-22 (+43d) |  | 0d → -21.05d | PG-Q-CON-EX-GN-PR-20_R, PG-Q-EN-LS-SD-AP-80, PG-Q-PR-SL-LS-DL-50_R, PG-Q-PR-SL-LS-DL-60_R, PG-Q-CON-EX-GN-E-190 FF → PG-Q-CON-EX-GN-PR-20_R, PG-Q-EN-LS-SD-AP-80, PG-Q-PR-SL-LS-DL-50_R, PG-Q-PR-SL-LS-DL-60_R, PG-Q-CON-EX-GN-E-190 FF, PG-Q-CON-EX-GN-PR-10, PG-Q-CON-B-AR-RF-30, PG-Q-CON-B-AR-WF-60, PG-Q-CON-B-AR-GF-80 |
| 4 | **SERVICE CONNECTION** | 2026-11-10 → 2026-07-12 (-121d) | 2026-12-16 → 2027-01-11 (+26d) |  |  |  |
| PG-Q-CON-EX-GN-SC-10 | Excavation & Trench Preparation | 2026-11-10 → 2026-07-12 A (-121d) | 2026-11-18 → 2026-08-20 A (-90d) | 0% → 100% | 0d → none | PG-Q-CON-EX-GN-PR-30 → PG-Q-CON-EX-GN-PR-30 FF, PG-Q-CON-EX-GN-PR-20_R |
| PG-Q-CON-EX-GN-SC-20 | HDPE Pipe Laying & Valve Installation | 2026-11-19 → 2026-08-14 A (-97d) | 2026-11-28 → 2026-12-23 (+25d) | 0% → 90% | 0d → -21.05d | PG-Q-CON-EX-GN-SC-10 → PG-Q-CON-EX-GN-SC-10 SS |
| PG-Q-CON-EX-GN-SC-30 | Connection to City Network | 2026-11-29 → 2026-12-23 (+24d) | 2026-12-07 → 2027-01-02 (+26d) |  | 0d → -21.05d | PG-Q-CON-EX-GN-SC-20, PG-Q-CON-EX-GN-SC-10 → PG-Q-CON-EX-GN-SC-20, PG-Q-CON-EX-GN-SC-10, PG-Q-CON-EX-GN-PR-30 |
| PG-Q-CON-EX-GN-SC-40 | Backfilling | 2026-12-08 → 2027-01-02 (+25d) | 2026-12-16 → 2027-01-11 (+26d) |  | 0d → -21.05d |  |
| LS | **LANDSCAPING WORKS** |  | 2026-12-14 → 2026-12-07 (-7d) |  |  |  |
| HSP | **HARDSCAPE WORK** |  | 2026-12-14 → 2026-12-07 (-7d) |  |  |  |
| PG-Q-CON-EX-LS-HS-10_R | Curbstone Installation(Remaining) | 2026-09-02 → 2026-07-07 A (-57d) | 2026-09-13 → 2026-08-14 A (-30d) | 0% → 100% | 2d → none | PG-Q-CON-EX-GN-FN-50 FF, PG-Q-EN-LS-SD-AP-10, PG-Q-PR-SL-LS-DL-40, PG-Q-CON-EX-TW-ST-70, PG-Q-CON-EX-TW-ST-70 FF, PG-Q-CON-EX-LS-HS-10, PG-Q-CON-EX-TW-IR-40, PG-Q-CON-EX-LS-HS-40_R → PG-Q-CON-EX-GN-FN-50 FF, PG-Q-EN-LS-SD-AP-10, PG-Q-PR-SL-LS-DL-40, PG-Q-CON-EX-TW-ST-70, PG-Q-CON-EX-TW-ST-70 FF, PG-Q-CON-EX-LS-HS-10, PG-Q-CON-EX-TW-IR-40 FF, PG-Q-CON-EX-LS-HS-40_R SS, PG-Q-CON-EX-GN-FN-10, PG-Q-EN-ME-SD-AP-40 |
| PG-Q-CON-EX-LS-HS-40_R | Bike Path and Walking Path Construction(Remaining) | 2026-07-18 → 2026-07-08 A (-10d) | 2026-08-05 → 2026-08-14 A (+9d) | 0% → 100% | 25d → none | PG-Q-EN-LS-SD-AP-50, PG-Q-EN-LS-SD-AP-60, PG-Q-PR-LL-LS-DL-10_R, PG-Q-CON-EX-LS-HS-40 → PG-Q-EN-LS-SD-AP-50, PG-Q-EN-LS-SD-AP-60, PG-Q-CON-EX-LS-HS-40, PG-Q-PR-LL-LS-DL-10_R FF, PG-Q-PR-LL-LS-DL-10_R SS |
| PG-Q-CON-EX-LS-HS-30_R | Stamped Concrete Floor(Remaining) | 2026-09-14 → 2026-07-31 A (-45d) | 2026-09-29 → 2026-08-27 A (-33d) | 0% → 100% | 2d → none | PG-Q-EN-LS-SD-AP-30, PG-Q-CON-EX-LS-HS-30, PG-Q-CON-EX-LS-HS-10_R → PG-Q-EN-LS-SD-AP-30, PG-Q-CON-EX-LS-HS-30, PG-Q-CON-EX-LS-HS-10_R SS |
| PG-Q-CON-EX-LS-HS-50_R | Install Recycled Precast Concrete Seats(Remaining) | 2026-11-22 → 2026-08-20 A (-94d) | 2026-12-02 → 2026-11-25 (-7d) | 0% → 75% | 2d → 8.25d | PG-Q-PR-LL-LS-DL-20_R SS, PG-Q-CON-EX-LS-HS-50, PG-Q-CON-EX-LS-SS-10 → PG-Q-PR-LL-LS-DL-20_R SS, PG-Q-CON-EX-LS-HS-50, PG-Q-CON-EX-LS-SS-10, PG-Q-CON-EX-LS-SS-10 FF |
| PG-Q-CON-EX-LS-HS-20_R | Interlock Tiles Grey Scale with Black Marble Chips(Remaining) | 2026-09-30 → 2026-08-27 A (-34d) | 2026-10-14 → 2026-10-28 (+14d) | 0% → 85% | 2d → 8.25d | PG-Q-CON-EX-LS-HS-20, PG-Q-CON-EX-LS-HS-30_R → PG-Q-CON-EX-LS-HS-20, PG-Q-CON-EX-LS-HS-30_R, PG-Q-CON-EX-GN-FN-50, PG-Q-CON-EX-TW-IR-40, PG-Q-CON-EX-GN-FN-50 FF, PG-Q-CON-EX-TW-IR-40 FF |
| PG-Q-CON-EX-LS-HS-60 | Install Recycled Precast Concrete Trash Bins | 2026-12-03 → 2026-11-25 (-8d) | 2026-12-14 → 2026-12-07 (-7d) |  | 2d → 8.25d |  |
| SSP | **SOFTSCAPE WORK** |  | 2026-11-21 → 2026-11-23 (+2d) |  |  |  |
| PG-Q-CON-EX-LS-SS-20_R | Lawn Area Preparation & Planting / Turfing(Remaining) | 2026-10-15 → 2026-08-27 A (-49d) | 2026-11-01 → 2026-11-03 (+2d) | 0% → 70% | 2d → 8.25d | PG-Q-EN-LS-SD-AP-70, PG-Q-PR-SL-LS-DL-80_R, PG-Q-CON-EX-LS-SS-20, PG-Q-CON-EX-LS-HS-20_R → PG-Q-EN-LS-SD-AP-70, PG-Q-PR-SL-LS-DL-80_R, PG-Q-CON-EX-LS-SS-20, PG-Q-CON-EX-LS-HS-20_R, PG-Q-PR-SL-LS-DL-80_R FF, PG-Q-CON-EX-LS-HS-20_R SS |
| PG-Q-CON-EX-LS-SS-10 | Planting Trees | 2026-11-02 → 2026-11-03 (+1d) | 2026-11-21 → 2026-11-23 (+2d) |  | 2d → 8.25d |  |
| W.T | **TANK WORKS** |  | 2026-08-19 → 2026-10-10 (+52d) |  |  |  |
| 2 | **WATER STORAGE TANK** |  | 2026-08-19 → 2026-10-10 (+52d) |  |  |  |
| PG-Q-CON-EX-TW-IR-10_R | Excavation(Remaining) | 2026-06-25 → 2026-07-07 A (+12d) | 2026-07-02 → 2026-07-08 A (+6d) | 0% → 100% | 24d → none |  |
| PG-Q-CON-EX-TW-IR-20 | RCC Foundation | 2026-07-04 → 2026-07-09 A (+5d) | 2026-07-20 → 2026-08-26 A (+37d) | 0% → 100% | 24d → none |  |
| PG-Q-CON-EX-TW-IR-30 | Backfilling | 2026-07-21 → 2026-08-20 A (+30d) | 2026-07-28 → 2026-08-27 A (+30d) | 0% → 100% | 24d → none |  |
| PG-Q-CON-EX-TW-IR-40 | GRP Water Tank Installation | 2026-08-11 → 2026-09-30 (+50d) | 2026-08-19 → 2026-10-10 (+52d) |  | 13d → 22.55d |  |
| AD | **AIR DOME CONSTRUCTION** |  | 2026-11-26 → 2026-12-30 (+34d) |  |  |  |
| 1 | **CIVIL WORK** |  | 2026-09-10 → 2026-10-20 (+40d) |  |  |  |
| PG-Q-CON-EX-AD-CL-10_R | Excavation For Footing(Remaining) | 2026-07-09 A | 2026-07-15 → 2026-07-10 A (-5d) | 0% → 100% | 0d → none |  |
| PG-Q-CON-EX-AD-CL-20 | Anti-Termite Treatment | 2026-07-16 → 2026-07-11 A (-5d) | 2026-07-18 → 2026-07-12 A (-6d) | 0% → 100% | 0d → none |  |
| PG-Q-CON-EX-AD-CL-30 | PCC / Blinding Concrete | 2026-07-19 → 2026-07-23 A (+4d) | 2026-07-21 → 2026-08-06 A (+16d) | 0% → 100% | 0d → none |  |
| PG-Q-CON-EX-AD-CL-40 | RCC Foundation Works | 2026-07-22 → 2026-07-31 A (+9d) | 2026-08-04 → 2026-08-13 A (+9d) | 0% → 100% | 0d → none | PG-Q-CON-EX-AD-CL-30, PG-Q-EN-ST-SD-AP-60, PG-Q-PR-SL-CO-DL-10, PG-Q-PR-SL-CO-DL-20, PG-Q-EN-ST-SD-SB-50, PG-Q-EN-ST-SD-SB-60 → PG-Q-EN-ST-SD-AP-60, PG-Q-PR-SL-CO-DL-10, PG-Q-PR-SL-CO-DL-20, PG-Q-EN-ST-SD-SB-50, PG-Q-EN-ST-SD-SB-60, PG-Q-CON-EX-AD-CL-30 SS |
| PG-Q-CON-EX-AD-CL-50 | Backfilling with Compaction | 2026-08-05 → 2026-08-06 A (+1d) | 2026-08-11 → 2026-08-14 A (+3d) | 0% → 100% | 0d → none | PG-Q-CON-EX-AD-CL-40, PG-Q-PR-SL-LS-DL-10 → PG-Q-PR-SL-LS-DL-10, PG-Q-CON-EX-AD-CL-40 SS |
| PG-Q-CON-EX-AD-CL-60 | Installation of Anchorage System | 2026-08-12 → 2026-08-27 A (+15d) | 2026-08-20 → 2026-09-29 (+40d) | 0% → 80% | 0d → -28.4d | PG-Q-CON-EX-AD-CL-50, PG-Q-PR-LL-SP-DL-50 SS, PG-IN-MS-10 → PG-Q-CON-EX-AD-CL-50, PG-Q-PR-LL-SP-DL-50 SS, PG-IN-MS-10, PG-IN-MS-10 FF |
| PG-Q-CON-EX-AD-CL-70 | Installation of Steel Cable Structural System | 2026-08-22 → 2026-09-29 (+38d) | 2026-09-01 → 2026-10-11 (+40d) |  | 0d → -28.4d |  |
| PG-Q-CON-EX-AD-CL-80 | Installation of Membrane System | 2026-09-02 → 2026-10-11 (+39d) | 2026-09-10 → 2026-10-20 (+40d) |  | 0d → -28.4d |  |
| 2 | **ARCHITECTURAL WORK** | 2026-10-27 → 2026-08-27 (-61d) | 2026-11-26 → 2026-12-30 (+34d) |  |  |  |
| PG-Q-CON-EX-AD-AR-10 | Installation of Thermal Insulation System | 2026-10-27 → 2026-08-27 A (-61d) | 2026-11-04 → 2026-12-08 (+34d) | 0% → 50% | 0d → -28.4d | PG-Q-CON-EX-AD-CL-80, PG-Q-PR-LL-SP-DL-50, PG-Q-EN-AR-SD-AP-110, PG-Q-CON-EX-AD-EL-50, PG-Q-CON-EX-AD-EL-20, PG-Q-CON-EX-AD-CL-80 FF → PG-Q-CON-EX-AD-CL-80, PG-Q-PR-LL-SP-DL-50, PG-Q-EN-AR-SD-AP-110, PG-Q-CON-EX-AD-EL-50, PG-Q-CON-EX-AD-EL-20, PG-Q-CON-EX-AD-CL-80 FF, PG-Q-PR-LL-SP-DL-50 SS, PG-Q-EN-AR-SD-AP-110 SS, PG-Q-CON-EX-AD-EL-50 FF, PG-Q-CON-EX-AD-EL-20 FF |

| ID | Task | Start | Finish | Complete | Total float | Predecessors |
| --- | --- | --- | --- | --- | --- | --- |
| PG-Q-CON-EX-AD-AR-40 | Final Fixing of Accessories & Finishes | 2026-11-05 → 2026-12-08 (+33d) | 2026-11-14 → 2026-12-17 (+33d) |  | 0d → -28.4d |  |
| PG-Q-CON-EX-AD-AR-20 | Installation of Doors & Access Systems | 2026-11-15 → 2026-12-17 (+32d) | 2026-11-21 → 2026-12-24 (+33d) |  | 0d → -28.4d |  |
| PG-Q-CON-EX-AD-AR-30 | Installation of Logo | 2026-11-22 → 2026-12-24 (+32d) | 2026-11-26 → 2026-12-30 (+34d) |  | 0d → -28.4d |  |
| 3 | **MECHANICAL WORK** | 2026-09-12 → 2026-10-20 (+38d) | 2026-09-30 → 2026-11-08 (+39d) |  |  |  |
| PG-Q-CON-EX-AD-ME-10 | Installation of Main Air Package Units | 2026-09-12 → 2026-10-20 (+38d) | 2026-09-16 → 2026-10-26 (+40d) |  | 0d → -28.4d |  |
| PG-Q-CON-EX-AD-ME-20 | Installation of Backup Air Package Unit | 2026-09-17 → 2026-10-26 (+39d) | 2026-09-22 → 2026-11-01 (+40d) |  | 0d → -28.4d |  |
| PG-Q-CON-EX-AD-ME-30 | Installation of Complete HVAC System | 2026-09-24 → 2026-11-01 (+38d) | 2026-09-30 → 2026-11-08 (+39d) |  | 0d → -28.4d |  |
| 4 | **ELECTRICAL WORK** | 2026-08-17 → 2026-08-27 (+10d) | 2026-10-26 → 2026-12-03 (+38d) |  |  |  |
| PG-Q-CON-EX-AD-EL-10 | Installation of Electrical Boxes & MDBs | 2026-08-17 → 2026-08-27 A (+10d) | 2026-08-30 → 2026-10-01 (+32d) | 0% → 60% | 14d → -8.8d | PG-Q-EN-EL-SD-AP-120 → PG-Q-EN-EL-SD-AP-120, PG-Q-EN-EL-SD-AP-120 SS |
| PG-Q-CON-EX-AD-EL-20 | Installation of Lighting System | 2026-08-31 → 2026-10-01 (+31d) | 2026-09-13 → 2026-10-15 (+32d) |  | 14d → -8.8d |  |
| PG-Q-CON-EX-AD-EL-30 | Electrical Connections to Main Power Source (Excluding kWh Meter) | 2026-10-01 → 2026-11-08 (+38d) | 2026-10-06 → 2026-11-14 (+39d) |  | 0d → -28.4d |  |
| PG-Q-CON-EX-AD-EL-40 | Installation of Backup Generator | 2026-10-07 → 2026-11-14 (+38d) | 2026-10-13 → 2026-11-21 (+39d) |  | 0d → -28.4d |  |
| PG-Q-CON-EX-AD-EL-50 | Installation of Smart Dome System | 2026-10-14 → 2026-11-21 (+38d) | 2026-10-26 → 2026-12-03 (+38d) |  | 0d → -28.4d |  |
| B | **TOILET BUILDING WORKS** |  | 2026-10-20 → 2026-11-17 (+28d) |  |  |  |
| CVL | **CIVIL WORK** |  | 2026-10-19 → 2026-11-16 (+28d) |  |  |  |
| ST | **STRUCTURAL WORK** |  | 2026-08-04 → 2026-07-10 (-25d) |  |  |  |
| PG-Q-CON-B-STR-50 | Autoclaved aerated panel (walls) | 2026-07-25 → 2026-07-08 A (-17d) | 2026-07-28 → 2026-07-09 A (-19d) | 0% → 100% | 7d → none |  |
| PG-Q-CON-B-STR-60 | Autoclaved aerated panel (ceiling) | 2026-07-29 → 2026-07-09 A (-20d) | 2026-08-01 → 2026-07-10 A (-22d) | 0% → 100% | 7d → none |  |
| PG-Q-CON-B-STR-70 | Autoclaved aerated panel (parapet) | 2026-08-02 → 2026-07-09 A (-24d) | 2026-08-04 → 2026-07-10 A (-25d) | 0% → 100% | 7d → none |  |
| AR | **ARCHITECTURAL WORK** | 2026-08-05 → 2026-07-12 (-24d) | 2026-10-19 → 2026-11-16 (+28d) |  |  |  |
| 1 | **GENERAL FINISHES** | 2026-08-05 → 2026-07-12 (-24d) | 2026-10-19 → 2026-11-16 (+28d) |  |  |  |
| PG-Q-CON-B-AR-GF-10 | Block Works | 2026-08-05 → 2026-07-12 A (-24d) | 2026-08-11 → 2026-07-16 A (-26d) | 0% → 100% | 7d → none |  |
| PG-Q-CON-B-AR-GF-20 | Plaster | 2026-08-12 → 2026-07-22 A (-21d) | 2026-08-19 → 2026-08-05 A (-14d) | 0% → 100% | 7d → none |  |
| PG-Q-CON-B-AR-GF-30 | False Ceiling Installation & Finishing | 2026-08-20 A | 2026-08-27 → 2026-09-10 A (+14d) | 0% → 100% | 7d → none | PG-Q-CON-B-AR-GF-20, PG-Q-CON-B-GF-DR-20, PG-Q-EN-AR-SD-AP-60, PG-Q-PR-SL-AR-DL-100 → PG-Q-CON-B-AR-GF-20, PG-Q-CON-B-GF-DR-20, PG-Q-EN-AR-SD-AP-60, PG-Q-PR-SL-AR-DL-100, PG-Q-PR-SL-EL-DL-10_R, PG-Q-PR-SL-EL-DL-10_R FF |
| PG-Q-CON-B-AR-GF-40 | Wall Paint | 2026-09-16 → 2026-08-20 A (-27d) | 2026-09-30 → 2026-09-06 A (-24d) | 0% → 100% | 7d → none | PG-Q-CON-B-AR-GF-30, PG-Q-PR-SL-AR-DL-50, PG-Q-CON-B-GF-EL-20 → PG-Q-CON-B-AR-GF-30, PG-Q-PR-SL-AR-DL-50, PG-Q-CON-B-GF-EL-20, PG-Q-CON-B-AR-GF-30 SS, PG-Q-CON-B-GF-EL-20 SS |
| PG-Q-CON-B-AR-GF-50 | Epoxy Flooring | 2026-10-01 → 2026-08-20 A (-42d) | 2026-10-07 → 2026-09-23 A (-14d) | 0% → 100% | 7d → none | PG-Q-CON-B-AR-GF-40, PG-Q-EN-AR-SD-AP-50, PG-Q-PR-SL-AR-DL-30 → PG-Q-CON-B-AR-GF-40, PG-Q-EN-AR-SD-AP-50, PG-Q-PR-SL-AR-DL-30, PG-Q-CON-B-AR-GF-40 SS |
| PG-Q-CON-B-AR-GF-80 | Facade Finishing Work | 2026-10-01 → 2026-08-20 A (-42d) | 2026-10-10 → 2026-09-10 A (-30d) | 0% → 100% | 16d → none | PG-Q-EN-AR-SD-AP-90, PG-Q-EN-AR-SD-AP-100, PG-Q-PR-LL-MT-DL-20_R, PG-Q-PR-SL-AR-DL-60, PG-Q-PR-SL-AR-DL-70, PG-Q-CON-B-AR-GF-50 SS, PG-Q-PR-LL-MT-MA-20_R → PG-Q-EN-AR-SD-AP-90, PG-Q-EN-AR-SD-AP-100, PG-Q-PR-LL-MT-DL-20_R, PG-Q-PR-SL-AR-DL-60, PG-Q-PR-SL-AR-DL-70, PG-Q-CON-B-AR-GF-50 SS, PG-Q-PR-LL-MT-MA-20_R, PG-Q-PR-LL-MT-DL-20_R FF, PG-Q-PR-LL-MT-MA-20_R FF |
| PG-Q-CON-B-AR-GF-60 | Install Doors & Windows | 2026-10-08 → 2026-08-27 A (-42d) | 2026-10-13 → 2026-11-03 (+21d) | 0% → 70% | 7d → 8.7d | PG-Q-CON-B-AR-GF-50, PG-Q-EN-AR-SD-AP-30, PG-Q-EN-AR-SD-AP-80, PG-Q-EN-AR-SD-AP-40, PG-Q-PR-LL-MT-DL-10_R, PG-Q-PR-LL-MT-MA-10_R → PG-Q-CON-B-AR-GF-50, PG-Q-EN-AR-SD-AP-30, PG-Q-EN-AR-SD-AP-80, PG-Q-EN-AR-SD-AP-40, PG-Q-PR-LL-MT-DL-10_R, PG-Q-PR-LL-MT-MA-10_R, PG-Q-CON-B-AR-GF-50 SS, PG-Q-PR-LL-MT-DL-10_R SS, PG-Q-PR-LL-MT-MA-10_R FF |
| PG-Q-CON-B-AR-GF-70 | Lockers and Furniture Installation | 2026-10-14 → 2026-11-11 (+28d) | 2026-10-19 → 2026-11-16 (+28d) |  | 7d → 2.7d |  |
| 2 | **WET AREA FINISHES** | 2026-08-20 → 2026-08-06 (-14d) | 2026-10-14 → 2026-11-08 (+25d) |  |  |  |
| PG-Q-CON-B-AR-WF-20 | Wall Tiles and Partition Work | 2026-09-16 → 2026-08-06 A (-41d) | 2026-09-22 → 2026-08-14 A (-39d) | 0% → 100% | 12d → none | PG-Q-CON-B-AR-WF-10, PG-Q-CON-B-AR-GF-40 SS, PG-Q-EN-AR-SD-AP-70, PG-Q-EN-AR-SD-AP-30, PG-Q-PR-SL-AR-DL-10, PG-Q-PR-SL-AR-DL-80, PG-Q-PR-SL-AR-DL-90, PG-Q-CON-B-GF-WS-20 → PG-Q-EN-AR-SD-AP-70, PG-Q-EN-AR-SD-AP-30, PG-Q-PR-SL-AR-DL-10, PG-Q-PR-SL-AR-DL-80, PG-Q-PR-SL-AR-DL-90, PG-Q-CON-B-GF-WS-20, PG-Q-CON-B-AR-WF-10 FF, PG-Q-CON-B-AR-GF-40 FF, PG-Q-EN-AR-SD-AP-60, PG-Q-PR-SL-AR-DL-50 |
| PG-Q-CON-B-AR-WF-30 | Waterproofing on Floor | 2026-09-24 → 2026-08-14 A (-41d) | 2026-09-30 → 2026-09-07 A (-23d) | 0% → 100% | 12d → none |  |
| PG-Q-CON-B-AR-WF-40 | Floor Tiles Works | 2026-10-01 → 2026-08-14 A (-48d) | 2026-10-07 → 2026-09-07 A (-30d) | 0% → 100% | 12d → none | PG-Q-CON-B-AR-WF-30, PG-Q-PR-SL-AR-DL-20 → PG-Q-PR-SL-AR-DL-20, PG-Q-CON-B-AR-WF-30 FF |
| PG-Q-CON-B-AR-WF-10 | False Ceiling Installation & Finishing | 2026-08-20 → 2026-08-27 A (+7d) | 2026-08-27 → 2026-09-04 A (+8d) | 0% → 100% | 7d → none |  |
| PG-Q-CON-B-AR-WF-50 | Toliet accessories Installation Works | 2026-10-08 → 2026-08-27 A (-42d) | 2026-10-14 → 2026-09-10 A (-34d) | 0% → 100% | 12d → none | PG-Q-CON-B-AR-WF-40, PG-Q-EN-AR-SD-AP-70, PG-Q-PR-SL-AR-DL-110 → PG-Q-CON-B-AR-WF-40, PG-Q-EN-AR-SD-AP-70, PG-Q-PR-SL-AR-DL-110, PG-Q-CON-B-AR-WF-40 SS |
| PG-Q-CON-B-AR-WF-60 | Install Doors | 2026-10-08 → 2026-11-02 (+25d) | 2026-10-13 → 2026-11-08 (+26d) |  | 13d → 11.2d |  |
| 3 | **ROOF FINISHES** | 2026-10-01 → 2026-08-20 (-42d) | 2026-10-19 → 2026-11-16 (+28d) |  |  |  |
| PG-Q-CON-B-AR-RF-10 | Waterproofing on Floor | 2026-10-01 → 2026-08-20 A (-42d) | 2026-10-05 → 2026-09-08 A (-27d) | 0% → 100% | 12d → none | PG-Q-CON-B-AR-WF-30, PG-Q-EN-AR-SD-AP-20, PG-Q-PR-SL-CO-DL-30, PG-Q-PR-SL-AR-DL-120 → PG-Q-CON-B-AR-WF-30, PG-Q-EN-AR-SD-AP-20, PG-Q-PR-SL-CO-DL-30, PG-Q-PR-SL-AR-DL-120, PG-Q-CON-B-AR-WF-10, PG-Q-CON-B-AR-GF-40, PG-Q-CON-B-AR-WF-30 SS, PG-Q-CON-B-AR-WF-10 SS, PG-Q-CON-B-AR-GF-40 SS |
| PG-Q-CON-B-AR-RF-20 | Epoxy Flooring and Finishes | 2026-10-06 → 2026-08-20 A (-47d) | 2026-10-12 → 2026-10-15 (+3d) | 0% → 90% | 12d → 29.1d | PG-Q-CON-B-AR-RF-10, PG-Q-PR-SL-AR-DL-30 → PG-Q-CON-B-AR-RF-10, PG-Q-PR-SL-AR-DL-30, PG-Q-CON-B-AR-RF-10 SS |
| PG-Q-CON-B-AR-RF-30 | Steel ladder and Steel roof scupper Installation | 2026-10-19 → 2026-11-16 (+28d) | 2026-10-19 → 2026-11-16 (+28d) |  | 7d → 2.7d |  |
| MEP | **MEP WORK** |  | 2026-10-20 → 2026-11-17 (+28d) |  |  |  |
| MEC | **MECANICAL WORKS** |  | 2026-10-20 → 2026-11-17 (+28d) |  |  |  |
| FF | **FIRE FIGHTING SYSTEM** | 2026-10-20 → 2026-11-17 (+28d) | 2026-10-20 → 2026-11-17 (+28d) |  |  |  |
| PG-Q-CON-B-GF-FF-10 | Fire Extinguisher Installation | 2026-10-20 → 2026-11-17 (+28d) | 2026-10-20 → 2026-11-17 (+28d) |  | 7d → 2.7d |  |
| DS | **SEWER AND DRAINAGE SYSTEM** |  | 2026-09-02 → 2026-10-14 (+42d) |  |  |  |
| PG-Q-CON-B-GF-DR-30 | Sanitaryware Installation (Final Fix) | 2026-09-01 → 2026-10-13 (+42d) | 2026-09-02 → 2026-10-14 (+42d) |  | 7d → 24.2d |  |
| HV | **HVAC SYSTEM** | 2026-08-12 → 2026-08-13 (+1d) | 2026-08-23 → 2026-10-07 (+45d) |  |  |  |
| PG-Q-CON-B-GF-AC-10 | Duct Work and Exhaust Fan Installation | 2026-08-12 → 2026-08-13 A (+1d) | 2026-08-19 → 2026-08-20 A (+1d) | 0% → 100% | 9d → none | PG-Q-CON-B-AR-GF-10, PG-Q-PR-SL-AC-DL-20_R, PG-Q-PR-SL-AC-DL-40_R → PG-Q-CON-B-AR-GF-10, PG-Q-PR-SL-AC-DL-20_R, PG-Q-PR-SL-AC-DL-40_R, PG-Q-PR-SL-AC-PO-20, PG-Q-PR-SL-AC-PO-40 |
| PG-Q-CON-B-GF-AC-20 | Split AC, Grills & Diffuser Installation | 2026-08-20 → 2026-10-04 (+45d) | 2026-08-23 → 2026-10-07 (+45d) |  | 9d → 29d | PG-Q-CON-B-GF-AC-10, PG-Q-CON-B-AR-GF-20, PG-Q-PR-SL-AC-DL-10_R, PG-Q-PR-SL-AC-DL-30_R → PG-Q-CON-B-GF-AC-10, PG-Q-CON-B-AR-GF-20, PG-Q-PR-SL-AC-DL-10_R, PG-Q-PR-SL-AC-DL-30_R, PG-Q-PR-SL-AC-DL-20_R, PG-Q-PR-SL-AC-DL-40_R |
| WS | **WATER SUPPLY SYSTEM** |  | 2026-08-31 → 2026-09-07 (+7d) |  |  |  |
| PG-Q-CON-B-GF-WS-20 | Water Supply Pipes Installation (Cold and Hot Water) | 2026-08-24 → 2026-07-22 A (-33d) | 2026-08-25 → 2026-07-31 A (-25d) | 0% → 100% | 9d → none | PG-Q-CON-B-GF-WS-10, PG-Q-CON-B-GF-AC-20, PG-Q-EN-ME-SD-AP-10, PG-Q-PR-SL-PB-DL-10, PG-Q-CON-B-GF-AC-10 → PG-Q-CON-B-GF-WS-10, PG-Q-EN-ME-SD-AP-10, PG-Q-PR-SL-PB-DL-10, PG-Q-CON-B-AR-GF-10 |
| PG-Q-CON-B-GF-WS-30 | Water Supply Accesories and Booster pump Installation | 2026-08-29 → 2026-08-20 A (-9d) | 2026-08-31 → 2026-09-07 A (+7d) | 0% → 100% | 7d → none | PG-Q-CON-B-GF-WS-20, PG-Q-CON-B-AR-WF-10, PG-Q-EN-ME-SD-AP-20, PG-Q-EN-ME-SD-AP-30, PG-Q-PR-LL-PB-DL-10_R, PG-Q-PR-LL-PB-MA-10_R → PG-Q-CON-B-GF-WS-20, PG-Q-CON-B-AR-WF-10, PG-Q-EN-ME-SD-AP-20, PG-Q-EN-ME-SD-AP-30, PG-Q-PR-LL-PB-DL-10_R, PG-Q-PR-LL-PB-MA-10_R, PG-Q-CON-B-GF-AC-20, PG-Q-CON-B-GF-AC-10, PG-Q-CON-B-AR-WF-10 SS, PG-Q-PR-LL-PB-DL-10_R SS, PG-Q-CON-B-GF-AC-20 FF |
| ELC | **ELECTRICAL WORKS** | 2026-07-13 → 2026-07-22 (+9d) | 2026-09-15 → 2026-09-08 (-7d) |  |  |  |
| PG-Q-CON-B-GF-EL-10 | Pipes & Conduits Installation | 2026-07-13 → 2026-07-22 A (+9d) | 2026-07-21 → 2026-07-23 A (+2d) | 0% → 100% | 25d → none | PG-Q-CON-B-GF-DR-10, PG-Q-PR-SL-EL-DL-10_R → PG-Q-CON-B-GF-DR-10, PG-Q-PR-SL-EL-PO-10 |
| PG-Q-CON-B-GF-EL-20 | Electrical & ELV Wiring Works | 2026-09-13 → 2026-08-20 A (-24d) | 2026-09-15 → 2026-09-08 A (-7d) | 0% → 100% | 7d → none | PG-Q-CON-B-GF-EL-40 → PG-Q-CON-B-GF-EL-40, PG-Q-CON-B-GF-EL-40 SS |
| PG-Q-CON-B-GF-EL-30 | Fire Alarm Devices Installation | 2026-09-06 → 2026-08-20 A (-17d) | 2026-09-08 A | 0% → 100% | 7d → none | PG-Q-CON-B-GF-EL-50 → PG-Q-CON-B-GF-EL-50, PG-Q-CON-B-GF-EL-50 SS |
| PG-Q-CON-B-GF-EL-40 | Telecom & CCTV Devices Installation | 2026-09-09 → 2026-08-20 A (-20d) | 2026-09-12 → 2026-09-08 A (-4d) | 0% → 100% | 7d → none | PG-Q-CON-B-GF-EL-30 → PG-Q-CON-B-GF-EL-30, PG-Q-CON-B-GF-EL-30 SS |
| PG-Q-CON-B-GF-EL-50 | Electrical Light Fixtures Installation | 2026-09-03 → 2026-08-20 A (-14d) | 2026-09-05 → 2026-09-08 A (+3d) | 0% → 100% | 7d → none | PG-Q-CON-B-GF-DR-30, PG-Q-PR-LL-EL-DL-40_R → PG-Q-CON-B-GF-DR-30, PG-Q-PR-LL-EL-DL-40_R, PG-Q-CON-B-GF-DR-30 FF, PG-Q-PR-LL-EL-DL-40_R SS |
| TE & CO | **PROJECT CLOSOUT** |  | 2026-12-16 → 2027-01-19 (+34d) |  |  |  |
| PG-Q-PCL-10_R | Testing, Commessioning for All Systems(Remaining) | 2026-11-15 → 2026-08-06 A (-101d) | 2026-11-26 → 2026-12-30 (+34d) | 0% → 45% | 0d → -28.4d | PG-Q-CON-B-GF-EL-20 FF, PG-Q-CON-B-GF-WS-30 FF, PG-Q-CON-B-GF-AC-20 FF, PG-Q-CON-B-GF-DR-30 FF, PG-Q-CON-B-GF-FF-10 FF, PG-Q-CON-EX-AD-AR-30 FF, PG-Q-CON-EX-AD-EL-50 FF, PG-Q-CON-EX-AD-ME-30 FF, PG-Q-CON-EX-LS-SS-20_R SS, PG-Q-PCL-10 → PG-Q-CON-B-GF-EL-20 FF, PG-Q-CON-B-GF-WS-30 FF, PG-Q-CON-B-GF-AC-20 FF, PG-Q-CON-B-GF-DR-30 FF, PG-Q-CON-B-GF-FF-10 FF, PG-Q-CON-EX-AD-AR-30 FF, PG-Q-CON-EX-AD-EL-50 FF, PG-Q-CON-EX-AD-ME-30 FF, PG-Q-PCL-10, PG-Q-CON-EX-LS-SS-20_R FF |
| PG-Q-PCL-20 | As-Built Drawings | 2026-11-15 → 2026-09-23 A (-53d) | 2026-12-02 → 2027-01-06 (+35d) | 0% → 20% | 8.8d → -21.46d |  |
| PG-Q-PCL-30 | Snag list Submission | 2026-11-28 → 2026-12-30 (+32d) | 2026-11-30 → 2027-01-03 (+34d) |  | 0d → -28.4d |  |
| PG-Q-PCL-40 | Snag list Closeout | 2026-12-01 → 2027-01-03 (+33d) | 2026-12-12 → 2027-01-14 (+33d) |  | 0d → -28.4d |  |
| PG-Q-PCL-50 | Issuing Approvals | 2026-12-13 → 2027-01-14 (+32d) | 2026-12-15 → 2027-01-18 (+34d) |  | 0d → -28.4d |  |
| PG-Q-PCL-60 | Handing Over | 2026-12-16 → 2027-01-18 (+33d) | 2026-12-16 → 2027-01-19 (+34d) |  | 0d → -28.4d |  |
| HAIL | **HAIL** |  | 2026-12-16 → 2027-01-09 (+24d) |  |  |  |
| ENG | **ENGINEERING** |  | 2026-07-14 → 2026-09-17 (+65d) |  |  |  |
| 3 | **MATERIAL SUBMITTALS** |  | 2026-07-06 → 2026-09-01 (+57d) |  |  |  |
| 1 | **LONG LEAD ITEMS** |  | 2026-07-06 → 2026-09-01 (+57d) |  |  |  |
| 9 | **ELECTRICAL WORK** |  | 2026-07-06 → 2026-09-01 (+57d) |  |  |  |

| ID | Task | Start | Finish | Complete | Total float | Predecessors |
| --- | --- | --- | --- | --- | --- | --- |
| PG-H-PR-LL-EL-MS-10_R | Main Distribution Board(Remaining) | 2026-06-25 → 2026-07-11 A (+16d) | 2026-07-04 → 2026-08-03 A (+30d) | 0% → 100% | 15d → none |  |
| PG-H-PR-LL-EL-MS-20_R | Power Panels (Pump, Street Light)(Remaining) | 2026-06-25 → 2026-07-11 A (+16d) | 2026-07-04 → 2026-08-03 A (+30d) | 0% → 100% | 29d → none |  |
| PG-H-PR-LL-EL-MS-30_R | Site Lighting Poles(Remaining) | 2026-06-25 → 2026-07-11 A (+16d) | 2026-07-06 → 2026-08-03 A (+28d) | 0% → 100% | 18d → none |  |
| PG-H-PR-LL-EL-MS-40_R | Lighting Fixtures(Remaining) | 2026-06-25 → 2026-07-11 A (+16d) | 2026-07-06 → 2026-07-23 A (+17d) | 0% → 100% | 15d → none |  |
| PG-H-PR-LL-EL-MS-50_R | Grounding System Materials (Earth pit rod, LPS, etc)(Remaining) | 2026-06-25 → 2026-07-11 A (+16d) | 2026-07-02 → 2026-09-01 A (+61d) | 0% → 100% | 17d → none |  |
| PG-H-PR-LL-EL-MS-60_R | Telecommunications & Data System Materials (Telephone outlet, CCTV, etc)(Remaining) | 2026-06-25 → 2026-07-11 A (+16d) | 2026-07-06 → 2026-09-01 A (+57d) | 0% → 100% | 28d → none |  |
| PG-H-PR-LL-EL-MS-70_R | Security and Access Control System Materials(Remaining) | 2026-06-25 → 2026-07-11 A (+16d) | 2026-07-06 → 2026-09-01 A (+57d) | 0% → 100% | 31d → none |  |
| PG-H-PR-LL-EL-MS-80_R | Fire Alarm System Materials(Remaining) | 2026-06-25 → 2026-08-27 A (+63d) | 2026-07-06 → 2026-09-01 A (+57d) | 0% → 100% | 31d → none |  |
| 4 | **MATERIAL APPROVALS** |  | 2026-07-14 → 2026-09-17 (+65d) |  |  |  |
| 1 | **LONG LEAD ITEMS** |  | 2026-07-14 → 2026-09-17 (+65d) |  |  |  |
| 9 | **ELECTRICAL WORK** |  | 2026-07-14 → 2026-09-17 (+65d) |  |  |  |
| PG-H-PR-LL-EL-MA-40_R | Lighting Fixtures(Remaining) | 2026-06-25 → 2026-07-23 A (+28d) | 2026-07-06 → 2026-07-23 A (+17d) | 0% → 100% | 15d → none |  |
| PG-H-PR-LL-EL-MA-10_R | Main Distribution Board(Remaining) | 2026-06-25 → 2026-07-30 A (+35d) | 2026-07-06 → 2026-09-17 A (+73d) | 0% → 100% | 27d → none |  |
| PG-H-PR-LL-EL-MA-20_R | Power Panels (Pump, Street Light)(Remaining) | 2026-06-25 → 2026-07-30 A (+35d) | 2026-07-06 → 2026-09-17 A (+73d) | 0% → 100% | 29d → none |  |
| PG-H-PR-LL-EL-MA-30_R | Site Lighting Poles(Remaining) | 2026-06-25 → 2026-07-30 A (+35d) | 2026-07-06 → 2026-09-17 A (+73d) | 0% → 100% | 18d → none |  |
| PG-H-PR-LL-EL-MA-50_R | Grounding System Materials (Earth pit rod, LPS, etc)(Remaining) | 2026-07-04 → 2026-08-27 A (+54d) | 2026-07-14 → 2026-09-17 A (+65d) | 0% → 100% | 17d → none | PG-H-PR-LL-EL-MS-50_R, PG-H-PR-LL-EL-MA-50 → PG-H-PR-LL-EL-MS-50_R, PG-H-PR-LL-EL-MA-50, PG-H-PR-LL-EL-MS-50_R SS |
| PG-H-PR-LL-EL-MA-60_R | Telecommunications & Data System Materials (Telephone outlet, CCTV, etc)(Remaining) | 2026-06-25 → 2026-08-27 A (+63d) | 2026-07-06 → 2026-09-17 A (+73d) | 0% → 100% | 28d → none |  |
| PG-H-PR-LL-EL-MA-70_R | Security and Access Control System Materials(Remaining) | 2026-06-25 → 2026-08-27 A (+63d) | 2026-07-06 → 2026-09-17 A (+73d) | 0% → 100% | 42d → none |  |
| PG-H-PR-LL-EL-MA-80_R | Fire Alarm System Materials(Remaining) | 2026-06-25 → 2026-08-27 A (+63d) | 2026-07-06 → 2026-09-17 A (+73d) | 0% → 100% | 31d → none |  |
| PR | **PROCUREMENT** |  | 2026-08-26 → 2026-10-27 (+62d) |  |  |  |
| 1 | **LONG LEAD ITEMS** |  | 2026-08-26 → 2026-10-27 (+62d) |  |  |  |
| 2 | **PURCHASE ORDER** |  | 2026-07-22 → 2026-09-08 (+48d) |  |  |  |
| 9 | **ELECTRICAL WORK** |  | 2026-07-22 → 2026-09-08 (+48d) |  |  |  |
| PG-H-PR-LL-EL-PO-40_R | Lighting Fixtures(Remaining) | 2026-07-07 → 2026-07-23 A (+16d) | 2026-07-14 → 2026-07-23 A (+9d) | 0% → 100% | 15d → none |  |
| PG-H-PR-LL-EL-PO-10_R | Main Distribution Board(Remaining) | 2026-07-07 → 2026-08-05 A (+29d) | 2026-07-14 → 2026-09-08 A (+56d) | 0% → 100% | 27d → none | PG-H-PR-LL-EL-PO-10, PG-H-PR-LL-EL-MA-10_R → PG-H-PR-LL-EL-PO-10, PG-H-PR-LL-EL-MA-10_R SS |
| PG-H-PR-LL-EL-PO-20_R | Power Panels (Pump, Street Light)(Remaining) | 2026-07-07 → 2026-08-05 A (+29d) | 2026-07-14 → 2026-09-08 A (+56d) | 0% → 100% | 29d → none | PG-H-PR-LL-EL-PO-20, PG-H-PR-LL-EL-MA-20_R → PG-H-PR-LL-EL-PO-20, PG-H-PR-LL-EL-MA-20_R SS |
| PG-H-PR-LL-EL-PO-30_R | Site Lighting Poles(Remaining) | 2026-07-07 → 2026-08-05 A (+29d) | 2026-07-14 → 2026-09-08 A (+56d) | 0% → 100% | 18d → none | PG-H-PR-LL-EL-PO-30, PG-H-PR-LL-EL-MA-30_R → PG-H-PR-LL-EL-PO-30, PG-H-PR-LL-EL-MA-30_R SS |
| PG-H-PR-LL-EL-PO-50_R | Grounding System Materials (Earth pit rod, LPS, etc)(Remaining) | 2026-07-15 → 2026-08-27 A (+43d) | 2026-07-22 → 2026-09-08 A (+48d) | 0% → 100% | 17d → none | PG-H-PR-LL-EL-PO-50, PG-H-PR-LL-EL-MA-50_R → PG-H-PR-LL-EL-PO-50, PG-H-PR-LL-EL-MA-50_R, PG-H-PR-LL-EL-MA-50_R SS |
| PG-H-PR-LL-EL-PO-60_R | Telecommunications & Data System Materials (Telephone outlet, CCTV, etc)(Remaining) | 2026-07-07 → 2026-08-27 A (+51d) | 2026-07-14 → 2026-09-08 A (+56d) | 0% → 100% | 28d → none | PG-H-PR-LL-EL-PO-60, PG-H-PR-LL-EL-MA-60_R → PG-H-PR-LL-EL-PO-60, PG-H-PR-LL-EL-MA-60_R, PG-H-PR-LL-EL-MA-60_R SS |
| PG-H-PR-LL-EL-PO-70_R | Security and Access Control System Materials(Remaining) | 2026-07-07 → 2026-08-27 A (+51d) | 2026-07-14 → 2026-09-08 A (+56d) | 0% → 100% | 42d → none | PG-H-PR-LL-EL-PO-70, PG-H-PR-LL-EL-MA-70_R → PG-H-PR-LL-EL-PO-70, PG-H-PR-LL-EL-MA-70_R, PG-H-PR-LL-EL-MA-70_R SS |
| PG-H-PR-LL-EL-PO-80_R | Fire Alarm System Materials(Remaining) | 2026-07-07 → 2026-08-27 A (+51d) | 2026-07-14 → 2026-09-08 A (+56d) | 0% → 100% | 31d → none | PG-H-PR-LL-EL-PO-80, PG-H-PR-LL-EL-MA-80_R → PG-H-PR-LL-EL-PO-80, PG-H-PR-LL-EL-MA-80_R, PG-H-PR-LL-EL-MA-80_R SS |
| 3 | **MANUFACTURE / FABRICATION** |  | 2026-08-12 → 2026-10-24 (+73d) |  |  |  |
| 1 | **EXTERNAL / LANDSCAPE WORK** |  | 2026-07-23 → 2026-09-10 (+49d) |  |  |  |
| PG-H-PR-LL-LS-MF-30_R | Fence, gates and accessories(Remaining) | 2026-06-25 → 2026-07-23 A (+28d) | 2026-06-30 → 2026-09-10 A (+72d) | 0% → 100% | 14.6d → none |  |
| PG-H-PR-LL-LS-MF-10_R | Bike and Walk Path Materials(Remaining) | 2026-06-25 → 2026-07-30 A (+35d) | 2026-07-23 → 2026-09-10 A (+49d) | 0% → 100% | 52.6d → none |  |
| PG-H-PR-LL-LS-MF-20_R | Benches, Seats (Rectangular & Circular)(Remaining) | 2026-06-25 → 2026-08-05 A (+41d) | 2026-07-23 → 2026-09-10 A (+49d) | 0% → 100% | 72.6d → none |  |
| 2 | **SPORTS & RECREATIONAL FACILITIES WORK** |  | 2026-07-23 → 2026-09-10 (+49d) |  |  |  |
| PG-H-PR-LL-SP-MF-10_R | Football Playground Materials (Flooring, goal post, nets, paints, etc)(Remaining) | 2026-06-25 → 2026-07-30 A (+35d) | 2026-07-23 → 2026-09-10 A (+49d) | 0% → 100% | 59d → none |  |
| PG-H-PR-LL-SP-MF-20_R | Tartan Floor(Remaining) | 2026-06-25 → 2026-07-30 A (+35d) | 2026-07-23 → 2026-09-10 A (+49d) | 0% → 100% | 59d → none |  |
| 3 | **CONCRETE WORK** |  | 2026-07-06 → 2026-06-27 (-9d) |  |  |  |
| PG-H-PR-LL-CO-MF-10_R | Autoclaved Aerated Panel(Remaining) | 2026-06-25 → 2026-06-24 A (-1d) | 2026-07-06 → 2026-06-27 A (-9d) | 0% → 100% | 18d → none |  |
| 5 | **METAL WORK** |  | 2026-07-23 → 2026-10-24 (+93d) |  |  |  |
| PG-H-PR-LL-MT-MF-10_R | Metal Doors(Remaining) | 2026-06-25 → 2026-09-26 (+93d) | 2026-07-23 → 2026-10-24 (+93d) |  | 57d → 5.5d |  |
| PG-H-PR-LL-MT-MF-20_R | Curtain Wall(Remaining) | 2026-06-25 → 2026-09-26 (+93d) | 2026-07-23 → 2026-10-24 (+93d) |  | 57d → 7d |  |
| 7 | **PLUMBING WORK** |  | 2026-07-23 → 2026-09-10 (+49d) |  |  |  |
| PG-H-PR-LL-PB-MF-10_R | Booster Pump(Remaining) | 2026-06-25 → 2026-08-27 A (+63d) | 2026-07-23 → 2026-09-10 A (+49d) | 0% → 100% | 27d → none |  |
| PG-H-PR-LL-PB-MF-20_R | GRP Sectional Panel Water Tanks (4x3x3m)(Remaining) | 2026-06-25 → 2026-08-27 A (+63d) | 2026-07-23 → 2026-09-10 A (+49d) | 0% → 100% | 32.6d → none |  |
| 8 | **IRRIGATION WORK** |  | 2026-07-08 → 2026-09-10 (+64d) |  |  |  |
| PG-H-PR-LL-IR-MF-10_R | HDPE Pipes(Remaining) | 2026-06-25 → 2026-08-27 A (+63d) | 2026-07-08 → 2026-09-10 A (+64d) | 0% → 100% | 26.1d → none |  |
| PG-H-PR-LL-IR-MF-20_R | Irrigation Control System(Remaining) | 2026-06-25 → 2026-08-27 A (+63d) | 2026-07-08 → 2026-09-10 A (+64d) | 0% → 100% | 28.5d → none |  |
| 9 | **ELECTRICAL WORK** |  | 2026-08-12 → 2026-09-10 (+29d) |  |  |  |
| PG-H-PR-LL-EL-MF-10_R | Main Distribution Board(Remaining) | 2026-07-15 → 2026-07-30 A (+15d) | 2026-07-29 → 2026-09-10 A (+43d) | 0% → 100% | 27d → none | PG-H-PR-LL-EL-PO-10_R, PG-H-PR-LL-EL-MF-10 → PG-H-PR-LL-EL-MF-10, PG-H-PR-LL-EL-PO-10_R FF |
| PG-H-PR-LL-EL-MF-20_R | Power Panels (Pump, Street Light)(Remaining) | 2026-07-15 → 2026-07-30 A (+15d) | 2026-07-29 → 2026-09-10 A (+43d) | 0% → 100% | 29d → none | PG-H-PR-LL-EL-PO-20_R, PG-H-PR-LL-EL-MF-20 → PG-H-PR-LL-EL-MF-20, PG-H-PR-LL-EL-PO-20_R FF |
| PG-H-PR-LL-EL-MF-30_R | Site Lighting Poles(Remaining) | 2026-07-15 → 2026-07-30 A (+15d) | 2026-08-12 → 2026-09-10 A (+29d) | 0% → 100% | 18d → none | PG-H-PR-LL-EL-PO-30_R, PG-H-PR-LL-EL-MF-30 → PG-H-PR-LL-EL-MF-30, PG-H-PR-LL-EL-PO-30_R FF |
| PG-H-PR-LL-EL-MF-40_R | Lighting Fixtures(Remaining) | 2026-07-15 → 2026-07-30 A (+15d) | 2026-08-12 → 2026-09-10 A (+29d) | 0% → 100% | 15d → none |  |
| PG-H-PR-LL-EL-MF-50_R | Grounding System Materials (Earth pit rod, LPS, etc)(Remaining) | 2026-07-23 → 2026-08-27 A (+35d) | 2026-08-06 → 2026-09-10 A (+35d) | 0% → 100% | 17d → none | PG-H-PR-LL-EL-PO-50_R, PG-H-PR-LL-EL-MF-50 → PG-H-PR-LL-EL-PO-50_R, PG-H-PR-LL-EL-MF-50, PG-H-PR-LL-EL-PO-50_R SS |
| PG-H-PR-LL-EL-MF-60_R | Telecommunications & Data System Materials (Telephone outlet, CCTV, etc)(Remaining) | 2026-07-15 → 2026-08-27 A (+43d) | 2026-08-12 → 2026-09-10 A (+29d) | 0% → 100% | 28d → none | PG-H-PR-LL-EL-PO-60_R, PG-H-PR-LL-EL-MF-60 → PG-H-PR-LL-EL-PO-60_R, PG-H-PR-LL-EL-MF-60, PG-H-PR-LL-EL-PO-60_R SS |
| PG-H-PR-LL-EL-MF-70_R | Security and Access Control System Materials(Remaining) | 2026-07-15 → 2026-08-27 A (+43d) | 2026-08-12 → 2026-09-10 A (+29d) | 0% → 100% | 42d → none | PG-H-PR-LL-EL-PO-70_R, PG-H-PR-LL-EL-MF-70 → PG-H-PR-LL-EL-PO-70_R, PG-H-PR-LL-EL-MF-70, PG-H-PR-LL-EL-PO-70_R SS |
| PG-H-PR-LL-EL-MF-80_R | Fire Alarm System Materials(Remaining) | 2026-07-15 → 2026-08-27 A (+43d) | 2026-08-12 → 2026-09-10 A (+29d) | 0% → 100% | 31d → none | PG-H-PR-LL-EL-PO-80_R, PG-H-PR-LL-EL-MF-80 → PG-H-PR-LL-EL-PO-80_R, PG-H-PR-LL-EL-MF-80, PG-H-PR-LL-EL-PO-80_R SS |
| 4 | **DELIVERY TO SITE** |  | 2026-08-26 → 2026-10-27 (+62d) |  |  |  |
| 1 | **EXTERNAL / LANDSCAPE WORK** |  | 2026-08-06 → 2026-09-27 (+52d) |  |  |  |
| PG-H-PR-LL-LS-DL-30_R | Fence, gates and accessories(Remaining) | 2026-07-01 → 2026-07-22 A (+21d) | 2026-07-06 → 2026-09-19 A (+75d) | 0% → 100% | 14.6d → none | PG-H-PR-LL-LS-MF-30_R, PG-H-PR-LL-LS-DL-30 → PG-H-PR-LL-LS-DL-30, PG-H-PR-LL-LS-MF-30_R SS |
| PG-H-PR-LL-LS-DL-10_R | Bike and Walk Path Materials(Remaining) | 2026-07-25 → 2026-08-06 A (+12d) | 2026-08-06 → 2026-09-27 (+52d) | 0% → 90% | 52.6d → 26.2d | PG-H-PR-LL-LS-MF-10_R, PG-H-PR-LL-LS-DL-10 → PG-H-PR-LL-LS-DL-10, PG-H-PR-LL-LS-MF-10_R SS |
| PG-H-PR-LL-LS-DL-20_R | Benches, Seats (Rectangular & Circular)(Remaining) | 2026-07-25 → 2026-08-20 A (+26d) | 2026-08-06 → 2026-09-27 (+52d) | 0% → 85% | 72.6d → 31.2d | PG-H-PR-LL-LS-MF-20_R, PG-H-PR-LL-LS-DL-20 → PG-H-PR-LL-LS-MF-20_R, PG-H-PR-LL-LS-DL-20, PG-H-PR-LL-LS-MF-20_R SS |
| 2 | **SPORTS & RECREATIONAL FACILITIES WORK** |  | 2026-08-06 → 2026-09-27 (+52d) |  |  |  |
| PG-H-PR-LL-SP-DL-10_R | Football Playground Materials (Flooring, goal post, nets, paints, etc)(Remaining) | 2026-07-25 → 2026-08-06 A (+12d) | 2026-08-06 → 2026-09-27 (+52d) | 0% → 90% | 59d → 49.7d | PG-H-PR-LL-SP-MF-10_R, PG-H-PR-LL-SP-DL-10 → PG-H-PR-LL-SP-DL-10, PG-H-PR-LL-SP-MF-10_R SS |
| PG-H-PR-LL-SP-DL-20_R | Tartan Floor(Remaining) | 2026-07-25 → 2026-08-06 A (+12d) | 2026-08-06 → 2026-09-27 (+52d) | 0% → 90% | 59d → 49.7d | PG-H-PR-LL-SP-MF-20_R, PG-H-PR-LL-SP-DL-20 → PG-H-PR-LL-SP-DL-20, PG-H-PR-LL-SP-MF-20_R SS |
| 3 | **CONCRETE WORK** |  | 2026-07-12 → 2026-07-07 (-5d) |  |  |  |
| PG-H-PR-LL-CO-DL-10_R | Autoclaved Aerated Panel(Remaining) | 2026-07-07 → 2026-07-06 A (-1d) | 2026-07-12 → 2026-07-07 A (-5d) | 0% → 100% | 18d → none |  |
| 5 | **METAL WORK** |  | 2026-08-06 → 2026-10-27 (+82d) |  |  |  |

| ID | Task | Start | Finish | Complete | Total float | Predecessors |
| --- | --- | --- | --- | --- | --- | --- |
| PG-H-PR-LL-MT-DL-10_R | Metal Doors(Remaining) | 2026-07-25 → 2026-08-27 A (+33d) | 2026-08-06 → 2026-10-27 (+82d) | 0% → 75% | 57d → 5.5d | PG-H-PR-LL-MT-MF-10_R, PG-H-PR-LL-MT-DL-10 → PG-H-PR-LL-MT-MF-10_R, PG-H-PR-LL-MT-DL-10, PG-H-PR-LL-MT-MF-10_R FF |
| PG-H-PR-LL-MT-DL-20_R | Curtain Wall(Remaining) | 2026-07-25 → 2026-08-27 A (+33d) | 2026-08-06 → 2026-10-27 (+82d) | 0% → 75% | 57d → 7d | PG-H-PR-LL-MT-MF-20_R, PG-H-PR-LL-MT-DL-20 → PG-H-PR-LL-MT-MF-20_R, PG-H-PR-LL-MT-DL-20, PG-H-PR-LL-MT-MF-20_R FF |
| 7 | **PLUMBING WORK** |  | 2026-08-06 → 2026-09-28 (+53d) |  |  |  |
| PG-H-PR-LL-PB-DL-10_R | Booster Pump(Remaining) | 2026-07-25 → 2026-08-27 A (+33d) | 2026-08-06 → 2026-09-21 A (+46d) | 0% → 100% | 27d → none | PG-H-PR-LL-PB-MF-10_R, PG-H-PR-LL-PB-DL-10 → PG-H-PR-LL-PB-MF-10_R, PG-H-PR-LL-PB-DL-10, PG-H-PR-LL-PB-MF-10_R SS |
| PG-H-PR-LL-PB-DL-20_R | GRP Sectional Panel Water Tanks (4x3x3m)(Remaining) | 2026-07-25 → 2026-08-27 A (+33d) | 2026-08-06 → 2026-09-28 (+53d) | 0% → 80% | 32.6d → 5.45d | PG-H-PR-LL-PB-MF-20_R, PG-H-PR-LL-PB-DL-20 → PG-H-PR-LL-PB-MF-20_R, PG-H-PR-LL-PB-DL-20, PG-H-PR-LL-PB-MF-20_R SS |
| 8 | **IRRIGATION WORK** |  | 2026-07-18 → 2026-09-04 (+48d) |  |  |  |
| PG-H-PR-LL-IR-DL-10_R | HDPE Pipes(Remaining) | 2026-07-09 → 2026-08-20 A (+42d) | 2026-07-18 → 2026-08-27 A (+40d) | 0% → 100% | 26.1d → none | PG-H-PR-LL-IR-MF-10_R, PG-H-PR-LL-IR-DL-10 → PG-H-PR-LL-IR-MF-10_R, PG-H-PR-LL-IR-DL-10, PG-H-PR-LL-IR-MF-10_R SS |
| PG-H-PR-LL-IR-DL-20_R | Irrigation Control System(Remaining) | 2026-07-09 → 2026-08-20 A (+42d) | 2026-07-18 → 2026-09-04 A (+48d) | 0% → 100% | 28.5d → none | PG-H-PR-LL-IR-MF-20_R, PG-H-PR-LL-IR-DL-20 → PG-H-PR-LL-IR-MF-20_R, PG-H-PR-LL-IR-DL-20, PG-H-PR-LL-IR-MF-20_R FF |
| 9 | **ELECTRICAL WORK** |  | 2026-08-26 → 2026-09-27 (+32d) |  |  |  |
| PG-H-PR-LL-EL-DL-30_R | Site Lighting Poles(Remaining) | 2026-08-13 → 2026-08-20 A (+7d) | 2026-08-26 → 2026-09-26 (+31d) | 0% → 95% | 18d → 13d | PG-H-PR-LL-EL-DL-30, PG-H-PR-LL-EL-MF-30_R → PG-H-PR-LL-EL-DL-30, PG-H-PR-LL-EL-MF-30_R, PG-H-PR-LL-EL-MF-30_R SS |
| PG-H-PR-LL-EL-DL-40_R | Lighting Fixtures(Remaining) | 2026-08-13 → 2026-08-20 A (+7d) | 2026-08-26 → 2026-09-27 (+32d) | 0% → 85% | 15d → 17.8d | PG-H-PR-LL-EL-DL-40, PG-H-PR-LL-EL-MF-40_R → PG-H-PR-LL-EL-DL-40, PG-H-PR-LL-EL-MF-40_R, PG-H-PR-LL-EL-MF-40_R SS |
| PG-H-PR-LL-EL-DL-10_R | Main Distribution Board(Remaining) | 2026-07-30 → 2026-08-27 A (+28d) | 2026-08-08 → 2026-09-27 (+50d) | 0% → 85% | 27d → 5.4d | PG-H-PR-LL-EL-DL-10, PG-H-PR-LL-EL-MF-10_R → PG-H-PR-LL-EL-DL-10, PG-H-PR-LL-EL-MF-10_R, PG-H-PR-LL-EL-MF-10_R SS |
| PG-H-PR-LL-EL-DL-20_R | Power Panels (Pump, Street Light)(Remaining) | 2026-07-30 → 2026-08-27 A (+28d) | 2026-08-08 → 2026-09-27 (+50d) | 0% → 85% | 29d → 7.4d | PG-H-PR-LL-EL-DL-20, PG-H-PR-LL-EL-MF-20_R → PG-H-PR-LL-EL-DL-20, PG-H-PR-LL-EL-MF-20_R, PG-H-PR-LL-EL-MF-20_R SS |
| PG-H-PR-LL-EL-DL-50_R | Grounding System Materials (Earth pit rod, LPS, etc)(Remaining) | 2026-08-08 → 2026-08-27 A (+19d) | 2026-08-16 → 2026-09-27 (+42d) | 0% → 85% | 17d → 2.4d | PG-H-PR-LL-EL-DL-50, PG-H-PR-LL-EL-MF-50_R → PG-H-PR-LL-EL-DL-50, PG-H-PR-LL-EL-MF-50_R, PG-H-PR-LL-EL-MF-50_R SS |
| PG-H-PR-LL-EL-DL-60_R | Telecommunications & Data System Materials (Telephone outlet, CCTV, etc)(Remaining) | 2026-08-13 → 2026-08-27 A (+14d) | 2026-08-26 → 2026-09-27 (+32d) | 0% → 85% | 28d → 21.8d | PG-H-PR-LL-EL-DL-60, PG-H-PR-LL-EL-MF-60_R → PG-H-PR-LL-EL-DL-60, PG-H-PR-LL-EL-MF-60_R, PG-H-PR-LL-EL-MF-60_R SS |
| PG-H-PR-LL-EL-DL-70_R | Security and Access Control System Materials(Remaining) | 2026-08-13 → 2026-08-27 A (+14d) | 2026-08-26 → 2026-09-27 (+32d) | 0% → 85% | 42d → 39.05d | PG-H-PR-LL-EL-DL-70, PG-H-PR-LL-EL-MF-70_R → PG-H-PR-LL-EL-DL-70, PG-H-PR-LL-EL-MF-70_R, PG-H-PR-LL-EL-MF-70_R SS |
| PG-H-PR-LL-EL-DL-80_R | Fire Alarm System Materials(Remaining) | 2026-08-13 → 2026-08-27 A (+14d) | 2026-08-26 → 2026-09-27 (+32d) | 0% → 85% | 31d → 24.8d | PG-H-PR-LL-EL-DL-80, PG-H-PR-LL-EL-MF-80_R → PG-H-PR-LL-EL-DL-80, PG-H-PR-LL-EL-MF-80_R, PG-H-PR-LL-EL-MF-80_R SS |
| 2 | **SHORT LEAD ITEMS** |  | 2026-07-16 → 2026-10-08 (+84d) |  |  |  |
| 2 | **PURCHASE ORDER** |  | 2026-07-02 → 2026-08-27 (+56d) |  |  |  |
| 1 | **EXTERNAL / LANDSCAPE WORK** |  | 2026-07-02 → 2026-08-27 (+56d) |  |  |  |
| PG-H-PR-SL-LS-PO-50_R | Thermoplastic pavement road marking(Remaining) | 2026-06-25 → 2026-08-20 A (+56d) | 2026-07-02 → 2026-08-27 A (+56d) | 0% → 100% | 68.6d → none |  |
| PG-H-PR-SL-LS-PO-60_R | Traffic Signages(Remaining) | 2026-06-25 → 2026-08-20 A (+56d) | 2026-07-02 → 2026-08-27 A (+56d) | 0% → 100% | 68.6d → none |  |
| PG-H-PR-SL-LS-PO-70_R | Trees(Remaining) | 2026-06-25 → 2026-08-20 A (+56d) | 2026-07-02 → 2026-08-27 A (+56d) | 0% → 100% | 68.6d → none |  |
| PG-H-PR-SL-LS-PO-80_R | Lawn(Remaining) | 2026-06-25 → 2026-08-20 A (+56d) | 2026-07-02 → 2026-08-27 A (+56d) | 0% → 100% | 92.1d → none |  |
| 8 | **IRRIGATION WORK** |  | 2026-07-02 → 2026-08-27 (+56d) |  |  |  |
| PG-H-PR-SL-IR-PO-10_R | Gate Valve including valve box(Remaining) | 2026-06-25 → 2026-08-20 A (+56d) | 2026-07-02 → 2026-08-27 A (+56d) | 0% → 100% | 27.1d → none |  |
| PG-H-PR-SL-IR-PO-20_R | Bulbblers and Spreyers(Remaining) | 2026-06-25 → 2026-08-20 A (+56d) | 2026-07-02 → 2026-08-27 A (+56d) | 0% → 100% | 32.5d → none |  |
| 9 | **ELECTRICAL WORK** |  | 2026-07-02 → 2026-08-27 (+56d) |  |  |  |
| PG-H-PR-SL-EL-PO-10_R | Wiring Devices Materials(Remaining) | 2026-06-25 → 2026-08-27 A (+63d) | 2026-07-02 → 2026-08-27 A (+56d) | 0% → 100% | 34d → none |  |
| 10 | **FIRE FIGHTING WORK** |  | 2026-07-02 → 2026-08-27 (+56d) |  |  |  |
| PG-H-PR-SL-FF-PO-10_R | Fire Extinguishers(Remaining) | 2026-06-25 → 2026-08-20 A (+56d) | 2026-07-02 → 2026-08-27 A (+56d) | 0% → 100% | 41d → none |  |
| 3 | **DELIVERY TO SITE** |  | 2026-07-16 → 2026-10-08 (+84d) |  |  |  |
| 1 | **EXTERNAL / LANDSCAPE WORK** |  | 2026-07-16 → 2026-09-29 (+75d) |  |  |  |
| PG-H-PR-SL-LS-DL-50_R | Thermoplastic pavement road marking(Remaining) | 2026-07-04 → 2026-08-27 A (+54d) | 2026-07-16 → 2026-09-29 (+75d) | 0% → 70% | 68.6d → 13.8d |  |
| PG-H-PR-SL-LS-DL-60_R | Traffic Signages(Remaining) | 2026-07-04 → 2026-08-27 A (+54d) | 2026-07-16 → 2026-09-29 (+75d) | 0% → 70% | 68.6d → 13.8d |  |
| PG-H-PR-SL-LS-DL-70_R | Trees(Remaining) | 2026-07-04 → 2026-08-27 A (+54d) | 2026-07-16 → 2026-09-29 (+75d) | 0% → 70% | 68.6d → 13.8d |  |
| PG-H-PR-SL-LS-DL-80_R | Lawn(Remaining) | 2026-07-04 → 2026-08-27 A (+54d) | 2026-07-16 → 2026-09-29 (+75d) | 0% → 70% | 92.1d → 37.45d |  |
| 8 | **IRRIGATION WORK** |  | 2026-07-16 → 2026-09-27 (+73d) |  |  |  |
| PG-H-PR-SL-IR-DL-10_R | Gate Valve including valve box(Remaining) | 2026-07-04 → 2026-08-20 A (+47d) | 2026-07-16 → 2026-09-27 (+73d) | 0% → 85% | 27.1d → -8.4d | PG-H-PR-SL-IR-PO-10_R, PG-H-PR-SL-IR-DL-10 → PG-H-PR-SL-IR-PO-10_R, PG-H-PR-SL-IR-DL-10, PG-H-PR-SL-IR-PO-10_R FF |
| PG-H-PR-SL-IR-DL-20_R | Bulbblers and Spreyers(Remaining) | 2026-07-04 → 2026-08-27 A (+54d) | 2026-07-16 → 2026-09-27 (+73d) | 0% → 85% | 32.5d → -7.2d | PG-H-PR-SL-IR-PO-20_R, PG-H-PR-SL-IR-DL-20 → PG-H-PR-SL-IR-PO-20_R, PG-H-PR-SL-IR-DL-20, PG-H-PR-SL-IR-PO-20_R SS |
| 9 | **ELECTRICAL WORK** |  | 2026-07-16 → 2026-10-08 (+84d) |  |  |  |
| PG-H-PR-SL-EL-DL-10_R | Wiring Devices Materials(Remaining) | 2026-07-04 → 2026-09-26 (+84d) | 2026-07-16 → 2026-10-08 (+84d) |  | 34d → 4.6d |  |
| 10 | **FIRE FIGHTING WORK** |  | 2026-07-16 → 2026-10-08 (+84d) |  |  |  |
| PG-H-PR-SL-FF-DL-10_R | Fire Extinguishers(Remaining) | 2026-07-04 → 2026-09-26 (+84d) | 2026-07-16 → 2026-10-08 (+84d) |  | 41d → -10.4d |  |
| CO | **CONSTRUCTION STAGE** |  | 2026-11-26 → 2027-01-09 (+44d) |  |  |  |
| EX.SIT | **PLAYGROUND AND LANDSCAPING WORKS** |  | 2026-11-26 → 2027-01-09 (+44d) |  |  |  |
| 1 | **PLAYGROUND WORKS** |  | 2026-11-17 → 2026-11-01 (-16d) |  |  |  |
| FP | **FOOTBALL PLAYGROUND WORKS** |  | 2026-11-17 → 2026-11-01 (-16d) |  |  |  |
| PG-H-CON-EX-FB-80 | Fine Grading & Leveling | 2026-06-25 → 2026-07-12 A (+17d) | 2026-07-12 → 2026-08-14 A (+33d) | 0% → 100% | 0.6d → none |  |
| PG-H-CON-EX-FB-70_R | Topsoil Placement(Remaining) | 2026-07-13 → 2026-07-30 A (+17d) | 2026-07-28 → 2026-08-14 A (+17d) | 0% → 100% | 25d → none | PG-H-CON-EX-FB-70, PG-H-CON-EX-FB-80 → PG-H-CON-EX-FB-70, PG-H-CON-EX-FB-80 SS |
| PG-H-CON-EX-FB-40_R | Tartan flooring(Remaining) | 2026-09-16 → 2026-08-06 A (-41d) | 2026-10-04 → 2026-10-08 (+4d) | 0% → 90% | 25d → 39.35d | PG-H-EN-LS-SD-AP-40, PG-H-PR-LL-SP-DL-20_R, PG-H-PR-LL-SP-DL-10_R, PG-H-CON-EX-FB-40, PG-H-CON-EX-FB-90 → PG-H-EN-LS-SD-AP-40, PG-H-CON-EX-FB-40, PG-H-PR-LL-SP-DL-20_R SS, PG-H-PR-LL-SP-DL-10_R SS, PG-H-CON-EX-FB-90 FF |
| PG-H-CON-EX-FB-90 | Turfing / Seeding Works | 2026-09-02 → 2026-08-14 A (-19d) | 2026-09-15 → 2026-10-08 (+23d) | 0% → 80% | 25d → 39.35d | PG-H-CON-EX-FB-120 → PG-H-CON-EX-FB-120, PG-H-CON-EX-FB-120 FF |
| PG-H-CON-EX-FB-50 | Goal Post Foundation | 2026-07-29 → 2026-08-20 A (+22d) | 2026-08-17 → 2026-09-30 (+44d) | 0% → 75% | 25d → 39.35d |  |
| PG-H-CON-EX-FB-60 | Goal Post Installation & Alignment | 2026-10-05 → 2026-08-20 A (-46d) | 2026-10-19 → 2026-10-14 (-5d) | 0% → 65% | 25d → 39.35d | PG-H-CON-EX-FB-40_R → PG-H-CON-EX-FB-40_R, PG-H-CON-EX-FB-40_R SS |
| PG-H-CON-EX-FB-110 | Install Playground Benches | 2026-10-20 → 2026-08-27 A (-54d) | 2026-11-05 → 2026-10-20 (-16d) | 0% → 65% | 25d → 39.35d | PG-H-PR-LL-LS-DL-20_R, PG-H-CON-EX-FB-60 → PG-H-PR-LL-LS-DL-20_R, PG-H-CON-EX-FB-60, PG-H-PR-LL-LS-DL-20_R SS, PG-H-CON-EX-FB-60 SS |
| PG-H-CON-EX-FB-120 | Installation of Lighting System | 2026-08-18 → 2026-08-27 A (+9d) | 2026-09-01 → 2026-10-06 (+35d) | 0% → 60% | 25d → 39.35d | PG-H-CON-EX-FB-50 → PG-H-CON-EX-FB-50, PG-H-CON-EX-FB-50 SS |
| PG-H-CON-EX-FB-100 | Markings and Signages | 2026-11-07 → 2026-10-20 (-18d) | 2026-11-17 → 2026-11-01 (-16d) |  | 25d → 39.35d |  |
| GN.SI | **GENERAL SITE WORKS** |  | 2026-11-26 → 2027-01-09 (+44d) |  |  |  |
| 1 | **FENCE WORKS** |  | 2026-08-16 → 2026-10-11 (+56d) |  |  |  |
| PG-H-CON-EX-GN-FN-20 | Concrete Foundations for Fence | 2026-07-13 → 2026-08-13 A (+31d) | 2026-07-22 → 2026-08-20 A (+29d) | 0% → 100% | 0.6d → none |  |
| PG-H-CON-EX-GN-FN-30 | Installation of Galvanized Steel Posts & Framing | 2026-07-23 → 2026-08-27 A (+35d) | 2026-08-02 → 2026-09-27 (+56d) | 0% → 80% | 0.6d → -18.95d |  |
| PG-H-CON-EX-GN-FN-40 | Fixing of Chain Link Mesh, Tensioning & Bracing | 2026-08-03 → 2026-09-27 (+55d) | 2026-08-11 → 2026-10-06 (+56d) |  | 0.6d → -18.95d |  |
| PG-H-CON-EX-GN-FN-50 | Installation of Gates | 2026-08-12 → 2026-10-06 (+55d) | 2026-08-16 → 2026-10-11 (+56d) |  | 0.6d → -18.95d |  |
| 5 | **MECHANICAL WORK** |  | 2026-08-06 → 2026-10-21 (+76d) |  |  |  |
| 2 | **STORM WATER AND UTILITY WORK** |  | 2026-08-04 → 2026-10-19 (+76d) |  |  |  |
| PG-H-CON-EX-GN-M-20_R | Bedding preparation & level control(Remaining) | 2026-06-25 → 2026-08-14 A (+50d) | 2026-07-06 → 2026-09-27 (+83d) | 0% → 85% | 23.5d → -19.35d |  |
| PG-H-CON-EX-GN-M-30 | Manhole Installation | 2026-07-07 → 2026-08-27 A (+51d) | 2026-07-12 → 2026-09-28 (+78d) | 0% → 75% | 23.5d → -19.35d |  |
| PG-H-CON-EX-GN-M-40 | 150 mm uPVC pipe laying & jointing | 2026-07-13 → 2026-09-28 (+77d) | 2026-07-16 → 2026-10-03 (+79d) |  | 23.5d → -19.35d |  |
| PG-H-CON-EX-GN-M-50 | Concrete Encasement | 2026-07-18 → 2026-10-03 (+77d) | 2026-07-20 → 2026-10-06 (+78d) |  | 23.5d → -19.35d |  |
| PG-H-CON-EX-GN-M-60 | Backfilling & Compaction | 2026-07-21 → 2026-10-06 (+77d) | 2026-07-23 → 2026-10-10 (+79d) |  | 23.5d → -19.35d |  |

| ID | Task | Start | Finish | Complete | Total float | Predecessors |
| --- | --- | --- | --- | --- | --- | --- |
| PG-H-CON-EX-GN-M-70 | Surface Reinstatement & Civil Works | 2026-08-01 → 2026-10-14 (+74d) | 2026-08-04 → 2026-10-19 (+76d) |  | 23.5d → -19.35d |  |
| IR.SY | **IRRIGATION SYSTEM WORKS** |  | 2026-07-30 → 2026-10-14 (+76d) |  |  |  |
| PG-H-CON-EX-GN-M-80_R | Installation of HDPE Irrigation Pipe Network with Gate Valve and Box(Remaining) | 2026-07-21 → 2026-08-14 A (+24d) | 2026-07-23 → 2026-10-10 (+79d) | 0% → 85% | 23.5d → -19.35d | PG-H-CON-EX-GN-M-60 FF, PG-H-EN-ME-SD-AP-80, PG-H-EN-ME-SD-AP-90, PG-H-CON-EX-GN-M-20_R SS, PG-H-PR-LL-IR-DL-10_R, PG-H-PR-SL-IR-DL-10_R, PG-H-CON-EX-GN-M-80 → PG-H-CON-EX-GN-M-60 FF, PG-H-EN-ME-SD-AP-80, PG-H-EN-ME-SD-AP-90, PG-H-CON-EX-GN-M-20_R SS, PG-H-CON-EX-GN-M-80, PG-H-PR-LL-IR-DL-10_R FF, PG-H-PR-SL-IR-DL-10_R FF |
| PG-H-CON-EX-GN-M-90 | Installation of Irrigation Control System | 2026-07-25 → 2026-08-26 A (+32d) | 2026-07-27 → 2026-10-11 (+76d) | 0% → 60% | 23.5d → -19.35d | PG-H-CON-EX-GN-M-80_R, PG-H-PR-LL-IR-DL-20_R → PG-H-CON-EX-GN-M-80_R, PG-H-PR-LL-IR-DL-20_R, PG-H-CON-EX-GN-M-80_R SS, PG-H-PR-LL-IR-DL-20_R SS |
| PG-H-CON-EX-GN-M-100 | Installation of Bubblers and Sprinklers | 2026-07-28 → 2026-10-11 (+75d) | 2026-07-30 → 2026-10-14 (+76d) |  | 23.5d → -19.35d |  |
| 1 | **FIRE PROTECTION SYSTEM** | 2026-08-05 → 2026-10-19 (+75d) | 2026-08-06 → 2026-10-21 (+76d) |  |  |  |
| PG-H-CON-EX-GN-M-110 | Fire Extinguisher Installation | 2026-08-05 → 2026-10-19 (+75d) | 2026-08-06 → 2026-10-21 (+76d) |  | 25d → -19.35d |  |
| 2 | **ELECTRICAL WORK** |  | 2026-10-20 → 2026-12-24 (+65d) |  |  |  |
| 1 | **POWER, LIGHTING & GROUNDING** |  | 2026-09-08 → 2026-11-14 (+67d) |  |  |  |
| PG-H-CON-EX-GN-E-10_R | Excavation(Remaining) | 2026-08-04 → 2026-07-16 A (-19d) | 2026-08-04 → 2026-08-27 A (+23d) | 0% → 100% | 23.5d → none | PG-H-CON-EX-GN-M-70 FF, PG-H-CON-EX-GN-E-10 → PG-H-CON-EX-GN-M-70 FF, PG-H-CON-EX-GN-E-10, PG-H-PR-SL-CO-DL-50 |
| PG-H-CON-EX-GN-E-20_R | Foundation Work for Site Lighting Poles(Remaining) | 2026-08-05 → 2026-08-20 A (+15d) | 2026-08-09 → 2026-10-20 (+72d) | 0% → 70% | 23.5d → -18.4d | PG-H-PR-SL-CO-DL-10, PG-H-PR-SL-CO-DL-20, PG-H-CON-EX-GN-E-20, PG-H-CON-EX-GN-E-10_R → PG-H-PR-SL-CO-DL-10, PG-H-PR-SL-CO-DL-20, PG-H-CON-EX-GN-E-20, PG-H-CON-EX-GN-E-10_R, PG-H-CON-EX-GN-E-10_R SS |
| PG-H-CON-EX-GN-E-30 | Lightning Protection System (LPS) | 2026-08-17 → 2026-10-21 (+65d) | 2026-08-19 → 2026-10-25 (+67d) |  | 17d → -19.35d | PG-H-CON-EX-GN-E-20_R, PG-H-PR-LL-EL-DL-50_R, PG-H-CON-EX-GN-M-110 → PG-H-CON-EX-GN-E-20_R, PG-H-PR-LL-EL-DL-50_R, PG-H-CON-EX-GN-M-110, PG-H-CON-EX-GN-M-70 |
| PG-H-CON-EX-GN-E-40 | KWH Meter and MDB Installation | 2026-08-20 → 2026-10-25 (+66d) | 2026-08-22 → 2026-10-27 (+66d) |  | 17d → -19.35d |  |
| PG-H-CON-EX-GN-E-50 | Power Panels and Distribution Boards | 2026-08-23 → 2026-10-27 (+65d) | 2026-08-27 → 2026-11-02 (+67d) |  | 17d → -19.35d |  |
| PG-H-CON-EX-GN-E-60 | Site Lighting Poles Installation | 2026-08-29 → 2026-11-02 (+65d) | 2026-08-31 → 2026-11-05 (+66d) |  | 17d → -19.35d |  |
| PG-H-CON-EX-GN-E-70 | Wiring Works | 2026-09-01 → 2026-11-05 (+65d) | 2026-09-03 → 2026-11-09 (+67d) |  | 17d → -19.35d |  |
| PG-H-CON-EX-GN-E-80 | Lighting Fixtures with outlets Installation | 2026-09-05 → 2026-11-09 (+65d) | 2026-09-08 → 2026-11-14 (+67d) |  | 17d → -19.35d |  |
| 2 | **ELV SYSTEMS (TELECOM, DATA, AV & CCTV)** | 2026-09-09 → 2026-11-14 (+66d) | 2026-10-08 → 2026-12-13 (+66d) |  |  |  |
| PG-H-CON-EX-GN-E-90 | ELV Containment & Cabling Works | 2026-09-09 → 2026-11-14 (+66d) | 2026-09-12 → 2026-11-17 (+66d) |  | 17d → -19.35d |  |
| PG-H-CON-EX-GN-E-100 | Fiber Optic Pull Box Installation | 2026-09-13 → 2026-11-17 (+65d) | 2026-09-15 → 2026-11-21 (+67d) |  | 17d → -16.1d |  |
| PG-H-CON-EX-GN-E-110 | Telephone and Data Outlet Installation | 2026-09-16 → 2026-11-21 (+66d) | 2026-09-20 → 2026-11-25 (+66d) |  | 17d → -16.1d |  |
| PG-H-CON-EX-GN-E-120 | Telecom Equipment and AV HDMI Installation | 2026-09-21 → 2026-11-25 (+65d) | 2026-09-26 → 2026-11-30 (+65d) |  | 17d → -16.1d |  |
| PG-H-CON-EX-GN-E-130 | CCTV Rack / Cabinet Installation | 2026-09-27 → 2026-11-30 (+64d) | 2026-09-30 → 2026-12-05 (+66d) |  | 17d → -16.1d |  |
| PG-H-CON-EX-GN-E-140 | NVR and CCTV Monitor Installation | 2026-10-01 → 2026-12-05 (+65d) | 2026-10-05 → 2026-12-09 (+65d) |  | 17d → -16.1d |  |
| PG-H-CON-EX-GN-E-150 | IP Camera Installation | 2026-10-06 → 2026-12-09 (+64d) | 2026-10-08 → 2026-12-13 (+66d) |  | 17d → -16.1d |  |
| 3 | **FIRE ALARM SYSTEM** | 2026-09-13 → 2026-11-17 (+65d) | 2026-10-20 → 2026-12-24 (+65d) |  |  |  |
| PG-H-CON-EX-GN-E-160 | Fire Alarm Containment & Cabling | 2026-09-13 → 2026-11-17 (+65d) | 2026-09-21 → 2026-11-26 (+66d) |  | 17d → -19.35d |  |
| PG-H-CON-EX-GN-E-170 | Fire Alarm Control Panel (FACP) Installation | 2026-09-22 → 2026-11-26 (+65d) | 2026-10-01 → 2026-12-06 (+66d) |  | 17d → -19.35d |  |
| PG-H-CON-EX-GN-E-180 | Initiating Devices (Detectors & Manual Pull Station) | 2026-10-03 → 2026-12-06 (+64d) | 2026-10-11 → 2026-12-15 (+65d) |  | 17d → -19.35d |  |
| PG-H-CON-EX-GN-E-190 | Notification Appliances (Strobe with Sounder) | 2026-10-12 → 2026-12-15 (+64d) | 2026-10-20 → 2026-12-24 (+65d) |  | 17d → -19.35d |  |
| 3 | **PARKING WORK** |  | 2026-10-20 → 2026-12-24 (+65d) |  |  |  |
| PG-H-CON-EX-GN-PR-20_R | Interlock tiles(Remaining) | 2026-10-12 → 2026-07-11 A (-93d) | 2026-10-14 → 2026-07-30 A (-76d) | 0% → 100% | 17d → none | PG-H-CON-EX-GN-PR-10 FF, PG-H-CON-B-AR-RF-30 FF, PG-H-CON-B-AR-WF-60 FF, PG-H-CON-B-AR-GF-70 FF, PG-H-EN-LS-SD-AP-20, PG-H-PR-SL-LS-DL-20, PG-H-CON-EX-GN-PR-20 → PG-H-EN-LS-SD-AP-20, PG-H-PR-SL-LS-DL-20, PG-H-CON-EX-GN-PR-20, PG-H-EN-EL-SD-AP-70, PG-H-PR-SL-MT-DL-10, PG-H-EN-AR-SD-AP-30, PG-H-EN-AR-SD-AP-90 |
| PG-H-CON-EX-GN-PR-10 | Installlation of Parking Accessories | 2026-10-10 → 2026-08-20 A (-51d) | 2026-10-14 → 2026-12-15 (+62d) | 0% → 65% | 17d → -16.1d | PG-H-CON-EX-GN-E-150 → PG-H-CON-EX-GN-E-150, PG-H-CON-EX-GN-E-150 FF |
| PG-H-CON-EX-GN-PR-30 | Marking & Signages | 2026-10-15 → 2026-12-19 (+65d) | 2026-10-20 → 2026-12-24 (+65d) |  | 17d → -19.35d | PG-H-CON-EX-GN-PR-20_R, PG-H-EN-LS-SD-AP-80, PG-H-PR-SL-LS-DL-50_R, PG-H-PR-SL-LS-DL-60_R, PG-H-CON-EX-GN-E-190 FF → PG-H-CON-EX-GN-PR-20_R, PG-H-EN-LS-SD-AP-80, PG-H-PR-SL-LS-DL-50_R, PG-H-PR-SL-LS-DL-60_R, PG-H-CON-EX-GN-E-190 FF, PG-H-CON-EX-GN-PR-10, PG-H-CON-B-AR-RF-30, PG-H-CON-B-AR-WF-60, PG-H-CON-B-AR-GF-70 |
| 4 | **SERVICE CONNECTION** | 2026-10-21 → 2026-07-30 (-83d) | 2026-11-26 → 2027-01-09 (+44d) |  |  |  |
| PG-H-CON-EX-GN-SC-10 | Excavation & Trench Preparation | 2026-10-21 → 2026-07-30 A (-83d) | 2026-10-29 → 2026-08-27 A (-63d) | 0% → 100% | 17d → none | PG-H-CON-EX-GN-PR-30 → PG-H-CON-EX-GN-PR-30 FF, PG-H-CON-EX-GN-PR-20_R |
| PG-H-CON-EX-GN-SC-20 | HDPE Pipe Laying & Valve Installation | 2026-10-31 → 2026-08-20 A (-72d) | 2026-11-08 → 2026-12-27 (+49d) | 0% → 85% | 17d → -19.35d | PG-H-CON-EX-GN-SC-10 → PG-H-CON-EX-GN-SC-10, PG-H-CON-EX-GN-SC-10 SS |
| PG-H-CON-EX-GN-SC-40 | Backfilling | 2026-11-18 → 2026-08-27 A (-83d) | 2026-11-26 → 2027-01-09 (+44d) | 0% → 60% | 17d → -19.35d | PG-H-PR-SL-LS-DL-10, PG-H-CON-EX-GN-SC-30 → PG-H-PR-SL-LS-DL-10, PG-H-CON-EX-GN-SC-30, PG-H-CON-EX-GN-SC-30 FF |
| PG-H-CON-EX-GN-SC-30 | Connection to City Network | 2026-11-09 → 2026-12-27 (+48d) | 2026-11-17 → 2027-01-05 (+49d) |  | 17d → -19.35d | PG-H-CON-EX-GN-SC-20 → PG-H-CON-EX-GN-SC-20, PG-H-CON-EX-GN-PR-30 |
| LS | **LANDSCAPING WORKS** |  | 2026-11-09 → 2026-12-06 (+27d) |  |  |  |
| HSP | **HARDSCAPE WORK** |  | 2026-11-09 → 2026-12-06 (+27d) |  |  |  |
| PG-H-CON-EX-LS-HS-40_R | Bike Path and Walking Path Construction(Remaining) | 2026-10-08 → 2026-07-09 A (-91d) | 2026-10-17 → 2026-11-18 (+32d) | 0% → 95% | 0.6d → -18.95d | PG-H-CON-EX-LS-SS-10 FF, PG-H-EN-LS-SD-AP-50, PG-H-EN-LS-SD-AP-60, PG-H-PR-LL-LS-DL-10_R, PG-H-CON-EX-LS-HS-40, PG-H-CON-EX-LS-HS-30_R → PG-H-CON-EX-LS-SS-10 FF, PG-H-EN-LS-SD-AP-50, PG-H-EN-LS-SD-AP-60, PG-H-CON-EX-LS-HS-40, PG-H-PR-LL-LS-DL-10_R FF, PG-H-CON-EX-LS-HS-30_R FF |
| PG-H-CON-EX-LS-HS-10_R | Curbstone Installation(Remaining) | 2026-09-10 → 2026-07-22 A (-50d) | 2026-09-19 → 2026-08-27 A (-23d) | 0% → 100% | 0.6d → none | PG-H-CON-EX-GN-FN-50 FF, PG-H-CON-EX-TW-IR-40 FF, PG-H-CON-EX-TW-ST-70 FF, PG-H-EN-LS-SD-AP-10, PG-H-PR-SL-LS-DL-40, PG-H-CON-EX-LS-HS-10 → PG-H-CON-EX-GN-FN-50 FF, PG-H-CON-EX-TW-IR-40 FF, PG-H-CON-EX-TW-ST-70 FF, PG-H-EN-LS-SD-AP-10, PG-H-PR-SL-LS-DL-40, PG-H-CON-EX-LS-HS-10, PG-H-CON-EX-GN-FN-20, PG-H-EN-ME-SD-AP-40, PG-H-CON-EX-TW-ST-30_R |
| PG-H-CON-EX-LS-HS-30_R | Stamped Concrete Floor(Remaining) | 2026-09-20 → 2026-07-30 A (-52d) | 2026-10-07 → 2026-11-07 (+31d) | 0% → 90% | 0.6d → -8.95d | PG-H-EN-LS-SD-AP-30, PG-H-CON-EX-LS-HS-20_R SS, PG-H-CON-EX-LS-HS-30 → PG-H-EN-LS-SD-AP-30, PG-H-CON-EX-LS-HS-30, PG-H-CON-EX-LS-HS-20_R FF |
| PG-H-CON-EX-LS-HS-50_R | Install Recycled Precast Concrete Seats(Remaining) | 2026-10-18 → 2026-07-30 A (-80d) | 2026-10-28 → 2026-11-24 (+27d) | 0% → 40% | 0.6d → -18.95d | PG-H-PR-LL-LS-DL-20_R SS, PG-H-CON-EX-LS-HS-50, PG-H-CON-EX-LS-HS-40_R → PG-H-CON-EX-LS-HS-50, PG-H-PR-LL-LS-DL-20_R FF, PG-H-CON-EX-LS-HS-40_R SS |
| PG-H-CON-EX-LS-HS-20_R | Interlock Tiles Grey Scale with Black Marble Chips(Remaining) | 2026-09-20 → 2026-08-27 A (-24d) | 2026-10-05 → 2026-11-07 (+33d) | 0% → 65% | 0.6d → -18.95d |  |
| PG-H-CON-EX-LS-HS-60 | Install Recycled Precast Concrete Trash Bins | 2026-10-29 → 2026-11-24 (+26d) | 2026-11-09 → 2026-12-06 (+27d) |  | 0.6d → -18.95d |  |
| SSP | **SOFTSCAPE WORK** |  | 2026-11-09 → 2026-12-06 (+27d) |  |  |  |
| PG-H-CON-EX-LS-SS-20_R | Lawn Area Preparation & Planting / Turfing(Remaining) | 2026-11-02 → 2026-08-27 A (-67d) | 2026-11-09 → 2026-12-06 (+27d) | 0% → 70% | 0.6d → -18.95d | PG-H-CON-EX-LS-SS-10 FF, PG-H-CON-EX-LS-HS-60 FF, PG-H-EN-LS-SD-AP-70, PG-H-PR-SL-LS-DL-80_R, PG-H-CON-EX-LS-SS-20 → PG-H-CON-EX-LS-SS-10 FF, PG-H-CON-EX-LS-HS-60 FF, PG-H-EN-LS-SD-AP-70, PG-H-PR-SL-LS-DL-80_R, PG-H-CON-EX-LS-SS-20, PG-H-PR-SL-LS-DL-80_R FF |
| PG-H-CON-EX-LS-SS-10 | Planting Trees | 2026-10-06 → 2026-11-07 (+32d) | 2026-10-17 → 2026-11-18 (+32d) |  | 0.6d → -18.95d | PG-H-EN-LS-SD-AP-70, PG-H-PR-SL-LS-DL-70_R, PG-H-CON-EX-LS-HS-20_R → PG-H-EN-LS-SD-AP-70, PG-H-PR-SL-LS-DL-70_R, PG-H-CON-EX-LS-HS-20_R, PG-H-CON-EX-GN-FN-50, PG-H-CON-EX-TW-IR-40, PG-H-CON-EX-TW-ST-70 |
| W.T | **TANK WORKS** |  | 2026-09-19 → 2026-11-01 (+43d) |  |  |  |
| 1 | **SEPTIC TANK** |  | 2026-08-31 → 2026-10-26 (+56d) |  |  |  |
| PG-H-CON-EX-TW-ST-30_R | RCC Foundation(Remaining) | 2026-06-25 → 2026-07-30 A (+35d) | 2026-07-01 → 2026-08-27 A (+57d) | 0% → 100% | 25.6d → none |  |
| PG-H-CON-EX-TW-ST-40 | RCC Wall | 2026-07-02 → 2026-08-14 A (+43d) | 2026-07-09 → 2026-09-28 (+81d) | 0% → 70% | 25.6d → -9.7d | PG-H-CON-EX-TW-ST-30_R → PG-H-CON-EX-TW-ST-30_R SS |
| PG-H-CON-EX-TW-ST-50 | RCC Slab | 2026-07-11 → 2026-08-27 A (+47d) | 2026-07-18 → 2026-09-30 (+74d) | 0% → 65% | 25.6d → -9.7d | PG-H-CON-EX-TW-ST-40 → PG-H-CON-EX-TW-ST-40, PG-H-CON-EX-TW-ST-40 SS |
| PG-H-CON-EX-TW-ST-60 | Finishing Work | 2026-08-17 → 2026-10-11 (+55d) | 2026-08-24 → 2026-10-19 (+56d) |  | 0.6d → -18.95d |  |
| PG-H-CON-EX-TW-ST-70 | Backfilling | 2026-08-25 → 2026-10-19 (+55d) | 2026-08-31 → 2026-10-26 (+56d) |  | 0.6d → -18.95d |  |
| 2 | **WATER STORAGE TANK** |  | 2026-09-19 → 2026-11-01 (+43d) |  |  |  |
| PG-H-CON-EX-TW-IR-10_R | Excavation(Remaining) | 2026-08-29 → 2026-07-08 A (-52d) | 2026-08-31 → 2026-07-09 A (-53d) | 0% → 100% | 0.6d → none | PG-H-CON-EX-TW-ST-70 FF, PG-H-EN-ST-SD-AP-50, PG-H-CON-EX-TW-IR-10 → PG-H-EN-ST-SD-AP-50, PG-H-CON-EX-TW-IR-10, PG-H-CON-EX-TW-ST-20 |
| PG-H-CON-EX-TW-IR-20 | RCC Foundation | 2026-09-01 → 2026-07-23 A (-40d) | 2026-09-07 → 2026-08-27 A (-11d) | 0% → 100% | 0.6d → none | PG-H-CON-EX-TW-IR-10_R, PG-H-EN-ST-SD-AP-60 → PG-H-CON-EX-TW-IR-10_R, PG-H-EN-ST-SD-AP-60, PG-H-CON-EX-TW-ST-70 FF, PG-H-CON-EX-TW-ST-30_R |
| PG-H-CON-EX-TW-IR-30 | Backfilling | 2026-09-08 → 2026-08-14 A (-25d) | 2026-09-13 → 2026-08-27 A (-17d) | 0% → 100% | 0.6d → none | PG-H-CON-EX-TW-IR-20 → PG-H-CON-EX-TW-IR-20 SS |
| PG-H-CON-EX-TW-IR-40 | GRP Water Tank Installation | 2026-09-14 → 2026-10-26 (+42d) | 2026-09-19 → 2026-11-01 (+43d) |  | 0.6d → -18.95d | PG-H-CON-EX-TW-IR-30, PG-H-EN-ME-SD-AP-40, PG-H-PR-LL-PB-DL-20_R → PG-H-CON-EX-TW-IR-30, PG-H-EN-ME-SD-AP-40, PG-H-PR-LL-PB-DL-20_R, PG-H-CON-EX-TW-ST-70 |
| B | **TOILET BUILDING WORKS** |  | 2026-10-12 → 2026-11-08 (+27d) |  |  |  |
| CVL | **CIVIL WORK** |  | 2026-10-12 → 2026-11-07 (+26d) |  |  |  |
| ST | **STRUCTURAL WORK** |  | 2026-07-22 → 2026-07-23 (+1d) |  |  |  |
| PG-H-CON-B-STR-50 | Autoclaved aerated panel (walls) | 2026-07-13 → 2026-07-11 A (-2d) | 2026-07-16 → 2026-07-12 A (-4d) | 0% → 100% | 18d → none |  |
| PG-H-CON-B-STR-60 | Autoclaved aerated panel (ceiling) | 2026-07-18 → 2026-07-12 A (-6d) | 2026-07-20 → 2026-07-16 A (-4d) | 0% → 100% | 18d → none |  |
| PG-H-CON-B-STR-70 | Autoclaved aerated panel (parapet) | 2026-07-21 → 2026-07-12 A (-9d) | 2026-07-22 → 2026-07-23 A (+1d) | 0% → 100% | 18d → none |  |
| AR | **ARCHITECTURAL WORK** | 2026-07-23 → 2026-07-31 (+8d) | 2026-10-12 → 2026-11-07 (+26d) |  |  |  |
| 1 | **GENERAL FINISHES** | 2026-07-23 → 2026-07-31 (+8d) | 2026-10-12 → 2026-11-07 (+26d) |  |  |  |

| ID | Task | Start | Finish | Complete | Total float | Predecessors |
| --- | --- | --- | --- | --- | --- | --- |
| PG-H-CON-B-AR-GF-10 | Block Works | 2026-07-23 → 2026-07-31 A (+8d) | 2026-07-27 → 2026-08-05 A (+9d) | 0% → 100% | 18d → none |  |
| PG-H-CON-B-AR-GF-20 | Plaster | 2026-08-08 → 2026-08-06 A (-2d) | 2026-08-11 → 2026-08-07 A (-4d) | 0% → 100% | 18d → none |  |
| PG-H-CON-B-AR-GF-30 | False Ceiling Installation & Finishing | 2026-08-20 A | 2026-08-29 → 2026-09-15 A (+17d) | 0% → 100% | 24d → none | PG-H-CON-B-AR-GF-20, PG-H-CON-B-GF-DR-20, PG-H-EN-AR-SD-AP-60, PG-H-PR-SL-AR-DL-100 → PG-H-CON-B-AR-GF-20, PG-H-CON-B-GF-DR-20, PG-H-EN-AR-SD-AP-60, PG-H-PR-SL-AR-DL-100, PG-H-PR-SL-EL-DL-10_R, PG-H-PR-SL-EL-DL-10_R FF |
| PG-H-CON-B-AR-GF-40 | Wall Paint | 2026-09-09 → 2026-08-20 A (-20d) | 2026-09-12 → 2026-10-10 (+28d) | 0% → 70% | 15d → 18.5d | PG-H-CON-B-AR-GF-30, PG-H-PR-SL-AR-DL-50, PG-H-CON-B-GF-EL-50 → PG-H-CON-B-AR-GF-30, PG-H-PR-SL-AR-DL-50, PG-H-CON-B-GF-EL-50, PG-H-CON-B-AR-GF-30 SS, PG-H-CON-B-GF-EL-50 SS |
| PG-H-CON-B-AR-GF-50 | Epoxy Flooring | 2026-09-13 → 2026-08-20 A (-24d) | 2026-09-20 → 2026-10-12 (+22d) | 0% → 70% | 19d → 18.5d | PG-H-CON-B-AR-GF-40, PG-H-EN-AR-SD-AP-50, PG-H-PR-SL-AR-DL-30 → PG-H-CON-B-AR-GF-40, PG-H-EN-AR-SD-AP-50, PG-H-PR-SL-AR-DL-30, PG-H-CON-B-AR-GF-40 SS |
| PG-H-CON-B-AR-GF-70 | Facade Finishing Work | 2026-09-21 → 2026-08-20 A (-32d) | 2026-10-12 → 2026-09-16 A (-26d) | 0% → 100% | 19d → none | PG-H-EN-AR-SD-AP-90, PG-H-EN-AR-SD-AP-100, PG-H-PR-LL-MT-DL-20_R, PG-H-PR-SL-AR-DL-60, PG-H-PR-SL-AR-DL-70, PG-H-CON-B-AR-GF-50 → PG-H-EN-AR-SD-AP-90, PG-H-EN-AR-SD-AP-100, PG-H-PR-LL-MT-DL-20_R, PG-H-PR-SL-AR-DL-60, PG-H-PR-SL-AR-DL-70, PG-H-CON-B-AR-GF-50, PG-H-PR-LL-MT-DL-20_R FF, PG-H-CON-B-AR-GF-50 SS |
| PG-H-CON-B-AR-GF-60 | Install Doors & Windows | 2026-09-21 → 2026-08-27 A (-25d) | 2026-09-27 → 2026-10-29 (+32d) | 0% → 70% | 19d → 5.5d | PG-H-CON-B-AR-GF-50, PG-H-EN-AR-SD-AP-30, PG-H-EN-AR-SD-AP-80, PG-H-EN-AR-SD-AP-40, PG-H-PR-LL-MT-DL-10_R → PG-H-CON-B-AR-GF-50, PG-H-EN-AR-SD-AP-30, PG-H-EN-AR-SD-AP-80, PG-H-EN-AR-SD-AP-40, PG-H-PR-LL-MT-DL-10_R, PG-H-CON-B-AR-GF-50 SS, PG-H-PR-LL-MT-DL-10_R SS |
| PG-H-CON-B-AR-GF-80 | Lockers and Furniture Installation | 2026-09-28 → 2026-10-29 (+31d) | 2026-10-05 → 2026-11-07 (+33d) |  | 19d → 5.5d |  |
| 2 | **WET AREA FINISHES** | 2026-08-12 → 2026-08-07 (-5d) | 2026-10-11 → 2026-10-29 (+18d) |  |  |  |
| PG-H-CON-B-AR-WF-20 | Wall Tiles and Partition Work | 2026-09-13 → 2026-08-07 A (-37d) | 2026-09-15 → 2026-08-14 A (-32d) | 0% → 100% | 15d → none | PG-H-CON-B-AR-WF-10, PG-H-CON-B-AR-GF-40, PG-H-EN-AR-SD-AP-70, PG-H-EN-AR-SD-AP-30, PG-H-PR-SL-AR-DL-10, PG-H-PR-SL-AR-DL-80, PG-H-PR-SL-AR-DL-90, PG-H-CON-B-GF-WS-20 → PG-H-EN-AR-SD-AP-70, PG-H-EN-AR-SD-AP-30, PG-H-PR-SL-AR-DL-10, PG-H-PR-SL-AR-DL-80, PG-H-PR-SL-AR-DL-90, PG-H-CON-B-GF-WS-20, PG-H-CON-B-AR-WF-10 FF, PG-H-CON-B-AR-GF-40 FF, PG-H-EN-AR-SD-AP-60, PG-H-PR-SL-AR-DL-50 |
| PG-H-CON-B-AR-WF-30 | Waterproofing on Floor | 2026-09-16 → 2026-08-14 A (-33d) | 2026-09-17 → 2026-09-16 A (-1d) | 0% → 100% | 15d → none | PG-H-CON-B-AR-WF-20, PG-H-EN-AR-SD-AP-50, PG-H-PR-SL-CO-DL-30, PG-H-PR-SL-AR-DL-120 → PG-H-EN-AR-SD-AP-50, PG-H-PR-SL-CO-DL-30, PG-H-PR-SL-AR-DL-120, PG-H-CON-B-AR-WF-20 SS |
| PG-H-CON-B-AR-WF-40 | Floor Tiles Works | 2026-09-19 → 2026-08-14 A (-36d) | 2026-09-30 → 2026-09-16 A (-14d) | 0% → 100% | 15d → none | PG-H-CON-B-AR-WF-30, PG-H-PR-SL-AR-DL-20 → PG-H-CON-B-AR-WF-30, PG-H-PR-SL-AR-DL-20, PG-H-CON-B-AR-WF-30 SS |
| PG-H-CON-B-AR-WF-10 | False Ceiling Installation & Finishing | 2026-08-12 → 2026-08-20 A (+8d) | 2026-08-16 → 2026-09-16 A (+31d) | 0% → 100% | 19d → none |  |
| PG-H-CON-B-AR-WF-50 | Toliet accessories Installation Works | 2026-10-01 → 2026-08-27 A (-35d) | 2026-10-11 → 2026-09-16 A (-25d) | 0% → 100% | 15d → none | PG-H-CON-B-AR-WF-40, PG-H-EN-AR-SD-AP-70, PG-H-PR-SL-AR-DL-110 → PG-H-CON-B-AR-WF-40, PG-H-EN-AR-SD-AP-70, PG-H-PR-SL-AR-DL-110, PG-H-CON-B-AR-WF-40 SS |
| PG-H-CON-B-AR-WF-60 | Install Doors | 2026-10-01 → 2026-08-27 A (-35d) | 2026-10-05 → 2026-10-29 (+24d) | 0% → 65% | 20d → 19.3d | PG-H-EN-AR-SD-AP-30, PG-H-EN-AR-SD-AP-80, PG-H-EN-AR-SD-AP-40, PG-H-PR-LL-MT-DL-10_R, PG-H-CON-B-AR-WF-40 → PG-H-EN-AR-SD-AP-30, PG-H-EN-AR-SD-AP-80, PG-H-EN-AR-SD-AP-40, PG-H-PR-LL-MT-DL-10_R, PG-H-CON-B-AR-WF-40, PG-H-PR-LL-MT-DL-10_R SS, PG-H-CON-B-AR-WF-40 SS |
| 3 | **ROOF FINISHES** | 2026-09-19 → 2026-08-20 (-30d) | 2026-10-05 → 2026-11-07 (+33d) |  |  |  |
| PG-H-CON-B-AR-RF-10 | Waterproofing on Floor | 2026-09-19 → 2026-08-20 A (-30d) | 2026-09-22 → 2026-10-12 (+20d) | 0% → 60% |  | PG-H-CON-B-AR-WF-30, PG-H-EN-AR-SD-AP-20, PG-H-PR-SL-CO-DL-30, PG-H-PR-SL-AR-DL-120 → PG-H-CON-B-AR-WF-30, PG-H-EN-AR-SD-AP-20, PG-H-PR-SL-CO-DL-30, PG-H-PR-SL-AR-DL-120, PG-H-CON-B-AR-WF-10, PG-H-CON-B-AR-GF-40, PG-H-CON-B-AR-WF-30 SS, PG-H-CON-B-AR-WF-10 SS, PG-H-CON-B-AR-GF-40 SS |
| PG-H-CON-B-AR-RF-20 | Epoxy Flooring and Finishes | 2026-09-24 → 2026-08-27 A (-28d) | 2026-09-26 → 2026-10-12 (+16d) | 0% → 75% |  | PG-H-CON-B-AR-RF-10, PG-H-PR-SL-AR-DL-30 → PG-H-CON-B-AR-RF-10, PG-H-PR-SL-AR-DL-30, PG-H-CON-B-AR-RF-10 SS |
| PG-H-CON-B-AR-RF-30 | Steel ladder and Steel roof scupper Installation | 2026-10-04 → 2026-11-04 (+31d) | 2026-10-05 → 2026-11-07 (+33d) |  | 19d → 5.5d |  |
| MEP | **MEP WORK** | 2026-07-28 → 2026-07-22 (-6d) | 2026-10-06 → 2026-11-08 (+33d) |  |  |  |
| MEC | **MECANICAL WORKS** | 2026-07-28 → 2026-07-22 (-6d) | 2026-10-06 → 2026-11-08 (+33d) |  |  |  |
| FF | **FIRE FIGHTING SYSTEM** | 2026-10-06 → 2026-11-07 (+32d) | 2026-10-06 → 2026-11-08 (+33d) |  |  |  |
| PG-H-CON-B-GF-FF-10 | Fire Extinguisher Installation | 2026-10-06 → 2026-11-07 (+32d) | 2026-10-06 → 2026-11-08 (+33d) |  | 19d → 5.5d |  |
| DS | **SEWER AND DRAINAGE SYSTEM** | 2026-08-03 → 2026-07-22 (-12d) | 2026-08-23 → 2026-10-01 (+39d) |  |  |  |
| PG-H-CON-B-GF-DR-20 | Sewer and Drainge System Pipes and fittings Installation | 2026-08-18 → 2026-07-22 A (-27d) | 2026-08-19 → 2026-08-05 A (-14d) | 0% → 100% | 19d → none | PG-H-CON-B-GF-DR-10, PG-H-CON-B-GF-WS-20, PG-H-EN-ME-SD-AP-60, PG-H-EN-ME-SD-AP-70, PG-H-PR-SL-PB-DL-20, PG-H-PR-SL-PB-DL-30 → PG-H-EN-ME-SD-AP-60, PG-H-EN-ME-SD-AP-70, PG-H-PR-SL-PB-DL-20, PG-H-PR-SL-PB-DL-30, PG-H-CON-B-GF-WS-20 FF, PG-H-CON-B-GF-DR-10 SS |
| PG-H-CON-B-GF-DR-10 | Sewer and Drainge System Main Lines Installation | 2026-08-03 → 2026-07-30 A (-4d) | 2026-08-04 → 2026-09-26 (+53d) | 0% → 85% | 18d → 23.1d |  |
| PG-H-CON-B-GF-DR-30 | Sanitaryware Installation (Final Fix) | 2026-08-22 → 2026-09-29 (+38d) | 2026-08-23 → 2026-10-01 (+39d) |  | 18d → 23.1d |  |
| HV | **HVAC SYSTEM** | 2026-07-28 → 2026-08-13 (+16d) | 2026-08-15 → 2026-09-28 (+44d) |  |  |  |
| PG-H-CON-B-GF-AC-10 | Duct Work and Exhaust Fan Installation | 2026-07-28 → 2026-08-13 A (+16d) | 2026-07-30 → 2026-08-20 A (+21d) | 0% → 100% | 18d → none |  |
| PG-H-CON-B-GF-AC-20 | Split AC, Grills & Diffuser Installation | 2026-08-12 → 2026-09-26 (+45d) | 2026-08-15 → 2026-09-28 (+44d) |  | 18d → 23.1d |  |
| WS | **WATER SUPPLY SYSTEM** | 2026-08-01 → 2026-07-30 (-2d) | 2026-08-20 → 2026-09-29 (+40d) |  |  |  |
| PG-H-CON-B-GF-WS-10 | Water Supply Main Lines Installation | 2026-08-01 → 2026-07-30 A (-2d) | 2026-08-02 → 2026-07-31 A (-2d) | 0% → 100% | 18d → none | PG-H-CON-B-GF-AC-10, PG-H-EN-ME-SD-AP-10, PG-H-PR-SL-PB-DL-10 → PG-H-EN-ME-SD-AP-10, PG-H-PR-SL-PB-DL-10, PG-H-PR-SL-AC-DL-20 |
| PG-H-CON-B-GF-WS-20 | Water Supply Pipes Installation (Cold and Hot Water) | 2026-08-16 → 2026-07-30 A (-17d) | 2026-08-17 → 2026-08-06 A (-11d) | 0% → 100% | 18d → none | PG-H-CON-B-GF-WS-10, PG-H-CON-B-GF-AC-20, PG-H-EN-ME-SD-AP-10, PG-H-PR-SL-PB-DL-10 → PG-H-CON-B-GF-WS-10, PG-H-EN-ME-SD-AP-10, PG-H-PR-SL-PB-DL-10, PG-H-CON-B-AR-GF-20 |
| PG-H-CON-B-GF-WS-30 | Water Supply Accesories and Booster pump Installation | 2026-08-18 → 2026-08-27 A (+9d) | 2026-08-20 → 2026-09-29 (+40d) | 0% → 75% | 18d → 23.1d | PG-H-CON-B-GF-WS-20, PG-H-CON-B-AR-WF-10, PG-H-EN-ME-SD-AP-20, PG-H-EN-ME-SD-AP-30, PG-H-PR-LL-PB-DL-10_R → PG-H-CON-B-GF-WS-20, PG-H-CON-B-AR-WF-10, PG-H-EN-ME-SD-AP-20, PG-H-EN-ME-SD-AP-30, PG-H-PR-LL-PB-DL-10_R, PG-H-CON-B-GF-AC-10, PG-H-CON-B-GF-AC-20, PG-H-CON-B-AR-WF-10 SS, PG-H-PR-LL-PB-DL-10_R SS, PG-H-CON-B-GF-AC-20 FF |
| ELC | **ELECTRICAL WORKS** | 2026-08-05 → 2026-08-12 (+7d) | 2026-09-08 → 2026-10-04 (+26d) |  |  |  |
| PG-H-CON-B-GF-EL-10 | Pipes & Conduits Installation | 2026-08-05 → 2026-08-12 A (+7d) | 2026-08-06 → 2026-08-14 A (+8d) | 0% → 100% | 18d → none | PG-H-CON-B-GF-DR-10, PG-H-PR-SL-EL-DL-10_R → PG-H-CON-B-GF-DR-10 SS, PG-H-PR-SL-EL-DL-10 |
| PG-H-CON-B-GF-EL-20 | Electrical Light Fixtures Installation | 2026-08-27 → 2026-08-20 A (-7d) | 2026-08-29 → 2026-10-03 (+35d) | 0% → 85% | 15d → 23.1d | PG-H-CON-B-GF-DR-30, PG-H-PR-LL-EL-DL-40_R → PG-H-CON-B-GF-DR-30, PG-H-PR-LL-EL-DL-40_R, PG-H-CON-B-GF-DR-30 FF, PG-H-PR-LL-EL-DL-40_R SS |
| PG-H-CON-B-GF-EL-30 | Fire Alarm Devices Installation | 2026-08-30 → 2026-08-20 A (-10d) | 2026-09-01 → 2026-10-03 (+32d) | 0% → 85% | 15d → 23.1d | PG-H-CON-B-GF-EL-20 → PG-H-CON-B-GF-EL-20, PG-H-CON-B-GF-EL-20 SS |
| PG-H-CON-B-GF-EL-40 | Telecom & CCTV Devices Installation | 2026-09-02 → 2026-08-20 A (-13d) | 2026-09-05 → 2026-10-03 (+28d) | 0% → 85% | 15d → 23.1d | PG-H-CON-B-GF-EL-30 → PG-H-CON-B-GF-EL-30, PG-H-CON-B-GF-EL-30 SS |
| PG-H-CON-B-GF-EL-50 | Electrical & ELV Wiring Works | 2026-09-06 → 2026-08-20 A (-17d) | 2026-09-08 → 2026-10-04 (+26d) | 0% → 85% | 15d → 23.1d | PG-H-CON-B-GF-EL-40 → PG-H-CON-B-GF-EL-40, PG-H-CON-B-GF-EL-40 SS |
| TE & CO | **PROJECT CLOSOUT** |  | 2026-12-16 → 2027-01-07 (+22d) |  |  |  |
| PG-H-PCL-10_R | Testing, Commessioning for All Systems(Remaining) | 2026-11-02 → 2026-08-06 A (-88d) | 2026-11-14 → 2026-12-06 (+22d) | 0% → 30% | 0.6d → -18.95d | PG-H-CON-B-GF-EL-50 FF, PG-H-CON-B-GF-WS-30 FF, PG-H-CON-B-GF-AC-20 FF, PG-H-CON-B-GF-DR-30 FF, PG-H-CON-B-GF-FF-10 FF, PG-H-CON-EX-LS-SS-20_R SS, PG-H-PCL-10 → PG-H-CON-B-GF-EL-50 FF, PG-H-CON-B-GF-WS-30 FF, PG-H-CON-B-GF-AC-20 FF, PG-H-CON-B-GF-DR-30 FF, PG-H-CON-B-GF-FF-10 FF, PG-H-PCL-10, PG-H-CON-EX-LS-SS-20_R FF |
| PG-H-PCL-20 | As-Built Drawings | 2026-11-14 → 2026-12-06 (+22d) | 2026-12-05 → 2026-12-27 (+22d) |  | 4.6d → -14.95d |  |
| PG-H-PCL-30 | Snag list Submission | 2026-11-14 → 2026-12-06 (+22d) | 2026-11-23 → 2026-12-15 (+22d) |  | 0.6d → -18.95d |  |
| PG-H-PCL-40 | Snag list Closeout | 2026-11-23 → 2026-12-15 (+22d) | 2026-12-09 → 2026-12-31 (+22d) |  | 0.6d → -18.95d |  |
| PG-H-PCL-50 | Issuing Approvals | 2026-12-09 → 2026-12-31 (+22d) | 2026-12-13 → 2027-01-04 (+22d) |  | 0.6d → -18.95d |  |
| PG-H-PCL-60 | Handing Over | 2026-12-13 → 2027-01-04 (+22d) | 2026-12-16 → 2027-01-07 (+22d) |  | 0.6d → -18.95d |  |
| TABUK | **TABUK** |  | 2026-12-16 → 2027-01-27 (+42d) |  |  |  |
| ENG | **ENGINEERING** |  | 2026-08-12 → 2026-09-17 (+36d) |  |  |  |
| 1 | **SHOP DRAWINGS SUBMITTALS** |  | 2026-08-04 → 2026-09-10 (+37d) |  |  |  |
| 1 | **STRUCTURAL DRAWINGS** |  | 2026-07-18 → 2026-07-03 (-15d) |  |  |  |
| 3 | **AIR DOME** | 2026-06-25 → 2026-07-01 (+6d) | 2026-07-18 → 2026-07-03 (-15d) |  |  |  |
| PG-T-EN-ST-SD-SB-50 | Excavation Drawings | 2026-06-25 → 2026-07-01 A (+6d) | 2026-07-06 → 2026-07-03 A (-3d) | 0% → 100% | 0d → none |  |
| PG-T-EN-ST-SD-SB-60 | Foundation Drawings | 2026-07-07 → 2026-07-01 A (-6d) | 2026-07-18 → 2026-07-03 A (-15d) | 0% → 100% | 0d → none |  |
| 2 | **ARCHITECTURAL DRAWINGS** |  | 2026-08-04 → 2026-09-10 (+37d) |  |  |  |
| 2 | **AIR DOME** | 2026-07-19 → 2026-08-05 (+17d) | 2026-08-04 → 2026-09-10 (+37d) |  |  |  |
| PG-T-EN-AR-SD-SB-110 | Membrane & Insulation Details | 2026-07-19 → 2026-08-05 A (+17d) | 2026-08-04 → 2026-09-10 A (+37d) | 0% → 100% | 3d → none |  |
| PG-T-EN-AR-SD-SB-120 | Steel Cable System | 2026-07-19 → 2026-08-05 A (+17d) | 2026-08-04 → 2026-09-10 A (+37d) | 0% → 100% | 3d → none |  |
| PG-T-EN-AR-SD-SB-130 | Doors & Access Sytem Drawings | 2026-07-19 → 2026-08-05 A (+17d) | 2026-08-04 → 2026-09-10 A (+37d) | 0% → 100% | 3d → none |  |
| 4 | **MECHANICAL DRAWINGS** |  | 2026-07-12 → 2026-07-13 (+1d) |  |  |  |
| 4 | **AIR DOME** | 2026-06-25 → 2026-07-02 (+7d) | 2026-07-12 → 2026-07-13 (+1d) |  |  |  |
| PG-T-EN-ME-SD-SB-100 | Air Package and HVAC System Drawings | 2026-06-25 → 2026-07-02 A (+7d) | 2026-07-12 → 2026-07-13 A (+1d) | 0% → 100% | 7d → none |  |
| 5 | **ELECTRICAL DRAWINGS** |  | 2026-07-29 → 2026-07-12 (-17d) |  |  |  |
| 4 | **AIR DOME** | 2026-06-25 → 2026-07-08 (+13d) | 2026-07-29 → 2026-07-12 (-17d) |  |  |  |
| PG-T-EN-EL-SD-SB-120 | Power & Lighting System Drawings | 2026-07-13 → 2026-07-08 A (-5d) | 2026-07-29 → 2026-07-12 A (-17d) | 0% → 100% | 7d → none |  |
| PG-T-EN-EL-SD-SB-130 | Generators Details | 2026-06-25 → 2026-07-08 A (+13d) | 2026-07-12 A | 0% → 100% | 22d → none |  |
| PG-T-EN-EL-SD-SB-140 | Smart Dome System Drawings | 2026-07-13 → 2026-07-08 A (-5d) | 2026-07-29 → 2026-07-12 A (-17d) | 0% → 100% | 7d → none |  |
| 2 | **SHOP DRAWINGS APPROVALS** |  | 2026-08-12 → 2026-09-02 (+21d) |  |  |  |
| 1 | **STRUCTURAL DRAWINGS** |  | 2026-07-23 → 2026-07-11 (-12d) |  |  |  |
| 3 | **AIR DOME** | 2026-07-07 → 2026-07-05 (-2d) | 2026-07-23 → 2026-07-11 (-12d) |  |  |  |

| ID | Task | Start | Finish | Complete | Total float | Predecessors |
| --- | --- | --- | --- | --- | --- | --- |
| PG-T-EN-ST-SD-AP-60 | Foundation Drawings | 2026-07-19 → 2026-07-05 A (-14d) | 2026-07-23 → 2026-07-06 A (-17d) | 0% → 100% | 0d → none | PG-T-EN-ST-SD-SB-60, PG-T-EN-ST-SD-AP-50 → PG-T-EN-ST-SD-SB-60, PG-T-EN-ST-SD-AP-50 SS |
| PG-T-EN-ST-SD-AP-50 | Excavation Drawings | 2026-07-07 → 2026-07-08 A (+1d) | 2026-07-12 → 2026-07-11 A (-1d) | 0% → 100% | 5d → none |  |
| 2 | **ARCHITECTURAL DRAWINGS** |  | 2026-08-12 → 2026-09-02 (+21d) |  |  |  |
| 2 | **AIR DOME** | 2026-08-05 → 2026-08-06 (+1d) | 2026-08-12 → 2026-09-02 (+21d) |  |  |  |
| PG-T-EN-AR-SD-AP-110 | Membrane & Insulation Details | 2026-08-05 → 2026-08-06 A (+1d) | 2026-08-12 → 2026-09-02 A (+21d) | 0% → 100% | 20d → none | PG-T-EN-AR-SD-SB-110 → PG-T-EN-AR-SD-SB-110 SS |
| PG-T-EN-AR-SD-AP-120 | Steel Cable System | 2026-08-05 → 2026-08-06 A (+1d) | 2026-08-12 → 2026-09-02 A (+21d) | 0% → 100% | 11d → none | PG-T-EN-AR-SD-SB-120 → PG-T-EN-AR-SD-SB-120 SS |
| PG-T-EN-AR-SD-AP-130 | Doors & Access Sytem Drawings | 2026-08-05 → 2026-08-06 A (+1d) | 2026-08-12 → 2026-09-02 A (+21d) | 0% → 100% | 3d → none | PG-T-EN-AR-SD-SB-130 → PG-T-EN-AR-SD-SB-130 SS |
| 4 | **MECHANICAL DRAWINGS** |  | 2026-07-23 → 2026-07-18 (-5d) |  |  |  |
| 4 | **AIR DOME** |  | 2026-07-23 → 2026-07-18 (-5d) |  |  |  |
| PG-T-EN-ME-SD-AP-100 | Air Package and HVAC System Drawings | 2026-07-13 A | 2026-07-23 → 2026-07-18 A (-5d) | 0% → 100% | 20d → none |  |
| 5 | **ELECTRICAL DRAWINGS** |  | 2026-08-08 → 2026-07-19 (-20d) |  |  |  |
| 4 | **AIR DOME** |  | 2026-08-08 → 2026-07-19 (-20d) |  |  |  |
| PG-T-EN-EL-SD-AP-120 | Power & Lighting System Drawings | 2026-07-30 → 2026-07-13 A (-17d) | 2026-08-08 → 2026-07-19 A (-20d) | 0% → 100% | 7d → none |  |
| PG-T-EN-EL-SD-AP-130 | Generators Details | 2026-07-13 A | 2026-07-21 → 2026-07-19 A (-2d) | 0% → 100% | 22d → none |  |
| PG-T-EN-EL-SD-AP-140 | Smart Dome System Drawings | 2026-07-30 → 2026-07-13 A (-17d) | 2026-08-08 → 2026-07-19 A (-20d) | 0% → 100% | 7d → none |  |
| 3 | **MATERIAL SUBMITTALS** |  | 2026-07-11 → 2026-09-15 (+66d) |  |  |  |
| 1 | **LONG LEAD ITEMS** |  | 2026-07-11 → 2026-09-15 (+66d) |  |  |  |
| 3 | **SPORTS & RECREATIONAL FACILITIES WORK** |  | 2026-07-05 → 2026-09-02 (+59d) |  |  |  |
| PG-T-PR-LL-SP-MS-50_R | Air Dome Materials(Remaining) | 2026-06-25 → 2026-07-07 A (+12d) | 2026-07-05 → 2026-09-02 A (+59d) | 0% → 100% | 0d → none |  |
| 9 | **ELECTRICAL WORK** |  | 2026-07-11 → 2026-09-15 (+66d) |  |  |  |
| PG-T-PR-LL-EL-MS-10_R | Main Distribution Board(Remaining) | 2026-06-25 → 2026-07-16 A (+21d) | 2026-07-06 → 2026-08-05 A (+30d) | 0% → 100% | 2d → none |  |
| PG-T-PR-LL-EL-MS-20_R | Power Panels (Pump, Street Light)(Remaining) | 2026-06-25 → 2026-07-16 A (+21d) | 2026-07-06 → 2026-08-05 A (+30d) | 0% → 100% | 7d → none |  |
| PG-T-PR-LL-EL-MS-30_R | Site Lighting Poles(Remaining) | 2026-06-25 → 2026-07-16 A (+21d) | 2026-07-06 → 2026-08-05 A (+30d) | 0% → 100% | 14d → none |  |
| PG-T-PR-LL-EL-MS-40_R | Lighting Fixtures(Remaining) | 2026-06-25 → 2026-07-16 A (+21d) | 2026-07-06 → 2026-07-22 A (+16d) | 0% → 100% | 10d → none |  |
| PG-T-PR-LL-EL-MS-50_R | Grounding System Materials (Earth pit rod, LPS, etc)(Remaining) | 2026-07-06 → 2026-07-16 A (+10d) | 2026-07-11 → 2026-07-20 A (+9d) | 0% → 100% | 17d → none | PG-T-PR-LL-SP-MS-50_R, PG-T-PR-LL-EL-MS-50 → PG-T-PR-LL-EL-MS-50, PG-T-PR-LL-SP-MS-50_R SS |
| PG-T-PR-LL-EL-MS-60_R | Telecommunications & Data System Materials (Telephone outlet, CCTV, etc)(Remaining) | 2026-06-25 → 2026-07-16 A (+21d) | 2026-07-06 → 2026-09-15 A (+71d) | 0% → 100% | 30d → none |  |
| PG-T-PR-LL-EL-MS-70_R | Security and Access Control System Materials(Remaining) | 2026-06-25 → 2026-07-16 A (+21d) | 2026-07-06 → 2026-09-15 A (+71d) | 0% → 100% | 31d → none |  |
| PG-T-PR-LL-EL-MS-80_R | Fire Alarm System Materials(Remaining) | 2026-06-25 → 2026-08-27 A (+63d) | 2026-07-06 → 2026-09-15 A (+71d) | 0% → 100% | 31d → none |  |
| 4 | **MATERIAL APPROVALS** |  | 2026-07-13 → 2026-09-17 (+66d) |  |  |  |
| 1 | **LONG LEAD ITEMS** |  | 2026-07-13 → 2026-09-17 (+66d) |  |  |  |
| 3 | **SPORTS & RECREATIONAL FACILITIES WORK** |  | 2026-07-11 → 2026-09-03 (+54d) |  |  |  |
| PG-T-PR-LL-SP-MA-50_R | Air Dome Materials(Remaining) | 2026-07-06 → 2026-07-09 A (+3d) | 2026-07-11 → 2026-09-03 A (+54d) | 0% → 100% | 0d → none | PG-T-PR-LL-SP-MS-50_R, PG-T-PR-LL-SP-MA-50 → PG-T-PR-LL-SP-MA-50, PG-T-PR-LL-SP-MS-50_R SS |
| 9 | **ELECTRICAL WORK** |  | 2026-07-13 → 2026-09-17 (+66d) |  |  |  |
| PG-T-PR-LL-EL-MA-10_R | Main Distribution Board(Remaining) | 2026-06-25 → 2026-07-17 A (+22d) | 2026-07-02 → 2026-08-06 A (+35d) | 0% → 100% | 2d → none |  |
| PG-T-PR-LL-EL-MA-20_R | Power Panels (Pump, Street Light)(Remaining) | 2026-06-25 → 2026-07-17 A (+22d) | 2026-07-02 → 2026-08-06 A (+35d) | 0% → 100% | 7d → none |  |
| PG-T-PR-LL-EL-MA-30_R | Site Lighting Poles(Remaining) | 2026-06-25 → 2026-07-17 A (+22d) | 2026-07-02 → 2026-08-06 A (+35d) | 0% → 100% | 14d → none |  |
| PG-T-PR-LL-EL-MA-40_R | Lighting Fixtures(Remaining) | 2026-06-25 → 2026-07-17 A (+22d) | 2026-07-02 → 2026-07-23 A (+21d) | 0% → 100% | 10d → none |  |
| PG-T-PR-LL-EL-MA-60_R | Telecommunications & Data System Materials (Telephone outlet, CCTV, etc)(Remaining) | 2026-06-25 → 2026-07-17 A (+22d) | 2026-07-02 → 2026-09-17 A (+77d) | 0% → 100% | 30d → none |  |
| PG-T-PR-LL-EL-MA-70_R | Security and Access Control System Materials(Remaining) | 2026-06-25 → 2026-07-17 A (+22d) | 2026-07-02 → 2026-09-17 A (+77d) | 0% → 100% | 44d → none |  |
| PG-T-PR-LL-EL-MA-50_R | Grounding System Materials (Earth pit rod, LPS, etc)(Remaining) | 2026-07-12 → 2026-07-22 A (+10d) | 2026-07-13 → 2026-07-28 A (+15d) | 0% → 100% | 17d → none |  |
| PG-T-PR-LL-EL-MA-80_R | Fire Alarm System Materials(Remaining) | 2026-06-25 → 2026-08-27 A (+63d) | 2026-07-02 → 2026-09-17 A (+77d) | 0% → 100% | 37d → none |  |
| PR | **PROCUREMENT** |  | 2026-08-27 → 2026-10-19 (+53d) |  |  |  |
| 1 | **LONG LEAD ITEMS** |  | 2026-08-27 → 2026-10-19 (+53d) |  |  |  |
| 2 | **PURCHASE ORDER** |  | 2026-07-16 → 2026-09-10 (+56d) |  |  |  |
| 2 | **SPORTS & RECREATIONAL FACILITIES WORK** |  | 2026-07-16 → 2026-09-10 (+56d) |  |  |  |
| PG-T-PR-LL-SP-PO-50 | Air Dome Materials | 2026-07-12 → 2026-08-06 A (+25d) | 2026-07-16 → 2026-09-10 A (+56d) | 0% → 100% | 0d → none | PG-T-PR-LL-SP-MA-50_R → PG-T-PR-LL-SP-MA-50_R SS |
| 9 | **ELECTRICAL WORK** |  | 2026-07-16 → 2026-09-10 (+56d) |  |  |  |
| PG-T-PR-LL-EL-PO-40_R | Lighting Fixtures(Remaining) | 2026-07-04 → 2026-07-23 A (+19d) | 2026-07-12 → 2026-09-10 A (+60d) | 0% → 100% | 10d → none |  |
| PG-T-PR-LL-EL-PO-10_R | Main Distribution Board(Remaining) | 2026-07-04 → 2026-07-26 A (+22d) | 2026-07-12 → 2026-09-10 A (+60d) | 0% → 100% | 2d → none | PG-T-PR-LL-EL-MA-10_R, PG-T-PR-LL-EL-PO-10 → PG-T-PR-LL-EL-PO-10, PG-T-PR-LL-EL-MA-10_R SS |
| PG-T-PR-LL-EL-PO-20_R | Power Panels (Pump, Street Light)(Remaining) | 2026-07-04 → 2026-07-26 A (+22d) | 2026-07-12 → 2026-09-10 A (+60d) | 0% → 100% | 7d → none | PG-T-PR-LL-EL-MA-20_R, PG-T-PR-LL-EL-PO-20 → PG-T-PR-LL-EL-PO-20, PG-T-PR-LL-EL-MA-20_R SS |
| PG-T-PR-LL-EL-PO-30_R | Site Lighting Poles(Remaining) | 2026-07-04 → 2026-07-26 A (+22d) | 2026-07-12 → 2026-09-10 A (+60d) | 0% → 100% | 14d → none | PG-T-PR-LL-EL-MA-30_R, PG-T-PR-LL-EL-PO-30 → PG-T-PR-LL-EL-PO-30, PG-T-PR-LL-EL-MA-30_R SS |
| PG-T-PR-LL-EL-PO-50_R | Grounding System Materials (Earth pit rod, LPS, etc)(Remaining) | 2026-07-14 → 2026-07-26 A (+12d) | 2026-07-16 → 2026-09-10 A (+56d) | 0% → 100% | 17d → none |  |
| PG-T-PR-LL-EL-PO-60_R | Telecommunications & Data System Materials (Telephone outlet, CCTV, etc)(Remaining) | 2026-07-04 → 2026-08-27 A (+54d) | 2026-07-12 → 2026-09-10 A (+60d) | 0% → 100% | 30d → none | PG-T-PR-LL-EL-MA-60_R, PG-T-PR-LL-EL-PO-60 → PG-T-PR-LL-EL-MA-60_R, PG-T-PR-LL-EL-PO-60, PG-T-PR-LL-EL-MA-60_R SS |
| PG-T-PR-LL-EL-PO-70_R | Security and Access Control System Materials(Remaining) | 2026-07-04 → 2026-08-27 A (+54d) | 2026-07-12 → 2026-09-10 A (+60d) | 0% → 100% | 44d → none | PG-T-PR-LL-EL-MA-70_R, PG-T-PR-LL-EL-PO-70 → PG-T-PR-LL-EL-MA-70_R, PG-T-PR-LL-EL-PO-70, PG-T-PR-LL-EL-MA-70_R SS |
| PG-T-PR-LL-EL-PO-80_R | Fire Alarm System Materials(Remaining) | 2026-07-04 → 2026-08-27 A (+54d) | 2026-07-12 → 2026-09-10 A (+60d) | 0% → 100% | 37d → none | PG-T-PR-LL-EL-MA-80_R, PG-T-PR-LL-EL-PO-80 → PG-T-PR-LL-EL-MA-80_R, PG-T-PR-LL-EL-PO-80, PG-T-PR-LL-EL-MA-80_R SS |
| 3 | **MANUFACTURE / FABRICATION** |  | 2026-08-16 → 2026-10-12 (+57d) |  |  |  |
| 1 | **EXTERNAL / LANDSCAPE WORK** |  | 2026-07-23 → 2026-10-04 (+73d) |  |  |  |
| PG-T-PR-LL-LS-MF-30_R | Fence, gates and accessories(Remaining) | 2026-06-25 → 2026-07-22 A (+27d) | 2026-07-01 → 2026-09-26 (+87d) | 0% → 90% | 21.2d → 7.11d |  |
| PG-T-PR-LL-LS-MF-10_R | Bike and Walk Path Materials(Remaining) | 2026-06-25 → 2026-08-05 A (+41d) | 2026-07-23 → 2026-09-28 (+67d) | 0% → 90% | 68.2d → 43.36d |  |
| PG-T-PR-LL-LS-MF-20_R | Benches, Seats (Rectangular & Circular)(Remaining) | 2026-06-25 → 2026-08-05 A (+41d) | 2026-07-23 → 2026-10-04 (+73d) | 0% → 70% | 88.2d → 43.96d |  |
| 2 | **SPORTS & RECREATIONAL FACILITIES WORK** |  | 2026-08-16 → 2026-10-07 (+52d) |  |  |  |
| PG-T-PR-LL-SP-MF-10_R | Football Playground Materials (Flooring, goal post, nets, paints, etc)(Remaining) | 2026-06-25 → 2026-08-05 A (+41d) | 2026-07-23 → 2026-09-28 (+67d) | 0% → 90% | 60d → 51.7d |  |
| PG-T-PR-LL-SP-MF-20_R | Basketball Playground Materials (Flooring, basketball poll, nets, paints, etc)(Remaining) | 2026-06-25 → 2026-08-05 A (+41d) | 2026-07-23 → 2026-09-28 (+67d) | 0% → 90% | 61d → 45.9d |  |
| PG-T-PR-LL-SP-MF-30_R | Padel Playgound Materials (Flooring, fence, tempered glass, etc)(Remaining) | 2026-06-25 → 2026-08-05 A (+41d) | 2026-07-23 → 2026-09-28 (+67d) | 0% → 90% | 8d → 25.3d |  |
| PG-T-PR-LL-SP-MF-40_R | Tartan Floor(Remaining) | 2026-06-25 → 2026-08-05 A (+41d) | 2026-07-23 → 2026-09-28 (+67d) | 0% → 90% | 28d → 43.5d |  |
| PG-T-PR-LL-SP-MF-50 | Air Dome Materials | 2026-07-18 → 2026-08-27 A (+40d) | 2026-08-16 → 2026-10-07 (+52d) | 0% → 60% | 0d → -35.4d |  |
| 3 | **CONCRETE WORK** |  | 2026-06-30 → 2026-07-02 (+2d) |  |  |  |
| PG-T-PR-LL-CO-MF-10_R | Autoclaved Aerated Panel(Remaining) | 2026-06-25 → 2026-07-01 A (+6d) | 2026-06-30 → 2026-07-02 A (+2d) | 0% → 100% | 0d → none |  |
| 5 | **METAL WORK** |  | 2026-07-23 → 2026-10-12 (+81d) |  |  |  |
| PG-T-PR-LL-MT-MF-10_R | Metal Doors(Remaining) | 2026-06-25 → 2026-08-27 A (+63d) | 2026-07-23 → 2026-10-10 (+79d) | 0% → 50% | 62d → 27.8d |  |

| ID | Task | Start | Finish | Complete | Total float | Predecessors |
| --- | --- | --- | --- | --- | --- | --- |
| PG-T-PR-LL-MT-MF-20_R | Curtain Wall(Remaining) | 2026-06-25 → 2026-08-27 A (+63d) | 2026-07-23 → 2026-10-12 (+81d) | 0% → 40% | 57d → 25.6d |  |
| 7 | **PLUMBING WORK** |  | 2026-07-23 → 2026-09-30 (+69d) |  |  |  |
| PG-T-PR-LL-PB-MF-10_R | Booster Pump(Remaining) | 2026-06-25 A | 2026-07-23 → 2026-07-02 A (-21d) | 0% → 100% | 20d → none |  |
| PG-T-PR-LL-PB-MF-20_R | GRP Sectional Panel Water Tanks (4x3x3m)(Remaining) | 2026-06-25 → 2026-08-05 A (+41d) | 2026-07-23 → 2026-09-30 (+69d) | 0% → 80% | 43.2d → 23.66d |  |
| 8 | **IRRIGATION WORK** |  | 2026-07-01 → 2026-09-21 (+82d) |  |  |  |
| PG-T-PR-LL-IR-MF-10_R | HDPE Pipes(Remaining) | 2026-06-25 → 2026-08-14 A (+50d) | 2026-07-01 → 2026-08-27 A (+57d) | 0% → 100% | 13d → none |  |
| PG-T-PR-LL-IR-MF-20_R | Irrigation Control System(Remaining) | 2026-06-25 → 2026-08-27 A (+63d) | 2026-07-01 → 2026-09-21 A (+82d) | 0% → 100% | 16.9d → none |  |
| 9 | **ELECTRICAL WORK** |  | 2026-08-10 → 2026-09-30 (+51d) |  |  |  |
| PG-T-PR-LL-EL-MF-40_R | Lighting Fixtures(Remaining) | 2026-07-13 → 2026-07-23 A (+10d) | 2026-08-10 → 2026-09-30 (+51d) | 0% → 80% | 10d → 10.5d | PG-T-PR-LL-EL-PO-40_R, PG-T-PR-LL-EL-MF-40 → PG-T-PR-LL-EL-MF-40, PG-T-PR-LL-EL-PO-40_R SS |
| PG-T-PR-LL-EL-MF-10_R | Main Distribution Board(Remaining) | 2026-07-13 → 2026-08-06 A (+24d) | 2026-08-10 → 2026-09-30 (+51d) | 0% → 80% | 2d → -9.1d | PG-T-PR-LL-EL-PO-10_R, PG-T-PR-LL-EL-MF-10 → PG-T-PR-LL-EL-MF-10, PG-T-PR-LL-EL-PO-10_R SS |
| PG-T-PR-LL-EL-MF-20_R | Power Panels (Pump, Street Light)(Remaining) | 2026-07-13 → 2026-08-06 A (+24d) | 2026-08-10 → 2026-09-30 (+51d) | 0% → 80% | 7d → -4.6d | PG-T-PR-LL-EL-PO-20_R, PG-T-PR-LL-EL-MF-20 → PG-T-PR-LL-EL-MF-20, PG-T-PR-LL-EL-PO-20_R SS |
| PG-T-PR-LL-EL-MF-30_R | Site Lighting Poles(Remaining) | 2026-07-13 → 2026-08-06 A (+24d) | 2026-08-10 → 2026-09-30 (+51d) | 0% → 80% | 14d → 1.7d | PG-T-PR-LL-EL-PO-30_R, PG-T-PR-LL-EL-MF-30 → PG-T-PR-LL-EL-MF-30, PG-T-PR-LL-EL-PO-30_R SS |
| PG-T-PR-LL-EL-MF-50_R | Grounding System Materials (Earth pit rod, LPS, etc)(Remaining) | 2026-07-18 → 2026-08-27 A (+40d) | 2026-07-23 → 2026-09-27 (+66d) | 0% → 80% | 17d → -9.7d | PG-T-PR-LL-EL-PO-50_R, PG-T-PR-LL-EL-MF-50 → PG-T-PR-LL-EL-PO-50_R, PG-T-PR-LL-EL-MF-50, PG-T-PR-LL-EL-PO-50_R SS |
| PG-T-PR-LL-EL-MF-60_R | Telecommunications & Data System Materials (Telephone outlet, CCTV, etc)(Remaining) | 2026-07-13 → 2026-08-27 A (+45d) | 2026-08-10 → 2026-09-30 (+51d) | 0% → 80% | 30d → 10.3d | PG-T-PR-LL-EL-PO-60_R, PG-T-PR-LL-EL-MF-60 → PG-T-PR-LL-EL-PO-60_R, PG-T-PR-LL-EL-MF-60, PG-T-PR-LL-EL-PO-60_R SS |
| PG-T-PR-LL-EL-MF-70_R | Security and Access Control System Materials(Remaining) | 2026-07-13 → 2026-08-27 A (+45d) | 2026-08-10 → 2026-09-30 (+51d) | 0% → 80% | 44d → 27.05d | PG-T-PR-LL-EL-PO-70_R, PG-T-PR-LL-EL-MF-70 → PG-T-PR-LL-EL-PO-70_R, PG-T-PR-LL-EL-MF-70, PG-T-PR-LL-EL-PO-70_R SS |
| PG-T-PR-LL-EL-MF-80_R | Fire Alarm System Materials(Remaining) | 2026-07-13 → 2026-08-27 A (+45d) | 2026-08-10 → 2026-09-30 (+51d) | 0% → 80% | 37d → 13d | PG-T-PR-LL-EL-PO-80_R, PG-T-PR-LL-EL-MF-80 → PG-T-PR-LL-EL-PO-80_R, PG-T-PR-LL-EL-MF-80, PG-T-PR-LL-EL-PO-80_R SS |
| 4 | **DELIVERY TO SITE** |  | 2026-08-27 → 2026-10-19 (+53d) |  |  |  |
| 1 | **EXTERNAL / LANDSCAPE WORK** |  | 2026-08-06 → 2026-09-27 (+52d) |  |  |  |
| PG-T-PR-LL-LS-DL-30_R | Fence, gates and accessories(Remaining) | 2026-07-02 → 2026-07-23 A (+21d) | 2026-07-07 → 2026-09-19 A (+74d) | 0% → 100% | 21.2d → none | PG-T-PR-LL-LS-MF-30_R, PG-T-PR-LL-LS-DL-30 → PG-T-PR-LL-LS-DL-30, PG-T-PR-LL-LS-MF-30_R SS |
| PG-T-PR-LL-LS-DL-10_R | Bike and Walk Path Materials(Remaining) | 2026-07-25 → 2026-08-06 A (+12d) | 2026-08-06 → 2026-09-26 (+51d) | 0% → 95% | 68.2d → 43.36d | PG-T-PR-LL-LS-MF-10_R, PG-T-PR-LL-LS-DL-10 → PG-T-PR-LL-LS-DL-10, PG-T-PR-LL-LS-MF-10_R SS |
| PG-T-PR-LL-LS-DL-20_R | Benches, Seats (Rectangular & Circular)(Remaining) | 2026-07-25 → 2026-08-14 A (+20d) | 2026-08-06 → 2026-09-27 (+52d) | 0% → 90% | 88.2d → 43.96d | PG-T-PR-LL-LS-MF-20_R, PG-T-PR-LL-LS-DL-20 → PG-T-PR-LL-LS-DL-20, PG-T-PR-LL-LS-MF-20_R SS |
| 2 | **SPORTS & RECREATIONAL FACILITIES WORK** |  | 2026-08-27 → 2026-10-14 (+48d) |  |  |  |
| PG-T-PR-LL-SP-DL-40_R | Tartan Floor(Remaining) | 2026-07-25 → 2026-08-06 A (+12d) | 2026-08-06 → 2026-09-27 (+52d) | 0% → 90% | 28d → 43.5d | PG-T-PR-LL-SP-MF-40_R, PG-T-PR-LL-SP-DL-40 → PG-T-PR-LL-SP-DL-40, PG-T-PR-LL-SP-MF-40_R SS |
| PG-T-PR-LL-SP-DL-10_R | Football Playground Materials (Flooring, goal post, nets, paints, etc)(Remaining) | 2026-07-25 → 2026-08-14 A (+20d) | 2026-08-06 → 2026-09-27 (+52d) | 0% → 90% | 60d → 51.7d | PG-T-PR-LL-SP-MF-10_R, PG-T-PR-LL-SP-DL-10 → PG-T-PR-LL-SP-DL-10, PG-T-PR-LL-SP-MF-10_R SS |
| PG-T-PR-LL-SP-DL-20_R | Basketball Playground Materials (Flooring, basketball poll, nets, paints, etc)(Remaining) | 2026-07-25 → 2026-08-14 A (+20d) | 2026-08-06 → 2026-09-27 (+52d) | 0% → 90% | 61d → 45.9d | PG-T-PR-LL-SP-MF-20_R, PG-T-PR-LL-SP-DL-20 → PG-T-PR-LL-SP-DL-20, PG-T-PR-LL-SP-MF-20_R SS |
| PG-T-PR-LL-SP-DL-30_R | Padel Playgound Materials (Fence, tempered glass, etc)(Remaining) | 2026-07-25 → 2026-08-14 A (+20d) | 2026-08-06 → 2026-09-27 (+52d) | 0% → 90% | 8d → 25.3d | PG-T-PR-LL-SP-MF-30_R, PG-T-PR-LL-SP-DL-30 → PG-T-PR-LL-SP-DL-30, PG-T-PR-LL-SP-MF-30_R SS |
| PG-T-PR-LL-SP-DL-50 | Air Dome Materials | 2026-08-17 → 2026-08-20 A (+3d) | 2026-08-27 → 2026-10-14 (+48d) | 0% → 35% | 0d → -35.4d | PG-T-PR-LL-SP-MF-50, PG-T-PR-LL-SP-MF-50 SS, PG-T-PR-LL-SP-MF-50 FF, PG-T-EN-AR-SD-AP-130, PG-T-EN-ME-SD-AP-100, PG-T-EN-EL-SD-AP-140, PG-T-EN-EL-SD-AP-120, PG-T-EN-EL-SD-AP-130 → PG-T-PR-LL-SP-MF-50, PG-T-PR-LL-SP-MF-50 SS, PG-T-PR-LL-SP-MF-50 FF, PG-T-EN-AR-SD-AP-130, PG-T-EN-ME-SD-AP-100, PG-T-EN-EL-SD-AP-140, PG-T-EN-EL-SD-AP-120, PG-T-EN-EL-SD-AP-130, PG-T-EN-AR-SD-AP-130 SS |
| 3 | **CONCRETE WORK** |  | 2026-07-06 → 2026-07-05 (-1d) |  |  |  |
| PG-T-PR-LL-CO-DL-10_R | Autoclaved Aerated Panel(Remaining) | 2026-07-01 → 2026-07-04 A (+3d) | 2026-07-06 → 2026-07-05 A (-1d) | 0% → 100% | 0d → none |  |
| 5 | **METAL WORK** |  | 2026-08-06 → 2026-10-19 (+74d) |  |  |  |
| PG-T-PR-LL-MT-DL-10_R | Metal Doors(Remaining) | 2026-07-25 → 2026-08-27 A (+33d) | 2026-08-06 → 2026-10-14 (+69d) | 0% → 65% | 62d → 27.8d | PG-T-PR-LL-MT-MF-10_R, PG-T-PR-LL-MT-DL-10 → PG-T-PR-LL-MT-MF-10_R, PG-T-PR-LL-MT-DL-10, PG-T-PR-LL-MT-MF-10_R SS |
| PG-T-PR-LL-MT-DL-20_R | Curtain Wall(Remaining) | 2026-07-25 → 2026-08-27 A (+33d) | 2026-08-06 → 2026-10-19 (+74d) | 0% → 55% | 57d → 25.6d | PG-T-PR-LL-MT-MF-20_R, PG-T-PR-LL-MT-DL-20 → PG-T-PR-LL-MT-MF-20_R, PG-T-PR-LL-MT-DL-20, PG-T-PR-LL-MT-MF-20_R SS |
| 7 | **PLUMBING WORK** |  | 2026-08-06 → 2026-09-28 (+53d) |  |  |  |
| PG-T-PR-LL-PB-DL-20_R | GRP Sectional Panel Water Tanks (4x3x3m)(Remaining) | 2026-07-25 → 2026-08-14 A (+20d) | 2026-08-06 → 2026-09-28 (+53d) | 0% → 75% | 43.2d → 23.66d | PG-T-PR-LL-PB-MF-20_R, PG-T-PR-LL-PB-DL-20 → PG-T-PR-LL-PB-DL-20, PG-T-PR-LL-PB-MF-20_R SS |
| PG-T-PR-LL-PB-DL-10_R | Booster Pump(Remaining) | 2026-07-25 → 2026-08-27 A (+33d) | 2026-08-06 → 2026-09-26 A (+51d) | 0% → 100% | 20d → none |  |
| 8 | **IRRIGATION WORK** |  | 2026-07-06 → 2026-09-27 (+83d) |  |  |  |
| PG-T-PR-LL-IR-DL-10_R | HDPE Pipes(Remaining) | 2026-07-01 → 2026-08-07 A (+37d) | 2026-07-06 → 2026-09-27 (+83d) | 0% → 70% | 13d → -20.35d | PG-T-PR-LL-IR-MF-10_R, PG-T-PR-LL-IR-DL-10 → PG-T-PR-LL-IR-DL-10, PG-T-PR-LL-IR-MF-10_R SS |
| PG-T-PR-LL-IR-DL-20_R | Irrigation Control System(Remaining) | 2026-07-01 → 2026-08-20 A (+50d) | 2026-07-06 → 2026-09-27 (+83d) | 0% → 60% | 16.9d → -20.75d | PG-T-PR-LL-IR-MF-20_R, PG-T-PR-LL-IR-DL-20 → PG-T-PR-LL-IR-MF-20_R, PG-T-PR-LL-IR-DL-20, PG-T-PR-LL-IR-MF-20_R FF |
| 9 | **ELECTRICAL WORK** |  | 2026-08-24 → 2026-10-04 (+41d) |  |  |  |
| PG-T-PR-LL-EL-DL-10_R | Main Distribution Board(Remaining) | 2026-08-11 → 2026-08-14 A (+3d) | 2026-08-24 → 2026-09-27 (+34d) | 0% → 85% | 2d → -9.1d | PG-T-PR-LL-EL-MF-10_R, PG-T-PR-LL-EL-DL-10 → PG-T-PR-LL-EL-DL-10, PG-T-PR-LL-EL-MF-10_R SS |
| PG-T-PR-LL-EL-DL-20_R | Power Panels (Pump, Street Light)(Remaining) | 2026-08-11 → 2026-08-14 A (+3d) | 2026-08-24 → 2026-09-27 (+34d) | 0% → 85% | 7d → -4.6d | PG-T-PR-LL-EL-MF-20_R, PG-T-PR-LL-EL-DL-20 → PG-T-PR-LL-EL-DL-20, PG-T-PR-LL-EL-MF-20_R SS |
| PG-T-PR-LL-EL-DL-30_R | Site Lighting Poles(Remaining) | 2026-08-11 → 2026-08-14 A (+3d) | 2026-08-24 → 2026-09-27 (+34d) | 0% → 85% | 14d → 1.7d | PG-T-PR-LL-EL-MF-30_R, PG-T-PR-LL-EL-DL-30 → PG-T-PR-LL-EL-DL-30, PG-T-PR-LL-EL-MF-30_R SS |
| PG-T-PR-LL-EL-DL-40_R | Lighting Fixtures(Remaining) | 2026-08-11 → 2026-08-14 A (+3d) | 2026-08-24 → 2026-09-27 (+34d) | 0% → 85% | 10d → 10.5d | PG-T-PR-LL-EL-MF-40_R, PG-T-PR-LL-EL-DL-40 → PG-T-PR-LL-EL-DL-40, PG-T-PR-LL-EL-MF-40_R SS |
| PG-T-PR-LL-EL-DL-50_R | Grounding System Materials (Earth pit rod, LPS, etc)(Remaining) | 2026-07-25 → 2026-08-14 A (+20d) | 2026-07-28 → 2026-09-27 (+61d) | 0% → 85% | 17d → -9.7d | PG-T-PR-LL-EL-MF-50_R, PG-T-PR-LL-EL-DL-50 → PG-T-PR-LL-EL-DL-50, PG-T-PR-LL-EL-MF-50_R FF |
| PG-T-PR-LL-EL-DL-60_R | Telecommunications & Data System Materials (Telephone outlet, CCTV, etc)(Remaining) | 2026-08-11 → 2026-08-27 A (+16d) | 2026-08-24 → 2026-10-04 (+41d) | 0% → 75% | 30d → 10.3d | PG-T-PR-LL-EL-MF-60_R, PG-T-PR-LL-EL-DL-60 → PG-T-PR-LL-EL-MF-60_R, PG-T-PR-LL-EL-DL-60, PG-T-PR-LL-EL-MF-60_R SS |
| PG-T-PR-LL-EL-DL-70_R | Security and Access Control System Materials(Remaining) | 2026-08-11 → 2026-08-27 A (+16d) | 2026-08-24 → 2026-10-04 (+41d) | 0% → 75% | 44d → 27.05d | PG-T-PR-LL-EL-MF-70_R, PG-T-PR-LL-EL-DL-70 → PG-T-PR-LL-EL-MF-70_R, PG-T-PR-LL-EL-DL-70, PG-T-PR-LL-EL-MF-70_R SS |
| PG-T-PR-LL-EL-DL-80_R | Fire Alarm System Materials(Remaining) | 2026-08-11 → 2026-08-27 A (+16d) | 2026-08-24 → 2026-10-04 (+41d) | 0% → 75% | 37d → 13d | PG-T-PR-LL-EL-MF-80_R, PG-T-PR-LL-EL-DL-80 → PG-T-PR-LL-EL-MF-80_R, PG-T-PR-LL-EL-DL-80, PG-T-PR-LL-EL-MF-80_R SS |
| 2 | **SHORT LEAD ITEMS** |  | 2026-07-22 → 2026-10-08 (+78d) |  |  |  |
| 2 | **PURCHASE ORDER** |  | 2026-07-11 → 2026-08-27 (+47d) |  |  |  |
| 1 | **EXTERNAL / LANDSCAPE WORK** |  | 2026-07-11 → 2026-08-27 (+47d) |  |  |  |
| PG-T-PR-SL-LS-PO-50_R | Thermoplastic pavement road marking(Remaining) | 2026-06-25 → 2026-08-20 A (+56d) | 2026-07-02 → 2026-08-27 A (+56d) | 0% → 100% | 77.2d → none |  |
| PG-T-PR-SL-LS-PO-60_R | Traffic Signages(Remaining) | 2026-07-04 → 2026-08-20 A (+47d) | 2026-07-11 → 2026-08-27 A (+47d) | 0% → 100% | 77.2d → none |  |
| PG-T-PR-SL-LS-PO-70_R | Trees(Remaining) | 2026-06-25 → 2026-08-20 A (+56d) | 2026-07-02 → 2026-08-27 A (+56d) | 0% → 100% | 84.2d → none |  |
| PG-T-PR-SL-LS-PO-80_R | Lawn(Remaining) | 2026-06-25 → 2026-08-20 A (+56d) | 2026-07-02 → 2026-08-27 A (+56d) | 0% → 100% | 110.2d → none |  |
| 9 | **ELECTRICAL WORK** |  | 2026-07-02 → 2026-08-27 (+56d) |  |  |  |
| PG-T-PR-SL-EL-PO-10_R | Wiring Devices Materials(Remaining) | 2026-06-25 → 2026-08-20 A (+56d) | 2026-07-02 → 2026-08-27 A (+56d) | 0% → 100% | 24d → none |  |
| 10 | **FIRE FIGHTING WORK** |  | 2026-06-29 → 2026-08-27 (+59d) |  |  |  |
| PG-T-PR-SL-FF-PO-10_R | Fire Extinguishers(Remaining) | 2026-06-25 → 2026-08-20 A (+56d) | 2026-06-29 → 2026-08-27 A (+59d) | 0% → 100% | 28d → none |  |
| 3 | **DELIVERY TO SITE** |  | 2026-07-22 → 2026-10-08 (+78d) |  |  |  |
| 1 | **EXTERNAL / LANDSCAPE WORK** |  | 2026-07-22 → 2026-09-27 (+67d) |  |  |  |
| PG-T-PR-SL-LS-DL-60_R | Traffic Signages(Remaining) | 2026-07-12 → 2026-08-27 A (+46d) | 2026-07-22 → 2026-09-27 (+67d) | 0% → 85% | 77.2d → 31.66d |  |
| PG-T-PR-SL-LS-DL-70_R | Trees(Remaining) | 2026-07-12 → 2026-08-27 A (+46d) | 2026-07-22 → 2026-09-27 (+67d) | 0% → 85% | 77.2d → 31.66d |  |
| PG-T-PR-SL-LS-DL-80_R | Lawn(Remaining) | 2026-07-12 → 2026-08-27 A (+46d) | 2026-07-22 → 2026-09-27 (+67d) | 0% → 85% | 103.2d → 53.46d |  |
| 5 | **METAL WORK** |  | 2026-07-08 → 2026-10-08 (+92d) |  |  |  |
| PG-T-PR-SL-MT-DL-10_R | Galvanized Steel Ladder(Remaining) | 2026-06-25 → 2026-09-26 (+93d) | 2026-07-08 → 2026-10-08 (+92d) |  | 90d → 32.05d |  |
| PG-T-PR-SL-MT-DL-20_R | Galvanized Steel Roof Scupper(Remaining) | 2026-06-25 → 2026-09-26 (+93d) | 2026-07-08 → 2026-10-08 (+92d) |  | 90d → 32.05d |  |
| PG-T-PR-SL-MT-DL-30_R | Galvanized Steel Cover with frame(Remaining) | 2026-06-25 → 2026-09-26 (+93d) | 2026-07-08 → 2026-10-08 (+92d) |  | 90d → 32.05d |  |
| 8 | **IRRIGATION WORK** |  | 2026-07-05 → 2026-09-26 (+83d) |  |  |  |
| PG-T-PR-SL-IR-DL-10_R | Gate Valve including valve box(Remaining) | 2026-06-25 → 2026-08-07 A (+43d) | 2026-07-05 → 2026-09-26 (+83d) | 0% → 90% | 13.6d → -20d |  |
| PG-T-PR-SL-IR-DL-20_R | Bulbblers and Spreyers(Remaining) | 2026-06-25 → 2026-08-20 A (+56d) | 2026-07-05 → 2026-09-26 (+83d) | 0% → 90% | 23.5d → -19.1d |  |

| ID | Task | Start | Finish | Complete | Total float | Predecessors |
| --- | --- | --- | --- | --- | --- | --- |
| 9 | **ELECTRICAL WORK** |  | 2026-07-16 → 2026-10-01 (+77d) |  |  |  |
| PG-T-PR-SL-EL-DL-10_R | Wiring Devices Materials(Remaining) | 2026-07-04 → 2026-09-19 A (+77d) | 2026-07-16 → 2026-10-01 (+77d) | 0% → 50% | 24d → 2.3d |  |
| 10 | **FIRE FIGHTING WORK** |  | 2026-07-09 → 2026-10-05 (+88d) |  |  |  |
| PG-T-PR-SL-FF-DL-10_R | Fire Extinguishers(Remaining) | 2026-06-30 → 2026-09-26 (+88d) | 2026-07-09 → 2026-10-05 (+88d) |  | 28d → -22.5d |  |
| CO | **CONSTRUCTION STAGE** |  | 2026-12-14 → 2027-01-20 (+37d) |  |  |  |
| EX.SIT | **PLAYGROUND AND LANDSCAPING WORKS** |  | 2026-12-14 → 2027-01-20 (+37d) |  |  |  |
| 1 | **PLAYGROUND WORKS** |  | 2026-12-07 → 2026-11-17 (-20d) |  |  |  |
| FP | **FOOTBALL PLAYGROUND WORKS** |  | 2026-11-17 → 2026-10-22 (-26d) |  |  |  |
| PG-T-CON-EX-FB-80 | Fine Grading & Leveling | 2026-06-25 → 2026-07-07 A (+12d) | 2026-07-12 A | 0% → 100% | 5.2d → none |  |
| PG-T-CON-EX-FB-70_R | Topsoil Placement(Remaining) | 2026-07-13 → 2026-07-09 A (-4d) | 2026-07-29 → 2026-07-12 A (-17d) | 0% → 100% | 25d → none |  |
| PG-T-CON-EX-FB-50 | Goal Post Foundation | 2026-07-30 → 2026-07-23 A (-7d) | 2026-08-18 → 2026-08-14 A (-4d) | 0% → 100% | 25d → none |  |
| PG-T-CON-EX-FB-40 | Tartan flooring | 2026-09-17 → 2026-08-14 A (-34d) | 2026-10-05 → 2026-08-14 A (-52d) | 0% → 100% | 25d → none | PG-T-CON-EX-FB-30, PG-T-EN-LS-SD-AP-40, PG-T-PR-LL-SP-DL-40_R, PG-T-PR-LL-SP-DL-10_R, PG-T-CON-EX-FB-90 → PG-T-CON-EX-FB-30, PG-T-EN-LS-SD-AP-40, PG-T-PR-LL-SP-DL-40_R SS, PG-T-PR-LL-SP-DL-10_R SS, PG-T-CON-EX-FB-90 FF, PG-T-CON-EX-FB-90 SS |
| PG-T-CON-EX-FB-90 | Turfing / Seeding Works | 2026-09-03 → 2026-08-14 A (-20d) | 2026-09-16 → 2026-09-30 (+14d) | 0% → 90% | 25d → 47.25d | PG-T-CON-EX-FB-120 → PG-T-CON-EX-FB-120, PG-T-CON-EX-FB-120 FF |
| PG-T-CON-EX-FB-120 | Installation of Lighting System | 2026-08-19 → 2026-08-20 A (+1d) | 2026-09-02 → 2026-09-29 (+27d) | 0% → 75% | 25d → 47.25d |  |
| PG-T-CON-EX-FB-60 | Goal Post Installation & Alignment | 2026-10-06 → 2026-08-20 A (-47d) | 2026-10-22 → 2026-10-05 (-17d) | 0% → 70% | 25d → 47.25d |  |
| PG-T-CON-EX-FB-110 | Install Playground Benches | 2026-10-24 → 2026-08-27 A (-58d) | 2026-11-05 → 2026-10-11 (-25d) | 0% → 60% | 25d → 47.25d | PG-T-PR-LL-LS-DL-20_R, PG-T-CON-EX-FB-60 → PG-T-PR-LL-LS-DL-20_R, PG-T-CON-EX-FB-60, PG-T-PR-LL-LS-DL-20_R SS, PG-T-CON-EX-FB-60 SS |
| PG-T-CON-EX-FB-100 | Markings and Signages | 2026-11-07 → 2026-10-11 (-27d) | 2026-11-17 → 2026-10-22 (-26d) |  | 25d → 47.25d |  |
| BP | **BASKETBALL PLAYGROUND WORKS** |  | 2026-11-17 → 2026-10-27 (-21d) |  |  |  |
| PG-T-CON-EX-BB-70_R | Floor Surface Curing(Remaining) | 2026-07-25 → 2026-07-09 A (-16d) | 2026-08-10 → 2026-07-12 A (-29d) | 0% → 100% | 25d → none | PG-T-CON-EX-BB-70, PG-T-CON-EX-BB-50 → PG-T-CON-EX-BB-70, PG-T-CON-EX-BB-30 |
| PG-T-CON-EX-BB-40 | Tartan flooring | 2026-08-11 → 2026-07-12 A (-30d) | 2026-08-30 → 2026-08-14 A (-16d) | 0% → 100% | 25d → none | PG-T-CON-EX-BB-30, PG-T-EN-LS-SD-AP-40, PG-T-PR-LL-SP-DL-40_R, PG-T-CON-EX-BB-70_R → PG-T-CON-EX-BB-30, PG-T-EN-LS-SD-AP-40, PG-T-CON-EX-BB-70_R, PG-T-PR-LL-SP-DL-40_R FF, PG-T-PR-LL-SP-DL-40_R SS |
| PG-T-CON-EX-BB-50 | Basketball Pole Foundation | 2026-06-25 → 2026-08-06 A (+42d) | 2026-07-23 → 2026-08-14 A (+22d) | 0% → 100% | 25d → none |  |
| PG-T-CON-EX-BB-60 | Basketball Pole Installation & Alignment | 2026-09-19 → 2026-08-20 A (-30d) | 2026-10-10 → 2026-10-05 (-5d) | 0% → 75% | 25d → 43.5d | PG-T-PR-LL-SP-DL-20_R, PG-T-CON-EX-BB-80 → PG-T-PR-LL-SP-DL-20_R, PG-T-CON-EX-BB-80, PG-T-PR-LL-SP-DL-20_R SS, PG-T-CON-EX-BB-80 SS |
| PG-T-CON-EX-BB-80 | Court Line Marking | 2026-08-31 → 2026-08-20 A (-11d) | 2026-09-17 → 2026-09-29 (+12d) | 0% → 85% | 25d → 43.5d | PG-T-CON-EX-BB-40 → PG-T-CON-EX-BB-40, PG-T-CON-EX-BB-50 |
| PG-T-CON-EX-BB-100 | Install Playground Benches | 2026-10-31 → 2026-08-27 A (-65d) | 2026-11-17 → 2026-10-27 (-21d) | 0% → 85% | 25d → 43.5d | PG-T-PR-LL-LS-DL-20_R, PG-T-CON-EX-BB-90 → PG-T-PR-LL-LS-DL-20_R, PG-T-CON-EX-BB-90, PG-T-PR-LL-LS-DL-20_R SS, PG-T-CON-EX-BB-90 FF |
| PG-T-CON-EX-BB-90 | Backboard & Hoop Installation | 2026-10-11 → 2026-10-05 (-6d) | 2026-10-29 → 2026-10-25 (-4d) |  | 25d → 43.5d |  |
| PP | **PADEL PLAYGROUND WORKS** |  | 2026-12-07 → 2026-11-17 (-20d) |  |  |  |
| PG-T-CON-EX-PD-10_R | Excavation For Fence Footing(Remaining) | 2026-06-25 → 2026-08-06 A (+42d) | 2026-07-04 → 2026-08-14 A (+41d) | 0% → 100% | 17d → none |  |
| PG-T-CON-EX-PD-20_R | RC Foundations For Fence(Remaining) | 2026-07-05 → 2026-08-14 A (+40d) | 2026-07-27 → 2026-08-27 A (+31d) | 0% → 100% | 17d → none |  |
| PG-T-CON-EX-PD-30_R | Tartan Flooring Layers(Remaining) | 2026-10-13 → 2026-08-20 A (-54d) | 2026-11-01 → 2026-10-27 (-5d) | 0% → 85% | 8d → 25.3d | PG-T-EN-LS-SD-AP-40, PG-T-PR-LL-SP-DL-40_R SS, PG-T-CON-EX-PD-30, PG-T-CON-EX-PD-50 → PG-T-EN-LS-SD-AP-40, PG-T-PR-LL-SP-DL-40_R SS, PG-T-CON-EX-PD-30, PG-T-CON-EX-PD-50, PG-T-CON-EX-PD-50 FF |
| PG-T-CON-EX-PD-40 | Steel Structure & Fence Supports Installation | 2026-08-08 → 2026-08-20 A (+12d) | 2026-08-30 → 2026-09-30 (+31d) | 0% → 85% | 8d → 25.3d | PG-T-EN-LS-SD-AP-130, PG-T-EN-LS-SD-AP-100, PG-T-PR-LL-LS-DL-30_R, PG-T-PR-LL-SP-DL-30_R, PG-T-PR-LL-SP-DL-30_R FF, PG-T-CON-EX-PD-20_R → PG-T-EN-LS-SD-AP-130, PG-T-EN-LS-SD-AP-100, PG-T-PR-LL-LS-DL-30_R, PG-T-PR-LL-SP-DL-30_R, PG-T-PR-LL-SP-DL-30_R FF, PG-T-CON-EX-PD-20_R, PG-T-PR-LL-LS-DL-30_R SS, PG-T-PR-LL-SP-DL-30_R SS, PG-T-CON-EX-PD-20_R SS |
| PG-T-CON-EX-PD-60 | Chain Link Fence & Gates Installation | 2026-08-31 → 2026-08-20 A (-11d) | 2026-09-20 → 2026-10-03 (+13d) | 0% → 85% | 8d → 25.3d | PG-T-EN-LS-SD-AP-130, PG-T-CON-EX-PD-40 → PG-T-EN-LS-SD-AP-130, PG-T-CON-EX-PD-40, PG-T-CON-EX-PD-40 SS |
| PG-T-CON-EX-PD-80 | Install Playground Benches | 2026-11-21 → 2026-08-27 A (-86d) | 2026-12-07 → 2026-11-17 (-20d) | 0% → 85% | 8d → 25.3d | PG-T-PR-LL-LS-DL-20_R, PG-T-CON-EX-PD-70 → PG-T-PR-LL-LS-DL-20_R, PG-T-CON-EX-PD-70, PG-T-PR-LL-LS-DL-20_R SS, PG-T-CON-EX-PD-70 FF |
| PG-T-CON-EX-PD-50 | Tempered Glass Installation | 2026-09-21 → 2026-10-03 (+12d) | 2026-10-12 → 2026-10-24 (+12d) |  | 8d → 25.3d |  |
| PG-T-CON-EX-PD-70 | Court Accessories Installation | 2026-11-02 → 2026-10-27 (-6d) | 2026-11-19 → 2026-11-15 (-4d) |  | 8d → 25.3d |  |
| GN.SI | **GENERAL SITE WORKS** |  | 2026-12-14 → 2027-01-20 (+37d) |  |  |  |
| 1 | **FENCE WORKS** |  | 2026-08-17 → 2026-10-08 (+52d) |  |  |  |
| PG-T-CON-EX-GN-FN-20 | Concrete Foundations for Fence | 2026-07-13 → 2026-08-13 A (+31d) | 2026-07-26 → 2026-08-20 A (+25d) | 0% → 100% | 5.2d → none |  |
| PG-T-CON-EX-GN-FN-30 | Installation of Galvanized Steel Posts & Framing | 2026-07-27 → 2026-08-20 A (+24d) | 2026-08-03 → 2026-09-27 (+55d) | 0% → 85% | 5.2d → 7.11d |  |
| PG-T-CON-EX-GN-FN-40 | Fixing of Chain Link Mesh, Tensioning & Bracing | 2026-08-04 → 2026-09-20 A (+47d) | 2026-08-10 → 2026-10-01 (+52d) | 0% → 25% | 5.2d → 7.11d |  |
| PG-T-CON-EX-GN-FN-50 | Installation of Gates | 2026-08-11 → 2026-10-01 (+51d) | 2026-08-17 → 2026-10-08 (+52d) |  | 5.2d → 7.11d |  |
| 5 | **MECHANICAL WORK** |  | 2026-08-10 → 2026-10-19 (+70d) |  |  |  |
| 2 | **STORM WATER AND UTILITY WORK** |  | 2026-08-04 → 2026-10-13 (+70d) |  |  |  |
| PG-T-CON-EX-GN-M-20_R | Bedding preparation & level control(Remaining) | 2026-06-25 → 2026-07-12 A (+17d) | 2026-06-30 → 2026-08-27 A (+58d) | 0% → 100% | 6d → none |  |
| PG-T-CON-EX-GN-M-30 | Manhole Installation | 2026-07-01 → 2026-08-20 A (+50d) | 2026-07-06 → 2026-09-27 (+83d) | 0% → 75% | 6d → -29.4d | PG-T-CON-EX-GN-M-20_R → PG-T-CON-EX-GN-M-20_R, PG-T-CON-EX-GN-M-20_R SS |
| PG-T-CON-EX-GN-M-40 | 150 mm uPVC pipe laying & jointing | 2026-07-07 → 2026-09-20 A (+75d) | 2026-07-11 → 2026-09-30 (+81d) | 0% → 25% | 6d → -29.4d |  |
| PG-T-CON-EX-GN-M-50 | Concrete Encasement | 2026-07-12 → 2026-09-30 (+80d) | 2026-07-14 → 2026-10-04 (+82d) |  | 6d → -29.4d |  |
| PG-T-CON-EX-GN-M-60 | Backfilling & Compaction | 2026-07-15 → 2026-10-04 (+81d) | 2026-07-18 → 2026-10-07 (+81d) |  | 6d → -29.4d |  |
| PG-T-CON-EX-GN-M-70 | Surface Reinstatement & Civil Works | 2026-08-01 → 2026-10-08 (+68d) | 2026-08-04 → 2026-10-13 (+70d) |  | 6d → -29.4d |  |
| IR.SY | **IRRIGATION SYSTEM WORKS** |  | 2026-07-30 → 2026-10-08 (+70d) |  |  |  |
| PG-T-CON-EX-GN-M-80_R | Installation of HDPE Irrigation Pipe Network with Gate Valve and Box(Remaining) | 2026-07-14 → 2026-07-12 A (-2d) | 2026-07-18 → 2026-10-07 (+81d) | 0% → 90% | 6d → -29.4d | PG-T-CON-EX-GN-M-60 FF, PG-T-EN-ME-SD-AP-80, PG-T-EN-ME-SD-AP-90, PG-T-CON-EX-GN-M-20_R SS, PG-T-PR-LL-IR-DL-10_R, PG-T-PR-SL-IR-DL-10_R, PG-T-CON-EX-GN-M-80 → PG-T-CON-EX-GN-M-60 FF, PG-T-EN-ME-SD-AP-80, PG-T-EN-ME-SD-AP-90, PG-T-CON-EX-GN-M-20_R SS, PG-T-CON-EX-GN-M-80, PG-T-PR-LL-IR-DL-10_R FF, PG-T-PR-SL-IR-DL-10_R FF |
| PG-T-CON-EX-GN-M-100 | Installation of Bubblers and Sprinklers | 2026-07-26 → 2026-08-20 A (+25d) | 2026-07-30 → 2026-10-08 (+70d) | 0% → 85% | 6d → -29.4d | PG-T-CON-EX-GN-M-90, PG-T-PR-SL-IR-DL-20_R → PG-T-CON-EX-GN-M-90, PG-T-PR-SL-IR-DL-20_R, PG-T-CON-EX-GN-M-90 SS, PG-T-PR-SL-IR-DL-20_R SS |
| PG-T-CON-EX-GN-M-90 | Installation of Irrigation Control System | 2026-07-19 → 2026-08-20 A (+32d) | 2026-07-25 → 2026-10-08 (+75d) | 0% → 85% | 6d → -29.4d | PG-T-CON-EX-GN-M-80_R, PG-T-PR-LL-IR-DL-20_R → PG-T-CON-EX-GN-M-80_R, PG-T-PR-LL-IR-DL-20_R, PG-T-CON-EX-GN-M-80_R SS, PG-T-PR-LL-IR-DL-20_R SS |
| 1 | **FIRE PROTECTION SYSTEM** | 2026-08-05 → 2026-10-13 (+69d) | 2026-08-10 → 2026-10-19 (+70d) |  |  |  |
| PG-T-CON-EX-GN-M-110 | Fire Extinguisher Installation | 2026-08-05 → 2026-10-13 (+69d) | 2026-08-10 → 2026-10-19 (+70d) |  | 6d → -29.4d |  |
| 2 | **ELECTRICAL WORK** |  | 2026-11-07 → 2026-12-30 (+53d) |  |  |  |
| 1 | **POWER, LIGHTING & GROUNDING** |  | 2026-09-27 → 2026-11-19 (+53d) |  |  |  |
| PG-T-CON-EX-GN-E-20_R | Foundation Work for Site Lighting Poles(Remaining) | 2026-06-25 → 2026-08-20 A (+56d) | 2026-07-19 → 2026-10-01 (+74d) | 0% → 75% | 25d → -13.75d |  |
| PG-T-CON-EX-GN-E-30 | Lightning Protection System (LPS) | 2026-08-11 → 2026-08-20 A (+9d) | 2026-08-19 → 2026-10-21 (+63d) | 0% → 85% | 6d → -29.4d | PG-T-CON-EX-GN-E-20_R, PG-T-PR-LL-EL-DL-50_R, PG-T-CON-EX-GN-M-110, PG-T-CON-EX-GN-M-70 → PG-T-CON-EX-GN-E-20_R, PG-T-PR-LL-EL-DL-50_R, PG-T-CON-EX-GN-M-110, PG-T-CON-EX-GN-M-70, PG-T-CON-EX-GN-E-20_R SS, PG-T-PR-LL-EL-DL-50_R SS, PG-T-CON-EX-GN-M-110 FF, PG-T-CON-EX-GN-M-70 FF |
| PG-T-CON-EX-GN-E-40 | KWH Meter and MDB Installation | 2026-08-25 → 2026-09-17 A (+23d) | 2026-08-30 → 2026-10-26 (+57d) | 0% → 10% | 2d → -29.4d |  |
| PG-T-CON-EX-GN-E-50 | Power Panels and Distribution Boards | 2026-08-31 → 2026-09-17 A (+17d) | 2026-09-07 → 2026-11-02 (+56d) | 0% → 10% | 2d → -29.4d |  |
| PG-T-CON-EX-GN-E-60 | Site Lighting Poles Installation | 2026-09-08 → 2026-09-17 A (+9d) | 2026-09-14 → 2026-11-08 (+55d) | 0% → 20% | 2d → -29.4d |  |
| PG-T-CON-EX-GN-E-70 | Wiring Works | 2026-09-15 → 2026-11-08 (+54d) | 2026-09-19 → 2026-11-12 (+54d) |  | 2d → -29.4d |  |
| PG-T-CON-EX-GN-E-80 | Lighting Fixtures with outlets Installation | 2026-09-20 → 2026-11-12 (+53d) | 2026-09-27 → 2026-11-19 (+53d) |  | 2d → -29.4d |  |
| 2 | **ELV SYSTEMS (TELECOM, DATA, AV & CCTV)** | 2026-09-28 → 2026-09-22 (-6d) | 2026-10-26 → 2026-12-16 (+51d) |  |  |  |
| PG-T-CON-EX-GN-E-100 | Fiber Optic Pull Box Installation | 2026-10-01 → 2026-09-22 A (-9d) | 2026-10-04 → 2026-11-26 (+53d) | 0% → 10% | 2d → -25.25d |  |
| PG-T-CON-EX-GN-E-110 | Telephone and Data Outlet Installation | 2026-10-05 → 2026-09-22 A (-13d) | 2026-10-08 → 2026-11-30 (+53d) | 0% → 10% | 2d → -25.25d |  |
| PG-T-CON-EX-GN-E-120 | Telecom Equipment and AV HDMI Installation | 2026-10-10 → 2026-09-22 A (-18d) | 2026-10-13 → 2026-12-05 (+53d) | 0% → 10% | 2d → -25.25d |  |
| PG-T-CON-EX-GN-E-130 | CCTV Rack / Cabinet Installation | 2026-10-14 → 2026-09-22 A (-22d) | 2026-10-18 → 2026-12-08 (+51d) | 0% → 10% | 2d → -25.25d |  |
| PG-T-CON-EX-GN-E-140 | NVR and CCTV Monitor Installation | 2026-10-19 → 2026-09-22 A (-27d) | 2026-10-22 → 2026-12-13 (+52d) | 0% → 10% | 2d → -25.25d |  |
| PG-T-CON-EX-GN-E-150 | IP Camera Installation | 2026-10-24 → 2026-09-22 A (-32d) | 2026-10-26 → 2026-12-16 (+51d) | 0% → 10% | 2d → -25.25d |  |

| ID | Task | Start | Finish | Complete | Total float | Predecessors |
| --- | --- | --- | --- | --- | --- | --- |
| PG-T-CON-EX-GN-E-90 | ELV Containment & Cabling Works | 2026-09-28 → 2026-09-22 A (-6d) | 2026-09-30 → 2026-11-23 (+54d) | 0% → 10% | 2d → -29.4d |  |
| 3 | **FIRE ALARM SYSTEM** | 2026-10-01 → 2026-11-23 (+53d) | 2026-11-07 → 2026-12-30 (+53d) |  |  |  |
| PG-T-CON-EX-GN-E-160 | Fire Alarm Containment & Cabling | 2026-10-01 → 2026-11-23 (+53d) | 2026-10-10 → 2026-12-02 (+53d) |  | 6d → -29.4d |  |
| PG-T-CON-EX-GN-E-170 | Fire Alarm Control Panel (FACP) Installation | 2026-10-11 → 2026-12-02 (+52d) | 2026-10-19 → 2026-12-12 (+54d) |  | 6d → -29.4d |  |
| PG-T-CON-EX-GN-E-180 | Initiating Devices (Detectors & Manual Pull Station) | 2026-10-20 → 2026-12-12 (+53d) | 2026-10-28 → 2026-12-21 (+54d) |  | 6d → -29.4d |  |
| PG-T-CON-EX-GN-E-190 | Notification Appliances (Strobe with Sounder) | 2026-10-29 → 2026-12-21 (+53d) | 2026-11-07 → 2026-12-30 (+53d) |  | 6d → -29.4d |  |
| 3 | **PARKING WORK** |  | 2026-11-11 → 2026-12-30 (+49d) |  |  |  |
| PG-T-CON-EX-GN-PR-20_R | Interlock tiles(Remaining) | 2026-10-27 → 2026-07-12 A (-107d) | 2026-11-03 → 2026-08-27 A (-68d) | 0% → 100% | 2d → none | PG-T-CON-EX-GN-PR-10 FF, PG-T-CON-B-AR-RF-30 FF, PG-T-CON-B-AR-WF-60 FF, PG-T-CON-B-AR-GF-80 FF, PG-T-EN-LS-SD-AP-20, PG-T-PR-SL-LS-DL-20, PG-T-CON-EX-GN-PR-20 → PG-T-CON-EX-GN-PR-10 FF, PG-T-CON-B-AR-RF-30 FF, PG-T-CON-B-AR-WF-60 FF, PG-T-CON-B-AR-GF-80 FF, PG-T-EN-LS-SD-AP-20, PG-T-PR-SL-LS-DL-20, PG-T-CON-EX-GN-PR-20, PG-T-CON-EX-GN-PR-10 SS, PG-T-CON-B-AR-GF-80 SS, PG-T-PR-SL-AR-DL-30, PG-T-EN-AR-SD-AP-30 |
| PG-T-CON-EX-GN-PR-10 | Installlation of Parking Accessories | 2026-10-27 → 2026-08-20 A (-68d) | 2026-11-03 → 2026-12-17 (+44d) | 0% → 85% | 2d → -25.25d | PG-T-CON-EX-GN-E-150 → PG-T-CON-EX-GN-E-150, PG-T-CON-EX-GN-E-150 FF |
| PG-T-CON-EX-GN-PR-30 | Marking & Signages | 2026-11-04 → 2026-12-22 (+48d) | 2026-11-11 → 2026-12-30 (+49d) |  | 2d → -29.4d | PG-T-CON-EX-GN-PR-20_R, PG-T-EN-LS-SD-AP-80, PG-T-PR-SL-LS-DL-50, PG-T-PR-SL-LS-DL-60_R, PG-T-CON-EX-GN-E-190 FF → PG-T-CON-EX-GN-PR-20_R, PG-T-EN-LS-SD-AP-80, PG-T-PR-SL-LS-DL-50, PG-T-PR-SL-LS-DL-60_R, PG-T-CON-EX-GN-E-190 FF, PG-T-CON-B-AR-RF-30, PG-T-CON-B-AR-WF-60 |
| 4 | **SERVICE CONNECTION** |  | 2026-12-14 → 2027-01-20 (+37d) |  |  |  |
| PG-T-CON-EX-GN-SC-10_R | Excavation & Trench Preparation(Remaining) | 2026-11-04 → 2026-07-12 A (-115d) | 2026-11-11 → 2026-07-23 A (-111d) | 0% → 100% | 2d → none | PG-T-CON-EX-GN-PR-30 FF, PG-T-CON-EX-GN-SC-10 → PG-T-CON-EX-GN-SC-10, PG-T-EN-LS-SD-AP-80 |
| PG-T-CON-EX-GN-SC-20 | HDPE Pipe Laying & Valve Installation | 2026-11-12 → 2026-08-14 A (-90d) | 2026-11-23 → 2026-12-30 (+37d) | 0% → 85% | 2d → -29.4d | PG-T-CON-EX-GN-SC-10_R → PG-T-CON-EX-GN-SC-10_R, PG-T-CON-EX-GN-PR-30 FF |
| PG-T-CON-EX-GN-SC-30 | Connection to City Network | 2026-11-24 → 2026-12-30 (+36d) | 2026-12-05 → 2027-01-11 (+37d) |  | 2d → -29.4d |  |
| PG-T-CON-EX-GN-SC-40 | Backfilling | 2026-12-06 → 2027-01-11 (+36d) | 2026-12-14 → 2027-01-20 (+37d) |  | 2d → -29.4d |  |
| LS | **LANDSCAPING WORKS** |  | 2026-11-22 → 2026-12-02 (+10d) |  |  |  |
| HSP | **HARDSCAPE WORK** |  | 2026-11-22 → 2026-12-02 (+10d) |  |  |  |
| PG-T-CON-EX-LS-HS-10_R | Curbstone Installation(Remaining) | 2026-09-17 → 2026-07-12 A (-67d) | 2026-09-27 → 2026-08-27 A (-31d) | 0% → 100% | 5.2d → none | PG-T-CON-EX-GN-FN-50 FF, PG-T-CON-EX-TW-IR-40 FF, PG-T-CON-EX-TW-ST-70 FF, PG-T-EN-LS-SD-AP-10, PG-T-PR-SL-LS-DL-40, PG-T-CON-EX-LS-HS-10 → PG-T-CON-EX-GN-FN-50 FF, PG-T-CON-EX-TW-IR-40 FF, PG-T-CON-EX-TW-ST-70 FF, PG-T-EN-LS-SD-AP-10, PG-T-PR-SL-LS-DL-40, PG-T-CON-EX-LS-HS-10, PG-T-EN-ST-SD-AP-20, PG-T-EN-ME-SD-AP-40, PG-T-CON-EX-TW-ST-30_R |
| PG-T-CON-EX-LS-HS-40_R | Bike Path and Walking Path Construction(Remaining) | 2026-10-21 → 2026-07-23 A (-90d) | 2026-10-29 → 2026-08-27 A (-63d) | 0% → 100% | 5.2d → none | PG-T-CON-EX-LS-SS-10 FF, PG-T-EN-LS-SD-AP-50, PG-T-EN-LS-SD-AP-60, PG-T-CON-EX-LS-HS-30_R, PG-T-PR-LL-LS-DL-10_R, PG-T-CON-EX-LS-HS-40 → PG-T-CON-EX-LS-SS-10 FF, PG-T-EN-LS-SD-AP-50, PG-T-EN-LS-SD-AP-60, PG-T-CON-EX-LS-HS-40, PG-T-CON-EX-LS-HS-30_R FF, PG-T-PR-LL-LS-DL-10_R FF, PG-T-CON-EX-LS-HS-30_R SS, PG-T-PR-LL-LS-DL-10_R SS, PG-T-EN-LS-SD-AP-70 |
| PG-T-CON-EX-LS-HS-30_R | Stamped Concrete Floor(Remaining) | 2026-10-10 → 2026-07-30 A (-72d) | 2026-10-20 → 2026-11-07 (+18d) | 0% → 90% | 5.2d → 7.46d | PG-T-EN-LS-SD-AP-30, PG-T-CON-EX-LS-HS-20_R, PG-T-CON-EX-LS-HS-30 → PG-T-EN-LS-SD-AP-30, PG-T-CON-EX-LS-HS-30, PG-T-CON-EX-LS-HS-20_R FF |
| PG-T-CON-EX-LS-HS-50_R | Install Recycled Precast Concrete Seats(Remaining) | 2026-10-31 → 2026-07-30 A (-93d) | 2026-11-10 → 2026-11-23 (+13d) | 0% → 65% | 5.2d → -3.34d | PG-T-CON-EX-LS-HS-40_R, PG-T-PR-LL-LS-DL-20_R SS, PG-T-CON-EX-LS-HS-50 → PG-T-PR-LL-LS-DL-20_R SS, PG-T-CON-EX-LS-HS-50, PG-T-CON-EX-LS-HS-40_R SS |
| PG-T-CON-EX-LS-HS-20_R | Interlock Tiles Grey Scale with Black Marble Chips(Remaining) | 2026-09-28 → 2026-08-27 A (-32d) | 2026-10-08 → 2026-11-07 (+30d) | 0% → 85% | 5.2d → -3.34d |  |
| PG-T-CON-EX-LS-HS-60 | Install Recycled Precast Concrete Trash Bins | 2026-11-11 → 2026-09-23 A (-49d) | 2026-11-22 → 2026-12-02 (+10d) | 0% → 25% | 5.2d → -3.34d | PG-T-CON-EX-LS-HS-50_R → PG-T-CON-EX-LS-HS-50_R, PG-T-CON-EX-LS-SS-10 |
| SSP | **SOFTSCAPE WORK** |  | 2026-11-22 → 2026-12-02 (+10d) |  |  |  |
| PG-T-CON-EX-LS-SS-20_R | Lawn Area Preparation & Planting / Turfing(Remaining) | 2026-11-16 → 2026-07-12 A (-127d) | 2026-11-22 → 2026-12-02 (+10d) | 0% → 85% | 5.2d → -3.34d | PG-T-CON-EX-LS-SS-10 FF, PG-T-CON-EX-LS-HS-60 FF, PG-T-EN-LS-SD-AP-70, PG-T-PR-SL-LS-DL-80_R, PG-T-CON-EX-LS-SS-20 → PG-T-CON-EX-LS-SS-10 FF, PG-T-CON-EX-LS-HS-60 FF, PG-T-EN-LS-SD-AP-70, PG-T-CON-EX-LS-SS-20, PG-T-PR-SL-LS-DL-80_R FF |
| PG-T-CON-EX-LS-SS-10 | Planting Trees | 2026-10-10 → 2026-09-22 A (-18d) | 2026-10-22 → 2026-11-19 (+28d) | 0% → 10% | 11.2d → -3.34d | PG-T-EN-LS-SD-AP-70, PG-T-PR-SL-LS-DL-70_R, PG-T-CON-EX-LS-HS-20_R → PG-T-EN-LS-SD-AP-70, PG-T-PR-SL-LS-DL-70_R, PG-T-CON-EX-LS-HS-20_R, PG-T-CON-EX-GN-FN-50, PG-T-CON-EX-TW-IR-40, PG-T-CON-EX-TW-ST-70, PG-T-CON-EX-TW-ST-60 |
| W.T | **TANK WORKS** |  | 2026-09-27 → 2026-11-04 (+38d) |  |  |  |
| 1 | **SEPTIC TANK** |  | 2026-09-03 → 2026-10-29 (+56d) |  |  |  |
| PG-T-CON-EX-TW-ST-30_R | RCC Foundation(Remaining) | 2026-06-25 → 2026-07-12 A (+17d) | 2026-07-06 → 2026-08-27 A (+52d) | 0% → 100% | 19.2d → none |  |
| PG-T-CON-EX-TW-ST-40 | RCC Wall | 2026-07-07 → 2026-08-14 A (+38d) | 2026-07-16 → 2026-10-05 (+81d) |  | 19.2d → -3.34d | PG-T-CON-EX-TW-ST-30_R → PG-T-CON-EX-TW-ST-30_R SS |
| PG-T-CON-EX-TW-ST-50 | RCC Slab | 2026-07-18 → 2026-08-20 A (+33d) | 2026-08-01 → 2026-10-20 (+80d) |  | 19.2d → -3.34d | PG-T-CON-EX-TW-ST-40 → PG-T-CON-EX-TW-ST-40, PG-T-CON-EX-TW-ST-40 SS |
| PG-T-CON-EX-TW-ST-70 | Backfilling | 2026-08-27 → 2026-08-20 A (-7d) | 2026-09-03 → 2026-08-24 A (-10d) | 0% → 100% | 5.2d → none | PG-T-CON-EX-TW-ST-60 → PG-T-CON-EX-TW-ST-60, PG-T-CON-EX-TW-ST-30_R |
| PG-T-CON-EX-TW-ST-60 | Finishing Work | 2026-08-18 → 2026-10-21 (+64d) | 2026-08-26 → 2026-10-29 (+64d) |  | 5.2d → -3.34d |  |
| 2 | **WATER STORAGE TANK** |  | 2026-09-27 → 2026-11-04 (+38d) |  |  |  |
| PG-T-CON-EX-TW-IR-10_R | Excavation(Remaining) | 2026-08-29 → 2026-07-08 A (-52d) | 2026-09-03 → 2026-07-09 A (-56d) | 0% → 100% | 5.2d → none | PG-T-CON-EX-TW-ST-70 FF, PG-T-EN-ST-SD-AP-90, PG-T-CON-EX-TW-IR-10 → PG-T-EN-ST-SD-AP-90, PG-T-CON-EX-TW-IR-10, PG-T-CON-EX-TW-ST-20 |
| PG-T-CON-EX-TW-IR-20_R | RCC Foundation(Remaining) | 2026-09-05 → 2026-07-16 A (-51d) | 2026-09-13 → 2026-08-27 A (-17d) | 0% → 100% | 5.2d → none | PG-T-EN-ST-SD-AP-100, PG-T-CON-EX-TW-IR-10_R, PG-T-CON-EX-TW-IR-20 → PG-T-EN-ST-SD-AP-100, PG-T-CON-EX-TW-IR-10_R, PG-T-CON-EX-TW-IR-20, PG-T-CON-EX-TW-ST-70 FF, PG-T-CON-EX-TW-ST-30_R |
| PG-T-CON-EX-TW-IR-30 | Backfilling | 2026-09-14 → 2026-08-14 A (-31d) | 2026-09-20 → 2026-08-25 A (-26d) | 0% → 100% | 5.2d → none | PG-T-CON-EX-TW-IR-20_R → PG-T-CON-EX-TW-IR-20_R SS |
| PG-T-CON-EX-TW-IR-40 | GRP Water Tank Installation | 2026-09-21 → 2026-10-31 (+40d) | 2026-09-27 → 2026-11-04 (+38d) |  | 5.2d → -3.34d | PG-T-CON-EX-TW-IR-30, PG-T-EN-ME-SD-AP-40, PG-T-PR-LL-PB-DL-20_R → PG-T-CON-EX-TW-IR-30, PG-T-EN-ME-SD-AP-40, PG-T-PR-LL-PB-DL-20_R, PG-T-CON-EX-TW-ST-70 |
| AD | **AIR DOME CONSTRUCTION** |  | 2026-12-03 → 2027-01-14 (+42d) |  |  |  |
| 1 | **CIVIL WORK** |  | 2026-09-14 → 2026-10-27 (+43d) |  |  |  |
| PG-T-CON-EX-AD-CL-10_R | Excavation For Footing(Remaining) | 2026-07-05 → 2026-07-08 A (+3d) | 2026-07-12 → 2026-07-10 A (-2d) | 0% → 100% | 9d → none | PG-T-EN-ST-SD-AP-50 FF, PG-T-CON-EX-FB-10, PG-T-CON-EX-AD-CL-10 → PG-T-CON-EX-FB-10, PG-T-CON-EX-AD-CL-10, PG-T-EN-ST-SD-AP-50 SS |
| PG-T-CON-EX-AD-CL-20 | Anti-Termite Treatment | 2026-07-13 → 2026-07-10 A (-3d) | 2026-07-13 → 2026-07-10 A (-3d) | 0% → 100% | 9d → none |  |
| PG-T-CON-EX-AD-CL-30 | PCC / Blinding Concrete | 2026-07-25 → 2026-07-22 A (-3d) | 2026-07-27 → 2026-07-23 A (-4d) | 0% → 100% | 0d → none |  |
| PG-T-CON-EX-AD-CL-40 | RCC Foundation Works | 2026-07-28 → 2026-07-23 A (-5d) | 2026-08-06 → 2026-08-13 A (+7d) | 0% → 100% | 0d → none |  |
| PG-T-CON-EX-AD-CL-50 | Backfilling with Compaction | 2026-08-08 → 2026-08-07 A (-1d) | 2026-08-16 → 2026-08-14 A (-2d) | 0% → 100% | 0d → none | PG-T-CON-EX-AD-CL-40, PG-T-PR-SL-LS-DL-10 → PG-T-PR-SL-LS-DL-10, PG-T-CON-EX-AD-CL-40 SS |
| PG-T-CON-EX-AD-CL-60 | Installation of Anchorage System | 2026-08-17 → 2026-08-27 A (+10d) | 2026-08-25 → 2026-09-23 A (+29d) | 0% → 100% | 0d → none |  |
| PG-T-CON-EX-AD-CL-70 | Installation of Steel Cable Structural System | 2026-08-26 → 2026-10-07 (+42d) | 2026-09-05 → 2026-10-18 (+43d) |  | 0d → -35.4d |  |
| PG-T-CON-EX-AD-CL-80 | Installation of Membrane System | 2026-09-06 → 2026-10-18 (+42d) | 2026-09-14 → 2026-10-27 (+43d) |  | 0d → -35.4d |  |
| 2 | **ARCHITECTURAL WORK** | 2026-11-05 → 2026-12-16 (+41d) | 2026-12-03 → 2027-01-14 (+42d) |  |  |  |
| PG-T-CON-EX-AD-AR-10 | Installation of Thermal Insulation System | 2026-11-05 → 2026-12-16 (+41d) | 2026-11-12 → 2026-12-24 (+42d) |  | 0d → -35.4d |  |
| PG-T-CON-EX-AD-AR-40 | Final Fixing of Accessories & Finishes | 2026-11-14 → 2026-12-24 (+40d) | 2026-11-21 → 2027-01-02 (+42d) |  | 0d → -35.4d |  |
| PG-T-CON-EX-AD-AR-20 | Installation of Doors & Access Systems | 2026-11-22 → 2027-01-02 (+41d) | 2026-11-28 → 2027-01-09 (+42d) |  | 0d → -35.4d |  |
| PG-T-CON-EX-AD-AR-30 | Installation of Logo | 2026-11-29 → 2027-01-09 (+41d) | 2026-12-03 → 2027-01-14 (+42d) |  | 0d → -35.4d |  |
| 3 | **MECHANICAL WORK** | 2026-09-15 → 2026-10-27 (+42d) | 2026-10-12 → 2026-11-23 (+42d) |  |  |  |
| PG-T-CON-EX-AD-ME-10 | Installation of Main Air Package Units | 2026-09-15 → 2026-10-27 (+42d) | 2026-09-20 → 2026-11-02 (+43d) |  | 0d → -35.4d | PG-T-PR-LL-SP-DL-50, PG-T-EN-ME-SD-AP-100, PG-T-CON-EX-AD-CL-80 → PG-T-PR-LL-SP-DL-50, PG-T-EN-ME-SD-AP-100, PG-T-CON-EX-AD-CL-80, PG-T-PR-LL-SP-DL-50 SS, PG-T-CON-EX-AD-CL-80 FF |
| PG-T-CON-EX-AD-ME-20 | Installation of Backup Air Package Unit | 2026-09-21 → 2026-11-02 (+42d) | 2026-09-27 → 2026-11-08 (+42d) |  | 0d → -35.4d |  |
| PG-T-CON-EX-AD-ME-30 | Installation of Complete HVAC System | 2026-10-06 → 2026-11-16 (+41d) | 2026-10-12 → 2026-11-23 (+42d) |  | 1d → -34.4d |  |
| 4 | **ELECTRICAL WORK** | 2026-09-28 → 2026-11-08 (+41d) | 2026-11-04 → 2026-12-16 (+42d) |  |  |  |
| PG-T-CON-EX-AD-EL-10 | Installation of Electrical Boxes & MDBs | 2026-09-28 → 2026-11-08 (+41d) | 2026-10-05 → 2026-11-16 (+42d) |  | 0d → -35.4d |  |
| PG-T-CON-EX-AD-EL-20 | Installation of Lighting System | 2026-10-06 → 2026-11-16 (+41d) | 2026-10-13 → 2026-11-24 (+42d) |  | 0d → -35.4d |  |
| PG-T-CON-EX-AD-EL-30 | Electrical Connections to Main Power Source (Excluding kWh Meter) | 2026-10-14 → 2026-11-24 (+41d) | 2026-10-19 → 2026-11-30 (+42d) |  | 0d → -35.4d |  |
| PG-T-CON-EX-AD-EL-40 | Installation of Backup Generator | 2026-10-20 → 2026-11-30 (+41d) | 2026-10-26 → 2026-12-07 (+42d) |  | 0d → -35.4d |  |
| PG-T-CON-EX-AD-EL-50 | Installation of Smart Dome System | 2026-10-27 → 2026-12-07 (+41d) | 2026-11-04 → 2026-12-16 (+42d) |  | 0d → -35.4d |  |
| B | **TOILET BUILDING WORKS** |  | 2026-10-28 → 2026-10-20 (-8d) |  |  |  |
| CVL | **CIVIL WORK** |  | 2026-10-26 → 2026-10-19 (-7d) |  |  |  |
| ST | **STRUCTURAL WORK** |  | 2026-08-01 → 2026-08-12 (+11d) |  |  |  |
| PG-T-CON-B-STR-50 | Autoclaved aerated panel (walls) | 2026-07-07 A | 2026-07-16 → 2026-07-09 A (-7d) | 0% → 100% | 0d → none |  |
| PG-T-CON-B-STR-60 | Autoclaved aerated panel (ceiling) | 2026-07-18 → 2026-07-09 A (-9d) | 2026-07-27 → 2026-07-31 A (+4d) | 0% → 100% | 0d → none |  |
| PG-T-CON-B-STR-70 | Autoclaved aerated panel (parapet) | 2026-07-28 → 2026-07-11 A (-17d) | 2026-08-01 → 2026-08-12 A (+11d) | 0% → 100% | 0d → none | PG-T-CON-B-STR-60, PG-T-PR-LL-CO-DL-10_R → PG-T-PR-LL-CO-DL-10_R, PG-T-CON-B-STR-60 SS |
| AR | **ARCHITECTURAL WORK** | 2026-08-02 → 2026-08-01 (-1d) | 2026-10-26 → 2026-10-19 (-7d) |  |  |  |

| ID | Task | Start | Finish | Complete | Total float | Predecessors |
| --- | --- | --- | --- | --- | --- | --- |
| 1 | **GENERAL FINISHES** | 2026-08-02 → 2026-08-01 (-1d) | 2026-10-21 → 2026-09-07 (-44d) |  |  |  |
| PG-T-CON-B-AR-GF-10 | Block Works | 2026-08-02 → 2026-08-01 A (-1d) | 2026-08-08 → 2026-08-06 A (-2d) | 0% → 100% | 0d → none | PG-T-CON-B-STR-70, PG-T-EN-AR-SD-AP-10, PG-T-EN-AR-SD-AP-40, PG-T-PR-SL-CO-DL-40 → PG-T-EN-AR-SD-AP-10, PG-T-EN-AR-SD-AP-40, PG-T-PR-SL-CO-DL-40, PG-T-CON-B-STR-70 SS |
| PG-T-CON-B-AR-GF-20 | Plaster | 2026-08-18 → 2026-08-06 A (-12d) | 2026-08-25 → 2026-08-07 A (-18d) | 0% → 100% | 0d → none | PG-T-CON-B-AR-GF-10, PG-T-CON-B-GF-EL-10, PG-T-PR-SL-AR-DL-40 → PG-T-CON-B-AR-GF-10, PG-T-CON-B-GF-EL-10, PG-T-PR-SL-AR-DL-40, PG-T-PR-SL-EL-DL-10 |
| PG-T-CON-B-AR-GF-30 | False Ceiling Installation & Finishing | 2026-08-26 → 2026-08-20 A (-6d) | 2026-09-03 → 2026-09-07 A (+4d) | 0% → 100% | 0d → none | PG-T-CON-B-AR-GF-20, PG-T-CON-B-GF-DR-20_R, PG-T-EN-AR-SD-AP-60, PG-T-PR-SL-AR-DL-90 → PG-T-CON-B-AR-GF-20, PG-T-CON-B-GF-DR-20_R, PG-T-EN-AR-SD-AP-60, PG-T-PR-SL-AR-DL-90, PG-T-PR-SL-EL-DL-10_R, PG-T-PR-SL-EL-DL-10_R FF |
| PG-T-CON-B-AR-GF-40 | Wall Paint | 2026-09-19 → 2026-08-20 A (-30d) | 2026-09-30 → 2026-09-07 A (-23d) | 0% → 100% | 0d → none | PG-T-CON-B-AR-GF-30, PG-T-PR-SL-AR-DL-50, PG-T-CON-B-GF-EL-20 → PG-T-CON-B-AR-GF-30, PG-T-PR-SL-AR-DL-50, PG-T-CON-B-GF-EL-20, PG-T-CON-B-AR-GF-30 SS, PG-T-CON-B-GF-EL-20 SS |
| PG-T-CON-B-AR-GF-50 | Epoxy Flooring | 2026-10-01 → 2026-08-20 A (-42d) | 2026-10-08 → 2026-09-07 A (-31d) | 0% → 100% | 4d → none | PG-T-CON-B-AR-GF-40, PG-T-EN-AR-SD-AP-50, PG-T-PR-SL-AR-DL-30 → PG-T-CON-B-AR-GF-40, PG-T-EN-AR-SD-AP-50, PG-T-PR-SL-AR-DL-30, PG-T-CON-B-AR-GF-40 SS |
| PG-T-CON-B-AR-GF-80 | Facade Finishing Work | 2026-10-10 → 2026-08-20 A (-51d) | 2026-10-19 → 2026-09-07 A (-42d) | 0% → 100% | 4d → none | PG-T-EN-AR-SD-AP-90, PG-T-EN-AR-SD-AP-100, PG-T-PR-LL-MT-DL-20_R, PG-T-PR-SL-AR-DL-60, PG-T-CON-B-AR-GF-50 → PG-T-EN-AR-SD-AP-90, PG-T-EN-AR-SD-AP-100, PG-T-PR-LL-MT-DL-20_R, PG-T-PR-SL-AR-DL-60, PG-T-CON-B-AR-GF-50, PG-T-PR-LL-MT-DL-20_R FF, PG-T-CON-B-AR-GF-50 SS |
| PG-T-CON-B-AR-GF-60 | Install Doors & Windows | 2026-10-10 → 2026-08-27 A (-44d) | 2026-10-13 → 2026-09-07 A (-36d) | 0% → 100% | 9d → none | PG-T-CON-B-AR-GF-50, PG-T-EN-AR-SD-AP-30, PG-T-EN-AR-SD-AP-80, PG-T-EN-AR-SD-AP-40, PG-T-PR-LL-MT-DL-10_R → PG-T-CON-B-AR-GF-50, PG-T-EN-AR-SD-AP-30, PG-T-EN-AR-SD-AP-80, PG-T-EN-AR-SD-AP-40, PG-T-PR-LL-MT-DL-10_R, PG-T-CON-B-AR-GF-50 SS, PG-T-PR-LL-MT-DL-10_R SS |
| PG-T-CON-B-AR-GF-70 | Lockers and Furniture Installation | 2026-10-20 → 2026-08-27 A (-54d) | 2026-10-21 → 2026-09-07 A (-44d) | 0% → 100% | 4d → none | PG-T-CON-B-AR-GF-60, PG-T-CON-B-AR-GF-80 → PG-T-CON-B-AR-GF-60, PG-T-CON-B-AR-GF-80, PG-T-CON-B-AR-GF-60 SS, PG-T-CON-B-AR-GF-80 SS |
| 2 | **WET AREA FINISHES** | 2026-08-26 → 2026-08-06 (-20d) | 2026-10-13 → 2026-10-17 (+4d) |  |  |  |
| PG-T-CON-B-AR-WF-20 | Wall Tiles and Partition Work | 2026-10-01 → 2026-08-06 A (-56d) | 2026-10-04 → 2026-08-14 A (-51d) | 0% → 100% | 0d → none | PG-T-CON-B-AR-WF-10, PG-T-CON-B-AR-GF-40, PG-T-EN-AR-SD-AP-70, PG-T-EN-AR-SD-AP-30, PG-T-PR-SL-AR-DL-10, PG-T-PR-SL-AR-DL-70, PG-T-PR-SL-AR-DL-80, PG-T-CON-B-GF-WS-20 → PG-T-EN-AR-SD-AP-70, PG-T-EN-AR-SD-AP-30, PG-T-PR-SL-AR-DL-10, PG-T-PR-SL-AR-DL-70, PG-T-PR-SL-AR-DL-80, PG-T-CON-B-GF-WS-20, PG-T-CON-B-AR-WF-10 FF, PG-T-CON-B-AR-GF-40 FF, PG-T-EN-AR-SD-AP-60, PG-T-PR-SL-AR-DL-50 |
| PG-T-CON-B-AR-WF-30 | Waterproofing on Floor | 2026-10-05 → 2026-08-14 A (-52d) | 2026-10-06 → 2026-09-10 A (-26d) | 0% → 100% | 0d → none | PG-T-CON-B-AR-WF-20, PG-T-EN-AR-SD-AP-50, PG-T-PR-SL-CO-DL-30, PG-T-PR-SL-AR-DL-110 → PG-T-EN-AR-SD-AP-50, PG-T-PR-SL-CO-DL-30, PG-T-PR-SL-AR-DL-110, PG-T-CON-B-AR-WF-20 SS |
| PG-T-CON-B-AR-WF-40 | Floor Tiles Works | 2026-10-07 → 2026-08-14 A (-54d) | 2026-10-10 → 2026-09-10 A (-30d) | 0% → 100% | 13d → none | PG-T-CON-B-AR-WF-30, PG-T-PR-SL-AR-DL-20 → PG-T-CON-B-AR-WF-30, PG-T-PR-SL-AR-DL-20, PG-T-CON-B-AR-WF-30 SS |
| PG-T-CON-B-AR-WF-10 | False Ceiling Installation & Finishing | 2026-08-26 → 2026-08-20 A (-6d) | 2026-08-30 → 2026-09-10 A (+11d) | 0% → 100% | 0d → none |  |
| PG-T-CON-B-AR-WF-50 | Toliet accessories Installation Works | 2026-10-11 → 2026-08-20 A (-52d) | 2026-10-13 → 2026-09-10 A (-33d) | 0% → 100% | 13d → none | PG-T-CON-B-AR-WF-40, PG-T-EN-AR-SD-AP-70, PG-T-PR-SL-AR-DL-100 → PG-T-CON-B-AR-WF-40, PG-T-EN-AR-SD-AP-70, PG-T-PR-SL-AR-DL-100, PG-T-CON-B-AR-WF-10, PG-T-CON-B-AR-GF-40, PG-T-CON-B-AR-WF-40 SS, PG-T-CON-B-AR-WF-10 SS, PG-T-CON-B-AR-GF-40 SS |
| PG-T-CON-B-AR-WF-60 | Install Doors | 2026-10-11 → 2026-09-23 A (-18d) | 2026-10-12 → 2026-10-17 (+5d) | 0% → 25% | 14d → 27.8d |  |
| 3 | **ROOF FINISHES** | 2026-10-07 → 2026-08-14 (-54d) | 2026-10-26 → 2026-10-19 (-7d) |  |  |  |
| PG-T-CON-B-AR-RF-10 | Waterproofing on Floor | 2026-10-07 → 2026-08-14 A (-54d) | 2026-10-14 → 2026-09-12 A (-32d) | 0% → 100% | 0d → none | PG-T-CON-B-AR-WF-30, PG-T-EN-AR-SD-AP-20, PG-T-PR-SL-CO-DL-30, PG-T-PR-SL-AR-DL-110 → PG-T-CON-B-AR-WF-30, PG-T-EN-AR-SD-AP-20, PG-T-PR-SL-CO-DL-30, PG-T-PR-SL-AR-DL-110, PG-T-CON-B-AR-WF-30 SS |
| PG-T-CON-B-AR-RF-20 | Epoxy Flooring and Finishes | 2026-10-15 → 2026-08-20 A (-56d) | 2026-10-22 → 2026-09-12 A (-40d) | 0% → 100% | 0d → none | PG-T-CON-B-AR-RF-10, PG-T-PR-SL-AR-DL-30 → PG-T-CON-B-AR-RF-10, PG-T-PR-SL-AR-DL-30, PG-T-CON-B-AR-RF-10 SS |
| PG-T-CON-B-AR-RF-30 | Steel ladder and Steel roof scupper Installation | 2026-10-24 → 2026-09-19 A (-35d) | 2026-10-26 → 2026-10-19 (-7d) | 0% → 35% | 0d → 25.6d |  |
| MEP | **MEP WORK** |  | 2026-10-28 → 2026-10-20 (-8d) |  |  |  |
| MEC | **MECANICAL WORKS** |  | 2026-10-28 → 2026-10-20 (-8d) |  |  |  |
| FF | **FIRE FIGHTING SYSTEM** | 2026-10-27 → 2026-09-23 (-34d) | 2026-10-28 → 2026-10-20 (-8d) |  |  |  |
| PG-T-CON-B-GF-FF-10 | Fire Extinguisher Installation | 2026-10-27 → 2026-09-23 A (-34d) | 2026-10-28 → 2026-10-20 (-8d) | 0% → 25% | 0d → 26.8d |  |
| DS | **SEWER AND DRAINAGE SYSTEM** |  | 2026-09-05 → 2026-10-05 (+30d) |  |  |  |
| PG-T-CON-B-GF-DR-10_R | Sewer and Drainge System Main Lines Installation(Remaining) | 2026-08-12 → 2026-07-23 A (-20d) | 2026-08-13 → 2026-09-10 A (+28d) | 0% → 100% | 0d → none |  |
| PG-T-CON-B-GF-DR-20_R | Sewer and Drainge System Pipes and fittings Installation(Remaining) | 2026-08-15 → 2026-07-23 A (-23d) | 2026-08-16 → 2026-07-31 A (-16d) | 0% → 100% | 8d → none |  |
| PG-T-CON-B-GF-DR-30 | Sanitaryware Installation (Final Fix) | 2026-09-03 → 2026-09-23 A (+20d) | 2026-09-05 → 2026-10-05 (+30d) | 0% → 50% | 0d → 35.55d |  |
| HV | **HVAC SYSTEM** | 2026-08-09 → 2026-08-13 (+4d) | 2026-10-12 → 2026-10-06 (-6d) |  |  |  |
| PG-T-CON-B-GF-AC-10 | Duct Work and Exhaust Fan Installation | 2026-08-09 → 2026-08-13 A (+4d) | 2026-08-11 → 2026-08-20 A (+9d) | 0% → 100% | 0d → none |  |
| PG-T-CON-B-GF-AC-20 | Split AC, Grills & Diffuser Installation | 2026-10-11 → 2026-09-20 A (-21d) | 2026-10-12 → 2026-10-06 (-6d) | 0% → 35% | 14d → 38.9d |  |
| WS | **WATER SUPPLY SYSTEM** | 2026-08-12 → 2026-07-22 (-21d) | 2026-09-02 → 2026-10-04 (+32d) |  |  |  |
| PG-T-CON-B-GF-WS-10 | Water Supply Main Lines Installation | 2026-08-12 → 2026-07-22 A (-21d) | 2026-08-13 → 2026-09-10 A (+28d) | 0% → 100% | 0d → none | PG-T-CON-B-GF-AC-10, PG-T-EN-ME-SD-AP-10, PG-T-PR-SL-PB-DL-10 → PG-T-EN-ME-SD-AP-10, PG-T-PR-SL-PB-DL-10, PG-T-CON-B-GF-AC-10 FF |
| PG-T-CON-B-GF-WS-20 | Water Supply Pipes Installation (Cold and Hot Water) | 2026-08-15 → 2026-07-23 A (-23d) | 2026-08-16 → 2026-07-30 A (-17d) | 0% → 100% | 8d → none | PG-T-CON-B-GF-WS-10, PG-T-EN-ME-SD-AP-10, PG-T-PR-SL-PB-DL-10 → PG-T-EN-ME-SD-AP-10, PG-T-PR-SL-PB-DL-10, PG-T-CON-B-GF-WS-10 SS |
| PG-T-CON-B-GF-WS-30 | Water Supply Accesories and Booster pump Installation | 2026-08-31 → 2026-09-23 A (+23d) | 2026-09-02 → 2026-10-04 (+32d) | 0% → 50% | 0d → 35.55d |  |
| ELC | **ELECTRICAL WORKS** | 2026-08-15 → 2026-07-22 (-24d) | 2026-09-17 → 2026-09-16 (-1d) |  |  |  |
| PG-T-CON-B-GF-EL-10 | Pipes & Conduits Installation | 2026-08-15 → 2026-07-22 A (-24d) | 2026-08-17 → 2026-07-23 A (-25d) | 0% → 100% | 0d → none | PG-T-CON-B-GF-DR-10_R, PG-T-PR-SL-EL-DL-10_R → PG-T-CON-B-GF-DR-10_R SS, PG-T-PR-SL-EL-DL-10 |
| PG-T-CON-B-GF-EL-20 | Electrical & ELV Wiring Works | 2026-09-15 → 2026-08-20 A (-26d) | 2026-09-17 → 2026-09-16 A (-1d) | 0% → 100% | 0d → none | PG-T-CON-B-GF-EL-40 → PG-T-CON-B-GF-EL-40, PG-T-CON-B-GF-EL-40 SS |
| PG-T-CON-B-GF-EL-30 | Fire Alarm Devices Installation | 2026-09-08 → 2026-08-20 A (-19d) | 2026-09-10 → 2026-09-16 A (+6d) | 0% → 100% | 0d → none | PG-T-CON-B-GF-EL-50 → PG-T-CON-B-GF-EL-50, PG-T-CON-B-GF-EL-50 SS |
| PG-T-CON-B-GF-EL-40 | Telecom & CCTV Devices Installation | 2026-09-12 → 2026-08-20 A (-23d) | 2026-09-14 → 2026-09-16 A (+2d) | 0% → 100% | 0d → none | PG-T-CON-B-GF-EL-30 → PG-T-CON-B-GF-EL-30, PG-T-CON-B-GF-EL-30 SS |
| PG-T-CON-B-GF-EL-50 | Electrical Light Fixtures Installation | 2026-09-06 → 2026-08-20 A (-17d) | 2026-09-07 → 2026-09-16 A (+9d) | 0% → 100% | 0d → none | PG-T-CON-B-GF-DR-30, PG-T-PR-LL-EL-DL-40_R → PG-T-CON-B-GF-DR-30, PG-T-PR-LL-EL-DL-40_R, PG-T-CON-B-GF-DR-30 FF, PG-T-PR-LL-EL-DL-40_R SS |
| TE & CO | **PROJECT CLOSOUT** |  | 2026-12-16 → 2027-01-27 (+42d) |  |  |  |
| PG-T-PCL-10_R | Testing, Commessioning for All Systems(Remaining) | 2026-11-22 → 2026-08-06 A (-108d) | 2026-12-03 → 2027-01-14 (+42d) | 0% → 45% | 0d → -35.4d |  |
| PG-T-PCL-20 | As-Built Drawings | 2026-11-22 → 2026-09-23 A (-60d) | 2026-12-09 → 2027-01-21 (+43d) | 0% → 20% | 4.8d → -32.46d |  |
| PG-T-PCL-30 | Snag list Submission | 2026-12-05 → 2027-01-14 (+40d) | 2026-12-06 → 2027-01-17 (+42d) |  | 0d → -35.4d |  |
| PG-T-PCL-40 | Snag list Closeout | 2026-12-07 → 2027-01-17 (+41d) | 2026-12-14 → 2027-01-25 (+42d) |  | 0d → -35.4d |  |
| PG-T-PCL-50 | Issuing Approvals | 2026-12-15 → 2027-01-25 (+41d) | 2026-12-15 → 2027-01-26 (+42d) |  | 0d → -35.4d |  |
| PG-T-PCL-60 | Handing Over | 2026-12-16 → 2027-01-26 (+41d) | 2026-12-16 → 2027-01-27 (+42d) |  | 0d → -35.4d |  |

## Version 3 (data date 2026-10-02, saved 2026-10-03, file 02. MLTX-02-003-UPS Level 5 - 2026-10-04.xer)

Note of the change: Renumber project folders 01–23 in order (after removing projects 12 and 25)

Last finish 2027-01-27 → 2027-02-03 (+7d). Complete tasks 1556 → 1591.

Changed:

| ID | Task | Start | Finish | Complete | Total float |
| --- | --- | --- | --- | --- | --- |
| MS | **MILESTONES** |  | 2027-01-27 → 2027-02-03 (+7d) |  |  |
| 1 | **GENERAL MILESTONES** |  | 2027-01-27 → 2027-02-03 (+7d) |  |  |
| PG-GN-MS-30_R | Project Durations(Remaining) |  | 2026-12-20 → 2026-12-27 (+7d) |  | -2.75d → -8.75d |
| PG-GN-MS-20 | Project Completion Date | 2027-01-27 → 2027-02-03 (+7d) | 2027-01-27 → 2027-02-03 (+7d) |  | -35.4d → -41.4d |
| 2 | **CONTRACUAL MILESTONES** |  | 2027-01-27 → 2027-02-03 (+7d) |  |  |
| PG-IN-MS-30 | Completion of Toilet Building | 2026-11-17 → 2026-11-22 (+5d) | 2026-11-17 → 2026-11-22 (+5d) |  | 2.7d → -0.05d |
| PG-IN-MS-50 | Completion of Playground Works | 2026-12-06 → 2026-12-09 (+3d) | 2026-12-06 → 2026-12-09 (+3d) |  | 9.3d → 6.3d |
| PG-IN-MS-40 | Completion of Landscape Works | 2027-01-20 → 2027-01-24 (+4d) | 2027-01-20 → 2027-01-24 (+4d) |  | -29.4d → -32.65d |
| PG-IN-MS-60 | Substantial Completion - All Works | 2027-01-27 → 2027-02-03 (+7d) | 2027-01-27 → 2027-02-03 (+7d) |  | -35.4d → -41.4d |
| QASSIM | **QASSIM** |  | 2027-01-19 → 2027-01-24 (+5d) |  |  |
| ENG | **ENGINEERING** |  | 2026-10-18 → 2026-10-04 (-14d) |  |  |
| 1 | **SHOP DRAWINGS SUBMITTALS** |  | 2026-09-27 → 2026-10-04 (+7d) |  |  |
| 4 | **MECHANICAL DRAWINGS** |  | 2026-09-27 → 2026-10-04 (+7d) |  |  |
| 4 | **AIR DOME** |  | 2026-09-27 → 2026-10-04 (+7d) |  |  |
| PG-Q-EN-ME-SD-SB-100 | Air Package and HVAC System Drawings |  | 2026-09-27 → 2026-10-04 (+7d) |  | -28.4d → -32.8d |
| 5 | **ELECTRICAL DRAWINGS** |  | 2026-09-27 → 2026-10-04 (+7d) |  |  |
| 4 | **AIR DOME** |  | 2026-09-27 → 2026-10-04 (+7d) |  |  |
| PG-Q-EN-EL-SD-SB-120 | Power & Lighting System Drawings |  | 2026-09-26 → 2026-10-03 (+7d) |  | -27.6d → -32d |
| PG-Q-EN-EL-SD-SB-130 | Generators Details |  | 2026-09-27 → 2026-10-04 (+7d) |  | -28.1d → -32.5d |
| PG-Q-EN-EL-SD-SB-140 | Smart Dome System Drawings |  | 2026-09-27 → 2026-10-04 (+7d) |  | -28.3d → -32.7d |
| 4 | **MATERIAL APPROVALS** |  | 2026-10-18 → 2026-10-01 (-17d) |  |  |
| 1 | **LONG LEAD ITEMS** |  | 2026-10-18 → 2026-10-01 (-17d) |  |  |
| 5 | **METAL WORK** |  | 2026-10-18 → 2026-10-01 (-17d) |  |  |
| PG-Q-PR-LL-MT-MA-10_R | Metal Doors(Remaining) | 2026-09-26 → 2026-09-16 A (-10d) | 2026-10-12 → 2026-10-01 A (-11d) | 0% → 100% | 26.2d → none |
| PG-Q-PR-LL-MT-MA-20_R | Curtain Wall(Remaining) | 2026-09-26 → 2026-09-16 A (-10d) | 2026-10-18 → 2026-10-01 A (-17d) | 0% → 100% | 22.7d → none |
| PR | **PROCUREMENT** |  | 2026-11-10 → 2026-11-17 (+7d) |  |  |
| 1 | **LONG LEAD ITEMS** |  | 2026-11-10 → 2026-11-17 (+7d) |  |  |
| 3 | **MANUFACTURE / FABRICATION** |  | 2026-10-24 → 2026-10-31 (+7d) |  |  |
| 5 | **METAL WORK** |  | 2026-10-24 → 2026-10-31 (+7d) |  |  |
| PG-Q-PR-LL-MT-MF-10_R | Metal Doors(Remaining) | 2026-09-26 → 2026-09-06 A (-20d) | 2026-10-24 → 2026-10-02 A (-22d) | 0% → 100% | 8.7d → none |
| PG-Q-PR-LL-MT-MF-20_R | Curtain Wall(Remaining) | 2026-09-26 → 2026-10-03 (+7d) | 2026-10-24 → 2026-10-31 (+7d) |  | 2.7d → -0.05d |
| 4 | **DELIVERY TO SITE** |  | 2026-11-10 → 2026-11-17 (+7d) |  |  |
| 1 | **EXTERNAL / LANDSCAPE WORK** |  | 2026-09-30 → 2026-10-04 (+4d) |  |  |
| PG-Q-PR-LL-LS-DL-10_R | Bike and Walk Path Materials(Remaining) |  | 2026-09-26 A | 90% → 100% | 34.15d → none |
| PG-Q-PR-LL-LS-DL-20_R | Benches, Seats (Rectangular & Circular)(Remaining) |  | 2026-09-30 → 2026-10-04 (+4d) | 70% → 90% | 48.5d → 45.5d |
| PG-Q-PR-LL-LS-DL-30_R | Fence, gates and accessories(Remaining) |  | 2026-09-30 A | 70% → 100% | 9.3d → none |
| 2 | **SPORTS & RECREATIONAL FACILITIES WORK** |  | 2026-10-05 → 2026-10-11 (+6d) |  |  |
| PG-Q-PR-LL-SP-DL-10_R | Football Playground Materials (Flooring, goal post, nets, paints, etc)(Remaining) |  | 2026-09-28 → 2026-10-04 (+6d) | 80% → 90% | 47.1d → 44d |
| PG-Q-PR-LL-SP-DL-20_R | Basketball Playground Materials (Flooring, basketball poll, nets, paints, etc)(Remaining) |  | 2026-09-28 → 2026-10-04 (+6d) | 80% → 90% | 29.6d → 38.7d |
| PG-Q-PR-LL-SP-DL-30_R | Padel Playgound Materials (Fence, tempered glass, etc)(Remaining) |  | 2026-09-28 → 2026-10-04 (+6d) | 80% → 90% | 10.8d → 6.3d |
| PG-Q-PR-LL-SP-DL-40_R | Tartan Floor(Remaining) |  | 2026-09-28 → 2026-10-04 (+6d) | 80% → 90% | 26.6d → 33.4d |
| PG-Q-PR-LL-SP-DL-50 | Air Dome Materials |  | 2026-10-05 → 2026-10-11 (+6d) | 30% → 50% | -28.4d → -32.8d |
| 5 | **METAL WORK** |  | 2026-11-10 → 2026-11-17 (+7d) |  |  |
| PG-Q-PR-LL-MT-DL-10_R | Metal Doors(Remaining) |  | 2026-11-02 → 2026-10-02 A (-31d) | 50% → 100% | 8.7d → none |
| PG-Q-PR-LL-MT-DL-20_R | Curtain Wall(Remaining) | 2026-10-25 → 2026-11-01 (+7d) | 2026-11-10 → 2026-11-17 (+7d) |  | 2.7d → -0.05d |
| 7 | **PLUMBING WORK** |  | 2026-09-30 → 2026-10-04 (+4d) |  |  |
| PG-Q-PR-LL-PB-DL-20_R | GRP Sectional Panel Water Tanks (4x3x3m)(Remaining) |  | 2026-09-30 → 2026-10-04 (+4d) | 70% → 90% | 22.55d → 20.3d |
| PG-Q-PR-LL-PB-DL-10_R | Booster Pump(Remaining) |  | 2026-09-30 A | 70% → 100% | 34.7d → none |
| 8 | **IRRIGATION WORK** |  | 2026-09-27 → 2026-10-03 (+6d) |  |  |
| PG-Q-PR-LL-IR-DL-20_R | Irrigation Control System(Remaining) |  | 2026-09-27 → 2026-10-03 (+6d) | 80% → 95% | -7.25d → -12.05d |
| 9 | **ELECTRICAL WORK** |  | 2026-10-01 → 2026-10-05 (+4d) |  |  |
| PG-Q-PR-LL-EL-DL-10_R | Main Distribution Board(Remaining) |  | 2026-10-01 → 2026-10-05 (+4d) | 65% → 80% | -0.65d → -4.4d |
| PG-Q-PR-LL-EL-DL-20_R | Power Panels (Pump, Street Light)(Remaining) |  | 2026-09-29 → 2026-10-04 (+5d) | 65% → 80% | 3.1d → -1.4d |
| PG-Q-PR-LL-EL-DL-30_R | Site Lighting Poles(Remaining) |  | 2026-10-01 → 2026-10-05 (+4d) | 65% → 80% | 6.35d → 2.6d |
| PG-Q-PR-LL-EL-DL-40_R | Lighting Fixtures(Remaining) |  | 2026-10-01 → 2026-10-05 (+4d) | 65% → 80% | 9.95d → 6.2d |
| PG-Q-PR-LL-EL-DL-50_R | Grounding System Materials (Earth pit rod, LPS, etc)(Remaining) |  | 2026-10-01 → 2026-10-05 (+4d) | 65% → 80% | -1.25d → -5d |
| PG-Q-PR-LL-EL-DL-60_R | Telecommunications & Data System Materials (Telephone outlet, CCTV, etc)(Remaining) |  | 2026-10-01 → 2026-10-05 (+4d) | 65% → 80% | 13.95d → 10.2d |
| PG-Q-PR-LL-EL-DL-70_R | Security and Access Control System Materials(Remaining) |  | 2026-10-01 → 2026-10-05 (+4d) | 65% → 80% | 32.45d → 29.2d |
| PG-Q-PR-LL-EL-DL-80_R | Fire Alarm System Materials(Remaining) |  | 2026-10-01 → 2026-10-05 (+4d) | 65% → 80% | 16.95d → 13.2d |
| 2 | **SHORT LEAD ITEMS** |  | 2026-10-12 → 2026-10-11 (-1d) |  |  |
| 3 | **DELIVERY TO SITE** |  | 2026-10-12 → 2026-10-11 (-1d) |  |  |
| 1 | **EXTERNAL / LANDSCAPE WORK** |  | 2026-10-04 → 2026-10-11 (+7d) |  |  |
| PG-Q-PR-SL-LS-DL-50_R | Thermoplastic pavement road marking(Remaining) |  | 2026-10-04 → 2026-10-11 (+7d) |  | 29.2d → 25.75d |
| PG-Q-PR-SL-LS-DL-60_R | Traffic Signages(Remaining) |  | 2026-10-04 → 2026-10-08 (+4d) | 35% → 50% | 29.2d → 25.75d |
| PG-Q-PR-SL-LS-DL-70_R | Trees(Remaining) |  | 2026-10-04 → 2026-10-08 (+4d) | 35% → 50% | 29.2d → 25.75d |
| PG-Q-PR-SL-LS-DL-80_R | Lawn(Remaining) |  | 2026-10-04 → 2026-10-08 (+4d) | 35% → 50% | 29.2d → 25.75d |
| PG-Q-PR-SL-MT-DL-10_R | Galvanized Steel Ladder(Remaining) | 2026-09-26 A |  | 0% → 50% | 34.7d → 35.45d |
| PG-Q-PR-SL-MT-DL-20_R | Galvanized Steel Roof Scupper(Remaining) | 2026-09-26 A |  | 0% → 50% | 34.7d → 35.45d |
| PG-Q-PR-SL-MT-DL-30_R | Galvanized Steel Cover with frame(Remaining) | 2026-09-26 A |  | 0% → 50% | 34.7d → 35.45d |
| 6 | **HVAC WORK** |  | 2026-10-04 → 2026-10-02 (-2d) |  |  |

| ID | Task | Start | Finish | Complete | Total float |
| --- | --- | --- | --- | --- | --- |
| PG-Q-PR-SL-AC-DL-10_R | Split Air Conditioning Unit(Remaining) |  | 2026-10-04 → 2026-10-02 A (-2d) | 40% → 100% | 29d → none |
| PG-Q-PR-SL-AC-DL-20_R | Air Duct(Remaining) |  | 2026-10-04 → 2026-10-02 A (-2d) | 40% → 100% | 29d → none |
| PG-Q-PR-SL-AC-DL-30_R | Diffusers and Grills(Remaining) |  | 2026-10-04 → 2026-10-02 A (-2d) | 40% → 100% | 29d → none |
| PG-Q-PR-SL-AC-DL-40_R | Exhaust fans(Remaining) |  | 2026-10-04 → 2026-10-02 A (-2d) | 40% → 100% | 29d → none |
| 8 | **IRRIGATION WORK** |  | 2026-09-30 → 2026-10-07 (+7d) |  |  |
| PG-Q-PR-SL-IR-DL-10_R | Gate Valve including valve box(Remaining) |  | 2026-09-30 → 2026-10-07 (+7d) |  | -5.96d → -11.65d |
| PG-Q-PR-SL-IR-DL-20_R | Bulbblers and Spreyers(Remaining) |  | 2026-09-30 → 2026-10-07 (+7d) |  | -9.25d → -15.25d |
| 9 | **ELECTRICAL WORK** |  | 2026-10-12 → 2026-10-11 (-1d) |  |  |
| PG-Q-PR-SL-EL-DL-10_R | Wiring Devices Materials(Remaining) | 2026-09-26 A | 2026-10-12 → 2026-10-11 (-1d) | 0% → 50% | -2.8d → -1.3d |
| PG-Q-PR-SL-FF-DL-10_R | Fire Extinguishers(Remaining) | 2026-09-26 A |  | 0% → 50% |  |
| CO | **CONSTRUCTION STAGE** |  | 2027-01-11 → 2027-01-18 (+7d) |  |  |
| EX.SIT | **PLAYGROUND AND LANDSCAPING WORKS** |  | 2027-01-11 → 2027-01-18 (+7d) |  |  |
| 1 | **PLAYGROUND WORKS** |  | 2026-12-06 → 2026-12-09 (+3d) |  |  |
| FP | **FOOTBALL PLAYGROUND WORKS** |  | 2026-10-25 → 2026-10-29 (+4d) |  |  |
| PG-Q-CON-EX-FB-90 | Turfing / Seeding Works |  | 2026-09-30 → 2026-10-06 (+6d) | 75% → 80% | 45.8d → 41.7d |
| PG-Q-CON-EX-FB-120 | Installation of Lighting System |  | 2026-09-27 → 2026-10-04 (+7d) |  | 45.8d → 41.7d |
| PG-Q-CON-EX-FB-110 | Install Playground Benches |  | 2026-10-15 → 2026-10-20 (+5d) | 55% → 50% | 45.8d → 41.7d |
| PG-Q-CON-EX-FB-60 | Goal Post Installation & Alignment |  | 2026-10-06 → 2026-10-10 (+4d) | 65% → 80% | 45.8d → 41.7d |
| PG-Q-CON-EX-FB-100 | Markings and Signages | 2026-10-15 → 2026-10-20 (+5d) | 2026-10-25 → 2026-10-29 (+4d) |  | 45.8d → 41.7d |
| BP | **BASKETBALL PLAYGROUND WORKS** |  | 2026-11-16 → 2026-11-05 (-11d) |  |  |
| PG-Q-CON-EX-BB-60 | Basketball Pole Installation & Alignment |  | 2026-10-06 → 2026-10-11 (+5d) |  | 26.6d → 35.7d |
| PG-Q-CON-EX-BB-80 | Court Line Marking |  | 2026-10-01 → 2026-10-07 (+6d) |  | 26.6d → 35.7d |
| PG-Q-CON-EX-BB-90 | Backboard & Hoop Installation | 2026-10-06 → 2026-10-01 A (-5d) | 2026-10-26 → 2026-10-15 (-11d) | 0% → 80% | 26.6d → 35.7d |
| PG-Q-CON-EX-BB-100 | Install Playground Benches | 2026-10-26 → 2026-10-15 (-11d) | 2026-11-16 → 2026-11-05 (-11d) |  | 26.6d → 35.7d |
| PP | **PADEL PLAYGROUND WORKS** |  | 2026-12-06 → 2026-12-09 (+3d) |  |  |
| PG-Q-CON-EX-PD-30_R | Tartan Flooring Layers(Remaining) |  | 2026-11-01 → 2026-11-04 (+3d) |  | 9.3d → 6.3d |
| PG-Q-CON-EX-PD-40 | Steel Structure & Fence Supports Installation |  | 2026-10-06 → 2026-10-10 (+4d) |  | 9.3d → 6.3d |
| PG-Q-CON-EX-PD-60 | Chain Link Fence & Gates Installation |  | 2026-10-12 → 2026-10-15 (+3d) |  | 9.3d → 6.3d |
| PG-Q-CON-EX-PD-50 | Tempered Glass Installation | 2026-10-12 → 2026-10-15 (+3d) | 2026-11-01 → 2026-11-04 (+3d) |  | 9.3d → 6.3d |
| PG-Q-CON-EX-PD-70 | Court Accessories Installation | 2026-11-01 → 2026-11-04 (+3d) | 2026-11-18 → 2026-11-22 (+4d) |  | 9.3d → 6.3d |
| PG-Q-CON-EX-PD-80 | Install Playground Benches | 2026-11-18 → 2026-11-22 (+4d) | 2026-12-06 → 2026-12-09 (+3d) |  | 9.3d → 6.3d |
| GN.SI | **GENERAL SITE WORKS** |  | 2027-01-11 → 2027-01-18 (+7d) |  |  |
| 1 | **FENCE WORKS** |  | 2026-10-26 → 2026-10-29 (+3d) |  |  |
| PG-Q-CON-EX-GN-FN-30 | Installation of Galvanized Steel Posts & Framing |  | 2026-09-27 → 2026-10-04 (+7d) |  | 8.25d → 6.75d |
| PG-Q-CON-EX-GN-FN-40 | Fixing of Chain Link Mesh, Tensioning & Bracing | 2026-09-27 A | 2026-10-14 → 2026-10-18 (+4d) | 0% → 25% | 8.25d → 6.75d |
| PG-Q-CON-EX-GN-FN-50 | Installation of Gates | 2026-10-14 → 2026-10-18 (+4d) | 2026-10-26 → 2026-10-29 (+3d) |  | 8.25d → 6.75d |
| 5 | **MECHANICAL WORK** |  | 2026-10-25 → 2026-11-01 (+7d) |  |  |
| 2 | **STORM WATER AND UTILITY WORK** |  | 2026-10-22 → 2026-10-29 (+7d) |  |  |
| PG-Q-CON-EX-GN-M-30_R | Manhole Installation(Remaining) |  | 2026-09-27 → 2026-10-04 (+7d) |  | -21.05d → -27.05d |
| PG-Q-CON-EX-GN-M-40 | 150 mm uPVC pipe laying & jointing |  | 2026-09-28 → 2026-10-05 (+7d) |  | -21.05d → -27.05d |
| PG-Q-CON-EX-GN-M-50 | Concrete Encasement | 2026-09-28 → 2026-10-05 (+7d) | 2026-10-06 → 2026-10-13 (+7d) |  | -21.05d → -27.05d |
| PG-Q-CON-EX-GN-M-60 | Backfilling & Compaction | 2026-10-06 → 2026-10-13 (+7d) | 2026-10-13 → 2026-10-20 (+7d) |  | -21.05d → -27.05d |
| PG-Q-CON-EX-GN-M-70 | Surface Reinstatement & Civil Works | 2026-10-15 → 2026-10-22 (+7d) | 2026-10-22 → 2026-10-29 (+7d) |  | -21.05d → -27.05d |
| IR.SY | **IRRIGATION SYSTEM WORKS** |  | 2026-10-15 → 2026-10-22 (+7d) |  |  |
| PG-Q-CON-EX-GN-M-80_R | Installation of HDPE Irrigation Pipe Network with Gate Valve and Box(Remaining) |  | 2026-10-13 → 2026-10-01 A (-12d) | 88% → 100% | -21.05d → none |
| PG-Q-CON-EX-GN-M-90 | Installation of Irrigation Control System |  | 2026-10-13 → 2026-10-20 (+7d) |  | -21.05d → -27.05d |
| PG-Q-CON-EX-GN-M-100 | Installation of Bubblers and Sprinklers |  | 2026-10-15 → 2026-10-22 (+7d) |  | -21.05d → -27.05d |
| 1 | **FIRE PROTECTION SYSTEM** | 2026-10-22 → 2026-10-29 (+7d) | 2026-10-25 → 2026-11-01 (+7d) |  |  |
| PG-Q-CON-EX-GN-M-110 | Fire Extinguisher Installation | 2026-10-22 → 2026-10-29 (+7d) | 2026-10-25 → 2026-11-01 (+7d) |  | -21.05d → -27.05d |
| 2 | **ELECTRICAL WORK** |  | 2026-12-22 → 2026-12-29 (+7d) |  |  |
| 1 | **POWER, LIGHTING & GROUNDING** |  | 2026-11-11 → 2026-11-18 (+7d) |  |  |
| PG-Q-CON-EX-GN-E-20_R | Foundation Work for Site Lighting Poles(Remaining) |  | 2026-10-22 → 2026-10-29 (+7d) |  | -19.75d → -25.75d |
| PG-Q-CON-EX-GN-E-60 | Site Lighting Poles Installation |  | 2026-11-03 → 2026-11-10 (+7d) |  | -21.05d → -27.05d |
| PG-Q-CON-EX-GN-E-30 | Lightning Protection System (LPS) |  | 2026-10-25 → 2026-11-01 (+7d) |  | -21.05d → -27.05d |
| PG-Q-CON-EX-GN-E-40 | KWH Meter and MDB Installation | 2026-10-25 → 2026-11-01 (+7d) | 2026-10-27 → 2026-11-03 (+7d) |  | -21.05d → -27.05d |
| PG-Q-CON-EX-GN-E-50 | Power Panels and Distribution Boards | 2026-10-27 → 2026-11-03 (+7d) | 2026-11-02 → 2026-11-09 (+7d) |  | -21.05d → -27.05d |
| PG-Q-CON-EX-GN-E-70 | Wiring Works | 2026-11-03 → 2026-11-10 (+7d) | 2026-11-07 → 2026-11-14 (+7d) |  | -21.05d → -27.05d |
| PG-Q-CON-EX-GN-E-80 | Lighting Fixtures with outlets Installation | 2026-11-07 → 2026-11-14 (+7d) | 2026-11-11 → 2026-11-18 (+7d) |  | -21.05d → -27.05d |
| 2 | **ELV SYSTEMS (TELECOM, DATA, AV & CCTV)** | 2026-11-11 → 2026-11-18 (+7d) | 2026-12-10 → 2026-12-17 (+7d) |  |  |
| PG-Q-CON-EX-GN-E-90 | ELV Containment & Cabling Works | 2026-11-11 → 2026-11-18 (+7d) | 2026-11-15 → 2026-11-22 (+7d) |  | -21.05d → -27.05d |
| PG-Q-CON-EX-GN-E-100 | Fiber Optic Pull Box Installation | 2026-11-15 → 2026-11-22 (+7d) | 2026-11-18 → 2026-11-25 (+7d) |  | -16.55d → -22.05d |
| PG-Q-CON-EX-GN-E-110 | Telephone and Data Outlet Installation | 2026-11-18 → 2026-11-25 (+7d) | 2026-11-23 → 2026-11-30 (+7d) |  | -16.55d → -22.05d |
| PG-Q-CON-EX-GN-E-120 | Telecom Equipment and AV HDMI Installation | 2026-11-23 → 2026-11-30 (+7d) | 2026-11-28 → 2026-12-05 (+7d) |  | -16.55d → -22.05d |
| PG-Q-CON-EX-GN-E-130 | CCTV Rack / Cabinet Installation | 2026-11-28 → 2026-12-05 (+7d) | 2026-12-02 → 2026-12-09 (+7d) |  | -16.55d → -22.05d |
| PG-Q-CON-EX-GN-E-140 | NVR and CCTV Monitor Installation | 2026-12-02 → 2026-12-09 (+7d) | 2026-12-07 → 2026-12-14 (+7d) |  | -16.55d → -22.05d |
| PG-Q-CON-EX-GN-E-150 | IP Camera Installation | 2026-12-07 → 2026-12-14 (+7d) | 2026-12-10 → 2026-12-17 (+7d) |  | -16.55d → -22.05d |
| 3 | **FIRE ALARM SYSTEM** | 2026-11-15 → 2026-11-22 (+7d) | 2026-12-22 → 2026-12-29 (+7d) |  |  |
| PG-Q-CON-EX-GN-E-160 | Fire Alarm Containment & Cabling | 2026-11-15 → 2026-11-22 (+7d) | 2026-11-24 → 2026-12-01 (+7d) |  | -21.05d → -27.05d |
| PG-Q-CON-EX-GN-E-170 | Fire Alarm Control Panel (FACP) Installation | 2026-11-24 → 2026-12-01 (+7d) | 2026-12-03 → 2026-12-10 (+7d) |  | -21.05d → -27.05d |
| PG-Q-CON-EX-GN-E-180 | Initiating Devices (Detectors & Manual Pull Station) | 2026-12-03 → 2026-12-10 (+7d) | 2026-12-13 → 2026-12-20 (+7d) |  | -21.05d → -27.05d |

| ID | Task | Start | Finish | Complete | Total float |
| --- | --- | --- | --- | --- | --- |
| PG-Q-CON-EX-GN-E-190 | Notification Appliances (Strobe with Sounder) | 2026-12-13 → 2026-12-20 (+7d) | 2026-12-22 → 2026-12-29 (+7d) |  | -21.05d → -27.05d |
| 3 | **PARKING WORK** |  | 2026-12-22 → 2026-12-29 (+7d) |  |  |
| PG-Q-CON-EX-GN-PR-10 | Installlation of Parking Accessories |  | 2026-12-10 → 2026-10-01 A (-70d) | 90% → 100% | -16.55d → none |
| PG-Q-CON-EX-GN-PR-30 | Marking & Signages | 2026-12-16 → 2026-12-23 (+7d) | 2026-12-22 → 2026-12-29 (+7d) |  | -21.05d → -27.05d |
| 4 | **SERVICE CONNECTION** |  | 2027-01-11 → 2027-01-18 (+7d) |  |  |
| PG-Q-CON-EX-GN-SC-20 | HDPE Pipe Laying & Valve Installation |  | 2026-12-23 → 2026-12-30 (+7d) |  | -21.05d → -27.05d |
| PG-Q-CON-EX-GN-SC-30 | Connection to City Network | 2026-12-23 → 2026-12-30 (+7d) | 2027-01-02 → 2027-01-09 (+7d) |  | -21.05d → -27.05d |
| PG-Q-CON-EX-GN-SC-40 | Backfilling | 2027-01-02 → 2027-01-09 (+7d) | 2027-01-11 → 2027-01-18 (+7d) |  | -21.05d → -27.05d |
| LS | **LANDSCAPING WORKS** |  | 2026-12-07 → 2026-12-09 (+2d) |  |  |
| HSP | **HARDSCAPE WORK** |  | 2026-12-07 → 2026-12-09 (+2d) |  |  |
| PG-Q-CON-EX-LS-HS-50_R | Install Recycled Precast Concrete Seats(Remaining) |  | 2026-11-25 → 2026-11-28 (+3d) |  | 8.25d → 6.75d |
| PG-Q-CON-EX-LS-HS-20_R | Interlock Tiles Grey Scale with Black Marble Chips(Remaining) |  | 2026-10-28 → 2026-10-31 (+3d) |  | 8.25d → 6.75d |
| PG-Q-CON-EX-LS-HS-60 | Install Recycled Precast Concrete Trash Bins | 2026-11-25 → 2026-11-28 (+3d) | 2026-12-07 → 2026-12-09 (+2d) |  | 8.25d → 6.75d |
| SSP | **SOFTSCAPE WORK** |  | 2026-11-23 → 2026-11-24 (+1d) |  |  |
| PG-Q-CON-EX-LS-SS-20_R | Lawn Area Preparation & Planting / Turfing(Remaining) |  | 2026-11-03 → 2026-11-04 (+1d) | 70% → 75% | 8.25d → 6.75d |
| PG-Q-CON-EX-LS-SS-10 | Planting Trees | 2026-11-03 → 2026-11-04 (+1d) | 2026-11-23 → 2026-11-24 (+1d) |  | 8.25d → 6.75d |
| W.T | **TANK WORKS** |  | 2026-10-10 → 2026-10-13 (+3d) |  |  |
| 2 | **WATER STORAGE TANK** |  | 2026-10-10 → 2026-10-13 (+3d) |  |  |
| PG-Q-CON-EX-TW-IR-40 | GRP Water Tank Installation | 2026-09-30 → 2026-10-04 (+4d) | 2026-10-10 → 2026-10-13 (+3d) |  | 22.55d → 20.3d |
| AD | **AIR DOME CONSTRUCTION** |  | 2026-12-30 → 2027-01-04 (+5d) |  |  |
| 1 | **CIVIL WORK** |  | 2026-10-20 → 2026-10-25 (+5d) |  |  |
| PG-Q-CON-EX-AD-CL-60 | Installation of Anchorage System |  | 2026-09-29 A | 80% → 100% | -28.4d → none |
| PG-Q-CON-EX-AD-CL-70 | Installation of Steel Cable Structural System | 2026-09-29 → 2026-10-04 (+5d) | 2026-10-11 → 2026-10-15 (+4d) |  | -28.4d → -32.8d |
| PG-Q-CON-EX-AD-CL-80 | Installation of Membrane System | 2026-10-11 → 2026-10-15 (+4d) | 2026-10-20 → 2026-10-25 (+5d) |  | -28.4d → -32.8d |
| 2 | **ARCHITECTURAL WORK** |  | 2026-12-30 → 2027-01-04 (+5d) |  |  |
| PG-Q-CON-EX-AD-AR-10 | Installation of Thermal Insulation System |  | 2026-12-08 → 2026-12-13 (+5d) |  | -28.4d → -32.8d |
| PG-Q-CON-EX-AD-AR-40 | Final Fixing of Accessories & Finishes | 2026-12-08 → 2026-12-13 (+5d) | 2026-12-17 → 2026-12-22 (+5d) |  | -28.4d → -32.8d |
| PG-Q-CON-EX-AD-AR-20 | Installation of Doors & Access Systems | 2026-12-17 → 2026-12-22 (+5d) | 2026-12-24 → 2026-12-29 (+5d) |  | -28.4d → -32.8d |
| PG-Q-CON-EX-AD-AR-30 | Installation of Logo | 2026-12-24 → 2026-12-29 (+5d) | 2026-12-30 → 2027-01-04 (+5d) |  | -28.4d → -32.8d |
| 3 | **MECHANICAL WORK** | 2026-10-20 → 2026-10-25 (+5d) | 2026-11-08 → 2026-11-12 (+4d) |  |  |
| PG-Q-CON-EX-AD-ME-10 | Installation of Main Air Package Units | 2026-10-20 → 2026-10-25 (+5d) | 2026-10-26 → 2026-10-31 (+5d) |  | -28.4d → -32.8d |
| PG-Q-CON-EX-AD-ME-20 | Installation of Backup Air Package Unit | 2026-10-26 → 2026-10-31 (+5d) | 2026-11-01 → 2026-11-05 (+4d) |  | -28.4d → -32.8d |
| PG-Q-CON-EX-AD-ME-30 | Installation of Complete HVAC System | 2026-11-01 → 2026-11-05 (+4d) | 2026-11-08 → 2026-11-12 (+4d) |  | -28.4d → -32.8d |
| 4 | **ELECTRICAL WORK** |  | 2026-12-03 → 2026-12-08 (+5d) |  |  |
| PG-Q-CON-EX-AD-EL-10 | Installation of Electrical Boxes & MDBs |  | 2026-10-01 → 2026-10-08 (+7d) |  | -8.8d → -14.8d |
| PG-Q-CON-EX-AD-EL-20 | Installation of Lighting System | 2026-10-01 → 2026-10-08 (+7d) | 2026-10-15 → 2026-10-22 (+7d) |  | -8.8d → -14.8d |
| PG-Q-CON-EX-AD-EL-30 | Electrical Connections to Main Power Source (Excluding kWh Meter) | 2026-11-08 → 2026-11-12 (+4d) | 2026-11-14 → 2026-11-18 (+4d) |  | -28.4d → -32.8d |
| PG-Q-CON-EX-AD-EL-40 | Installation of Backup Generator | 2026-11-14 → 2026-11-18 (+4d) | 2026-11-21 → 2026-11-25 (+4d) |  | -28.4d → -32.8d |
| PG-Q-CON-EX-AD-EL-50 | Installation of Smart Dome System | 2026-11-21 → 2026-11-25 (+4d) | 2026-12-03 → 2026-12-08 (+5d) |  | -28.4d → -32.8d |
| B | **TOILET BUILDING WORKS** |  | 2026-11-17 → 2026-11-22 (+5d) |  |  |
| CVL | **CIVIL WORK** |  | 2026-11-16 → 2026-11-21 (+5d) |  |  |
| AR | **ARCHITECTURAL WORK** |  | 2026-11-16 → 2026-11-21 (+5d) |  |  |
| 1 | **GENERAL FINISHES** |  | 2026-11-16 → 2026-11-21 (+5d) |  |  |
| PG-Q-CON-B-AR-GF-60 | Install Doors & Windows |  | 2026-11-03 → 2026-10-14 (-20d) |  | 8.7d → 29.45d |
| PG-Q-CON-B-AR-GF-70 | Lockers and Furniture Installation | 2026-11-11 → 2026-09-19 A (-53d) | 2026-11-16 → 2026-11-21 (+5d) | 0% → 50% | 2.7d → -0.05d |
| 2 | **WET AREA FINISHES** |  | 2026-11-08 → 2026-10-15 (-24d) |  |  |
| PG-Q-CON-B-AR-WF-60 | Install Doors | 2026-11-02 → 2026-10-01 A (-32d) | 2026-11-08 → 2026-10-15 (-24d) | 0% → 50% | 11.2d → 31.7d |
| 3 | **ROOF FINISHES** |  | 2026-11-16 → 2026-11-21 (+5d) |  |  |
| PG-Q-CON-B-AR-RF-20 | Epoxy Flooring and Finishes |  | 2026-10-15 → 2026-10-13 (-2d) |  | 29.1d → 31.85d |
| PG-Q-CON-B-AR-RF-30 | Steel ladder and Steel roof scupper Installation | 2026-11-16 → 2026-11-19 (+3d) | 2026-11-16 → 2026-11-21 (+5d) |  | 2.7d → -0.05d |
| MEP | **MEP WORK** |  | 2026-11-17 → 2026-11-22 (+5d) |  |  |
| MEC | **MECANICAL WORKS** |  | 2026-11-17 → 2026-11-22 (+5d) |  |  |
| FF | **FIRE FIGHTING SYSTEM** | 2026-11-17 → 2026-10-01 (-47d) | 2026-11-17 → 2026-11-22 (+5d) |  |  |
| PG-Q-CON-B-GF-FF-10 | Fire Extinguisher Installation | 2026-11-17 → 2026-10-01 A (-47d) | 2026-11-17 → 2026-11-22 (+5d) | 0% → 25% | 2.7d → -0.05d |
| DS | **SEWER AND DRAINAGE SYSTEM** |  | 2026-10-14 → 2026-10-12 (-2d) |  |  |
| PG-Q-CON-B-GF-DR-30 | Sanitaryware Installation (Final Fix) | 2026-10-13 → 2026-10-01 A (-12d) | 2026-10-14 → 2026-10-12 (-2d) | 0% → 25% | 24.2d → 29.45d |
| HV | **HVAC SYSTEM** |  | 2026-10-07 → 2026-10-05 (-2d) |  |  |
| PG-Q-CON-B-GF-AC-20 | Split AC, Grills & Diffuser Installation | 2026-10-04 → 2026-10-01 A (-3d) | 2026-10-07 → 2026-10-05 (-2d) | 0% → 25% | 29d → 34.7d |
| TE & CO | **PROJECT CLOSOUT** |  | 2027-01-19 → 2027-01-24 (+5d) |  |  |
| PG-Q-PCL-10_R | Testing, Commessioning for All Systems(Remaining) |  | 2026-12-30 → 2027-01-04 (+5d) | 45% → 50% | -28.4d → -32.8d |
| PG-Q-PCL-20 | As-Built Drawings |  | 2027-01-06 → 2027-01-12 (+6d) |  | -21.46d → -26.4d |
| PG-Q-PCL-30 | Snag list Submission | 2026-12-30 → 2027-01-04 (+5d) | 2027-01-03 → 2027-01-07 (+4d) |  | -28.4d → -32.8d |
| PG-Q-PCL-40 | Snag list Closeout | 2027-01-03 → 2027-01-07 (+4d) | 2027-01-14 → 2027-01-19 (+5d) |  | -28.4d → -32.8d |
| PG-Q-PCL-50 | Issuing Approvals | 2027-01-14 → 2027-01-19 (+5d) | 2027-01-18 → 2027-01-23 (+5d) |  | -28.4d → -32.8d |
| PG-Q-PCL-60 | Handing Over | 2027-01-18 → 2027-01-23 (+5d) | 2027-01-19 → 2027-01-24 (+5d) |  | -28.4d → -32.8d |
| HAIL | **HAIL** |  | 2027-01-09 → 2027-01-16 (+7d) |  |  |
| PR | **PROCUREMENT** |  | 2026-10-27 → 2026-11-03 (+7d) |  |  |
| 1 | **LONG LEAD ITEMS** |  | 2026-10-27 → 2026-11-03 (+7d) |  |  |
| 3 | **MANUFACTURE / FABRICATION** |  | 2026-10-24 → 2026-10-31 (+7d) |  |  |
| 5 | **METAL WORK** |  | 2026-10-24 → 2026-10-31 (+7d) |  |  |

| ID | Task | Start | Finish | Complete | Total float |
| --- | --- | --- | --- | --- | --- |
| PG-H-PR-LL-MT-MF-10_R | Metal Doors(Remaining) | 2026-09-26 A | 2026-10-24 → 2026-10-02 A (-22d) | 0% → 100% | 5.5d → none |
| PG-H-PR-LL-MT-MF-20_R | Curtain Wall(Remaining) | 2026-09-26 → 2026-10-03 (+7d) | 2026-10-24 → 2026-10-31 (+7d) |  | 7d → 1.6d |
| 4 | **DELIVERY TO SITE** |  | 2026-10-27 → 2026-11-03 (+7d) |  |  |
| 1 | **EXTERNAL / LANDSCAPE WORK** |  | 2026-09-27 → 2026-10-04 (+7d) |  |  |
| PG-H-PR-LL-LS-DL-10_R | Bike and Walk Path Materials(Remaining) |  | 2026-09-27 → 2026-10-03 (+6d) | 90% → 95% | 26.2d → 20.8d |
| PG-H-PR-LL-LS-DL-20_R | Benches, Seats (Rectangular & Circular)(Remaining) |  | 2026-09-27 → 2026-10-04 (+7d) |  | 31.2d → 25.2d |
| 2 | **SPORTS & RECREATIONAL FACILITIES WORK** |  | 2026-09-27 → 2026-10-04 (+7d) |  |  |
| PG-H-PR-LL-SP-DL-10_R | Football Playground Materials (Flooring, goal post, nets, paints, etc)(Remaining) |  | 2026-09-27 → 2026-10-03 (+6d) | 90% → 95% | 49.7d → 43.7d |
| PG-H-PR-LL-SP-DL-20_R | Tartan Floor(Remaining) |  | 2026-09-27 → 2026-10-04 (+7d) |  | 49.7d → 43.7d |
| 5 | **METAL WORK** |  | 2026-10-27 → 2026-11-03 (+7d) |  |  |
| PG-H-PR-LL-MT-DL-10_R | Metal Doors(Remaining) |  | 2026-10-27 → 2026-10-05 (-22d) | 75% → 80% | 5.5d → 25.1d |
| PG-H-PR-LL-MT-DL-20_R | Curtain Wall(Remaining) |  | 2026-10-27 → 2026-11-03 (+7d) | 75% → 80% | 7d → 1.6d |
| 7 | **PLUMBING WORK** |  | 2026-09-28 → 2026-10-05 (+7d) |  |  |
| PG-H-PR-LL-PB-DL-20_R | GRP Sectional Panel Water Tanks (4x3x3m)(Remaining) |  | 2026-09-28 → 2026-10-05 (+7d) |  | 5.45d → 0.1d |
| 9 | **ELECTRICAL WORK** |  | 2026-09-27 → 2026-10-04 (+7d) |  |  |
| PG-H-PR-LL-EL-DL-30_R | Site Lighting Poles(Remaining) |  | 2026-09-26 → 2026-10-03 (+7d) |  | 13d → 7d |
| PG-H-PR-LL-EL-DL-40_R | Lighting Fixtures(Remaining) |  | 2026-09-27 → 2026-10-04 (+7d) |  | 17.8d → 11.8d |
| PG-H-PR-LL-EL-DL-10_R | Main Distribution Board(Remaining) |  | 2026-09-27 → 2026-10-04 (+7d) |  | 5.4d → -0.6d |
| PG-H-PR-LL-EL-DL-20_R | Power Panels (Pump, Street Light)(Remaining) |  | 2026-09-27 → 2026-10-04 (+7d) |  | 7.4d → 1.4d |
| PG-H-PR-LL-EL-DL-50_R | Grounding System Materials (Earth pit rod, LPS, etc)(Remaining) |  | 2026-09-27 → 2026-10-04 (+7d) |  | 2.4d → -3.6d |
| PG-H-PR-LL-EL-DL-60_R | Telecommunications & Data System Materials (Telephone outlet, CCTV, etc)(Remaining) |  | 2026-09-27 → 2026-10-04 (+7d) |  | 21.8d → 15.8d |
| PG-H-PR-LL-EL-DL-70_R | Security and Access Control System Materials(Remaining) |  | 2026-09-27 → 2026-10-04 (+7d) |  | 39.05d → 33.55d |
| PG-H-PR-LL-EL-DL-80_R | Fire Alarm System Materials(Remaining) |  | 2026-09-27 → 2026-10-04 (+7d) |  | 24.8d → 18.8d |
| 2 | **SHORT LEAD ITEMS** |  | 2026-10-08 → 2026-10-15 (+7d) |  |  |
| 3 | **DELIVERY TO SITE** |  | 2026-10-08 → 2026-10-15 (+7d) |  |  |
| 1 | **EXTERNAL / LANDSCAPE WORK** |  | 2026-09-29 → 2026-10-05 (+6d) |  |  |
| PG-H-PR-SL-LS-DL-50_R | Thermoplastic pavement road marking(Remaining) |  | 2026-09-29 → 2026-10-05 (+6d) | 70% → 75% | 13.8d → 8.4d |
| PG-H-PR-SL-LS-DL-60_R | Traffic Signages(Remaining) |  | 2026-09-29 → 2026-10-05 (+6d) | 70% → 75% | 13.8d → 8.4d |
| PG-H-PR-SL-LS-DL-70_R | Trees(Remaining) |  | 2026-09-29 → 2026-10-05 (+6d) | 70% → 75% | 13.8d → 8.4d |
| PG-H-PR-SL-LS-DL-80_R | Lawn(Remaining) |  | 2026-09-29 → 2026-10-05 (+6d) | 70% → 75% | 37.45d → 32.38d |
| 8 | **IRRIGATION WORK** |  | 2026-09-27 → 2026-10-04 (+7d) |  |  |
| PG-H-PR-SL-IR-DL-10_R | Gate Valve including valve box(Remaining) |  | 2026-09-27 → 2026-10-04 (+7d) |  | -8.4d → -14.4d |
| PG-H-PR-SL-IR-DL-20_R | Bulbblers and Spreyers(Remaining) |  | 2026-09-27 → 2026-10-04 (+7d) |  | -7.2d → -13.2d |
| PG-H-PR-SL-EL-DL-10_R | Wiring Devices Materials(Remaining) | 2026-09-26 A |  | 0% → 25% |  |
| 10 | **FIRE FIGHTING WORK** |  | 2026-10-08 → 2026-10-15 (+7d) |  |  |
| PG-H-PR-SL-FF-DL-10_R | Fire Extinguishers(Remaining) | 2026-09-26 → 2026-10-03 (+7d) | 2026-10-08 → 2026-10-15 (+7d) |  | -10.4d → -16.4d |
| CO | **CONSTRUCTION STAGE** |  | 2027-01-09 → 2027-01-16 (+7d) |  |  |
| EX.SIT | **PLAYGROUND AND LANDSCAPING WORKS** |  | 2027-01-09 → 2027-01-16 (+7d) |  |  |
| 1 | **PLAYGROUND WORKS** |  | 2026-11-01 → 2026-11-07 (+6d) |  |  |
| FP | **FOOTBALL PLAYGROUND WORKS** |  | 2026-11-01 → 2026-11-07 (+6d) |  |  |
| PG-H-CON-EX-FB-40_R | Tartan flooring(Remaining) |  | 2026-10-08 → 2026-10-15 (+7d) |  | 39.35d → 34d |
| PG-H-CON-EX-FB-90 | Turfing / Seeding Works |  | 2026-10-08 → 2026-10-15 (+7d) |  | 39.35d → 34d |
| PG-H-CON-EX-FB-50 | Goal Post Foundation |  | 2026-09-30 → 2026-10-07 (+7d) |  | 39.35d → 34d |
| PG-H-CON-EX-FB-60 | Goal Post Installation & Alignment |  | 2026-10-14 → 2026-10-20 (+6d) |  | 39.35d → 34d |
| PG-H-CON-EX-FB-110 | Install Playground Benches |  | 2026-10-20 → 2026-10-26 (+6d) |  | 39.35d → 34d |
| PG-H-CON-EX-FB-120 | Installation of Lighting System |  | 2026-10-06 → 2026-10-12 (+6d) | 60% → 65% | 39.35d → 34d |
| PG-H-CON-EX-FB-100 | Markings and Signages | 2026-10-20 → 2026-10-27 (+7d) | 2026-11-01 → 2026-11-07 (+6d) |  | 39.35d → 34d |
| GN.SI | **GENERAL SITE WORKS** |  | 2027-01-09 → 2027-01-16 (+7d) |  |  |
| 1 | **FENCE WORKS** |  | 2026-10-11 → 2026-10-13 (+2d) |  |  |
| PG-H-CON-EX-GN-FN-30 | Installation of Galvanized Steel Posts & Framing |  | 2026-09-27 → 2026-10-04 (+7d) |  | -18.95d → -19.7d |
| PG-H-CON-EX-GN-FN-40 | Fixing of Chain Link Mesh, Tensioning & Bracing | 2026-09-27 A | 2026-10-06 → 2026-10-08 (+2d) | 0% → 20% | -18.95d → -19.7d |
| PG-H-CON-EX-GN-FN-50 | Installation of Gates | 2026-10-06 → 2026-10-08 (+2d) | 2026-10-11 → 2026-10-13 (+2d) |  | -18.95d → -19.7d |
| 5 | **MECHANICAL WORK** |  | 2026-10-21 → 2026-10-28 (+7d) |  |  |
| 2 | **STORM WATER AND UTILITY WORK** |  | 2026-10-19 → 2026-10-26 (+7d) |  |  |
| PG-H-CON-EX-GN-M-20_R | Bedding preparation & level control(Remaining) |  | 2026-09-27 → 2026-10-04 (+7d) |  | -19.35d → -25.35d |
| PG-H-CON-EX-GN-M-30 | Manhole Installation |  | 2026-09-28 → 2026-10-05 (+7d) |  | -19.35d → -25.35d |
| PG-H-CON-EX-GN-M-40 | 150 mm uPVC pipe laying & jointing | 2026-09-28 → 2026-10-05 (+7d) | 2026-10-03 → 2026-10-10 (+7d) |  | -19.35d → -25.35d |
| PG-H-CON-EX-GN-M-50 | Concrete Encasement | 2026-10-03 → 2026-10-10 (+7d) | 2026-10-06 → 2026-10-13 (+7d) |  | -19.35d → -25.35d |
| PG-H-CON-EX-GN-M-60 | Backfilling & Compaction | 2026-10-06 → 2026-10-13 (+7d) | 2026-10-10 → 2026-10-17 (+7d) |  | -19.35d → -25.35d |
| PG-H-CON-EX-GN-M-70 | Surface Reinstatement & Civil Works | 2026-10-14 → 2026-10-21 (+7d) | 2026-10-19 → 2026-10-26 (+7d) |  | -19.35d → -25.35d |
| IR.SY | **IRRIGATION SYSTEM WORKS** |  | 2026-10-14 → 2026-10-21 (+7d) |  |  |
| PG-H-CON-EX-GN-M-80_R | Installation of HDPE Irrigation Pipe Network with Gate Valve and Box(Remaining) |  | 2026-10-10 → 2026-10-17 (+7d) |  | -19.35d → -25.35d |
| PG-H-CON-EX-GN-M-90 | Installation of Irrigation Control System |  | 2026-10-11 → 2026-10-18 (+7d) |  | -19.35d → -25.35d |
| PG-H-CON-EX-GN-M-100 | Installation of Bubblers and Sprinklers | 2026-10-11 → 2026-10-18 (+7d) | 2026-10-14 → 2026-10-21 (+7d) |  | -19.35d → -25.35d |
| 1 | **FIRE PROTECTION SYSTEM** | 2026-10-19 → 2026-10-26 (+7d) | 2026-10-21 → 2026-10-28 (+7d) |  |  |
| PG-H-CON-EX-GN-M-110 | Fire Extinguisher Installation | 2026-10-19 → 2026-10-26 (+7d) | 2026-10-21 → 2026-10-28 (+7d) |  | -19.35d → -25.35d |
| 2 | **ELECTRICAL WORK** |  | 2026-12-24 → 2026-12-31 (+7d) |  |  |
| 1 | **POWER, LIGHTING & GROUNDING** |  | 2026-11-14 → 2026-11-21 (+7d) |  |  |
| PG-H-CON-EX-GN-E-20_R | Foundation Work for Site Lighting Poles(Remaining) |  | 2026-10-20 → 2026-10-27 (+7d) |  | -18.4d → -24.4d |
| PG-H-CON-EX-GN-E-30 | Lightning Protection System (LPS) | 2026-10-21 → 2026-10-28 (+7d) | 2026-10-25 → 2026-11-01 (+7d) |  | -19.35d → -25.35d |

| ID | Task | Start | Finish | Complete | Total float |
| --- | --- | --- | --- | --- | --- |
| PG-H-CON-EX-GN-E-40 | KWH Meter and MDB Installation | 2026-10-25 → 2026-11-01 (+7d) | 2026-10-27 → 2026-11-03 (+7d) |  | -19.35d → -25.35d |
| PG-H-CON-EX-GN-E-50 | Power Panels and Distribution Boards | 2026-10-27 → 2026-11-03 (+7d) | 2026-11-02 → 2026-11-09 (+7d) |  | -19.35d → -25.35d |
| PG-H-CON-EX-GN-E-60 | Site Lighting Poles Installation | 2026-11-02 → 2026-11-09 (+7d) | 2026-11-05 → 2026-11-12 (+7d) |  | -19.35d → -25.35d |
| PG-H-CON-EX-GN-E-70 | Wiring Works | 2026-11-05 → 2026-11-12 (+7d) | 2026-11-09 → 2026-11-16 (+7d) |  | -19.35d → -25.35d |
| PG-H-CON-EX-GN-E-80 | Lighting Fixtures with outlets Installation | 2026-11-09 → 2026-11-16 (+7d) | 2026-11-14 → 2026-11-21 (+7d) |  | -19.35d → -25.35d |
| 2 | **ELV SYSTEMS (TELECOM, DATA, AV & CCTV)** | 2026-11-14 → 2026-11-21 (+7d) | 2026-12-13 → 2026-12-20 (+7d) |  |  |
| PG-H-CON-EX-GN-E-90 | ELV Containment & Cabling Works | 2026-11-14 → 2026-11-21 (+7d) | 2026-11-17 → 2026-11-24 (+7d) |  | -19.35d → -25.35d |
| PG-H-CON-EX-GN-E-100 | Fiber Optic Pull Box Installation | 2026-11-17 → 2026-11-24 (+7d) | 2026-11-21 → 2026-11-28 (+7d) |  | -16.1d → -21.6d |
| PG-H-CON-EX-GN-E-110 | Telephone and Data Outlet Installation | 2026-11-21 → 2026-11-28 (+7d) | 2026-11-25 → 2026-12-02 (+7d) |  | -16.1d → -21.6d |
| PG-H-CON-EX-GN-E-120 | Telecom Equipment and AV HDMI Installation | 2026-11-25 → 2026-12-02 (+7d) | 2026-11-30 → 2026-12-07 (+7d) |  | -16.1d → -21.6d |
| PG-H-CON-EX-GN-E-130 | CCTV Rack / Cabinet Installation | 2026-11-30 → 2026-12-07 (+7d) | 2026-12-05 → 2026-12-12 (+7d) |  | -16.1d → -21.6d |
| PG-H-CON-EX-GN-E-140 | NVR and CCTV Monitor Installation | 2026-12-05 → 2026-12-12 (+7d) | 2026-12-09 → 2026-12-16 (+7d) |  | -16.1d → -21.6d |
| PG-H-CON-EX-GN-E-150 | IP Camera Installation | 2026-12-09 → 2026-12-16 (+7d) | 2026-12-13 → 2026-12-20 (+7d) |  | -16.1d → -21.6d |
| 3 | **FIRE ALARM SYSTEM** | 2026-11-17 → 2026-11-24 (+7d) | 2026-12-24 → 2026-12-31 (+7d) |  |  |
| PG-H-CON-EX-GN-E-160 | Fire Alarm Containment & Cabling | 2026-11-17 → 2026-11-24 (+7d) | 2026-11-26 → 2026-12-03 (+7d) |  | -19.35d → -25.35d |
| PG-H-CON-EX-GN-E-170 | Fire Alarm Control Panel (FACP) Installation | 2026-11-26 → 2026-12-03 (+7d) | 2026-12-06 → 2026-12-13 (+7d) |  | -19.35d → -25.35d |
| PG-H-CON-EX-GN-E-180 | Initiating Devices (Detectors & Manual Pull Station) | 2026-12-06 → 2026-12-13 (+7d) | 2026-12-15 → 2026-12-22 (+7d) |  | -19.35d → -25.35d |
| PG-H-CON-EX-GN-E-190 | Notification Appliances (Strobe with Sounder) | 2026-12-15 → 2026-12-22 (+7d) | 2026-12-24 → 2026-12-31 (+7d) |  | -19.35d → -25.35d |
| 3 | **PARKING WORK** |  | 2026-12-24 → 2026-12-31 (+7d) |  |  |
| PG-H-CON-EX-GN-PR-10 | Installlation of Parking Accessories |  | 2026-12-15 → 2026-12-22 (+7d) | 65% → 75% | -16.1d → -21.6d |
| PG-H-CON-EX-GN-PR-30 | Marking & Signages | 2026-12-19 → 2026-12-26 (+7d) | 2026-12-24 → 2026-12-31 (+7d) |  | -19.35d → -25.35d |
| 4 | **SERVICE CONNECTION** |  | 2027-01-09 → 2027-01-16 (+7d) |  |  |
| PG-H-CON-EX-GN-SC-20 | HDPE Pipe Laying & Valve Installation |  | 2026-12-27 → 2027-01-03 (+7d) |  | -19.35d → -25.35d |
| PG-H-CON-EX-GN-SC-40 | Backfilling |  | 2027-01-09 → 2027-01-16 (+7d) |  | -19.35d → -25.35d |
| PG-H-CON-EX-GN-SC-30 | Connection to City Network | 2026-12-27 → 2027-01-03 (+7d) | 2027-01-05 → 2027-01-12 (+7d) |  | -19.35d → -25.35d |
| LS | **LANDSCAPING WORKS** |  | 2026-12-06 → 2026-12-07 (+1d) |  |  |
| HSP | **HARDSCAPE WORK** |  | 2026-12-06 → 2026-12-07 (+1d) |  |  |
| PG-H-CON-EX-LS-HS-40_R | Bike Path and Walking Path Construction(Remaining) |  | 2026-11-18 → 2026-11-19 (+1d) |  | -18.95d → -19.7d |
| PG-H-CON-EX-LS-HS-30_R | Stamped Concrete Floor(Remaining) |  | 2026-11-07 → 2026-11-08 (+1d) |  | -8.95d → -9.7d |
| PG-H-CON-EX-LS-HS-50_R | Install Recycled Precast Concrete Seats(Remaining) |  | 2026-11-24 → 2026-11-25 (+1d) |  | -18.95d → -19.7d |
| PG-H-CON-EX-LS-HS-20_R | Interlock Tiles Grey Scale with Black Marble Chips(Remaining) |  | 2026-11-07 → 2026-11-08 (+1d) | 65% → 70% | -18.95d → -19.7d |
| PG-H-CON-EX-LS-HS-60 | Install Recycled Precast Concrete Trash Bins | 2026-11-24 → 2026-11-25 (+1d) | 2026-12-06 → 2026-12-07 (+1d) |  | -18.95d → -19.7d |
| SSP | **SOFTSCAPE WORK** |  | 2026-12-06 → 2026-12-07 (+1d) |  |  |
| PG-H-CON-EX-LS-SS-20_R | Lawn Area Preparation & Planting / Turfing(Remaining) |  | 2026-12-06 → 2026-12-07 (+1d) | 70% → 75% | -18.95d → -19.7d |
| PG-H-CON-EX-LS-SS-10 | Planting Trees | 2026-11-07 → 2026-11-08 (+1d) | 2026-11-18 → 2026-11-19 (+1d) |  | -18.95d → -19.7d |
| W.T | **TANK WORKS** |  | 2026-11-01 → 2026-11-03 (+2d) |  |  |
| 1 | **SEPTIC TANK** |  | 2026-10-26 → 2026-10-28 (+2d) |  |  |
| PG-H-CON-EX-TW-ST-40 | RCC Wall |  | 2026-09-28 → 2026-10-05 (+7d) |  | -9.7d → -15.05d |
| PG-H-CON-EX-TW-ST-50 | RCC Slab |  | 2026-09-30 → 2026-10-07 (+7d) |  | -9.7d → -15.05d |
| PG-H-CON-EX-TW-ST-60 | Finishing Work | 2026-10-11 → 2026-10-13 (+2d) | 2026-10-19 → 2026-10-21 (+2d) |  | -18.95d → -19.7d |
| PG-H-CON-EX-TW-ST-70 | Backfilling | 2026-10-19 → 2026-10-21 (+2d) | 2026-10-26 → 2026-10-28 (+2d) |  | -18.95d → -19.7d |
| 2 | **WATER STORAGE TANK** |  | 2026-11-01 → 2026-11-03 (+2d) |  |  |
| PG-H-CON-EX-TW-IR-40 | GRP Water Tank Installation | 2026-10-26 → 2026-10-28 (+2d) | 2026-11-01 → 2026-11-03 (+2d) |  | -18.95d → -19.7d |
| B | **TOILET BUILDING WORKS** |  | 2026-11-08 → 2026-11-12 (+4d) |  |  |
| CVL | **CIVIL WORK** |  | 2026-11-07 → 2026-11-11 (+4d) |  |  |
| AR | **ARCHITECTURAL WORK** |  | 2026-11-07 → 2026-11-11 (+4d) |  |  |
| 1 | **GENERAL FINISHES** |  | 2026-11-07 → 2026-11-11 (+4d) |  |  |
| PG-H-CON-B-AR-GF-60 | Install Doors & Windows |  | 2026-10-29 → 2026-10-14 (-15d) |  | 5.5d → 18.5d |
| PG-H-CON-B-AR-GF-80 | Lockers and Furniture Installation | 2026-10-29 → 2026-11-03 (+5d) | 2026-11-07 → 2026-11-11 (+4d) |  | 5.5d → 1.6d |
| 2 | **WET AREA FINISHES** |  | 2026-10-29 → 2026-10-12 (-17d) |  |  |
| PG-H-CON-B-AR-WF-60 | Install Doors |  | 2026-10-29 → 2026-10-12 (-17d) |  | 19.3d → 34.9d |
| 3 | **ROOF FINISHES** |  | 2026-11-07 → 2026-11-11 (+4d) |  |  |
| PG-H-CON-B-AR-RF-30 | Steel ladder and Steel roof scupper Installation | 2026-11-04 → 2026-11-09 (+5d) | 2026-11-07 → 2026-11-11 (+4d) |  | 5.5d → 1.6d |
| MEP | **MEP WORK** |  | 2026-11-08 → 2026-11-12 (+4d) |  |  |
| MEC | **MECANICAL WORKS** |  | 2026-11-08 → 2026-11-12 (+4d) |  |  |
| FF | **FIRE FIGHTING SYSTEM** | 2026-11-07 → 2026-11-11 (+4d) | 2026-11-08 → 2026-11-12 (+4d) |  |  |
| PG-H-CON-B-GF-FF-10 | Fire Extinguisher Installation | 2026-11-07 → 2026-11-11 (+4d) | 2026-11-08 → 2026-11-12 (+4d) |  | 5.5d → 1.6d |
| DS | **SEWER AND DRAINAGE SYSTEM** |  | 2026-10-01 → 2026-10-07 (+6d) |  |  |
| PG-H-CON-B-GF-DR-10 | Sewer and Drainge System Main Lines Installation |  | 2026-09-26 → 2026-10-03 (+7d) |  | 23.1d → 18.6d |
| PG-H-CON-B-GF-DR-30 | Sanitaryware Installation (Final Fix) | 2026-09-29 → 2026-10-05 (+6d) | 2026-10-01 → 2026-10-07 (+6d) |  | 23.1d → 18.6d |
| HV | **HVAC SYSTEM** |  | 2026-09-28 → 2026-10-04 (+6d) |  |  |
| PG-H-CON-B-GF-AC-20 | Split AC, Grills & Diffuser Installation | 2026-09-26 A | 2026-09-28 → 2026-10-04 (+6d) | 0% → 50% | 23.1d → 18.6d |
| WS | **WATER SUPPLY SYSTEM** |  | 2026-09-29 → 2026-10-05 (+6d) |  |  |
| PG-H-CON-B-GF-WS-30 | Water Supply Accesories and Booster pump Installation |  | 2026-09-29 → 2026-10-05 (+6d) |  | 23.1d → 18.6d |
| ELC | **ELECTRICAL WORKS** |  | 2026-10-04 → 2026-10-08 (+4d) |  |  |
| PG-H-CON-B-GF-EL-20 | Electrical Light Fixtures Installation |  | 2026-10-03 → 2026-10-07 (+4d) |  | 23.1d → 18.6d |
| PG-H-CON-B-GF-EL-30 | Fire Alarm Devices Installation |  | 2026-10-03 → 2026-10-07 (+4d) |  | 23.1d → 18.6d |
| PG-H-CON-B-GF-EL-40 | Telecom & CCTV Devices Installation |  | 2026-10-03 → 2026-10-08 (+5d) |  | 23.1d → 18.6d |
| PG-H-CON-B-GF-EL-50 | Electrical & ELV Wiring Works |  | 2026-10-04 → 2026-10-08 (+4d) |  | 23.1d → 18.6d |
| TE & CO | **PROJECT CLOSOUT** |  | 2027-01-07 → 2027-01-09 (+2d) |  |  |

| ID | Task | Start | Finish | Complete | Total float |
| --- | --- | --- | --- | --- | --- |
| PG-H-PCL-10_R | Testing, Commessioning for All Systems(Remaining) |  | 2026-12-06 → 2026-12-07 (+1d) |  | -18.95d → -19.7d |
| PG-H-PCL-20 | As-Built Drawings | 2026-12-06 → 2026-12-07 (+1d) | 2026-12-27 → 2026-12-28 (+1d) |  | -14.95d → -15.7d |
| PG-H-PCL-30 | Snag list Submission | 2026-12-06 → 2026-12-07 (+1d) | 2026-12-15 → 2026-12-16 (+1d) |  | -18.95d → -19.7d |
| PG-H-PCL-40 | Snag list Closeout | 2026-12-15 → 2026-12-16 (+1d) | 2026-12-31 → 2027-01-02 (+2d) |  | -18.95d → -19.7d |
| PG-H-PCL-50 | Issuing Approvals | 2026-12-31 → 2027-01-02 (+2d) | 2027-01-04 → 2027-01-05 (+1d) |  | -18.95d → -19.7d |
| PG-H-PCL-60 | Handing Over | 2027-01-04 → 2027-01-05 (+1d) | 2027-01-07 → 2027-01-09 (+2d) |  | -18.95d → -19.7d |
| TABUK | **TABUK** |  | 2027-01-27 → 2027-02-03 (+7d) |  |  |
| PR | **PROCUREMENT** |  | 2026-10-19 → 2026-10-21 (+2d) |  |  |
| 1 | **LONG LEAD ITEMS** |  | 2026-10-19 → 2026-10-21 (+2d) |  |  |
| 3 | **MANUFACTURE / FABRICATION** |  | 2026-10-12 → 2026-10-14 (+2d) |  |  |
| 1 | **EXTERNAL / LANDSCAPE WORK** |  | 2026-10-04 → 2026-09-10 (-24d) |  |  |
| PG-T-PR-LL-LS-MF-30_R | Fence, gates and accessories(Remaining) |  | 2026-09-26 → 2026-09-10 A (-16d) | 90% → 100% | 7.11d → none |
| PG-T-PR-LL-LS-MF-10_R | Bike and Walk Path Materials(Remaining) |  | 2026-09-28 → 2026-09-05 A (-23d) | 90% → 100% | 43.36d → none |
| PG-T-PR-LL-LS-MF-20_R | Benches, Seats (Rectangular & Circular)(Remaining) |  | 2026-10-04 → 2026-09-07 A (-27d) | 70% → 100% | 43.96d → none |
| 2 | **SPORTS & RECREATIONAL FACILITIES WORK** |  | 2026-10-07 → 2026-10-14 (+7d) |  |  |
| PG-T-PR-LL-SP-MF-10_R | Football Playground Materials (Flooring, goal post, nets, paints, etc)(Remaining) |  | 2026-09-28 → 2026-09-02 A (-26d) | 90% → 100% | 51.7d → none |
| PG-T-PR-LL-SP-MF-20_R | Basketball Playground Materials (Flooring, basketball poll, nets, paints, etc)(Remaining) |  | 2026-09-28 → 2026-09-04 A (-24d) | 90% → 100% | 45.9d → none |
| PG-T-PR-LL-SP-MF-30_R | Padel Playgound Materials (Flooring, fence, tempered glass, etc)(Remaining) |  | 2026-09-28 → 2026-09-05 A (-23d) | 90% → 100% | 25.3d → none |
| PG-T-PR-LL-SP-MF-40_R | Tartan Floor(Remaining) |  | 2026-09-28 → 2026-09-19 A (-9d) | 90% → 100% | 43.5d → none |
| PG-T-PR-LL-SP-MF-50 | Air Dome Materials |  | 2026-10-07 → 2026-10-14 (+7d) |  | -35.4d → -41.4d |
| 5 | **METAL WORK** |  | 2026-10-12 → 2026-09-27 (-15d) |  |  |
| PG-T-PR-LL-MT-MF-10_R | Metal Doors(Remaining) |  | 2026-10-10 → 2026-09-17 A (-23d) | 50% → 100% | 27.8d → none |
| PG-T-PR-LL-MT-MF-20_R | Curtain Wall(Remaining) |  | 2026-10-12 → 2026-09-27 A (-15d) | 40% → 100% | 25.6d → none |
| 7 | **PLUMBING WORK** |  | 2026-09-30 → 2026-09-14 (-16d) |  |  |
| PG-T-PR-LL-PB-MF-20_R | GRP Sectional Panel Water Tanks (4x3x3m)(Remaining) |  | 2026-09-30 → 2026-09-14 A (-16d) | 80% → 100% | 23.66d → none |
| PG-T-PR-LL-EL-MF-40_R | Lighting Fixtures(Remaining) |  | 2026-09-30 A | 80% → 100% | 10.5d → none |
| PG-T-PR-LL-EL-MF-10_R | Main Distribution Board(Remaining) |  | 2026-09-30 → 2026-09-28 A (-2d) | 80% → 100% | -9.1d → none |
| PG-T-PR-LL-EL-MF-20_R | Power Panels (Pump, Street Light)(Remaining) |  | 2026-09-30 → 2026-09-26 A (-4d) | 80% → 100% | -4.6d → none |
| PG-T-PR-LL-EL-MF-30_R | Site Lighting Poles(Remaining) |  | 2026-09-30 → 2026-09-29 A (-1d) | 80% → 100% | 1.7d → none |
| PG-T-PR-LL-EL-MF-50_R | Grounding System Materials (Earth pit rod, LPS, etc)(Remaining) |  | 2026-09-27 A | 80% → 100% | -9.7d → none |
| PG-T-PR-LL-EL-MF-60_R | Telecommunications & Data System Materials (Telephone outlet, CCTV, etc)(Remaining) |  | 2026-09-30 → 2026-09-29 A (-1d) | 80% → 100% | 10.3d → none |
| PG-T-PR-LL-EL-MF-70_R | Security and Access Control System Materials(Remaining) |  | 2026-09-30 A | 80% → 100% | 27.05d → none |
| PG-T-PR-LL-EL-MF-80_R | Fire Alarm System Materials(Remaining) |  | 2026-09-30 A | 80% → 100% | 13d → none |
| 4 | **DELIVERY TO SITE** |  | 2026-10-19 → 2026-10-21 (+2d) |  |  |
| 1 | **EXTERNAL / LANDSCAPE WORK** |  | 2026-09-27 → 2026-10-04 (+7d) |  |  |
| PG-T-PR-LL-LS-DL-10_R | Bike and Walk Path Materials(Remaining) |  | 2026-09-26 → 2026-09-28 A (+2d) | 95% → 100% | 43.36d → none |
| PG-T-PR-LL-LS-DL-20_R | Benches, Seats (Rectangular & Circular)(Remaining) |  | 2026-09-27 → 2026-10-04 (+7d) |  | 43.96d → 41d |
| 2 | **SPORTS & RECREATIONAL FACILITIES WORK** |  | 2026-10-14 → 2026-10-21 (+7d) |  |  |
| PG-T-PR-LL-SP-DL-40_R | Tartan Floor(Remaining) |  | 2026-09-27 → 2026-10-04 (+7d) |  | 43.5d → 38.4d |
| PG-T-PR-LL-SP-DL-10_R | Football Playground Materials (Flooring, goal post, nets, paints, etc)(Remaining) |  | 2026-09-27 → 2026-10-04 (+7d) |  | 51.7d → 47.65d |
| PG-T-PR-LL-SP-DL-20_R | Basketball Playground Materials (Flooring, basketball poll, nets, paints, etc)(Remaining) |  | 2026-09-27 → 2026-10-04 (+7d) |  | 45.9d → 40.8d |
| PG-T-PR-LL-SP-DL-30_R | Padel Playgound Materials (Fence, tempered glass, etc)(Remaining) |  | 2026-09-27 → 2026-10-04 (+7d) |  | 25.3d → 20.15d |
| PG-T-PR-LL-SP-DL-50 | Air Dome Materials |  | 2026-10-14 → 2026-10-21 (+7d) | 35% → 50% | -35.4d → -41.4d |
| 5 | **METAL WORK** |  | 2026-10-19 → 2026-10-08 (-11d) |  |  |
| PG-T-PR-LL-MT-DL-10_R | Metal Doors(Remaining) |  | 2026-10-14 → 2026-10-04 (-10d) | 65% → 90% | 27.8d → 37.8d |
| PG-T-PR-LL-MT-DL-20_R | Curtain Wall(Remaining) |  | 2026-10-19 → 2026-10-08 (-11d) |  | 25.6d → 34.6d |
| 7 | **PLUMBING WORK** |  | 2026-09-28 → 2026-10-04 (+6d) |  |  |
| PG-T-PR-LL-PB-DL-20_R | GRP Sectional Panel Water Tanks (4x3x3m)(Remaining) |  | 2026-09-28 → 2026-10-04 (+6d) | 75% → 90% | 23.66d → 22.5d |
| 8 | **IRRIGATION WORK** |  | 2026-09-27 → 2026-10-03 (+6d) |  |  |
| PG-T-PR-LL-IR-DL-10_R | HDPE Pipes(Remaining) |  | 2026-09-27 → 2026-09-22 A (-5d) | 70% → 100% | -20.35d → none |
| PG-T-PR-LL-IR-DL-20_R | Irrigation Control System(Remaining) |  | 2026-09-27 → 2026-10-03 (+6d) | 60% → 90% | -20.75d → -24.05d |
| 9 | **ELECTRICAL WORK** |  | 2026-10-04 → 2026-10-05 (+1d) |  |  |
| PG-T-PR-LL-EL-DL-10_R | Main Distribution Board(Remaining) |  | 2026-09-27 → 2026-10-04 (+7d) |  | -9.1d → -13.6d |
| PG-T-PR-LL-EL-DL-20_R | Power Panels (Pump, Street Light)(Remaining) |  | 2026-09-27 → 2026-10-04 (+7d) |  | -4.6d → -9.1d |
| PG-T-PR-LL-EL-DL-30_R | Site Lighting Poles(Remaining) |  | 2026-09-27 → 2026-10-04 (+7d) |  | 1.7d → -2.8d |
| PG-T-PR-LL-EL-DL-40_R | Lighting Fixtures(Remaining) |  | 2026-09-27 → 2026-10-04 (+7d) |  | 10.5d → 4.8d |
| PG-T-PR-LL-EL-DL-50_R | Grounding System Materials (Earth pit rod, LPS, etc)(Remaining) |  | 2026-09-27 → 2026-10-03 (+6d) |  | -9.7d → -13.6d |
| PG-T-PR-LL-EL-DL-60_R | Telecommunications & Data System Materials (Telephone outlet, CCTV, etc)(Remaining) |  | 2026-10-04 → 2026-10-05 (+1d) | 75% → 80% | 10.3d → 10.2d |
| PG-T-PR-LL-EL-DL-70_R | Security and Access Control System Materials(Remaining) |  | 2026-10-04 → 2026-10-05 (+1d) | 75% → 80% | 27.05d → 27.75d |
| PG-T-PR-LL-EL-DL-80_R | Fire Alarm System Materials(Remaining) |  | 2026-10-04 → 2026-10-05 (+1d) | 75% → 80% | 13d → 12.6d |
| 1 | **EXTERNAL / LANDSCAPE WORK** |  | 2026-09-27 → 2026-10-03 (+6d) |  |  |
| PG-T-PR-SL-LS-DL-60_R | Traffic Signages(Remaining) |  | 2026-09-27 → 2026-10-03 (+6d) | 85% → 90% | 31.66d → 29.2d |
| PG-T-PR-SL-LS-DL-70_R | Trees(Remaining) |  | 2026-09-27 → 2026-10-03 (+6d) | 85% → 90% | 31.66d → 29.2d |
| PG-T-PR-SL-LS-DL-80_R | Lawn(Remaining) |  | 2026-09-27 → 2026-10-03 (+6d) | 85% → 90% | 53.46d → 48.5d |
| PG-T-PR-SL-MT-DL-10_R | Galvanized Steel Ladder(Remaining) | 2026-09-26 → 2026-09-23 A (-3d) |  | 0% → 50% |  |
| PG-T-PR-SL-MT-DL-20_R | Galvanized Steel Roof Scupper(Remaining) | 2026-09-26 → 2026-09-24 A (-2d) |  | 0% → 50% |  |
| PG-T-PR-SL-MT-DL-30_R | Galvanized Steel Cover with frame(Remaining) | 2026-09-26 → 2026-09-24 A (-2d) |  | 0% → 50% |  |
| 8 | **IRRIGATION WORK** |  | 2026-09-26 → 2026-10-03 (+7d) |  |  |
| PG-T-PR-SL-IR-DL-10_R | Gate Valve including valve box(Remaining) |  | 2026-09-26 → 2026-10-03 (+7d) |  | -20d → -24.5d |
| PG-T-PR-SL-IR-DL-20_R | Bulbblers and Spreyers(Remaining) |  | 2026-09-26 → 2026-10-03 (+7d) |  | -19.1d → -23.6d |

| ID | Task | Start | Finish | Complete | Total float |
| --- | --- | --- | --- | --- | --- |
| 9 | **ELECTRICAL WORK** |  | 2026-10-01 → 2026-10-06 (+5d) |  |  |
| PG-T-PR-SL-EL-DL-10_R | Wiring Devices Materials(Remaining) |  | 2026-10-01 → 2026-10-06 (+5d) | 50% → 70% | 2.3d → -1d |
| 10 | **FIRE FIGHTING WORK** |  | 2026-10-05 → 2026-10-07 (+2d) |  |  |
| PG-T-PR-SL-FF-DL-10_R | Fire Extinguishers(Remaining) | 2026-09-26 → 2026-09-27 A (+1d) | 2026-10-05 → 2026-10-07 (+2d) | 0% → 50% |  |
| CO | **CONSTRUCTION STAGE** |  | 2027-01-20 → 2027-01-24 (+4d) |  |  |
| EX.SIT | **PLAYGROUND AND LANDSCAPING WORKS** |  | 2027-01-20 → 2027-01-24 (+4d) |  |  |
| 1 | **PLAYGROUND WORKS** |  | 2026-11-17 → 2026-11-23 (+6d) |  |  |
| FP | **FOOTBALL PLAYGROUND WORKS** |  | 2026-10-22 → 2026-10-27 (+5d) |  |  |
| PG-T-CON-EX-FB-90 | Turfing / Seeding Works |  | 2026-09-30 → 2026-10-06 (+6d) |  | 47.25d → 43.85d |
| PG-T-CON-EX-FB-120 | Installation of Lighting System |  | 2026-09-29 → 2026-10-05 (+6d) | 75% → 80% | 47.25d → 43.85d |
| PG-T-CON-EX-FB-60 | Goal Post Installation & Alignment |  | 2026-10-05 → 2026-10-11 (+6d) | 70% → 75% | 47.25d → 43.85d |
| PG-T-CON-EX-FB-110 | Install Playground Benches |  | 2026-10-11 → 2026-10-15 (+4d) | 60% → 70% | 47.25d → 43.85d |
| PG-T-CON-EX-FB-100 | Markings and Signages | 2026-10-11 → 2026-10-15 (+4d) | 2026-10-22 → 2026-10-27 (+5d) |  | 47.25d → 43.85d |
| BP | **BASKETBALL PLAYGROUND WORKS** |  | 2026-10-27 → 2026-11-02 (+6d) |  |  |
| PG-T-CON-EX-BB-60 | Basketball Pole Installation & Alignment |  | 2026-10-05 → 2026-10-11 (+6d) | 75% → 80% | 43.5d → 38.4d |
| PG-T-CON-EX-BB-80 | Court Line Marking |  | 2026-09-29 → 2026-10-06 (+7d) |  | 43.5d → 38.4d |
| PG-T-CON-EX-BB-100 | Install Playground Benches |  | 2026-10-27 → 2026-11-02 (+6d) |  | 43.5d → 38.4d |
| PG-T-CON-EX-BB-90 | Backboard & Hoop Installation | 2026-10-05 → 2026-10-11 (+6d) | 2026-10-25 → 2026-10-31 (+6d) |  | 43.5d → 38.4d |
| PP | **PADEL PLAYGROUND WORKS** |  | 2026-11-17 → 2026-11-23 (+6d) |  |  |
| PG-T-CON-EX-PD-30_R | Tartan Flooring Layers(Remaining) |  | 2026-10-27 → 2026-11-02 (+6d) | 85% → 90% | 25.3d → 20.15d |
| PG-T-CON-EX-PD-40 | Steel Structure & Fence Supports Installation |  | 2026-09-30 → 2026-10-07 (+7d) |  | 25.3d → 20.15d |
| PG-T-CON-EX-PD-60 | Chain Link Fence & Gates Installation |  | 2026-10-03 → 2026-10-10 (+7d) |  | 25.3d → 20.15d |
| PG-T-CON-EX-PD-80 | Install Playground Benches |  | 2026-11-17 → 2026-11-23 (+6d) |  | 25.3d → 20.15d |
| PG-T-CON-EX-PD-50 | Tempered Glass Installation | 2026-10-03 → 2026-10-10 (+7d) | 2026-10-24 → 2026-10-31 (+7d) |  | 25.3d → 20.15d |
| PG-T-CON-EX-PD-70 | Court Accessories Installation | 2026-10-27 → 2026-11-02 (+6d) | 2026-11-15 → 2026-11-21 (+6d) |  | 25.3d → 20.15d |
| GN.SI | **GENERAL SITE WORKS** |  | 2027-01-20 → 2027-01-24 (+4d) |  |  |
| 1 | **FENCE WORKS** |  | 2026-10-08 → 2026-10-14 (+6d) |  |  |
| PG-T-CON-EX-GN-FN-30 | Installation of Galvanized Steel Posts & Framing |  | 2026-09-27 → 2026-10-04 (+7d) |  | 7.11d → 5.05d |
| PG-T-CON-EX-GN-FN-40 | Fixing of Chain Link Mesh, Tensioning & Bracing |  | 2026-10-01 → 2026-10-07 (+6d) | 25% → 40% | 7.11d → 5.05d |
| PG-T-CON-EX-GN-FN-50 | Installation of Gates | 2026-10-01 → 2026-10-07 (+6d) | 2026-10-08 → 2026-10-14 (+6d) |  | 7.11d → 5.05d |
| 5 | **MECHANICAL WORK** |  | 2026-10-19 → 2026-10-25 (+6d) |  |  |
| 2 | **STORM WATER AND UTILITY WORK** |  | 2026-10-13 → 2026-10-19 (+6d) |  |  |
| PG-T-CON-EX-GN-M-30 | Manhole Installation |  | 2026-09-27 → 2026-10-03 (+6d) | 75% → 80% | -29.4d → -32.65d |
| PG-T-CON-EX-GN-M-40 | 150 mm uPVC pipe laying & jointing |  | 2026-09-30 → 2026-10-05 (+5d) | 25% → 50% | -29.4d → -32.65d |
| PG-T-CON-EX-GN-M-50 | Concrete Encasement | 2026-09-30 → 2026-10-06 (+6d) | 2026-10-04 → 2026-10-08 (+4d) |  | -29.4d → -32.65d |
| PG-T-CON-EX-GN-M-60 | Backfilling & Compaction | 2026-10-04 → 2026-10-10 (+6d) | 2026-10-07 → 2026-10-12 (+5d) |  | -29.4d → -32.65d |
| PG-T-CON-EX-GN-M-70 | Surface Reinstatement & Civil Works | 2026-10-08 → 2026-10-14 (+6d) | 2026-10-13 → 2026-10-19 (+6d) |  | -29.4d → -32.65d |
| IR.SY | **IRRIGATION SYSTEM WORKS** |  | 2026-10-08 → 2026-10-14 (+6d) |  |  |
| PG-T-CON-EX-GN-M-80_R | Installation of HDPE Irrigation Pipe Network with Gate Valve and Box(Remaining) |  | 2026-10-07 → 2026-10-12 (+5d) |  | -29.4d → -32.65d |
| PG-T-CON-EX-GN-M-100 | Installation of Bubblers and Sprinklers |  | 2026-10-08 → 2026-10-14 (+6d) |  | -29.4d → -32.65d |
| PG-T-CON-EX-GN-M-90 | Installation of Irrigation Control System |  | 2026-10-08 → 2026-10-13 (+5d) |  | -29.4d → -32.65d |
| 1 | **FIRE PROTECTION SYSTEM** | 2026-10-13 → 2026-10-19 (+6d) | 2026-10-19 → 2026-10-25 (+6d) |  |  |
| PG-T-CON-EX-GN-M-110 | Fire Extinguisher Installation | 2026-10-13 → 2026-10-19 (+6d) | 2026-10-19 → 2026-10-25 (+6d) |  | -29.4d → -32.65d |
| 2 | **ELECTRICAL WORK** |  | 2026-12-30 → 2027-01-03 (+4d) |  |  |
| 1 | **POWER, LIGHTING & GROUNDING** |  | 2026-11-19 → 2026-11-24 (+5d) |  |  |
| PG-T-CON-EX-GN-E-20_R | Foundation Work for Site Lighting Poles(Remaining) |  | 2026-10-01 → 2026-10-07 (+6d) | 75% → 80% | -13.75d → -17.2d |
| PG-T-CON-EX-GN-E-30 | Lightning Protection System (LPS) |  | 2026-10-21 → 2026-10-26 (+5d) |  | -29.4d → -32.65d |
| PG-T-CON-EX-GN-E-40 | KWH Meter and MDB Installation |  | 2026-10-26 → 2026-11-01 (+6d) |  | -29.4d → -32.65d |
| PG-T-CON-EX-GN-E-50 | Power Panels and Distribution Boards |  | 2026-11-02 → 2026-11-08 (+6d) |  | -29.4d → -32.65d |
| PG-T-CON-EX-GN-E-60 | Site Lighting Poles Installation |  | 2026-11-08 → 2026-11-12 (+4d) | 20% → 40% | -29.4d → -32.65d |
| PG-T-CON-EX-GN-E-70 | Wiring Works | 2026-11-08 → 2026-11-12 (+4d) | 2026-11-12 → 2026-11-17 (+5d) |  | -29.4d → -32.65d |
| PG-T-CON-EX-GN-E-80 | Lighting Fixtures with outlets Installation | 2026-11-12 → 2026-11-17 (+5d) | 2026-11-19 → 2026-11-24 (+5d) |  | -29.4d → -32.65d |
| 2 | **ELV SYSTEMS (TELECOM, DATA, AV & CCTV)** |  | 2026-12-16 → 2026-12-17 (+1d) |  |  |
| PG-T-CON-EX-GN-E-100 | Fiber Optic Pull Box Installation |  | 2026-11-26 → 2026-11-30 (+4d) | 10% → 20% | -25.25d → -26.3d |
| PG-T-CON-EX-GN-E-110 | Telephone and Data Outlet Installation |  | 2026-11-30 → 2026-12-03 (+3d) | 10% → 20% | -25.25d → -26.3d |
| PG-T-CON-EX-GN-E-120 | Telecom Equipment and AV HDMI Installation |  | 2026-12-05 → 2026-12-07 (+2d) | 10% → 20% | -25.25d → -26.3d |
| PG-T-CON-EX-GN-E-130 | CCTV Rack / Cabinet Installation |  | 2026-12-08 → 2026-12-10 (+2d) | 10% → 20% | -25.25d → -26.3d |
| PG-T-CON-EX-GN-E-140 | NVR and CCTV Monitor Installation |  | 2026-12-13 → 2026-12-14 (+1d) | 10% → 20% | -25.25d → -26.3d |
| PG-T-CON-EX-GN-E-150 | IP Camera Installation |  | 2026-12-16 → 2026-12-17 (+1d) | 10% → 20% | -25.25d → -26.3d |
| PG-T-CON-EX-GN-E-90 | ELV Containment & Cabling Works |  | 2026-11-23 → 2026-11-26 (+3d) | 10% → 20% | -29.4d → -32.65d |
| 3 | **FIRE ALARM SYSTEM** | 2026-11-23 → 2026-11-26 (+3d) | 2026-12-30 → 2027-01-03 (+4d) |  |  |
| PG-T-CON-EX-GN-E-160 | Fire Alarm Containment & Cabling | 2026-11-23 → 2026-11-26 (+3d) | 2026-12-02 → 2026-12-06 (+4d) |  | -29.4d → -32.65d |
| PG-T-CON-EX-GN-E-170 | Fire Alarm Control Panel (FACP) Installation | 2026-12-02 → 2026-12-06 (+4d) | 2026-12-12 → 2026-12-15 (+3d) |  | -29.4d → -32.65d |
| PG-T-CON-EX-GN-E-180 | Initiating Devices (Detectors & Manual Pull Station) | 2026-12-12 → 2026-12-15 (+3d) | 2026-12-21 → 2026-12-24 (+3d) |  | -29.4d → -32.65d |
| PG-T-CON-EX-GN-E-190 | Notification Appliances (Strobe with Sounder) | 2026-12-21 → 2026-12-24 (+3d) | 2026-12-30 → 2027-01-03 (+4d) |  | -29.4d → -32.65d |
| 3 | **PARKING WORK** |  | 2026-12-30 → 2027-01-03 (+4d) |  |  |
| PG-T-CON-EX-GN-PR-10 | Installlation of Parking Accessories |  | 2026-12-17 → 2026-12-19 (+2d) |  | -25.25d → -26.3d |
| PG-T-CON-EX-GN-PR-30 | Marking & Signages | 2026-12-22 → 2026-12-26 (+4d) | 2026-12-30 → 2027-01-03 (+4d) |  | -29.4d → -32.65d |
| 4 | **SERVICE CONNECTION** |  | 2027-01-20 → 2027-01-24 (+4d) |  |  |
| PG-T-CON-EX-GN-SC-20 | HDPE Pipe Laying & Valve Installation |  | 2026-12-30 → 2027-01-03 (+4d) |  | -29.4d → -32.65d |

| ID | Task | Start | Finish | Complete | Total float |
| --- | --- | --- | --- | --- | --- |
| PG-T-CON-EX-GN-SC-30 | Connection to City Network | 2026-12-30 → 2027-01-03 (+4d) | 2027-01-11 → 2027-01-14 (+3d) |  | -29.4d → -32.65d |
| PG-T-CON-EX-GN-SC-40 | Backfilling | 2027-01-11 → 2027-01-14 (+3d) | 2027-01-20 → 2027-01-24 (+4d) |  | -29.4d → -32.65d |
| PG-T-CON-EX-LS-HS-30_R | Stamped Concrete Floor(Remaining) |  | 2026-11-07 → 2026-11-09 (+2d) |  | 7.46d → 8.1d |
| PG-T-CON-EX-LS-HS-50_R | Install Recycled Precast Concrete Seats(Remaining) |  |  | 65% → 90% | -3.34d → -2.7d |
| PG-T-CON-EX-LS-HS-20_R | Interlock Tiles Grey Scale with Black Marble Chips(Remaining) |  | 2026-11-07 → 2026-11-09 (+2d) |  | -3.34d → -2.7d |
| PG-T-CON-EX-LS-SS-10 | Planting Trees |  | 2026-11-19 → 2026-11-22 (+3d) |  | -3.34d → -2.7d |
| W.T | **TANK WORKS** |  | 2026-11-04 → 2026-11-08 (+4d) |  |  |
| 1 | **SEPTIC TANK** |  | 2026-10-29 → 2026-11-02 (+4d) |  |  |
| PG-T-CON-EX-TW-ST-40 | RCC Wall |  | 2026-10-05 → 2026-10-08 (+3d) | 0% → 40% | -3.34d → -2.7d |
| PG-T-CON-EX-TW-ST-50 | RCC Slab | 2026-08-20 A → 2026-10-08 (+49d) | 2026-10-20 → 2026-10-24 (+4d) |  | -3.34d → -2.7d |
| PG-T-CON-EX-TW-ST-60 | Finishing Work | 2026-10-21 → 2026-10-24 (+3d) | 2026-10-29 → 2026-11-02 (+4d) |  | -3.34d → -2.7d |
| 2 | **WATER STORAGE TANK** |  | 2026-11-04 → 2026-11-08 (+4d) |  |  |
| PG-T-CON-EX-TW-IR-40 | GRP Water Tank Installation | 2026-10-31 → 2026-11-02 (+2d) | 2026-11-04 → 2026-11-08 (+4d) |  | -3.34d → -2.7d |
| AD | **AIR DOME CONSTRUCTION** |  | 2027-01-14 → 2027-01-21 (+7d) |  |  |
| 1 | **CIVIL WORK** |  | 2026-10-27 → 2026-11-03 (+7d) |  |  |
| PG-T-CON-EX-AD-CL-70 | Installation of Steel Cable Structural System | 2026-10-07 → 2026-10-14 (+7d) | 2026-10-18 → 2026-10-25 (+7d) |  | -35.4d → -41.4d |
| PG-T-CON-EX-AD-CL-80 | Installation of Membrane System | 2026-10-18 → 2026-10-25 (+7d) | 2026-10-27 → 2026-11-03 (+7d) |  | -35.4d → -41.4d |
| 2 | **ARCHITECTURAL WORK** | 2026-12-16 → 2026-12-23 (+7d) | 2027-01-14 → 2027-01-21 (+7d) |  |  |
| PG-T-CON-EX-AD-AR-10 | Installation of Thermal Insulation System | 2026-12-16 → 2026-12-23 (+7d) | 2026-12-24 → 2026-12-31 (+7d) |  | -35.4d → -41.4d |
| PG-T-CON-EX-AD-AR-40 | Final Fixing of Accessories & Finishes | 2026-12-24 → 2026-12-31 (+7d) | 2027-01-02 → 2027-01-09 (+7d) |  | -35.4d → -41.4d |
| PG-T-CON-EX-AD-AR-20 | Installation of Doors & Access Systems | 2027-01-02 → 2027-01-09 (+7d) | 2027-01-09 → 2027-01-16 (+7d) |  | -35.4d → -41.4d |
| PG-T-CON-EX-AD-AR-30 | Installation of Logo | 2027-01-09 → 2027-01-16 (+7d) | 2027-01-14 → 2027-01-21 (+7d) |  | -35.4d → -41.4d |
| 3 | **MECHANICAL WORK** | 2026-10-27 → 2026-11-03 (+7d) | 2026-11-23 → 2026-11-30 (+7d) |  |  |
| PG-T-CON-EX-AD-ME-10 | Installation of Main Air Package Units | 2026-10-27 → 2026-11-03 (+7d) | 2026-11-02 → 2026-11-09 (+7d) |  | -35.4d → -41.4d |
| PG-T-CON-EX-AD-ME-20 | Installation of Backup Air Package Unit | 2026-11-02 → 2026-11-09 (+7d) | 2026-11-08 → 2026-11-15 (+7d) |  | -35.4d → -41.4d |
| PG-T-CON-EX-AD-ME-30 | Installation of Complete HVAC System | 2026-11-16 → 2026-11-23 (+7d) | 2026-11-23 → 2026-11-30 (+7d) |  | -34.4d → -40.4d |
| 4 | **ELECTRICAL WORK** | 2026-11-08 → 2026-11-15 (+7d) | 2026-12-16 → 2026-12-23 (+7d) |  |  |
| PG-T-CON-EX-AD-EL-10 | Installation of Electrical Boxes & MDBs | 2026-11-08 → 2026-11-15 (+7d) | 2026-11-16 → 2026-11-23 (+7d) |  | -35.4d → -41.4d |
| PG-T-CON-EX-AD-EL-20 | Installation of Lighting System | 2026-11-16 → 2026-11-23 (+7d) | 2026-11-24 → 2026-12-01 (+7d) |  | -35.4d → -41.4d |
| PG-T-CON-EX-AD-EL-30 | Electrical Connections to Main Power Source (Excluding kWh Meter) | 2026-11-24 → 2026-12-01 (+7d) | 2026-11-30 → 2026-12-07 (+7d) |  | -35.4d → -41.4d |
| PG-T-CON-EX-AD-EL-40 | Installation of Backup Generator | 2026-11-30 → 2026-12-07 (+7d) | 2026-12-07 → 2026-12-14 (+7d) |  | -35.4d → -41.4d |
| PG-T-CON-EX-AD-EL-50 | Installation of Smart Dome System | 2026-12-07 → 2026-12-14 (+7d) | 2026-12-16 → 2026-12-23 (+7d) |  | -35.4d → -41.4d |
| B | **TOILET BUILDING WORKS** |  | 2026-10-20 → 2026-10-13 (-7d) |  |  |
| CVL | **CIVIL WORK** |  | 2026-10-19 → 2026-10-12 (-7d) |  |  |
| AR | **ARCHITECTURAL WORK** |  | 2026-10-19 → 2026-10-12 (-7d) |  |  |
| 2 | **WET AREA FINISHES** |  | 2026-10-17 → 2026-10-11 (-6d) |  |  |
| PG-T-CON-B-AR-WF-60 | Install Doors |  | 2026-10-17 → 2026-10-11 (-6d) | 25% → 50% | 27.8d → 32.9d |
| 3 | **ROOF FINISHES** |  | 2026-10-19 → 2026-10-12 (-7d) |  |  |
| PG-T-CON-B-AR-RF-30 | Steel ladder and Steel roof scupper Installation |  | 2026-10-19 → 2026-10-12 (-7d) |  | 25.6d → 31.95d |
| MEP | **MEP WORK** |  | 2026-10-20 → 2026-10-13 (-7d) |  |  |
| MEC | **MECANICAL WORKS** |  | 2026-10-20 → 2026-10-13 (-7d) |  |  |
| FF | **FIRE FIGHTING SYSTEM** |  | 2026-10-20 → 2026-10-13 (-7d) |  |  |
| PG-T-CON-B-GF-FF-10 | Fire Extinguisher Installation |  | 2026-10-20 → 2026-10-13 (-7d) | 25% → 30% | 26.8d → 33.75d |
| DS | **SEWER AND DRAINAGE SYSTEM** |  | 2026-10-05 → 2026-10-10 (+5d) |  |  |
| PG-T-CON-B-GF-DR-30 | Sanitaryware Installation (Final Fix) |  | 2026-10-05 → 2026-10-10 (+5d) |  | 35.55d → 31.95d |
| HV | **HVAC SYSTEM** |  | 2026-10-06 → 2026-10-11 (+5d) |  |  |
| PG-T-CON-B-GF-AC-20 | Split AC, Grills & Diffuser Installation |  | 2026-10-06 → 2026-10-11 (+5d) |  | 38.9d → 35.8d |
| WS | **WATER SUPPLY SYSTEM** |  | 2026-10-04 → 2026-10-08 (+4d) |  |  |
| PG-T-CON-B-GF-WS-30 | Water Supply Accesories and Booster pump Installation |  | 2026-10-04 → 2026-10-08 (+4d) |  | 35.55d → 31.95d |
| TE & CO | **PROJECT CLOSOUT** |  | 2027-01-27 → 2027-02-03 (+7d) |  |  |
| PG-T-PCL-10_R | Testing, Commessioning for All Systems(Remaining) |  | 2027-01-14 → 2027-01-21 (+7d) | 45% → 50% | -35.4d → -41.4d |
| PG-T-PCL-20 | As-Built Drawings |  | 2027-01-21 → 2027-01-28 (+7d) |  | -32.46d → -39d |
| PG-T-PCL-30 | Snag list Submission | 2027-01-14 → 2027-01-21 (+7d) | 2027-01-17 → 2027-01-24 (+7d) |  | -35.4d → -41.4d |
| PG-T-PCL-40 | Snag list Closeout | 2027-01-17 → 2027-01-24 (+7d) | 2027-01-25 → 2027-02-01 (+7d) |  | -35.4d → -41.4d |
| PG-T-PCL-50 | Issuing Approvals | 2027-01-25 → 2027-02-01 (+7d) | 2027-01-26 → 2027-02-02 (+7d) |  | -35.4d → -41.4d |
| PG-T-PCL-60 | Handing Over | 2027-01-26 → 2027-02-02 (+7d) | 2027-01-27 → 2027-02-03 (+7d) |  | -35.4d → -41.4d |

## Version 4 (data date 2026-10-09, saved 2026-10-10, file 02. MLTX-02-003-UPS Level 5 - 2026-10-11.xer)

Note of the change: Weekly folders named by the Thursday the week ends on: a report dated after one Thursday up to the next goes in the next Thursday's folder (26-Oct → W05 - 29-Oct-2026); all weeks moved accordingly, W00 removed

Last finish 2027-02-03 → 2027-02-10 (+7d).

Changed:

| ID | Task | Start | Finish | Complete | Total float |
| --- | --- | --- | --- | --- | --- |
| MS | **MILESTONES** |  | 2027-02-03 → 2027-02-10 (+7d) |  |  |
| 1 | **GENERAL MILESTONES** |  | 2027-02-03 → 2027-02-10 (+7d) |  |  |
| PG-GN-MS-30_R | Project Durations(Remaining) |  | 2026-12-27 → 2027-01-03 (+7d) |  | -8.75d → -14.75d |
| PG-GN-MS-20 | Project Completion Date | 2027-02-03 → 2027-02-10 (+7d) | 2027-02-03 → 2027-02-10 (+7d) |  | -41.4d → -47.4d |
| 2 | **CONTRACUAL MILESTONES** |  | 2027-02-03 → 2027-02-10 (+7d) |  |  |
| PG-IN-MS-30 | Completion of Toilet Building | 2026-11-22 → 2026-11-28 (+6d) | 2026-11-22 → 2026-11-28 (+6d) |  | -0.05d → -5.5d |
| PG-IN-MS-50 | Completion of Playground Works | 2026-12-09 → 2026-12-14 (+5d) | 2026-12-09 → 2026-12-14 (+5d) |  | 6.3d → 2.65d |
| PG-IN-MS-40 | Completion of Landscape Works | 2027-01-24 → 2027-01-25 (+1d) | 2027-01-24 → 2027-01-25 (+1d) |  | -32.65d → -33.05d |
| PG-IN-MS-60 | Substantial Completion - All Works | 2027-02-03 → 2027-02-10 (+7d) | 2027-02-03 → 2027-02-10 (+7d) |  | -41.4d → -47.4d |
| QASSIM | **QASSIM** |  | 2027-01-24 → 2027-01-31 (+7d) |  |  |
| ENG | **ENGINEERING** |  | 2026-10-04 → 2026-10-11 (+7d) |  |  |
| 1 | **SHOP DRAWINGS SUBMITTALS** |  | 2026-10-04 → 2026-10-11 (+7d) |  |  |
| 4 | **MECHANICAL DRAWINGS** |  | 2026-10-04 → 2026-10-11 (+7d) |  |  |
| 4 | **AIR DOME** |  | 2026-10-04 → 2026-10-11 (+7d) |  |  |
| PG-Q-EN-ME-SD-SB-100 | Air Package and HVAC System Drawings |  | 2026-10-04 → 2026-10-11 (+7d) |  | -32.8d → -38.8d |
| 5 | **ELECTRICAL DRAWINGS** |  | 2026-10-04 → 2026-10-11 (+7d) |  |  |
| 4 | **AIR DOME** |  | 2026-10-04 → 2026-10-11 (+7d) |  |  |
| PG-Q-EN-EL-SD-SB-120 | Power & Lighting System Drawings |  | 2026-10-03 → 2026-10-10 (+7d) |  | -32d → -38d |
| PG-Q-EN-EL-SD-SB-130 | Generators Details |  | 2026-10-04 → 2026-10-11 (+7d) |  | -32.5d → -38.5d |
| PG-Q-EN-EL-SD-SB-140 | Smart Dome System Drawings |  | 2026-10-04 → 2026-10-11 (+7d) |  | -32.7d → -38.7d |
| PR | **PROCUREMENT** |  | 2026-11-17 → 2026-11-24 (+7d) |  |  |
| 1 | **LONG LEAD ITEMS** |  | 2026-11-17 → 2026-11-24 (+7d) |  |  |
| 3 | **MANUFACTURE / FABRICATION** |  | 2026-10-31 → 2026-11-07 (+7d) |  |  |
| 5 | **METAL WORK** |  | 2026-10-31 → 2026-11-07 (+7d) |  |  |
| PG-Q-PR-LL-MT-MF-20_R | Curtain Wall(Remaining) | 2026-10-03 → 2026-10-10 (+7d) | 2026-10-31 → 2026-11-07 (+7d) |  | -0.05d → -5.5d |
| 4 | **DELIVERY TO SITE** |  | 2026-11-17 → 2026-11-24 (+7d) |  |  |
| 1 | **EXTERNAL / LANDSCAPE WORK** |  | 2026-10-04 → 2026-10-11 (+7d) |  |  |
| PG-Q-PR-LL-LS-DL-20_R | Benches, Seats (Rectangular & Circular)(Remaining) |  | 2026-10-04 → 2026-10-11 (+7d) |  | 45.5d → 42.5d |
| 2 | **SPORTS & RECREATIONAL FACILITIES WORK** |  | 2026-10-11 → 2026-10-15 (+4d) |  |  |
| PG-Q-PR-LL-SP-DL-10_R | Football Playground Materials (Flooring, goal post, nets, paints, etc)(Remaining) |  | 2026-10-04 → 2026-10-10 (+6d) | 90% → 95% | 44d → 40.45d |
| PG-Q-PR-LL-SP-DL-20_R | Basketball Playground Materials (Flooring, basketball poll, nets, paints, etc)(Remaining) |  | 2026-10-04 → 2026-10-10 (+6d) | 90% → 95% | 38.7d → 40.65d |
| PG-Q-PR-LL-SP-DL-30_R | Padel Playgound Materials (Fence, tempered glass, etc)(Remaining) |  | 2026-10-04 → 2026-10-10 (+6d) | 90% → 95% | 6.3d → 2.65d |
| PG-Q-PR-LL-SP-DL-40_R | Tartan Floor(Remaining) |  | 2026-10-04 → 2026-10-10 (+6d) | 90% → 95% | 33.4d → 27.4d |
| PG-Q-PR-LL-SP-DL-50 | Air Dome Materials |  | 2026-10-11 → 2026-10-15 (+4d) | 50% → 60% | -32.8d → -38.8d |
| 5 | **METAL WORK** |  | 2026-11-17 → 2026-11-24 (+7d) |  |  |
| PG-Q-PR-LL-MT-DL-20_R | Curtain Wall(Remaining) | 2026-11-01 → 2026-11-08 (+7d) | 2026-11-17 → 2026-11-24 (+7d) |  | -0.05d → -5.5d |
| 7 | **PLUMBING WORK** |  | 2026-10-04 → 2026-10-10 (+6d) |  |  |
| PG-Q-PR-LL-PB-DL-20_R | GRP Sectional Panel Water Tanks (4x3x3m)(Remaining) |  | 2026-10-04 → 2026-10-10 (+6d) | 90% → 95% | 20.3d → 16.95d |
| 8 | **IRRIGATION WORK** |  | 2026-10-03 → 2026-10-10 (+7d) |  |  |
| PG-Q-PR-LL-IR-DL-20_R | Irrigation Control System(Remaining) |  | 2026-10-03 → 2026-10-10 (+7d) |  | -12.05d → -18.05d |
| 9 | **ELECTRICAL WORK** |  | 2026-10-05 → 2026-10-11 (+6d) |  |  |
| PG-Q-PR-LL-EL-DL-10_R | Main Distribution Board(Remaining) |  | 2026-10-05 → 2026-10-11 (+6d) | 80% → 90% | -4.4d → -8.9d |
| PG-Q-PR-LL-EL-DL-20_R | Power Panels (Pump, Street Light)(Remaining) |  | 2026-10-04 → 2026-10-10 (+6d) | 80% → 90% | -1.4d → -6.4d |
| PG-Q-PR-LL-EL-DL-30_R | Site Lighting Poles(Remaining) |  | 2026-10-05 → 2026-10-11 (+6d) | 80% → 90% | 2.6d → -1.9d |
| PG-Q-PR-LL-EL-DL-40_R | Lighting Fixtures(Remaining) |  | 2026-10-05 → 2026-10-11 (+6d) | 80% → 90% | 6.2d → 1.7d |
| PG-Q-PR-LL-EL-DL-50_R | Grounding System Materials (Earth pit rod, LPS, etc)(Remaining) |  | 2026-10-05 → 2026-10-11 (+6d) | 80% → 90% | -5d → -9.5d |
| PG-Q-PR-LL-EL-DL-60_R | Telecommunications & Data System Materials (Telephone outlet, CCTV, etc)(Remaining) |  | 2026-10-05 → 2026-10-11 (+6d) | 80% → 90% | 10.2d → 5.7d |
| PG-Q-PR-LL-EL-DL-70_R | Security and Access Control System Materials(Remaining) |  | 2026-10-05 → 2026-10-11 (+6d) | 80% → 90% | 29.2d → 24.7d |
| PG-Q-PR-LL-EL-DL-80_R | Fire Alarm System Materials(Remaining) |  | 2026-10-05 → 2026-10-11 (+6d) | 80% → 90% | 13.2d → 8.7d |
| 2 | **SHORT LEAD ITEMS** |  | 2026-10-11 → 2026-10-15 (+4d) |  |  |
| 3 | **DELIVERY TO SITE** |  | 2026-10-11 → 2026-10-15 (+4d) |  |  |
| 1 | **EXTERNAL / LANDSCAPE WORK** |  | 2026-10-11 → 2026-10-14 (+3d) |  |  |
| PG-Q-PR-SL-LS-DL-50_R | Thermoplastic pavement road marking(Remaining) |  | 2026-10-11 → 2026-10-14 (+3d) | 35% → 60% | 25.75d → 23.4d |
| PG-Q-PR-SL-LS-DL-60_R | Traffic Signages(Remaining) |  | 2026-10-08 → 2026-10-13 (+5d) | 50% → 70% | 25.75d → 23.4d |
| PG-Q-PR-SL-LS-DL-70_R | Trees(Remaining) |  | 2026-10-08 → 2026-10-13 (+5d) | 50% → 70% | 25.75d → 23.4d |
| PG-Q-PR-SL-LS-DL-80_R | Lawn(Remaining) |  | 2026-10-08 → 2026-10-13 (+5d) | 50% → 70% | 25.75d → 23.4d |
| 5 | **METAL WORK** |  | 2026-10-08 → 2026-10-13 (+5d) |  |  |
| PG-Q-PR-SL-MT-DL-10_R | Galvanized Steel Ladder(Remaining) |  | 2026-10-08 → 2026-10-13 (+5d) | 50% → 70% | 35.45d → 31.9d |
| PG-Q-PR-SL-MT-DL-20_R | Galvanized Steel Roof Scupper(Remaining) |  | 2026-10-08 → 2026-10-13 (+5d) | 50% → 70% | 35.45d → 31.9d |
| PG-Q-PR-SL-MT-DL-30_R | Galvanized Steel Cover with frame(Remaining) |  | 2026-10-08 → 2026-10-13 (+5d) | 50% → 70% | 35.45d → 31.9d |
| 8 | **IRRIGATION WORK** |  | 2026-10-07 → 2026-10-13 (+6d) |  |  |
| PG-Q-PR-SL-IR-DL-10_R | Gate Valve including valve box(Remaining) |  | 2026-10-07 → 2026-10-13 (+6d) | 65% → 70% | -11.65d → -17.65d |
| PG-Q-PR-SL-IR-DL-20_R | Bulbblers and Spreyers(Remaining) |  | 2026-10-07 → 2026-10-13 (+6d) | 65% → 70% | -15.25d → -20.65d |
| 9 | **ELECTRICAL WORK** |  | 2026-10-11 → 2026-10-15 (+4d) |  |  |
| PG-Q-PR-SL-EL-DL-10_R | Wiring Devices Materials(Remaining) |  | 2026-10-11 → 2026-10-15 (+4d) | 50% → 60% | -1.3d → -5.8d |
| 10 | **FIRE FIGHTING WORK** |  | 2026-10-08 → 2026-10-14 (+6d) |  |  |
| PG-Q-PR-SL-FF-DL-10_R | Fire Extinguishers(Remaining) |  | 2026-10-08 → 2026-10-14 (+6d) | 50% → 60% | -10d → -14.8d |
| CO | **CONSTRUCTION STAGE** |  | 2027-01-18 → 2027-01-25 (+7d) |  |  |
| EX.SIT | **PLAYGROUND AND LANDSCAPING WORKS** |  | 2027-01-18 → 2027-01-25 (+7d) |  |  |
| 1 | **PLAYGROUND WORKS** |  | 2026-12-09 → 2026-12-14 (+5d) |  |  |

| ID | Task | Start | Finish | Complete | Total float |
| --- | --- | --- | --- | --- | --- |
| FP | **FOOTBALL PLAYGROUND WORKS** |  | 2026-10-29 → 2026-11-03 (+5d) |  |  |
| PG-Q-CON-EX-FB-90 | Turfing / Seeding Works |  | 2026-10-06 → 2026-10-13 (+7d) |  | 41.7d → 37.4d |
| PG-Q-CON-EX-FB-120 | Installation of Lighting System |  | 2026-10-04 → 2026-10-11 (+7d) |  | 41.7d → 37.4d |
| PG-Q-CON-EX-FB-110 | Install Playground Benches |  | 2026-10-20 → 2026-10-25 (+5d) | 50% → 60% | 41.7d → 37.4d |
| PG-Q-CON-EX-FB-60 | Goal Post Installation & Alignment |  | 2026-10-10 → 2026-10-17 (+7d) |  | 41.7d → 37.4d |
| PG-Q-CON-EX-FB-100 | Markings and Signages | 2026-10-20 → 2026-10-25 (+5d) | 2026-10-29 → 2026-11-03 (+5d) |  | 41.7d → 37.4d |
| BP | **BASKETBALL PLAYGROUND WORKS** |  | 2026-11-05 → 2026-11-03 (-2d) |  |  |
| PG-Q-CON-EX-BB-60 | Basketball Pole Installation & Alignment |  | 2026-10-11 → 2026-10-18 (+7d) |  | 35.7d → 37.65d |
| PG-Q-CON-EX-BB-80 | Court Line Marking |  | 2026-10-07 → 2026-10-13 (+6d) |  | 35.7d → 37.65d |
| PG-Q-CON-EX-BB-100 | Install Playground Benches | 2026-10-15 → 2026-09-27 A (-18d) | 2026-11-05 → 2026-11-03 (-2d) | 0% → 40% | 35.7d → 37.65d |
| PG-Q-CON-EX-BB-90 | Backboard & Hoop Installation |  | 2026-10-15 → 2026-10-21 (+6d) |  | 35.7d → 37.65d |
| PP | **PADEL PLAYGROUND WORKS** |  | 2026-12-09 → 2026-12-14 (+5d) |  |  |
| PG-Q-CON-EX-PD-30_R | Tartan Flooring Layers(Remaining) |  | 2026-11-04 → 2026-11-09 (+5d) |  | 6.3d → 2.65d |
| PG-Q-CON-EX-PD-40 | Steel Structure & Fence Supports Installation |  | 2026-10-10 → 2026-10-17 (+7d) |  | 6.3d → 2.65d |
| PG-Q-CON-EX-PD-60 | Chain Link Fence & Gates Installation |  | 2026-10-15 → 2026-10-20 (+5d) | 70% → 80% | 6.3d → 2.65d |
| PG-Q-CON-EX-PD-50 | Tempered Glass Installation | 2026-10-15 → 2026-10-20 (+5d) | 2026-11-04 → 2026-11-09 (+5d) |  | 6.3d → 2.65d |
| PG-Q-CON-EX-PD-70 | Court Accessories Installation | 2026-11-04 → 2026-11-09 (+5d) | 2026-11-22 → 2026-11-26 (+4d) |  | 6.3d → 2.65d |
| PG-Q-CON-EX-PD-80 | Install Playground Benches | 2026-11-22 → 2026-11-26 (+4d) | 2026-12-09 → 2026-12-14 (+5d) |  | 6.3d → 2.65d |
| GN.SI | **GENERAL SITE WORKS** |  | 2027-01-18 → 2027-01-25 (+7d) |  |  |
| 1 | **FENCE WORKS** |  | 2026-10-29 → 2026-11-02 (+4d) |  |  |
| PG-Q-CON-EX-GN-FN-30 | Installation of Galvanized Steel Posts & Framing |  | 2026-10-04 → 2026-10-11 (+7d) |  | 6.75d → 4.9d |
| PG-Q-CON-EX-GN-FN-40 | Fixing of Chain Link Mesh, Tensioning & Bracing |  | 2026-10-18 → 2026-10-21 (+3d) | 25% → 40% | 6.75d → 4.9d |
| PG-Q-CON-EX-GN-FN-50 | Installation of Gates | 2026-10-18 → 2026-10-21 (+3d) | 2026-10-29 → 2026-11-02 (+4d) |  | 6.75d → 4.9d |
| 5 | **MECHANICAL WORK** |  | 2026-11-01 → 2026-11-08 (+7d) |  |  |
| 2 | **STORM WATER AND UTILITY WORK** |  | 2026-10-29 → 2026-11-05 (+7d) |  |  |
| PG-Q-CON-EX-GN-M-30_R | Manhole Installation(Remaining) |  | 2026-10-04 → 2026-10-11 (+7d) |  | -27.05d → -33.05d |
| PG-Q-CON-EX-GN-M-40 | 150 mm uPVC pipe laying & jointing |  | 2026-10-05 → 2026-10-12 (+7d) |  | -27.05d → -33.05d |
| PG-Q-CON-EX-GN-M-50 | Concrete Encasement | 2026-10-05 → 2026-10-12 (+7d) | 2026-10-13 → 2026-10-20 (+7d) |  | -27.05d → -33.05d |
| PG-Q-CON-EX-GN-M-60 | Backfilling & Compaction | 2026-10-13 → 2026-10-20 (+7d) | 2026-10-20 → 2026-10-27 (+7d) |  | -27.05d → -33.05d |
| PG-Q-CON-EX-GN-M-70 | Surface Reinstatement & Civil Works | 2026-10-22 → 2026-10-29 (+7d) | 2026-10-29 → 2026-11-05 (+7d) |  | -27.05d → -33.05d |
| IR.SY | **IRRIGATION SYSTEM WORKS** |  | 2026-10-22 → 2026-10-29 (+7d) |  |  |
| PG-Q-CON-EX-GN-M-90 | Installation of Irrigation Control System |  | 2026-10-20 → 2026-10-27 (+7d) |  | -27.05d → -33.05d |
| PG-Q-CON-EX-GN-M-100 | Installation of Bubblers and Sprinklers |  | 2026-10-22 → 2026-10-29 (+7d) |  | -27.05d → -33.05d |
| 1 | **FIRE PROTECTION SYSTEM** | 2026-10-29 → 2026-11-05 (+7d) | 2026-11-01 → 2026-11-08 (+7d) |  |  |
| PG-Q-CON-EX-GN-M-110 | Fire Extinguisher Installation | 2026-10-29 → 2026-11-05 (+7d) | 2026-11-01 → 2026-11-08 (+7d) |  | -27.05d → -33.05d |
| 2 | **ELECTRICAL WORK** |  | 2026-12-29 → 2027-01-05 (+7d) |  |  |
| 1 | **POWER, LIGHTING & GROUNDING** |  | 2026-11-18 → 2026-11-25 (+7d) |  |  |
| PG-Q-CON-EX-GN-E-20_R | Foundation Work for Site Lighting Poles(Remaining) |  | 2026-10-29 → 2026-11-05 (+7d) |  | -25.75d → -31.75d |
| PG-Q-CON-EX-GN-E-60 | Site Lighting Poles Installation |  | 2026-11-10 → 2026-11-17 (+7d) |  | -27.05d → -33.05d |
| PG-Q-CON-EX-GN-E-30 | Lightning Protection System (LPS) |  | 2026-11-01 → 2026-11-08 (+7d) |  | -27.05d → -33.05d |
| PG-Q-CON-EX-GN-E-40 | KWH Meter and MDB Installation | 2026-11-01 → 2026-11-08 (+7d) | 2026-11-03 → 2026-11-10 (+7d) |  | -27.05d → -33.05d |
| PG-Q-CON-EX-GN-E-50 | Power Panels and Distribution Boards | 2026-11-03 → 2026-11-10 (+7d) | 2026-11-09 → 2026-11-16 (+7d) |  | -27.05d → -33.05d |
| PG-Q-CON-EX-GN-E-70 | Wiring Works | 2026-11-10 → 2026-11-17 (+7d) | 2026-11-14 → 2026-11-21 (+7d) |  | -27.05d → -33.05d |
| PG-Q-CON-EX-GN-E-80 | Lighting Fixtures with outlets Installation | 2026-11-14 → 2026-11-21 (+7d) | 2026-11-18 → 2026-11-25 (+7d) |  | -27.05d → -33.05d |
| 2 | **ELV SYSTEMS (TELECOM, DATA, AV & CCTV)** | 2026-11-18 → 2026-11-25 (+7d) | 2026-12-17 → 2026-12-24 (+7d) |  |  |
| PG-Q-CON-EX-GN-E-90 | ELV Containment & Cabling Works | 2026-11-18 → 2026-11-25 (+7d) | 2026-11-22 → 2026-11-29 (+7d) |  | -27.05d → -33.05d |
| PG-Q-CON-EX-GN-E-100 | Fiber Optic Pull Box Installation | 2026-11-22 → 2026-11-29 (+7d) | 2026-11-25 → 2026-12-02 (+7d) |  | -22.05d → -28.05d |
| PG-Q-CON-EX-GN-E-110 | Telephone and Data Outlet Installation | 2026-11-25 → 2026-12-02 (+7d) | 2026-11-30 → 2026-12-07 (+7d) |  | -22.05d → -28.05d |
| PG-Q-CON-EX-GN-E-120 | Telecom Equipment and AV HDMI Installation | 2026-11-30 → 2026-12-07 (+7d) | 2026-12-05 → 2026-12-12 (+7d) |  | -22.05d → -28.05d |
| PG-Q-CON-EX-GN-E-130 | CCTV Rack / Cabinet Installation | 2026-12-05 → 2026-12-12 (+7d) | 2026-12-09 → 2026-12-16 (+7d) |  | -22.05d → -28.05d |
| PG-Q-CON-EX-GN-E-140 | NVR and CCTV Monitor Installation | 2026-12-09 → 2026-12-16 (+7d) | 2026-12-14 → 2026-12-21 (+7d) |  | -22.05d → -28.05d |
| PG-Q-CON-EX-GN-E-150 | IP Camera Installation | 2026-12-14 → 2026-12-21 (+7d) | 2026-12-17 → 2026-12-24 (+7d) |  | -22.05d → -28.05d |
| 3 | **FIRE ALARM SYSTEM** | 2026-11-22 → 2026-11-29 (+7d) | 2026-12-29 → 2027-01-05 (+7d) |  |  |
| PG-Q-CON-EX-GN-E-160 | Fire Alarm Containment & Cabling | 2026-11-22 → 2026-11-29 (+7d) | 2026-12-01 → 2026-12-08 (+7d) |  | -27.05d → -33.05d |
| PG-Q-CON-EX-GN-E-170 | Fire Alarm Control Panel (FACP) Installation | 2026-12-01 → 2026-12-08 (+7d) | 2026-12-10 → 2026-12-17 (+7d) |  | -27.05d → -33.05d |
| PG-Q-CON-EX-GN-E-180 | Initiating Devices (Detectors & Manual Pull Station) | 2026-12-10 → 2026-12-17 (+7d) | 2026-12-20 → 2026-12-27 (+7d) |  | -27.05d → -33.05d |
| PG-Q-CON-EX-GN-E-190 | Notification Appliances (Strobe with Sounder) | 2026-12-20 → 2026-12-27 (+7d) | 2026-12-29 → 2027-01-05 (+7d) |  | -27.05d → -33.05d |
| 3 | **PARKING WORK** |  | 2026-12-29 → 2027-01-05 (+7d) |  |  |
| PG-Q-CON-EX-GN-PR-30 | Marking & Signages | 2026-12-23 → 2026-12-30 (+7d) | 2026-12-29 → 2027-01-05 (+7d) |  | -27.05d → -33.05d |
| 4 | **SERVICE CONNECTION** |  | 2027-01-18 → 2027-01-25 (+7d) |  |  |
| PG-Q-CON-EX-GN-SC-20 | HDPE Pipe Laying & Valve Installation |  | 2026-12-30 → 2027-01-06 (+7d) |  | -27.05d → -33.05d |
| PG-Q-CON-EX-GN-SC-30 | Connection to City Network | 2026-12-30 → 2027-01-06 (+7d) | 2027-01-09 → 2027-01-16 (+7d) |  | -27.05d → -33.05d |
| PG-Q-CON-EX-GN-SC-40 | Backfilling | 2027-01-09 → 2027-01-16 (+7d) | 2027-01-18 → 2027-01-25 (+7d) |  | -27.05d → -33.05d |
| LS | **LANDSCAPING WORKS** |  | 2026-12-09 → 2026-12-12 (+3d) |  |  |
| HSP | **HARDSCAPE WORK** |  | 2026-12-09 → 2026-12-12 (+3d) |  |  |
| PG-Q-CON-EX-LS-HS-50_R | Install Recycled Precast Concrete Seats(Remaining) |  | 2026-11-28 → 2026-11-30 (+2d) | 75% → 80% | 6.75d → 4.9d |
| PG-Q-CON-EX-LS-HS-20_R | Interlock Tiles Grey Scale with Black Marble Chips(Remaining) |  | 2026-10-31 → 2026-11-04 (+4d) | 85% → 90% | 6.75d → 4.9d |
| PG-Q-CON-EX-LS-HS-60 | Install Recycled Precast Concrete Trash Bins | 2026-11-28 → 2026-11-30 (+2d) | 2026-12-09 → 2026-12-12 (+3d) |  | 6.75d → 4.9d |
| SSP | **SOFTSCAPE WORK** |  | 2026-11-24 → 2026-11-28 (+4d) |  |  |
| PG-Q-CON-EX-LS-SS-20_R | Lawn Area Preparation & Planting / Turfing(Remaining) |  | 2026-11-04 → 2026-11-08 (+4d) | 75% → 80% | 6.75d → 4.9d |

| ID | Task | Start | Finish | Complete | Total float |
| --- | --- | --- | --- | --- | --- |
| PG-Q-CON-EX-LS-SS-10 | Planting Trees | 2026-11-04 → 2026-11-08 (+4d) | 2026-11-24 → 2026-11-28 (+4d) |  | 6.75d → 4.9d |
| W.T | **TANK WORKS** |  | 2026-10-13 → 2026-10-19 (+6d) |  |  |
| 2 | **WATER STORAGE TANK** |  | 2026-10-13 → 2026-10-19 (+6d) |  |  |
| PG-Q-CON-EX-TW-IR-40 | GRP Water Tank Installation | 2026-10-04 → 2026-10-10 (+6d) | 2026-10-13 → 2026-10-19 (+6d) |  | 20.3d → 16.95d |
| AD | **AIR DOME CONSTRUCTION** |  | 2027-01-04 → 2027-01-11 (+7d) |  |  |
| 1 | **CIVIL WORK** |  | 2026-10-25 → 2026-11-01 (+7d) |  |  |
| PG-Q-CON-EX-AD-CL-70 | Installation of Steel Cable Structural System | 2026-10-04 → 2026-10-11 (+7d) | 2026-10-15 → 2026-10-22 (+7d) |  | -32.8d → -38.8d |
| PG-Q-CON-EX-AD-CL-80 | Installation of Membrane System | 2026-10-15 → 2026-10-22 (+7d) | 2026-10-25 → 2026-11-01 (+7d) |  | -32.8d → -38.8d |
| 2 | **ARCHITECTURAL WORK** |  | 2027-01-04 → 2027-01-11 (+7d) |  |  |
| PG-Q-CON-EX-AD-AR-10 | Installation of Thermal Insulation System |  | 2026-12-13 → 2026-12-20 (+7d) |  | -32.8d → -38.8d |
| PG-Q-CON-EX-AD-AR-40 | Final Fixing of Accessories & Finishes | 2026-12-13 → 2026-12-20 (+7d) | 2026-12-22 → 2026-12-29 (+7d) |  | -32.8d → -38.8d |
| PG-Q-CON-EX-AD-AR-20 | Installation of Doors & Access Systems | 2026-12-22 → 2026-12-29 (+7d) | 2026-12-29 → 2027-01-05 (+7d) |  | -32.8d → -38.8d |
| PG-Q-CON-EX-AD-AR-30 | Installation of Logo | 2026-12-29 → 2027-01-05 (+7d) | 2027-01-04 → 2027-01-11 (+7d) |  | -32.8d → -38.8d |
| 3 | **MECHANICAL WORK** | 2026-10-25 → 2026-11-01 (+7d) | 2026-11-12 → 2026-11-19 (+7d) |  |  |
| PG-Q-CON-EX-AD-ME-10 | Installation of Main Air Package Units | 2026-10-25 → 2026-11-01 (+7d) | 2026-10-31 → 2026-11-07 (+7d) |  | -32.8d → -38.8d |
| PG-Q-CON-EX-AD-ME-20 | Installation of Backup Air Package Unit | 2026-10-31 → 2026-11-07 (+7d) | 2026-11-05 → 2026-11-12 (+7d) |  | -32.8d → -38.8d |
| PG-Q-CON-EX-AD-ME-30 | Installation of Complete HVAC System | 2026-11-05 → 2026-11-12 (+7d) | 2026-11-12 → 2026-11-19 (+7d) |  | -32.8d → -38.8d |
| 4 | **ELECTRICAL WORK** |  | 2026-12-08 → 2026-12-15 (+7d) |  |  |
| PG-Q-CON-EX-AD-EL-10 | Installation of Electrical Boxes & MDBs |  | 2026-10-08 → 2026-10-15 (+7d) |  | -14.8d → -20.8d |
| PG-Q-CON-EX-AD-EL-20 | Installation of Lighting System | 2026-10-08 → 2026-10-15 (+7d) | 2026-10-22 → 2026-10-29 (+7d) |  | -14.8d → -20.8d |
| PG-Q-CON-EX-AD-EL-30 | Electrical Connections to Main Power Source (Excluding kWh Meter) | 2026-11-12 → 2026-11-19 (+7d) | 2026-11-18 → 2026-11-25 (+7d) |  | -32.8d → -38.8d |
| PG-Q-CON-EX-AD-EL-40 | Installation of Backup Generator | 2026-11-18 → 2026-11-25 (+7d) | 2026-11-25 → 2026-12-02 (+7d) |  | -32.8d → -38.8d |
| PG-Q-CON-EX-AD-EL-50 | Installation of Smart Dome System | 2026-11-25 → 2026-12-02 (+7d) | 2026-12-08 → 2026-12-15 (+7d) |  | -32.8d → -38.8d |
| B | **TOILET BUILDING WORKS** |  | 2026-11-22 → 2026-11-28 (+6d) |  |  |
| CVL | **CIVIL WORK** |  | 2026-11-21 → 2026-11-26 (+5d) |  |  |
| AR | **ARCHITECTURAL WORK** |  | 2026-11-21 → 2026-11-26 (+5d) |  |  |
| 1 | **GENERAL FINISHES** |  | 2026-11-21 → 2026-11-26 (+5d) |  |  |
| PG-Q-CON-B-AR-GF-60 | Install Doors & Windows |  | 2026-10-14 → 2026-10-19 (+5d) |  | 29.45d → 25.6d |
| PG-Q-CON-B-AR-GF-70 | Lockers and Furniture Installation |  | 2026-11-21 → 2026-11-26 (+5d) | 50% → 60% | -0.05d → -5.5d |
| 2 | **WET AREA FINISHES** |  | 2026-10-15 → 2026-10-19 (+4d) |  |  |
| PG-Q-CON-B-AR-WF-60 | Install Doors |  | 2026-10-15 → 2026-10-19 (+4d) | 50% → 70% | 31.7d → 28.3d |
| 3 | **ROOF FINISHES** |  | 2026-11-21 → 2026-11-26 (+5d) |  |  |
| PG-Q-CON-B-AR-RF-20 | Epoxy Flooring and Finishes |  | 2026-10-13 → 2026-10-18 (+5d) |  | 31.85d → 27.5d |
| PG-Q-CON-B-AR-RF-30 | Steel ladder and Steel roof scupper Installation | 2026-11-19 → 2026-11-26 (+7d) | 2026-11-21 → 2026-11-26 (+5d) |  | -0.05d → -5.5d |
| MEP | **MEP WORK** |  | 2026-11-22 → 2026-11-28 (+6d) |  |  |
| MEC | **MECANICAL WORKS** |  | 2026-11-22 → 2026-11-28 (+6d) |  |  |
| FF | **FIRE FIGHTING SYSTEM** |  | 2026-11-22 → 2026-11-28 (+6d) |  |  |
| PG-Q-CON-B-GF-FF-10 | Fire Extinguisher Installation |  | 2026-11-22 → 2026-11-28 (+6d) | 25% → 30% | -0.05d → -5.5d |
| DS | **SEWER AND DRAINAGE SYSTEM** |  | 2026-10-12 → 2026-10-18 (+6d) |  |  |
| PG-Q-CON-B-GF-DR-30 | Sanitaryware Installation (Final Fix) |  | 2026-10-12 → 2026-10-18 (+6d) | 25% → 30% | 29.45d → 25.6d |
| HV | **HVAC SYSTEM** |  | 2026-10-05 → 2026-10-12 (+7d) |  |  |
| PG-Q-CON-B-GF-AC-20 | Split AC, Grills & Diffuser Installation |  | 2026-10-05 → 2026-10-12 (+7d) | 25% → 30% | 34.7d → 29.5d |
| TE & CO | **PROJECT CLOSOUT** |  | 2027-01-24 → 2027-01-31 (+7d) |  |  |
| PG-Q-PCL-10_R | Testing, Commessioning for All Systems(Remaining) |  | 2027-01-04 → 2027-01-11 (+7d) |  | -32.8d → -38.8d |
| PG-Q-PCL-20 | As-Built Drawings |  | 2027-01-12 → 2027-01-19 (+7d) |  | -26.4d → -32.4d |
| PG-Q-PCL-30 | Snag list Submission | 2027-01-04 → 2027-01-11 (+7d) | 2027-01-07 → 2027-01-14 (+7d) |  | -32.8d → -38.8d |
| PG-Q-PCL-40 | Snag list Closeout | 2027-01-07 → 2027-01-14 (+7d) | 2027-01-19 → 2027-01-26 (+7d) |  | -32.8d → -38.8d |
| PG-Q-PCL-50 | Issuing Approvals | 2027-01-19 → 2027-01-26 (+7d) | 2027-01-23 → 2027-01-30 (+7d) |  | -32.8d → -38.8d |
| PG-Q-PCL-60 | Handing Over | 2027-01-23 → 2027-01-30 (+7d) | 2027-01-24 → 2027-01-31 (+7d) |  | -32.8d → -38.8d |
| HAIL | **HAIL** |  | 2027-01-16 → 2027-01-21 (+5d) |  |  |
| PR | **PROCUREMENT** |  | 2026-11-03 → 2026-11-10 (+7d) |  |  |
| 1 | **LONG LEAD ITEMS** |  | 2026-11-03 → 2026-11-10 (+7d) |  |  |
| 3 | **MANUFACTURE / FABRICATION** |  | 2026-10-31 → 2026-11-07 (+7d) |  |  |
| 5 | **METAL WORK** |  | 2026-10-31 → 2026-11-07 (+7d) |  |  |
| PG-H-PR-LL-MT-MF-20_R | Curtain Wall(Remaining) | 2026-10-03 → 2026-10-10 (+7d) | 2026-10-31 → 2026-11-07 (+7d) |  | 1.6d → -1.6d |
| 4 | **DELIVERY TO SITE** |  | 2026-11-03 → 2026-11-10 (+7d) |  |  |
| 1 | **EXTERNAL / LANDSCAPE WORK** |  | 2026-10-04 → 2026-10-11 (+7d) |  |  |
| PG-H-PR-LL-LS-DL-10_R | Bike and Walk Path Materials(Remaining) |  | 2026-10-03 → 2026-10-10 (+7d) |  | 20.8d → 16.8d |
| PG-H-PR-LL-LS-DL-20_R | Benches, Seats (Rectangular & Circular)(Remaining) |  | 2026-10-04 → 2026-10-11 (+7d) | 85% → 90% | 25.2d → 19.8d |
| 2 | **SPORTS & RECREATIONAL FACILITIES WORK** |  | 2026-10-04 → 2026-10-11 (+7d) |  |  |
| PG-H-PR-LL-SP-DL-10_R | Football Playground Materials (Flooring, goal post, nets, paints, etc)(Remaining) |  | 2026-10-03 → 2026-10-10 (+7d) |  | 43.7d → 39.85d |
| PG-H-PR-LL-SP-DL-20_R | Tartan Floor(Remaining) |  | 2026-10-04 → 2026-10-11 (+7d) |  | 43.7d → 39.85d |
| 5 | **METAL WORK** |  | 2026-11-03 → 2026-11-10 (+7d) |  |  |
| PG-H-PR-LL-MT-DL-10_R | Metal Doors(Remaining) |  | 2026-10-05 → 2026-10-12 (+7d) |  | 25.1d → 22.4d |
| PG-H-PR-LL-MT-DL-20_R | Curtain Wall(Remaining) |  | 2026-11-03 → 2026-11-10 (+7d) |  | 1.6d → -1.6d |
| 7 | **PLUMBING WORK** |  | 2026-10-05 → 2026-10-11 (+6d) |  |  |
| PG-H-PR-LL-PB-DL-20_R | GRP Sectional Panel Water Tanks (4x3x3m)(Remaining) |  | 2026-10-05 → 2026-10-11 (+6d) | 80% → 90% | 0.1d → -2.7d |
| 9 | **ELECTRICAL WORK** |  | 2026-10-04 → 2026-10-11 (+7d) |  |  |
| PG-H-PR-LL-EL-DL-30_R | Site Lighting Poles(Remaining) |  | 2026-10-03 → 2026-10-11 (+8d) | 95% → 90% | 7d → 0.4d |
| PG-H-PR-LL-EL-DL-40_R | Lighting Fixtures(Remaining) |  | 2026-10-04 → 2026-10-11 (+7d) | 85% → 90% | 11.8d → 6.4d |

| ID | Task | Start | Finish | Complete | Total float |
| --- | --- | --- | --- | --- | --- |
| PG-H-PR-LL-EL-DL-10_R | Main Distribution Board(Remaining) |  | 2026-10-04 → 2026-10-10 (+6d) | 85% → 90% | -0.6d → -6.2d |
| PG-H-PR-LL-EL-DL-20_R | Power Panels (Pump, Street Light)(Remaining) |  | 2026-10-04 → 2026-10-10 (+6d) | 85% → 90% | 1.4d → -4.2d |
| PG-H-PR-LL-EL-DL-50_R | Grounding System Materials (Earth pit rod, LPS, etc)(Remaining) |  | 2026-10-04 → 2026-10-10 (+6d) | 85% → 90% | -3.6d → -9.2d |
| PG-H-PR-LL-EL-DL-60_R | Telecommunications & Data System Materials (Telephone outlet, CCTV, etc)(Remaining) |  | 2026-10-04 → 2026-10-11 (+7d) | 85% → 90% | 15.8d → 10.4d |
| PG-H-PR-LL-EL-DL-70_R | Security and Access Control System Materials(Remaining) |  | 2026-10-04 → 2026-10-11 (+7d) | 85% → 90% | 33.55d → 28.15d |
| PG-H-PR-LL-EL-DL-80_R | Fire Alarm System Materials(Remaining) |  | 2026-10-04 → 2026-10-11 (+7d) | 85% → 90% | 18.8d → 13.4d |
| 2 | **SHORT LEAD ITEMS** |  | 2026-10-15 → 2026-10-20 (+5d) |  |  |
| 3 | **DELIVERY TO SITE** |  | 2026-10-15 → 2026-10-20 (+5d) |  |  |
| 1 | **EXTERNAL / LANDSCAPE WORK** |  | 2026-10-05 → 2026-10-11 (+6d) |  |  |
| PG-H-PR-SL-LS-DL-50_R | Thermoplastic pavement road marking(Remaining) |  | 2026-10-05 → 2026-10-11 (+6d) | 75% → 85% | 8.4d → 5.6d |
| PG-H-PR-SL-LS-DL-60_R | Traffic Signages(Remaining) |  | 2026-10-05 → 2026-10-11 (+6d) | 75% → 85% | 8.4d → 5.6d |
| PG-H-PR-SL-LS-DL-70_R | Trees(Remaining) |  | 2026-10-05 → 2026-10-11 (+6d) | 75% → 85% | 8.4d → 5.6d |
| PG-H-PR-SL-LS-DL-80_R | Lawn(Remaining) |  | 2026-10-05 → 2026-10-11 (+6d) | 75% → 85% | 32.38d → 27.9d |
| 8 | **IRRIGATION WORK** |  | 2026-10-04 → 2026-10-11 (+7d) |  |  |
| PG-H-PR-SL-IR-DL-10_R | Gate Valve including valve box(Remaining) |  | 2026-10-04 → 2026-10-11 (+7d) |  | -14.4d → -20.1d |
| PG-H-PR-SL-IR-DL-20_R | Bulbblers and Spreyers(Remaining) |  | 2026-10-04 → 2026-10-11 (+7d) |  | -13.2d → -19.2d |
| 9 | **ELECTRICAL WORK** |  | 2026-10-08 → 2026-10-14 (+6d) |  |  |
| PG-H-PR-SL-EL-DL-10_R | Wiring Devices Materials(Remaining) |  | 2026-10-08 → 2026-10-14 (+6d) | 25% → 60% | 4.6d → -0.2d |
| 10 | **FIRE FIGHTING WORK** |  | 2026-10-15 → 2026-10-20 (+5d) |  |  |
| PG-H-PR-SL-FF-DL-10_R | Fire Extinguishers(Remaining) | 2026-10-03 A | 2026-10-15 → 2026-10-20 (+5d) | 0% → 20% | -16.4d → -20d |
| CO | **CONSTRUCTION STAGE** |  | 2027-01-16 → 2027-01-21 (+5d) |  |  |
| EX.SIT | **PLAYGROUND AND LANDSCAPING WORKS** |  | 2027-01-16 → 2027-01-21 (+5d) |  |  |
| 1 | **PLAYGROUND WORKS** |  | 2026-11-07 → 2026-11-09 (+2d) |  |  |
| FP | **FOOTBALL PLAYGROUND WORKS** |  | 2026-11-07 → 2026-11-09 (+2d) |  |  |
| PG-H-CON-EX-FB-40_R | Tartan flooring(Remaining) |  | 2026-10-15 → 2026-10-20 (+5d) |  | 34d → 32.3d |
| PG-H-CON-EX-FB-90 | Turfing / Seeding Works |  | 2026-10-15 → 2026-10-20 (+5d) |  | 34d → 32.3d |
| PG-H-CON-EX-FB-50 | Goal Post Foundation |  | 2026-10-07 → 2026-10-13 (+6d) | 75% → 80% | 34d → 32.3d |
| PG-H-CON-EX-FB-60 | Goal Post Installation & Alignment |  | 2026-10-20 → 2026-10-24 (+4d) | 65% → 70% | 34d → 32.3d |
| PG-H-CON-EX-FB-110 | Install Playground Benches |  | 2026-10-26 → 2026-10-28 (+2d) | 65% → 75% | 34d → 32.3d |
| PG-H-CON-EX-FB-120 | Installation of Lighting System |  | 2026-10-12 → 2026-10-17 (+5d) | 65% → 75% | 34d → 32.3d |
| PG-H-CON-EX-FB-100 | Markings and Signages | 2026-10-27 → 2026-10-28 (+1d) | 2026-11-07 → 2026-11-09 (+2d) |  | 34d → 32.3d |
| GN.SI | **GENERAL SITE WORKS** |  | 2027-01-16 → 2027-01-21 (+5d) |  |  |
| 1 | **FENCE WORKS** |  | 2026-10-13 → 2026-10-17 (+4d) |  |  |
| PG-H-CON-EX-GN-FN-30 | Installation of Galvanized Steel Posts & Framing |  | 2026-10-04 → 2026-10-10 (+6d) | 80% → 90% | -19.7d → -21d |
| PG-H-CON-EX-GN-FN-40 | Fixing of Chain Link Mesh, Tensioning & Bracing |  | 2026-10-08 → 2026-10-12 (+4d) | 20% → 80% | -19.7d → -21d |
| PG-H-CON-EX-GN-FN-50 | Installation of Gates | 2026-10-08 → 2026-10-12 (+4d) | 2026-10-13 → 2026-10-17 (+4d) |  | -19.7d → -21d |
| 5 | **MECHANICAL WORK** |  | 2026-10-28 → 2026-11-04 (+7d) |  |  |
| 2 | **STORM WATER AND UTILITY WORK** |  | 2026-10-26 → 2026-11-02 (+7d) |  |  |
| PG-H-CON-EX-GN-M-20_R | Bedding preparation & level control(Remaining) |  | 2026-10-04 → 2026-10-11 (+7d) |  | -25.35d → -30.8d |
| PG-H-CON-EX-GN-M-30 | Manhole Installation |  | 2026-10-05 → 2026-10-12 (+7d) | 75% → 80% | -25.35d → -30.8d |
| PG-H-CON-EX-GN-M-40 | 150 mm uPVC pipe laying & jointing | 2026-10-05 → 2026-10-12 (+7d) | 2026-10-10 → 2026-10-17 (+7d) |  | -25.35d → -30.8d |
| PG-H-CON-EX-GN-M-50 | Concrete Encasement | 2026-10-10 → 2026-10-17 (+7d) | 2026-10-13 → 2026-10-20 (+7d) |  | -25.35d → -30.8d |
| PG-H-CON-EX-GN-M-60 | Backfilling & Compaction | 2026-10-13 → 2026-10-20 (+7d) | 2026-10-17 → 2026-10-24 (+7d) |  | -25.35d → -30.8d |
| PG-H-CON-EX-GN-M-70 | Surface Reinstatement & Civil Works | 2026-10-21 → 2026-10-28 (+7d) | 2026-10-26 → 2026-11-02 (+7d) |  | -25.35d → -30.8d |
| IR.SY | **IRRIGATION SYSTEM WORKS** |  | 2026-10-21 → 2026-10-28 (+7d) |  |  |
| PG-H-CON-EX-GN-M-80_R | Installation of HDPE Irrigation Pipe Network with Gate Valve and Box(Remaining) |  | 2026-10-17 → 2026-10-24 (+7d) |  | -25.35d → -30.8d |
| PG-H-CON-EX-GN-M-90 | Installation of Irrigation Control System |  | 2026-10-18 → 2026-10-25 (+7d) | 60% → 70% | -25.35d → -30.8d |
| PG-H-CON-EX-GN-M-100 | Installation of Bubblers and Sprinklers | 2026-10-18 → 2026-10-25 (+7d) | 2026-10-21 → 2026-10-28 (+7d) |  | -25.35d → -30.8d |
| 1 | **FIRE PROTECTION SYSTEM** | 2026-10-26 → 2026-11-02 (+7d) | 2026-10-28 → 2026-11-04 (+7d) |  |  |
| PG-H-CON-EX-GN-M-110 | Fire Extinguisher Installation | 2026-10-26 → 2026-11-02 (+7d) | 2026-10-28 → 2026-11-04 (+7d) |  | -25.35d → -30.8d |
| 2 | **ELECTRICAL WORK** |  | 2026-12-31 → 2027-01-07 (+7d) |  |  |
| 1 | **POWER, LIGHTING & GROUNDING** |  | 2026-11-21 → 2026-11-28 (+7d) |  |  |
| PG-H-CON-EX-GN-E-20_R | Foundation Work for Site Lighting Poles(Remaining) |  | 2026-10-27 → 2026-11-03 (+7d) | 70% → 80% | -24.4d → -29.5d |
| PG-H-CON-EX-GN-E-30 | Lightning Protection System (LPS) | 2026-10-28 → 2026-11-04 (+7d) | 2026-11-01 → 2026-11-08 (+7d) |  | -25.35d → -30.8d |
| PG-H-CON-EX-GN-E-40 | KWH Meter and MDB Installation | 2026-11-01 → 2026-11-08 (+7d) | 2026-11-03 → 2026-11-10 (+7d) |  | -25.35d → -30.8d |
| PG-H-CON-EX-GN-E-50 | Power Panels and Distribution Boards | 2026-11-03 → 2026-11-10 (+7d) | 2026-11-09 → 2026-11-16 (+7d) |  | -25.35d → -30.8d |
| PG-H-CON-EX-GN-E-60 | Site Lighting Poles Installation | 2026-11-09 → 2026-11-16 (+7d) | 2026-11-12 → 2026-11-19 (+7d) |  | -25.35d → -30.8d |
| PG-H-CON-EX-GN-E-70 | Wiring Works | 2026-11-12 → 2026-11-19 (+7d) | 2026-11-16 → 2026-11-23 (+7d) |  | -25.35d → -30.8d |
| PG-H-CON-EX-GN-E-80 | Lighting Fixtures with outlets Installation | 2026-11-16 → 2026-11-23 (+7d) | 2026-11-21 → 2026-11-28 (+7d) |  | -25.35d → -30.8d |
| 2 | **ELV SYSTEMS (TELECOM, DATA, AV & CCTV)** | 2026-11-21 → 2026-11-28 (+7d) | 2026-12-20 → 2026-12-27 (+7d) |  |  |
| PG-H-CON-EX-GN-E-90 | ELV Containment & Cabling Works | 2026-11-21 → 2026-11-28 (+7d) | 2026-11-24 → 2026-12-01 (+7d) |  | -25.35d → -30.8d |
| PG-H-CON-EX-GN-E-100 | Fiber Optic Pull Box Installation | 2026-11-24 → 2026-12-01 (+7d) | 2026-11-28 → 2026-12-05 (+7d) |  | -21.6d → -27.05d |
| PG-H-CON-EX-GN-E-110 | Telephone and Data Outlet Installation | 2026-11-28 → 2026-12-05 (+7d) | 2026-12-02 → 2026-12-09 (+7d) |  | -21.6d → -27.05d |
| PG-H-CON-EX-GN-E-120 | Telecom Equipment and AV HDMI Installation | 2026-12-02 → 2026-12-09 (+7d) | 2026-12-07 → 2026-12-14 (+7d) |  | -21.6d → -27.05d |
| PG-H-CON-EX-GN-E-130 | CCTV Rack / Cabinet Installation | 2026-12-07 → 2026-12-14 (+7d) | 2026-12-12 → 2026-12-19 (+7d) |  | -21.6d → -27.05d |
| PG-H-CON-EX-GN-E-140 | NVR and CCTV Monitor Installation | 2026-12-12 → 2026-12-19 (+7d) | 2026-12-16 → 2026-12-23 (+7d) |  | -21.6d → -27.05d |
| PG-H-CON-EX-GN-E-150 | IP Camera Installation | 2026-12-16 → 2026-12-23 (+7d) | 2026-12-20 → 2026-12-27 (+7d) |  | -21.6d → -27.05d |
| 3 | **FIRE ALARM SYSTEM** | 2026-11-24 → 2026-12-01 (+7d) | 2026-12-31 → 2027-01-07 (+7d) |  |  |
| PG-H-CON-EX-GN-E-160 | Fire Alarm Containment & Cabling | 2026-11-24 → 2026-12-01 (+7d) | 2026-12-03 → 2026-12-10 (+7d) |  | -25.35d → -30.8d |
| PG-H-CON-EX-GN-E-170 | Fire Alarm Control Panel (FACP) Installation | 2026-12-03 → 2026-12-10 (+7d) | 2026-12-13 → 2026-12-20 (+7d) |  | -25.35d → -30.8d |

| ID | Task | Start | Finish | Complete | Total float |
| --- | --- | --- | --- | --- | --- |
| PG-H-CON-EX-GN-E-180 | Initiating Devices (Detectors & Manual Pull Station) | 2026-12-13 → 2026-12-20 (+7d) | 2026-12-22 → 2026-12-29 (+7d) |  | -25.35d → -30.8d |
| PG-H-CON-EX-GN-E-190 | Notification Appliances (Strobe with Sounder) | 2026-12-22 → 2026-12-29 (+7d) | 2026-12-31 → 2027-01-07 (+7d) |  | -25.35d → -30.8d |
| 3 | **PARKING WORK** |  | 2026-12-31 → 2027-01-07 (+7d) |  |  |
| PG-H-CON-EX-GN-PR-10 | Installlation of Parking Accessories |  | 2026-12-22 → 2026-12-28 (+6d) |  | -21.6d → -27.05d |
| PG-H-CON-EX-GN-PR-30 | Marking & Signages | 2026-12-26 → 2027-01-02 (+7d) | 2026-12-31 → 2027-01-07 (+7d) |  | -25.35d → -30.8d |
| 4 | **SERVICE CONNECTION** |  | 2027-01-16 → 2027-01-21 (+5d) |  |  |
| PG-H-CON-EX-GN-SC-20 | HDPE Pipe Laying & Valve Installation |  | 2027-01-03 → 2027-01-09 (+6d) |  | -25.35d → -30.8d |
| PG-H-CON-EX-GN-SC-40 | Backfilling |  | 2027-01-16 → 2027-01-21 (+5d) |  | -25.35d → -30.8d |
| PG-H-CON-EX-GN-SC-30 | Connection to City Network | 2027-01-03 → 2027-01-09 (+6d) | 2027-01-12 → 2027-01-18 (+6d) |  | -25.35d → -30.8d |
| LS | **LANDSCAPING WORKS** |  | 2026-12-07 → 2026-12-08 (+1d) |  |  |
| HSP | **HARDSCAPE WORK** |  | 2026-12-07 → 2026-12-08 (+1d) |  |  |
| PG-H-CON-EX-LS-HS-40_R | Bike Path and Walking Path Construction(Remaining) |  | 2026-11-19 → 2026-11-23 (+4d) |  | -19.7d → -21d |
| PG-H-CON-EX-LS-HS-30_R | Stamped Concrete Floor(Remaining) |  | 2026-11-08 → 2026-11-11 (+3d) |  | -9.7d → -11d |
| PG-H-CON-EX-LS-HS-50_R | Install Recycled Precast Concrete Seats(Remaining) |  | 2026-11-25 → 2026-11-26 (+1d) | 40% → 60% | -19.7d → -21d |
| PG-H-CON-EX-LS-HS-20_R | Interlock Tiles Grey Scale with Black Marble Chips(Remaining) |  | 2026-11-08 → 2026-11-11 (+3d) |  | -19.7d → -21d |
| PG-H-CON-EX-LS-HS-60 | Install Recycled Precast Concrete Trash Bins | 2026-11-25 → 2026-11-28 (+3d) | 2026-12-07 → 2026-12-08 (+1d) |  | -19.7d → -21d |
| SSP | **SOFTSCAPE WORK** |  | 2026-12-07 → 2026-12-08 (+1d) |  |  |
| PG-H-CON-EX-LS-SS-20_R | Lawn Area Preparation & Planting / Turfing(Remaining) |  | 2026-12-07 → 2026-12-08 (+1d) | 75% → 80% | -19.7d → -21d |
| PG-H-CON-EX-LS-SS-10 | Planting Trees | 2026-11-08 → 2026-11-11 (+3d) | 2026-11-19 → 2026-11-23 (+4d) |  | -19.7d → -21d |
| W.T | **TANK WORKS** |  | 2026-11-03 → 2026-11-07 (+4d) |  |  |
| 1 | **SEPTIC TANK** |  | 2026-10-28 → 2026-11-01 (+4d) |  |  |
| PG-H-CON-EX-TW-ST-40 | RCC Wall |  | 2026-10-05 → 2026-10-11 (+6d) | 70% → 80% | -15.05d → -18d |
| PG-H-CON-EX-TW-ST-50 | RCC Slab |  | 2026-10-07 → 2026-10-13 (+6d) | 65% → 70% | -15.05d → -18d |
| PG-H-CON-EX-TW-ST-60 | Finishing Work | 2026-10-13 → 2026-10-17 (+4d) | 2026-10-21 → 2026-10-25 (+4d) |  | -19.7d → -21d |
| PG-H-CON-EX-TW-ST-70 | Backfilling | 2026-10-21 → 2026-10-25 (+4d) | 2026-10-28 → 2026-11-01 (+4d) |  | -19.7d → -21d |
| 2 | **WATER STORAGE TANK** |  | 2026-11-03 → 2026-11-07 (+4d) |  |  |
| PG-H-CON-EX-TW-IR-40 | GRP Water Tank Installation | 2026-10-28 → 2026-11-01 (+4d) | 2026-11-03 → 2026-11-07 (+4d) |  | -19.7d → -21d |
| B | **TOILET BUILDING WORKS** |  | 2026-11-12 → 2026-11-16 (+4d) |  |  |
| CVL | **CIVIL WORK** |  | 2026-11-11 → 2026-11-15 (+4d) |  |  |
| AR | **ARCHITECTURAL WORK** |  | 2026-11-11 → 2026-11-15 (+4d) |  |  |
| 1 | **GENERAL FINISHES** |  | 2026-11-11 → 2026-11-15 (+4d) |  |  |
| PG-H-CON-B-AR-GF-40 | Wall Paint |  | 2026-10-10 → 2026-10-17 (+7d) | 70% → 80% | 18.5d → 17.35d |
| PG-H-CON-B-AR-GF-50 | Epoxy Flooring |  | 2026-10-12 → 2026-10-18 (+6d) | 70% → 80% | 18.5d → 17.35d |
| PG-H-CON-B-AR-GF-60 | Install Doors & Windows |  | 2026-10-14 → 2026-10-19 (+5d) | 70% → 80% | 18.5d → 17.35d |
| PG-H-CON-B-AR-GF-80 | Lockers and Furniture Installation | 2026-11-03 → 2026-10-04 A (-30d) | 2026-11-11 → 2026-11-15 (+4d) | 0% → 40% | 1.6d → -1.6d |
| 2 | **WET AREA FINISHES** |  | 2026-10-12 → 2026-10-18 (+6d) |  |  |
| PG-H-CON-B-AR-WF-60 | Install Doors |  | 2026-10-12 → 2026-10-18 (+6d) | 65% → 70% | 34.9d → 29.95d |
| 3 | **ROOF FINISHES** |  | 2026-11-11 → 2026-11-15 (+4d) |  |  |
| PG-H-CON-B-AR-RF-10 | Waterproofing on Floor |  | 2026-10-12 → 2026-10-17 (+5d) | 60% → 80% | 25d → 20.75d |
| PG-H-CON-B-AR-RF-20 | Epoxy Flooring and Finishes |  | 2026-10-12 → 2026-10-18 (+6d) | 75% → 80% | 25d → 20.75d |
| PG-H-CON-B-AR-RF-30 | Steel ladder and Steel roof scupper Installation | 2026-11-09 → 2026-11-12 (+3d) | 2026-11-11 → 2026-11-15 (+4d) |  | 1.6d → -1.6d |
| MEP | **MEP WORK** |  | 2026-11-12 → 2026-11-16 (+4d) |  |  |
| MEC | **MECANICAL WORKS** |  | 2026-11-12 → 2026-11-16 (+4d) |  |  |
| FF | **FIRE FIGHTING SYSTEM** | 2026-11-11 → 2026-11-15 (+4d) | 2026-11-12 → 2026-11-16 (+4d) |  |  |
| PG-H-CON-B-GF-FF-10 | Fire Extinguisher Installation | 2026-11-11 → 2026-11-15 (+4d) | 2026-11-12 → 2026-11-16 (+4d) |  | 1.6d → -1.6d |
| DS | **SEWER AND DRAINAGE SYSTEM** |  | 2026-10-07 → 2026-10-13 (+6d) |  |  |
| PG-H-CON-B-GF-DR-10 | Sewer and Drainge System Main Lines Installation |  | 2026-10-03 → 2026-10-10 (+7d) |  | 18.6d → 17.35d |
| PG-H-CON-B-GF-DR-30 | Sanitaryware Installation (Final Fix) | 2026-10-05 → 2026-10-11 (+6d) | 2026-10-07 → 2026-10-13 (+6d) |  | 18.6d → 17.35d |
| HV | **HVAC SYSTEM** |  | 2026-10-04 → 2026-10-11 (+7d) |  |  |
| PG-H-CON-B-GF-AC-20 | Split AC, Grills & Diffuser Installation |  | 2026-10-04 → 2026-10-11 (+7d) | 50% → 60% | 18.6d → 17.35d |
| WS | **WATER SUPPLY SYSTEM** |  | 2026-10-05 → 2026-10-11 (+6d) |  |  |
| PG-H-CON-B-GF-WS-30 | Water Supply Accesories and Booster pump Installation |  | 2026-10-05 → 2026-10-11 (+6d) | 75% → 80% | 18.6d → 17.35d |
| ELC | **ELECTRICAL WORKS** |  | 2026-10-08 → 2026-10-15 (+7d) |  |  |
| PG-H-CON-B-GF-EL-20 | Electrical Light Fixtures Installation |  | 2026-10-07 → 2026-10-14 (+7d) |  | 18.6d → 17.35d |
| PG-H-CON-B-GF-EL-30 | Fire Alarm Devices Installation |  | 2026-10-07 → 2026-10-14 (+7d) |  | 18.6d → 17.35d |
| PG-H-CON-B-GF-EL-40 | Telecom & CCTV Devices Installation |  | 2026-10-08 → 2026-10-14 (+6d) |  | 18.6d → 17.35d |
| PG-H-CON-B-GF-EL-50 | Electrical & ELV Wiring Works |  | 2026-10-08 → 2026-10-15 (+7d) |  | 18.6d → 17.35d |
| TE & CO | **PROJECT CLOSOUT** |  | 2027-01-09 → 2027-01-10 (+1d) |  |  |
| PG-H-PCL-10_R | Testing, Commessioning for All Systems(Remaining) |  | 2026-12-07 → 2026-12-08 (+1d) |  | -19.7d → -21d |
| PG-H-PCL-20 | As-Built Drawings | 2026-12-07 → 2026-12-09 (+2d) | 2026-12-28 → 2026-12-29 (+1d) |  | -15.7d → -17d |
| PG-H-PCL-30 | Snag list Submission | 2026-12-07 → 2026-12-09 (+2d) | 2026-12-16 → 2026-12-17 (+1d) |  | -19.7d → -21d |
| PG-H-PCL-40 | Snag list Closeout | 2026-12-16 → 2026-12-19 (+3d) | 2027-01-02 → 2027-01-03 (+1d) |  | -19.7d → -21d |
| PG-H-PCL-50 | Issuing Approvals | 2027-01-02 → 2027-01-04 (+2d) | 2027-01-05 → 2027-01-06 (+1d) |  | -19.7d → -21d |
| PG-H-PCL-60 | Handing Over | 2027-01-05 → 2027-01-07 (+2d) | 2027-01-09 → 2027-01-10 (+1d) |  | -19.7d → -21d |
| TABUK | **TABUK** |  | 2027-02-03 → 2027-02-10 (+7d) |  |  |
| PR | **PROCUREMENT** |  | 2026-10-21 → 2026-10-26 (+5d) |  |  |
| 1 | **LONG LEAD ITEMS** |  | 2026-10-21 → 2026-10-26 (+5d) |  |  |
| 3 | **MANUFACTURE / FABRICATION** |  | 2026-10-14 → 2026-10-21 (+7d) |  |  |
| 2 | **SPORTS & RECREATIONAL FACILITIES WORK** |  | 2026-10-14 → 2026-10-21 (+7d) |  |  |
| PG-T-PR-LL-SP-MF-50 | Air Dome Materials |  | 2026-10-14 → 2026-10-21 (+7d) |  | -41.4d → -47.4d |

| ID | Task | Start | Finish | Complete | Total float |
| --- | --- | --- | --- | --- | --- |
| 4 | **DELIVERY TO SITE** |  | 2026-10-21 → 2026-10-26 (+5d) |  |  |
| 1 | **EXTERNAL / LANDSCAPE WORK** |  | 2026-10-04 → 2026-10-11 (+7d) |  |  |
| PG-T-PR-LL-LS-DL-20_R | Benches, Seats (Rectangular & Circular)(Remaining) |  | 2026-10-04 → 2026-10-11 (+7d) |  | 41d → 38.5d |
| 2 | **SPORTS & RECREATIONAL FACILITIES WORK** |  | 2026-10-21 → 2026-10-26 (+5d) |  |  |
| PG-T-PR-LL-SP-DL-40_R | Tartan Floor(Remaining) |  | 2026-10-04 → 2026-10-11 (+7d) |  | 38.4d → 32.4d |
| PG-T-PR-LL-SP-DL-10_R | Football Playground Materials (Flooring, goal post, nets, paints, etc)(Remaining) |  | 2026-10-04 → 2026-10-11 (+7d) |  | 47.65d → 43.6d |
| PG-T-PR-LL-SP-DL-20_R | Basketball Playground Materials (Flooring, basketball poll, nets, paints, etc)(Remaining) |  | 2026-10-04 → 2026-10-11 (+7d) |  | 40.8d → 34.8d |
| PG-T-PR-LL-SP-DL-30_R | Padel Playgound Materials (Fence, tempered glass, etc)(Remaining) |  | 2026-10-04 → 2026-10-11 (+7d) |  | 20.15d → 15.05d |
| PG-T-PR-LL-SP-DL-50 | Air Dome Materials |  | 2026-10-21 → 2026-10-26 (+5d) | 50% → 60% | -41.4d → -47.4d |
| 5 | **METAL WORK** |  | 2026-10-08 → 2026-10-14 (+6d) |  |  |
| PG-T-PR-LL-MT-DL-10_R | Metal Doors(Remaining) |  | 2026-10-04 → 2026-10-11 (+7d) |  | 37.8d → 32d |
| PG-T-PR-LL-MT-DL-20_R | Curtain Wall(Remaining) |  | 2026-10-08 → 2026-10-14 (+6d) | 55% → 60% | 34.6d → 29.2d |
| 7 | **PLUMBING WORK** |  | 2026-10-04 → 2026-10-11 (+7d) |  |  |
| PG-T-PR-LL-PB-DL-20_R | GRP Sectional Panel Water Tanks (4x3x3m)(Remaining) |  | 2026-10-04 → 2026-10-11 (+7d) |  | 22.5d → 24.8d |
| 8 | **IRRIGATION WORK** |  | 2026-10-03 → 2026-10-10 (+7d) |  |  |
| PG-T-PR-LL-IR-DL-20_R | Irrigation Control System(Remaining) |  | 2026-10-03 → 2026-10-10 (+7d) |  | -24.05d → -22.15d |
| 9 | **ELECTRICAL WORK** |  | 2026-10-05 → 2026-10-11 (+6d) |  |  |
| PG-T-PR-LL-EL-DL-10_R | Main Distribution Board(Remaining) |  | 2026-10-04 → 2026-10-11 (+7d) | 85% → 90% | -13.6d → -11.1d |
| PG-T-PR-LL-EL-DL-20_R | Power Panels (Pump, Street Light)(Remaining) |  | 2026-10-04 → 2026-10-11 (+7d) | 85% → 90% | -9.1d → -8.6d |
| PG-T-PR-LL-EL-DL-30_R | Site Lighting Poles(Remaining) |  | 2026-10-04 → 2026-10-11 (+7d) | 85% → 90% | -2.8d → -5.1d |
| PG-T-PR-LL-EL-DL-40_R | Lighting Fixtures(Remaining) |  | 2026-10-04 → 2026-10-11 (+7d) | 85% → 90% | 4.8d → -0.3d |
| PG-T-PR-LL-EL-DL-50_R | Grounding System Materials (Earth pit rod, LPS, etc)(Remaining) |  | 2026-10-03 → 2026-10-10 (+7d) | 85% → 90% | -13.6d → -11.5d |
| PG-T-PR-LL-EL-DL-60_R | Telecommunications & Data System Materials (Telephone outlet, CCTV, etc)(Remaining) |  | 2026-10-05 → 2026-10-11 (+6d) | 80% → 85% | 10.2d → 5.1d |
| PG-T-PR-LL-EL-DL-70_R | Security and Access Control System Materials(Remaining) |  | 2026-10-05 → 2026-10-11 (+6d) | 80% → 85% | 27.75d → 23.45d |
| PG-T-PR-LL-EL-DL-80_R | Fire Alarm System Materials(Remaining) |  | 2026-10-05 → 2026-10-11 (+6d) | 80% → 85% | 12.6d → 7.2d |
| 2 | **SHORT LEAD ITEMS** |  | 2026-10-08 → 2026-10-14 (+6d) |  |  |
| 3 | **DELIVERY TO SITE** |  | 2026-10-08 → 2026-10-14 (+6d) |  |  |
| 1 | **EXTERNAL / LANDSCAPE WORK** |  | 2026-10-03 → 2026-10-10 (+7d) |  |  |
| PG-T-PR-SL-LS-DL-60_R | Traffic Signages(Remaining) |  | 2026-10-03 → 2026-10-10 (+7d) |  | 29.2d → 31.5d |
| PG-T-PR-SL-LS-DL-70_R | Trees(Remaining) |  | 2026-10-03 → 2026-10-10 (+7d) |  | 29.2d → 31.5d |
| PG-T-PR-SL-LS-DL-80_R | Lawn(Remaining) |  | 2026-10-03 → 2026-10-10 (+7d) |  | 48.5d → 42.5d |
| 5 | **METAL WORK** |  | 2026-10-08 → 2026-10-14 (+6d) |  |  |
| PG-T-PR-SL-MT-DL-10_R | Galvanized Steel Ladder(Remaining) |  | 2026-10-08 → 2026-10-14 (+6d) | 50% → 60% | 32.05d → 27.7d |
| PG-T-PR-SL-MT-DL-20_R | Galvanized Steel Roof Scupper(Remaining) |  | 2026-10-08 → 2026-10-14 (+6d) | 50% → 60% | 32.05d → 27.7d |
| PG-T-PR-SL-MT-DL-30_R | Galvanized Steel Cover with frame(Remaining) |  | 2026-10-08 → 2026-10-14 (+6d) | 50% → 60% | 32.05d → 27.7d |
| 8 | **IRRIGATION WORK** |  | 2026-10-03 → 2026-10-10 (+7d) |  |  |
| PG-T-PR-SL-IR-DL-10_R | Gate Valve including valve box(Remaining) |  | 2026-10-03 → 2026-10-10 (+7d) |  | -24.5d → -22.6d |
| PG-T-PR-SL-IR-DL-20_R | Bulbblers and Spreyers(Remaining) |  | 2026-10-03 → 2026-10-10 (+7d) |  | -23.6d → -21.7d |
| 9 | **ELECTRICAL WORK** |  | 2026-10-06 → 2026-10-11 (+5d) |  |  |
| PG-T-PR-SL-EL-DL-10_R | Wiring Devices Materials(Remaining) |  | 2026-10-06 → 2026-10-11 (+5d) | 70% → 90% | -1d → -2.7d |
| 10 | **FIRE FIGHTING WORK** |  | 2026-10-07 → 2026-10-13 (+6d) |  |  |
| PG-T-PR-SL-FF-DL-10_R | Fire Extinguishers(Remaining) |  | 2026-10-07 → 2026-10-13 (+6d) | 50% → 60% | -22.5d → -19.7d |
| CO | **CONSTRUCTION STAGE** |  | 2027-01-24 → 2027-01-28 (+4d) |  |  |
| EX.SIT | **PLAYGROUND AND LANDSCAPING WORKS** |  | 2027-01-24 → 2027-01-21 (-3d) |  |  |
| 1 | **PLAYGROUND WORKS** |  | 2026-11-23 → 2026-11-29 (+6d) |  |  |
| FP | **FOOTBALL PLAYGROUND WORKS** |  | 2026-10-27 → 2026-10-31 (+4d) |  |  |
| PG-T-CON-EX-FB-90 | Turfing / Seeding Works |  | 2026-10-06 → 2026-10-13 (+7d) |  | 43.85d → 40.45d |
| PG-T-CON-EX-FB-120 | Installation of Lighting System |  | 2026-10-05 → 2026-10-11 (+6d) | 80% → 85% | 43.85d → 40.45d |
| PG-T-CON-EX-FB-60 | Goal Post Installation & Alignment |  | 2026-10-11 → 2026-10-17 (+6d) | 75% → 80% | 43.85d → 40.45d |
| PG-T-CON-EX-FB-110 | Install Playground Benches |  | 2026-10-15 → 2026-10-19 (+4d) | 70% → 80% | 43.85d → 40.45d |
| PG-T-CON-EX-FB-100 | Markings and Signages | 2026-10-15 → 2026-10-19 (+4d) | 2026-10-27 → 2026-10-31 (+4d) |  | 43.85d → 40.45d |
| BP | **BASKETBALL PLAYGROUND WORKS** |  | 2026-11-02 → 2026-11-09 (+7d) |  |  |
| PG-T-CON-EX-BB-60 | Basketball Pole Installation & Alignment |  | 2026-10-11 → 2026-10-18 (+7d) |  | 38.4d → 32.4d |
| PG-T-CON-EX-BB-80 | Court Line Marking |  | 2026-10-06 → 2026-10-13 (+7d) |  | 38.4d → 32.4d |
| PG-T-CON-EX-BB-100 | Install Playground Benches |  | 2026-11-02 → 2026-11-09 (+7d) |  | 38.4d → 32.4d |
| PG-T-CON-EX-BB-90 | Backboard & Hoop Installation | 2026-10-11 → 2026-10-18 (+7d) | 2026-10-31 → 2026-11-07 (+7d) |  | 38.4d → 32.4d |
| PP | **PADEL PLAYGROUND WORKS** |  | 2026-11-23 → 2026-11-29 (+6d) |  |  |
| PG-T-CON-EX-PD-30_R | Tartan Flooring Layers(Remaining) |  | 2026-11-02 → 2026-11-08 (+6d) |  | 20.15d → 15.05d |
| PG-T-CON-EX-PD-40 | Steel Structure & Fence Supports Installation |  | 2026-10-07 → 2026-10-14 (+7d) |  | 20.15d → 15.05d |
| PG-T-CON-EX-PD-60 | Chain Link Fence & Gates Installation |  | 2026-10-10 → 2026-10-15 (+5d) | 85% → 90% | 20.15d → 15.05d |
| PG-T-CON-EX-PD-80 | Install Playground Benches |  | 2026-11-23 → 2026-11-29 (+6d) |  | 20.15d → 15.05d |
| PG-T-CON-EX-PD-50 | Tempered Glass Installation | 2026-10-10 → 2026-10-17 (+7d) | 2026-10-31 → 2026-11-05 (+5d) |  | 20.15d → 15.05d |
| PG-T-CON-EX-PD-70 | Court Accessories Installation | 2026-11-02 → 2026-11-08 (+6d) | 2026-11-21 → 2026-11-26 (+5d) |  | 20.15d → 15.05d |
| GN.SI | **GENERAL SITE WORKS** |  | 2027-01-24 → 2027-01-21 (-3d) |  |  |
| 1 | **FENCE WORKS** |  | 2026-10-14 → 2026-10-18 (+4d) |  |  |
| PG-T-CON-EX-GN-FN-30 | Installation of Galvanized Steel Posts & Framing |  | 2026-10-04 → 2026-10-10 (+6d) | 85% → 90% | 5.05d → 10.1d |
| PG-T-CON-EX-GN-FN-40 | Fixing of Chain Link Mesh, Tensioning & Bracing |  | 2026-10-07 → 2026-10-11 (+4d) | 40% → 80% | 5.05d → 10.1d |
| PG-T-CON-EX-GN-FN-50 | Installation of Gates | 2026-10-07 → 2026-10-11 (+4d) | 2026-10-14 → 2026-10-18 (+4d) |  | 5.05d → 10.1d |
| 5 | **MECHANICAL WORK** |  | 2026-10-25 → 2026-11-01 (+7d) |  |  |
| 2 | **STORM WATER AND UTILITY WORK** |  | 2026-10-19 → 2026-10-26 (+7d) |  |  |

| ID | Task | Start | Finish | Complete | Total float |
| --- | --- | --- | --- | --- | --- |
| PG-T-CON-EX-GN-M-30 | Manhole Installation |  | 2026-10-03 → 2026-10-10 (+7d) |  | -32.65d → -30.35d |
| PG-T-CON-EX-GN-M-40 | 150 mm uPVC pipe laying & jointing |  | 2026-10-05 → 2026-10-12 (+7d) | 50% → 60% | -32.65d → -30.35d |
| PG-T-CON-EX-GN-M-50 | Concrete Encasement | 2026-10-06 → 2026-10-12 (+6d) | 2026-10-08 → 2026-10-15 (+7d) |  | -32.65d → -30.35d |
| PG-T-CON-EX-GN-M-60 | Backfilling & Compaction | 2026-10-10 → 2026-10-15 (+5d) | 2026-10-12 → 2026-10-19 (+7d) |  | -32.65d → -30.35d |
| PG-T-CON-EX-GN-M-70 | Surface Reinstatement & Civil Works | 2026-10-14 → 2026-10-21 (+7d) | 2026-10-19 → 2026-10-26 (+7d) |  | -32.65d → -30.35d |
| IR.SY | **IRRIGATION SYSTEM WORKS** |  | 2026-10-14 → 2026-10-21 (+7d) |  |  |
| PG-T-CON-EX-GN-M-80_R | Installation of HDPE Irrigation Pipe Network with Gate Valve and Box(Remaining) |  | 2026-10-12 → 2026-10-19 (+7d) |  | -32.65d → -30.35d |
| PG-T-CON-EX-GN-M-100 | Installation of Bubblers and Sprinklers |  | 2026-10-14 → 2026-10-21 (+7d) |  | -32.65d → -30.35d |
| PG-T-CON-EX-GN-M-90 | Installation of Irrigation Control System |  | 2026-10-13 → 2026-10-20 (+7d) |  | -32.65d → -30.35d |
| 1 | **FIRE PROTECTION SYSTEM** | 2026-10-19 → 2026-10-26 (+7d) | 2026-10-25 → 2026-11-01 (+7d) |  |  |
| PG-T-CON-EX-GN-M-110 | Fire Extinguisher Installation | 2026-10-19 → 2026-10-26 (+7d) | 2026-10-25 → 2026-11-01 (+7d) |  | -32.65d → -30.35d |
| 2 | **ELECTRICAL WORK** |  | 2027-01-03 → 2026-12-31 (-3d) |  |  |
| 1 | **POWER, LIGHTING & GROUNDING** |  | 2026-11-24 → 2026-11-22 (-2d) |  |  |
| PG-T-CON-EX-GN-E-20_R | Foundation Work for Site Lighting Poles(Remaining) |  | 2026-10-07 → 2026-10-14 (+7d) |  | -17.2d → -15.3d |
| PG-T-CON-EX-GN-E-30 | Lightning Protection System (LPS) |  | 2026-10-26 → 2026-11-02 (+7d) |  | -32.65d → -30.35d |
| PG-T-CON-EX-GN-E-40 | KWH Meter and MDB Installation |  | 2026-11-01 → 2026-11-04 (+3d) | 10% → 50% | -32.65d → -30.35d |
| PG-T-CON-EX-GN-E-50 | Power Panels and Distribution Boards |  | 2026-11-08 → 2026-11-09 (+1d) | 10% → 50% | -32.65d → -30.35d |
| PG-T-CON-EX-GN-E-60 | Site Lighting Poles Installation |  | 2026-11-12 → 2026-11-11 (-1d) | 40% → 60% | -32.65d → -30.35d |
| PG-T-CON-EX-GN-E-70 | Wiring Works | 2026-11-12 → 2026-10-04 A (-39d) | 2026-11-17 → 2026-11-15 (-2d) | 0% → 40% | -32.65d → -30.35d |
| PG-T-CON-EX-GN-E-80 | Lighting Fixtures with outlets Installation | 2026-11-17 → 2026-11-15 (-2d) | 2026-11-24 → 2026-11-22 (-2d) |  | -32.65d → -30.35d |
| 2 | **ELV SYSTEMS (TELECOM, DATA, AV & CCTV)** |  | 2026-12-17 → 2026-12-12 (-5d) |  |  |
| PG-T-CON-EX-GN-E-100 | Fiber Optic Pull Box Installation |  | 2026-11-30 → 2026-11-26 (-4d) | 20% → 30% | -26.3d → -21.8d |
| PG-T-CON-EX-GN-E-110 | Telephone and Data Outlet Installation |  | 2026-12-03 → 2026-11-30 (-3d) | 20% → 30% | -26.3d → -21.8d |
| PG-T-CON-EX-GN-E-120 | Telecom Equipment and AV HDMI Installation |  | 2026-12-07 → 2026-12-03 (-4d) | 20% → 30% | -26.3d → -21.8d |
| PG-T-CON-EX-GN-E-130 | CCTV Rack / Cabinet Installation |  | 2026-12-10 → 2026-12-06 (-4d) | 20% → 30% | -26.3d → -21.8d |
| PG-T-CON-EX-GN-E-140 | NVR and CCTV Monitor Installation |  | 2026-12-14 → 2026-12-09 (-5d) | 20% → 30% | -26.3d → -21.8d |
| PG-T-CON-EX-GN-E-150 | IP Camera Installation |  | 2026-12-17 → 2026-12-12 (-5d) | 20% → 30% | -26.3d → -21.8d |
| PG-T-CON-EX-GN-E-90 | ELV Containment & Cabling Works |  | 2026-11-26 → 2026-11-24 (-2d) | 20% → 30% | -32.65d → -30.35d |
| 3 | **FIRE ALARM SYSTEM** | 2026-11-26 → 2026-11-24 (-2d) | 2027-01-03 → 2026-12-31 (-3d) |  |  |
| PG-T-CON-EX-GN-E-160 | Fire Alarm Containment & Cabling | 2026-11-26 → 2026-11-24 (-2d) | 2026-12-06 → 2026-12-03 (-3d) |  | -32.65d → -30.35d |
| PG-T-CON-EX-GN-E-170 | Fire Alarm Control Panel (FACP) Installation | 2026-12-06 → 2026-12-03 (-3d) | 2026-12-15 → 2026-12-13 (-2d) |  | -32.65d → -30.35d |
| PG-T-CON-EX-GN-E-180 | Initiating Devices (Detectors & Manual Pull Station) | 2026-12-15 → 2026-12-13 (-2d) | 2026-12-24 → 2026-12-22 (-2d) |  | -32.65d → -30.35d |
| PG-T-CON-EX-GN-E-190 | Notification Appliances (Strobe with Sounder) | 2026-12-24 → 2026-12-22 (-2d) | 2027-01-03 → 2026-12-31 (-3d) |  | -32.65d → -30.35d |
| 3 | **PARKING WORK** |  | 2027-01-03 → 2026-12-31 (-3d) |  |  |
| PG-T-CON-EX-GN-PR-10 | Installlation of Parking Accessories |  | 2026-12-19 → 2026-12-13 (-6d) |  | -26.3d → -21.8d |
| PG-T-CON-EX-GN-PR-30 | Marking & Signages | 2026-12-26 → 2026-12-23 (-3d) | 2027-01-03 → 2026-12-31 (-3d) |  | -32.65d → -30.35d |
| 4 | **SERVICE CONNECTION** |  | 2027-01-24 → 2027-01-21 (-3d) |  |  |
| PG-T-CON-EX-GN-SC-20 | HDPE Pipe Laying & Valve Installation |  | 2027-01-03 → 2026-12-31 (-3d) |  | -32.65d → -30.35d |
| PG-T-CON-EX-GN-SC-30 | Connection to City Network | 2027-01-03 → 2026-12-31 (-3d) | 2027-01-14 → 2027-01-12 (-2d) |  | -32.65d → -30.35d |
| PG-T-CON-EX-GN-SC-40 | Backfilling | 2027-01-14 → 2027-01-12 (-2d) | 2027-01-24 → 2027-01-21 (-3d) |  | -32.65d → -30.35d |
| LS | **LANDSCAPING WORKS** |  | 2026-12-02 → 2026-11-28 (-4d) |  |  |
| HSP | **HARDSCAPE WORK** |  | 2026-12-02 → 2026-11-28 (-4d) |  |  |
| PG-T-CON-EX-LS-HS-30_R | Stamped Concrete Floor(Remaining) |  | 2026-11-09 → 2026-11-15 (+6d) |  | 8.1d → 7.4d |
| PG-T-CON-EX-LS-HS-20_R | Interlock Tiles Grey Scale with Black Marble Chips(Remaining) |  | 2026-11-09 → 2026-11-15 (+6d) |  | -2.7d → 1.4d |
| PG-T-CON-EX-LS-HS-60 | Install Recycled Precast Concrete Trash Bins |  | 2026-12-02 → 2026-11-28 (-4d) | 25% → 60% | -2.7d → 1.4d |
| SSP | **SOFTSCAPE WORK** |  | 2026-12-02 → 2026-11-28 (-4d) |  |  |
| PG-T-CON-EX-LS-SS-20_R | Lawn Area Preparation & Planting / Turfing(Remaining) |  | 2026-12-02 → 2026-11-28 (-4d) |  | -2.7d → 1.4d |
| PG-T-CON-EX-LS-SS-10 | Planting Trees |  |  | 10% → 50% | -2.7d → 1.4d |
| W.T | **TANK WORKS** |  | 2026-11-08 → 2026-11-12 (+4d) |  |  |
| 1 | **SEPTIC TANK** |  | 2026-11-02 → 2026-11-07 (+5d) |  |  |
| PG-T-CON-EX-TW-ST-40 | RCC Wall |  | 2026-10-08 → 2026-10-13 (+5d) | 40% → 60% | -2.7d → 1.4d |
| PG-T-CON-EX-TW-ST-50 | RCC Slab | 2026-10-08 → 2026-10-13 (+5d) | 2026-10-24 → 2026-10-28 (+4d) |  | -2.7d → 1.4d |
| PG-T-CON-EX-TW-ST-60 | Finishing Work | 2026-10-24 → 2026-10-28 (+4d) | 2026-11-02 → 2026-11-07 (+5d) |  | -2.7d → 1.4d |
| 2 | **WATER STORAGE TANK** |  | 2026-11-08 → 2026-11-12 (+4d) |  |  |
| PG-T-CON-EX-TW-IR-40 | GRP Water Tank Installation | 2026-11-02 → 2026-11-07 (+5d) | 2026-11-08 → 2026-11-12 (+4d) |  | -2.7d → 1.4d |
| AD | **AIR DOME CONSTRUCTION** |  | 2027-01-21 → 2027-01-28 (+7d) |  |  |
| 1 | **CIVIL WORK** |  | 2026-11-03 → 2026-11-10 (+7d) |  |  |
| PG-T-CON-EX-AD-CL-70 | Installation of Steel Cable Structural System | 2026-10-14 → 2026-10-21 (+7d) | 2026-10-25 → 2026-11-01 (+7d) |  | -41.4d → -47.4d |
| PG-T-CON-EX-AD-CL-80 | Installation of Membrane System | 2026-10-25 → 2026-11-01 (+7d) | 2026-11-03 → 2026-11-10 (+7d) |  | -41.4d → -47.4d |
| 2 | **ARCHITECTURAL WORK** | 2026-12-23 → 2026-12-30 (+7d) | 2027-01-21 → 2027-01-28 (+7d) |  |  |
| PG-T-CON-EX-AD-AR-10 | Installation of Thermal Insulation System | 2026-12-23 → 2026-12-30 (+7d) | 2026-12-31 → 2027-01-07 (+7d) |  | -41.4d → -47.4d |
| PG-T-CON-EX-AD-AR-40 | Final Fixing of Accessories & Finishes | 2026-12-31 → 2027-01-07 (+7d) | 2027-01-09 → 2027-01-16 (+7d) |  | -41.4d → -47.4d |
| PG-T-CON-EX-AD-AR-20 | Installation of Doors & Access Systems | 2027-01-09 → 2027-01-16 (+7d) | 2027-01-16 → 2027-01-23 (+7d) |  | -41.4d → -47.4d |
| PG-T-CON-EX-AD-AR-30 | Installation of Logo | 2027-01-16 → 2027-01-23 (+7d) | 2027-01-21 → 2027-01-28 (+7d) |  | -41.4d → -47.4d |
| 3 | **MECHANICAL WORK** | 2026-11-03 → 2026-11-10 (+7d) | 2026-11-30 → 2026-12-07 (+7d) |  |  |
| PG-T-CON-EX-AD-ME-10 | Installation of Main Air Package Units | 2026-11-03 → 2026-11-10 (+7d) | 2026-11-09 → 2026-11-16 (+7d) |  | -41.4d → -47.4d |
| PG-T-CON-EX-AD-ME-20 | Installation of Backup Air Package Unit | 2026-11-09 → 2026-11-16 (+7d) | 2026-11-15 → 2026-11-22 (+7d) |  | -41.4d → -47.4d |
| PG-T-CON-EX-AD-ME-30 | Installation of Complete HVAC System | 2026-11-23 → 2026-11-30 (+7d) | 2026-11-30 → 2026-12-07 (+7d) |  | -40.4d → -46.4d |
| 4 | **ELECTRICAL WORK** | 2026-11-15 → 2026-11-22 (+7d) | 2026-12-23 → 2026-12-30 (+7d) |  |  |
| PG-T-CON-EX-AD-EL-10 | Installation of Electrical Boxes & MDBs | 2026-11-15 → 2026-11-22 (+7d) | 2026-11-23 → 2026-11-30 (+7d) |  | -41.4d → -47.4d |

| ID | Task | Start | Finish | Complete | Total float |
| --- | --- | --- | --- | --- | --- |
| PG-T-CON-EX-AD-EL-20 | Installation of Lighting System | 2026-11-23 → 2026-11-30 (+7d) | 2026-12-01 → 2026-12-08 (+7d) |  | -41.4d → -47.4d |
| PG-T-CON-EX-AD-EL-30 | Electrical Connections to Main Power Source (Excluding kWh Meter) | 2026-12-01 → 2026-12-08 (+7d) | 2026-12-07 → 2026-12-14 (+7d) |  | -41.4d → -47.4d |
| PG-T-CON-EX-AD-EL-40 | Installation of Backup Generator | 2026-12-07 → 2026-12-14 (+7d) | 2026-12-14 → 2026-12-21 (+7d) |  | -41.4d → -47.4d |
| PG-T-CON-EX-AD-EL-50 | Installation of Smart Dome System | 2026-12-14 → 2026-12-21 (+7d) | 2026-12-23 → 2026-12-30 (+7d) |  | -41.4d → -47.4d |
| B | **TOILET BUILDING WORKS** |  | 2026-10-13 → 2026-10-18 (+5d) |  |  |
| CVL | **CIVIL WORK** |  | 2026-10-12 → 2026-10-17 (+5d) |  |  |
| AR | **ARCHITECTURAL WORK** |  | 2026-10-12 → 2026-10-17 (+5d) |  |  |
| 2 | **WET AREA FINISHES** |  | 2026-10-11 → 2026-10-13 (+2d) |  |  |
| PG-T-CON-B-AR-WF-60 | Install Doors |  | 2026-10-11 → 2026-10-13 (+2d) | 50% → 60% | 32.9d → 30d |
| 3 | **ROOF FINISHES** |  | 2026-10-12 → 2026-10-17 (+5d) |  |  |
| PG-T-CON-B-AR-RF-30 | Steel ladder and Steel roof scupper Installation |  | 2026-10-12 → 2026-10-17 (+5d) | 35% → 50% | 31.95d → 27.7d |
| MEP | **MEP WORK** |  | 2026-10-13 → 2026-10-18 (+5d) |  |  |
| MEC | **MECANICAL WORKS** |  | 2026-10-13 → 2026-10-18 (+5d) |  |  |
| FF | **FIRE FIGHTING SYSTEM** |  | 2026-10-13 → 2026-10-18 (+5d) |  |  |
| PG-T-CON-B-GF-FF-10 | Fire Extinguisher Installation |  | 2026-10-13 → 2026-10-18 (+5d) | 30% → 40% | 33.75d → 29.7d |
| DS | **SEWER AND DRAINAGE SYSTEM** |  | 2026-10-10 → 2026-10-13 (+3d) |  |  |
| PG-T-CON-B-GF-DR-30 | Sanitaryware Installation (Final Fix) |  | 2026-10-10 → 2026-10-13 (+3d) | 50% → 60% | 31.95d → 29.3d |
| HV | **HVAC SYSTEM** |  | 2026-10-11 → 2026-10-14 (+3d) |  |  |
| PG-T-CON-B-GF-AC-20 | Split AC, Grills & Diffuser Installation |  | 2026-10-11 → 2026-10-14 (+3d) | 35% → 50% | 35.8d → 33d |
| WS | **WATER SUPPLY SYSTEM** |  | 2026-10-08 → 2026-10-12 (+4d) |  |  |
| PG-T-CON-B-GF-WS-30 | Water Supply Accesories and Booster pump Installation |  | 2026-10-08 → 2026-10-12 (+4d) | 50% → 60% | 31.95d → 29.3d |
| TE & CO | **PROJECT CLOSOUT** |  | 2027-02-03 → 2027-02-10 (+7d) |  |  |
| PG-T-PCL-10_R | Testing, Commessioning for All Systems(Remaining) |  | 2027-01-21 → 2027-01-28 (+7d) |  | -41.4d → -47.4d |
| PG-T-PCL-20 | As-Built Drawings |  | 2027-01-28 → 2027-02-04 (+7d) |  | -39d → -45d |
| PG-T-PCL-30 | Snag list Submission | 2027-01-21 → 2027-01-28 (+7d) | 2027-01-24 → 2027-01-31 (+7d) |  | -41.4d → -47.4d |
| PG-T-PCL-40 | Snag list Closeout | 2027-01-24 → 2027-01-31 (+7d) | 2027-02-01 → 2027-02-08 (+7d) |  | -41.4d → -47.4d |
| PG-T-PCL-50 | Issuing Approvals | 2027-02-01 → 2027-02-08 (+7d) | 2027-02-02 → 2027-02-09 (+7d) |  | -41.4d → -47.4d |
| PG-T-PCL-60 | Handing Over | 2027-02-02 → 2027-02-09 (+7d) | 2027-02-03 → 2027-02-10 (+7d) |  | -41.4d → -47.4d |

## Version 5 (data date 2026-10-23, saved 2026-10-24, file 02. MLTX-02-003-UPS Level 5 - 2026-10-25.xer)

Last finish 2027-02-10 → 2027-02-14 (+4d). Complete tasks 1591 → 1629.

Changed:

| ID | Task | Start | Finish | Complete | Total float |
| --- | --- | --- | --- | --- | --- |
| MS | **MILESTONES** |  | 2027-02-10 → 2027-02-14 (+4d) |  |  |
| 1 | **GENERAL MILESTONES** |  | 2027-02-10 → 2027-02-14 (+4d) |  |  |
| PG-GN-MS-30_R | Project Durations(Remaining) |  | 2027-01-03 → 2026-12-15 (-19d) | 50% → 69% | -14.75d → 1.27d |
| PG-GN-MS-20 | Project Completion Date | 2027-02-10 → 2027-02-14 (+4d) | 2027-02-10 → 2027-02-14 (+4d) |  | -47.4d → -50.8d |
| 2 | **CONTRACUAL MILESTONES** |  | 2027-02-10 → 2027-02-14 (+4d) |  |  |
| PG-IN-MS-30 | Completion of Toilet Building | 2026-11-28 → 2026-11-05 (-23d) | 2026-11-28 → 2026-11-05 (-23d) |  | -5.5d → 13.25d |
| PG-IN-MS-40 | Completion of Landscape Works | 2027-01-25 → 2027-01-10 (-15d) | 2027-01-25 → 2027-01-10 (-15d) |  | -33.05d → -20.9d |
| PG-IN-MS-60 | Substantial Completion - All Works | 2027-02-10 → 2027-02-14 (+4d) | 2027-02-10 → 2027-02-14 (+4d) |  | -47.4d → -50.8d |
| QASSIM | **QASSIM** |  | 2027-01-31 → 2027-02-14 (+14d) |  |  |
| ENG | **ENGINEERING** |  | 2026-10-11 → 2026-10-25 (+14d) |  |  |
| 1 | **SHOP DRAWINGS SUBMITTALS** |  | 2026-10-11 → 2026-10-25 (+14d) |  |  |
| 4 | **MECHANICAL DRAWINGS** |  | 2026-10-11 → 2026-10-25 (+14d) |  |  |
| 4 | **AIR DOME** |  | 2026-10-11 → 2026-10-25 (+14d) |  |  |
| PG-Q-EN-ME-SD-SB-100 | Air Package and HVAC System Drawings |  | 2026-10-11 → 2026-10-25 (+14d) |  | -38.8d → -50.8d |
| 5 | **ELECTRICAL DRAWINGS** |  | 2026-10-11 → 2026-10-25 (+14d) |  |  |
| 4 | **AIR DOME** |  | 2026-10-11 → 2026-10-25 (+14d) |  |  |
| PG-Q-EN-EL-SD-SB-120 | Power & Lighting System Drawings |  | 2026-10-10 → 2026-10-24 (+14d) |  | -38d → -50d |
| PG-Q-EN-EL-SD-SB-130 | Generators Details |  | 2026-10-11 → 2026-10-25 (+14d) |  | -38.5d → -50.5d |
| PG-Q-EN-EL-SD-SB-140 | Smart Dome System Drawings |  | 2026-10-11 → 2026-10-25 (+14d) |  | -38.7d → -50.7d |
| PR | **PROCUREMENT** |  | 2026-11-24 → 2026-10-28 (-27d) |  |  |
| 1 | **LONG LEAD ITEMS** |  | 2026-11-24 → 2026-10-28 (-27d) |  |  |
| 3 | **MANUFACTURE / FABRICATION** |  | 2026-11-07 → 2026-10-04 (-34d) |  |  |
| 5 | **METAL WORK** |  | 2026-11-07 → 2026-10-04 (-34d) |  |  |
| PG-Q-PR-LL-MT-MF-20_R | Curtain Wall(Remaining) | 2026-10-10 → 2026-09-17 A (-23d) | 2026-11-07 → 2026-10-04 A (-34d) | 0% → 100% | -5.5d → none |
| 4 | **DELIVERY TO SITE** |  | 2026-11-24 → 2026-10-28 (-27d) |  |  |
| 1 | **EXTERNAL / LANDSCAPE WORK** |  | 2026-10-11 → 2026-10-25 (+14d) |  |  |
| PG-Q-PR-LL-LS-DL-20_R | Benches, Seats (Rectangular & Circular)(Remaining) |  | 2026-10-11 → 2026-10-25 (+14d) |  | 42.5d → 30.5d |
| 2 | **SPORTS & RECREATIONAL FACILITIES WORK** |  | 2026-10-15 → 2026-10-27 (+12d) |  |  |
| PG-Q-PR-LL-SP-DL-10_R | Football Playground Materials (Flooring, goal post, nets, paints, etc)(Remaining) |  | 2026-10-10 → 2026-10-24 (+14d) |  | 40.45d → 31.85d |
| PG-Q-PR-LL-SP-DL-20_R | Basketball Playground Materials (Flooring, basketball poll, nets, paints, etc)(Remaining) |  | 2026-10-10 → 2026-10-24 (+14d) |  | 40.65d → 35.85d |
| PG-Q-PR-LL-SP-DL-30_R | Padel Playgound Materials (Fence, tempered glass, etc)(Remaining) |  | 2026-10-10 → 2026-10-24 (+14d) |  |  |
| PG-Q-PR-LL-SP-DL-40_R | Tartan Floor(Remaining) |  | 2026-10-10 → 2026-10-24 (+14d) |  | 27.4d → 15.4d |
| PG-Q-PR-LL-SP-DL-50 | Air Dome Materials | 2026-08-25 A → 2026-10-24 A (+60d) | 2026-10-15 → 2026-10-27 (+12d) | 60% → 80% | -38.8d → -50.8d |
| 5 | **METAL WORK** |  | 2026-11-24 → 2026-10-28 (-27d) |  |  |
| PG-Q-PR-LL-MT-DL-20_R | Curtain Wall(Remaining) | 2026-11-08 → 2026-10-05 A (-34d) | 2026-11-24 → 2026-10-28 (-27d) | 0% → 70% | -5.5d → 18.9d |
| 7 | **PLUMBING WORK** |  | 2026-10-10 → 2026-10-13 (+3d) |  |  |
| PG-Q-PR-LL-PB-DL-20_R | GRP Sectional Panel Water Tanks (4x3x3m)(Remaining) |  | 2026-10-10 → 2026-10-13 A (+3d) | 95% → 100% | 16.95d → none |
| 8 | **IRRIGATION WORK** |  | 2026-10-10 → 2026-10-24 (+14d) |  |  |
| PG-Q-PR-LL-IR-DL-20_R | Irrigation Control System(Remaining) |  | 2026-10-10 → 2026-10-24 (+14d) |  | -18.05d → -1.2d |
| 9 | **ELECTRICAL WORK** |  | 2026-10-11 → 2026-10-25 (+14d) |  |  |
| PG-Q-PR-LL-EL-DL-10_R | Main Distribution Board(Remaining) |  | 2026-10-11 → 2026-10-25 (+14d) |  | -8.9d → 7.5d |
| PG-Q-PR-LL-EL-DL-20_R | Power Panels (Pump, Street Light)(Remaining) |  | 2026-10-10 → 2026-10-24 (+14d) |  | -6.4d → 8.8d |
| PG-Q-PR-LL-EL-DL-30_R | Site Lighting Poles(Remaining) |  | 2026-10-11 → 2026-10-25 (+14d) |  | -1.9d → 10.3d |
| PG-Q-PR-LL-EL-DL-40_R | Lighting Fixtures(Remaining) |  | 2026-10-11 → 2026-10-25 (+14d) |  | 1.7d → 12.1d |
| PG-Q-PR-LL-EL-DL-50_R | Grounding System Materials (Earth pit rod, LPS, etc)(Remaining) |  | 2026-10-11 → 2026-10-25 (+14d) |  | -9.5d → 6.9d |
| PG-Q-PR-LL-EL-DL-60_R | Telecommunications & Data System Materials (Telephone outlet, CCTV, etc)(Remaining) |  | 2026-10-11 → 2026-10-25 (+14d) |  | 5.7d → 13.7d |
| PG-Q-PR-LL-EL-DL-70_R | Security and Access Control System Materials(Remaining) |  | 2026-10-11 → 2026-10-25 (+14d) |  | 24.7d → 19.3d |
| PG-Q-PR-LL-EL-DL-80_R | Fire Alarm System Materials(Remaining) |  | 2026-10-11 → 2026-10-25 (+14d) |  | 8.7d → 15.9d |
| 2 | **SHORT LEAD ITEMS** |  | 2026-10-15 → 2026-10-25 (+10d) |  |  |
| 3 | **DELIVERY TO SITE** |  | 2026-10-15 → 2026-10-25 (+10d) |  |  |
| 1 | **EXTERNAL / LANDSCAPE WORK** |  | 2026-10-14 → 2026-10-25 (+11d) |  |  |
| PG-Q-PR-SL-LS-DL-50_R | Thermoplastic pavement road marking(Remaining) |  | 2026-10-14 → 2026-10-25 (+11d) | 60% → 90% | 23.4d → 19.8d |
| PG-Q-PR-SL-LS-DL-60_R | Traffic Signages(Remaining) |  | 2026-10-13 → 2026-10-25 (+12d) | 70% → 90% | 23.4d → 19.8d |
| PG-Q-PR-SL-LS-DL-70_R | Trees(Remaining) |  | 2026-10-13 → 2026-10-25 (+12d) | 70% → 90% | 23.4d → 19.8d |
| PG-Q-PR-SL-LS-DL-80_R | Lawn(Remaining) |  | 2026-10-13 → 2026-10-25 (+12d) | 70% → 90% | 23.4d → 19.8d |
| 5 | **METAL WORK** |  | 2026-10-13 → 2026-10-25 (+12d) |  |  |
| PG-Q-PR-SL-MT-DL-10_R | Galvanized Steel Ladder(Remaining) |  | 2026-10-13 → 2026-10-25 (+12d) | 70% → 90% | 31.9d → 23.3d |
| PG-Q-PR-SL-MT-DL-20_R | Galvanized Steel Roof Scupper(Remaining) |  | 2026-10-13 → 2026-10-25 (+12d) | 70% → 90% | 31.9d → 23.3d |
| PG-Q-PR-SL-MT-DL-30_R | Galvanized Steel Cover with frame(Remaining) |  | 2026-10-13 → 2026-10-25 (+12d) | 70% → 90% | 31.9d → 23.3d |
| 8 | **IRRIGATION WORK** |  | 2026-10-13 → 2026-10-25 (+12d) |  |  |
| PG-Q-PR-SL-IR-DL-10_R | Gate Valve including valve box(Remaining) |  | 2026-10-13 → 2026-10-25 (+12d) | 70% → 90% | -17.65d → -0.8d |
| PG-Q-PR-SL-IR-DL-20_R | Bulbblers and Spreyers(Remaining) |  | 2026-10-13 → 2026-10-25 (+12d) | 70% → 90% | -20.65d → -1.4d |
| 9 | **ELECTRICAL WORK** |  | 2026-10-15 → 2026-10-25 (+10d) |  |  |
| PG-Q-PR-SL-EL-DL-10_R | Wiring Devices Materials(Remaining) |  | 2026-10-15 → 2026-10-25 (+10d) | 60% → 90% | -5.8d → 10.9d |
| 10 | **FIRE FIGHTING WORK** |  | 2026-10-14 → 2026-10-25 (+11d) |  |  |
| PG-Q-PR-SL-FF-DL-10_R | Fire Extinguishers(Remaining) |  | 2026-10-14 → 2026-10-25 (+11d) | 60% → 90% | -14.8d → 5.2d |
| EX.SIT | **PLAYGROUND AND LANDSCAPING WORKS** |  | 2027-01-25 → 2027-01-03 (-22d) |  |  |
| FP | **FOOTBALL PLAYGROUND WORKS** |  | 2026-11-03 → 2026-11-12 (+9d) |  |  |
| PG-Q-CON-EX-FB-90 | Turfing / Seeding Works |  | 2026-10-13 → 2026-10-27 (+14d) |  | 37.4d → 29.4d |
| PG-Q-CON-EX-FB-120 | Installation of Lighting System |  | 2026-10-11 → 2026-10-25 (+14d) | 85% → 90% | 37.4d → 29.4d |

| ID | Task | Start | Finish | Complete | Total float |
| --- | --- | --- | --- | --- | --- |
| PG-Q-CON-EX-FB-110 | Install Playground Benches |  | 2026-10-25 → 2026-11-03 (+9d) | 60% → 80% | 37.4d → 29.4d |
| PG-Q-CON-EX-FB-60 | Goal Post Installation & Alignment |  | 2026-10-17 → 2026-10-31 (+14d) |  | 37.4d → 29.4d |
| PG-Q-CON-EX-FB-100 | Markings and Signages | 2026-10-25 → 2026-11-03 (+9d) | 2026-11-03 → 2026-11-12 (+9d) |  | 37.4d → 29.4d |
| BP | **BASKETBALL PLAYGROUND WORKS** |  | 2026-11-03 → 2026-11-09 (+6d) |  |  |
| PG-Q-CON-EX-BB-60 | Basketball Pole Installation & Alignment |  | 2026-10-18 → 2026-11-01 (+14d) |  | 37.65d → 32.85d |
| PG-Q-CON-EX-BB-80 | Court Line Marking |  | 2026-10-13 → 2026-10-27 (+14d) |  | 37.65d → 32.85d |
| PG-Q-CON-EX-BB-100 | Install Playground Benches |  | 2026-11-03 → 2026-11-09 (+6d) | 40% → 80% | 37.65d → 32.85d |
| PG-Q-CON-EX-BB-90 | Backboard & Hoop Installation |  | 2026-10-21 → 2026-11-04 (+14d) |  | 37.65d → 32.85d |
| PG-Q-CON-EX-PD-40 | Steel Structure & Fence Supports Installation |  | 2026-10-17 → 2026-10-28 (+11d) | 70% → 80% |  |
| PG-Q-CON-EX-PD-60 | Chain Link Fence & Gates Installation |  | 2026-10-20 → 2026-11-01 (+12d) |  |  |
| PG-Q-CON-EX-PD-50 | Tempered Glass Installation | 2026-10-20 → 2026-10-12 A (-8d) |  | 0% → 60% |  |
| GN.SI | **GENERAL SITE WORKS** |  | 2027-01-25 → 2027-01-03 (-22d) |  |  |
| 1 | **FENCE WORKS** |  | 2026-11-02 → 2026-10-20 (-13d) |  |  |
| PG-Q-CON-EX-GN-FN-30 | Installation of Galvanized Steel Posts & Framing |  | 2026-10-11 → 2026-10-17 A (+6d) | 85% → 100% | 4.9d → none |
| PG-Q-CON-EX-GN-FN-40 | Fixing of Chain Link Mesh, Tensioning & Bracing |  | 2026-10-21 → 2026-10-19 A (-2d) | 40% → 100% | 4.9d → none |
| PG-Q-CON-EX-GN-FN-50 | Installation of Gates | 2026-10-21 → 2026-10-14 A (-7d) | 2026-11-02 → 2026-10-20 A (-13d) | 0% → 100% | 4.9d → none |
| 5 | **MECHANICAL WORK** |  | 2026-11-08 → 2026-11-19 (+11d) |  |  |
| 2 | **STORM WATER AND UTILITY WORK** |  | 2026-11-05 → 2026-11-17 (+12d) |  |  |
| PG-Q-CON-EX-GN-M-30_R | Manhole Installation(Remaining) |  | 2026-10-11 → 2026-10-24 (+13d) | 80% → 90% | -33.05d → -15d |
| PG-Q-CON-EX-GN-M-40 | 150 mm uPVC pipe laying & jointing |  | 2026-10-12 → 2026-10-25 (+13d) | 80% → 90% | -33.05d → -15d |
| PG-Q-CON-EX-GN-M-50 | Concrete Encasement | 2026-10-12 → 2026-10-25 (+13d) | 2026-10-20 → 2026-11-02 (+13d) |  | -33.05d → -15d |
| PG-Q-CON-EX-GN-M-60 | Backfilling & Compaction | 2026-10-20 → 2026-11-02 (+13d) | 2026-10-27 → 2026-11-09 (+13d) |  | -33.05d → -15d |
| PG-Q-CON-EX-GN-M-70 | Surface Reinstatement & Civil Works | 2026-10-29 → 2026-11-10 (+12d) | 2026-11-05 → 2026-11-17 (+12d) |  | -33.05d → -15d |
| IR.SY | **IRRIGATION SYSTEM WORKS** |  | 2026-10-29 → 2026-11-10 (+12d) |  |  |
| PG-Q-CON-EX-GN-M-90 | Installation of Irrigation Control System |  | 2026-10-27 → 2026-11-09 (+13d) |  | -33.05d → -15d |
| PG-Q-CON-EX-GN-M-100 | Installation of Bubblers and Sprinklers |  | 2026-10-29 → 2026-11-10 (+12d) | 65% → 80% | -33.05d → -15d |
| 1 | **FIRE PROTECTION SYSTEM** | 2026-11-05 → 2026-11-17 (+12d) | 2026-11-08 → 2026-11-19 (+11d) |  |  |
| PG-Q-CON-EX-GN-M-110 | Fire Extinguisher Installation | 2026-11-05 → 2026-11-17 (+12d) | 2026-11-08 → 2026-11-19 (+11d) |  | -33.05d → -15d |
| 2 | **ELECTRICAL WORK** |  | 2027-01-05 → 2026-12-14 (-22d) |  |  |
| 1 | **POWER, LIGHTING & GROUNDING** |  | 2026-11-25 → 2026-11-28 (+3d) |  |  |
| PG-Q-CON-EX-GN-E-20_R | Foundation Work for Site Lighting Poles(Remaining) |  | 2026-11-05 → 2026-11-18 (+13d) |  | -31.75d → -13.7d |
| PG-Q-CON-EX-GN-E-60 | Site Lighting Poles Installation |  | 2026-11-17 → 2026-11-24 (+7d) |  | -33.05d → -15d |
| PG-Q-CON-EX-GN-E-30 | Lightning Protection System (LPS) |  | 2026-11-08 → 2026-11-19 (+11d) |  | -33.05d → -15d |
| PG-Q-CON-EX-GN-E-70 | Wiring Works | 2026-11-17 → 2026-10-10 A (-38d) | 2026-11-21 → 2026-11-25 (+4d) | 0% → 60% | -33.05d → -15d |
| PG-Q-CON-EX-GN-E-80 | Lighting Fixtures with outlets Installation | 2026-11-21 → 2026-10-12 A (-40d) | 2026-11-25 → 2026-11-28 (+3d) | 0% → 60% | -33.05d → -15d |
| PG-Q-CON-EX-GN-E-40 | KWH Meter and MDB Installation | 2026-11-08 → 2026-10-13 A (-26d) | 2026-11-10 → 2026-11-21 (+11d) | 0% → 60% | -33.05d → -15d |
| PG-Q-CON-EX-GN-E-50 | Power Panels and Distribution Boards | 2026-11-10 → 2026-10-14 A (-27d) | 2026-11-16 → 2026-11-23 (+7d) | 0% → 60% | -33.05d → -15d |
| 2 | **ELV SYSTEMS (TELECOM, DATA, AV & CCTV)** | 2026-11-25 → 2026-10-07 (-49d) | 2026-12-24 → 2026-12-09 (-15d) |  |  |
| PG-Q-CON-EX-GN-E-90 | ELV Containment & Cabling Works | 2026-11-25 → 2026-10-07 A (-49d) |  | 0% → 60% | -33.05d → -15d |
| PG-Q-CON-EX-GN-E-100 | Fiber Optic Pull Box Installation | 2026-11-29 → 2026-10-10 A (-50d) | 2026-12-02 → 2026-11-30 (-2d) | 0% → 60% | -28.05d → -15d |
| PG-Q-CON-EX-GN-E-110 | Telephone and Data Outlet Installation | 2026-12-02 → 2026-10-10 A (-53d) | 2026-12-07 → 2026-12-02 (-5d) | 0% → 60% | -28.05d → -15d |
| PG-Q-CON-EX-GN-E-130 | CCTV Rack / Cabinet Installation | 2026-12-12 → 2026-10-11 A (-62d) | 2026-12-16 → 2026-12-06 (-10d) | 0% → 60% | -28.05d → -15d |
| PG-Q-CON-EX-GN-E-120 | Telecom Equipment and AV HDMI Installation | 2026-12-07 → 2026-10-12 A (-56d) | 2026-12-12 → 2026-12-03 (-9d) | 0% → 60% | -28.05d → -15d |
| PG-Q-CON-EX-GN-E-140 | NVR and CCTV Monitor Installation | 2026-12-16 → 2026-10-13 A (-64d) | 2026-12-21 → 2026-12-07 (-14d) | 0% → 60% | -28.05d → -15d |
| PG-Q-CON-EX-GN-E-150 | IP Camera Installation | 2026-12-21 → 2026-10-14 A (-68d) | 2026-12-24 → 2026-12-09 (-15d) | 0% → 60% | -28.05d → -15d |
| 3 | **FIRE ALARM SYSTEM** | 2026-11-29 → 2026-10-11 (-49d) | 2027-01-05 → 2026-12-14 (-22d) |  |  |
| PG-Q-CON-EX-GN-E-160 | Fire Alarm Containment & Cabling | 2026-11-29 → 2026-10-11 A (-49d) | 2026-12-08 → 2026-12-02 (-6d) | 0% → 60% | -33.05d → -14d |
| PG-Q-CON-EX-GN-E-170 | Fire Alarm Control Panel (FACP) Installation | 2026-12-08 → 2026-10-12 A (-57d) | 2026-12-17 → 2026-12-06 (-11d) | 0% → 60% | -33.05d → -14d |
| PG-Q-CON-EX-GN-E-180 | Initiating Devices (Detectors & Manual Pull Station) | 2026-12-17 → 2026-10-13 A (-65d) | 2026-12-27 → 2026-12-09 (-18d) | 0% → 60% | -33.05d → -14d |
| PG-Q-CON-EX-GN-E-190 | Notification Appliances (Strobe with Sounder) | 2026-12-27 → 2026-10-15 A (-73d) | 2027-01-05 → 2026-12-14 (-22d) | 0% → 60% | -33.05d → -14d |
| 3 | **PARKING WORK** |  | 2027-01-05 → 2026-12-15 (-21d) |  |  |
| PG-Q-CON-EX-GN-PR-30 | Marking & Signages | 2026-12-30 → 2026-12-09 (-21d) | 2027-01-05 → 2026-12-15 (-21d) |  | -33.05d → -15d |
| 4 | **SERVICE CONNECTION** |  | 2027-01-25 → 2027-01-03 (-22d) |  |  |
| PG-Q-CON-EX-GN-SC-20 | HDPE Pipe Laying & Valve Installation |  | 2027-01-06 → 2026-12-15 (-22d) |  | -33.05d → -15d |
| PG-Q-CON-EX-GN-SC-30 | Connection to City Network | 2027-01-06 → 2026-12-16 (-21d) | 2027-01-16 → 2026-12-24 (-23d) |  | -33.05d → -15d |
| PG-Q-CON-EX-GN-SC-40 | Backfilling | 2027-01-16 → 2026-12-26 (-21d) | 2027-01-25 → 2027-01-03 (-22d) |  | -33.05d → -15d |
| LS | **LANDSCAPING WORKS** |  | 2026-12-12 → 2026-11-26 (-16d) |  |  |
| HSP | **HARDSCAPE WORK** |  | 2026-12-12 → 2026-11-26 (-16d) |  |  |
| PG-Q-CON-EX-LS-HS-50_R | Install Recycled Precast Concrete Seats(Remaining) |  | 2026-11-30 → 2026-11-22 (-8d) |  | 4.9d → 17.3d |
| PG-Q-CON-EX-LS-HS-20_R | Interlock Tiles Grey Scale with Black Marble Chips(Remaining) |  | 2026-11-04 → 2026-10-27 (-8d) |  | 4.9d → 17.3d |
| PG-Q-CON-EX-LS-HS-60 | Install Recycled Precast Concrete Trash Bins | 2026-11-30 → 2026-10-12 A (-49d) | 2026-12-12 → 2026-11-26 (-16d) | 0% → 60% | 4.9d → 17.3d |
| SSP | **SOFTSCAPE WORK** |  | 2026-11-28 → 2026-11-19 (-9d) |  |  |
| PG-Q-CON-EX-LS-SS-20_R | Lawn Area Preparation & Planting / Turfing(Remaining) |  | 2026-11-08 → 2026-10-31 (-8d) |  | 4.9d → 17.3d |
| PG-Q-CON-EX-LS-SS-10 | Planting Trees | 2026-11-08 → 2026-10-31 (-8d) | 2026-11-28 → 2026-11-19 (-9d) |  | 4.9d → 17.3d |
| W.T | **TANK WORKS** |  | 2026-10-19 → 2026-10-26 (+7d) |  |  |
| 2 | **WATER STORAGE TANK** |  | 2026-10-19 → 2026-10-26 (+7d) |  |  |
| PG-Q-CON-EX-TW-IR-40 | GRP Water Tank Installation | 2026-10-10 → 2026-10-14 A (+4d) | 2026-10-19 → 2026-10-26 (+7d) | 0% → 70% | 16.95d → 17.3d |
| AD | **AIR DOME CONSTRUCTION** |  | 2027-01-11 → 2027-01-25 (+14d) |  |  |
| 1 | **CIVIL WORK** |  | 2026-11-01 → 2026-11-15 (+14d) |  |  |
| PG-Q-CON-EX-AD-CL-70 | Installation of Steel Cable Structural System | 2026-10-11 → 2026-10-25 (+14d) | 2026-10-22 → 2026-11-05 (+14d) |  | -38.8d → -50.8d |

| ID | Task | Start | Finish | Complete | Total float |
| --- | --- | --- | --- | --- | --- |
| PG-Q-CON-EX-AD-CL-80 | Installation of Membrane System | 2026-10-22 → 2026-11-05 (+14d) | 2026-11-01 → 2026-11-15 (+14d) |  | -38.8d → -50.8d |
| 2 | **ARCHITECTURAL WORK** |  | 2027-01-11 → 2027-01-25 (+14d) |  |  |
| PG-Q-CON-EX-AD-AR-10 | Installation of Thermal Insulation System |  | 2026-12-20 → 2027-01-03 (+14d) |  | -38.8d → -50.8d |
| PG-Q-CON-EX-AD-AR-40 | Final Fixing of Accessories & Finishes | 2026-12-20 → 2027-01-03 (+14d) | 2026-12-29 → 2027-01-12 (+14d) |  | -38.8d → -50.8d |
| PG-Q-CON-EX-AD-AR-20 | Installation of Doors & Access Systems | 2026-12-29 → 2027-01-12 (+14d) | 2027-01-05 → 2027-01-19 (+14d) |  | -38.8d → -50.8d |
| PG-Q-CON-EX-AD-AR-30 | Installation of Logo | 2027-01-05 → 2027-01-19 (+14d) | 2027-01-11 → 2027-01-25 (+14d) |  | -38.8d → -50.8d |
| 3 | **MECHANICAL WORK** | 2026-11-01 → 2026-11-15 (+14d) | 2026-11-19 → 2026-12-03 (+14d) |  |  |
| PG-Q-CON-EX-AD-ME-10 | Installation of Main Air Package Units | 2026-11-01 → 2026-11-15 (+14d) | 2026-11-07 → 2026-11-21 (+14d) |  | -38.8d → -50.8d |
| PG-Q-CON-EX-AD-ME-20 | Installation of Backup Air Package Unit | 2026-11-07 → 2026-11-21 (+14d) | 2026-11-12 → 2026-11-26 (+14d) |  | -38.8d → -50.8d |
| PG-Q-CON-EX-AD-ME-30 | Installation of Complete HVAC System | 2026-11-12 → 2026-11-26 (+14d) | 2026-11-19 → 2026-12-03 (+14d) |  | -38.8d → -50.8d |
| 4 | **ELECTRICAL WORK** |  | 2026-12-15 → 2026-12-29 (+14d) |  |  |
| PG-Q-CON-EX-AD-EL-10 | Installation of Electrical Boxes & MDBs |  | 2026-10-15 → 2026-10-29 (+14d) |  | -20.8d → -32.8d |
| PG-Q-CON-EX-AD-EL-20 | Installation of Lighting System | 2026-10-15 → 2026-10-29 (+14d) | 2026-10-29 → 2026-11-12 (+14d) |  | -20.8d → -32.8d |
| PG-Q-CON-EX-AD-EL-30 | Electrical Connections to Main Power Source (Excluding kWh Meter) | 2026-11-19 → 2026-12-03 (+14d) | 2026-11-25 → 2026-12-09 (+14d) |  | -38.8d → -50.8d |
| PG-Q-CON-EX-AD-EL-40 | Installation of Backup Generator | 2026-11-25 → 2026-12-09 (+14d) | 2026-12-02 → 2026-12-16 (+14d) |  | -38.8d → -50.8d |
| PG-Q-CON-EX-AD-EL-50 | Installation of Smart Dome System | 2026-12-02 → 2026-12-16 (+14d) | 2026-12-15 → 2026-12-29 (+14d) |  | -38.8d → -50.8d |
| B | **TOILET BUILDING WORKS** |  | 2026-11-28 → 2026-10-31 (-28d) |  |  |
| CVL | **CIVIL WORK** |  | 2026-11-26 → 2026-10-29 (-28d) |  |  |
| AR | **ARCHITECTURAL WORK** |  | 2026-11-26 → 2026-10-29 (-28d) |  |  |
| 1 | **GENERAL FINISHES** |  | 2026-11-26 → 2026-10-29 (-28d) |  |  |
| PG-Q-CON-B-AR-GF-60 | Install Doors & Windows |  | 2026-10-19 → 2026-10-27 (+8d) |  | 25.6d → 19.8d |
| PG-Q-CON-B-AR-GF-70 | Lockers and Furniture Installation |  | 2026-11-26 → 2026-10-29 (-28d) | 60% → 70% | -5.5d → 18.9d |
| 2 | **WET AREA FINISHES** |  | 2026-10-19 → 2026-10-27 (+8d) |  |  |
| PG-Q-CON-B-AR-WF-60 | Install Doors |  | 2026-10-19 → 2026-10-27 (+8d) |  | 28.3d → 21.6d |
| 3 | **ROOF FINISHES** |  | 2026-11-26 → 2026-10-29 (-28d) |  |  |
| PG-Q-CON-B-AR-RF-20 | Epoxy Flooring and Finishes |  | 2026-10-18 → 2026-10-26 (+8d) |  | 27.5d → 21.8d |
| PG-Q-CON-B-AR-RF-30 | Steel ladder and Steel roof scupper Installation | 2026-11-26 → 2026-10-14 A (-43d) | 2026-11-26 → 2026-10-29 (-28d) | 0% → 60% | -5.5d → 18.9d |
| MEP | **MEP WORK** |  | 2026-11-28 → 2026-10-31 (-28d) |  |  |
| MEC | **MECANICAL WORKS** |  | 2026-11-28 → 2026-10-31 (-28d) |  |  |
| FF | **FIRE FIGHTING SYSTEM** |  | 2026-11-28 → 2026-10-31 (-28d) |  |  |
| PG-Q-CON-B-GF-FF-10 | Fire Extinguisher Installation |  | 2026-11-28 → 2026-10-31 (-28d) | 30% → 70% | -5.5d → 18.9d |
| DS | **SEWER AND DRAINAGE SYSTEM** |  | 2026-10-18 → 2026-10-26 (+8d) |  |  |
| PG-Q-CON-B-GF-DR-30 | Sanitaryware Installation (Final Fix) |  | 2026-10-18 → 2026-10-26 (+8d) | 30% → 70% | 25.6d → 19.8d |
| HV | **HVAC SYSTEM** |  | 2026-10-12 → 2026-10-24 (+12d) |  |  |
| PG-Q-CON-B-GF-AC-20 | Split AC, Grills & Diffuser Installation |  | 2026-10-12 → 2026-10-24 (+12d) | 30% → 70% | 29.5d → 20.4d |
| TE & CO | **PROJECT CLOSOUT** |  | 2027-01-31 → 2027-02-14 (+14d) |  |  |
| PG-Q-PCL-10_R | Testing, Commessioning for All Systems(Remaining) |  | 2027-01-11 → 2027-01-25 (+14d) |  | -38.8d → -50.8d |
| PG-Q-PCL-20 | As-Built Drawings |  | 2027-01-19 → 2027-02-02 (+14d) |  | -32.4d → -44.4d |
| PG-Q-PCL-30 | Snag list Submission | 2027-01-11 → 2027-01-25 (+14d) | 2027-01-14 → 2027-01-28 (+14d) |  | -38.8d → -50.8d |
| PG-Q-PCL-40 | Snag list Closeout | 2027-01-14 → 2027-01-28 (+14d) | 2027-01-26 → 2027-02-09 (+14d) |  | -38.8d → -50.8d |
| PG-Q-PCL-50 | Issuing Approvals | 2027-01-26 → 2027-02-09 (+14d) | 2027-01-30 → 2027-02-13 (+14d) |  | -38.8d → -50.8d |
| PG-Q-PCL-60 | Handing Over | 2027-01-30 → 2027-02-13 (+14d) | 2027-01-31 → 2027-02-14 (+14d) |  | -38.8d → -50.8d |
| HAIL | **HAIL** |  | 2027-01-21 → 2027-01-09 (-12d) |  |  |
| PR | **PROCUREMENT** |  | 2026-11-10 → 2026-10-26 (-15d) |  |  |
| 1 | **LONG LEAD ITEMS** |  | 2026-11-10 → 2026-10-26 (-15d) |  |  |
| 3 | **MANUFACTURE / FABRICATION** |  | 2026-11-07 → 2026-10-02 (-36d) |  |  |
| 5 | **METAL WORK** |  | 2026-11-07 → 2026-10-02 (-36d) |  |  |
| PG-H-PR-LL-MT-MF-20_R | Curtain Wall(Remaining) | 2026-10-10 → 2026-08-17 A (-54d) | 2026-11-07 → 2026-08-26 A (-73d) | 0% → 100% | -1.6d → none |
| 4 | **DELIVERY TO SITE** |  | 2026-11-10 → 2026-10-26 (-15d) |  |  |
| 1 | **EXTERNAL / LANDSCAPE WORK** |  | 2026-10-11 → 2026-10-15 (+4d) |  |  |
| PG-H-PR-LL-LS-DL-10_R | Bike and Walk Path Materials(Remaining) |  | 2026-10-10 → 2026-10-13 A (+3d) | 95% → 100% | 16.8d → none |
| PG-H-PR-LL-LS-DL-20_R | Benches, Seats (Rectangular & Circular)(Remaining) |  | 2026-10-11 → 2026-10-15 A (+4d) | 90% → 100% | 19.8d → none |
| 2 | **SPORTS & RECREATIONAL FACILITIES WORK** |  | 2026-10-11 → 2026-10-15 (+4d) |  |  |
| PG-H-PR-LL-SP-DL-10_R | Football Playground Materials (Flooring, goal post, nets, paints, etc)(Remaining) |  | 2026-10-10 → 2026-10-15 A (+5d) | 95% → 100% | 39.85d → none |
| PG-H-PR-LL-SP-DL-20_R | Tartan Floor(Remaining) |  | 2026-10-11 → 2026-10-15 A (+4d) | 90% → 100% | 39.85d → none |
| 5 | **METAL WORK** |  | 2026-11-10 → 2026-10-26 (-15d) |  |  |
| PG-H-PR-LL-MT-DL-10_R | Metal Doors(Remaining) |  | 2026-10-12 → 2026-10-15 A (+3d) | 80% → 100% | 22.4d → none |
| PG-H-PR-LL-MT-DL-20_R | Curtain Wall(Remaining) |  | 2026-11-10 → 2026-10-26 (-15d) |  | -1.6d → 12.8d |
| 7 | **PLUMBING WORK** |  | 2026-10-11 → 2026-10-15 (+4d) |  |  |
| PG-H-PR-LL-PB-DL-20_R | GRP Sectional Panel Water Tanks (4x3x3m)(Remaining) |  | 2026-10-11 → 2026-10-15 A (+4d) | 90% → 100% | -2.7d → none |
| 9 | **ELECTRICAL WORK** |  | 2026-10-11 → 2026-10-25 (+14d) |  |  |
| PG-H-PR-LL-EL-DL-30_R | Site Lighting Poles(Remaining) |  | 2026-10-11 → 2026-10-25 (+14d) |  | 0.4d → 13.4d |
| PG-H-PR-LL-EL-DL-40_R | Lighting Fixtures(Remaining) |  | 2026-10-11 → 2026-10-25 (+14d) |  | 6.4d → 9.35d |
| PG-H-PR-LL-EL-DL-10_R | Main Distribution Board(Remaining) |  | 2026-10-10 → 2026-10-24 (+14d) |  | -6.2d → 11d |
| PG-H-PR-LL-EL-DL-20_R | Power Panels (Pump, Street Light)(Remaining) |  | 2026-10-10 → 2026-10-24 (+14d) |  | -4.2d → 11.8d |
| PG-H-PR-LL-EL-DL-50_R | Grounding System Materials (Earth pit rod, LPS, etc)(Remaining) |  | 2026-10-10 → 2026-10-24 (+14d) |  | -9.2d → 9.8d |
| PG-H-PR-LL-EL-DL-60_R | Telecommunications & Data System Materials (Telephone outlet, CCTV, etc)(Remaining) |  | 2026-10-11 → 2026-10-25 (+14d) |  | 10.4d → 17.4d |
| PG-H-PR-LL-EL-DL-70_R | Security and Access Control System Materials(Remaining) |  | 2026-10-11 → 2026-10-25 (+14d) |  | 28.15d → 23d |
| PG-H-PR-LL-EL-DL-80_R | Fire Alarm System Materials(Remaining) |  | 2026-10-11 → 2026-10-25 (+14d) |  | 13.4d → 20.6d |
| 2 | **SHORT LEAD ITEMS** |  | 2026-10-20 → 2026-10-25 (+5d) |  |  |

| ID | Task | Start | Finish | Complete | Total float |
| --- | --- | --- | --- | --- | --- |
| 3 | **DELIVERY TO SITE** |  | 2026-10-20 → 2026-10-25 (+5d) |  |  |
| 1 | **EXTERNAL / LANDSCAPE WORK** |  | 2026-10-11 → 2026-10-25 (+14d) |  |  |
| PG-H-PR-SL-LS-DL-50_R | Thermoplastic pavement road marking(Remaining) |  | 2026-10-11 → 2026-09-19 A (-22d) | 85% → 100% | 5.6d → none |
| PG-H-PR-SL-LS-DL-60_R | Traffic Signages(Remaining) |  | 2026-10-11 → 2026-10-25 (+14d) | 85% → 90% | 5.6d → -4.8d |
| PG-H-PR-SL-LS-DL-70_R | Trees(Remaining) |  | 2026-10-11 → 2026-10-25 (+14d) | 85% → 90% | 5.6d → -4.8d |
| PG-H-PR-SL-LS-DL-80_R | Lawn(Remaining) |  | 2026-10-11 → 2026-10-25 (+14d) | 85% → 90% | 27.9d → 16.5d |
| 8 | **IRRIGATION WORK** |  | 2026-10-11 → 2026-10-15 (+4d) |  |  |
| PG-H-PR-SL-IR-DL-10_R | Gate Valve including valve box(Remaining) |  | 2026-10-11 → 2026-10-15 A (+4d) | 85% → 100% | -20.1d → none |
| PG-H-PR-SL-IR-DL-20_R | Bulbblers and Spreyers(Remaining) |  | 2026-10-11 → 2026-10-15 A (+4d) | 85% → 100% | -19.2d → none |
| 9 | **ELECTRICAL WORK** |  | 2026-10-14 → 2026-10-15 (+1d) |  |  |
| PG-H-PR-SL-EL-DL-10_R | Wiring Devices Materials(Remaining) |  | 2026-10-14 → 2026-10-15 A (+1d) | 60% → 100% | -0.2d → none |
| 10 | **FIRE FIGHTING WORK** |  | 2026-10-20 → 2026-10-15 (-5d) |  |  |
| PG-H-PR-SL-FF-DL-10_R | Fire Extinguishers(Remaining) |  | 2026-10-20 → 2026-10-15 A (-5d) | 20% → 100% | -20d → none |
| CO | **CONSTRUCTION STAGE** |  | 2027-01-21 → 2026-12-21 (-31d) |  |  |
| EX.SIT | **PLAYGROUND AND LANDSCAPING WORKS** |  | 2027-01-21 → 2026-12-21 (-31d) |  |  |
| 1 | **PLAYGROUND WORKS** |  | 2026-11-09 → 2026-11-16 (+7d) |  |  |
| FP | **FOOTBALL PLAYGROUND WORKS** |  | 2026-11-09 → 2026-11-16 (+7d) |  |  |
| PG-H-CON-EX-FB-40_R | Tartan flooring(Remaining) |  | 2026-10-20 → 2026-10-28 (+8d) |  | 32.3d → 26.4d |
| PG-H-CON-EX-FB-90 | Turfing / Seeding Works |  | 2026-10-20 → 2026-10-28 (+8d) |  | 32.3d → 26.4d |
| PG-H-CON-EX-FB-50 | Goal Post Foundation |  | 2026-10-13 → 2026-10-15 A (+2d) | 80% → 100% | 32.3d → none |
| PG-H-CON-EX-FB-60 | Goal Post Installation & Alignment |  | 2026-10-24 → 2026-11-01 (+8d) | 70% → 80% | 32.3d → 26.4d |
| PG-H-CON-EX-FB-110 | Install Playground Benches |  | 2026-10-28 → 2026-11-04 (+7d) | 75% → 80% | 32.3d → 26.4d |
| PG-H-CON-EX-FB-120 | Installation of Lighting System |  | 2026-10-17 → 2026-10-26 (+9d) | 75% → 80% | 32.3d → 26.4d |
| PG-H-CON-EX-FB-100 | Markings and Signages | 2026-10-28 → 2026-11-04 (+7d) | 2026-11-09 → 2026-11-16 (+7d) |  | 32.3d → 26.4d |
| GN.SI | **GENERAL SITE WORKS** |  | 2027-01-21 → 2026-12-21 (-31d) |  |  |
| 1 | **FENCE WORKS** |  | 2026-10-17 → 2026-10-15 (-2d) |  |  |
| PG-H-CON-EX-GN-FN-30 | Installation of Galvanized Steel Posts & Framing |  | 2026-10-10 → 2026-10-14 A (+4d) | 90% → 100% | -21d → none |
| PG-H-CON-EX-GN-FN-40 | Fixing of Chain Link Mesh, Tensioning & Bracing |  | 2026-10-12 → 2026-10-15 A (+3d) | 80% → 100% | -21d → none |
| PG-H-CON-EX-GN-FN-50 | Installation of Gates | 2026-10-12 → 2026-10-05 A (-7d) | 2026-10-17 → 2026-10-15 A (-2d) | 0% → 100% | -21d → none |
| 5 | **MECHANICAL WORK** |  | 2026-11-04 → 2026-11-09 (+5d) |  |  |
| 2 | **STORM WATER AND UTILITY WORK** |  | 2026-11-02 → 2026-11-08 (+6d) |  |  |
| PG-H-CON-EX-GN-M-20_R | Bedding preparation & level control(Remaining) |  | 2026-10-11 → 2026-10-24 (+13d) | 85% → 90% | -30.8d → -3.7d |
| PG-H-CON-EX-GN-M-30 | Manhole Installation |  | 2026-10-12 → 2026-10-25 (+13d) | 80% → 90% | -30.8d → -3.7d |
| PG-H-CON-EX-GN-M-40 | 150 mm uPVC pipe laying & jointing | 2026-10-12 → 2026-10-13 A (+1d) | 2026-10-17 → 2026-10-26 (+9d) | 0% → 80% | -30.8d → -3.7d |
| PG-H-CON-EX-GN-M-50 | Concrete Encasement | 2026-10-17 → 2026-10-26 (+9d) | 2026-10-20 → 2026-10-29 (+9d) |  | -30.8d → -3.7d |
| PG-H-CON-EX-GN-M-60 | Backfilling & Compaction | 2026-10-20 → 2026-10-29 (+9d) | 2026-10-24 → 2026-11-02 (+9d) |  | -30.8d → -3.7d |
| PG-H-CON-EX-GN-M-70 | Surface Reinstatement & Civil Works | 2026-10-28 → 2026-11-03 (+6d) | 2026-11-02 → 2026-11-08 (+6d) |  | -30.8d → -3.7d |
| IR.SY | **IRRIGATION SYSTEM WORKS** |  | 2026-10-28 → 2026-11-03 (+6d) |  |  |
| PG-H-CON-EX-GN-M-80_R | Installation of HDPE Irrigation Pipe Network with Gate Valve and Box(Remaining) |  | 2026-10-24 → 2026-11-02 (+9d) | 85% → 90% | -30.8d → -3.7d |
| PG-H-CON-EX-GN-M-90 | Installation of Irrigation Control System |  | 2026-10-25 → 2026-11-02 (+8d) | 70% → 80% | -30.8d → -3.7d |
| PG-H-CON-EX-GN-M-100 | Installation of Bubblers and Sprinklers | 2026-10-25 → 2026-10-10 A (-15d) | 2026-10-28 → 2026-11-03 (+6d) | 0% → 80% | -30.8d → -3.7d |
| 1 | **FIRE PROTECTION SYSTEM** | 2026-11-02 → 2026-10-11 (-22d) | 2026-11-04 → 2026-11-09 (+5d) |  |  |
| PG-H-CON-EX-GN-M-110 | Fire Extinguisher Installation | 2026-11-02 → 2026-10-11 A (-22d) | 2026-11-04 → 2026-11-09 (+5d) | 0% → 60% | -30.8d → -3.7d |
| 2 | **ELECTRICAL WORK** |  | 2027-01-07 → 2026-12-05 (-33d) |  |  |
| 1 | **POWER, LIGHTING & GROUNDING** |  | 2026-11-28 → 2026-11-18 (-10d) |  |  |
| PG-H-CON-EX-GN-E-20_R | Foundation Work for Site Lighting Poles(Remaining) |  | 2026-11-03 → 2026-11-09 (+6d) |  | -29.5d → -3.6d |
| PG-H-CON-EX-GN-E-30 | Lightning Protection System (LPS) | 2026-11-04 → 2026-10-10 A (-25d) | 2026-11-08 → 2026-11-10 (+2d) | 0% → 60% | -30.8d → -3.7d |
| PG-H-CON-EX-GN-E-70 | Wiring Works | 2026-11-19 → 2026-10-10 A (-40d) | 2026-11-23 → 2026-11-16 (-7d) | 0% → 60% | -30.8d → -3.7d |
| PG-H-CON-EX-GN-E-40 | KWH Meter and MDB Installation | 2026-11-08 → 2026-10-11 A (-28d) | 2026-11-10 → 2026-11-11 (+1d) | 0% → 60% | -30.8d → -3.7d |
| PG-H-CON-EX-GN-E-50 | Power Panels and Distribution Boards | 2026-11-10 → 2026-10-11 A (-30d) | 2026-11-16 → 2026-11-14 (-2d) | 0% → 60% | -30.8d → -3.7d |
| PG-H-CON-EX-GN-E-60 | Site Lighting Poles Installation | 2026-11-16 → 2026-10-12 A (-35d) | 2026-11-19 → 2026-11-15 (-4d) | 0% → 60% | -30.8d → -3.7d |
| PG-H-CON-EX-GN-E-80 | Lighting Fixtures with outlets Installation | 2026-11-23 → 2026-10-13 A (-41d) | 2026-11-28 → 2026-11-18 (-10d) | 0% → 60% | -30.8d → -3.7d |
| 2 | **ELV SYSTEMS (TELECOM, DATA, AV & CCTV)** | 2026-11-28 → 2026-10-10 (-49d) | 2026-12-27 → 2026-11-30 (-27d) |  |  |
| PG-H-CON-EX-GN-E-130 | CCTV Rack / Cabinet Installation | 2026-12-14 → 2026-10-10 A (-65d) | 2026-12-19 → 2026-11-26 (-23d) | 0% → 60% | -27.05d → -3.7d |
| PG-H-CON-EX-GN-E-140 | NVR and CCTV Monitor Installation | 2026-12-19 → 2026-10-10 A (-70d) | 2026-12-23 → 2026-11-29 (-24d) | 0% → 60% | -27.05d → -3.7d |
| PG-H-CON-EX-GN-E-150 | IP Camera Installation | 2026-12-23 → 2026-10-10 A (-74d) | 2026-12-27 → 2026-11-30 (-27d) | 0% → 60% | -27.05d → -3.7d |
| PG-H-CON-EX-GN-E-90 | ELV Containment & Cabling Works | 2026-11-28 → 2026-10-11 A (-48d) | 2026-12-01 → 2026-11-19 (-12d) | 0% → 60% | -30.8d → -3.7d |
| PG-H-CON-EX-GN-E-100 | Fiber Optic Pull Box Installation | 2026-12-01 → 2026-10-12 A (-50d) | 2026-12-05 → 2026-11-21 (-14d) | 0% → 60% | -27.05d → -3.7d |
| PG-H-CON-EX-GN-E-110 | Telephone and Data Outlet Installation | 2026-12-05 → 2026-10-12 A (-54d) | 2026-12-09 → 2026-11-23 (-16d) | 0% → 60% | -27.05d → -3.7d |
| PG-H-CON-EX-GN-E-120 | Telecom Equipment and AV HDMI Installation | 2026-12-09 → 2026-10-13 A (-57d) | 2026-12-14 → 2026-11-24 (-20d) | 0% → 60% | -27.05d → -3.7d |
| 3 | **FIRE ALARM SYSTEM** | 2026-12-01 → 2026-10-10 (-52d) | 2027-01-07 → 2026-12-05 (-33d) |  |  |
| PG-H-CON-EX-GN-E-160 | Fire Alarm Containment & Cabling | 2026-12-01 → 2026-10-10 A (-52d) | 2026-12-10 → 2026-11-23 (-17d) | 0% → 60% | -30.8d → -1.7d |
| PG-H-CON-EX-GN-E-170 | Fire Alarm Control Panel (FACP) Installation | 2026-12-10 → 2026-10-10 A (-61d) | 2026-12-20 → 2026-11-26 (-24d) | 0% → 60% | -30.8d → -1.7d |
| PG-H-CON-EX-GN-E-180 | Initiating Devices (Detectors & Manual Pull Station) | 2026-12-20 → 2026-10-10 A (-71d) | 2026-12-29 → 2026-12-01 (-28d) | 0% → 60% | -30.8d → -1.7d |
| PG-H-CON-EX-GN-E-190 | Notification Appliances (Strobe with Sounder) | 2026-12-29 → 2026-10-10 A (-80d) | 2027-01-07 → 2026-12-05 (-33d) | 0% → 60% | -30.8d → -1.7d |
| 3 | **PARKING WORK** |  | 2027-01-07 → 2026-12-07 (-31d) |  |  |
| PG-H-CON-EX-GN-PR-10 | Installlation of Parking Accessories |  | 2026-12-28 → 2026-12-01 (-27d) | 75% → 80% | -27.05d → -3.7d |
| PG-H-CON-EX-GN-PR-30 | Marking & Signages | 2027-01-02 → 2026-12-01 (-32d) | 2027-01-07 → 2026-12-07 (-31d) |  | -30.8d → -3.7d |
| 4 | **SERVICE CONNECTION** |  | 2027-01-21 → 2026-12-21 (-31d) |  |  |
| PG-H-CON-EX-GN-SC-20 | HDPE Pipe Laying & Valve Installation |  | 2027-01-09 → 2026-12-08 (-32d) |  | -30.8d → -3.7d |

| ID | Task | Start | Finish | Complete | Total float |
| --- | --- | --- | --- | --- | --- |
| PG-H-CON-EX-GN-SC-40 | Backfilling |  | 2027-01-21 → 2026-12-21 (-31d) |  | -30.8d → -3.7d |
| PG-H-CON-EX-GN-SC-30 | Connection to City Network | 2027-01-09 → 2026-12-08 (-32d) | 2027-01-18 → 2026-12-17 (-32d) |  | -30.8d → -3.7d |
| LS | **LANDSCAPING WORKS** |  | 2026-12-08 → 2026-12-07 (-1d) |  |  |
| HSP | **HARDSCAPE WORK** |  | 2026-12-08 → 2026-12-07 (-1d) |  |  |
| PG-H-CON-EX-LS-HS-40_R | Bike Path and Walking Path Construction(Remaining) |  | 2026-11-23 → 2026-11-22 (-1d) |  | -21d → -19.6d |
| PG-H-CON-EX-LS-HS-30_R | Stamped Concrete Floor(Remaining) |  | 2026-11-11 → 2026-10-22 A (-20d) | 90% → 100% | -11d → none |
| PG-H-CON-EX-LS-HS-50_R | Install Recycled Precast Concrete Seats(Remaining) |  | 2026-11-26 → 2026-11-25 (-1d) | 60% → 70% | -21d → -19.6d |
| PG-H-CON-EX-LS-HS-20_R | Interlock Tiles Grey Scale with Black Marble Chips(Remaining) |  | 2026-11-11 → 2026-10-21 A (-21d) | 70% → 100% | -21d → none |
| PG-H-CON-EX-LS-HS-60 | Install Recycled Precast Concrete Trash Bins | 2026-11-28 → 2026-11-25 (-3d) | 2026-12-08 → 2026-12-07 (-1d) |  | -21d → -19.6d |
| SSP | **SOFTSCAPE WORK** |  | 2026-12-08 → 2026-12-07 (-1d) |  |  |
| PG-H-CON-EX-LS-SS-20_R | Lawn Area Preparation & Planting / Turfing(Remaining) |  | 2026-12-08 → 2026-12-07 (-1d) |  | -21d → -19.6d |
| PG-H-CON-EX-LS-SS-10 | Planting Trees |  | 2026-11-23 → 2026-11-22 (-1d) |  | -21d → -19.6d |
| W.T | **TANK WORKS** |  | 2026-11-07 → 2026-11-10 (+3d) |  |  |
| 1 | **SEPTIC TANK** |  | 2026-11-01 → 2026-11-07 (+6d) |  |  |
| PG-H-CON-EX-TW-ST-40 | RCC Wall |  | 2026-10-11 → 2026-10-15 A (+4d) | 80% → 100% | -18d → none |
| PG-H-CON-EX-TW-ST-50 | RCC Slab |  | 2026-10-13 → 2026-10-20 A (+7d) | 70% → 100% | -18d → none |
| PG-H-CON-EX-TW-ST-60 | Finishing Work | 2026-10-17 → 2026-10-24 (+7d) | 2026-10-25 → 2026-10-31 (+6d) |  | -21d → -19.6d |
| PG-H-CON-EX-TW-ST-70 | Backfilling | 2026-10-25 → 2026-11-01 (+7d) | 2026-11-01 → 2026-11-07 (+6d) |  | -21d → -19.6d |
| 2 | **WATER STORAGE TANK** |  | 2026-11-07 → 2026-11-10 (+3d) |  |  |
| PG-H-CON-EX-TW-IR-40 | GRP Water Tank Installation | 2026-11-01 → 2026-10-17 A (-15d) | 2026-11-07 → 2026-11-10 (+3d) | 0% → 40% | -21d → -19.6d |
| B | **TOILET BUILDING WORKS** |  | 2026-11-16 → 2026-11-05 (-11d) |  |  |
| CVL | **CIVIL WORK** |  | 2026-11-15 → 2026-11-04 (-11d) |  |  |
| AR | **ARCHITECTURAL WORK** |  | 2026-11-15 → 2026-11-04 (-11d) |  |  |
| 1 | **GENERAL FINISHES** |  | 2026-11-15 → 2026-11-04 (-11d) |  |  |
| PG-H-CON-B-AR-GF-40 | Wall Paint |  | 2026-10-17 → 2026-10-29 (+12d) |  | 17.35d → 7.05d |
| PG-H-CON-B-AR-GF-50 | Epoxy Flooring |  | 2026-10-18 → 2026-11-01 (+14d) |  | 17.35d → 7.05d |
| PG-H-CON-B-AR-GF-60 | Install Doors & Windows |  | 2026-10-19 → 2026-11-02 (+14d) |  | 17.35d → 7.05d |
| PG-H-CON-B-AR-GF-80 | Lockers and Furniture Installation |  | 2026-11-15 → 2026-11-04 (-11d) | 40% → 60% | -1.6d → 7.05d |
| 2 | **WET AREA FINISHES** |  | 2026-10-18 → 2026-10-31 (+13d) |  |  |
| PG-H-CON-B-AR-WF-60 | Install Doors |  | 2026-10-18 → 2026-10-31 (+13d) | 70% → 80% | 29.95d → 18.65d |
| 3 | **ROOF FINISHES** |  | 2026-11-15 → 2026-11-04 (-11d) |  |  |
| PG-H-CON-B-AR-RF-10 | Waterproofing on Floor |  | 2026-10-17 → 2026-10-19 A (+2d) | 80% → 100% | 20.75d → none |
| PG-H-CON-B-AR-RF-20 | Epoxy Flooring and Finishes |  | 2026-10-18 → 2026-10-31 (+13d) |  | 20.75d → 9.85d |
| PG-H-CON-B-AR-RF-30 | Steel ladder and Steel roof scupper Installation | 2026-11-12 → 2026-11-02 (-10d) | 2026-11-15 → 2026-11-04 (-11d) |  | -1.6d → 7.05d |
| MEP | **MEP WORK** |  | 2026-11-16 → 2026-11-05 (-11d) |  |  |
| MEC | **MECANICAL WORKS** |  | 2026-11-16 → 2026-11-05 (-11d) |  |  |
| FF | **FIRE FIGHTING SYSTEM** | 2026-11-15 → 2026-11-04 (-11d) | 2026-11-16 → 2026-11-05 (-11d) |  |  |
| PG-H-CON-B-GF-FF-10 | Fire Extinguisher Installation | 2026-11-15 → 2026-11-04 (-11d) | 2026-11-16 → 2026-11-05 (-11d) |  | -1.6d → 7.05d |
| DS | **SEWER AND DRAINAGE SYSTEM** |  | 2026-10-13 → 2026-10-27 (+14d) |  |  |
| PG-H-CON-B-GF-DR-10 | Sewer and Drainge System Main Lines Installation |  | 2026-10-10 → 2026-10-24 (+14d) |  | 17.35d → 7.05d |
| PG-H-CON-B-GF-DR-30 | Sanitaryware Installation (Final Fix) | 2026-10-11 → 2026-10-25 (+14d) | 2026-10-13 → 2026-10-27 (+14d) |  | 17.35d → 7.05d |
| HV | **HVAC SYSTEM** |  | 2026-10-11 → 2026-10-24 (+13d) |  |  |
| PG-H-CON-B-GF-AC-20 | Split AC, Grills & Diffuser Installation |  | 2026-10-11 → 2026-10-24 (+13d) | 60% → 70% | 17.35d → 7.05d |
| WS | **WATER SUPPLY SYSTEM** |  | 2026-10-11 → 2026-10-25 (+14d) |  |  |
| PG-H-CON-B-GF-WS-30 | Water Supply Accesories and Booster pump Installation |  | 2026-10-11 → 2026-10-25 (+14d) |  | 17.35d → 7.05d |
| ELC | **ELECTRICAL WORKS** |  | 2026-10-15 → 2026-10-29 (+14d) |  |  |
| PG-H-CON-B-GF-EL-20 | Electrical Light Fixtures Installation |  | 2026-10-14 → 2026-10-27 (+13d) |  | 17.35d → 7.05d |
| PG-H-CON-B-GF-EL-30 | Fire Alarm Devices Installation |  | 2026-10-14 → 2026-10-28 (+14d) |  | 17.35d → 7.05d |
| PG-H-CON-B-GF-EL-40 | Telecom & CCTV Devices Installation |  | 2026-10-14 → 2026-10-28 (+14d) |  | 17.35d → 7.05d |
| PG-H-CON-B-GF-EL-50 | Electrical & ELV Wiring Works |  | 2026-10-15 → 2026-10-29 (+14d) |  | 17.35d → 7.05d |
| TE & CO | **PROJECT CLOSOUT** |  | 2027-01-10 → 2027-01-09 (-1d) |  |  |
| PG-H-PCL-10_R | Testing, Commessioning for All Systems(Remaining) |  | 2026-12-08 → 2026-12-07 (-1d) | 30% → 40% | -21d → -19.6d |
| PG-H-PCL-20 | As-Built Drawings | 2026-12-09 → 2026-12-07 (-2d) | 2026-12-29 → 2026-12-28 (-1d) |  | -17d → -15.6d |
| PG-H-PCL-30 | Snag list Submission | 2026-12-09 → 2026-12-07 (-2d) | 2026-12-17 → 2026-12-16 (-1d) |  | -21d → -19.6d |
| PG-H-PCL-40 | Snag list Closeout | 2026-12-19 → 2026-12-16 (-3d) | 2027-01-03 → 2027-01-02 (-1d) |  | -21d → -19.6d |
| PG-H-PCL-50 | Issuing Approvals | 2027-01-04 → 2027-01-02 (-2d) | 2027-01-06 → 2027-01-05 (-1d) |  | -21d → -19.6d |
| PG-H-PCL-60 | Handing Over | 2027-01-07 → 2027-01-05 (-2d) | 2027-01-10 → 2027-01-09 (-1d) |  | -21d → -19.6d |
| TABUK | **TABUK** |  | 2027-02-10 → 2027-02-11 (+1d) |  |  |
| PR | **PROCUREMENT** |  | 2026-10-26 → 2026-10-27 (+1d) |  |  |
| 1 | **LONG LEAD ITEMS** |  | 2026-10-26 → 2026-10-27 (+1d) |  |  |
| 3 | **MANUFACTURE / FABRICATION** |  | 2026-10-21 → 2026-10-15 (-6d) |  |  |
| 2 | **SPORTS & RECREATIONAL FACILITIES WORK** |  | 2026-10-21 → 2026-10-15 (-6d) |  |  |
| PG-T-PR-LL-SP-MF-50 | Air Dome Materials |  | 2026-10-21 → 2026-10-15 A (-6d) | 60% → 100% | -47.4d → none |
| 4 | **DELIVERY TO SITE** |  | 2026-10-26 → 2026-10-27 (+1d) |  |  |
| 1 | **EXTERNAL / LANDSCAPE WORK** |  | 2026-10-11 → 2026-10-25 (+14d) |  |  |
| PG-T-PR-LL-LS-DL-20_R | Benches, Seats (Rectangular & Circular)(Remaining) |  | 2026-10-11 → 2026-10-25 (+14d) |  | 38.5d → 27.2d |
| 2 | **SPORTS & RECREATIONAL FACILITIES WORK** |  | 2026-10-26 → 2026-10-25 (-1d) |  |  |
| PG-T-PR-LL-SP-DL-40_R | Tartan Floor(Remaining) |  | 2026-10-11 → 2026-10-25 (+14d) |  | 32.4d → 23.8d |
| PG-T-PR-LL-SP-DL-10_R | Football Playground Materials (Flooring, goal post, nets, paints, etc)(Remaining) |  | 2026-10-11 → 2026-10-25 (+14d) |  | 43.6d → 31.6d |
| PG-T-PR-LL-SP-DL-20_R | Basketball Playground Materials (Flooring, basketball poll, nets, paints, etc)(Remaining) |  | 2026-10-11 → 2026-10-25 (+14d) |  | 34.8d → 25.4d |

| ID | Task | Start | Finish | Complete | Total float |
| --- | --- | --- | --- | --- | --- |
| PG-T-PR-LL-SP-DL-30_R | Padel Playgound Materials (Fence, tempered glass, etc)(Remaining) |  | 2026-10-11 → 2026-10-25 (+14d) |  | 15.05d → 11.25d |
| PG-T-PR-LL-SP-DL-50 | Air Dome Materials | 2026-08-20 A → 2026-10-22 A (+63d) | 2026-10-26 → 2026-10-25 (-1d) | 60% → 80% | -47.4d → -49d |
| 5 | **METAL WORK** |  | 2026-10-14 → 2026-10-27 (+13d) |  |  |
| PG-T-PR-LL-MT-DL-10_R | Metal Doors(Remaining) |  | 2026-10-11 → 2026-10-15 A (+4d) | 90% → 100% | 32d → none |
| PG-T-PR-LL-MT-DL-20_R | Curtain Wall(Remaining) |  | 2026-10-14 → 2026-10-27 (+13d) | 60% → 70% | 29.2d → 18.4d |
| 7 | **PLUMBING WORK** |  | 2026-10-11 → 2026-10-15 (+4d) |  |  |
| PG-T-PR-LL-PB-DL-20_R | GRP Sectional Panel Water Tanks (4x3x3m)(Remaining) |  | 2026-10-11 → 2026-10-15 A (+4d) | 90% → 100% | 24.8d → none |
| 8 | **IRRIGATION WORK** |  | 2026-10-10 → 2026-10-24 (+14d) |  |  |
| PG-T-PR-LL-IR-DL-20_R | Irrigation Control System(Remaining) |  | 2026-10-10 → 2026-10-24 (+14d) |  | -22.15d → -13.1d |
| 9 | **ELECTRICAL WORK** |  | 2026-10-11 → 2026-10-25 (+14d) |  |  |
| PG-T-PR-LL-EL-DL-10_R | Main Distribution Board(Remaining) |  | 2026-10-11 → 2026-10-25 (+14d) |  | -11.1d → -3d |
| PG-T-PR-LL-EL-DL-20_R | Power Panels (Pump, Street Light)(Remaining) |  | 2026-10-11 → 2026-10-25 (+14d) |  | -8.6d → -2d |
| PG-T-PR-LL-EL-DL-30_R | Site Lighting Poles(Remaining) |  | 2026-10-11 → 2026-10-25 (+14d) |  | -5.1d → -0.6d |
| PG-T-PR-LL-EL-DL-40_R | Lighting Fixtures(Remaining) |  | 2026-10-11 → 2026-10-25 (+14d) |  | -0.3d → 1.4d |
| PG-T-PR-LL-EL-DL-50_R | Grounding System Materials (Earth pit rod, LPS, etc)(Remaining) |  | 2026-10-10 → 2026-10-24 (+14d) |  | -11.5d → -3d |
| PG-T-PR-LL-EL-DL-60_R | Telecommunications & Data System Materials (Telephone outlet, CCTV, etc)(Remaining) |  | 2026-10-11 → 2026-10-25 (+14d) |  | 5.1d → 6.8d |
| PG-T-PR-LL-EL-DL-70_R | Security and Access Control System Materials(Remaining) |  | 2026-10-11 → 2026-10-25 (+14d) |  | 23.45d → 15.8d |
| PG-T-PR-LL-EL-DL-80_R | Fire Alarm System Materials(Remaining) |  | 2026-10-11 → 2026-10-25 (+14d) |  | 7.2d → 8d |
| 2 | **SHORT LEAD ITEMS** |  | 2026-10-14 → 2026-10-25 (+11d) |  |  |
| 3 | **DELIVERY TO SITE** |  | 2026-10-14 → 2026-10-25 (+11d) |  |  |
| 1 | **EXTERNAL / LANDSCAPE WORK** |  | 2026-10-10 → 2026-10-24 (+14d) |  |  |
| PG-T-PR-SL-LS-DL-60_R | Traffic Signages(Remaining) |  | 2026-10-10 → 2026-10-24 (+14d) |  | 31.5d → 21d |
| PG-T-PR-SL-LS-DL-70_R | Trees(Remaining) |  | 2026-10-10 → 2026-10-24 (+14d) |  | 31.5d → 25d |
| PG-T-PR-SL-LS-DL-80_R | Lawn(Remaining) |  | 2026-10-10 → 2026-10-24 (+14d) |  | 42.5d → 30.2d |
| 5 | **METAL WORK** |  | 2026-10-14 → 2026-10-25 (+11d) |  |  |
| PG-T-PR-SL-MT-DL-10_R | Galvanized Steel Ladder(Remaining) |  | 2026-10-14 → 2026-10-25 (+11d) | 60% → 90% | 27.7d → 19.6d |
| PG-T-PR-SL-MT-DL-20_R | Galvanized Steel Roof Scupper(Remaining) |  | 2026-10-14 → 2026-10-25 (+11d) | 60% → 90% | 27.7d → 19.6d |
| PG-T-PR-SL-MT-DL-30_R | Galvanized Steel Cover with frame(Remaining) |  | 2026-10-14 → 2026-10-25 (+11d) | 60% → 90% | 27.7d → 19.6d |
| 8 | **IRRIGATION WORK** |  | 2026-10-10 → 2026-10-24 (+14d) |  |  |
| PG-T-PR-SL-IR-DL-10_R | Gate Valve including valve box(Remaining) |  | 2026-10-10 → 2026-10-24 (+14d) |  | -22.6d → -13.55d |
| PG-T-PR-SL-IR-DL-20_R | Bulbblers and Spreyers(Remaining) |  | 2026-10-10 → 2026-10-24 (+14d) |  | -21.7d → -12.95d |
| 9 | **ELECTRICAL WORK** |  | 2026-10-11 → 2026-10-15 (+4d) |  |  |
| PG-T-PR-SL-EL-DL-10_R | Wiring Devices Materials(Remaining) |  | 2026-10-11 → 2026-10-15 A (+4d) | 90% → 100% | -2.7d → none |
| 10 | **FIRE FIGHTING WORK** |  | 2026-10-13 → 2026-10-15 (+2d) |  |  |
| PG-T-PR-SL-FF-DL-10_R | Fire Extinguishers(Remaining) |  | 2026-10-13 → 2026-10-15 A (+2d) | 60% → 100% | -19.7d → none |
| CO | **CONSTRUCTION STAGE** |  | 2027-01-28 → 2027-01-30 (+2d) |  |  |
| EX.SIT | **PLAYGROUND AND LANDSCAPING WORKS** |  | 2027-01-21 → 2027-01-10 (-11d) |  |  |
| 1 | **PLAYGROUND WORKS** |  | 2026-11-29 → 2026-12-03 (+4d) |  |  |
| FP | **FOOTBALL PLAYGROUND WORKS** |  | 2026-10-31 → 2026-11-12 (+12d) |  |  |
| PG-T-CON-EX-FB-90 | Turfing / Seeding Works |  | 2026-10-13 → 2026-10-26 (+13d) |  | 40.45d → 29.1d |
| PG-T-CON-EX-FB-120 | Installation of Lighting System |  | 2026-10-11 → 2026-10-25 (+14d) | 85% → 90% | 40.45d → 29.1d |
| PG-T-CON-EX-FB-60 | Goal Post Installation & Alignment |  | 2026-10-17 → 2026-10-29 (+12d) |  | 40.45d → 29.1d |
| PG-T-CON-EX-FB-110 | Install Playground Benches |  | 2026-10-19 → 2026-11-01 (+13d) |  | 40.45d → 29.1d |
| PG-T-CON-EX-FB-100 | Markings and Signages | 2026-10-19 → 2026-11-01 (+13d) | 2026-10-31 → 2026-11-12 (+12d) |  | 40.45d → 29.1d |
| BP | **BASKETBALL PLAYGROUND WORKS** |  | 2026-11-09 → 2026-11-19 (+10d) |  |  |
| PG-T-CON-EX-BB-60 | Basketball Pole Installation & Alignment |  | 2026-10-18 → 2026-10-28 (+10d) | 80% → 90% | 32.4d → 23.8d |
| PG-T-CON-EX-BB-80 | Court Line Marking |  | 2026-10-13 → 2026-10-26 (+13d) | 85% → 90% | 32.4d → 23.8d |
| PG-T-CON-EX-BB-100 | Install Playground Benches |  | 2026-11-09 → 2026-11-19 (+10d) | 85% → 90% | 32.4d → 23.8d |
| PG-T-CON-EX-BB-90 | Backboard & Hoop Installation | 2026-10-18 → 2026-10-28 (+10d) | 2026-11-07 → 2026-11-17 (+10d) |  | 32.4d → 23.8d |
| PP | **PADEL PLAYGROUND WORKS** |  | 2026-11-29 → 2026-12-03 (+4d) |  |  |
| PG-T-CON-EX-PD-30_R | Tartan Flooring Layers(Remaining) |  | 2026-11-08 → 2026-11-12 (+4d) |  | 15.05d → 11.25d |
| PG-T-CON-EX-PD-40 | Steel Structure & Fence Supports Installation |  | 2026-10-14 → 2026-10-27 (+13d) | 85% → 90% | 15.05d → 11.25d |
| PG-T-CON-EX-PD-60 | Chain Link Fence & Gates Installation |  | 2026-10-15 → 2026-10-28 (+13d) |  | 15.05d → 11.25d |
| PG-T-CON-EX-PD-80 | Install Playground Benches |  | 2026-11-29 → 2026-12-03 (+4d) |  | 15.05d → 11.25d |
| PG-T-CON-EX-PD-50 | Tempered Glass Installation | 2026-10-17 → 2026-10-20 A (+3d) | 2026-11-05 → 2026-11-10 (+5d) | 0% → 40% | 15.05d → 11.25d |
| PG-T-CON-EX-PD-70 | Court Accessories Installation | 2026-11-08 → 2026-11-12 (+4d) | 2026-11-26 → 2026-12-01 (+5d) |  | 15.05d → 11.25d |
| GN.SI | **GENERAL SITE WORKS** |  | 2027-01-21 → 2027-01-10 (-11d) |  |  |
| 1 | **FENCE WORKS** |  | 2026-10-18 → 2026-10-15 (-3d) |  |  |
| PG-T-CON-EX-GN-FN-20 | Concrete Foundations for Fence |  | 2026-08-20 A → 2026-10-14 A (+55d) |  |  |
| PG-T-CON-EX-GN-FN-30 | Installation of Galvanized Steel Posts & Framing |  | 2026-10-10 → 2026-10-15 A (+5d) | 90% → 100% | 10.1d → none |
| PG-T-CON-EX-GN-FN-40 | Fixing of Chain Link Mesh, Tensioning & Bracing |  | 2026-10-11 → 2026-10-15 A (+4d) | 80% → 100% | 10.1d → none |
| PG-T-CON-EX-GN-FN-50 | Installation of Gates | 2026-10-11 A | 2026-10-18 → 2026-10-15 A (-3d) | 0% → 100% | 10.1d → none |
| 5 | **MECHANICAL WORK** |  | 2026-11-01 → 2026-11-14 (+13d) |  |  |
| 2 | **STORM WATER AND UTILITY WORK** |  | 2026-10-26 → 2026-11-08 (+13d) |  |  |
| PG-T-CON-EX-GN-M-30 | Manhole Installation |  | 2026-10-10 → 2026-10-24 (+14d) |  | -30.35d → -20.9d |
| PG-T-CON-EX-GN-M-40 | 150 mm uPVC pipe laying & jointing |  | 2026-10-12 → 2026-10-26 (+14d) | 60% → 70% | -30.35d → -20.9d |
| PG-T-CON-EX-GN-M-50 | Concrete Encasement | 2026-10-12 → 2026-10-26 (+14d) | 2026-10-15 → 2026-10-29 (+14d) |  | -30.35d → -20.9d |
| PG-T-CON-EX-GN-M-60 | Backfilling & Compaction | 2026-10-15 → 2026-10-29 (+14d) | 2026-10-19 → 2026-11-02 (+14d) |  | -30.35d → -20.9d |
| PG-T-CON-EX-GN-M-70 | Surface Reinstatement & Civil Works | 2026-10-21 → 2026-11-03 (+13d) | 2026-10-26 → 2026-11-08 (+13d) |  | -30.35d → -20.9d |
| IR.SY | **IRRIGATION SYSTEM WORKS** |  | 2026-10-21 → 2026-11-03 (+13d) |  |  |

| ID | Task | Start | Finish | Complete | Total float |
| --- | --- | --- | --- | --- | --- |
| PG-T-CON-EX-GN-M-80_R | Installation of HDPE Irrigation Pipe Network with Gate Valve and Box(Remaining) |  | 2026-10-19 → 2026-11-02 (+14d) |  | -30.35d → -20.9d |
| PG-T-CON-EX-GN-M-100 | Installation of Bubblers and Sprinklers |  | 2026-10-21 → 2026-11-03 (+13d) | 85% → 90% | -30.35d → -20.9d |
| PG-T-CON-EX-GN-M-90 | Installation of Irrigation Control System |  | 2026-10-20 → 2026-11-02 (+13d) | 85% → 90% | -30.35d → -20.9d |
| 1 | **FIRE PROTECTION SYSTEM** | 2026-10-26 → 2026-11-08 (+13d) | 2026-11-01 → 2026-11-14 (+13d) |  |  |
| PG-T-CON-EX-GN-M-110 | Fire Extinguisher Installation | 2026-10-26 → 2026-11-08 (+13d) | 2026-11-01 → 2026-11-14 (+13d) |  | -30.35d → -20.9d |
| 2 | **ELECTRICAL WORK** |  | 2026-12-31 → 2026-12-20 (-11d) |  |  |
| 1 | **POWER, LIGHTING & GROUNDING** |  | 2026-11-22 → 2026-11-26 (+4d) |  |  |
| PG-T-CON-EX-GN-E-20_R | Foundation Work for Site Lighting Poles(Remaining) |  | 2026-10-14 → 2026-10-26 (+12d) | 80% → 90% | -15.3d → -4.7d |
| PG-T-CON-EX-GN-E-30 | Lightning Protection System (LPS) |  | 2026-11-02 → 2026-11-15 (+13d) | 85% → 90% | -30.35d → -20.9d |
| PG-T-CON-EX-GN-E-40 | KWH Meter and MDB Installation |  | 2026-11-04 → 2026-11-16 (+12d) | 50% → 80% | -30.35d → -20.9d |
| PG-T-CON-EX-GN-E-50 | Power Panels and Distribution Boards |  | 2026-11-09 → 2026-11-17 (+8d) | 50% → 80% | -30.35d → -20.9d |
| PG-T-CON-EX-GN-E-60 | Site Lighting Poles Installation |  | 2026-11-11 → 2026-11-18 (+7d) | 60% → 80% | -30.35d → -20.9d |
| PG-T-CON-EX-GN-E-70 | Wiring Works |  | 2026-11-15 → 2026-11-19 (+4d) | 40% → 80% | -30.35d → -20.9d |
| PG-T-CON-EX-GN-E-80 | Lighting Fixtures with outlets Installation | 2026-11-15 → 2026-11-19 (+4d) | 2026-11-22 → 2026-11-26 (+4d) |  | -30.35d → -20.9d |
| 2 | **ELV SYSTEMS (TELECOM, DATA, AV & CCTV)** |  | 2026-12-12 → 2026-12-08 (-4d) |  |  |
| PG-T-CON-EX-GN-E-100 | Fiber Optic Pull Box Installation |  | 2026-11-26 → 2026-11-29 (+3d) | 30% → 60% | -21.8d → -17.5d |
| PG-T-CON-EX-GN-E-110 | Telephone and Data Outlet Installation |  | 2026-11-30 → 2026-12-01 (+1d) | 30% → 60% | -21.8d → -17.5d |
| PG-T-CON-EX-GN-E-120 | Telecom Equipment and AV HDMI Installation |  |  | 30% → 60% | -21.8d → -17.5d |
| PG-T-CON-EX-GN-E-130 | CCTV Rack / Cabinet Installation |  | 2026-12-06 → 2026-12-05 (-1d) | 30% → 60% | -21.8d → -17.5d |
| PG-T-CON-EX-GN-E-140 | NVR and CCTV Monitor Installation |  | 2026-12-09 → 2026-12-07 (-2d) | 30% → 60% | -21.8d → -17.5d |
| PG-T-CON-EX-GN-E-150 | IP Camera Installation |  | 2026-12-12 → 2026-12-08 (-4d) | 30% → 60% | -21.8d → -17.5d |
| PG-T-CON-EX-GN-E-90 | ELV Containment & Cabling Works |  | 2026-11-24 → 2026-11-28 (+4d) | 30% → 60% | -30.35d → -20.9d |
| 3 | **FIRE ALARM SYSTEM** | 2026-11-24 → 2026-10-13 (-42d) | 2026-12-31 → 2026-12-20 (-11d) |  |  |
| PG-T-CON-EX-GN-E-160 | Fire Alarm Containment & Cabling | 2026-11-24 → 2026-10-13 A (-42d) |  | 0% → 40% | -30.35d → -20.9d |
| PG-T-CON-EX-GN-E-170 | Fire Alarm Control Panel (FACP) Installation | 2026-12-03 → 2026-10-14 A (-50d) | 2026-12-13 → 2026-12-09 (-4d) | 0% → 40% | -30.35d → -20.9d |
| PG-T-CON-EX-GN-E-180 | Initiating Devices (Detectors & Manual Pull Station) | 2026-12-13 → 2026-10-15 A (-59d) | 2026-12-22 → 2026-12-15 (-7d) | 0% → 40% | -30.35d → -20.9d |
| PG-T-CON-EX-GN-E-190 | Notification Appliances (Strobe with Sounder) | 2026-12-22 → 2026-10-17 A (-66d) | 2026-12-31 → 2026-12-20 (-11d) | 0% → 40% | -30.35d → -20.9d |
| 3 | **PARKING WORK** |  | 2026-12-31 → 2026-12-20 (-11d) |  |  |
| PG-T-CON-EX-GN-PR-10 | Installlation of Parking Accessories |  | 2026-12-13 → 2026-10-20 A (-54d) | 85% → 100% | -21.8d → none |
| PG-T-CON-EX-GN-PR-30 | Marking & Signages | 2026-12-23 → 2026-12-12 (-11d) | 2026-12-31 → 2026-12-20 (-11d) |  | -30.35d → -20.9d |
| 4 | **SERVICE CONNECTION** |  | 2027-01-21 → 2027-01-10 (-11d) |  |  |
| PG-T-CON-EX-GN-SC-20 | HDPE Pipe Laying & Valve Installation |  | 2026-12-31 → 2026-12-20 (-11d) | 85% → 90% | -30.35d → -20.9d |
| PG-T-CON-EX-GN-SC-30 | Connection to City Network | 2026-12-31 → 2026-12-20 (-11d) | 2027-01-12 → 2026-12-31 (-12d) |  | -30.35d → -20.9d |
| PG-T-CON-EX-GN-SC-40 | Backfilling | 2027-01-12 → 2026-12-31 (-12d) | 2027-01-21 → 2027-01-10 (-11d) |  | -30.35d → -20.9d |
| LS | **LANDSCAPING WORKS** |  | 2026-11-28 → 2026-11-10 (-18d) |  |  |
| HSP | **HARDSCAPE WORK** |  | 2026-11-28 → 2026-11-10 (-18d) |  |  |
| PG-T-CON-EX-LS-HS-30_R | Stamped Concrete Floor(Remaining) |  | 2026-11-15 → 2026-10-21 A (-25d) | 90% → 100% | 7.4d → none |
| PG-T-CON-EX-LS-HS-50_R | Install Recycled Precast Concrete Seats(Remaining) |  | 2026-11-23 → 2026-11-07 (-16d) |  | 1.4d → 15.5d |
| PG-T-CON-EX-LS-HS-20_R | Interlock Tiles Grey Scale with Black Marble Chips(Remaining) |  | 2026-11-15 → 2026-11-04 (-11d) | 85% → 90% | 1.4d → 15.5d |
| PG-T-CON-EX-LS-HS-60 | Install Recycled Precast Concrete Trash Bins |  | 2026-11-28 → 2026-11-10 (-18d) | 60% → 70% | 1.4d → 15.5d |
| SSP | **SOFTSCAPE WORK** |  | 2026-11-28 → 2026-11-10 (-18d) |  |  |
| PG-T-CON-EX-LS-SS-20_R | Lawn Area Preparation & Planting / Turfing(Remaining) |  | 2026-11-28 → 2026-11-10 (-18d) | 85% → 90% | 1.4d → 15.5d |
| PG-T-CON-EX-LS-SS-10 | Planting Trees |  | 2026-11-22 → 2026-11-05 (-17d) | 50% → 90% | 1.4d → 15.5d |
| W.T | **TANK WORKS** |  | 2026-11-12 → 2026-11-03 (-9d) |  |  |
| 1 | **SEPTIC TANK** |  | 2026-11-07 → 2026-11-01 (-6d) |  |  |
| PG-T-CON-EX-TW-ST-40 | RCC Wall |  | 2026-10-13 → 2026-10-12 A (-1d) | 60% → 100% | 1.4d → none |
| PG-T-CON-EX-TW-ST-50 | RCC Slab | 2026-10-13 A | 2026-10-28 → 2026-10-15 A (-13d) | 0% → 100% | 1.4d → none |
| PG-T-CON-EX-TW-ST-60 | Finishing Work | 2026-10-28 → 2026-10-24 (-4d) | 2026-11-07 → 2026-11-01 (-6d) |  | 1.4d → 15.5d |
| 2 | **WATER STORAGE TANK** |  | 2026-11-12 → 2026-11-03 (-9d) |  |  |
| PG-T-CON-EX-TW-IR-40 | GRP Water Tank Installation | 2026-11-07 → 2026-10-13 A (-25d) | 2026-11-12 → 2026-11-03 (-9d) | 0% → 70% | 1.4d → 15.5d |
| AD | **AIR DOME CONSTRUCTION** |  | 2027-01-28 → 2027-01-30 (+2d) |  |  |
| 1 | **CIVIL WORK** |  | 2026-11-10 → 2026-11-11 (+1d) |  |  |
| PG-T-CON-EX-AD-CL-70 | Installation of Steel Cable Structural System | 2026-10-21 → 2026-10-24 (+3d) | 2026-11-01 → 2026-11-02 (+1d) |  | -47.4d → -49d |
| PG-T-CON-EX-AD-CL-80 | Installation of Membrane System | 2026-11-01 → 2026-11-03 (+2d) | 2026-11-10 → 2026-11-11 (+1d) |  | -47.4d → -49d |
| 2 | **ARCHITECTURAL WORK** | 2026-12-30 → 2027-01-02 (+3d) | 2027-01-28 → 2027-01-30 (+2d) |  |  |
| PG-T-CON-EX-AD-AR-10 | Installation of Thermal Insulation System | 2026-12-30 → 2027-01-02 (+3d) | 2027-01-07 → 2027-01-09 (+2d) |  | -47.4d → -49d |
| PG-T-CON-EX-AD-AR-40 | Final Fixing of Accessories & Finishes | 2027-01-07 → 2027-01-10 (+3d) | 2027-01-16 → 2027-01-17 (+1d) |  | -47.4d → -49d |
| PG-T-CON-EX-AD-AR-20 | Installation of Doors & Access Systems | 2027-01-16 → 2027-01-18 (+2d) | 2027-01-23 → 2027-01-24 (+1d) |  | -47.4d → -49d |
| PG-T-CON-EX-AD-AR-30 | Installation of Logo | 2027-01-23 → 2027-01-25 (+2d) | 2027-01-28 → 2027-01-30 (+2d) |  | -47.4d → -49d |
| 3 | **MECHANICAL WORK** | 2026-11-10 → 2026-11-12 (+2d) | 2026-12-07 → 2026-12-08 (+1d) |  |  |
| PG-T-CON-EX-AD-ME-10 | Installation of Main Air Package Units | 2026-11-10 → 2026-11-12 (+2d) | 2026-11-16 → 2026-11-17 (+1d) |  | -47.4d → -49d |
| PG-T-CON-EX-AD-ME-20 | Installation of Backup Air Package Unit | 2026-11-16 → 2026-11-18 (+2d) | 2026-11-22 → 2026-11-23 (+1d) |  | -47.4d → -49d |
| PG-T-CON-EX-AD-ME-30 | Installation of Complete HVAC System | 2026-11-30 → 2026-12-02 (+2d) | 2026-12-07 → 2026-12-08 (+1d) |  | -46.4d → -48d |
| 4 | **ELECTRICAL WORK** | 2026-11-22 → 2026-11-24 (+2d) | 2026-12-30 → 2026-12-31 (+1d) |  |  |
| PG-T-CON-EX-AD-EL-10 | Installation of Electrical Boxes & MDBs | 2026-11-22 → 2026-11-24 (+2d) | 2026-11-30 → 2026-12-01 (+1d) |  | -47.4d → -49d |
| PG-T-CON-EX-AD-EL-20 | Installation of Lighting System | 2026-11-30 → 2026-12-02 (+2d) | 2026-12-08 → 2026-12-09 (+1d) |  | -47.4d → -49d |
| PG-T-CON-EX-AD-EL-30 | Electrical Connections to Main Power Source (Excluding kWh Meter) | 2026-12-08 → 2026-12-10 (+2d) | 2026-12-14 → 2026-12-15 (+1d) |  | -47.4d → -49d |
| PG-T-CON-EX-AD-EL-40 | Installation of Backup Generator | 2026-12-14 → 2026-12-16 (+2d) | 2026-12-21 → 2026-12-22 (+1d) |  | -47.4d → -49d |
| PG-T-CON-EX-AD-EL-50 | Installation of Smart Dome System | 2026-12-21 → 2026-12-23 (+2d) | 2026-12-30 → 2026-12-31 (+1d) |  | -47.4d → -49d |
| B | **TOILET BUILDING WORKS** |  | 2026-10-18 → 2026-10-28 (+10d) |  |  |

| ID | Task | Start | Finish | Complete | Total float |
| --- | --- | --- | --- | --- | --- |
| CVL | **CIVIL WORK** |  | 2026-10-17 → 2026-10-27 (+10d) |  |  |
| AR | **ARCHITECTURAL WORK** |  | 2026-10-17 → 2026-10-27 (+10d) |  |  |
| 2 | **WET AREA FINISHES** |  | 2026-10-13 → 2026-10-26 (+13d) |  |  |
| PG-T-CON-B-AR-WF-60 | Install Doors |  | 2026-10-13 → 2026-10-26 (+13d) | 60% → 70% | 30d → 19.9d |
| 3 | **ROOF FINISHES** |  | 2026-10-17 → 2026-10-27 (+10d) |  |  |
| PG-T-CON-B-AR-RF-30 | Steel ladder and Steel roof scupper Installation |  | 2026-10-17 → 2026-10-27 (+10d) | 50% → 60% | 27.7d → 18.4d |
| MEP | **MEP WORK** |  | 2026-10-18 → 2026-10-28 (+10d) |  |  |
| MEC | **MECANICAL WORKS** |  | 2026-10-18 → 2026-10-28 (+10d) |  |  |
| FF | **FIRE FIGHTING SYSTEM** |  | 2026-10-18 → 2026-10-28 (+10d) |  |  |
| PG-T-CON-B-GF-FF-10 | Fire Extinguisher Installation |  | 2026-10-18 → 2026-10-28 (+10d) | 40% → 60% | 29.7d → 20.8d |
| DS | **SEWER AND DRAINAGE SYSTEM** |  | 2026-10-13 → 2026-10-25 (+12d) |  |  |
| PG-T-CON-B-GF-DR-30 | Sanitaryware Installation (Final Fix) |  | 2026-10-13 → 2026-10-25 (+12d) | 60% → 70% | 29.3d → 19.3d |
| HV | **HVAC SYSTEM** |  | 2026-10-14 → 2026-10-26 (+12d) |  |  |
| PG-T-CON-B-GF-AC-20 | Split AC, Grills & Diffuser Installation |  | 2026-10-14 → 2026-10-26 (+12d) | 50% → 70% | 33d → 23.1d |
| WS | **WATER SUPPLY SYSTEM** |  | 2026-10-12 → 2026-10-24 (+12d) |  |  |
| PG-T-CON-B-GF-WS-30 | Water Supply Accesories and Booster pump Installation |  | 2026-10-12 → 2026-10-24 (+12d) | 60% → 70% | 29.3d → 19.3d |
| TE & CO | **PROJECT CLOSOUT** |  | 2027-02-10 → 2027-02-11 (+1d) |  |  |
| PG-T-PCL-10_R | Testing, Commessioning for All Systems(Remaining) |  | 2027-01-28 → 2027-01-30 (+2d) |  | -47.4d → -49d |
| PG-T-PCL-20 | As-Built Drawings |  | 2027-02-04 → 2027-02-07 (+3d) |  | -45d → -46.6d |
| PG-T-PCL-30 | Snag list Submission | 2027-01-28 → 2027-01-31 (+3d) | 2027-01-31 → 2027-02-01 (+1d) |  | -47.4d → -49d |
| PG-T-PCL-40 | Snag list Closeout | 2027-01-31 → 2027-02-02 (+2d) | 2027-02-08 → 2027-02-09 (+1d) |  | -47.4d → -49d |
| PG-T-PCL-50 | Issuing Approvals | 2027-02-08 → 2027-02-10 (+2d) | 2027-02-09 → 2027-02-10 (+1d) |  | -47.4d → -49d |
| PG-T-PCL-60 | Handing Over | 2027-02-09 → 2027-02-11 (+2d) | 2027-02-10 → 2027-02-11 (+1d) |  | -47.4d → -49d |

## Version 6 (data date 2026-10-30, saved 2026-10-31, file 02. MLTX-02-003-UPS Level 5 - 2026-11-01.xer)

Last finish 2027-02-14 → 2027-02-23 (+9d). Complete tasks 1629 → 1628.

Changed:

| ID | Task | Start | Finish | Complete | Total float |
| --- | --- | --- | --- | --- | --- |
| MS | **MILESTONES** |  | 2027-02-14 → 2027-02-23 (+9d) |  |  |
| 1 | **GENERAL MILESTONES** |  | 2027-02-14 → 2027-02-23 (+9d) |  |  |
| PG-GN-MS-30_R | Project Durations(Remaining) |  |  | 69% → 73% | 1.27d → 1.18d |
| PG-GN-MS-20 | Project Completion Date | 2027-02-14 → 2027-02-23 (+9d) | 2027-02-14 → 2027-02-23 (+9d) |  | -50.8d → -58.8d |
| 2 | **CONTRACUAL MILESTONES** |  | 2027-02-14 → 2027-02-23 (+9d) |  |  |
| PG-IN-MS-30 | Completion of Toilet Building | 2026-11-05 → 2026-11-12 (+7d) | 2026-11-05 → 2026-11-12 (+7d) |  | 13.25d → 8.25d |
| PG-IN-MS-50 | Completion of Playground Works | 2026-12-14 → 2026-12-10 (-4d) | 2026-12-14 → 2026-12-10 (-4d) |  | 2.65d → 5.65d |
| PG-IN-MS-60 | Substantial Completion - All Works | 2027-02-14 → 2027-02-23 (+9d) | 2027-02-14 → 2027-02-23 (+9d) |  | -50.8d → -58.8d |
| QASSIM | **QASSIM** |  | 2027-02-14 → 2027-02-23 (+9d) |  |  |
| ENG | **ENGINEERING** |  | 2026-10-25 → 2026-11-03 (+9d) |  |  |
| 1 | **SHOP DRAWINGS SUBMITTALS** |  | 2026-10-25 → 2026-11-01 (+7d) |  |  |
| 4 | **MECHANICAL DRAWINGS** |  | 2026-10-25 → 2026-11-01 (+7d) |  |  |
| 4 | **AIR DOME** |  | 2026-10-25 → 2026-11-01 (+7d) |  |  |
| PG-Q-EN-ME-SD-SB-100 | Air Package and HVAC System Drawings |  | 2026-10-25 → 2026-11-01 (+7d) |  | -50.8d → -58.8d |
| 5 | **ELECTRICAL DRAWINGS** |  | 2026-10-25 → 2026-11-01 (+7d) |  |  |
| 4 | **AIR DOME** |  | 2026-10-25 → 2026-11-01 (+7d) |  |  |
| PG-Q-EN-EL-SD-SB-120 | Power & Lighting System Drawings |  | 2026-10-24 → 2026-10-31 (+7d) |  | -50d → -56d |
| PG-Q-EN-EL-SD-SB-130 | Generators Details |  | 2026-10-25 → 2026-11-01 (+7d) |  | -50.5d → -56.5d |
| PG-Q-EN-EL-SD-SB-140 | Smart Dome System Drawings |  | 2026-10-25 → 2026-11-01 (+7d) |  | -50.7d → -56.7d |
| 2 | **SHOP DRAWINGS APPROVALS** |  | 2026-09-21 → 2026-11-03 (+43d) |  |  |
| 4 | **MECHANICAL DRAWINGS** |  | 2026-09-21 → 2026-11-03 (+43d) |  |  |
| 4 | **AIR DOME** |  | 2026-09-21 → 2026-11-03 (+43d) |  |  |
| PG-Q-EN-ME-SD-AP-100 | Air Package and HVAC System Drawings |  | 2026-09-21 A → 2026-11-03 (+43d) | 100% → 80% | none → -58.8d |
| PR | **PROCUREMENT** |  | 2026-10-28 → 2026-11-05 (+8d) |  |  |
| 1 | **LONG LEAD ITEMS** |  | 2026-10-28 → 2026-11-05 (+8d) |  |  |
| 4 | **DELIVERY TO SITE** |  | 2026-10-28 → 2026-11-05 (+8d) |  |  |
| 1 | **EXTERNAL / LANDSCAPE WORK** |  | 2026-10-25 → 2026-11-01 (+7d) |  |  |
| PG-Q-PR-LL-LS-DL-20_R | Benches, Seats (Rectangular & Circular)(Remaining) |  | 2026-10-25 → 2026-11-01 (+7d) |  | 30.5d → 29d |
| 2 | **SPORTS & RECREATIONAL FACILITIES WORK** |  | 2026-10-27 → 2026-11-05 (+9d) |  |  |
| PG-Q-PR-LL-SP-DL-10_R | Football Playground Materials (Flooring, goal post, nets, paints, etc)(Remaining) |  | 2026-10-24 → 2026-10-31 (+7d) |  | 31.85d → 29.85d |
| PG-Q-PR-LL-SP-DL-20_R | Basketball Playground Materials (Flooring, basketball poll, nets, paints, etc)(Remaining) |  | 2026-10-24 → 2026-10-31 (+7d) |  | 35.85d → 29.85d |
| PG-Q-PR-LL-SP-DL-30_R | Padel Playgound Materials (Fence, tempered glass, etc)(Remaining) |  | 2026-10-24 → 2026-10-31 (+7d) |  | 2.65d → 5.65d |
| PG-Q-PR-LL-SP-DL-40_R | Tartan Floor(Remaining) |  | 2026-10-24 → 2026-10-31 (+7d) |  | 15.4d → 18.4d |
| PG-Q-PR-LL-SP-DL-50 | Air Dome Materials | 2026-10-24 A → 2026-10-29 A (+5d) | 2026-10-27 → 2026-11-05 (+9d) |  | -50.8d → -58.8d |
| 5 | **METAL WORK** |  | 2026-10-28 → 2026-11-04 (+7d) |  |  |
| PG-Q-PR-LL-MT-DL-20_R | Curtain Wall(Remaining) |  | 2026-10-28 → 2026-11-04 (+7d) |  | 18.9d → 13.9d |
| 8 | **IRRIGATION WORK** |  | 2026-10-24 → 2026-10-31 (+7d) |  |  |
| PG-Q-PR-LL-IR-DL-20_R | Irrigation Control System(Remaining) |  | 2026-10-24 → 2026-10-31 (+7d) |  | -1.2d → -2.6d |
| 9 | **ELECTRICAL WORK** |  | 2026-10-25 → 2026-11-01 (+7d) |  |  |
| PG-Q-PR-LL-EL-DL-10_R | Main Distribution Board(Remaining) |  | 2026-10-25 → 2026-11-01 (+7d) |  | 7.5d → 6.1d |
| PG-Q-PR-LL-EL-DL-20_R | Power Panels (Pump, Street Light)(Remaining) |  | 2026-10-24 → 2026-10-31 (+7d) |  | 8.8d → 7.2d |
| PG-Q-PR-LL-EL-DL-30_R | Site Lighting Poles(Remaining) |  | 2026-10-25 → 2026-11-01 (+7d) |  | 10.3d → 8.2d |
| PG-Q-PR-LL-EL-DL-40_R | Lighting Fixtures(Remaining) |  | 2026-10-25 → 2026-11-01 (+7d) |  | 12.1d → 10d |
| PG-Q-PR-LL-EL-DL-50_R | Grounding System Materials (Earth pit rod, LPS, etc)(Remaining) |  | 2026-10-25 → 2026-11-01 (+7d) |  | 6.9d → 5.5d |
| PG-Q-PR-LL-EL-DL-60_R | Telecommunications & Data System Materials (Telephone outlet, CCTV, etc)(Remaining) |  | 2026-10-25 → 2026-11-01 (+7d) |  | 13.7d → 11.2d |
| PG-Q-PR-LL-EL-DL-70_R | Security and Access Control System Materials(Remaining) |  | 2026-10-25 → 2026-11-01 (+7d) |  | 19.3d → 15.4d |
| PG-Q-PR-LL-EL-DL-80_R | Fire Alarm System Materials(Remaining) |  | 2026-10-25 → 2026-11-01 (+7d) |  | 15.9d → 13.1d |
| 2 | **SHORT LEAD ITEMS** |  | 2026-10-25 → 2026-11-01 (+7d) |  |  |
| 3 | **DELIVERY TO SITE** |  | 2026-10-25 → 2026-11-01 (+7d) |  |  |
| 1 | **EXTERNAL / LANDSCAPE WORK** |  | 2026-10-25 → 2026-11-01 (+7d) |  |  |
| PG-Q-PR-SL-LS-DL-50_R | Thermoplastic pavement road marking(Remaining) |  | 2026-10-25 → 2026-11-01 (+7d) |  | 19.8d → 13.8d |
| PG-Q-PR-SL-LS-DL-60_R | Traffic Signages(Remaining) |  | 2026-10-25 → 2026-11-01 (+7d) |  | 19.8d → 13.8d |
| PG-Q-PR-SL-LS-DL-70_R | Trees(Remaining) |  | 2026-10-25 → 2026-11-01 (+7d) |  | 19.8d → 13.8d |
| PG-Q-PR-SL-LS-DL-80_R | Lawn(Remaining) |  | 2026-10-25 → 2026-11-01 (+7d) |  | 19.8d → 13.8d |
| 5 | **METAL WORK** |  | 2026-10-25 → 2026-11-01 (+7d) |  |  |
| PG-Q-PR-SL-MT-DL-10_R | Galvanized Steel Ladder(Remaining) |  | 2026-10-25 → 2026-11-01 (+7d) |  | 23.3d → 18.3d |
| PG-Q-PR-SL-MT-DL-20_R | Galvanized Steel Roof Scupper(Remaining) |  | 2026-10-25 → 2026-11-01 (+7d) |  | 23.3d → 18.3d |
| PG-Q-PR-SL-MT-DL-30_R | Galvanized Steel Cover with frame(Remaining) |  | 2026-10-25 → 2026-11-01 (+7d) |  | 23.3d → 18.3d |
| 8 | **IRRIGATION WORK** |  | 2026-10-25 → 2026-11-01 (+7d) |  |  |
| PG-Q-PR-SL-IR-DL-10_R | Gate Valve including valve box(Remaining) |  | 2026-10-25 → 2026-11-01 (+7d) |  | -0.8d → -2.2d |
| PG-Q-PR-SL-IR-DL-20_R | Bulbblers and Spreyers(Remaining) |  | 2026-10-25 → 2026-11-01 (+7d) |  | -1.4d → -2.8d |
| 9 | **ELECTRICAL WORK** |  | 2026-10-25 → 2026-11-01 (+7d) |  |  |
| PG-Q-PR-SL-EL-DL-10_R | Wiring Devices Materials(Remaining) |  | 2026-10-25 → 2026-11-01 (+7d) |  | 10.9d → 9.1d |
| 10 | **FIRE FIGHTING WORK** |  | 2026-10-25 → 2026-11-01 (+7d) |  |  |
| PG-Q-PR-SL-FF-DL-10_R | Fire Extinguishers(Remaining) |  | 2026-10-25 → 2026-11-01 (+7d) |  | 5.2d → 3.8d |
| CO | **CONSTRUCTION STAGE** |  | 2027-01-25 → 2027-02-03 (+9d) |  |  |
| EX.SIT | **PLAYGROUND AND LANDSCAPING WORKS** |  | 2027-01-03 → 2027-01-05 (+2d) |  |  |
| 1 | **PLAYGROUND WORKS** |  | 2026-12-14 → 2026-12-10 (-4d) |  |  |
| FP | **FOOTBALL PLAYGROUND WORKS** |  | 2026-11-12 → 2026-11-15 (+3d) |  |  |
| PG-Q-CON-EX-FB-90 | Turfing / Seeding Works |  | 2026-10-27 → 2026-11-03 (+7d) |  | 29.4d → 27.4d |

| ID | Task | Start | Finish | Complete | Total float |
| --- | --- | --- | --- | --- | --- |
| PG-Q-CON-EX-FB-120 | Installation of Lighting System |  | 2026-10-25 → 2026-11-01 (+7d) |  | 29.4d → 27.4d |
| PG-Q-CON-EX-FB-110 | Install Playground Benches |  | 2026-11-03 → 2026-11-10 (+7d) |  | 29.4d → 27.4d |
| PG-Q-CON-EX-FB-60 | Goal Post Installation & Alignment |  | 2026-10-31 → 2026-11-07 (+7d) |  | 29.4d → 27.4d |
| PG-Q-CON-EX-FB-100 | Markings and Signages | 2026-11-03 → 2026-10-25 A (-9d) | 2026-11-12 → 2026-11-15 (+3d) | 0% → 50% | 29.4d → 27.4d |
| BP | **BASKETBALL PLAYGROUND WORKS** |  | 2026-11-09 → 2026-11-16 (+7d) |  |  |
| PG-Q-CON-EX-BB-60 | Basketball Pole Installation & Alignment |  | 2026-11-01 → 2026-11-08 (+7d) |  | 32.85d → 26.85d |
| PG-Q-CON-EX-BB-80 | Court Line Marking |  | 2026-10-27 → 2026-11-03 (+7d) |  | 32.85d → 26.85d |
| PG-Q-CON-EX-BB-100 | Install Playground Benches |  | 2026-11-09 → 2026-11-16 (+7d) |  | 32.85d → 26.85d |
| PG-Q-CON-EX-BB-90 | Backboard & Hoop Installation |  | 2026-11-04 → 2026-11-11 (+7d) |  | 32.85d → 26.85d |
| PP | **PADEL PLAYGROUND WORKS** |  | 2026-12-14 → 2026-12-10 (-4d) |  |  |
| PG-Q-CON-EX-PD-30_R | Tartan Flooring Layers(Remaining) |  | 2026-11-09 → 2026-11-16 (+7d) |  | 2.65d → 5.65d |
| PG-Q-CON-EX-PD-40 | Steel Structure & Fence Supports Installation |  | 2026-10-28 → 2026-11-04 (+7d) |  | 2.65d → 5.65d |
| PG-Q-CON-EX-PD-60 | Chain Link Fence & Gates Installation |  | 2026-11-01 → 2026-11-08 (+7d) |  | 2.65d → 5.65d |
| PG-Q-CON-EX-PD-50 | Tempered Glass Installation |  | 2026-11-09 → 2026-11-16 (+7d) |  | 2.65d → 5.65d |
| PG-Q-CON-EX-PD-70 | Court Accessories Installation | 2026-11-09 → 2026-10-22 A (-18d) | 2026-11-26 → 2026-11-28 (+2d) | 0% → 50% | 2.65d → 5.65d |
| PG-Q-CON-EX-PD-80 | Install Playground Benches | 2026-11-26 → 2026-10-25 A (-32d) | 2026-12-14 → 2026-12-10 (-4d) | 0% → 50% | 2.65d → 5.65d |
| GN.SI | **GENERAL SITE WORKS** |  | 2027-01-03 → 2027-01-05 (+2d) |  |  |
| 5 | **MECHANICAL WORK** |  | 2026-11-19 → 2026-11-26 (+7d) |  |  |
| 2 | **STORM WATER AND UTILITY WORK** |  | 2026-11-17 → 2026-11-24 (+7d) |  |  |
| PG-Q-CON-EX-GN-M-30_R | Manhole Installation(Remaining) |  | 2026-10-24 → 2026-10-31 (+7d) |  | -15d → -16.4d |
| PG-Q-CON-EX-GN-M-40 | 150 mm uPVC pipe laying & jointing |  | 2026-10-25 → 2026-11-01 (+7d) |  | -15d → -16.4d |
| PG-Q-CON-EX-GN-M-50 | Concrete Encasement | 2026-10-25 → 2026-11-01 (+7d) | 2026-11-02 → 2026-11-09 (+7d) |  | -15d → -16.4d |
| PG-Q-CON-EX-GN-M-60 | Backfilling & Compaction | 2026-11-02 → 2026-11-09 (+7d) | 2026-11-09 → 2026-11-16 (+7d) |  | -15d → -16.4d |
| PG-Q-CON-EX-GN-M-70 | Surface Reinstatement & Civil Works | 2026-11-10 → 2026-11-17 (+7d) | 2026-11-17 → 2026-11-24 (+7d) |  | -15d → -16.4d |
| IR.SY | **IRRIGATION SYSTEM WORKS** |  | 2026-11-10 → 2026-11-17 (+7d) |  |  |
| PG-Q-CON-EX-GN-M-90 | Installation of Irrigation Control System |  | 2026-11-09 → 2026-11-16 (+7d) |  | -15d → -16.4d |
| PG-Q-CON-EX-GN-M-100 | Installation of Bubblers and Sprinklers |  | 2026-11-10 → 2026-11-17 (+7d) |  | -15d → -16.4d |
| 1 | **FIRE PROTECTION SYSTEM** | 2026-11-17 → 2026-11-24 (+7d) | 2026-11-19 → 2026-11-26 (+7d) |  |  |
| PG-Q-CON-EX-GN-M-110 | Fire Extinguisher Installation | 2026-11-17 → 2026-11-24 (+7d) | 2026-11-19 → 2026-11-26 (+7d) |  | -15d → -16.4d |
| 2 | **ELECTRICAL WORK** |  | 2026-12-14 → 2026-12-15 (+1d) |  |  |
| 1 | **POWER, LIGHTING & GROUNDING** |  | 2026-11-28 → 2026-12-03 (+5d) |  |  |
| PG-Q-CON-EX-GN-E-20_R | Foundation Work for Site Lighting Poles(Remaining) |  | 2026-11-18 → 2026-11-25 (+7d) |  | -13.7d → -15.1d |
| PG-Q-CON-EX-GN-E-60 | Site Lighting Poles Installation |  | 2026-11-24 → 2026-11-30 (+6d) | 80% → 70% | -15d → -16.4d |
| PG-Q-CON-EX-GN-E-30 | Lightning Protection System (LPS) |  | 2026-11-19 → 2026-11-26 (+7d) |  | -15d → -16.4d |
| PG-Q-CON-EX-GN-E-70 | Wiring Works |  | 2026-11-25 → 2026-12-01 (+6d) | 60% → 70% | -15d → -16.4d |
| PG-Q-CON-EX-GN-E-80 | Lighting Fixtures with outlets Installation |  | 2026-11-28 → 2026-12-03 (+5d) | 60% → 70% | -15d → -16.4d |
| PG-Q-CON-EX-GN-E-40 | KWH Meter and MDB Installation |  | 2026-11-21 → 2026-11-28 (+7d) | 60% → 70% | -15d → -16.4d |
| PG-Q-CON-EX-GN-E-50 | Power Panels and Distribution Boards |  | 2026-11-23 → 2026-11-30 (+7d) | 60% → 70% | -15d → -16.4d |
| 2 | **ELV SYSTEMS (TELECOM, DATA, AV & CCTV)** |  | 2026-12-09 → 2026-12-12 (+3d) |  |  |
| PG-Q-CON-EX-GN-E-90 | ELV Containment & Cabling Works |  | 2026-11-29 → 2026-12-03 (+4d) | 60% → 70% | -15d → -16.4d |
| PG-Q-CON-EX-GN-E-100 | Fiber Optic Pull Box Installation |  | 2026-11-30 → 2026-12-05 (+5d) | 60% → 70% | -15d → -16.4d |
| PG-Q-CON-EX-GN-E-110 | Telephone and Data Outlet Installation |  | 2026-12-02 → 2026-12-07 (+5d) | 60% → 70% | -15d → -16.4d |
| PG-Q-CON-EX-GN-E-130 | CCTV Rack / Cabinet Installation |  | 2026-12-06 → 2026-12-09 (+3d) | 60% → 70% | -15d → -16.4d |
| PG-Q-CON-EX-GN-E-120 | Telecom Equipment and AV HDMI Installation |  | 2026-12-03 → 2026-12-08 (+5d) | 60% → 70% | -15d → -16.4d |
| PG-Q-CON-EX-GN-E-140 | NVR and CCTV Monitor Installation |  | 2026-12-07 → 2026-12-10 (+3d) | 60% → 70% | -15d → -16.4d |
| PG-Q-CON-EX-GN-E-150 | IP Camera Installation |  | 2026-12-09 → 2026-12-12 (+3d) | 60% → 70% | -15d → -16.4d |
| 3 | **FIRE ALARM SYSTEM** |  | 2026-12-14 → 2026-12-15 (+1d) |  |  |
| PG-Q-CON-EX-GN-E-160 | Fire Alarm Containment & Cabling |  | 2026-12-02 → 2026-12-07 (+5d) | 60% → 70% | -14d → -15.4d |
| PG-Q-CON-EX-GN-E-170 | Fire Alarm Control Panel (FACP) Installation |  | 2026-12-06 → 2026-12-09 (+3d) | 60% → 70% | -14d → -15.4d |
| PG-Q-CON-EX-GN-E-180 | Initiating Devices (Detectors & Manual Pull Station) |  | 2026-12-09 → 2026-12-13 (+4d) | 60% → 70% | -14d → -15.4d |
| PG-Q-CON-EX-GN-E-190 | Notification Appliances (Strobe with Sounder) |  | 2026-12-14 → 2026-12-15 (+1d) | 60% → 70% | -14d → -15.4d |
| 3 | **PARKING WORK** |  | 2026-12-15 → 2026-12-16 (+1d) |  |  |
| PG-Q-CON-EX-GN-PR-30 | Marking & Signages | 2026-12-09 → 2026-10-27 A (-43d) | 2026-12-15 → 2026-12-16 (+1d) | 0% → 50% | -15d → -16.4d |
| 4 | **SERVICE CONNECTION** |  | 2027-01-03 → 2027-01-05 (+2d) |  |  |
| PG-Q-CON-EX-GN-SC-20 | HDPE Pipe Laying & Valve Installation |  | 2026-12-15 → 2026-12-17 (+2d) |  | -15d → -16.4d |
| PG-Q-CON-EX-GN-SC-30 | Connection to City Network | 2026-12-16 → 2026-12-17 (+1d) | 2026-12-24 → 2026-12-27 (+3d) |  | -15d → -16.4d |
| PG-Q-CON-EX-GN-SC-40 | Backfilling | 2026-12-26 → 2026-12-27 (+1d) | 2027-01-03 → 2027-01-05 (+2d) |  | -15d → -16.4d |
| LS | **LANDSCAPING WORKS** |  | 2026-11-26 → 2026-12-02 (+6d) |  |  |
| HSP | **HARDSCAPE WORK** |  | 2026-11-26 → 2026-12-02 (+6d) |  |  |
| PG-Q-CON-EX-LS-HS-50_R | Install Recycled Precast Concrete Seats(Remaining) |  | 2026-11-22 → 2026-11-28 (+6d) |  | 17.3d → 12.1d |
| PG-Q-CON-EX-LS-HS-20_R | Interlock Tiles Grey Scale with Black Marble Chips(Remaining) |  | 2026-10-27 → 2026-11-02 (+6d) |  | 17.3d → 12.1d |
| PG-Q-CON-EX-LS-HS-60 | Install Recycled Precast Concrete Trash Bins |  | 2026-11-26 → 2026-12-02 (+6d) |  | 17.3d → 12.1d |
| SSP | **SOFTSCAPE WORK** |  | 2026-11-19 → 2026-11-25 (+6d) |  |  |
| PG-Q-CON-EX-LS-SS-20_R | Lawn Area Preparation & Planting / Turfing(Remaining) |  | 2026-10-31 → 2026-11-05 (+5d) |  | 17.3d → 12.1d |
| PG-Q-CON-EX-LS-SS-10 | Planting Trees | 2026-10-31 → 2026-10-25 A (-6d) | 2026-11-19 → 2026-11-25 (+6d) | 0% → 50% | 17.3d → 12.1d |
| W.T | **TANK WORKS** |  | 2026-10-26 → 2026-11-01 (+6d) |  |  |
| 2 | **WATER STORAGE TANK** |  | 2026-10-26 → 2026-11-01 (+6d) |  |  |
| PG-Q-CON-EX-TW-IR-40 | GRP Water Tank Installation |  | 2026-10-26 → 2026-11-01 (+6d) | 70% → 80% | 17.3d → 12.1d |
| AD | **AIR DOME CONSTRUCTION** |  | 2027-01-25 → 2027-02-03 (+9d) |  |  |
| 1 | **CIVIL WORK** |  | 2026-11-15 → 2026-11-24 (+9d) |  |  |

| ID | Task | Start | Finish | Complete | Total float |
| --- | --- | --- | --- | --- | --- |
| PG-Q-CON-EX-AD-CL-70 | Installation of Steel Cable Structural System | 2026-10-25 → 2026-11-03 (+9d) | 2026-11-05 → 2026-11-15 (+10d) |  | -50.8d → -58.8d |
| PG-Q-CON-EX-AD-CL-80 | Installation of Membrane System | 2026-11-05 → 2026-11-15 (+10d) | 2026-11-15 → 2026-11-24 (+9d) |  | -50.8d → -58.8d |
| 2 | **ARCHITECTURAL WORK** |  | 2027-01-25 → 2027-02-03 (+9d) |  |  |
| PG-Q-CON-EX-AD-AR-10 | Installation of Thermal Insulation System |  | 2027-01-03 → 2027-01-12 (+9d) |  | -50.8d → -58.8d |
| PG-Q-CON-EX-AD-AR-40 | Final Fixing of Accessories & Finishes | 2027-01-03 → 2027-01-12 (+9d) | 2027-01-12 → 2027-01-21 (+9d) |  | -50.8d → -58.8d |
| PG-Q-CON-EX-AD-AR-20 | Installation of Doors & Access Systems | 2027-01-12 → 2027-01-21 (+9d) | 2027-01-19 → 2027-01-28 (+9d) |  | -50.8d → -58.8d |
| PG-Q-CON-EX-AD-AR-30 | Installation of Logo | 2027-01-19 → 2027-01-28 (+9d) | 2027-01-25 → 2027-02-03 (+9d) |  | -50.8d → -58.8d |
| 3 | **MECHANICAL WORK** | 2026-11-15 → 2026-11-24 (+9d) | 2026-12-03 → 2026-12-13 (+10d) |  |  |
| PG-Q-CON-EX-AD-ME-10 | Installation of Main Air Package Units | 2026-11-15 → 2026-11-24 (+9d) | 2026-11-21 → 2026-11-30 (+9d) |  | -50.8d → -58.8d |
| PG-Q-CON-EX-AD-ME-20 | Installation of Backup Air Package Unit | 2026-11-21 → 2026-11-30 (+9d) | 2026-11-26 → 2026-12-06 (+10d) |  | -50.8d → -58.8d |
| PG-Q-CON-EX-AD-ME-30 | Installation of Complete HVAC System | 2026-11-26 → 2026-12-06 (+10d) | 2026-12-03 → 2026-12-13 (+10d) |  | -50.8d → -58.8d |
| 4 | **ELECTRICAL WORK** |  | 2026-12-29 → 2027-01-07 (+9d) |  |  |
| PG-Q-CON-EX-AD-EL-10 | Installation of Electrical Boxes & MDBs |  | 2026-10-29 → 2026-11-05 (+7d) |  | -32.8d → -38.8d |
| PG-Q-CON-EX-AD-EL-20 | Installation of Lighting System | 2026-10-29 → 2026-11-05 (+7d) | 2026-11-12 → 2026-11-19 (+7d) |  | -32.8d → -38.8d |
| PG-Q-CON-EX-AD-EL-30 | Electrical Connections to Main Power Source (Excluding kWh Meter) | 2026-12-03 → 2026-12-13 (+10d) | 2026-12-09 → 2026-12-19 (+10d) |  | -50.8d → -58.8d |
| PG-Q-CON-EX-AD-EL-40 | Installation of Backup Generator | 2026-12-09 → 2026-12-19 (+10d) | 2026-12-16 → 2026-12-26 (+10d) |  | -50.8d → -58.8d |
| PG-Q-CON-EX-AD-EL-50 | Installation of Smart Dome System | 2026-12-16 → 2026-12-26 (+10d) | 2026-12-29 → 2027-01-07 (+9d) |  | -50.8d → -58.8d |
| B | **TOILET BUILDING WORKS** |  | 2026-10-31 → 2026-11-07 (+7d) |  |  |
| CVL | **CIVIL WORK** |  | 2026-10-29 → 2026-11-05 (+7d) |  |  |
| AR | **ARCHITECTURAL WORK** |  | 2026-10-29 → 2026-11-05 (+7d) |  |  |
| 1 | **GENERAL FINISHES** |  | 2026-10-29 → 2026-11-05 (+7d) |  |  |
| PG-Q-CON-B-AR-GF-60 | Install Doors & Windows |  | 2026-10-27 → 2026-11-03 (+7d) |  | 19.8d → 14.8d |
| PG-Q-CON-B-AR-GF-70 | Lockers and Furniture Installation |  | 2026-10-29 → 2026-11-05 (+7d) |  | 18.9d → 13.9d |
| 2 | **WET AREA FINISHES** |  | 2026-10-27 → 2026-11-03 (+7d) |  |  |
| PG-Q-CON-B-AR-WF-60 | Install Doors |  | 2026-10-27 → 2026-11-03 (+7d) |  | 21.6d → 16.6d |
| 3 | **ROOF FINISHES** |  | 2026-10-29 → 2026-11-05 (+7d) |  |  |
| PG-Q-CON-B-AR-RF-20 | Epoxy Flooring and Finishes |  | 2026-10-26 → 2026-11-02 (+7d) |  | 21.8d → 16.8d |
| PG-Q-CON-B-AR-RF-30 | Steel ladder and Steel roof scupper Installation |  | 2026-10-29 → 2026-11-05 (+7d) |  | 18.9d → 13.9d |
| MEP | **MEP WORK** |  | 2026-10-31 → 2026-11-07 (+7d) |  |  |
| MEC | **MECANICAL WORKS** |  | 2026-10-31 → 2026-11-07 (+7d) |  |  |
| FF | **FIRE FIGHTING SYSTEM** |  | 2026-10-31 → 2026-11-07 (+7d) |  |  |
| PG-Q-CON-B-GF-FF-10 | Fire Extinguisher Installation |  | 2026-10-31 → 2026-11-07 (+7d) |  | 18.9d → 13.9d |
| DS | **SEWER AND DRAINAGE SYSTEM** |  | 2026-10-26 → 2026-11-02 (+7d) |  |  |
| PG-Q-CON-B-GF-DR-30 | Sanitaryware Installation (Final Fix) |  | 2026-10-26 → 2026-11-02 (+7d) |  | 19.8d → 14.8d |
| HV | **HVAC SYSTEM** |  | 2026-10-24 → 2026-10-31 (+7d) |  |  |
| PG-Q-CON-B-GF-AC-20 | Split AC, Grills & Diffuser Installation |  | 2026-10-24 → 2026-10-31 (+7d) |  | 20.4d → 15.4d |
| TE & CO | **PROJECT CLOSOUT** |  | 2027-02-14 → 2027-02-23 (+9d) |  |  |
| PG-Q-PCL-10_R | Testing, Commessioning for All Systems(Remaining) | 2026-08-06 A → 2026-10-29 A (+84d) | 2027-01-25 → 2027-02-03 (+9d) | 50% → 60% | -50.8d → -58.8d |
| PG-Q-PCL-20 | As-Built Drawings | 2026-09-23 A → 2026-10-29 A (+36d) | 2027-02-02 → 2027-02-06 (+4d) | 20% → 60% | -44.4d → -47.9d |
| PG-Q-PCL-30 | Snag list Submission | 2027-01-25 → 2027-02-03 (+9d) | 2027-01-28 → 2027-02-07 (+10d) |  | -50.8d → -58.8d |
| PG-Q-PCL-40 | Snag list Closeout | 2027-01-28 → 2027-02-07 (+10d) | 2027-02-09 → 2027-02-18 (+9d) |  | -50.8d → -58.8d |
| PG-Q-PCL-50 | Issuing Approvals | 2027-02-09 → 2027-02-18 (+9d) | 2027-02-13 → 2027-02-22 (+9d) |  | -50.8d → -58.8d |
| PG-Q-PCL-60 | Handing Over | 2027-02-13 → 2027-02-22 (+9d) | 2027-02-14 → 2027-02-23 (+9d) |  | -50.8d → -58.8d |
| HAIL | **HAIL** |  | 2027-01-09 → 2027-01-13 (+4d) |  |  |
| PR | **PROCUREMENT** |  | 2026-10-26 → 2026-11-02 (+7d) |  |  |
| 1 | **LONG LEAD ITEMS** |  | 2026-10-26 → 2026-11-02 (+7d) |  |  |
| 4 | **DELIVERY TO SITE** |  | 2026-10-26 → 2026-11-02 (+7d) |  |  |
| 5 | **METAL WORK** |  | 2026-10-26 → 2026-11-02 (+7d) |  |  |
| PG-H-PR-LL-MT-DL-20_R | Curtain Wall(Remaining) |  | 2026-10-26 → 2026-11-02 (+7d) |  | 12.8d → 6.8d |
| 9 | **ELECTRICAL WORK** |  | 2026-10-25 → 2026-11-01 (+7d) |  |  |
| PG-H-PR-LL-EL-DL-30_R | Site Lighting Poles(Remaining) |  | 2026-10-25 → 2026-11-01 (+7d) |  | 13.4d → 11.9d |
| PG-H-PR-LL-EL-DL-40_R | Lighting Fixtures(Remaining) |  | 2026-10-25 → 2026-11-01 (+7d) |  | 9.35d → 3.35d |
| PG-H-PR-LL-EL-DL-10_R | Main Distribution Board(Remaining) |  | 2026-10-24 → 2026-10-31 (+7d) |  | 11d → 10.2d |
| PG-H-PR-LL-EL-DL-20_R | Power Panels (Pump, Street Light)(Remaining) |  | 2026-10-24 → 2026-10-31 (+7d) |  | 11.8d → 10.8d |
| PG-H-PR-LL-EL-DL-50_R | Grounding System Materials (Earth pit rod, LPS, etc)(Remaining) |  | 2026-10-24 → 2026-10-31 (+7d) |  | 9.8d → 9.3d |
| PG-H-PR-LL-EL-DL-60_R | Telecommunications & Data System Materials (Telephone outlet, CCTV, etc)(Remaining) |  | 2026-10-25 → 2026-11-01 (+7d) |  | 17.4d → 14.9d |
| PG-H-PR-LL-EL-DL-70_R | Security and Access Control System Materials(Remaining) |  | 2026-10-25 → 2026-11-01 (+7d) |  | 23d → 19.1d |
| PG-H-PR-LL-EL-DL-80_R | Fire Alarm System Materials(Remaining) |  | 2026-10-25 → 2026-11-01 (+7d) |  | 20.6d → 17.8d |
| 2 | **SHORT LEAD ITEMS** |  | 2026-10-25 → 2026-11-01 (+7d) |  |  |
| 3 | **DELIVERY TO SITE** |  | 2026-10-25 → 2026-11-01 (+7d) |  |  |
| 1 | **EXTERNAL / LANDSCAPE WORK** |  | 2026-10-25 → 2026-11-01 (+7d) |  |  |
| PG-H-PR-SL-LS-DL-60_R | Traffic Signages(Remaining) |  | 2026-10-25 → 2026-11-01 (+7d) |  | -4.8d → -9.8d |
| PG-H-PR-SL-LS-DL-70_R | Trees(Remaining) |  | 2026-10-25 → 2026-11-01 (+7d) |  | -4.8d → -9.8d |
| PG-H-PR-SL-LS-DL-80_R | Lawn(Remaining) |  | 2026-10-25 → 2026-11-01 (+7d) |  | 16.5d → 10.5d |
| CO | **CONSTRUCTION STAGE** |  | 2026-12-21 → 2026-12-22 (+1d) |  |  |
| EX.SIT | **PLAYGROUND AND LANDSCAPING WORKS** |  | 2026-12-21 → 2026-12-22 (+1d) |  |  |
| 1 | **PLAYGROUND WORKS** |  | 2026-11-16 → 2026-11-23 (+7d) |  |  |
| FP | **FOOTBALL PLAYGROUND WORKS** |  | 2026-11-16 → 2026-11-23 (+7d) |  |  |
| PG-H-CON-EX-FB-40_R | Tartan flooring(Remaining) |  | 2026-10-28 → 2026-11-04 (+7d) |  | 26.4d → 20.4d |
| PG-H-CON-EX-FB-90 | Turfing / Seeding Works |  | 2026-10-28 → 2026-11-04 (+7d) |  | 26.4d → 20.4d |

| ID | Task | Start | Finish | Complete | Total float |
| --- | --- | --- | --- | --- | --- |
| PG-H-CON-EX-FB-60 | Goal Post Installation & Alignment |  | 2026-11-01 → 2026-11-08 (+7d) |  | 26.4d → 20.4d |
| PG-H-CON-EX-FB-110 | Install Playground Benches |  | 2026-11-04 → 2026-11-11 (+7d) |  | 26.4d → 20.4d |
| PG-H-CON-EX-FB-120 | Installation of Lighting System |  | 2026-10-26 → 2026-11-02 (+7d) |  | 26.4d → 20.4d |
| PG-H-CON-EX-FB-100 | Markings and Signages | 2026-11-04 → 2026-11-11 (+7d) | 2026-11-16 → 2026-11-23 (+7d) |  | 26.4d → 20.4d |
| GN.SI | **GENERAL SITE WORKS** |  | 2026-12-21 → 2026-12-22 (+1d) |  |  |
| 5 | **MECHANICAL WORK** |  | 2026-11-09 → 2026-11-16 (+7d) |  |  |
| 2 | **STORM WATER AND UTILITY WORK** |  | 2026-11-08 → 2026-11-15 (+7d) |  |  |
| PG-H-CON-EX-GN-M-20_R | Bedding preparation & level control(Remaining) |  | 2026-10-24 → 2026-10-31 (+7d) |  | -3.7d → -4.2d |
| PG-H-CON-EX-GN-M-30 | Manhole Installation |  | 2026-10-25 → 2026-11-01 (+7d) |  | -3.7d → -4.2d |
| PG-H-CON-EX-GN-M-40 | 150 mm uPVC pipe laying & jointing |  | 2026-10-26 → 2026-11-02 (+7d) |  | -3.7d → -4.2d |
| PG-H-CON-EX-GN-M-50 | Concrete Encasement | 2026-10-26 → 2026-11-02 (+7d) | 2026-10-29 → 2026-11-05 (+7d) |  | -3.7d → -4.2d |
| PG-H-CON-EX-GN-M-60 | Backfilling & Compaction | 2026-10-29 → 2026-11-05 (+7d) | 2026-11-02 → 2026-11-09 (+7d) |  | -3.7d → -4.2d |
| PG-H-CON-EX-GN-M-70 | Surface Reinstatement & Civil Works | 2026-11-03 → 2026-11-10 (+7d) | 2026-11-08 → 2026-11-15 (+7d) |  | -3.7d → -4.2d |
| IR.SY | **IRRIGATION SYSTEM WORKS** |  | 2026-11-03 → 2026-11-10 (+7d) |  |  |
| PG-H-CON-EX-GN-M-80_R | Installation of HDPE Irrigation Pipe Network with Gate Valve and Box(Remaining) |  | 2026-11-02 → 2026-11-09 (+7d) |  | -3.7d → -4.2d |
| PG-H-CON-EX-GN-M-90 | Installation of Irrigation Control System |  | 2026-11-02 → 2026-11-09 (+7d) |  | -3.7d → -4.2d |
| PG-H-CON-EX-GN-M-100 | Installation of Bubblers and Sprinklers |  | 2026-11-03 → 2026-11-10 (+7d) |  | -3.7d → -4.2d |
| 1 | **FIRE PROTECTION SYSTEM** |  | 2026-11-09 → 2026-11-16 (+7d) |  |  |
| PG-H-CON-EX-GN-M-110 | Fire Extinguisher Installation |  | 2026-11-09 → 2026-11-16 (+7d) |  | -3.7d → -4.2d |
| 1 | **POWER, LIGHTING & GROUNDING** |  | 2026-11-18 → 2026-11-23 (+5d) |  |  |
| PG-H-CON-EX-GN-E-20_R | Foundation Work for Site Lighting Poles(Remaining) |  | 2026-11-09 → 2026-11-16 (+7d) |  | -3.6d → -4.1d |
| PG-H-CON-EX-GN-E-30 | Lightning Protection System (LPS) |  | 2026-11-10 → 2026-11-17 (+7d) | 60% → 70% | -3.7d → -4.2d |
| PG-H-CON-EX-GN-E-70 | Wiring Works |  | 2026-11-16 → 2026-11-22 (+6d) | 60% → 70% | -3.7d → -4.2d |
| PG-H-CON-EX-GN-E-40 | KWH Meter and MDB Installation |  | 2026-11-11 → 2026-11-17 (+6d) | 60% → 70% | -3.7d → -4.2d |
| PG-H-CON-EX-GN-E-50 | Power Panels and Distribution Boards |  | 2026-11-14 → 2026-11-19 (+5d) | 60% → 70% | -3.7d → -4.2d |
| PG-H-CON-EX-GN-E-60 | Site Lighting Poles Installation |  | 2026-11-15 → 2026-11-21 (+6d) | 60% → 70% | -3.7d → -4.2d |
| PG-H-CON-EX-GN-E-80 | Lighting Fixtures with outlets Installation |  | 2026-11-18 → 2026-11-23 (+5d) | 60% → 70% | -3.7d → -4.2d |
| 2 | **ELV SYSTEMS (TELECOM, DATA, AV & CCTV)** |  | 2026-11-30 → 2026-12-01 (+1d) |  |  |
| PG-H-CON-EX-GN-E-130 | CCTV Rack / Cabinet Installation |  | 2026-11-26 → 2026-11-29 (+3d) | 60% → 70% | -3.7d → -4.2d |
| PG-H-CON-EX-GN-E-140 | NVR and CCTV Monitor Installation |  | 2026-11-29 → 2026-11-30 (+1d) | 60% → 70% | -3.7d → -4.2d |
| PG-H-CON-EX-GN-E-150 | IP Camera Installation |  | 2026-11-30 → 2026-12-01 (+1d) | 60% → 70% | -3.7d → -4.2d |
| PG-H-CON-EX-GN-E-90 | ELV Containment & Cabling Works |  | 2026-11-19 → 2026-11-24 (+5d) | 60% → 70% | -3.7d → -4.2d |
| PG-H-CON-EX-GN-E-100 | Fiber Optic Pull Box Installation |  | 2026-11-21 → 2026-11-25 (+4d) | 60% → 70% | -3.7d → -4.2d |
| PG-H-CON-EX-GN-E-110 | Telephone and Data Outlet Installation |  | 2026-11-23 → 2026-11-26 (+3d) | 60% → 70% | -3.7d → -4.2d |
| PG-H-CON-EX-GN-E-120 | Telecom Equipment and AV HDMI Installation |  | 2026-11-24 → 2026-11-28 (+4d) | 60% → 70% | -3.7d → -4.2d |
| PG-H-CON-EX-GN-E-160 | Fire Alarm Containment & Cabling |  | 2026-11-23 → 2026-11-26 (+3d) | 60% → 70% | -1.7d → -2.2d |
| PG-H-CON-EX-GN-E-170 | Fire Alarm Control Panel (FACP) Installation |  | 2026-11-26 → 2026-11-29 (+3d) | 60% → 70% | -1.7d → -2.2d |
| PG-H-CON-EX-GN-E-180 | Initiating Devices (Detectors & Manual Pull Station) |  | 2026-12-01 → 2026-12-02 (+1d) | 60% → 70% | -1.7d → -2.2d |
| PG-H-CON-EX-GN-E-190 | Notification Appliances (Strobe with Sounder) |  |  | 60% → 70% | -1.7d → -2.2d |
| PG-H-CON-EX-GN-PR-10 | Installlation of Parking Accessories |  | 2026-12-01 → 2026-12-02 (+1d) |  | -3.7d → -4.2d |
| PG-H-CON-EX-GN-PR-30 | Marking & Signages | 2026-12-01 → 2026-10-27 A (-35d) |  | 0% → 50% | -3.7d → -4.2d |
| 4 | **SERVICE CONNECTION** |  | 2026-12-21 → 2026-12-22 (+1d) |  |  |
| PG-H-CON-EX-GN-SC-40 | Backfilling |  | 2026-12-21 → 2026-12-22 (+1d) |  | -3.7d → -4.2d |
| PG-H-CON-EX-GN-SC-30 | Connection to City Network | 2026-12-08 → 2026-12-09 (+1d) |  |  | -3.7d → -4.2d |
| LS | **LANDSCAPING WORKS** |  | 2026-12-07 → 2026-12-12 (+5d) |  |  |
| HSP | **HARDSCAPE WORK** |  | 2026-12-07 → 2026-12-12 (+5d) |  |  |
| PG-H-CON-EX-LS-HS-40_R | Bike Path and Walking Path Construction(Remaining) |  | 2026-11-22 → 2026-11-28 (+6d) |  | -19.6d → -23.6d |
| PG-H-CON-EX-LS-HS-50_R | Install Recycled Precast Concrete Seats(Remaining) |  | 2026-11-25 → 2026-11-30 (+5d) | 70% → 80% | -19.6d → -23.6d |
| PG-H-CON-EX-LS-HS-60 | Install Recycled Precast Concrete Trash Bins | 2026-11-25 → 2026-11-30 (+5d) | 2026-12-07 → 2026-12-12 (+5d) |  | -19.6d → -23.6d |
| SSP | **SOFTSCAPE WORK** |  | 2026-12-07 → 2026-12-12 (+5d) |  |  |
| PG-H-CON-EX-LS-SS-20_R | Lawn Area Preparation & Planting / Turfing(Remaining) |  | 2026-12-07 → 2026-12-12 (+5d) |  | -19.6d → -23.6d |
| PG-H-CON-EX-LS-SS-10 | Planting Trees | 2026-11-11 → 2026-10-26 A (-16d) | 2026-11-22 → 2026-11-28 (+6d) | 0% → 50% | -19.6d → -23.6d |
| W.T | **TANK WORKS** |  | 2026-11-10 → 2026-11-16 (+6d) |  |  |
| 1 | **SEPTIC TANK** |  | 2026-11-07 → 2026-11-14 (+7d) |  |  |
| PG-H-CON-EX-TW-ST-60 | Finishing Work | 2026-10-24 → 2026-10-31 (+7d) | 2026-10-31 → 2026-11-07 (+7d) |  | -19.6d → -23.6d |
| PG-H-CON-EX-TW-ST-70 | Backfilling | 2026-11-01 → 2026-11-08 (+7d) | 2026-11-07 → 2026-11-14 (+7d) |  | -19.6d → -23.6d |
| 2 | **WATER STORAGE TANK** |  | 2026-11-10 → 2026-11-16 (+6d) |  |  |
| PG-H-CON-EX-TW-IR-40 | GRP Water Tank Installation |  | 2026-11-10 → 2026-11-16 (+6d) | 40% → 60% | -19.6d → -23.6d |
| B | **TOILET BUILDING WORKS** |  | 2026-11-05 → 2026-11-12 (+7d) |  |  |
| CVL | **CIVIL WORK** |  | 2026-11-04 → 2026-11-11 (+7d) |  |  |
| AR | **ARCHITECTURAL WORK** |  | 2026-11-04 → 2026-11-11 (+7d) |  |  |
| 1 | **GENERAL FINISHES** |  | 2026-11-04 → 2026-11-11 (+7d) |  |  |
| PG-H-CON-B-AR-GF-40 | Wall Paint |  | 2026-10-29 → 2026-11-05 (+7d) |  | 7.05d → 1.05d |
| PG-H-CON-B-AR-GF-50 | Epoxy Flooring |  | 2026-11-01 → 2026-11-08 (+7d) |  | 7.05d → 1.05d |
| PG-H-CON-B-AR-GF-60 | Install Doors & Windows |  | 2026-11-02 → 2026-11-09 (+7d) |  | 7.05d → 1.05d |
| PG-H-CON-B-AR-GF-80 | Lockers and Furniture Installation |  | 2026-11-04 → 2026-11-11 (+7d) |  | 7.05d → 1.05d |
| 2 | **WET AREA FINISHES** |  | 2026-10-31 → 2026-11-07 (+7d) |  |  |
| PG-H-CON-B-AR-WF-60 | Install Doors |  | 2026-10-31 → 2026-11-07 (+7d) |  | 18.65d → 13.65d |
| 3 | **ROOF FINISHES** |  | 2026-11-04 → 2026-11-11 (+7d) |  |  |
| PG-H-CON-B-AR-RF-20 | Epoxy Flooring and Finishes |  | 2026-10-31 → 2026-11-07 (+7d) |  | 9.85d → 4.25d |

| ID | Task | Start | Finish | Complete | Total float |
| --- | --- | --- | --- | --- | --- |
| PG-H-CON-B-AR-RF-30 | Steel ladder and Steel roof scupper Installation | 2026-11-02 → 2026-10-27 A (-6d) | 2026-11-04 → 2026-11-11 (+7d) | 0% → 20% | 7.05d → 1.05d |
| MEP | **MEP WORK** |  | 2026-11-05 → 2026-11-12 (+7d) |  |  |
| MEC | **MECANICAL WORKS** |  | 2026-11-05 → 2026-11-12 (+7d) |  |  |
| FF | **FIRE FIGHTING SYSTEM** | 2026-11-04 → 2026-11-11 (+7d) | 2026-11-05 → 2026-11-12 (+7d) |  |  |
| PG-H-CON-B-GF-FF-10 | Fire Extinguisher Installation | 2026-11-04 → 2026-11-11 (+7d) | 2026-11-05 → 2026-11-12 (+7d) |  | 7.05d → 1.05d |
| DS | **SEWER AND DRAINAGE SYSTEM** |  | 2026-10-27 → 2026-11-03 (+7d) |  |  |
| PG-H-CON-B-GF-DR-10 | Sewer and Drainge System Main Lines Installation |  | 2026-10-24 → 2026-10-31 (+7d) |  | 7.05d → 1.05d |
| PG-H-CON-B-GF-DR-30 | Sanitaryware Installation (Final Fix) | 2026-10-25 → 2026-11-01 (+7d) | 2026-10-27 → 2026-11-03 (+7d) |  | 7.05d → 1.05d |
| HV | **HVAC SYSTEM** |  | 2026-10-24 → 2026-10-31 (+7d) |  |  |
| PG-H-CON-B-GF-AC-20 | Split AC, Grills & Diffuser Installation |  | 2026-10-24 → 2026-10-31 (+7d) |  | 7.05d → 1.05d |
| WS | **WATER SUPPLY SYSTEM** |  | 2026-10-25 → 2026-11-01 (+7d) |  |  |
| PG-H-CON-B-GF-WS-30 | Water Supply Accesories and Booster pump Installation |  | 2026-10-25 → 2026-11-01 (+7d) |  | 7.05d → 1.05d |
| ELC | **ELECTRICAL WORKS** |  | 2026-10-29 → 2026-11-05 (+7d) |  |  |
| PG-H-CON-B-GF-EL-20 | Electrical Light Fixtures Installation |  | 2026-10-27 → 2026-11-03 (+7d) |  | 7.05d → 1.05d |
| PG-H-CON-B-GF-EL-30 | Fire Alarm Devices Installation |  | 2026-10-28 → 2026-11-04 (+7d) |  | 7.05d → 1.05d |
| PG-H-CON-B-GF-EL-40 | Telecom & CCTV Devices Installation |  | 2026-10-28 → 2026-11-04 (+7d) |  | 7.05d → 1.05d |
| PG-H-CON-B-GF-EL-50 | Electrical & ELV Wiring Works |  | 2026-10-29 → 2026-11-05 (+7d) |  | 7.05d → 1.05d |
| TE & CO | **PROJECT CLOSOUT** |  | 2027-01-09 → 2027-01-13 (+4d) |  |  |
| PG-H-PCL-20 | As-Built Drawings | 2026-12-07 → 2026-10-20 A (-48d) | 2026-12-28 → 2027-01-02 (+5d) | 0% → 60% | -15.6d → -19.6d |
| PG-H-PCL-10_R | Testing, Commessioning for All Systems(Remaining) | 2026-08-06 A → 2026-10-29 A (+84d) | 2026-12-07 → 2026-12-12 (+5d) | 40% → 60% | -19.6d → -23.6d |
| PG-H-PCL-30 | Snag list Submission | 2026-12-07 → 2026-12-12 (+5d) | 2026-12-16 → 2026-12-21 (+5d) |  | -19.6d → -23.6d |
| PG-H-PCL-40 | Snag list Closeout | 2026-12-16 → 2026-12-21 (+5d) | 2027-01-02 → 2027-01-06 (+4d) |  | -19.6d → -23.6d |
| PG-H-PCL-50 | Issuing Approvals | 2027-01-02 → 2027-01-06 (+4d) | 2027-01-05 → 2027-01-10 (+5d) |  | -19.6d → -23.6d |
| PG-H-PCL-60 | Handing Over | 2027-01-05 → 2027-01-10 (+5d) | 2027-01-09 → 2027-01-13 (+4d) |  | -19.6d → -23.6d |
| TABUK | **TABUK** |  | 2027-02-11 → 2027-02-18 (+7d) |  |  |
| PR | **PROCUREMENT** |  | 2026-10-27 → 2026-11-03 (+7d) |  |  |
| 1 | **LONG LEAD ITEMS** |  | 2026-10-27 → 2026-11-03 (+7d) |  |  |
| 4 | **DELIVERY TO SITE** |  | 2026-10-27 → 2026-11-03 (+7d) |  |  |
| 1 | **EXTERNAL / LANDSCAPE WORK** |  | 2026-10-25 → 2026-11-01 (+7d) |  |  |
| PG-T-PR-LL-LS-DL-20_R | Benches, Seats (Rectangular & Circular)(Remaining) |  | 2026-10-25 → 2026-11-01 (+7d) |  | 27.2d → 21.2d |
| 2 | **SPORTS & RECREATIONAL FACILITIES WORK** |  | 2026-10-25 → 2026-11-01 (+7d) |  |  |
| PG-T-PR-LL-SP-DL-40_R | Tartan Floor(Remaining) |  | 2026-10-25 → 2026-11-01 (+7d) |  | 23.8d → 22.9d |
| PG-T-PR-LL-SP-DL-10_R | Football Playground Materials (Flooring, goal post, nets, paints, etc)(Remaining) |  | 2026-10-25 → 2026-11-01 (+7d) |  | 31.6d → 28.6d |
| PG-T-PR-LL-SP-DL-20_R | Basketball Playground Materials (Flooring, basketball poll, nets, paints, etc)(Remaining) |  | 2026-10-25 → 2026-11-01 (+7d) |  | 25.4d → 24.5d |
| PG-T-PR-LL-SP-DL-30_R | Padel Playgound Materials (Fence, tempered glass, etc)(Remaining) |  | 2026-10-25 → 2026-11-01 (+7d) |  | 11.25d → 10.05d |
| PG-T-PR-LL-SP-DL-50 | Air Dome Materials | 2026-10-22 A → 2026-10-29 A (+7d) | 2026-10-25 → 2026-11-01 (+7d) |  | -49d → -55d |
| 5 | **METAL WORK** |  | 2026-10-27 → 2026-11-03 (+7d) |  |  |
| PG-T-PR-LL-MT-DL-20_R | Curtain Wall(Remaining) |  | 2026-10-27 → 2026-11-03 (+7d) |  | 18.4d → 14.5d |
| 8 | **IRRIGATION WORK** |  | 2026-10-24 → 2026-10-31 (+7d) |  |  |
| PG-T-PR-LL-IR-DL-20_R | Irrigation Control System(Remaining) |  | 2026-10-24 → 2026-10-31 (+7d) |  | -13.1d → -12.4d |
| 9 | **ELECTRICAL WORK** |  | 2026-10-25 → 2026-11-01 (+7d) |  |  |
| PG-T-PR-LL-EL-DL-10_R | Main Distribution Board(Remaining) |  | 2026-10-25 → 2026-11-01 (+7d) |  | -3d → -2.3d |
| PG-T-PR-LL-EL-DL-20_R | Power Panels (Pump, Street Light)(Remaining) |  | 2026-10-25 → 2026-11-01 (+7d) |  | -2d → -1.3d |
| PG-T-PR-LL-EL-DL-30_R | Site Lighting Poles(Remaining) |  | 2026-10-25 → 2026-11-01 (+7d) |  | -0.6d → 0.1d |
| PG-T-PR-LL-EL-DL-40_R | Lighting Fixtures(Remaining) |  | 2026-10-25 → 2026-11-01 (+7d) |  | 1.4d → 2.1d |
| PG-T-PR-LL-EL-DL-50_R | Grounding System Materials (Earth pit rod, LPS, etc)(Remaining) |  | 2026-10-24 → 2026-10-31 (+7d) |  | -3d → -2.3d |
| PG-T-PR-LL-EL-DL-60_R | Telecommunications & Data System Materials (Telephone outlet, CCTV, etc)(Remaining) |  | 2026-10-25 → 2026-11-01 (+7d) |  | 6.8d → 7.5d |
| PG-T-PR-LL-EL-DL-70_R | Security and Access Control System Materials(Remaining) |  | 2026-10-25 → 2026-11-01 (+7d) |  | 15.8d → 13d |
| PG-T-PR-LL-EL-DL-80_R | Fire Alarm System Materials(Remaining) |  | 2026-10-25 → 2026-11-01 (+7d) |  | 8d → 8.4d |
| 2 | **SHORT LEAD ITEMS** |  | 2026-10-25 → 2026-11-01 (+7d) |  |  |
| 3 | **DELIVERY TO SITE** |  | 2026-10-25 → 2026-11-01 (+7d) |  |  |
| 1 | **EXTERNAL / LANDSCAPE WORK** |  | 2026-10-24 → 2026-10-31 (+7d) |  |  |
| PG-T-PR-SL-LS-DL-60_R | Traffic Signages(Remaining) |  | 2026-10-24 → 2026-10-31 (+7d) |  | 21d → 17.1d |
| PG-T-PR-SL-LS-DL-70_R | Trees(Remaining) |  | 2026-10-24 → 2026-10-31 (+7d) |  | 25d → 19d |
| PG-T-PR-SL-LS-DL-80_R | Lawn(Remaining) |  | 2026-10-24 → 2026-10-31 (+7d) |  | 30.2d → 24.2d |
| 5 | **METAL WORK** |  | 2026-10-25 → 2026-11-01 (+7d) |  |  |
| PG-T-PR-SL-MT-DL-10_R | Galvanized Steel Ladder(Remaining) |  | 2026-10-25 → 2026-11-01 (+7d) |  | 19.6d → 15.7d |
| PG-T-PR-SL-MT-DL-20_R | Galvanized Steel Roof Scupper(Remaining) |  | 2026-10-25 → 2026-11-01 (+7d) |  | 19.6d → 15.7d |
| PG-T-PR-SL-MT-DL-30_R | Galvanized Steel Cover with frame(Remaining) |  | 2026-10-25 → 2026-11-01 (+7d) |  | 19.6d → 15.7d |
| 8 | **IRRIGATION WORK** |  | 2026-10-24 → 2026-10-31 (+7d) |  |  |
| PG-T-PR-SL-IR-DL-10_R | Gate Valve including valve box(Remaining) |  | 2026-10-24 → 2026-10-31 (+7d) |  | -13.55d → -12.85d |
| PG-T-PR-SL-IR-DL-20_R | Bulbblers and Spreyers(Remaining) |  | 2026-10-24 → 2026-10-31 (+7d) |  | -12.95d → -12.25d |
| CO | **CONSTRUCTION STAGE** |  | 2027-01-30 → 2027-02-06 (+7d) |  |  |
| 1 | **PLAYGROUND WORKS** |  | 2026-12-03 → 2026-12-05 (+2d) |  |  |
| FP | **FOOTBALL PLAYGROUND WORKS** |  | 2026-11-12 → 2026-11-16 (+4d) |  |  |
| PG-T-CON-EX-FB-90 | Turfing / Seeding Works |  | 2026-10-26 → 2026-11-02 (+7d) |  | 29.1d → 26.1d |
| PG-T-CON-EX-FB-120 | Installation of Lighting System |  | 2026-10-25 → 2026-11-01 (+7d) |  | 29.1d → 26.1d |
| PG-T-CON-EX-FB-60 | Goal Post Installation & Alignment |  | 2026-10-29 → 2026-11-05 (+7d) |  | 29.1d → 26.1d |
| PG-T-CON-EX-FB-110 | Install Playground Benches |  | 2026-11-01 → 2026-11-08 (+7d) |  | 29.1d → 26.1d |
| PG-T-CON-EX-FB-100 | Markings and Signages | 2026-11-01 → 2026-10-27 A (-5d) | 2026-11-12 → 2026-11-16 (+4d) | 0% → 30% | 29.1d → 26.1d |

| ID | Task | Start | Finish | Complete | Total float |
| --- | --- | --- | --- | --- | --- |
| BP | **BASKETBALL PLAYGROUND WORKS** |  | 2026-11-19 → 2026-11-21 (+2d) |  |  |
| PG-T-CON-EX-BB-60 | Basketball Pole Installation & Alignment |  | 2026-10-28 → 2026-11-04 (+7d) |  | 23.8d → 22.9d |
| PG-T-CON-EX-BB-80 | Court Line Marking |  | 2026-10-26 → 2026-11-02 (+7d) |  | 23.8d → 22.9d |
| PG-T-CON-EX-BB-100 | Install Playground Benches |  | 2026-11-19 → 2026-11-21 (+2d) |  | 23.8d → 22.9d |
| PG-T-CON-EX-BB-90 | Backboard & Hoop Installation | 2026-10-28 A | 2026-11-17 → 2026-11-18 (+1d) | 0% → 30% | 23.8d → 22.9d |
| PP | **PADEL PLAYGROUND WORKS** |  | 2026-12-03 → 2026-12-05 (+2d) |  |  |
| PG-T-CON-EX-PD-30_R | Tartan Flooring Layers(Remaining) |  | 2026-11-12 → 2026-11-19 (+7d) |  | 11.25d → 10.05d |
| PG-T-CON-EX-PD-40 | Steel Structure & Fence Supports Installation |  | 2026-10-27 → 2026-11-03 (+7d) |  | 11.25d → 10.05d |
| PG-T-CON-EX-PD-60 | Chain Link Fence & Gates Installation |  | 2026-10-28 → 2026-11-04 (+7d) |  | 11.25d → 10.05d |
| PG-T-CON-EX-PD-80 | Install Playground Benches |  | 2026-12-03 → 2026-12-05 (+2d) |  | 11.25d → 10.05d |
| PG-T-CON-EX-PD-50 | Tempered Glass Installation |  | 2026-11-10 → 2026-11-17 (+7d) |  | 11.25d → 10.05d |
| PG-T-CON-EX-PD-70 | Court Accessories Installation | 2026-11-12 → 2026-10-26 A (-17d) | 2026-12-01 → 2026-12-02 (+1d) | 0% → 30% | 11.25d → 10.05d |
| 5 | **MECHANICAL WORK** |  | 2026-11-14 → 2026-11-21 (+7d) |  |  |
| 2 | **STORM WATER AND UTILITY WORK** |  | 2026-11-08 → 2026-11-15 (+7d) |  |  |
| PG-T-CON-EX-GN-M-30 | Manhole Installation |  | 2026-10-24 → 2026-10-31 (+7d) |  | -20.9d → -20.2d |
| PG-T-CON-EX-GN-M-40 | 150 mm uPVC pipe laying & jointing |  | 2026-10-26 → 2026-11-02 (+7d) |  | -20.9d → -20.2d |
| PG-T-CON-EX-GN-M-50 | Concrete Encasement | 2026-10-26 → 2026-11-02 (+7d) | 2026-10-29 → 2026-11-05 (+7d) |  | -20.9d → -20.2d |
| PG-T-CON-EX-GN-M-60 | Backfilling & Compaction | 2026-10-29 → 2026-11-05 (+7d) | 2026-11-02 → 2026-11-09 (+7d) |  | -20.9d → -20.2d |
| PG-T-CON-EX-GN-M-70 | Surface Reinstatement & Civil Works | 2026-11-03 → 2026-11-10 (+7d) | 2026-11-08 → 2026-11-15 (+7d) |  | -20.9d → -20.2d |
| IR.SY | **IRRIGATION SYSTEM WORKS** |  | 2026-11-03 → 2026-11-10 (+7d) |  |  |
| PG-T-CON-EX-GN-M-80_R | Installation of HDPE Irrigation Pipe Network with Gate Valve and Box(Remaining) |  | 2026-11-02 → 2026-11-09 (+7d) |  | -20.9d → -20.2d |
| PG-T-CON-EX-GN-M-100 | Installation of Bubblers and Sprinklers |  | 2026-11-03 → 2026-11-10 (+7d) |  | -20.9d → -20.2d |
| PG-T-CON-EX-GN-M-90 | Installation of Irrigation Control System |  | 2026-11-02 → 2026-11-09 (+7d) |  | -20.9d → -20.2d |
| 1 | **FIRE PROTECTION SYSTEM** | 2026-11-08 → 2026-11-15 (+7d) | 2026-11-14 → 2026-11-21 (+7d) |  |  |
| PG-T-CON-EX-GN-M-110 | Fire Extinguisher Installation | 2026-11-08 → 2026-11-15 (+7d) | 2026-11-14 → 2026-11-21 (+7d) |  | -20.9d → -20.2d |
| 1 | **POWER, LIGHTING & GROUNDING** |  | 2026-11-26 → 2026-12-03 (+7d) |  |  |
| PG-T-CON-EX-GN-E-20_R | Foundation Work for Site Lighting Poles(Remaining) |  | 2026-10-26 → 2026-11-02 (+7d) |  | -4.7d → -4d |
| PG-T-CON-EX-GN-E-30 | Lightning Protection System (LPS) |  | 2026-11-15 → 2026-11-22 (+7d) |  | -20.9d → -20.2d |
| PG-T-CON-EX-GN-E-40 | KWH Meter and MDB Installation |  | 2026-11-16 → 2026-11-23 (+7d) |  | -20.9d → -20.2d |
| PG-T-CON-EX-GN-E-50 | Power Panels and Distribution Boards |  | 2026-11-17 → 2026-11-24 (+7d) |  | -20.9d → -20.2d |
| PG-T-CON-EX-GN-E-60 | Site Lighting Poles Installation |  | 2026-11-18 → 2026-11-25 (+7d) |  | -20.9d → -20.2d |
| PG-T-CON-EX-GN-E-70 | Wiring Works |  | 2026-11-19 → 2026-11-26 (+7d) |  | -20.9d → -20.2d |
| PG-T-CON-EX-GN-E-80 | Lighting Fixtures with outlets Installation | 2026-11-19 → 2026-11-26 (+7d) | 2026-11-26 → 2026-12-03 (+7d) |  | -20.9d → -20.2d |
| 2 | **ELV SYSTEMS (TELECOM, DATA, AV & CCTV)** |  | 2026-12-08 → 2026-12-12 (+4d) |  |  |
| PG-T-CON-EX-GN-E-100 | Fiber Optic Pull Box Installation |  | 2026-11-29 → 2026-12-06 (+7d) | 60% → 70% | -17.5d → -18.9d |
| PG-T-CON-EX-GN-E-110 | Telephone and Data Outlet Installation |  | 2026-12-01 → 2026-12-07 (+6d) | 60% → 70% | -17.5d → -18.9d |
| PG-T-CON-EX-GN-E-120 | Telecom Equipment and AV HDMI Installation |  | 2026-12-03 → 2026-12-08 (+5d) | 60% → 70% | -17.5d → -18.9d |
| PG-T-CON-EX-GN-E-130 | CCTV Rack / Cabinet Installation |  | 2026-12-05 → 2026-12-09 (+4d) | 60% → 70% | -17.5d → -18.9d |
| PG-T-CON-EX-GN-E-140 | NVR and CCTV Monitor Installation |  | 2026-12-07 → 2026-12-12 (+5d) | 60% → 70% | -17.5d → -18.9d |
| PG-T-CON-EX-GN-E-150 | IP Camera Installation |  | 2026-12-08 → 2026-12-12 (+4d) | 60% → 70% | -17.5d → -18.9d |
| PG-T-CON-EX-GN-E-90 | ELV Containment & Cabling Works |  | 2026-11-28 → 2026-12-05 (+7d) | 60% → 70% | -20.9d → -20.2d |
| PG-T-CON-EX-GN-E-160 | Fire Alarm Containment & Cabling |  | 2026-12-03 → 2026-12-08 (+5d) | 40% → 60% | -20.9d → -20.2d |
| PG-T-CON-EX-GN-E-170 | Fire Alarm Control Panel (FACP) Installation |  | 2026-12-09 → 2026-12-12 (+3d) | 40% → 60% | -20.9d → -20.2d |
| PG-T-CON-EX-GN-E-180 | Initiating Devices (Detectors & Manual Pull Station) |  |  | 40% → 60% | -20.9d → -20.2d |
| PG-T-CON-EX-GN-E-190 | Notification Appliances (Strobe with Sounder) |  |  | 40% → 60% | -20.9d → -20.2d |
| PG-T-CON-EX-GN-PR-30 | Marking & Signages | 2026-12-12 → 2026-10-26 A (-47d) |  | 0% → 50% | -20.9d → -20.2d |
| LS | **LANDSCAPING WORKS** |  | 2026-11-10 → 2026-11-17 (+7d) |  |  |
| HSP | **HARDSCAPE WORK** |  | 2026-11-10 → 2026-11-17 (+7d) |  |  |
| PG-T-CON-EX-LS-HS-50_R | Install Recycled Precast Concrete Seats(Remaining) |  | 2026-11-07 → 2026-11-14 (+7d) |  | 15.5d → 9.5d |
| PG-T-CON-EX-LS-HS-20_R | Interlock Tiles Grey Scale with Black Marble Chips(Remaining) |  | 2026-11-04 → 2026-11-11 (+7d) |  | 15.5d → 9.5d |
| PG-T-CON-EX-LS-HS-60 | Install Recycled Precast Concrete Trash Bins |  | 2026-11-10 → 2026-11-17 (+7d) |  | 15.5d → 9.5d |
| SSP | **SOFTSCAPE WORK** |  | 2026-11-10 → 2026-11-17 (+7d) |  |  |
| PG-T-CON-EX-LS-SS-20_R | Lawn Area Preparation & Planting / Turfing(Remaining) |  | 2026-11-10 → 2026-11-17 (+7d) |  | 15.5d → 9.5d |
| PG-T-CON-EX-LS-SS-10 | Planting Trees |  | 2026-11-05 → 2026-11-12 (+7d) |  | 15.5d → 9.5d |
| W.T | **TANK WORKS** |  | 2026-11-03 → 2026-11-10 (+7d) |  |  |
| 1 | **SEPTIC TANK** |  | 2026-11-01 → 2026-11-08 (+7d) |  |  |
| PG-T-CON-EX-TW-ST-60 | Finishing Work | 2026-10-24 → 2026-10-31 (+7d) | 2026-11-01 → 2026-11-08 (+7d) |  | 15.5d → 9.5d |
| 2 | **WATER STORAGE TANK** |  | 2026-11-03 → 2026-11-10 (+7d) |  |  |
| PG-T-CON-EX-TW-IR-40 | GRP Water Tank Installation |  | 2026-11-03 → 2026-11-10 (+7d) |  | 15.5d → 9.5d |
| AD | **AIR DOME CONSTRUCTION** |  | 2027-01-30 → 2027-02-06 (+7d) |  |  |
| 1 | **CIVIL WORK** |  | 2026-11-11 → 2026-11-18 (+7d) |  |  |
| PG-T-CON-EX-AD-CL-70 | Installation of Steel Cable Structural System | 2026-10-24 → 2026-10-31 (+7d) | 2026-11-02 → 2026-11-09 (+7d) |  | -49d → -55d |
| PG-T-CON-EX-AD-CL-80 | Installation of Membrane System | 2026-11-03 → 2026-11-10 (+7d) | 2026-11-11 → 2026-11-18 (+7d) |  | -49d → -55d |
| 2 | **ARCHITECTURAL WORK** | 2027-01-02 → 2027-01-09 (+7d) | 2027-01-30 → 2027-02-06 (+7d) |  |  |
| PG-T-CON-EX-AD-AR-10 | Installation of Thermal Insulation System | 2027-01-02 → 2027-01-09 (+7d) | 2027-01-09 → 2027-01-16 (+7d) |  | -49d → -55d |
| PG-T-CON-EX-AD-AR-40 | Final Fixing of Accessories & Finishes | 2027-01-10 → 2027-01-17 (+7d) | 2027-01-17 → 2027-01-24 (+7d) |  | -49d → -55d |
| PG-T-CON-EX-AD-AR-20 | Installation of Doors & Access Systems | 2027-01-18 → 2027-01-25 (+7d) | 2027-01-24 → 2027-01-31 (+7d) |  | -49d → -55d |
| PG-T-CON-EX-AD-AR-30 | Installation of Logo | 2027-01-25 → 2027-02-01 (+7d) | 2027-01-30 → 2027-02-06 (+7d) |  | -49d → -55d |
| 3 | **MECHANICAL WORK** | 2026-11-12 → 2026-11-19 (+7d) | 2026-12-08 → 2026-12-15 (+7d) |  |  |
| PG-T-CON-EX-AD-ME-10 | Installation of Main Air Package Units | 2026-11-12 → 2026-11-19 (+7d) | 2026-11-17 → 2026-11-24 (+7d) |  | -49d → -55d |

| ID | Task | Start | Finish | Complete | Total float |
| --- | --- | --- | --- | --- | --- |
| PG-T-CON-EX-AD-ME-20 | Installation of Backup Air Package Unit | 2026-11-18 → 2026-11-25 (+7d) | 2026-11-23 → 2026-11-30 (+7d) |  | -49d → -55d |
| PG-T-CON-EX-AD-ME-30 | Installation of Complete HVAC System | 2026-12-02 → 2026-12-09 (+7d) | 2026-12-08 → 2026-12-15 (+7d) |  | -48d → -54d |
| 4 | **ELECTRICAL WORK** | 2026-11-24 → 2026-12-01 (+7d) | 2026-12-31 → 2027-01-07 (+7d) |  |  |
| PG-T-CON-EX-AD-EL-10 | Installation of Electrical Boxes & MDBs | 2026-11-24 → 2026-12-01 (+7d) | 2026-12-01 → 2026-12-08 (+7d) |  | -49d → -55d |
| PG-T-CON-EX-AD-EL-20 | Installation of Lighting System | 2026-12-02 → 2026-12-09 (+7d) | 2026-12-09 → 2026-12-16 (+7d) |  | -49d → -55d |
| PG-T-CON-EX-AD-EL-30 | Electrical Connections to Main Power Source (Excluding kWh Meter) | 2026-12-10 → 2026-12-17 (+7d) | 2026-12-15 → 2026-12-22 (+7d) |  | -49d → -55d |
| PG-T-CON-EX-AD-EL-40 | Installation of Backup Generator | 2026-12-16 → 2026-12-23 (+7d) | 2026-12-22 → 2026-12-29 (+7d) |  | -49d → -55d |
| PG-T-CON-EX-AD-EL-50 | Installation of Smart Dome System | 2026-12-23 → 2026-12-30 (+7d) | 2026-12-31 → 2027-01-07 (+7d) |  | -49d → -55d |
| B | **TOILET BUILDING WORKS** |  | 2026-10-28 → 2026-11-04 (+7d) |  |  |
| CVL | **CIVIL WORK** |  | 2026-10-27 → 2026-11-03 (+7d) |  |  |
| AR | **ARCHITECTURAL WORK** |  | 2026-10-27 → 2026-11-03 (+7d) |  |  |
| 2 | **WET AREA FINISHES** |  | 2026-10-26 → 2026-11-02 (+7d) |  |  |
| PG-T-CON-B-AR-WF-60 | Install Doors |  | 2026-10-26 → 2026-11-02 (+7d) |  | 19.9d → 16d |
| 3 | **ROOF FINISHES** |  | 2026-10-27 → 2026-11-03 (+7d) |  |  |
| PG-T-CON-B-AR-RF-30 | Steel ladder and Steel roof scupper Installation |  | 2026-10-27 → 2026-11-03 (+7d) | 60% → 70% | 18.4d → 14.5d |
| MEP | **MEP WORK** |  | 2026-10-28 → 2026-11-04 (+7d) |  |  |
| MEC | **MECANICAL WORKS** |  | 2026-10-28 → 2026-11-04 (+7d) |  |  |
| FF | **FIRE FIGHTING SYSTEM** |  | 2026-10-28 → 2026-11-04 (+7d) |  |  |
| PG-T-CON-B-GF-FF-10 | Fire Extinguisher Installation |  | 2026-10-28 → 2026-11-04 (+7d) |  | 20.8d → 15.8d |
| DS | **SEWER AND DRAINAGE SYSTEM** |  | 2026-10-25 → 2026-11-01 (+7d) |  |  |
| PG-T-CON-B-GF-DR-30 | Sanitaryware Installation (Final Fix) |  | 2026-10-25 → 2026-11-01 (+7d) |  | 19.3d → 15.4d |
| HV | **HVAC SYSTEM** |  | 2026-10-26 → 2026-11-02 (+7d) |  |  |
| PG-T-CON-B-GF-AC-20 | Split AC, Grills & Diffuser Installation |  | 2026-10-26 → 2026-11-02 (+7d) |  | 23.1d → 18.1d |
| WS | **WATER SUPPLY SYSTEM** |  | 2026-10-24 → 2026-10-31 (+7d) |  |  |
| PG-T-CON-B-GF-WS-30 | Water Supply Accesories and Booster pump Installation |  | 2026-10-24 → 2026-10-31 (+7d) |  | 19.3d → 15.4d |
| TE & CO | **PROJECT CLOSOUT** |  | 2027-02-11 → 2027-02-18 (+7d) |  |  |
| PG-T-PCL-10_R | Testing, Commessioning for All Systems(Remaining) | 2026-08-06 A → 2026-10-29 A (+84d) | 2027-01-30 → 2027-02-06 (+7d) | 50% → 60% | -49d → -55d |
| PG-T-PCL-20 | As-Built Drawings | 2026-09-23 A → 2026-10-29 A (+36d) | 2027-02-07 → 2027-02-09 (+2d) | 20% → 60% | -46.6d → -48.1d |
| PG-T-PCL-30 | Snag list Submission | 2027-01-31 → 2027-02-07 (+7d) | 2027-02-01 → 2027-02-08 (+7d) |  | -49d → -55d |
| PG-T-PCL-40 | Snag list Closeout | 2027-02-02 → 2027-02-09 (+7d) | 2027-02-09 → 2027-02-16 (+7d) |  | -49d → -55d |
| PG-T-PCL-50 | Issuing Approvals | 2027-02-10 → 2027-02-17 (+7d) | 2027-02-10 → 2027-02-17 (+7d) |  | -49d → -55d |
| PG-T-PCL-60 | Handing Over | 2027-02-11 → 2027-02-18 (+7d) | 2027-02-11 → 2027-02-18 (+7d) |  | -49d → -55d |

## Version 7 (data date 2026-11-06, saved 2026-11-07, file 02. MLTX-02-003-UPS Level 5 - 2026-11-08.xer)

Note of the change: Renumber project folders 01–23 in order (after removing projects 12 and 25)

Last finish 2027-02-23 → 2027-03-02 (+7d). Complete tasks 1628 → 1645.

Changed:

| ID | Task | Start | Finish | Complete | Total float |
| --- | --- | --- | --- | --- | --- |
| MS | **MILESTONES** |  | 2027-02-23 → 2027-03-02 (+7d) |  |  |
| 1 | **GENERAL MILESTONES** |  | 2027-02-23 → 2027-03-02 (+7d) |  |  |
| PG-GN-MS-30_R | Project Durations(Remaining) |  |  | 73% → 77% | 1.18d → 1.07d |
| PG-GN-MS-20 | Project Completion Date | 2027-02-23 → 2027-03-02 (+7d) | 2027-02-23 → 2027-03-02 (+7d) |  | -58.8d → -64.8d |
| 2 | **CONTRACUAL MILESTONES** |  | 2027-02-23 → 2027-03-02 (+7d) |  |  |
| PG-IN-MS-30 | Completion of Toilet Building | 2026-11-12 → 2026-11-19 (+7d) | 2026-11-12 → 2026-11-19 (+7d) |  | 8.25d → 5.45d |
| PG-IN-MS-50 | Completion of Playground Works | 2026-12-10 → 2026-12-06 (-4d) | 2026-12-10 → 2026-12-06 (-4d) |  | 5.65d → 9.05d |
| PG-IN-MS-40 | Completion of Landscape Works | 2027-01-10 → 2027-01-12 (+2d) | 2027-01-10 → 2027-01-12 (+2d) |  | -20.2d → -23d |
| PG-IN-MS-60 | Substantial Completion - All Works | 2027-02-23 → 2027-03-02 (+7d) | 2027-02-23 → 2027-03-02 (+7d) |  | -58.8d → -64.8d |
| QASSIM | **QASSIM** |  | 2027-02-23 → 2027-03-02 (+7d) |  |  |
| ENG | **ENGINEERING** |  | 2026-11-03 → 2026-11-10 (+7d) |  |  |
| 1 | **SHOP DRAWINGS SUBMITTALS** |  | 2026-11-01 → 2026-11-08 (+7d) |  |  |
| 4 | **MECHANICAL DRAWINGS** |  | 2026-11-01 → 2026-11-08 (+7d) |  |  |
| 4 | **AIR DOME** |  | 2026-11-01 → 2026-11-08 (+7d) |  |  |
| PG-Q-EN-ME-SD-SB-100 | Air Package and HVAC System Drawings |  | 2026-11-01 → 2026-11-08 (+7d) |  | -58.8d → -64.8d |
| 5 | **ELECTRICAL DRAWINGS** |  | 2026-11-01 → 2026-09-06 (-56d) |  |  |
| 4 | **AIR DOME** |  | 2026-11-01 → 2026-09-06 (-56d) |  |  |
| PG-Q-EN-EL-SD-SB-120 | Power & Lighting System Drawings |  | 2026-10-31 → 2026-09-06 A (-55d) | 90% → 100% | -56d → none |
| PG-Q-EN-EL-SD-SB-130 | Generators Details |  | 2026-11-01 → 2026-09-06 A (-56d) | 90% → 100% | -56.5d → none |
| PG-Q-EN-EL-SD-SB-140 | Smart Dome System Drawings |  | 2026-11-01 → 2026-09-06 A (-56d) | 90% → 100% | -56.7d → none |
| 2 | **SHOP DRAWINGS APPROVALS** |  | 2026-11-03 → 2026-11-10 (+7d) |  |  |
| 4 | **MECHANICAL DRAWINGS** |  | 2026-11-03 → 2026-11-10 (+7d) |  |  |
| 4 | **AIR DOME** |  | 2026-11-03 → 2026-11-10 (+7d) |  |  |
| PG-Q-EN-ME-SD-AP-100 | Air Package and HVAC System Drawings |  | 2026-11-03 → 2026-11-10 (+7d) |  | -58.8d → -64.8d |
| PR | **PROCUREMENT** |  | 2026-11-05 → 2026-11-12 (+7d) |  |  |
| 1 | **LONG LEAD ITEMS** |  | 2026-11-05 → 2026-11-12 (+7d) |  |  |
| 4 | **DELIVERY TO SITE** |  | 2026-11-05 → 2026-11-12 (+7d) |  |  |
| 1 | **EXTERNAL / LANDSCAPE WORK** |  | 2026-11-01 → 2026-11-08 (+7d) |  |  |
| PG-Q-PR-LL-LS-DL-20_R | Benches, Seats (Rectangular & Circular)(Remaining) |  | 2026-11-01 → 2026-11-08 (+7d) |  | 29d → 27.7d |
| 2 | **SPORTS & RECREATIONAL FACILITIES WORK** |  | 2026-11-05 → 2026-11-12 (+7d) |  |  |
| PG-Q-PR-LL-SP-DL-10_R | Football Playground Materials (Flooring, goal post, nets, paints, etc)(Remaining) |  | 2026-10-31 → 2026-11-07 (+7d) |  | 29.85d → 25.45d |
| PG-Q-PR-LL-SP-DL-20_R | Basketball Playground Materials (Flooring, basketball poll, nets, paints, etc)(Remaining) |  | 2026-10-31 → 2026-11-07 (+7d) |  | 29.85d → 23.85d |
| PG-Q-PR-LL-SP-DL-30_R | Padel Playgound Materials (Fence, tempered glass, etc)(Remaining) |  | 2026-10-31 → 2026-11-07 (+7d) |  | 5.65d → 15.05d |
| PG-Q-PR-LL-SP-DL-40_R | Tartan Floor(Remaining) |  | 2026-10-31 → 2026-11-07 (+7d) |  | 18.4d → 20.85d |
| PG-Q-PR-LL-SP-DL-50 | Air Dome Materials |  | 2026-11-05 → 2026-11-12 (+7d) |  | -58.8d → -64.8d |
| 5 | **METAL WORK** |  | 2026-11-04 → 2026-11-09 (+5d) |  |  |
| PG-Q-PR-LL-MT-DL-20_R | Curtain Wall(Remaining) |  | 2026-11-04 → 2026-11-09 (+5d) | 70% → 80% | 13.9d → 12.4d |
| 8 | **IRRIGATION WORK** |  | 2026-10-31 → 2026-11-07 (+7d) |  |  |
| PG-Q-PR-LL-IR-DL-20_R | Irrigation Control System(Remaining) |  | 2026-10-31 → 2026-11-07 (+7d) |  | -2.6d → -2.1d |
| 9 | **ELECTRICAL WORK** |  | 2026-11-01 → 2026-11-08 (+7d) |  |  |
| PG-Q-PR-LL-EL-DL-10_R | Main Distribution Board(Remaining) |  | 2026-11-01 → 2026-11-08 (+7d) |  | 6.1d → 6.3d |
| PG-Q-PR-LL-EL-DL-20_R | Power Panels (Pump, Street Light)(Remaining) |  | 2026-10-31 → 2026-11-07 (+7d) |  |  |
| PG-Q-PR-LL-EL-DL-30_R | Site Lighting Poles(Remaining) |  | 2026-11-01 → 2026-11-08 (+7d) |  | 8.2d → 7.7d |
| PG-Q-PR-LL-EL-DL-40_R | Lighting Fixtures(Remaining) |  | 2026-11-01 → 2026-11-08 (+7d) |  | 10d → 8.9d |
| PG-Q-PR-LL-EL-DL-50_R | Grounding System Materials (Earth pit rod, LPS, etc)(Remaining) |  | 2026-11-01 → 2026-11-08 (+7d) |  | 5.5d → 5.7d |
| PG-Q-PR-LL-EL-DL-60_R | Telecommunications & Data System Materials (Telephone outlet, CCTV, etc)(Remaining) |  | 2026-11-01 → 2026-11-08 (+7d) |  | 11.2d → 9.7d |
| PG-Q-PR-LL-EL-DL-70_R | Security and Access Control System Materials(Remaining) |  | 2026-11-01 → 2026-11-08 (+7d) |  | 15.4d → 13d |
| PG-Q-PR-LL-EL-DL-80_R | Fire Alarm System Materials(Remaining) |  | 2026-11-01 → 2026-11-08 (+7d) |  | 13.1d → 10.3d |
| 2 | **SHORT LEAD ITEMS** |  | 2026-11-01 → 2026-11-08 (+7d) |  |  |
| 3 | **DELIVERY TO SITE** |  | 2026-11-01 → 2026-11-08 (+7d) |  |  |
| 1 | **EXTERNAL / LANDSCAPE WORK** |  | 2026-11-01 → 2026-11-08 (+7d) |  |  |
| PG-Q-PR-SL-LS-DL-50_R | Thermoplastic pavement road marking(Remaining) |  | 2026-11-01 → 2026-11-08 (+7d) |  |  |
| PG-Q-PR-SL-LS-DL-60_R | Traffic Signages(Remaining) |  | 2026-11-01 → 2026-11-08 (+7d) |  |  |
| PG-Q-PR-SL-LS-DL-70_R | Trees(Remaining) |  | 2026-11-01 → 2026-11-08 (+7d) |  |  |
| PG-Q-PR-SL-LS-DL-80_R | Lawn(Remaining) |  | 2026-11-01 → 2026-11-08 (+7d) |  |  |
| 5 | **METAL WORK** |  | 2026-11-01 → 2026-11-08 (+7d) |  |  |
| PG-Q-PR-SL-MT-DL-10_R | Galvanized Steel Ladder(Remaining) |  | 2026-11-01 → 2026-11-08 (+7d) |  | 18.3d → 14.8d |
| PG-Q-PR-SL-MT-DL-20_R | Galvanized Steel Roof Scupper(Remaining) |  | 2026-11-01 → 2026-11-08 (+7d) |  | 18.3d → 14.8d |
| PG-Q-PR-SL-MT-DL-30_R | Galvanized Steel Cover with frame(Remaining) |  | 2026-11-01 → 2026-11-08 (+7d) |  | 18.3d → 14.8d |
| 8 | **IRRIGATION WORK** |  | 2026-11-01 → 2026-11-08 (+7d) |  |  |
| PG-Q-PR-SL-IR-DL-10_R | Gate Valve including valve box(Remaining) |  | 2026-11-01 → 2026-11-08 (+7d) |  | -2.2d → -1.7d |
| PG-Q-PR-SL-IR-DL-20_R | Bulbblers and Spreyers(Remaining) |  | 2026-11-01 → 2026-11-08 (+7d) |  | -2.8d → -2.6d |
| 9 | **ELECTRICAL WORK** |  | 2026-11-01 → 2026-11-08 (+7d) |  |  |
| PG-Q-PR-SL-EL-DL-10_R | Wiring Devices Materials(Remaining) |  | 2026-11-01 → 2026-11-08 (+7d) |  | 9.1d → 8.3d |
| 10 | **FIRE FIGHTING WORK** |  | 2026-11-01 → 2026-11-08 (+7d) |  |  |
| PG-Q-PR-SL-FF-DL-10_R | Fire Extinguishers(Remaining) |  | 2026-11-01 → 2026-11-08 (+7d) |  | 3.8d → 4d |
| CO | **CONSTRUCTION STAGE** |  | 2027-02-03 → 2027-02-10 (+7d) |  |  |
| EX.SIT | **PLAYGROUND AND LANDSCAPING WORKS** |  | 2027-01-05 → 2027-01-04 (-1d) |  |  |
| 1 | **PLAYGROUND WORKS** |  | 2026-12-10 → 2026-11-29 (-11d) |  |  |
| FP | **FOOTBALL PLAYGROUND WORKS** |  | 2026-11-15 → 2026-11-19 (+4d) |  |  |

| ID | Task | Start | Finish | Complete | Total float |
| --- | --- | --- | --- | --- | --- |
| PG-Q-CON-EX-FB-90 | Turfing / Seeding Works |  | 2026-11-03 → 2026-11-10 (+7d) |  | 27.4d → 23d |
| PG-Q-CON-EX-FB-120 | Installation of Lighting System |  | 2026-11-01 → 2026-11-08 (+7d) |  | 27.4d → 23d |
| PG-Q-CON-EX-FB-110 | Install Playground Benches |  | 2026-11-10 → 2026-11-17 (+7d) |  | 27.4d → 23d |
| PG-Q-CON-EX-FB-60 | Goal Post Installation & Alignment |  | 2026-11-07 → 2026-11-14 (+7d) |  | 27.4d → 23d |
| PG-Q-CON-EX-FB-100 | Markings and Signages |  | 2026-11-15 → 2026-11-19 (+4d) | 50% → 70% | 27.4d → 23d |
| BP | **BASKETBALL PLAYGROUND WORKS** |  | 2026-11-16 → 2026-11-23 (+7d) |  |  |
| PG-Q-CON-EX-BB-60 | Basketball Pole Installation & Alignment |  | 2026-11-08 → 2026-11-15 (+7d) |  | 26.85d → 20.85d |
| PG-Q-CON-EX-BB-80 | Court Line Marking |  | 2026-11-03 → 2026-11-10 (+7d) |  | 26.85d → 20.85d |
| PG-Q-CON-EX-BB-100 | Install Playground Benches |  | 2026-11-16 → 2026-11-23 (+7d) |  | 26.85d → 20.85d |
| PG-Q-CON-EX-BB-90 | Backboard & Hoop Installation |  | 2026-11-11 → 2026-11-18 (+7d) |  | 26.85d → 20.85d |
| PP | **PADEL PLAYGROUND WORKS** |  | 2026-12-10 → 2026-11-29 (-11d) |  |  |
| PG-Q-CON-EX-PD-30_R | Tartan Flooring Layers(Remaining) |  | 2026-11-16 → 2026-11-18 (+2d) |  | 5.65d → 15.05d |
| PG-Q-CON-EX-PD-40 | Steel Structure & Fence Supports Installation |  | 2026-11-04 → 2026-11-11 (+7d) |  | 5.65d → 15.05d |
| PG-Q-CON-EX-PD-60 | Chain Link Fence & Gates Installation |  | 2026-11-08 → 2026-11-15 (+7d) |  | 5.65d → 15.05d |
| PG-Q-CON-EX-PD-50 | Tempered Glass Installation |  | 2026-11-16 → 2026-11-18 (+2d) | 60% → 80% | 5.65d → 15.05d |
| PG-Q-CON-EX-PD-70 | Court Accessories Installation |  | 2026-11-28 → 2026-11-24 (-4d) | 50% → 70% | 5.65d → 15.05d |
| PG-Q-CON-EX-PD-80 | Install Playground Benches |  | 2026-12-10 → 2026-11-29 (-11d) | 50% → 70% | 5.65d → 15.05d |
| GN.SI | **GENERAL SITE WORKS** |  | 2027-01-05 → 2027-01-04 (-1d) |  |  |
| 5 | **MECHANICAL WORK** |  | 2026-11-26 → 2026-12-03 (+7d) |  |  |
| 2 | **STORM WATER AND UTILITY WORK** |  | 2026-11-24 → 2026-12-01 (+7d) |  |  |
| PG-Q-CON-EX-GN-M-30_R | Manhole Installation(Remaining) |  | 2026-10-31 → 2026-11-07 (+7d) |  | -16.4d → -15.9d |
| PG-Q-CON-EX-GN-M-40 | 150 mm uPVC pipe laying & jointing |  | 2026-11-01 → 2026-11-08 (+7d) |  | -16.4d → -15.9d |
| PG-Q-CON-EX-GN-M-50 | Concrete Encasement | 2026-11-01 → 2026-11-08 (+7d) | 2026-11-09 → 2026-11-16 (+7d) |  | -16.4d → -15.9d |
| PG-Q-CON-EX-GN-M-60 | Backfilling & Compaction | 2026-11-09 → 2026-11-16 (+7d) | 2026-11-16 → 2026-11-23 (+7d) |  | -16.4d → -15.9d |
| PG-Q-CON-EX-GN-M-70 | Surface Reinstatement & Civil Works | 2026-11-17 → 2026-11-24 (+7d) | 2026-11-24 → 2026-12-01 (+7d) |  | -16.4d → -15.9d |
| IR.SY | **IRRIGATION SYSTEM WORKS** |  | 2026-11-17 → 2026-11-24 (+7d) |  |  |
| PG-Q-CON-EX-GN-M-90 | Installation of Irrigation Control System |  | 2026-11-16 → 2026-11-23 (+7d) | 80% → 90% | -16.4d → -15.9d |
| PG-Q-CON-EX-GN-M-100 | Installation of Bubblers and Sprinklers |  | 2026-11-17 → 2026-11-24 (+7d) |  | -16.4d → -15.9d |
| 1 | **FIRE PROTECTION SYSTEM** | 2026-11-24 → 2026-12-01 (+7d) | 2026-11-26 → 2026-12-03 (+7d) |  |  |
| PG-Q-CON-EX-GN-M-110 | Fire Extinguisher Installation | 2026-11-24 → 2026-12-01 (+7d) | 2026-11-26 → 2026-12-03 (+7d) |  | -16.4d → -15.9d |
| 2 | **ELECTRICAL WORK** |  | 2026-12-15 → 2026-12-16 (+1d) |  |  |
| 1 | **POWER, LIGHTING & GROUNDING** |  | 2026-12-03 → 2026-12-08 (+5d) |  |  |
| PG-Q-CON-EX-GN-E-20_R | Foundation Work for Site Lighting Poles(Remaining) |  | 2026-11-25 → 2026-11-03 A (-22d) | 80% → 100% | -15.1d → none |
| PG-Q-CON-EX-GN-E-60 | Site Lighting Poles Installation |  | 2026-11-30 → 2026-12-06 (+6d) | 70% → 80% | -16.4d → -15.9d |
| PG-Q-CON-EX-GN-E-30 | Lightning Protection System (LPS) |  | 2026-11-26 → 2026-12-03 (+7d) |  | -16.4d → -15.9d |
| PG-Q-CON-EX-GN-E-70 | Wiring Works |  | 2026-12-01 → 2026-12-07 (+6d) | 70% → 80% | -16.4d → -15.9d |
| PG-Q-CON-EX-GN-E-80 | Lighting Fixtures with outlets Installation |  | 2026-12-03 → 2026-12-08 (+5d) | 70% → 80% | -16.4d → -15.9d |
| PG-Q-CON-EX-GN-E-40 | KWH Meter and MDB Installation |  | 2026-11-28 → 2026-12-05 (+7d) | 70% → 80% | -16.4d → -15.9d |
| PG-Q-CON-EX-GN-E-50 | Power Panels and Distribution Boards |  | 2026-11-30 → 2026-12-06 (+6d) | 70% → 80% | -16.4d → -15.9d |
| 2 | **ELV SYSTEMS (TELECOM, DATA, AV & CCTV)** |  | 2026-12-12 → 2026-12-14 (+2d) |  |  |
| PG-Q-CON-EX-GN-E-90 | ELV Containment & Cabling Works |  | 2026-12-03 → 2026-12-08 (+5d) | 70% → 80% | -16.4d → -15.9d |
| PG-Q-CON-EX-GN-E-100 | Fiber Optic Pull Box Installation |  | 2026-12-05 → 2026-12-09 (+4d) | 70% → 80% | -16.4d → -15.4d |
| PG-Q-CON-EX-GN-E-110 | Telephone and Data Outlet Installation |  | 2026-12-07 → 2026-12-10 (+3d) | 70% → 80% | -16.4d → -15.4d |
| PG-Q-CON-EX-GN-E-130 | CCTV Rack / Cabinet Installation |  | 2026-12-09 → 2026-12-12 (+3d) | 70% → 80% | -16.4d → -15.4d |
| PG-Q-CON-EX-GN-E-120 | Telecom Equipment and AV HDMI Installation |  | 2026-12-08 → 2026-12-10 (+2d) | 70% → 80% | -16.4d → -15.4d |
| PG-Q-CON-EX-GN-E-140 | NVR and CCTV Monitor Installation |  | 2026-12-10 → 2026-12-13 (+3d) | 70% → 80% | -16.4d → -15.4d |
| PG-Q-CON-EX-GN-E-150 | IP Camera Installation |  | 2026-12-12 → 2026-12-14 (+2d) | 70% → 80% | -16.4d → -15.4d |
| 3 | **FIRE ALARM SYSTEM** |  | 2026-12-15 → 2026-12-16 (+1d) |  |  |
| PG-Q-CON-EX-GN-E-160 | Fire Alarm Containment & Cabling |  | 2026-12-07 → 2026-12-10 (+3d) | 70% → 80% | -15.4d → -15.9d |
| PG-Q-CON-EX-GN-E-170 | Fire Alarm Control Panel (FACP) Installation |  | 2026-12-09 → 2026-12-12 (+3d) | 70% → 80% | -15.4d → -15.9d |
| PG-Q-CON-EX-GN-E-180 | Initiating Devices (Detectors & Manual Pull Station) |  | 2026-12-13 → 2026-12-14 (+1d) | 70% → 80% | -15.4d → -15.9d |
| PG-Q-CON-EX-GN-E-190 | Notification Appliances (Strobe with Sounder) |  | 2026-12-15 → 2026-12-16 (+1d) | 70% → 80% | -15.4d → -15.9d |
| PG-Q-CON-EX-GN-PR-30 | Marking & Signages |  |  | 50% → 70% | -16.4d → -15.9d |
| 4 | **SERVICE CONNECTION** |  | 2027-01-05 → 2027-01-04 (-1d) |  |  |
| PG-Q-CON-EX-GN-SC-20 | HDPE Pipe Laying & Valve Installation |  | 2026-12-17 → 2026-12-16 (-1d) |  | -16.4d → -15.9d |
| PG-Q-CON-EX-GN-SC-30 | Connection to City Network | 2026-12-17 → 2026-12-16 (-1d) | 2026-12-27 → 2026-12-26 (-1d) |  | -16.4d → -15.9d |
| PG-Q-CON-EX-GN-SC-40 | Backfilling | 2026-12-27 → 2026-12-26 (-1d) | 2027-01-05 → 2027-01-04 (-1d) |  | -16.4d → -15.9d |
| LS | **LANDSCAPING WORKS** |  | 2026-12-02 → 2026-11-24 (-8d) |  |  |
| HSP | **HARDSCAPE WORK** |  | 2026-12-02 → 2026-11-24 (-8d) |  |  |
| PG-Q-CON-EX-LS-HS-50_R | Install Recycled Precast Concrete Seats(Remaining) |  | 2026-11-28 → 2026-11-19 (-9d) |  | 12.1d → 19.6d |
| PG-Q-CON-EX-LS-HS-20_R | Interlock Tiles Grey Scale with Black Marble Chips(Remaining) |  | 2026-11-02 → 2026-11-08 (+6d) |  | 12.1d → 13.7d |
| PG-Q-CON-EX-LS-HS-60 | Install Recycled Precast Concrete Trash Bins |  | 2026-12-02 → 2026-11-24 (-8d) |  | 12.1d → 19.6d |
| SSP | **SOFTSCAPE WORK** |  | 2026-11-25 → 2026-11-17 (-8d) |  |  |
| PG-Q-CON-EX-LS-SS-20_R | Lawn Area Preparation & Planting / Turfing(Remaining) |  | 2026-11-05 → 2026-11-11 (+6d) |  | 12.1d → 13.7d |
| PG-Q-CON-EX-LS-SS-10 | Planting Trees |  | 2026-11-25 → 2026-11-17 (-8d) | 50% → 70% | 12.1d → 19.6d |
| W.T | **TANK WORKS** |  | 2026-11-01 → 2026-11-05 (+4d) |  |  |
| 2 | **WATER STORAGE TANK** |  | 2026-11-01 → 2026-11-05 (+4d) |  |  |
| PG-Q-CON-EX-TW-IR-40 | GRP Water Tank Installation |  | 2026-11-01 → 2026-11-05 A (+4d) | 80% → 100% | 12.1d → none |
| AD | **AIR DOME CONSTRUCTION** |  | 2027-02-03 → 2027-02-10 (+7d) |  |  |
| 1 | **CIVIL WORK** |  | 2026-11-24 → 2026-12-01 (+7d) |  |  |

| ID | Task | Start | Finish | Complete | Total float |
| --- | --- | --- | --- | --- | --- |
| PG-Q-CON-EX-AD-CL-70 | Installation of Steel Cable Structural System | 2026-11-03 → 2026-11-10 (+7d) | 2026-11-15 → 2026-11-22 (+7d) |  | -58.8d → -64.8d |
| PG-Q-CON-EX-AD-CL-80 | Installation of Membrane System | 2026-11-15 → 2026-11-22 (+7d) | 2026-11-24 → 2026-12-01 (+7d) |  | -58.8d → -64.8d |
| 2 | **ARCHITECTURAL WORK** |  | 2027-02-03 → 2027-02-10 (+7d) |  |  |
| PG-Q-CON-EX-AD-AR-10 | Installation of Thermal Insulation System |  | 2027-01-12 → 2027-01-19 (+7d) |  | -58.8d → -64.8d |
| PG-Q-CON-EX-AD-AR-40 | Final Fixing of Accessories & Finishes | 2027-01-12 → 2027-01-19 (+7d) | 2027-01-21 → 2027-01-28 (+7d) |  | -58.8d → -64.8d |
| PG-Q-CON-EX-AD-AR-20 | Installation of Doors & Access Systems | 2027-01-21 → 2027-01-28 (+7d) | 2027-01-28 → 2027-02-04 (+7d) |  | -58.8d → -64.8d |
| PG-Q-CON-EX-AD-AR-30 | Installation of Logo | 2027-01-28 → 2027-02-04 (+7d) | 2027-02-03 → 2027-02-10 (+7d) |  | -58.8d → -64.8d |
| 3 | **MECHANICAL WORK** | 2026-11-24 → 2026-12-01 (+7d) | 2026-12-13 → 2026-12-20 (+7d) |  |  |
| PG-Q-CON-EX-AD-ME-10 | Installation of Main Air Package Units | 2026-11-24 → 2026-12-01 (+7d) | 2026-11-30 → 2026-12-07 (+7d) |  | -58.8d → -64.8d |
| PG-Q-CON-EX-AD-ME-20 | Installation of Backup Air Package Unit | 2026-11-30 → 2026-12-07 (+7d) | 2026-12-06 → 2026-12-13 (+7d) |  | -58.8d → -64.8d |
| PG-Q-CON-EX-AD-ME-30 | Installation of Complete HVAC System | 2026-12-06 → 2026-12-13 (+7d) | 2026-12-13 → 2026-12-20 (+7d) |  | -58.8d → -64.8d |
| 4 | **ELECTRICAL WORK** |  | 2027-01-07 → 2027-01-14 (+7d) |  |  |
| PG-Q-CON-EX-AD-EL-10 | Installation of Electrical Boxes & MDBs |  | 2026-11-05 → 2026-11-11 (+6d) |  | -38.8d → -43.8d |
| PG-Q-CON-EX-AD-EL-20 | Installation of Lighting System | 2026-11-05 → 2026-11-11 (+6d) | 2026-11-19 → 2026-11-25 (+6d) |  | -38.8d → -43.8d |
| PG-Q-CON-EX-AD-EL-30 | Electrical Connections to Main Power Source (Excluding kWh Meter) | 2026-12-13 → 2026-12-20 (+7d) | 2026-12-19 → 2026-12-26 (+7d) |  | -58.8d → -64.8d |
| PG-Q-CON-EX-AD-EL-40 | Installation of Backup Generator | 2026-12-19 → 2026-12-26 (+7d) | 2026-12-26 → 2027-01-02 (+7d) |  | -58.8d → -64.8d |
| PG-Q-CON-EX-AD-EL-50 | Installation of Smart Dome System | 2026-12-26 → 2027-01-02 (+7d) | 2027-01-07 → 2027-01-14 (+7d) |  | -58.8d → -64.8d |
| B | **TOILET BUILDING WORKS** |  | 2026-11-07 → 2026-11-11 (+4d) |  |  |
| CVL | **CIVIL WORK** |  | 2026-11-05 → 2026-11-11 (+6d) |  |  |
| AR | **ARCHITECTURAL WORK** |  | 2026-11-05 → 2026-11-11 (+6d) |  |  |
| 1 | **GENERAL FINISHES** |  | 2026-11-05 → 2026-11-11 (+6d) |  |  |
| PG-Q-CON-B-AR-GF-60 | Install Doors & Windows |  | 2026-11-03 → 2026-11-10 (+7d) | 70% → 80% | 14.8d → 12.3d |
| PG-Q-CON-B-AR-GF-70 | Lockers and Furniture Installation |  | 2026-11-05 → 2026-11-11 (+6d) | 70% → 80% | 13.9d → 12.3d |
| 2 | **WET AREA FINISHES** |  | 2026-11-03 → 2026-11-04 (+1d) |  |  |
| PG-Q-CON-B-AR-WF-60 | Install Doors |  | 2026-11-03 → 2026-11-04 A (+1d) | 70% → 100% | 16.6d → none |
| 3 | **ROOF FINISHES** |  | 2026-11-05 → 2026-11-11 (+6d) |  |  |
| PG-Q-CON-B-AR-RF-20 | Epoxy Flooring and Finishes |  | 2026-11-02 → 2026-11-03 A (+1d) | 90% → 100% | 16.8d → none |
| PG-Q-CON-B-AR-RF-30 | Steel ladder and Steel roof scupper Installation |  | 2026-11-05 → 2026-11-11 (+6d) |  | 13.9d → 12.3d |
| MEP | **MEP WORK** |  | 2026-11-07 → 2026-11-11 (+4d) |  |  |
| MEC | **MECANICAL WORKS** |  | 2026-11-07 → 2026-11-11 (+4d) |  |  |
| FF | **FIRE FIGHTING SYSTEM** |  | 2026-11-07 → 2026-11-11 (+4d) |  |  |
| PG-Q-CON-B-GF-FF-10 | Fire Extinguisher Installation |  | 2026-11-07 → 2026-11-11 (+4d) |  | 13.9d → 12.3d |
| DS | **SEWER AND DRAINAGE SYSTEM** |  | 2026-11-02 → 2026-11-09 (+7d) |  |  |
| PG-Q-CON-B-GF-DR-30 | Sanitaryware Installation (Final Fix) |  | 2026-11-02 → 2026-11-09 (+7d) |  | 14.8d → 12.3d |
| HV | **HVAC SYSTEM** |  | 2026-10-31 → 2026-11-07 (+7d) |  |  |
| PG-Q-CON-B-GF-AC-20 | Split AC, Grills & Diffuser Installation |  | 2026-10-31 → 2026-11-07 (+7d) |  | 15.4d → 12.9d |
| TE & CO | **PROJECT CLOSOUT** |  | 2027-02-23 → 2027-03-02 (+7d) |  |  |
| PG-Q-PCL-10_R | Testing, Commessioning for All Systems(Remaining) |  | 2027-02-03 → 2027-02-10 (+7d) | 60% → 65% | -58.8d → -64.8d |
| PG-Q-PCL-20 | As-Built Drawings |  | 2027-02-06 → 2027-02-13 (+7d) | 60% → 65% | -47.9d → -53.27d |
| PG-Q-PCL-30 | Snag list Submission | 2027-02-03 → 2027-02-10 (+7d) | 2027-02-07 → 2027-02-14 (+7d) |  | -58.8d → -64.8d |
| PG-Q-PCL-40 | Snag list Closeout | 2027-02-07 → 2027-02-14 (+7d) | 2027-02-18 → 2027-02-25 (+7d) |  | -58.8d → -64.8d |
| PG-Q-PCL-50 | Issuing Approvals | 2027-02-18 → 2027-02-25 (+7d) | 2027-02-22 → 2027-03-01 (+7d) |  | -58.8d → -64.8d |
| PG-Q-PCL-60 | Handing Over | 2027-02-22 → 2027-03-01 (+7d) | 2027-02-23 → 2027-03-02 (+7d) |  | -58.8d → -64.8d |
| HAIL | **HAIL** |  | 2027-01-13 → 2026-12-28 (-16d) |  |  |
| PR | **PROCUREMENT** |  | 2026-11-02 → 2026-11-09 (+7d) |  |  |
| 1 | **LONG LEAD ITEMS** |  | 2026-11-02 → 2026-11-09 (+7d) |  |  |
| 4 | **DELIVERY TO SITE** |  | 2026-11-02 → 2026-11-09 (+7d) |  |  |
| 5 | **METAL WORK** |  | 2026-11-02 → 2026-11-09 (+7d) |  |  |
| PG-H-PR-LL-MT-DL-20_R | Curtain Wall(Remaining) |  | 2026-11-02 → 2026-11-09 (+7d) |  | 6.8d → 1.5d |
| 9 | **ELECTRICAL WORK** |  | 2026-11-01 → 2026-11-08 (+7d) |  |  |
| PG-H-PR-LL-EL-DL-30_R | Site Lighting Poles(Remaining) |  | 2026-11-01 → 2026-11-08 (+7d) |  | 11.9d → 7.9d |
| PG-H-PR-LL-EL-DL-40_R | Lighting Fixtures(Remaining) |  | 2026-11-01 → 2026-11-08 (+7d) |  | 3.35d → -1.95d |
| PG-H-PR-LL-EL-DL-10_R | Main Distribution Board(Remaining) |  | 2026-10-31 → 2026-11-07 (+7d) |  | 10.2d → 6.2d |
| PG-H-PR-LL-EL-DL-20_R | Power Panels (Pump, Street Light)(Remaining) |  | 2026-10-31 → 2026-11-07 (+7d) |  | 10.8d → 6.8d |
| PG-H-PR-LL-EL-DL-50_R | Grounding System Materials (Earth pit rod, LPS, etc)(Remaining) |  | 2026-10-31 → 2026-11-07 (+7d) |  | 9.3d → 5.3d |
| PG-H-PR-LL-EL-DL-60_R | Telecommunications & Data System Materials (Telephone outlet, CCTV, etc)(Remaining) |  | 2026-11-01 → 2026-11-08 (+7d) |  | 14.9d → 10.9d |
| PG-H-PR-LL-EL-DL-70_R | Security and Access Control System Materials(Remaining) |  | 2026-11-01 → 2026-11-08 (+7d) |  | 19.1d → 15.6d |
| PG-H-PR-LL-EL-DL-80_R | Fire Alarm System Materials(Remaining) |  | 2026-11-01 → 2026-11-08 (+7d) |  | 17.8d → 11.8d |
| 2 | **SHORT LEAD ITEMS** |  | 2026-11-01 → 2026-11-08 (+7d) |  |  |
| 3 | **DELIVERY TO SITE** |  | 2026-11-01 → 2026-11-08 (+7d) |  |  |
| 1 | **EXTERNAL / LANDSCAPE WORK** |  | 2026-11-01 → 2026-11-08 (+7d) |  |  |
| PG-H-PR-SL-LS-DL-60_R | Traffic Signages(Remaining) |  | 2026-11-01 → 2026-11-08 (+7d) |  |  |
| PG-H-PR-SL-LS-DL-70_R | Trees(Remaining) |  | 2026-11-01 → 2026-11-08 (+7d) |  |  |
| PG-H-PR-SL-LS-DL-80_R | Lawn(Remaining) |  | 2026-11-01 → 2026-11-08 (+7d) |  | 10.5d → 4.5d |
| CO | **CONSTRUCTION STAGE** |  | 2026-12-22 → 2026-12-27 (+5d) |  |  |
| EX.SIT | **PLAYGROUND AND LANDSCAPING WORKS** |  | 2026-12-22 → 2026-12-27 (+5d) |  |  |
| 1 | **PLAYGROUND WORKS** |  | 2026-11-23 → 2026-11-26 (+3d) |  |  |
| FP | **FOOTBALL PLAYGROUND WORKS** |  | 2026-11-23 → 2026-11-26 (+3d) |  |  |
| PG-H-CON-EX-FB-40_R | Tartan flooring(Remaining) |  | 2026-11-04 → 2026-11-11 (+7d) |  | 20.4d → 17.4d |
| PG-H-CON-EX-FB-90 | Turfing / Seeding Works |  | 2026-11-04 → 2026-11-11 (+7d) |  | 20.4d → 17.4d |

| ID | Task | Start | Finish | Complete | Total float |
| --- | --- | --- | --- | --- | --- |
| PG-H-CON-EX-FB-60 | Goal Post Installation & Alignment |  | 2026-11-08 → 2026-11-15 (+7d) |  | 20.4d → 17.4d |
| PG-H-CON-EX-FB-110 | Install Playground Benches |  | 2026-11-11 → 2026-11-18 (+7d) |  | 20.4d → 17.4d |
| PG-H-CON-EX-FB-120 | Installation of Lighting System |  | 2026-11-02 → 2026-11-09 (+7d) |  | 20.4d → 17.4d |
| PG-H-CON-EX-FB-100 | Markings and Signages | 2026-11-11 → 2026-11-02 A (-9d) | 2026-11-23 → 2026-11-26 (+3d) | 0% → 30% | 20.4d → 17.4d |
| GN.SI | **GENERAL SITE WORKS** |  | 2026-12-22 → 2026-12-27 (+5d) |  |  |
| 5 | **MECHANICAL WORK** |  | 2026-11-16 → 2026-11-23 (+7d) |  |  |
| 2 | **STORM WATER AND UTILITY WORK** |  | 2026-11-15 → 2026-11-22 (+7d) |  |  |
| PG-H-CON-EX-GN-M-20_R | Bedding preparation & level control(Remaining) |  | 2026-10-31 → 2026-11-07 (+7d) |  | -4.2d → -8.2d |
| PG-H-CON-EX-GN-M-30 | Manhole Installation |  | 2026-11-01 → 2026-11-08 (+7d) |  | -4.2d → -8.2d |
| PG-H-CON-EX-GN-M-40 | 150 mm uPVC pipe laying & jointing |  | 2026-11-02 → 2026-11-09 (+7d) |  | -4.2d → -8.2d |
| PG-H-CON-EX-GN-M-50 | Concrete Encasement | 2026-11-02 → 2026-11-09 (+7d) | 2026-11-05 → 2026-11-12 (+7d) |  | -4.2d → -8.2d |
| PG-H-CON-EX-GN-M-60 | Backfilling & Compaction | 2026-11-05 → 2026-11-12 (+7d) | 2026-11-09 → 2026-11-16 (+7d) |  | -4.2d → -8.2d |
| PG-H-CON-EX-GN-M-70 | Surface Reinstatement & Civil Works | 2026-11-10 → 2026-11-17 (+7d) | 2026-11-15 → 2026-11-22 (+7d) |  | -4.2d → -8.2d |
| IR.SY | **IRRIGATION SYSTEM WORKS** |  | 2026-11-10 → 2026-11-17 (+7d) |  |  |
| PG-H-CON-EX-GN-M-80_R | Installation of HDPE Irrigation Pipe Network with Gate Valve and Box(Remaining) |  | 2026-11-09 → 2026-11-16 (+7d) |  | -4.2d → -8.2d |
| PG-H-CON-EX-GN-M-90 | Installation of Irrigation Control System |  | 2026-11-09 → 2026-11-16 (+7d) |  | -4.2d → -8.2d |
| PG-H-CON-EX-GN-M-100 | Installation of Bubblers and Sprinklers |  | 2026-11-10 → 2026-11-17 (+7d) |  | -4.2d → -8.2d |
| 1 | **FIRE PROTECTION SYSTEM** |  | 2026-11-16 → 2026-11-23 (+7d) |  |  |
| PG-H-CON-EX-GN-M-110 | Fire Extinguisher Installation |  | 2026-11-16 → 2026-11-23 (+7d) |  | -4.2d → -8.2d |
| 2 | **ELECTRICAL WORK** |  | 2026-12-05 → 2026-12-12 (+7d) |  |  |
| 1 | **POWER, LIGHTING & GROUNDING** |  | 2026-11-23 → 2026-11-30 (+7d) |  |  |
| PG-H-CON-EX-GN-E-20_R | Foundation Work for Site Lighting Poles(Remaining) |  | 2026-11-16 → 2026-11-04 A (-12d) | 80% → 100% | -4.1d → none |
| PG-H-CON-EX-GN-E-30 | Lightning Protection System (LPS) |  | 2026-11-17 → 2026-11-24 (+7d) |  | -4.2d → -8.2d |
| PG-H-CON-EX-GN-E-70 | Wiring Works |  | 2026-11-22 → 2026-11-29 (+7d) |  | -4.2d → -8.2d |
| PG-H-CON-EX-GN-E-40 | KWH Meter and MDB Installation |  | 2026-11-17 → 2026-11-24 (+7d) |  | -4.2d → -8.2d |
| PG-H-CON-EX-GN-E-50 | Power Panels and Distribution Boards |  | 2026-11-19 → 2026-11-26 (+7d) |  | -4.2d → -8.2d |
| PG-H-CON-EX-GN-E-60 | Site Lighting Poles Installation |  | 2026-11-21 → 2026-11-28 (+7d) |  | -4.2d → -8.2d |
| PG-H-CON-EX-GN-E-80 | Lighting Fixtures with outlets Installation |  | 2026-11-23 → 2026-11-30 (+7d) |  | -4.2d → -8.2d |
| 2 | **ELV SYSTEMS (TELECOM, DATA, AV & CCTV)** |  | 2026-12-01 → 2026-12-08 (+7d) |  |  |
| PG-H-CON-EX-GN-E-130 | CCTV Rack / Cabinet Installation |  | 2026-11-29 → 2026-12-06 (+7d) |  | -4.2d → -7.7d |
| PG-H-CON-EX-GN-E-140 | NVR and CCTV Monitor Installation |  | 2026-11-30 → 2026-12-07 (+7d) |  | -4.2d → -7.7d |
| PG-H-CON-EX-GN-E-150 | IP Camera Installation |  | 2026-12-01 → 2026-12-08 (+7d) |  | -4.2d → -7.7d |
| PG-H-CON-EX-GN-E-90 | ELV Containment & Cabling Works |  | 2026-11-24 → 2026-12-01 (+7d) |  | -4.2d → -8.2d |
| PG-H-CON-EX-GN-E-100 | Fiber Optic Pull Box Installation |  | 2026-11-25 → 2026-12-02 (+7d) |  | -4.2d → -7.7d |
| PG-H-CON-EX-GN-E-110 | Telephone and Data Outlet Installation |  | 2026-11-26 → 2026-12-03 (+7d) |  | -4.2d → -7.7d |
| PG-H-CON-EX-GN-E-120 | Telecom Equipment and AV HDMI Installation |  | 2026-11-28 → 2026-12-05 (+7d) |  | -4.2d → -7.7d |
| 3 | **FIRE ALARM SYSTEM** |  | 2026-12-05 → 2026-12-12 (+7d) |  |  |
| PG-H-CON-EX-GN-E-160 | Fire Alarm Containment & Cabling |  | 2026-11-26 → 2026-12-03 (+7d) |  | -2.2d → -8.2d |
| PG-H-CON-EX-GN-E-170 | Fire Alarm Control Panel (FACP) Installation |  | 2026-11-29 → 2026-12-06 (+7d) |  | -2.2d → -8.2d |
| PG-H-CON-EX-GN-E-180 | Initiating Devices (Detectors & Manual Pull Station) |  | 2026-12-02 → 2026-12-09 (+7d) |  | -2.2d → -8.2d |
| PG-H-CON-EX-GN-E-190 | Notification Appliances (Strobe with Sounder) |  | 2026-12-05 → 2026-12-12 (+7d) |  | -2.2d → -8.2d |
| 3 | **PARKING WORK** |  | 2026-12-07 → 2026-12-12 (+5d) |  |  |
| PG-H-CON-EX-GN-PR-10 | Installlation of Parking Accessories |  | 2026-12-02 → 2026-12-09 (+7d) |  | -4.2d → -7.7d |
| PG-H-CON-EX-GN-PR-30 | Marking & Signages |  | 2026-12-07 → 2026-12-12 (+5d) | 50% → 70% | -4.2d → -8.2d |
| 4 | **SERVICE CONNECTION** |  | 2026-12-22 → 2026-12-27 (+5d) |  |  |
| PG-H-CON-EX-GN-SC-20 | HDPE Pipe Laying & Valve Installation |  | 2026-12-08 → 2026-12-13 (+5d) |  | -4.2d → -8.2d |
| PG-H-CON-EX-GN-SC-40 | Backfilling |  | 2026-12-22 → 2026-12-27 (+5d) |  | -4.2d → -8.2d |
| PG-H-CON-EX-GN-SC-30 | Connection to City Network | 2026-12-09 → 2026-12-14 (+5d) | 2026-12-17 → 2026-12-22 (+5d) |  | -4.2d → -8.2d |
| LS | **LANDSCAPING WORKS** |  | 2026-12-12 → 2026-11-25 (-17d) |  |  |
| HSP | **HARDSCAPE WORK** |  | 2026-12-12 → 2026-11-25 (-17d) |  |  |
| PG-H-CON-EX-LS-HS-40_R | Bike Path and Walking Path Construction(Remaining) |  | 2026-11-28 → 2026-11-12 (-16d) |  | -23.6d → -9.8d |
| PG-H-CON-EX-LS-HS-50_R | Install Recycled Precast Concrete Seats(Remaining) |  | 2026-11-30 → 2026-11-14 (-16d) |  | -23.6d → -9.8d |
| PG-H-CON-EX-LS-HS-60 | Install Recycled Precast Concrete Trash Bins | 2026-11-30 → 2026-11-14 (-16d) | 2026-12-12 → 2026-11-25 (-17d) |  | -23.6d → -9.8d |
| SSP | **SOFTSCAPE WORK** |  | 2026-12-12 → 2026-11-25 (-17d) |  |  |
| PG-H-CON-EX-LS-SS-20_R | Lawn Area Preparation & Planting / Turfing(Remaining) |  | 2026-12-12 → 2026-11-25 (-17d) |  | -23.6d → -9.8d |
| PG-H-CON-EX-LS-SS-10 | Planting Trees |  | 2026-11-28 → 2026-11-12 (-16d) | 50% → 60% | -23.6d → -9.8d |
| W.T | **TANK WORKS** |  | 2026-11-16 → 2026-11-04 (-12d) |  |  |
| 1 | **SEPTIC TANK** |  | 2026-11-14 → 2026-11-04 (-10d) |  |  |
| PG-H-CON-EX-TW-ST-60 | Finishing Work | 2026-10-31 → 2026-10-22 A (-9d) | 2026-11-07 → 2026-10-28 A (-10d) | 0% → 100% | -23.6d → none |
| PG-H-CON-EX-TW-ST-70 | Backfilling | 2026-11-08 → 2026-10-29 A (-10d) | 2026-11-14 → 2026-11-04 A (-10d) | 0% → 100% | -23.6d → none |
| 2 | **WATER STORAGE TANK** |  | 2026-11-16 → 2026-11-04 (-12d) |  |  |
| PG-H-CON-EX-TW-IR-40 | GRP Water Tank Installation |  | 2026-11-16 → 2026-11-04 A (-12d) | 60% → 100% | -23.6d → none |
| B | **TOILET BUILDING WORKS** |  | 2026-11-12 → 2026-11-19 (+7d) |  |  |
| CVL | **CIVIL WORK** |  | 2026-11-11 → 2026-11-18 (+7d) |  |  |
| AR | **ARCHITECTURAL WORK** |  | 2026-11-11 → 2026-11-18 (+7d) |  |  |
| 1 | **GENERAL FINISHES** |  | 2026-11-11 → 2026-11-18 (+7d) |  |  |
| PG-H-CON-B-AR-GF-40 | Wall Paint |  | 2026-11-05 → 2026-11-12 (+7d) |  | 1.05d → -4.25d |
| PG-H-CON-B-AR-GF-50 | Epoxy Flooring |  | 2026-11-08 → 2026-11-15 (+7d) |  | 1.05d → -4.25d |
| PG-H-CON-B-AR-GF-60 | Install Doors & Windows |  | 2026-11-09 → 2026-11-16 (+7d) |  | 1.05d → -4.25d |
| PG-H-CON-B-AR-GF-80 | Lockers and Furniture Installation |  | 2026-11-11 → 2026-11-18 (+7d) | 60% → 70% | 1.05d → -4.25d |

| ID | Task | Start | Finish | Complete | Total float |
| --- | --- | --- | --- | --- | --- |
| 2 | **WET AREA FINISHES** |  | 2026-11-07 → 2026-11-03 (-4d) |  |  |
| PG-H-CON-B-AR-WF-60 | Install Doors |  | 2026-11-07 → 2026-11-03 A (-4d) | 80% → 100% | 13.65d → none |
| 3 | **ROOF FINISHES** |  | 2026-11-11 → 2026-11-18 (+7d) |  |  |
| PG-H-CON-B-AR-RF-20 | Epoxy Flooring and Finishes |  | 2026-11-07 → 2026-11-03 A (-4d) | 80% → 100% | 4.25d → none |
| PG-H-CON-B-AR-RF-30 | Steel ladder and Steel roof scupper Installation |  | 2026-11-11 → 2026-11-18 (+7d) |  | 1.05d → -4.25d |
| MEP | **MEP WORK** |  | 2026-11-12 → 2026-11-19 (+7d) |  |  |
| MEC | **MECANICAL WORKS** |  | 2026-11-12 → 2026-11-19 (+7d) |  |  |
| FF | **FIRE FIGHTING SYSTEM** | 2026-11-11 → 2026-11-18 (+7d) | 2026-11-12 → 2026-11-19 (+7d) |  |  |
| PG-H-CON-B-GF-FF-10 | Fire Extinguisher Installation | 2026-11-11 → 2026-11-18 (+7d) | 2026-11-12 → 2026-11-19 (+7d) |  | 1.05d → -4.25d |
| DS | **SEWER AND DRAINAGE SYSTEM** |  | 2026-11-03 → 2026-11-10 (+7d) |  |  |
| PG-H-CON-B-GF-DR-10 | Sewer and Drainge System Main Lines Installation |  | 2026-10-31 → 2026-11-07 (+7d) |  | 1.05d → -4.25d |
| PG-H-CON-B-GF-DR-30 | Sanitaryware Installation (Final Fix) | 2026-11-01 → 2026-11-08 (+7d) | 2026-11-03 → 2026-11-10 (+7d) |  | 1.05d → -4.25d |
| HV | **HVAC SYSTEM** |  | 2026-10-31 → 2026-11-07 (+7d) |  |  |
| PG-H-CON-B-GF-AC-20 | Split AC, Grills & Diffuser Installation |  | 2026-10-31 → 2026-11-07 (+7d) |  | 1.05d → -4.25d |
| WS | **WATER SUPPLY SYSTEM** |  | 2026-11-01 → 2026-11-08 (+7d) |  |  |
| PG-H-CON-B-GF-WS-30 | Water Supply Accesories and Booster pump Installation |  | 2026-11-01 → 2026-11-08 (+7d) |  | 1.05d → -4.25d |
| ELC | **ELECTRICAL WORKS** |  | 2026-11-05 → 2026-11-12 (+7d) |  |  |
| PG-H-CON-B-GF-EL-20 | Electrical Light Fixtures Installation |  | 2026-11-03 → 2026-11-10 (+7d) |  | 1.05d → -4.25d |
| PG-H-CON-B-GF-EL-30 | Fire Alarm Devices Installation |  | 2026-11-04 → 2026-11-11 (+7d) |  | 1.05d → -4.25d |
| PG-H-CON-B-GF-EL-40 | Telecom & CCTV Devices Installation |  | 2026-11-04 → 2026-11-11 (+7d) |  | 1.05d → -4.25d |
| PG-H-CON-B-GF-EL-50 | Electrical & ELV Wiring Works |  | 2026-11-05 → 2026-11-12 (+7d) |  | 1.05d → -4.25d |
| TE & CO | **PROJECT CLOSOUT** |  | 2027-01-13 → 2026-12-28 (-16d) |  |  |
| PG-H-PCL-20 | As-Built Drawings |  | 2027-01-02 → 2026-12-03 (-30d) | 60% → 65% | -19.6d → 5.9d |
| PG-H-PCL-10_R | Testing, Commessioning for All Systems(Remaining) |  | 2026-12-12 → 2026-11-25 (-17d) | 60% → 65% | -23.6d → -9.8d |
| PG-H-PCL-30 | Snag list Submission | 2026-12-12 → 2026-11-25 (-17d) | 2026-12-21 → 2026-12-05 (-16d) |  | -23.6d → -9.8d |
| PG-H-PCL-40 | Snag list Closeout | 2026-12-21 → 2026-12-05 (-16d) | 2027-01-06 → 2026-12-21 (-16d) |  | -23.6d → -9.8d |
| PG-H-PCL-50 | Issuing Approvals | 2027-01-06 → 2026-12-21 (-16d) | 2027-01-10 → 2026-12-24 (-17d) |  | -23.6d → -9.8d |
| PG-H-PCL-60 | Handing Over | 2027-01-10 → 2026-12-24 (-17d) | 2027-01-13 → 2026-12-28 (-16d) |  | -23.6d → -9.8d |
| TABUK | **TABUK** |  | 2027-02-18 → 2027-02-25 (+7d) |  |  |
| PR | **PROCUREMENT** |  | 2026-11-03 → 2026-11-10 (+7d) |  |  |
| 1 | **LONG LEAD ITEMS** |  | 2026-11-03 → 2026-11-10 (+7d) |  |  |
| 4 | **DELIVERY TO SITE** |  | 2026-11-03 → 2026-11-10 (+7d) |  |  |
| 1 | **EXTERNAL / LANDSCAPE WORK** |  | 2026-11-01 → 2026-11-08 (+7d) |  |  |
| PG-T-PR-LL-LS-DL-20_R | Benches, Seats (Rectangular & Circular)(Remaining) |  | 2026-11-01 → 2026-11-08 (+7d) |  | 21.2d → 16.82d |
| 2 | **SPORTS & RECREATIONAL FACILITIES WORK** |  | 2026-11-01 → 2026-11-08 (+7d) |  |  |
| PG-T-PR-LL-SP-DL-40_R | Tartan Floor(Remaining) |  | 2026-11-01 → 2026-11-08 (+7d) |  | 22.9d → 16.9d |
| PG-T-PR-LL-SP-DL-10_R | Football Playground Materials (Flooring, goal post, nets, paints, etc)(Remaining) |  | 2026-11-01 → 2026-11-08 (+7d) |  | 28.6d → 24.6d |
| PG-T-PR-LL-SP-DL-20_R | Basketball Playground Materials (Flooring, basketball poll, nets, paints, etc)(Remaining) |  | 2026-11-01 → 2026-11-08 (+7d) |  | 24.5d → 18.5d |
| PG-T-PR-LL-SP-DL-30_R | Padel Playgound Materials (Fence, tempered glass, etc)(Remaining) |  | 2026-11-01 → 2026-11-08 (+7d) |  | 10.05d → 9.05d |
| PG-T-PR-LL-SP-DL-50 | Air Dome Materials |  | 2026-11-01 → 2026-11-08 (+7d) |  | -55d → -61d |
| 5 | **METAL WORK** |  | 2026-11-03 → 2026-11-10 (+7d) |  |  |
| PG-T-PR-LL-MT-DL-20_R | Curtain Wall(Remaining) |  | 2026-11-03 → 2026-11-10 (+7d) |  | 14.5d → 11.3d |
| 8 | **IRRIGATION WORK** |  | 2026-10-31 → 2026-11-07 (+7d) |  |  |
| PG-T-PR-LL-IR-DL-20_R | Irrigation Control System(Remaining) |  | 2026-10-31 → 2026-11-07 (+7d) |  | -12.4d → -15.2d |
| 9 | **ELECTRICAL WORK** |  | 2026-11-01 → 2026-11-08 (+7d) |  |  |
| PG-T-PR-LL-EL-DL-10_R | Main Distribution Board(Remaining) |  | 2026-11-01 → 2026-11-08 (+7d) |  | -2.3d → -5.1d |
| PG-T-PR-LL-EL-DL-20_R | Power Panels (Pump, Street Light)(Remaining) |  | 2026-11-01 → 2026-11-08 (+7d) |  | -1.3d → -4.1d |
| PG-T-PR-LL-EL-DL-30_R | Site Lighting Poles(Remaining) |  | 2026-11-01 → 2026-11-08 (+7d) |  | 0.1d → -2.7d |
| PG-T-PR-LL-EL-DL-40_R | Lighting Fixtures(Remaining) |  | 2026-11-01 → 2026-11-08 (+7d) |  | 2.1d → -0.7d |
| PG-T-PR-LL-EL-DL-50_R | Grounding System Materials (Earth pit rod, LPS, etc)(Remaining) |  | 2026-10-31 → 2026-11-07 (+7d) |  | -2.3d → -5.1d |
| PG-T-PR-LL-EL-DL-60_R | Telecommunications & Data System Materials (Telephone outlet, CCTV, etc)(Remaining) |  | 2026-11-01 → 2026-11-08 (+7d) |  | 7.5d → 4.7d |
| PG-T-PR-LL-EL-DL-70_R | Security and Access Control System Materials(Remaining) |  | 2026-11-01 → 2026-11-08 (+7d) |  | 13d → 9.8d |
| PG-T-PR-LL-EL-DL-80_R | Fire Alarm System Materials(Remaining) |  | 2026-11-01 → 2026-11-08 (+7d) |  | 8.4d → 5.6d |
| 2 | **SHORT LEAD ITEMS** |  | 2026-11-01 → 2026-11-08 (+7d) |  |  |
| 3 | **DELIVERY TO SITE** |  | 2026-11-01 → 2026-11-08 (+7d) |  |  |
| 1 | **EXTERNAL / LANDSCAPE WORK** |  | 2026-10-31 → 2026-11-07 (+7d) |  |  |
| PG-T-PR-SL-LS-DL-60_R | Traffic Signages(Remaining) |  | 2026-10-31 → 2026-11-07 (+7d) |  | 17.1d → 13.9d |
| PG-T-PR-SL-LS-DL-70_R | Trees(Remaining) |  | 2026-10-31 → 2026-11-07 (+7d) |  | 19d → 14.62d |
| PG-T-PR-SL-LS-DL-80_R | Lawn(Remaining) |  | 2026-10-31 → 2026-11-07 (+7d) |  | 24.2d → 19.82d |
| 5 | **METAL WORK** |  | 2026-11-01 → 2026-11-08 (+7d) |  |  |
| PG-T-PR-SL-MT-DL-10_R | Galvanized Steel Ladder(Remaining) |  | 2026-11-01 → 2026-11-08 (+7d) |  | 15.7d → 12.8d |
| PG-T-PR-SL-MT-DL-20_R | Galvanized Steel Roof Scupper(Remaining) |  | 2026-11-01 → 2026-11-08 (+7d) |  | 15.7d → 12.8d |
| PG-T-PR-SL-MT-DL-30_R | Galvanized Steel Cover with frame(Remaining) |  | 2026-11-01 → 2026-11-08 (+7d) |  | 15.7d → 12.8d |
| 8 | **IRRIGATION WORK** |  | 2026-10-31 → 2026-11-07 (+7d) |  |  |
| PG-T-PR-SL-IR-DL-10_R | Gate Valve including valve box(Remaining) |  | 2026-10-31 → 2026-11-07 (+7d) |  | -12.85d → -15.65d |
| PG-T-PR-SL-IR-DL-20_R | Bulbblers and Spreyers(Remaining) |  | 2026-10-31 → 2026-11-07 (+7d) |  | -12.25d → -15.05d |
| CO | **CONSTRUCTION STAGE** |  | 2027-02-06 → 2027-02-13 (+7d) |  |  |
| EX.SIT | **PLAYGROUND AND LANDSCAPING WORKS** |  | 2027-01-10 → 2027-01-12 (+2d) |  |  |
| 1 | **PLAYGROUND WORKS** |  | 2026-12-05 → 2026-12-06 (+1d) |  |  |
| FP | **FOOTBALL PLAYGROUND WORKS** |  | 2026-11-16 → 2026-11-21 (+5d) |  |  |

| ID | Task | Start | Finish | Complete | Total float |
| --- | --- | --- | --- | --- | --- |
| PG-T-CON-EX-FB-90 | Turfing / Seeding Works |  | 2026-11-02 → 2026-11-09 (+7d) |  | 26.1d → 22.1d |
| PG-T-CON-EX-FB-120 | Installation of Lighting System |  | 2026-11-01 → 2026-11-08 (+7d) |  | 26.1d → 22.1d |
| PG-T-CON-EX-FB-60 | Goal Post Installation & Alignment |  | 2026-11-05 → 2026-11-12 (+7d) |  | 26.1d → 22.1d |
| PG-T-CON-EX-FB-110 | Install Playground Benches |  | 2026-11-08 → 2026-11-15 (+7d) |  | 26.1d → 22.1d |
| PG-T-CON-EX-FB-100 | Markings and Signages |  | 2026-11-16 → 2026-11-21 (+5d) | 30% → 50% | 26.1d → 22.1d |
| BP | **BASKETBALL PLAYGROUND WORKS** |  | 2026-11-21 → 2026-11-28 (+7d) |  |  |
| PG-T-CON-EX-BB-60 | Basketball Pole Installation & Alignment |  | 2026-11-04 → 2026-11-11 (+7d) |  | 22.9d → 16.9d |
| PG-T-CON-EX-BB-80 | Court Line Marking |  | 2026-11-02 → 2026-11-09 (+7d) |  | 22.9d → 16.9d |
| PG-T-CON-EX-BB-100 | Install Playground Benches |  | 2026-11-21 → 2026-11-28 (+7d) |  | 22.9d → 16.9d |
| PG-T-CON-EX-BB-90 | Backboard & Hoop Installation |  | 2026-11-18 → 2026-11-25 (+7d) |  | 22.9d → 16.9d |
| PP | **PADEL PLAYGROUND WORKS** |  | 2026-12-05 → 2026-12-06 (+1d) |  |  |
| PG-T-CON-EX-PD-30_R | Tartan Flooring Layers(Remaining) |  | 2026-11-19 → 2026-11-24 (+5d) |  | 10.05d → 9.05d |
| PG-T-CON-EX-PD-40 | Steel Structure & Fence Supports Installation |  | 2026-11-03 → 2026-11-10 (+7d) |  | 10.05d → 9.05d |
| PG-T-CON-EX-PD-60 | Chain Link Fence & Gates Installation |  | 2026-11-04 → 2026-11-11 (+7d) |  | 10.05d → 9.05d |
| PG-T-CON-EX-PD-80 | Install Playground Benches |  | 2026-12-05 → 2026-12-06 (+1d) |  | 10.05d → 9.05d |
| PG-T-CON-EX-PD-50 | Tempered Glass Installation |  | 2026-11-17 → 2026-11-22 (+5d) | 40% → 50% | 10.05d → 9.05d |
| PG-T-CON-EX-PD-70 | Court Accessories Installation |  | 2026-12-02 → 2026-12-03 (+1d) | 30% → 50% | 10.05d → 9.05d |
| GN.SI | **GENERAL SITE WORKS** |  | 2027-01-10 → 2027-01-12 (+2d) |  |  |
| 5 | **MECHANICAL WORK** |  | 2026-11-21 → 2026-11-28 (+7d) |  |  |
| 2 | **STORM WATER AND UTILITY WORK** |  | 2026-11-15 → 2026-11-22 (+7d) |  |  |
| PG-T-CON-EX-GN-M-30 | Manhole Installation |  | 2026-10-31 → 2026-11-07 (+7d) |  | -20.2d → -23d |
| PG-T-CON-EX-GN-M-40 | 150 mm uPVC pipe laying & jointing |  | 2026-11-02 → 2026-11-09 (+7d) |  | -20.2d → -23d |
| PG-T-CON-EX-GN-M-50 | Concrete Encasement | 2026-11-02 → 2026-11-09 (+7d) | 2026-11-05 → 2026-11-12 (+7d) |  | -20.2d → -23d |
| PG-T-CON-EX-GN-M-60 | Backfilling & Compaction | 2026-11-05 → 2026-11-12 (+7d) | 2026-11-09 → 2026-11-16 (+7d) |  | -20.2d → -23d |
| PG-T-CON-EX-GN-M-70 | Surface Reinstatement & Civil Works | 2026-11-10 → 2026-11-17 (+7d) | 2026-11-15 → 2026-11-22 (+7d) |  | -20.2d → -23d |
| IR.SY | **IRRIGATION SYSTEM WORKS** |  | 2026-11-10 → 2026-11-17 (+7d) |  |  |
| PG-T-CON-EX-GN-M-80_R | Installation of HDPE Irrigation Pipe Network with Gate Valve and Box(Remaining) |  | 2026-11-09 → 2026-11-16 (+7d) |  | -20.2d → -23d |
| PG-T-CON-EX-GN-M-100 | Installation of Bubblers and Sprinklers |  | 2026-11-10 → 2026-11-17 (+7d) |  | -20.2d → -23d |
| PG-T-CON-EX-GN-M-90 | Installation of Irrigation Control System |  | 2026-11-09 → 2026-11-16 (+7d) |  | -20.2d → -23d |
| 1 | **FIRE PROTECTION SYSTEM** | 2026-11-15 → 2026-11-22 (+7d) | 2026-11-21 → 2026-11-28 (+7d) |  |  |
| PG-T-CON-EX-GN-M-110 | Fire Extinguisher Installation | 2026-11-15 → 2026-11-22 (+7d) | 2026-11-21 → 2026-11-28 (+7d) |  | -20.2d → -23d |
| 2 | **ELECTRICAL WORK** |  | 2026-12-20 → 2026-12-22 (+2d) |  |  |
| 1 | **POWER, LIGHTING & GROUNDING** |  | 2026-12-03 → 2026-12-10 (+7d) |  |  |
| PG-T-CON-EX-GN-E-20_R | Foundation Work for Site Lighting Poles(Remaining) |  | 2026-11-02 → 2026-11-05 A (+3d) | 90% → 100% | -4d → none |
| PG-T-CON-EX-GN-E-30 | Lightning Protection System (LPS) |  | 2026-11-22 → 2026-11-29 (+7d) |  | -20.2d → -23d |
| PG-T-CON-EX-GN-E-40 | KWH Meter and MDB Installation |  | 2026-11-23 → 2026-11-30 (+7d) |  | -20.2d → -23d |
| PG-T-CON-EX-GN-E-50 | Power Panels and Distribution Boards |  | 2026-11-24 → 2026-12-01 (+7d) |  | -20.2d → -23d |
| PG-T-CON-EX-GN-E-60 | Site Lighting Poles Installation |  | 2026-11-25 → 2026-12-02 (+7d) |  | -20.2d → -23d |
| PG-T-CON-EX-GN-E-70 | Wiring Works |  | 2026-11-26 → 2026-12-03 (+7d) |  | -20.2d → -23d |
| PG-T-CON-EX-GN-E-80 | Lighting Fixtures with outlets Installation | 2026-11-26 → 2026-12-03 (+7d) | 2026-12-03 → 2026-12-10 (+7d) |  | -20.2d → -23d |
| 2 | **ELV SYSTEMS (TELECOM, DATA, AV & CCTV)** |  | 2026-12-12 → 2026-12-19 (+7d) |  |  |
| PG-T-CON-EX-GN-E-100 | Fiber Optic Pull Box Installation |  | 2026-12-06 → 2026-12-13 (+7d) |  | -18.9d → -22.1d |
| PG-T-CON-EX-GN-E-110 | Telephone and Data Outlet Installation |  | 2026-12-07 → 2026-12-14 (+7d) |  | -18.9d → -22.1d |
| PG-T-CON-EX-GN-E-120 | Telecom Equipment and AV HDMI Installation |  | 2026-12-08 → 2026-12-15 (+7d) |  | -18.9d → -22.1d |
| PG-T-CON-EX-GN-E-130 | CCTV Rack / Cabinet Installation |  | 2026-12-09 → 2026-12-16 (+7d) |  | -18.9d → -22.1d |
| PG-T-CON-EX-GN-E-140 | NVR and CCTV Monitor Installation |  | 2026-12-12 → 2026-12-19 (+7d) |  | -18.9d → -22.1d |
| PG-T-CON-EX-GN-E-150 | IP Camera Installation |  | 2026-12-12 → 2026-12-19 (+7d) |  | -18.9d → -22.1d |
| PG-T-CON-EX-GN-E-90 | ELV Containment & Cabling Works |  | 2026-12-05 → 2026-12-12 (+7d) |  | -20.2d → -23d |
| 3 | **FIRE ALARM SYSTEM** |  | 2026-12-20 → 2026-12-22 (+2d) |  |  |
| PG-T-CON-EX-GN-E-160 | Fire Alarm Containment & Cabling |  | 2026-12-08 → 2026-12-14 (+6d) | 60% → 70% | -20.2d → -23d |
| PG-T-CON-EX-GN-E-170 | Fire Alarm Control Panel (FACP) Installation |  | 2026-12-12 → 2026-12-17 (+5d) | 60% → 70% | -20.2d → -23d |
| PG-T-CON-EX-GN-E-180 | Initiating Devices (Detectors & Manual Pull Station) |  | 2026-12-15 → 2026-12-20 (+5d) | 60% → 70% | -20.2d → -23d |
| PG-T-CON-EX-GN-E-190 | Notification Appliances (Strobe with Sounder) |  | 2026-12-20 → 2026-12-22 (+2d) | 60% → 70% | -20.2d → -23d |
| 3 | **PARKING WORK** |  | 2026-12-20 → 2026-12-22 (+2d) |  |  |
| PG-T-CON-EX-GN-PR-30 | Marking & Signages |  | 2026-12-20 → 2026-12-22 (+2d) | 50% → 70% | -20.2d → -23d |
| 4 | **SERVICE CONNECTION** |  | 2027-01-10 → 2027-01-12 (+2d) |  |  |
| PG-T-CON-EX-GN-SC-20 | HDPE Pipe Laying & Valve Installation |  | 2026-12-20 → 2026-12-22 (+2d) |  | -20.2d → -23d |
| PG-T-CON-EX-GN-SC-30 | Connection to City Network | 2026-12-20 → 2026-12-23 (+3d) | 2026-12-31 → 2027-01-03 (+3d) |  | -20.2d → -23d |
| PG-T-CON-EX-GN-SC-40 | Backfilling | 2026-12-31 → 2027-01-04 (+4d) | 2027-01-10 → 2027-01-12 (+2d) |  | -20.2d → -23d |
| LS | **LANDSCAPING WORKS** |  | 2026-11-17 → 2026-11-14 (-3d) |  |  |
| HSP | **HARDSCAPE WORK** |  | 2026-11-17 → 2026-11-14 (-3d) |  |  |
| PG-T-CON-EX-LS-HS-50_R | Install Recycled Precast Concrete Seats(Remaining) |  | 2026-11-14 → 2026-11-10 (-4d) |  | 9.5d → 14.62d |
| PG-T-CON-EX-LS-HS-20_R | Interlock Tiles Grey Scale with Black Marble Chips(Remaining) |  | 2026-11-11 → 2026-11-07 (-4d) |  | 9.5d → 14.62d |
| PG-T-CON-EX-LS-HS-60 | Install Recycled Precast Concrete Trash Bins |  | 2026-11-17 → 2026-11-14 (-3d) |  | 9.5d → 14.62d |
| SSP | **SOFTSCAPE WORK** |  | 2026-11-17 → 2026-11-14 (-3d) |  |  |
| PG-T-CON-EX-LS-SS-20_R | Lawn Area Preparation & Planting / Turfing(Remaining) |  | 2026-11-17 → 2026-11-14 (-3d) |  | 9.5d → 14.62d |
| PG-T-CON-EX-LS-SS-10 | Planting Trees |  | 2026-11-12 → 2026-11-09 (-3d) |  | 9.5d → 14.62d |
| W.T | **TANK WORKS** |  | 2026-11-10 → 2026-11-04 (-6d) |  |  |
| 1 | **SEPTIC TANK** |  | 2026-11-08 → 2026-10-31 (-8d) |  |  |
| PG-T-CON-EX-TW-ST-60 | Finishing Work | 2026-10-31 → 2026-10-17 A (-14d) | 2026-11-08 → 2026-10-22 A (-17d) | 0% → 100% | 9.5d → none |

| ID | Task | Start | Finish | Complete | Total float |
| --- | --- | --- | --- | --- | --- |
| PG-T-CON-EX-TW-ST-70 | Backfilling | 2026-08-20 A → 2026-10-24 A (+65d) | 2026-08-24 A → 2026-10-31 A (+68d) |  |  |
| 2 | **WATER STORAGE TANK** |  | 2026-11-10 → 2026-11-04 (-6d) |  |  |
| PG-T-CON-EX-TW-IR-40 | GRP Water Tank Installation |  | 2026-11-10 → 2026-11-04 A (-6d) | 70% → 100% | 9.5d → none |
| AD | **AIR DOME CONSTRUCTION** |  | 2027-02-06 → 2027-02-13 (+7d) |  |  |
| 1 | **CIVIL WORK** |  | 2026-11-18 → 2026-11-25 (+7d) |  |  |
| PG-T-CON-EX-AD-CL-70 | Installation of Steel Cable Structural System | 2026-10-31 → 2026-11-07 (+7d) | 2026-11-09 → 2026-11-16 (+7d) |  | -55d → -61d |
| PG-T-CON-EX-AD-CL-80 | Installation of Membrane System | 2026-11-10 → 2026-11-17 (+7d) | 2026-11-18 → 2026-11-25 (+7d) |  | -55d → -61d |
| 2 | **ARCHITECTURAL WORK** | 2027-01-09 → 2027-01-16 (+7d) | 2027-02-06 → 2027-02-13 (+7d) |  |  |
| PG-T-CON-EX-AD-AR-10 | Installation of Thermal Insulation System | 2027-01-09 → 2027-01-16 (+7d) | 2027-01-16 → 2027-01-23 (+7d) |  | -55d → -61d |
| PG-T-CON-EX-AD-AR-40 | Final Fixing of Accessories & Finishes | 2027-01-17 → 2027-01-24 (+7d) | 2027-01-24 → 2027-01-31 (+7d) |  | -55d → -61d |
| PG-T-CON-EX-AD-AR-20 | Installation of Doors & Access Systems | 2027-01-25 → 2027-02-01 (+7d) | 2027-01-31 → 2027-02-07 (+7d) |  | -55d → -61d |
| PG-T-CON-EX-AD-AR-30 | Installation of Logo | 2027-02-01 → 2027-02-08 (+7d) | 2027-02-06 → 2027-02-13 (+7d) |  | -55d → -61d |
| 3 | **MECHANICAL WORK** | 2026-11-19 → 2026-11-26 (+7d) | 2026-12-15 → 2026-12-22 (+7d) |  |  |
| PG-T-CON-EX-AD-ME-10 | Installation of Main Air Package Units | 2026-11-19 → 2026-11-26 (+7d) | 2026-11-24 → 2026-12-01 (+7d) |  | -55d → -61d |
| PG-T-CON-EX-AD-ME-20 | Installation of Backup Air Package Unit | 2026-11-25 → 2026-12-02 (+7d) | 2026-11-30 → 2026-12-07 (+7d) |  | -55d → -61d |
| PG-T-CON-EX-AD-ME-30 | Installation of Complete HVAC System | 2026-12-09 → 2026-12-16 (+7d) | 2026-12-15 → 2026-12-22 (+7d) |  | -54d → -60d |
| 4 | **ELECTRICAL WORK** | 2026-12-01 → 2026-12-08 (+7d) | 2027-01-07 → 2027-01-14 (+7d) |  |  |
| PG-T-CON-EX-AD-EL-10 | Installation of Electrical Boxes & MDBs | 2026-12-01 → 2026-12-08 (+7d) | 2026-12-08 → 2026-12-15 (+7d) |  | -55d → -61d |
| PG-T-CON-EX-AD-EL-20 | Installation of Lighting System | 2026-12-09 → 2026-12-16 (+7d) | 2026-12-16 → 2026-12-23 (+7d) |  | -55d → -61d |
| PG-T-CON-EX-AD-EL-30 | Electrical Connections to Main Power Source (Excluding kWh Meter) | 2026-12-17 → 2026-12-24 (+7d) | 2026-12-22 → 2026-12-29 (+7d) |  | -55d → -61d |
| PG-T-CON-EX-AD-EL-40 | Installation of Backup Generator | 2026-12-23 → 2026-12-30 (+7d) | 2026-12-29 → 2027-01-05 (+7d) |  | -55d → -61d |
| PG-T-CON-EX-AD-EL-50 | Installation of Smart Dome System | 2026-12-30 → 2027-01-06 (+7d) | 2027-01-07 → 2027-01-14 (+7d) |  | -55d → -61d |
| B | **TOILET BUILDING WORKS** |  | 2026-11-04 → 2026-11-11 (+7d) |  |  |
| CVL | **CIVIL WORK** |  | 2026-11-03 → 2026-11-10 (+7d) |  |  |
| AR | **ARCHITECTURAL WORK** |  | 2026-11-03 → 2026-11-10 (+7d) |  |  |
| 2 | **WET AREA FINISHES** |  | 2026-11-02 → 2026-11-04 (+2d) |  |  |
| PG-T-CON-B-AR-WF-60 | Install Doors |  | 2026-11-02 → 2026-11-04 A (+2d) | 70% → 100% | 16d → none |
| 3 | **ROOF FINISHES** |  | 2026-11-03 → 2026-11-10 (+7d) |  |  |
| PG-T-CON-B-AR-RF-30 | Steel ladder and Steel roof scupper Installation |  | 2026-11-03 → 2026-11-10 (+7d) |  | 14.5d → 11.3d |
| MEP | **MEP WORK** |  | 2026-11-04 → 2026-11-11 (+7d) |  |  |
| MEC | **MECANICAL WORKS** |  | 2026-11-04 → 2026-11-11 (+7d) |  |  |
| FF | **FIRE FIGHTING SYSTEM** |  | 2026-11-04 → 2026-11-11 (+7d) |  |  |
| PG-T-CON-B-GF-FF-10 | Fire Extinguisher Installation |  | 2026-11-04 → 2026-11-11 (+7d) |  | 15.8d → 12.3d |
| DS | **SEWER AND DRAINAGE SYSTEM** |  | 2026-11-01 → 2026-11-08 (+7d) |  |  |
| PG-T-CON-B-GF-DR-30 | Sanitaryware Installation (Final Fix) |  | 2026-11-01 → 2026-11-08 (+7d) |  | 15.4d → 12.5d |
| HV | **HVAC SYSTEM** |  | 2026-11-02 → 2026-11-09 (+7d) |  |  |
| PG-T-CON-B-GF-AC-20 | Split AC, Grills & Diffuser Installation |  | 2026-11-02 → 2026-11-09 (+7d) |  | 18.1d → 14.6d |
| WS | **WATER SUPPLY SYSTEM** |  | 2026-10-31 → 2026-11-07 (+7d) |  |  |
| PG-T-CON-B-GF-WS-30 | Water Supply Accesories and Booster pump Installation |  | 2026-10-31 → 2026-11-07 (+7d) |  | 15.4d → 12.5d |
| TE & CO | **PROJECT CLOSOUT** |  | 2027-02-18 → 2027-02-25 (+7d) |  |  |
| PG-T-PCL-10_R | Testing, Commessioning for All Systems(Remaining) |  | 2027-02-06 → 2027-02-13 (+7d) | 60% → 65% | -55d → -61d |
| PG-T-PCL-20 | As-Built Drawings |  | 2027-02-09 → 2027-02-15 (+6d) | 60% → 65% | -48.1d → -53.47d |
| PG-T-PCL-30 | Snag list Submission | 2027-02-07 → 2027-02-14 (+7d) | 2027-02-08 → 2027-02-15 (+7d) |  | -55d → -61d |
| PG-T-PCL-40 | Snag list Closeout | 2027-02-09 → 2027-02-16 (+7d) | 2027-02-16 → 2027-02-23 (+7d) |  | -55d → -61d |
| PG-T-PCL-50 | Issuing Approvals | 2027-02-17 → 2027-02-24 (+7d) | 2027-02-17 → 2027-02-24 (+7d) |  | -55d → -61d |
| PG-T-PCL-60 | Handing Over | 2027-02-18 → 2027-02-25 (+7d) | 2027-02-18 → 2027-02-25 (+7d) |  | -55d → -61d |

## Version 8 (data date 2026-11-13, saved 2026-11-14, file 02. MLTX-02-003-UPS Level 5 - 2026-11-15.xer)

Last finish 2027-03-02 → 2027-03-09 (+7d). Complete tasks 1645 → 1646.

Changed:

| ID | Task | Start | Finish | Complete | Total float |
| --- | --- | --- | --- | --- | --- |
| MS | **MILESTONES** |  | 2027-03-02 → 2027-03-09 (+7d) |  |  |
| 1 | **GENERAL MILESTONES** |  | 2027-03-02 → 2027-03-09 (+7d) |  |  |
| PG-GN-MS-30_R | Project Durations(Remaining) |  | 2026-12-15 → 2026-12-16 (+1d) | 77% → 81% | 1.07d → 0.97d |
| PG-GN-MS-20 | Project Completion Date | 2027-03-02 → 2027-03-09 (+7d) | 2027-03-02 → 2027-03-09 (+7d) |  | -64.8d → -70.2d |
| 2 | **CONTRACUAL MILESTONES** |  | 2027-03-02 → 2027-03-09 (+7d) |  |  |
| PG-IN-MS-30 | Completion of Toilet Building | 2026-11-19 → 2026-11-25 (+6d) | 2026-11-19 → 2026-11-25 (+6d) |  | 5.45d → 0.4d |
| PG-IN-MS-50 | Completion of Playground Works | 2026-12-06 → 2026-12-09 (+3d) | 2026-12-06 → 2026-12-09 (+3d) |  | 9.05d → 6.45d |
| PG-IN-MS-40 | Completion of Landscape Works | 2027-01-12 → 2027-01-17 (+5d) | 2027-01-12 → 2027-01-17 (+5d) |  | -23d → -26.6d |
| PG-IN-MS-60 | Substantial Completion - All Works | 2027-03-02 → 2027-03-09 (+7d) | 2027-03-02 → 2027-03-09 (+7d) |  | -64.8d → -70.2d |
| QASSIM | **QASSIM** |  | 2027-03-02 → 2027-03-09 (+7d) |  |  |
| ENG | **ENGINEERING** |  | 2026-11-10 → 2026-11-17 (+7d) |  |  |
| 1 | **SHOP DRAWINGS SUBMITTALS** |  | 2026-11-08 → 2026-11-15 (+7d) |  |  |
| 4 | **MECHANICAL DRAWINGS** |  | 2026-11-08 → 2026-11-15 (+7d) |  |  |
| 4 | **AIR DOME** |  | 2026-11-08 → 2026-11-15 (+7d) |  |  |
| PG-Q-EN-ME-SD-SB-100 | Air Package and HVAC System Drawings |  | 2026-11-08 → 2026-11-15 (+7d) |  | -64.8d → -70.2d |
| 2 | **SHOP DRAWINGS APPROVALS** |  | 2026-11-10 → 2026-11-17 (+7d) |  |  |
| 4 | **MECHANICAL DRAWINGS** |  | 2026-11-10 → 2026-11-17 (+7d) |  |  |
| 4 | **AIR DOME** |  | 2026-11-10 → 2026-11-17 (+7d) |  |  |
| PG-Q-EN-ME-SD-AP-100 | Air Package and HVAC System Drawings |  | 2026-11-10 → 2026-11-17 (+7d) |  | -64.8d → -70.2d |
| PR | **PROCUREMENT** |  | 2026-11-12 → 2026-11-19 (+7d) |  |  |
| 1 | **LONG LEAD ITEMS** |  | 2026-11-12 → 2026-11-19 (+7d) |  |  |
| 4 | **DELIVERY TO SITE** |  | 2026-11-12 → 2026-11-19 (+7d) |  |  |
| 1 | **EXTERNAL / LANDSCAPE WORK** |  | 2026-11-08 → 2026-11-15 (+7d) |  |  |
| PG-Q-PR-LL-LS-DL-20_R | Benches, Seats (Rectangular & Circular)(Remaining) |  | 2026-11-08 → 2026-11-15 (+7d) |  | 27.7d → 21.7d |
| 2 | **SPORTS & RECREATIONAL FACILITIES WORK** |  | 2026-11-12 → 2026-11-19 (+7d) |  |  |
| PG-Q-PR-LL-SP-DL-10_R | Football Playground Materials (Flooring, goal post, nets, paints, etc)(Remaining) |  | 2026-11-07 → 2026-11-14 (+7d) |  | 25.45d → 19.45d |
| PG-Q-PR-LL-SP-DL-20_R | Basketball Playground Materials (Flooring, basketball poll, nets, paints, etc)(Remaining) |  | 2026-11-07 → 2026-11-14 (+7d) |  | 23.85d → 17.85d |
| PG-Q-PR-LL-SP-DL-30_R | Padel Playgound Materials (Fence, tempered glass, etc)(Remaining) |  | 2026-11-07 → 2026-11-14 (+7d) |  | 15.05d → 12.05d |
| PG-Q-PR-LL-SP-DL-40_R | Tartan Floor(Remaining) |  | 2026-11-07 → 2026-11-14 (+7d) |  | 20.85d → 14.85d |
| PG-Q-PR-LL-SP-DL-50 | Air Dome Materials |  | 2026-11-12 → 2026-11-19 (+7d) |  | -64.8d → -70.2d |
| 5 | **METAL WORK** |  | 2026-11-09 → 2026-11-16 (+7d) |  |  |
| PG-Q-PR-LL-MT-DL-20_R | Curtain Wall(Remaining) |  | 2026-11-09 → 2026-11-16 (+7d) |  | 12.4d → 6.65d |
| 8 | **IRRIGATION WORK** |  | 2026-11-07 → 2026-11-14 (+7d) |  |  |
| PG-Q-PR-LL-IR-DL-20_R | Irrigation Control System(Remaining) |  | 2026-11-07 → 2026-11-14 (+7d) |  | -2.1d → -7.95d |
| 9 | **ELECTRICAL WORK** |  | 2026-11-08 → 2026-11-15 (+7d) |  |  |
| PG-Q-PR-LL-EL-DL-10_R | Main Distribution Board(Remaining) |  | 2026-11-08 → 2026-11-15 (+7d) |  | 6.3d → 0.3d |
| PG-Q-PR-LL-EL-DL-20_R | Power Panels (Pump, Street Light)(Remaining) |  | 2026-11-07 → 2026-11-14 (+7d) |  | 7.2d → 1.2d |
| PG-Q-PR-LL-EL-DL-30_R | Site Lighting Poles(Remaining) |  | 2026-11-08 → 2026-11-15 (+7d) |  | 7.7d → 1.7d |
| PG-Q-PR-LL-EL-DL-40_R | Lighting Fixtures(Remaining) |  | 2026-11-08 → 2026-11-15 (+7d) |  | 8.9d → 2.9d |
| PG-Q-PR-LL-EL-DL-50_R | Grounding System Materials (Earth pit rod, LPS, etc)(Remaining) |  | 2026-11-08 → 2026-11-15 (+7d) |  | 5.7d → -0.3d |
| PG-Q-PR-LL-EL-DL-60_R | Telecommunications & Data System Materials (Telephone outlet, CCTV, etc)(Remaining) |  | 2026-11-08 → 2026-11-15 (+7d) |  | 9.7d → 3.7d |
| PG-Q-PR-LL-EL-DL-70_R | Security and Access Control System Materials(Remaining) |  | 2026-11-08 → 2026-11-15 (+7d) |  | 13d → 7.25d |
| PG-Q-PR-LL-EL-DL-80_R | Fire Alarm System Materials(Remaining) |  | 2026-11-08 → 2026-11-15 (+7d) |  | 10.3d → 4.3d |
| 2 | **SHORT LEAD ITEMS** |  | 2026-11-08 → 2026-11-15 (+7d) |  |  |
| 3 | **DELIVERY TO SITE** |  | 2026-11-08 → 2026-11-15 (+7d) |  |  |
| 1 | **EXTERNAL / LANDSCAPE WORK** |  | 2026-11-08 → 2026-11-15 (+7d) |  |  |
| PG-Q-PR-SL-LS-DL-50_R | Thermoplastic pavement road marking(Remaining) |  | 2026-11-08 → 2026-11-15 (+7d) |  | 13.8d → 8.4d |
| PG-Q-PR-SL-LS-DL-60_R | Traffic Signages(Remaining) |  | 2026-11-08 → 2026-11-15 (+7d) |  | 13.8d → 8.4d |
| PG-Q-PR-SL-LS-DL-70_R | Trees(Remaining) |  | 2026-11-08 → 2026-11-15 (+7d) |  | 13.8d → 8.4d |
| PG-Q-PR-SL-LS-DL-80_R | Lawn(Remaining) |  | 2026-11-08 → 2026-11-15 (+7d) |  | 13.8d → 8.4d |
| 5 | **METAL WORK** |  | 2026-11-08 → 2026-11-15 (+7d) |  |  |
| PG-Q-PR-SL-MT-DL-10_R | Galvanized Steel Ladder(Remaining) |  | 2026-11-08 → 2026-11-15 (+7d) |  | 14.8d → 9.15d |
| PG-Q-PR-SL-MT-DL-20_R | Galvanized Steel Roof Scupper(Remaining) |  | 2026-11-08 → 2026-11-15 (+7d) |  | 14.8d → 9.15d |
| PG-Q-PR-SL-MT-DL-30_R | Galvanized Steel Cover with frame(Remaining) |  | 2026-11-08 → 2026-11-15 (+7d) |  | 14.8d → 9.15d |
| 8 | **IRRIGATION WORK** |  | 2026-11-08 → 2026-11-15 (+7d) |  |  |
| PG-Q-PR-SL-IR-DL-10_R | Gate Valve including valve box(Remaining) |  | 2026-11-08 → 2026-11-15 (+7d) |  | -1.7d → -7.55d |
| PG-Q-PR-SL-IR-DL-20_R | Bulbblers and Spreyers(Remaining) |  | 2026-11-08 → 2026-11-15 (+7d) |  | -2.6d → -8.45d |
| 9 | **ELECTRICAL WORK** |  | 2026-11-08 → 2026-11-15 (+7d) |  |  |
| PG-Q-PR-SL-EL-DL-10_R | Wiring Devices Materials(Remaining) |  | 2026-11-08 → 2026-11-15 (+7d) |  | 8.3d → 2.3d |
| 10 | **FIRE FIGHTING WORK** |  | 2026-11-08 → 2026-11-15 (+7d) |  |  |
| PG-Q-PR-SL-FF-DL-10_R | Fire Extinguishers(Remaining) |  | 2026-11-08 → 2026-11-15 (+7d) |  | 4d → -2d |
| CO | **CONSTRUCTION STAGE** |  | 2027-02-10 → 2027-02-17 (+7d) |  |  |
| EX.SIT | **PLAYGROUND AND LANDSCAPING WORKS** |  | 2027-01-04 → 2027-01-11 (+7d) |  |  |
| 1 | **PLAYGROUND WORKS** |  | 2026-11-29 → 2026-12-02 (+3d) |  |  |
| FP | **FOOTBALL PLAYGROUND WORKS** |  | 2026-11-19 → 2026-11-26 (+7d) |  |  |
| PG-Q-CON-EX-FB-90 | Turfing / Seeding Works |  | 2026-11-10 → 2026-11-17 (+7d) |  | 23d → 17d |
| PG-Q-CON-EX-FB-120 | Installation of Lighting System |  | 2026-11-08 → 2026-11-15 (+7d) |  | 23d → 17d |
| PG-Q-CON-EX-FB-110 | Install Playground Benches |  | 2026-11-17 → 2026-11-24 (+7d) |  | 23d → 17d |
| PG-Q-CON-EX-FB-60 | Goal Post Installation & Alignment |  | 2026-11-14 → 2026-11-21 (+7d) |  | 23d → 17d |
| PG-Q-CON-EX-FB-100 | Markings and Signages |  | 2026-11-19 → 2026-11-26 (+7d) |  | 23d → 17d |

| ID | Task | Start | Finish | Complete | Total float |
| --- | --- | --- | --- | --- | --- |
| BP | **BASKETBALL PLAYGROUND WORKS** |  | 2026-11-23 → 2026-11-30 (+7d) |  |  |
| PG-Q-CON-EX-BB-60 | Basketball Pole Installation & Alignment |  | 2026-11-15 → 2026-11-22 (+7d) |  | 20.85d → 14.85d |
| PG-Q-CON-EX-BB-80 | Court Line Marking |  | 2026-11-10 → 2026-11-17 (+7d) |  | 20.85d → 14.85d |
| PG-Q-CON-EX-BB-100 | Install Playground Benches |  | 2026-11-23 → 2026-11-30 (+7d) |  | 20.85d → 14.85d |
| PG-Q-CON-EX-BB-90 | Backboard & Hoop Installation |  | 2026-11-18 → 2026-11-25 (+7d) |  | 20.85d → 14.85d |
| PP | **PADEL PLAYGROUND WORKS** |  | 2026-11-29 → 2026-12-02 (+3d) |  |  |
| PG-Q-CON-EX-PD-30_R | Tartan Flooring Layers(Remaining) |  | 2026-11-18 → 2026-11-25 (+7d) |  | 15.05d → 12.05d |
| PG-Q-CON-EX-PD-40 | Steel Structure & Fence Supports Installation |  | 2026-11-11 → 2026-11-18 (+7d) |  | 15.05d → 12.05d |
| PG-Q-CON-EX-PD-60 | Chain Link Fence & Gates Installation |  | 2026-11-15 → 2026-11-22 (+7d) |  | 15.05d → 12.05d |
| PG-Q-CON-EX-PD-50 | Tempered Glass Installation |  | 2026-11-18 → 2026-11-25 (+7d) |  | 15.05d → 12.05d |
| PG-Q-CON-EX-PD-70 | Court Accessories Installation |  | 2026-11-24 → 2026-11-29 (+5d) | 70% → 80% | 15.05d → 12.05d |
| PG-Q-CON-EX-PD-80 | Install Playground Benches |  | 2026-11-29 → 2026-12-02 (+3d) | 70% → 80% | 15.05d → 12.05d |
| GN.SI | **GENERAL SITE WORKS** |  | 2027-01-04 → 2027-01-11 (+7d) |  |  |
| 5 | **MECHANICAL WORK** |  | 2026-12-03 → 2026-12-09 (+6d) |  |  |
| 2 | **STORM WATER AND UTILITY WORK** |  | 2026-12-01 → 2026-12-07 (+6d) |  |  |
| PG-Q-CON-EX-GN-M-30_R | Manhole Installation(Remaining) |  | 2026-11-07 → 2026-11-14 (+7d) |  | -15.9d → -21.75d |
| PG-Q-CON-EX-GN-M-40 | 150 mm uPVC pipe laying & jointing |  | 2026-11-08 → 2026-11-15 (+7d) |  | -15.9d → -21.75d |
| PG-Q-CON-EX-GN-M-50 | Concrete Encasement | 2026-11-08 → 2026-11-15 (+7d) | 2026-11-16 → 2026-11-23 (+7d) |  | -15.9d → -21.75d |
| PG-Q-CON-EX-GN-M-60 | Backfilling & Compaction | 2026-11-16 → 2026-11-23 (+7d) | 2026-11-23 → 2026-11-30 (+7d) |  | -15.9d → -21.75d |
| PG-Q-CON-EX-GN-M-70 | Surface Reinstatement & Civil Works | 2026-11-24 → 2026-11-30 (+6d) | 2026-12-01 → 2026-12-07 (+6d) |  | -15.9d → -21.75d |
| IR.SY | **IRRIGATION SYSTEM WORKS** |  | 2026-11-24 → 2026-11-30 (+6d) |  |  |
| PG-Q-CON-EX-GN-M-90 | Installation of Irrigation Control System |  | 2026-11-23 → 2026-11-30 (+7d) |  | -15.9d → -21.75d |
| PG-Q-CON-EX-GN-M-100 | Installation of Bubblers and Sprinklers |  | 2026-11-24 → 2026-11-30 (+6d) | 80% → 85% | -15.9d → -21.75d |
| 1 | **FIRE PROTECTION SYSTEM** | 2026-12-01 → 2026-12-07 (+6d) | 2026-12-03 → 2026-12-09 (+6d) |  |  |
| PG-Q-CON-EX-GN-M-110 | Fire Extinguisher Installation | 2026-12-01 → 2026-12-07 (+6d) | 2026-12-03 → 2026-12-09 (+6d) |  | -15.9d → -21.75d |
| 2 | **ELECTRICAL WORK** |  | 2026-12-16 → 2026-12-22 (+6d) |  |  |
| 1 | **POWER, LIGHTING & GROUNDING** |  | 2026-12-08 → 2026-12-14 (+6d) |  |  |
| PG-Q-CON-EX-GN-E-60 | Site Lighting Poles Installation |  | 2026-12-06 → 2026-12-13 (+7d) |  | -15.9d → -21.75d |
| PG-Q-CON-EX-GN-E-30 | Lightning Protection System (LPS) |  | 2026-12-03 → 2026-12-10 (+7d) |  | -15.9d → -21.75d |
| PG-Q-CON-EX-GN-E-70 | Wiring Works |  | 2026-12-07 → 2026-12-14 (+7d) |  | -15.9d → -21.75d |
| PG-Q-CON-EX-GN-E-80 | Lighting Fixtures with outlets Installation |  | 2026-12-08 → 2026-12-14 (+6d) |  | -15.9d → -21.75d |
| PG-Q-CON-EX-GN-E-40 | KWH Meter and MDB Installation |  | 2026-12-05 → 2026-12-10 (+5d) |  | -15.9d → -21.75d |
| PG-Q-CON-EX-GN-E-50 | Power Panels and Distribution Boards |  | 2026-12-06 → 2026-12-12 (+6d) |  | -15.9d → -21.75d |
| 2 | **ELV SYSTEMS (TELECOM, DATA, AV & CCTV)** |  | 2026-12-14 → 2026-12-20 (+6d) |  |  |
| PG-Q-CON-EX-GN-E-90 | ELV Containment & Cabling Works |  | 2026-12-08 → 2026-12-15 (+7d) |  | -15.9d → -21.75d |
| PG-Q-CON-EX-GN-E-100 | Fiber Optic Pull Box Installation |  | 2026-12-09 → 2026-12-16 (+7d) |  | -15.4d → -21d |
| PG-Q-CON-EX-GN-E-110 | Telephone and Data Outlet Installation |  | 2026-12-10 → 2026-12-16 (+6d) |  | -15.4d → -21d |
| PG-Q-CON-EX-GN-E-130 | CCTV Rack / Cabinet Installation |  | 2026-12-12 → 2026-12-19 (+7d) |  | -15.4d → -21d |
| PG-Q-CON-EX-GN-E-120 | Telecom Equipment and AV HDMI Installation |  | 2026-12-10 → 2026-12-17 (+7d) |  | -15.4d → -21d |
| PG-Q-CON-EX-GN-E-140 | NVR and CCTV Monitor Installation |  | 2026-12-13 → 2026-12-20 (+7d) |  | -15.4d → -21d |
| PG-Q-CON-EX-GN-E-150 | IP Camera Installation |  | 2026-12-14 → 2026-12-20 (+6d) |  | -15.4d → -21d |
| 3 | **FIRE ALARM SYSTEM** |  | 2026-12-16 → 2026-12-22 (+6d) |  |  |
| PG-Q-CON-EX-GN-E-160 | Fire Alarm Containment & Cabling |  | 2026-12-10 → 2026-12-17 (+7d) |  | -15.9d → -21.75d |
| PG-Q-CON-EX-GN-E-170 | Fire Alarm Control Panel (FACP) Installation |  | 2026-12-12 → 2026-12-19 (+7d) |  | -15.9d → -21.75d |
| PG-Q-CON-EX-GN-E-180 | Initiating Devices (Detectors & Manual Pull Station) |  | 2026-12-14 → 2026-12-21 (+7d) |  | -15.9d → -21.75d |
| PG-Q-CON-EX-GN-E-190 | Notification Appliances (Strobe with Sounder) |  | 2026-12-16 → 2026-12-22 (+6d) |  | -15.9d → -21.75d |
| 3 | **PARKING WORK** |  | 2026-12-16 → 2026-12-22 (+6d) |  |  |
| PG-Q-CON-EX-GN-PR-30 | Marking & Signages |  | 2026-12-16 → 2026-12-22 (+6d) | 70% → 75% | -15.9d → -21.75d |
| 4 | **SERVICE CONNECTION** |  | 2027-01-04 → 2027-01-11 (+7d) |  |  |
| PG-Q-CON-EX-GN-SC-20 | HDPE Pipe Laying & Valve Installation |  | 2026-12-16 → 2026-12-23 (+7d) |  | -15.9d → -21.75d |
| PG-Q-CON-EX-GN-SC-30 | Connection to City Network | 2026-12-16 → 2026-12-23 (+7d) | 2026-12-26 → 2027-01-02 (+7d) |  | -15.9d → -21.75d |
| PG-Q-CON-EX-GN-SC-40 | Backfilling | 2026-12-26 → 2027-01-02 (+7d) | 2027-01-04 → 2027-01-11 (+7d) |  | -15.9d → -21.75d |
| LS | **LANDSCAPING WORKS** |  | 2026-11-24 → 2026-11-29 (+5d) |  |  |
| HSP | **HARDSCAPE WORK** |  | 2026-11-24 → 2026-11-29 (+5d) |  |  |
| PG-Q-CON-EX-LS-HS-50_R | Install Recycled Precast Concrete Seats(Remaining) |  | 2026-11-19 → 2026-11-24 (+5d) |  | 19.6d → 15.3d |
| PG-Q-CON-EX-LS-HS-20_R | Interlock Tiles Grey Scale with Black Marble Chips(Remaining) |  | 2026-11-08 → 2026-11-15 (+7d) |  | 13.7d → 8.3d |
| PG-Q-CON-EX-LS-HS-60 | Install Recycled Precast Concrete Trash Bins |  | 2026-11-24 → 2026-11-29 (+5d) |  | 19.6d → 15.3d |
| SSP | **SOFTSCAPE WORK** |  | 2026-11-17 → 2026-11-22 (+5d) |  |  |
| PG-Q-CON-EX-LS-SS-20_R | Lawn Area Preparation & Planting / Turfing(Remaining) |  | 2026-11-11 → 2026-11-18 (+7d) |  | 13.7d → 8.3d |
| PG-Q-CON-EX-LS-SS-10 | Planting Trees |  | 2026-11-17 → 2026-11-22 (+5d) | 70% → 80% | 19.6d → 15.3d |
| AD | **AIR DOME CONSTRUCTION** |  | 2027-02-10 → 2027-02-17 (+7d) |  |  |
| 1 | **CIVIL WORK** |  | 2026-12-01 → 2026-12-08 (+7d) |  |  |
| PG-Q-CON-EX-AD-CL-70 | Installation of Steel Cable Structural System | 2026-11-10 → 2026-11-17 (+7d) | 2026-11-22 → 2026-11-29 (+7d) |  | -64.8d → -70.2d |
| PG-Q-CON-EX-AD-CL-80 | Installation of Membrane System | 2026-11-22 → 2026-11-29 (+7d) | 2026-12-01 → 2026-12-08 (+7d) |  | -64.8d → -70.2d |
| 2 | **ARCHITECTURAL WORK** |  | 2027-02-10 → 2027-02-17 (+7d) |  |  |
| PG-Q-CON-EX-AD-AR-10 | Installation of Thermal Insulation System |  | 2027-01-19 → 2027-01-26 (+7d) |  | -64.8d → -70.2d |
| PG-Q-CON-EX-AD-AR-40 | Final Fixing of Accessories & Finishes | 2027-01-19 → 2027-01-26 (+7d) | 2027-01-28 → 2027-02-04 (+7d) |  | -64.8d → -70.2d |
| PG-Q-CON-EX-AD-AR-20 | Installation of Doors & Access Systems | 2027-01-28 → 2027-02-04 (+7d) | 2027-02-04 → 2027-02-11 (+7d) |  | -64.8d → -70.2d |
| PG-Q-CON-EX-AD-AR-30 | Installation of Logo | 2027-02-04 → 2027-02-11 (+7d) | 2027-02-10 → 2027-02-17 (+7d) |  | -64.8d → -70.2d |
| 3 | **MECHANICAL WORK** | 2026-12-01 → 2026-12-08 (+7d) | 2026-12-20 → 2026-12-27 (+7d) |  |  |

| ID | Task | Start | Finish | Complete | Total float |
| --- | --- | --- | --- | --- | --- |
| PG-Q-CON-EX-AD-ME-10 | Installation of Main Air Package Units | 2026-12-01 → 2026-12-08 (+7d) | 2026-12-07 → 2026-12-14 (+7d) |  | -64.8d → -70.2d |
| PG-Q-CON-EX-AD-ME-20 | Installation of Backup Air Package Unit | 2026-12-07 → 2026-12-14 (+7d) | 2026-12-13 → 2026-12-20 (+7d) |  | -64.8d → -70.2d |
| PG-Q-CON-EX-AD-ME-30 | Installation of Complete HVAC System | 2026-12-13 → 2026-12-20 (+7d) | 2026-12-20 → 2026-12-27 (+7d) |  | -64.8d → -70.2d |
| 4 | **ELECTRICAL WORK** |  | 2027-01-14 → 2027-01-21 (+7d) |  |  |
| PG-Q-CON-EX-AD-EL-10 | Installation of Electrical Boxes & MDBs |  | 2026-11-11 → 2026-11-18 (+7d) |  | -43.8d → -49.2d |
| PG-Q-CON-EX-AD-EL-20 | Installation of Lighting System | 2026-11-11 → 2026-11-18 (+7d) | 2026-11-25 → 2026-12-02 (+7d) |  | -43.8d → -49.2d |
| PG-Q-CON-EX-AD-EL-30 | Electrical Connections to Main Power Source (Excluding kWh Meter) | 2026-12-20 → 2026-12-27 (+7d) | 2026-12-26 → 2027-01-02 (+7d) |  | -64.8d → -70.2d |
| PG-Q-CON-EX-AD-EL-40 | Installation of Backup Generator | 2026-12-26 → 2027-01-02 (+7d) | 2027-01-02 → 2027-01-09 (+7d) |  | -64.8d → -70.2d |
| PG-Q-CON-EX-AD-EL-50 | Installation of Smart Dome System | 2027-01-02 → 2027-01-09 (+7d) | 2027-01-14 → 2027-01-21 (+7d) |  | -64.8d → -70.2d |
| B | **TOILET BUILDING WORKS** |  | 2026-11-11 → 2026-11-18 (+7d) |  |  |
| CVL | **CIVIL WORK** |  | 2026-11-11 → 2026-11-18 (+7d) |  |  |
| AR | **ARCHITECTURAL WORK** |  | 2026-11-11 → 2026-11-18 (+7d) |  |  |
| 1 | **GENERAL FINISHES** |  | 2026-11-11 → 2026-11-18 (+7d) |  |  |
| PG-Q-CON-B-AR-GF-60 | Install Doors & Windows |  | 2026-11-10 → 2026-11-17 (+7d) |  | 12.3d → 6.55d |
| PG-Q-CON-B-AR-GF-70 | Lockers and Furniture Installation |  | 2026-11-11 → 2026-11-18 (+7d) |  | 12.3d → 6.55d |
| 3 | **ROOF FINISHES** |  | 2026-11-11 → 2026-11-18 (+7d) |  |  |
| PG-Q-CON-B-AR-RF-30 | Steel ladder and Steel roof scupper Installation |  | 2026-11-11 → 2026-11-18 (+7d) | 60% → 70% | 12.3d → 6.55d |
| MEP | **MEP WORK** |  | 2026-11-11 → 2026-11-18 (+7d) |  |  |
| MEC | **MECANICAL WORKS** |  | 2026-11-11 → 2026-11-18 (+7d) |  |  |
| FF | **FIRE FIGHTING SYSTEM** |  | 2026-11-11 → 2026-11-18 (+7d) |  |  |
| PG-Q-CON-B-GF-FF-10 | Fire Extinguisher Installation |  | 2026-11-11 → 2026-11-18 (+7d) |  | 12.3d → 6.55d |
| DS | **SEWER AND DRAINAGE SYSTEM** |  | 2026-11-09 → 2026-11-16 (+7d) |  |  |
| PG-Q-CON-B-GF-DR-30 | Sanitaryware Installation (Final Fix) |  | 2026-11-09 → 2026-11-16 (+7d) |  | 12.3d → 6.55d |
| HV | **HVAC SYSTEM** |  | 2026-11-07 → 2026-11-14 (+7d) |  |  |
| PG-Q-CON-B-GF-AC-20 | Split AC, Grills & Diffuser Installation |  | 2026-11-07 → 2026-11-14 (+7d) |  | 12.9d → 7.15d |
| TE & CO | **PROJECT CLOSOUT** |  | 2027-03-02 → 2027-03-09 (+7d) |  |  |
| PG-Q-PCL-10_R | Testing, Commessioning for All Systems(Remaining) |  | 2027-02-10 → 2027-02-17 (+7d) | 65% → 75% | -64.8d → -70.2d |
| PG-Q-PCL-20 | As-Built Drawings |  | 2027-02-13 → 2027-02-18 (+5d) | 65% → 75% | -53.27d → -58.85d |
| PG-Q-PCL-30 | Snag list Submission | 2027-02-10 → 2026-11-15 A (-87d) | 2027-02-14 → 2027-02-21 (+7d) | 0% → 20% | -64.8d → -70.2d |
| PG-Q-PCL-40 | Snag list Closeout | 2027-02-14 → 2027-02-21 (+7d) | 2027-02-25 → 2027-03-04 (+7d) |  | -64.8d → -70.2d |
| PG-Q-PCL-50 | Issuing Approvals | 2027-02-25 → 2027-03-04 (+7d) | 2027-03-01 → 2027-03-08 (+7d) |  | -64.8d → -70.2d |
| PG-Q-PCL-60 | Handing Over | 2027-03-01 → 2027-03-08 (+7d) | 2027-03-02 → 2027-03-09 (+7d) |  | -64.8d → -70.2d |
| HAIL | **HAIL** |  | 2026-12-28 → 2027-01-02 (+5d) |  |  |
| PR | **PROCUREMENT** |  | 2026-11-09 → 2026-11-16 (+7d) |  |  |
| 1 | **LONG LEAD ITEMS** |  | 2026-11-09 → 2026-11-16 (+7d) |  |  |
| 4 | **DELIVERY TO SITE** |  | 2026-11-09 → 2026-11-16 (+7d) |  |  |
| 5 | **METAL WORK** |  | 2026-11-09 → 2026-11-16 (+7d) |  |  |
| PG-H-PR-LL-MT-DL-20_R | Curtain Wall(Remaining) |  | 2026-11-09 → 2026-11-16 (+7d) |  | 1.5d → -2.2d |
| 9 | **ELECTRICAL WORK** |  | 2026-11-08 → 2026-11-15 (+7d) |  |  |
| PG-H-PR-LL-EL-DL-30_R | Site Lighting Poles(Remaining) |  | 2026-11-08 → 2026-11-15 (+7d) |  | 7.9d → 4.15d |
| PG-H-PR-LL-EL-DL-40_R | Lighting Fixtures(Remaining) |  | 2026-11-08 → 2026-11-15 (+7d) |  | -1.95d → -5.65d |
| PG-H-PR-LL-EL-DL-10_R | Main Distribution Board(Remaining) |  | 2026-11-07 → 2026-11-14 (+7d) |  | 6.2d → 2.8d |
| PG-H-PR-LL-EL-DL-20_R | Power Panels (Pump, Street Light)(Remaining) |  | 2026-11-07 → 2026-11-14 (+7d) |  | 6.8d → 3.3d |
| PG-H-PR-LL-EL-DL-50_R | Grounding System Materials (Earth pit rod, LPS, etc)(Remaining) |  | 2026-11-07 → 2026-11-14 (+7d) |  | 5.3d → 2.05d |
| PG-H-PR-LL-EL-DL-60_R | Telecommunications & Data System Materials (Telephone outlet, CCTV, etc)(Remaining) |  | 2026-11-08 → 2026-11-15 (+7d) |  | 10.9d → 6.65d |
| PG-H-PR-LL-EL-DL-70_R | Security and Access Control System Materials(Remaining) |  | 2026-11-08 → 2026-11-15 (+7d) |  | 15.6d → 10.15d |
| PG-H-PR-LL-EL-DL-80_R | Fire Alarm System Materials(Remaining) |  | 2026-11-08 → 2026-11-15 (+7d) |  | 11.8d → 7.4d |
| 2 | **SHORT LEAD ITEMS** |  | 2026-11-08 → 2026-11-15 (+7d) |  |  |
| 3 | **DELIVERY TO SITE** |  | 2026-11-08 → 2026-11-15 (+7d) |  |  |
| 1 | **EXTERNAL / LANDSCAPE WORK** |  | 2026-11-08 → 2026-11-15 (+7d) |  |  |
| PG-H-PR-SL-LS-DL-60_R | Traffic Signages(Remaining) |  | 2026-11-08 → 2026-11-15 (+7d) |  | -9.8d → -13.2d |
| PG-H-PR-SL-LS-DL-70_R | Trees(Remaining) |  | 2026-11-08 → 2026-11-15 (+7d) |  | -9.8d → -13.2d |
| PG-H-PR-SL-LS-DL-80_R | Lawn(Remaining) |  | 2026-11-08 → 2026-11-15 (+7d) |  | 4.5d → 0.1d |
| CO | **CONSTRUCTION STAGE** |  | 2026-12-27 → 2026-12-30 (+3d) |  |  |
| EX.SIT | **PLAYGROUND AND LANDSCAPING WORKS** |  | 2026-12-27 → 2026-12-30 (+3d) |  |  |
| 1 | **PLAYGROUND WORKS** |  | 2026-11-26 → 2026-12-01 (+5d) |  |  |
| FP | **FOOTBALL PLAYGROUND WORKS** |  | 2026-11-26 → 2026-12-01 (+5d) |  |  |
| PG-H-CON-EX-FB-40_R | Tartan flooring(Remaining) |  | 2026-11-11 → 2026-11-18 (+7d) |  | 17.4d → 13.4d |
| PG-H-CON-EX-FB-90 | Turfing / Seeding Works |  | 2026-11-11 → 2026-11-18 (+7d) |  | 17.4d → 13.4d |
| PG-H-CON-EX-FB-60 | Goal Post Installation & Alignment |  | 2026-11-15 → 2026-11-22 (+7d) |  | 17.4d → 13.4d |
| PG-H-CON-EX-FB-110 | Install Playground Benches |  | 2026-11-18 → 2026-11-25 (+7d) |  | 17.4d → 13.4d |
| PG-H-CON-EX-FB-120 | Installation of Lighting System |  | 2026-11-09 → 2026-11-16 (+7d) |  | 17.4d → 13.4d |
| PG-H-CON-EX-FB-100 | Markings and Signages |  | 2026-11-26 → 2026-12-01 (+5d) | 30% → 50% | 17.4d → 13.4d |
| GN.SI | **GENERAL SITE WORKS** |  | 2026-12-27 → 2026-12-30 (+3d) |  |  |
| 5 | **MECHANICAL WORK** |  | 2026-11-23 → 2026-11-30 (+7d) |  |  |
| 2 | **STORM WATER AND UTILITY WORK** |  | 2026-11-22 → 2026-11-29 (+7d) |  |  |
| PG-H-CON-EX-GN-M-20_R | Bedding preparation & level control(Remaining) |  | 2026-11-07 → 2026-11-14 (+7d) |  | -8.2d → -11.45d |
| PG-H-CON-EX-GN-M-30 | Manhole Installation |  | 2026-11-08 → 2026-11-15 (+7d) |  | -8.2d → -11.45d |
| PG-H-CON-EX-GN-M-40 | 150 mm uPVC pipe laying & jointing |  | 2026-11-09 → 2026-11-16 (+7d) |  | -8.2d → -11.45d |
| PG-H-CON-EX-GN-M-50 | Concrete Encasement | 2026-11-09 → 2026-11-16 (+7d) | 2026-11-12 → 2026-11-19 (+7d) |  | -8.2d → -11.45d |

| ID | Task | Start | Finish | Complete | Total float |
| --- | --- | --- | --- | --- | --- |
| PG-H-CON-EX-GN-M-60 | Backfilling & Compaction | 2026-11-12 → 2026-11-19 (+7d) | 2026-11-16 → 2026-11-23 (+7d) |  | -8.2d → -11.45d |
| PG-H-CON-EX-GN-M-70 | Surface Reinstatement & Civil Works | 2026-11-17 → 2026-11-24 (+7d) | 2026-11-22 → 2026-11-29 (+7d) |  | -8.2d → -11.45d |
| IR.SY | **IRRIGATION SYSTEM WORKS** |  | 2026-11-17 → 2026-11-24 (+7d) |  |  |
| PG-H-CON-EX-GN-M-80_R | Installation of HDPE Irrigation Pipe Network with Gate Valve and Box(Remaining) |  | 2026-11-16 → 2026-11-23 (+7d) |  | -8.2d → -11.45d |
| PG-H-CON-EX-GN-M-90 | Installation of Irrigation Control System |  | 2026-11-16 → 2026-11-23 (+7d) |  | -8.2d → -11.45d |
| PG-H-CON-EX-GN-M-100 | Installation of Bubblers and Sprinklers |  | 2026-11-17 → 2026-11-24 (+7d) |  | -8.2d → -11.45d |
| 1 | **FIRE PROTECTION SYSTEM** |  | 2026-11-23 → 2026-11-30 (+7d) |  |  |
| PG-H-CON-EX-GN-M-110 | Fire Extinguisher Installation |  | 2026-11-23 → 2026-11-30 (+7d) |  | -8.2d → -11.45d |
| 2 | **ELECTRICAL WORK** |  | 2026-12-12 → 2026-12-16 (+4d) |  |  |
| 1 | **POWER, LIGHTING & GROUNDING** |  | 2026-11-30 → 2026-12-06 (+6d) |  |  |
| PG-H-CON-EX-GN-E-30 | Lightning Protection System (LPS) |  | 2026-11-24 → 2026-12-01 (+7d) | 70% → 75% | -8.2d → -11.45d |
| PG-H-CON-EX-GN-E-70 | Wiring Works |  | 2026-11-29 → 2026-12-05 (+6d) | 70% → 75% | -8.2d → -11.45d |
| PG-H-CON-EX-GN-E-40 | KWH Meter and MDB Installation |  | 2026-11-24 → 2026-12-01 (+7d) | 70% → 75% | -8.2d → -11.45d |
| PG-H-CON-EX-GN-E-50 | Power Panels and Distribution Boards |  | 2026-11-26 → 2026-12-02 (+6d) | 70% → 75% | -8.2d → -11.45d |
| PG-H-CON-EX-GN-E-60 | Site Lighting Poles Installation |  | 2026-11-28 → 2026-12-03 (+5d) | 70% → 75% | -8.2d → -11.45d |
| PG-H-CON-EX-GN-E-80 | Lighting Fixtures with outlets Installation |  | 2026-11-30 → 2026-12-06 (+6d) | 70% → 75% | -8.2d → -11.45d |
| 2 | **ELV SYSTEMS (TELECOM, DATA, AV & CCTV)** |  | 2026-12-08 → 2026-12-13 (+5d) |  |  |
| PG-H-CON-EX-GN-E-130 | CCTV Rack / Cabinet Installation |  | 2026-12-06 → 2026-12-10 (+4d) | 70% → 75% | -7.7d → -11.45d |
| PG-H-CON-EX-GN-E-140 | NVR and CCTV Monitor Installation |  | 2026-12-07 → 2026-12-12 (+5d) | 70% → 75% | -7.7d → -11.45d |
| PG-H-CON-EX-GN-E-150 | IP Camera Installation |  | 2026-12-08 → 2026-12-13 (+5d) | 70% → 75% | -7.7d → -11.45d |
| PG-H-CON-EX-GN-E-90 | ELV Containment & Cabling Works |  | 2026-12-01 → 2026-12-07 (+6d) | 70% → 75% | -8.2d → -11.45d |
| PG-H-CON-EX-GN-E-100 | Fiber Optic Pull Box Installation |  | 2026-12-02 → 2026-12-07 (+5d) | 70% → 75% | -7.7d → -11.45d |
| PG-H-CON-EX-GN-E-110 | Telephone and Data Outlet Installation |  | 2026-12-03 → 2026-12-08 (+5d) | 70% → 75% | -7.7d → -11.45d |
| PG-H-CON-EX-GN-E-120 | Telecom Equipment and AV HDMI Installation |  | 2026-12-05 → 2026-12-09 (+4d) | 70% → 75% | -7.7d → -11.45d |
| 3 | **FIRE ALARM SYSTEM** |  | 2026-12-12 → 2026-12-16 (+4d) |  |  |
| PG-H-CON-EX-GN-E-160 | Fire Alarm Containment & Cabling |  | 2026-12-03 → 2026-12-09 (+6d) | 70% → 75% | -8.2d → -11.45d |
| PG-H-CON-EX-GN-E-170 | Fire Alarm Control Panel (FACP) Installation |  | 2026-12-06 → 2026-12-12 (+6d) | 70% → 75% | -8.2d → -11.45d |
| PG-H-CON-EX-GN-E-180 | Initiating Devices (Detectors & Manual Pull Station) |  | 2026-12-09 → 2026-12-14 (+5d) | 70% → 75% | -8.2d → -11.45d |
| PG-H-CON-EX-GN-E-190 | Notification Appliances (Strobe with Sounder) |  | 2026-12-12 → 2026-12-16 (+4d) | 70% → 75% | -8.2d → -11.45d |
| 3 | **PARKING WORK** |  | 2026-12-12 → 2026-12-16 (+4d) |  |  |
| PG-H-CON-EX-GN-PR-10 | Installlation of Parking Accessories |  | 2026-12-09 → 2026-12-14 (+5d) |  | -7.7d → -11.45d |
| PG-H-CON-EX-GN-PR-30 | Marking & Signages |  | 2026-12-12 → 2026-12-16 (+4d) |  | -8.2d → -11.45d |
| 4 | **SERVICE CONNECTION** |  | 2026-12-27 → 2026-12-30 (+3d) |  |  |
| PG-H-CON-EX-GN-SC-20 | HDPE Pipe Laying & Valve Installation |  | 2026-12-13 → 2026-12-17 (+4d) |  | -8.2d → -11.45d |
| PG-H-CON-EX-GN-SC-40 | Backfilling |  | 2026-12-27 → 2026-12-30 (+3d) |  | -8.2d → -11.45d |
| PG-H-CON-EX-GN-SC-30 | Connection to City Network | 2026-12-14 → 2026-12-17 (+3d) | 2026-12-22 → 2026-12-27 (+5d) |  | -8.2d → -11.45d |
| LS | **LANDSCAPING WORKS** |  | 2026-11-25 → 2026-12-01 (+6d) |  |  |
| HSP | **HARDSCAPE WORK** |  | 2026-11-25 → 2026-12-01 (+6d) |  |  |
| PG-H-CON-EX-LS-HS-40_R | Bike Path and Walking Path Construction(Remaining) |  | 2026-11-12 → 2026-11-18 (+6d) |  | -9.8d → -13.2d |
| PG-H-CON-EX-LS-HS-50_R | Install Recycled Precast Concrete Seats(Remaining) |  | 2026-11-14 → 2026-11-19 (+5d) |  | -9.8d → -13.2d |
| PG-H-CON-EX-LS-HS-60 | Install Recycled Precast Concrete Trash Bins | 2026-11-14 → 2026-11-19 (+5d) | 2026-11-25 → 2026-12-01 (+6d) |  | -9.8d → -13.2d |
| SSP | **SOFTSCAPE WORK** |  | 2026-11-25 → 2026-12-01 (+6d) |  |  |
| PG-H-CON-EX-LS-SS-20_R | Lawn Area Preparation & Planting / Turfing(Remaining) |  | 2026-11-25 → 2026-12-01 (+6d) |  | -9.8d → -13.2d |
| PG-H-CON-EX-LS-SS-10 | Planting Trees |  | 2026-11-12 → 2026-11-18 (+6d) | 60% → 70% | -9.8d → -13.2d |
| B | **TOILET BUILDING WORKS** |  | 2026-11-19 → 2026-11-25 (+6d) |  |  |
| CVL | **CIVIL WORK** |  | 2026-11-18 → 2026-11-24 (+6d) |  |  |
| AR | **ARCHITECTURAL WORK** |  | 2026-11-18 → 2026-11-24 (+6d) |  |  |
| 1 | **GENERAL FINISHES** |  | 2026-11-18 → 2026-11-24 (+6d) |  |  |
| PG-H-CON-B-AR-GF-40 | Wall Paint |  | 2026-11-12 → 2026-11-19 (+7d) |  | -4.25d → -7.95d |
| PG-H-CON-B-AR-GF-50 | Epoxy Flooring |  | 2026-11-15 → 2026-11-22 (+7d) |  | -4.25d → -7.95d |
| PG-H-CON-B-AR-GF-60 | Install Doors & Windows |  | 2026-11-16 → 2026-11-23 (+7d) |  | -4.25d → -7.95d |
| PG-H-CON-B-AR-GF-80 | Lockers and Furniture Installation |  | 2026-11-18 → 2026-11-24 (+6d) | 70% → 80% | -4.25d → -7.95d |
| 3 | **ROOF FINISHES** |  | 2026-11-18 → 2026-11-24 (+6d) |  |  |
| PG-H-CON-B-AR-RF-30 | Steel ladder and Steel roof scupper Installation |  | 2026-11-18 → 2026-11-24 (+6d) | 20% → 40% | -4.25d → -7.95d |
| MEP | **MEP WORK** |  | 2026-11-19 → 2026-11-25 (+6d) |  |  |
| MEC | **MECANICAL WORKS** |  | 2026-11-19 → 2026-11-25 (+6d) |  |  |
| FF | **FIRE FIGHTING SYSTEM** | 2026-11-18 → 2026-11-24 (+6d) | 2026-11-19 → 2026-11-25 (+6d) |  |  |
| PG-H-CON-B-GF-FF-10 | Fire Extinguisher Installation | 2026-11-18 → 2026-11-24 (+6d) | 2026-11-19 → 2026-11-25 (+6d) |  | -4.25d → -7.95d |
| DS | **SEWER AND DRAINAGE SYSTEM** |  | 2026-11-10 → 2026-11-17 (+7d) |  |  |
| PG-H-CON-B-GF-DR-10 | Sewer and Drainge System Main Lines Installation |  | 2026-11-07 → 2026-11-12 A (+5d) | 85% → 100% | -4.25d → none |
| PG-H-CON-B-GF-DR-30 | Sanitaryware Installation (Final Fix) | 2026-11-08 → 2026-11-15 (+7d) | 2026-11-10 → 2026-11-17 (+7d) |  | -4.25d → -7.95d |
| HV | **HVAC SYSTEM** |  | 2026-11-07 → 2026-11-14 (+7d) |  |  |
| PG-H-CON-B-GF-AC-20 | Split AC, Grills & Diffuser Installation |  | 2026-11-07 → 2026-11-14 (+7d) |  | -4.25d → -7.95d |
| WS | **WATER SUPPLY SYSTEM** |  | 2026-11-08 → 2026-11-15 (+7d) |  |  |
| PG-H-CON-B-GF-WS-30 | Water Supply Accesories and Booster pump Installation |  | 2026-11-08 → 2026-11-15 (+7d) |  | -4.25d → -7.95d |
| ELC | **ELECTRICAL WORKS** |  | 2026-11-12 → 2026-11-19 (+7d) |  |  |
| PG-H-CON-B-GF-EL-20 | Electrical Light Fixtures Installation |  | 2026-11-10 → 2026-11-17 (+7d) |  | -4.25d → -7.95d |
| PG-H-CON-B-GF-EL-30 | Fire Alarm Devices Installation |  | 2026-11-11 → 2026-11-18 (+7d) |  | -4.25d → -7.95d |
| PG-H-CON-B-GF-EL-40 | Telecom & CCTV Devices Installation |  | 2026-11-11 → 2026-11-18 (+7d) |  | -4.25d → -7.95d |
| PG-H-CON-B-GF-EL-50 | Electrical & ELV Wiring Works |  | 2026-11-12 → 2026-11-19 (+7d) |  | -4.25d → -7.95d |

| ID | Task | Start | Finish | Complete | Total float |
| --- | --- | --- | --- | --- | --- |
| TE & CO | **PROJECT CLOSOUT** |  | 2026-12-28 → 2027-01-02 (+5d) |  |  |
| PG-H-PCL-20 | As-Built Drawings |  | 2026-12-03 → 2026-12-07 (+4d) | 65% → 75% | 5.9d → 2.7d |
| PG-H-PCL-10_R | Testing, Commessioning for All Systems(Remaining) |  | 2026-11-25 → 2026-12-01 (+6d) | 65% → 75% | -9.8d → -13.2d |
| PG-H-PCL-30 | Snag list Submission | 2026-11-25 → 2026-11-15 A (-10d) | 2026-12-05 → 2026-12-09 (+4d) | 0% → 20% | -9.8d → -13.2d |
| PG-H-PCL-40 | Snag list Closeout | 2026-12-05 → 2026-12-09 (+4d) | 2026-12-21 → 2026-12-26 (+5d) |  | -9.8d → -13.2d |
| PG-H-PCL-50 | Issuing Approvals | 2026-12-21 → 2026-12-26 (+5d) | 2026-12-24 → 2026-12-29 (+5d) |  | -9.8d → -13.2d |
| PG-H-PCL-60 | Handing Over | 2026-12-24 → 2026-12-29 (+5d) | 2026-12-28 → 2027-01-02 (+5d) |  | -9.8d → -13.2d |
| TABUK | **TABUK** |  | 2027-02-25 → 2027-03-04 (+7d) |  |  |
| PR | **PROCUREMENT** |  | 2026-11-10 → 2026-11-16 (+6d) |  |  |
| 1 | **LONG LEAD ITEMS** |  | 2026-11-10 → 2026-11-16 (+6d) |  |  |
| 4 | **DELIVERY TO SITE** |  | 2026-11-10 → 2026-11-16 (+6d) |  |  |
| 1 | **EXTERNAL / LANDSCAPE WORK** |  | 2026-11-08 → 2026-11-15 (+7d) |  |  |
| PG-T-PR-LL-LS-DL-20_R | Benches, Seats (Rectangular & Circular)(Remaining) |  | 2026-11-08 → 2026-11-15 (+7d) |  | 16.82d → 12.8d |
| 2 | **SPORTS & RECREATIONAL FACILITIES WORK** |  | 2026-11-08 → 2026-11-15 (+7d) |  |  |
| PG-T-PR-LL-SP-DL-40_R | Tartan Floor(Remaining) |  | 2026-11-08 → 2026-11-15 (+7d) |  | 16.9d → 14.3d |
| PG-T-PR-LL-SP-DL-10_R | Football Playground Materials (Flooring, goal post, nets, paints, etc)(Remaining) |  | 2026-11-08 → 2026-11-15 (+7d) |  | 24.6d → 20.6d |
| PG-T-PR-LL-SP-DL-20_R | Basketball Playground Materials (Flooring, basketball poll, nets, paints, etc)(Remaining) |  | 2026-11-08 → 2026-11-15 (+7d) |  | 18.5d → 15.9d |
| PG-T-PR-LL-SP-DL-30_R | Padel Playgound Materials (Fence, tempered glass, etc)(Remaining) |  | 2026-11-08 → 2026-11-15 (+7d) |  | 9.05d → 6.45d |
| PG-T-PR-LL-SP-DL-50 | Air Dome Materials |  | 2026-11-08 → 2026-11-15 (+7d) |  | -61d → -66.6d |
| 5 | **METAL WORK** |  | 2026-11-10 → 2026-11-16 (+6d) |  |  |
| PG-T-PR-LL-MT-DL-20_R | Curtain Wall(Remaining) |  | 2026-11-10 → 2026-11-16 (+6d) | 70% → 80% | 11.3d → 6.5d |
| 8 | **IRRIGATION WORK** |  | 2026-11-07 → 2026-11-14 (+7d) |  |  |
| PG-T-PR-LL-IR-DL-20_R | Irrigation Control System(Remaining) |  | 2026-11-07 → 2026-11-14 (+7d) |  | -15.2d → -19.45d |
| 9 | **ELECTRICAL WORK** |  | 2026-11-08 → 2026-11-15 (+7d) |  |  |
| PG-T-PR-LL-EL-DL-10_R | Main Distribution Board(Remaining) |  | 2026-11-08 → 2026-11-15 (+7d) |  | -5.1d → -9.35d |
| PG-T-PR-LL-EL-DL-20_R | Power Panels (Pump, Street Light)(Remaining) |  | 2026-11-08 → 2026-11-15 (+7d) |  | -4.1d → -8.35d |
| PG-T-PR-LL-EL-DL-30_R | Site Lighting Poles(Remaining) |  | 2026-11-08 → 2026-11-15 (+7d) |  | -2.7d → -6.95d |
| PG-T-PR-LL-EL-DL-40_R | Lighting Fixtures(Remaining) |  | 2026-11-08 → 2026-11-15 (+7d) |  | -0.7d → -4.95d |
| PG-T-PR-LL-EL-DL-50_R | Grounding System Materials (Earth pit rod, LPS, etc)(Remaining) |  | 2026-11-07 → 2026-11-14 (+7d) |  | -5.1d → -9.35d |
| PG-T-PR-LL-EL-DL-60_R | Telecommunications & Data System Materials (Telephone outlet, CCTV, etc)(Remaining) |  | 2026-11-08 → 2026-11-15 (+7d) |  | 4.7d → 0.45d |
| PG-T-PR-LL-EL-DL-70_R | Security and Access Control System Materials(Remaining) |  | 2026-11-08 → 2026-11-15 (+7d) |  | 9.8d → 4.35d |
| PG-T-PR-LL-EL-DL-80_R | Fire Alarm System Materials(Remaining) |  | 2026-11-08 → 2026-11-15 (+7d) |  | 5.6d → 1.2d |
| 2 | **SHORT LEAD ITEMS** |  | 2026-11-08 → 2026-11-15 (+7d) |  |  |
| 3 | **DELIVERY TO SITE** |  | 2026-11-08 → 2026-11-15 (+7d) |  |  |
| 1 | **EXTERNAL / LANDSCAPE WORK** |  | 2026-11-07 → 2026-11-14 (+7d) |  |  |
| PG-T-PR-SL-LS-DL-60_R | Traffic Signages(Remaining) |  | 2026-11-07 → 2026-11-14 (+7d) |  | 13.9d → 7.9d |
| PG-T-PR-SL-LS-DL-70_R | Trees(Remaining) |  | 2026-11-07 → 2026-11-14 (+7d) |  | 14.62d → 10.6d |
| PG-T-PR-SL-LS-DL-80_R | Lawn(Remaining) |  | 2026-11-07 → 2026-11-14 (+7d) |  | 19.82d → 15.3d |
| 5 | **METAL WORK** |  | 2026-11-08 → 2026-11-15 (+7d) |  |  |
| PG-T-PR-SL-MT-DL-10_R | Galvanized Steel Ladder(Remaining) |  | 2026-11-08 → 2026-11-15 (+7d) |  | 12.8d → 7.1d |
| PG-T-PR-SL-MT-DL-20_R | Galvanized Steel Roof Scupper(Remaining) |  | 2026-11-08 → 2026-11-15 (+7d) |  | 12.8d → 7.1d |
| PG-T-PR-SL-MT-DL-30_R | Galvanized Steel Cover with frame(Remaining) |  | 2026-11-08 → 2026-11-15 (+7d) |  | 12.8d → 7.1d |
| 8 | **IRRIGATION WORK** |  | 2026-11-07 → 2026-11-14 (+7d) |  |  |
| PG-T-PR-SL-IR-DL-10_R | Gate Valve including valve box(Remaining) |  | 2026-11-07 → 2026-11-14 (+7d) |  | -15.65d → -19.9d |
| PG-T-PR-SL-IR-DL-20_R | Bulbblers and Spreyers(Remaining) |  | 2026-11-07 → 2026-11-14 (+7d) |  | -15.05d → -19.3d |
| CO | **CONSTRUCTION STAGE** |  | 2027-02-13 → 2027-02-20 (+7d) |  |  |
| EX.SIT | **PLAYGROUND AND LANDSCAPING WORKS** |  | 2027-01-12 → 2027-01-17 (+5d) |  |  |
| 1 | **PLAYGROUND WORKS** |  | 2026-12-06 → 2026-12-09 (+3d) |  |  |
| FP | **FOOTBALL PLAYGROUND WORKS** |  | 2026-11-21 → 2026-11-25 (+4d) |  |  |
| PG-T-CON-EX-FB-90 | Turfing / Seeding Works |  | 2026-11-09 → 2026-11-16 (+7d) |  | 22.1d → 18.1d |
| PG-T-CON-EX-FB-120 | Installation of Lighting System |  | 2026-11-08 → 2026-11-15 (+7d) |  | 22.1d → 18.1d |
| PG-T-CON-EX-FB-60 | Goal Post Installation & Alignment |  | 2026-11-12 → 2026-11-19 (+7d) |  | 22.1d → 18.1d |
| PG-T-CON-EX-FB-110 | Install Playground Benches |  | 2026-11-15 → 2026-11-22 (+7d) |  | 22.1d → 18.1d |
| PG-T-CON-EX-FB-100 | Markings and Signages |  | 2026-11-21 → 2026-11-25 (+4d) | 50% → 70% | 22.1d → 18.1d |
| BP | **BASKETBALL PLAYGROUND WORKS** |  | 2026-11-28 → 2026-11-30 (+2d) |  |  |
| PG-T-CON-EX-BB-60 | Basketball Pole Installation & Alignment |  | 2026-11-11 → 2026-11-18 (+7d) |  | 16.9d → 14.3d |
| PG-T-CON-EX-BB-80 | Court Line Marking |  | 2026-11-09 → 2026-11-16 (+7d) |  | 16.9d → 14.3d |
| PG-T-CON-EX-BB-100 | Install Playground Benches |  | 2026-11-28 → 2026-11-30 (+2d) |  | 16.9d → 14.3d |
| PG-T-CON-EX-BB-90 | Backboard & Hoop Installation |  | 2026-11-25 → 2026-11-29 (+4d) | 30% → 50% | 16.9d → 14.3d |
| PP | **PADEL PLAYGROUND WORKS** |  | 2026-12-06 → 2026-12-09 (+3d) |  |  |
| PG-T-CON-EX-PD-30_R | Tartan Flooring Layers(Remaining) |  | 2026-11-24 → 2026-11-29 (+5d) |  | 9.05d → 6.45d |
| PG-T-CON-EX-PD-40 | Steel Structure & Fence Supports Installation |  | 2026-11-10 → 2026-11-17 (+7d) |  | 9.05d → 6.45d |
| PG-T-CON-EX-PD-60 | Chain Link Fence & Gates Installation |  | 2026-11-11 → 2026-11-18 (+7d) |  | 9.05d → 6.45d |
| PG-T-CON-EX-PD-80 | Install Playground Benches |  | 2026-12-06 → 2026-12-09 (+3d) |  | 9.05d → 6.45d |
| PG-T-CON-EX-PD-50 | Tempered Glass Installation |  | 2026-11-22 → 2026-11-28 (+6d) | 50% → 60% | 9.05d → 6.45d |
| PG-T-CON-EX-PD-70 | Court Accessories Installation |  | 2026-12-03 → 2026-12-07 (+4d) | 50% → 60% | 9.05d → 6.45d |
| GN.SI | **GENERAL SITE WORKS** |  | 2027-01-12 → 2027-01-17 (+5d) |  |  |
| 5 | **MECHANICAL WORK** |  | 2026-11-28 → 2026-12-03 (+5d) |  |  |
| 2 | **STORM WATER AND UTILITY WORK** |  | 2026-11-22 → 2026-11-28 (+6d) |  |  |
| PG-T-CON-EX-GN-M-30 | Manhole Installation |  | 2026-11-07 → 2026-11-14 (+7d) | 80% → 85% | -23d → -26.6d |

| ID | Task | Start | Finish | Complete | Total float |
| --- | --- | --- | --- | --- | --- |
| PG-T-CON-EX-GN-M-40 | 150 mm uPVC pipe laying & jointing |  | 2026-11-09 → 2026-11-15 (+6d) | 70% → 80% | -23d → -26.6d |
| PG-T-CON-EX-GN-M-50 | Concrete Encasement | 2026-11-09 → 2026-11-15 (+6d) | 2026-11-12 → 2026-11-18 (+6d) |  | -23d → -26.6d |
| PG-T-CON-EX-GN-M-60 | Backfilling & Compaction | 2026-11-12 → 2026-11-18 (+6d) | 2026-11-16 → 2026-11-22 (+6d) |  | -23d → -26.6d |
| PG-T-CON-EX-GN-M-70 | Surface Reinstatement & Civil Works | 2026-11-17 → 2026-11-23 (+6d) | 2026-11-22 → 2026-11-28 (+6d) |  | -23d → -26.6d |
| IR.SY | **IRRIGATION SYSTEM WORKS** |  | 2026-11-17 → 2026-11-23 (+6d) |  |  |
| PG-T-CON-EX-GN-M-80_R | Installation of HDPE Irrigation Pipe Network with Gate Valve and Box(Remaining) |  | 2026-11-16 → 2026-11-22 (+6d) |  | -23d → -26.6d |
| PG-T-CON-EX-GN-M-100 | Installation of Bubblers and Sprinklers |  | 2026-11-17 → 2026-11-23 (+6d) |  | -23d → -26.6d |
| PG-T-CON-EX-GN-M-90 | Installation of Irrigation Control System |  | 2026-11-16 → 2026-11-23 (+7d) |  | -23d → -26.6d |
| 1 | **FIRE PROTECTION SYSTEM** | 2026-11-22 → 2026-11-28 (+6d) | 2026-11-28 → 2026-12-03 (+5d) |  |  |
| PG-T-CON-EX-GN-M-110 | Fire Extinguisher Installation | 2026-11-22 → 2026-11-28 (+6d) | 2026-11-28 → 2026-12-03 (+5d) |  | -23d → -26.6d |
| 2 | **ELECTRICAL WORK** |  | 2026-12-22 → 2026-12-27 (+5d) |  |  |
| 1 | **POWER, LIGHTING & GROUNDING** |  | 2026-12-10 → 2026-12-16 (+6d) |  |  |
| PG-T-CON-EX-GN-E-30 | Lightning Protection System (LPS) |  | 2026-11-29 → 2026-12-05 (+6d) |  | -23d → -26.6d |
| PG-T-CON-EX-GN-E-40 | KWH Meter and MDB Installation |  | 2026-11-30 → 2026-12-06 (+6d) |  | -23d → -26.6d |
| PG-T-CON-EX-GN-E-50 | Power Panels and Distribution Boards |  | 2026-12-01 → 2026-12-07 (+6d) |  | -23d → -26.6d |
| PG-T-CON-EX-GN-E-60 | Site Lighting Poles Installation |  | 2026-12-02 → 2026-12-09 (+7d) |  | -23d → -26.6d |
| PG-T-CON-EX-GN-E-70 | Wiring Works |  | 2026-12-03 → 2026-12-09 (+6d) |  | -23d → -26.6d |
| PG-T-CON-EX-GN-E-80 | Lighting Fixtures with outlets Installation | 2026-12-03 → 2026-12-09 (+6d) | 2026-12-10 → 2026-12-16 (+6d) |  | -23d → -26.6d |
| 2 | **ELV SYSTEMS (TELECOM, DATA, AV & CCTV)** |  | 2026-12-19 → 2026-12-24 (+5d) |  |  |
| PG-T-CON-EX-GN-E-100 | Fiber Optic Pull Box Installation |  | 2026-12-13 → 2026-12-19 (+6d) | 70% → 75% | -22.1d → -26.2d |
| PG-T-CON-EX-GN-E-110 | Telephone and Data Outlet Installation |  | 2026-12-14 → 2026-12-20 (+6d) | 70% → 75% | -22.1d → -26.2d |
| PG-T-CON-EX-GN-E-120 | Telecom Equipment and AV HDMI Installation |  | 2026-12-15 → 2026-12-21 (+6d) | 70% → 75% | -22.1d → -26.2d |
| PG-T-CON-EX-GN-E-130 | CCTV Rack / Cabinet Installation |  | 2026-12-16 → 2026-12-22 (+6d) | 70% → 75% | -22.1d → -26.2d |
| PG-T-CON-EX-GN-E-140 | NVR and CCTV Monitor Installation |  | 2026-12-19 → 2026-12-23 (+4d) | 70% → 75% | -22.1d → -26.2d |
| PG-T-CON-EX-GN-E-150 | IP Camera Installation |  | 2026-12-19 → 2026-12-24 (+5d) | 70% → 75% | -22.1d → -26.2d |
| PG-T-CON-EX-GN-E-90 | ELV Containment & Cabling Works |  | 2026-12-12 → 2026-12-17 (+5d) | 70% → 75% | -23d → -26.6d |
| 3 | **FIRE ALARM SYSTEM** |  | 2026-12-22 → 2026-12-27 (+5d) |  |  |
| PG-T-CON-EX-GN-E-160 | Fire Alarm Containment & Cabling |  | 2026-12-14 → 2026-12-20 (+6d) | 70% → 75% | -23d → -26.6d |
| PG-T-CON-EX-GN-E-170 | Fire Alarm Control Panel (FACP) Installation |  | 2026-12-17 → 2026-12-22 (+5d) | 70% → 75% | -23d → -26.6d |
| PG-T-CON-EX-GN-E-180 | Initiating Devices (Detectors & Manual Pull Station) |  | 2026-12-20 → 2026-12-24 (+4d) | 70% → 75% | -23d → -26.6d |
| PG-T-CON-EX-GN-E-190 | Notification Appliances (Strobe with Sounder) |  | 2026-12-22 → 2026-12-27 (+5d) | 70% → 75% | -23d → -26.6d |
| 3 | **PARKING WORK** |  | 2026-12-22 → 2026-12-27 (+5d) |  |  |
| PG-T-CON-EX-GN-PR-30 | Marking & Signages |  | 2026-12-22 → 2026-12-27 (+5d) |  | -23d → -26.6d |
| 4 | **SERVICE CONNECTION** |  | 2027-01-12 → 2027-01-17 (+5d) |  |  |
| PG-T-CON-EX-GN-SC-20 | HDPE Pipe Laying & Valve Installation |  | 2026-12-22 → 2026-12-27 (+5d) |  | -23d → -26.6d |
| PG-T-CON-EX-GN-SC-30 | Connection to City Network | 2026-12-23 → 2026-12-27 (+4d) | 2027-01-03 → 2027-01-07 (+4d) |  | -23d → -26.6d |
| PG-T-CON-EX-GN-SC-40 | Backfilling | 2027-01-04 → 2027-01-07 (+3d) | 2027-01-12 → 2027-01-17 (+5d) |  | -23d → -26.6d |
| LS | **LANDSCAPING WORKS** |  | 2026-11-14 → 2026-11-19 (+5d) |  |  |
| HSP | **HARDSCAPE WORK** |  | 2026-11-14 → 2026-11-19 (+5d) |  |  |
| PG-T-CON-EX-LS-HS-50_R | Install Recycled Precast Concrete Seats(Remaining) |  | 2026-11-10 → 2026-11-17 (+7d) |  | 14.62d → 10.6d |
| PG-T-CON-EX-LS-HS-20_R | Interlock Tiles Grey Scale with Black Marble Chips(Remaining) |  | 2026-11-07 → 2026-11-14 (+7d) |  | 14.62d → 10.6d |
| PG-T-CON-EX-LS-HS-60 | Install Recycled Precast Concrete Trash Bins |  | 2026-11-14 → 2026-11-19 (+5d) | 70% → 75% | 14.62d → 10.6d |
| SSP | **SOFTSCAPE WORK** |  | 2026-11-14 → 2026-11-19 (+5d) |  |  |
| PG-T-CON-EX-LS-SS-20_R | Lawn Area Preparation & Planting / Turfing(Remaining) |  | 2026-11-14 → 2026-11-19 (+5d) |  | 14.62d → 10.6d |
| PG-T-CON-EX-LS-SS-10 | Planting Trees |  | 2026-11-09 → 2026-11-16 (+7d) |  | 14.62d → 10.6d |
| AD | **AIR DOME CONSTRUCTION** |  | 2027-02-13 → 2027-02-20 (+7d) |  |  |
| 1 | **CIVIL WORK** |  | 2026-11-25 → 2026-12-02 (+7d) |  |  |
| PG-T-CON-EX-AD-CL-70 | Installation of Steel Cable Structural System | 2026-11-07 → 2026-11-14 (+7d) | 2026-11-16 → 2026-11-23 (+7d) |  | -61d → -66.6d |
| PG-T-CON-EX-AD-CL-80 | Installation of Membrane System | 2026-11-17 → 2026-11-24 (+7d) | 2026-11-25 → 2026-12-02 (+7d) |  | -61d → -66.6d |
| 2 | **ARCHITECTURAL WORK** | 2027-01-16 → 2027-01-23 (+7d) | 2027-02-13 → 2027-02-20 (+7d) |  |  |
| PG-T-CON-EX-AD-AR-10 | Installation of Thermal Insulation System | 2027-01-16 → 2027-01-23 (+7d) | 2027-01-23 → 2027-01-30 (+7d) |  | -61d → -66.6d |
| PG-T-CON-EX-AD-AR-40 | Final Fixing of Accessories & Finishes | 2027-01-24 → 2027-01-31 (+7d) | 2027-01-31 → 2027-02-07 (+7d) |  | -61d → -66.6d |
| PG-T-CON-EX-AD-AR-20 | Installation of Doors & Access Systems | 2027-02-01 → 2027-02-08 (+7d) | 2027-02-07 → 2027-02-14 (+7d) |  | -61d → -66.6d |
| PG-T-CON-EX-AD-AR-30 | Installation of Logo | 2027-02-08 → 2027-02-15 (+7d) | 2027-02-13 → 2027-02-20 (+7d) |  | -61d → -66.6d |
| 3 | **MECHANICAL WORK** | 2026-11-26 → 2026-12-03 (+7d) | 2026-12-22 → 2026-12-29 (+7d) |  |  |
| PG-T-CON-EX-AD-ME-10 | Installation of Main Air Package Units | 2026-11-26 → 2026-12-03 (+7d) | 2026-12-01 → 2026-12-08 (+7d) |  | -61d → -66.6d |
| PG-T-CON-EX-AD-ME-20 | Installation of Backup Air Package Unit | 2026-12-02 → 2026-12-09 (+7d) | 2026-12-07 → 2026-12-14 (+7d) |  | -61d → -66.6d |
| PG-T-CON-EX-AD-ME-30 | Installation of Complete HVAC System | 2026-12-16 → 2026-12-23 (+7d) | 2026-12-22 → 2026-12-29 (+7d) |  | -60d → -65.6d |
| 4 | **ELECTRICAL WORK** | 2026-12-08 → 2026-12-15 (+7d) | 2027-01-14 → 2027-01-21 (+7d) |  |  |
| PG-T-CON-EX-AD-EL-10 | Installation of Electrical Boxes & MDBs | 2026-12-08 → 2026-12-15 (+7d) | 2026-12-15 → 2026-12-22 (+7d) |  | -61d → -66.6d |
| PG-T-CON-EX-AD-EL-20 | Installation of Lighting System | 2026-12-16 → 2026-12-23 (+7d) | 2026-12-23 → 2026-12-30 (+7d) |  | -61d → -66.6d |
| PG-T-CON-EX-AD-EL-30 | Electrical Connections to Main Power Source (Excluding kWh Meter) | 2026-12-24 → 2026-12-31 (+7d) | 2026-12-29 → 2027-01-05 (+7d) |  | -61d → -66.6d |
| PG-T-CON-EX-AD-EL-40 | Installation of Backup Generator | 2026-12-30 → 2027-01-06 (+7d) | 2027-01-05 → 2027-01-12 (+7d) |  | -61d → -66.6d |
| PG-T-CON-EX-AD-EL-50 | Installation of Smart Dome System | 2027-01-06 → 2027-01-13 (+7d) | 2027-01-14 → 2027-01-21 (+7d) |  | -61d → -66.6d |
| B | **TOILET BUILDING WORKS** |  | 2026-11-11 → 2026-11-17 (+6d) |  |  |
| CVL | **CIVIL WORK** |  | 2026-11-10 → 2026-11-16 (+6d) |  |  |
| AR | **ARCHITECTURAL WORK** |  | 2026-11-10 → 2026-11-16 (+6d) |  |  |
| 3 | **ROOF FINISHES** |  | 2026-11-10 → 2026-11-16 (+6d) |  |  |
| PG-T-CON-B-AR-RF-30 | Steel ladder and Steel roof scupper Installation |  | 2026-11-10 → 2026-11-16 (+6d) | 70% → 80% | 11.3d → 6.5d |
| MEP | **MEP WORK** |  | 2026-11-11 → 2026-11-17 (+6d) |  |  |

| ID | Task | Start | Finish | Complete | Total float |
| --- | --- | --- | --- | --- | --- |
| MEC | **MECANICAL WORKS** |  | 2026-11-11 → 2026-11-17 (+6d) |  |  |
| FF | **FIRE FIGHTING SYSTEM** |  | 2026-11-11 → 2026-11-17 (+6d) |  |  |
| PG-T-CON-B-GF-FF-10 | Fire Extinguisher Installation |  | 2026-11-11 → 2026-11-17 (+6d) |  | 12.3d → 7.75d |
| DS | **SEWER AND DRAINAGE SYSTEM** |  | 2026-11-08 → 2026-11-15 (+7d) |  |  |
| PG-T-CON-B-GF-DR-30 | Sanitaryware Installation (Final Fix) |  | 2026-11-08 → 2026-11-15 (+7d) |  | 12.5d → 6.8d |
| HV | **HVAC SYSTEM** |  | 2026-11-09 → 2026-11-16 (+7d) |  |  |
| PG-T-CON-B-GF-AC-20 | Split AC, Grills & Diffuser Installation |  | 2026-11-09 → 2026-11-16 (+7d) |  | 14.6d → 8.85d |
| WS | **WATER SUPPLY SYSTEM** |  | 2026-11-07 → 2026-11-14 (+7d) |  |  |
| PG-T-CON-B-GF-WS-30 | Water Supply Accesories and Booster pump Installation |  | 2026-11-07 → 2026-11-14 (+7d) |  | 12.5d → 6.8d |
| TE & CO | **PROJECT CLOSOUT** |  | 2027-02-25 → 2027-03-04 (+7d) |  |  |
| PG-T-PCL-10_R | Testing, Commessioning for All Systems(Remaining) |  | 2027-02-13 → 2027-02-20 (+7d) | 65% → 75% | -61d → -66.6d |
| PG-T-PCL-20 | As-Built Drawings |  | 2027-02-15 → 2027-02-22 (+7d) | 65% → 75% | -53.47d → -59.05d |
| PG-T-PCL-30 | Snag list Submission | 2027-02-14 → 2026-11-15 A (-91d) | 2027-02-15 → 2027-02-22 (+7d) | 0% → 20% | -61d → -66.6d |
| PG-T-PCL-40 | Snag list Closeout | 2027-02-16 → 2027-02-22 (+6d) | 2027-02-23 → 2027-03-02 (+7d) |  | -61d → -66.6d |
| PG-T-PCL-50 | Issuing Approvals | 2027-02-24 → 2027-03-02 (+6d) | 2027-02-24 → 2027-03-03 (+7d) |  | -61d → -66.6d |
| PG-T-PCL-60 | Handing Over | 2027-02-25 → 2027-03-03 (+6d) | 2027-02-25 → 2027-03-04 (+7d) |  | -61d → -66.6d |

## Version 9 (data date 2026-11-20, saved 2026-11-21, file 02. MLTX-02-003-UPS Level 5 - 2026-11-22.xer)

Last finish 2027-03-09 → 2027-03-15 (+6d). Complete tasks 1646 → 1658.

Changed:

| ID | Task | Start | Finish | Complete | Total float |
| --- | --- | --- | --- | --- | --- |
| MS | **MILESTONES** |  | 2027-03-09 → 2027-03-15 (+6d) |  |  |
| 1 | **GENERAL MILESTONES** |  | 2027-03-09 → 2027-03-15 (+6d) |  |  |
| PG-GN-MS-30_R | Project Durations(Remaining) |  |  | 81% → 85% | 0.97d → 0.88d |
| PG-GN-MS-20 | Project Completion Date | 2027-03-09 → 2027-03-15 (+6d) | 2027-03-09 → 2027-03-15 (+6d) |  | -70.2d → -75.9d |
| 2 | **CONTRACUAL MILESTONES** |  | 2027-03-09 → 2027-03-15 (+6d) |  |  |
| PG-IN-MS-30 | Completion of Toilet Building | 2026-11-25 → 2026-12-01 (+6d) | 2026-11-25 → 2026-12-01 (+6d) |  | 0.4d → 0.85d |
| PG-IN-MS-50 | Completion of Playground Works | 2026-12-09 → 2026-12-08 (-1d) | 2026-12-09 → 2026-12-08 (-1d) |  | 6.45d → 7.25d |
| PG-IN-MS-40 | Completion of Landscape Works | 2027-01-17 → 2027-01-09 (-8d) | 2027-01-17 → 2027-01-09 (-8d) |  | -26.6d → -19.25d |
| PG-IN-MS-60 | Substantial Completion - All Works | 2027-03-09 → 2027-03-15 (+6d) | 2027-03-09 → 2027-03-15 (+6d) |  | -70.2d → -75.9d |
| QASSIM | **QASSIM** |  | 2027-03-09 → 2027-03-15 (+6d) |  |  |
| ENG | **ENGINEERING** |  | 2026-11-17 → 2026-11-24 (+7d) |  |  |
| 1 | **SHOP DRAWINGS SUBMITTALS** |  | 2026-11-15 → 2026-11-22 (+7d) |  |  |
| 4 | **MECHANICAL DRAWINGS** |  | 2026-11-15 → 2026-11-22 (+7d) |  |  |
| 4 | **AIR DOME** |  | 2026-11-15 → 2026-11-22 (+7d) |  |  |
| PG-Q-EN-ME-SD-SB-100 | Air Package and HVAC System Drawings |  | 2026-11-15 → 2026-11-22 (+7d) |  | -70.2d → -75.9d |
| 2 | **SHOP DRAWINGS APPROVALS** |  | 2026-11-17 → 2026-11-24 (+7d) |  |  |
| 4 | **MECHANICAL DRAWINGS** |  | 2026-11-17 → 2026-11-24 (+7d) |  |  |
| 4 | **AIR DOME** |  | 2026-11-17 → 2026-11-24 (+7d) |  |  |
| PG-Q-EN-ME-SD-AP-100 | Air Package and HVAC System Drawings |  | 2026-11-17 → 2026-11-24 (+7d) |  | -70.2d → -75.9d |
| PR | **PROCUREMENT** |  | 2026-11-19 → 2026-11-26 (+7d) |  |  |
| 1 | **LONG LEAD ITEMS** |  | 2026-11-19 → 2026-11-26 (+7d) |  |  |
| 4 | **DELIVERY TO SITE** |  | 2026-11-19 → 2026-11-26 (+7d) |  |  |
| 1 | **EXTERNAL / LANDSCAPE WORK** |  | 2026-11-15 → 2026-11-22 (+7d) |  |  |
| PG-Q-PR-LL-LS-DL-20_R | Benches, Seats (Rectangular & Circular)(Remaining) |  | 2026-11-15 → 2026-11-22 (+7d) |  | 21.7d → 18d |
| 2 | **SPORTS & RECREATIONAL FACILITIES WORK** |  | 2026-11-19 → 2026-11-26 (+7d) |  |  |
| PG-Q-PR-LL-SP-DL-10_R | Football Playground Materials (Flooring, goal post, nets, paints, etc)(Remaining) |  | 2026-11-14 → 2026-11-21 (+7d) |  | 19.45d → 18.25d |
| PG-Q-PR-LL-SP-DL-20_R | Basketball Playground Materials (Flooring, basketball poll, nets, paints, etc)(Remaining) |  | 2026-11-14 → 2026-11-21 (+7d) |  | 17.85d → 17.05d |
| PG-Q-PR-LL-SP-DL-30_R | Padel Playgound Materials (Fence, tempered glass, etc)(Remaining) |  | 2026-11-14 → 2026-11-21 (+7d) |  | 12.05d → 14.15d |
| PG-Q-PR-LL-SP-DL-40_R | Tartan Floor(Remaining) |  | 2026-11-14 → 2026-11-11 A (-3d) | 95% → 100% | 14.85d → none |
| PG-Q-PR-LL-SP-DL-50 | Air Dome Materials |  | 2026-11-19 → 2026-11-26 (+7d) | 80% → 83% | -70.2d → -75.9d |
| 5 | **METAL WORK** |  | 2026-11-16 → 2026-11-23 (+7d) |  |  |
| PG-Q-PR-LL-MT-DL-20_R | Curtain Wall(Remaining) |  | 2026-11-16 → 2026-11-23 (+7d) |  | 6.65d → 2.6d |
| 8 | **IRRIGATION WORK** |  | 2026-11-14 → 2026-11-21 (+7d) |  |  |
| PG-Q-PR-LL-IR-DL-20_R | Irrigation Control System(Remaining) |  | 2026-11-14 → 2026-11-21 (+7d) |  | -7.95d → -5.55d |
| 9 | **ELECTRICAL WORK** |  | 2026-11-15 → 2026-11-22 (+7d) |  |  |
| PG-Q-PR-LL-EL-DL-10_R | Main Distribution Board(Remaining) |  | 2026-11-15 → 2026-11-22 (+7d) |  | 0.3d → -0.3d |
| PG-Q-PR-LL-EL-DL-20_R | Power Panels (Pump, Street Light)(Remaining) |  | 2026-11-14 → 2026-11-21 (+7d) |  | 1.2d → 0.6d |
| PG-Q-PR-LL-EL-DL-30_R | Site Lighting Poles(Remaining) |  | 2026-11-15 → 2026-11-10 A (-5d) | 90% → 100% | 1.7d → none |
| PG-Q-PR-LL-EL-DL-40_R | Lighting Fixtures(Remaining) |  | 2026-11-15 → 2026-11-22 (+7d) |  | 2.9d → 1.7d |
| PG-Q-PR-LL-EL-DL-50_R | Grounding System Materials (Earth pit rod, LPS, etc)(Remaining) |  | 2026-11-15 → 2026-11-22 (+7d) |  | -0.3d → -0.9d |
| PG-Q-PR-LL-EL-DL-60_R | Telecommunications & Data System Materials (Telephone outlet, CCTV, etc)(Remaining) |  | 2026-11-15 → 2026-11-22 (+7d) |  | 3.7d → 2.5d |
| PG-Q-PR-LL-EL-DL-70_R | Security and Access Control System Materials(Remaining) |  | 2026-11-15 → 2026-11-22 (+7d) |  | 7.25d → 6.3d |
| PG-Q-PR-LL-EL-DL-80_R | Fire Alarm System Materials(Remaining) |  | 2026-11-15 → 2026-11-22 (+7d) |  | 4.3d → 3.1d |
| 2 | **SHORT LEAD ITEMS** |  | 2026-11-15 → 2026-11-22 (+7d) |  |  |
| 3 | **DELIVERY TO SITE** |  | 2026-11-15 → 2026-11-22 (+7d) |  |  |
| 1 | **EXTERNAL / LANDSCAPE WORK** |  | 2026-11-15 → 2026-11-22 (+7d) |  |  |
| PG-Q-PR-SL-LS-DL-50_R | Thermoplastic pavement road marking(Remaining) |  | 2026-11-15 → 2026-11-22 (+7d) |  | 8.4d → 2.7d |
| PG-Q-PR-SL-LS-DL-60_R | Traffic Signages(Remaining) |  | 2026-11-15 → 2026-11-22 (+7d) |  | 8.4d → 2.7d |
| PG-Q-PR-SL-LS-DL-70_R | Trees(Remaining) |  | 2026-11-15 → 2026-11-22 (+7d) |  | 8.4d → 2.7d |
| PG-Q-PR-SL-LS-DL-80_R | Lawn(Remaining) |  | 2026-11-15 → 2026-11-22 (+7d) |  | 8.4d → 2.7d |
| 5 | **METAL WORK** |  | 2026-11-15 → 2026-11-22 (+7d) |  |  |
| PG-Q-PR-SL-MT-DL-10_R | Galvanized Steel Ladder(Remaining) |  | 2026-11-15 → 2026-11-22 (+7d) |  | 9.15d → 5.1d |
| PG-Q-PR-SL-MT-DL-20_R | Galvanized Steel Roof Scupper(Remaining) |  | 2026-11-15 → 2026-11-22 (+7d) |  | 9.15d → 5.1d |
| PG-Q-PR-SL-MT-DL-30_R | Galvanized Steel Cover with frame(Remaining) |  | 2026-11-15 → 2026-11-22 (+7d) |  | 9.15d → 5.1d |
| 8 | **IRRIGATION WORK** |  | 2026-11-15 → 2026-11-22 (+7d) |  |  |
| PG-Q-PR-SL-IR-DL-10_R | Gate Valve including valve box(Remaining) |  | 2026-11-15 → 2026-11-22 (+7d) |  | -7.55d → -5.15d |
| PG-Q-PR-SL-IR-DL-20_R | Bulbblers and Spreyers(Remaining) |  | 2026-11-15 → 2026-11-22 (+7d) |  | -8.45d → -6.05d |
| 9 | **ELECTRICAL WORK** |  | 2026-11-15 → 2026-11-22 (+7d) |  |  |
| PG-Q-PR-SL-EL-DL-10_R | Wiring Devices Materials(Remaining) |  | 2026-11-15 → 2026-11-22 (+7d) |  | 2.3d → 1.1d |
| 10 | **FIRE FIGHTING WORK** |  | 2026-11-15 → 2026-11-22 (+7d) |  |  |
| PG-Q-PR-SL-FF-DL-10_R | Fire Extinguishers(Remaining) |  | 2026-11-15 → 2026-11-22 (+7d) |  | -2d → -2.6d |
| CO | **CONSTRUCTION STAGE** |  | 2027-02-17 → 2027-02-24 (+7d) |  |  |
| EX.SIT | **PLAYGROUND AND LANDSCAPING WORKS** |  | 2027-01-11 → 2026-12-31 (-11d) |  |  |
| 1 | **PLAYGROUND WORKS** |  | 2026-12-02 → 2026-11-30 (-2d) |  |  |
| FP | **FOOTBALL PLAYGROUND WORKS** |  | 2026-11-26 → 2026-11-28 (+2d) |  |  |
| PG-Q-CON-EX-FB-90 | Turfing / Seeding Works |  | 2026-11-17 → 2026-11-23 (+6d) | 80% → 90% | 17d → 16.8d |
| PG-Q-CON-EX-FB-120 | Installation of Lighting System |  | 2026-11-15 → 2026-11-22 (+7d) |  | 17d → 16.8d |
| PG-Q-CON-EX-FB-110 | Install Playground Benches |  | 2026-11-24 → 2026-11-26 (+2d) | 80% → 90% | 17d → 16.8d |
| PG-Q-CON-EX-FB-60 | Goal Post Installation & Alignment |  | 2026-11-21 → 2026-11-24 (+3d) | 80% → 90% | 17d → 16.8d |
| PG-Q-CON-EX-FB-100 | Markings and Signages |  | 2026-11-26 → 2026-11-28 (+2d) | 70% → 90% | 17d → 16.8d |

| ID | Task | Start | Finish | Complete | Total float |
| --- | --- | --- | --- | --- | --- |
| BP | **BASKETBALL PLAYGROUND WORKS** |  | 2026-11-30 → 2026-11-28 (-2d) |  |  |
| PG-Q-CON-EX-BB-60 | Basketball Pole Installation & Alignment |  | 2026-11-22 → 2026-11-24 (+2d) | 80% → 90% | 14.85d → 16.3d |
| PG-Q-CON-EX-BB-80 | Court Line Marking |  | 2026-11-17 → 2026-11-22 (+5d) | 80% → 90% | 14.85d → 16.3d |
| PG-Q-CON-EX-BB-100 | Install Playground Benches |  | 2026-11-30 → 2026-11-28 (-2d) | 80% → 90% | 14.85d → 16.3d |
| PG-Q-CON-EX-BB-90 | Backboard & Hoop Installation |  |  | 80% → 90% | 14.85d → 16.3d |
| PP | **PADEL PLAYGROUND WORKS** |  | 2026-12-02 → 2026-11-30 (-2d) |  |  |
| PG-Q-CON-EX-PD-30_R | Tartan Flooring Layers(Remaining) |  | 2026-11-25 → 2026-11-17 A (-8d) | 90% → 100% | 12.05d → none |
| PG-Q-CON-EX-PD-40 | Steel Structure & Fence Supports Installation |  | 2026-11-18 → 2026-11-23 (+5d) | 80% → 90% | 12.05d → 14.15d |
| PG-Q-CON-EX-PD-60 | Chain Link Fence & Gates Installation |  | 2026-11-22 → 2026-11-25 (+3d) | 80% → 90% | 12.05d → 14.15d |
| PG-Q-CON-EX-PD-50 | Tempered Glass Installation |  | 2026-11-25 → 2026-11-26 (+1d) | 80% → 90% | 12.05d → 14.15d |
| PG-Q-CON-EX-PD-70 | Court Accessories Installation |  |  | 80% → 90% | 12.05d → 14.15d |
| PG-Q-CON-EX-PD-80 | Install Playground Benches |  | 2026-12-02 → 2026-11-30 (-2d) | 80% → 90% | 12.05d → 14.15d |
| GN.SI | **GENERAL SITE WORKS** |  | 2027-01-11 → 2026-12-31 (-11d) |  |  |
| 5 | **MECHANICAL WORK** |  | 2026-12-09 → 2026-12-06 (-3d) |  |  |
| 2 | **STORM WATER AND UTILITY WORK** |  | 2026-12-07 → 2026-12-03 (-4d) |  |  |
| PG-Q-CON-EX-GN-M-30_R | Manhole Installation(Remaining) |  | 2026-11-14 → 2026-11-21 (+7d) |  | -21.75d → -12.85d |
| PG-Q-CON-EX-GN-M-40 | 150 mm uPVC pipe laying & jointing |  | 2026-11-15 → 2026-11-22 (+7d) |  | -21.75d → -12.85d |
| PG-Q-CON-EX-GN-M-50 | Concrete Encasement | 2026-11-15 → 2026-11-03 A (-12d) | 2026-11-23 → 2026-11-25 (+2d) | 0% → 50% | -21.75d → -12.85d |
| PG-Q-CON-EX-GN-M-60 | Backfilling & Compaction | 2026-11-23 → 2026-11-10 A (-13d) | 2026-11-30 → 2026-11-29 (-1d) | 0% → 50% | -21.75d → -12.85d |
| PG-Q-CON-EX-GN-M-70 | Surface Reinstatement & Civil Works | 2026-11-30 → 2026-11-14 A (-16d) | 2026-12-07 → 2026-12-03 (-4d) | 0% → 50% | -21.75d → -12.85d |
| PG-Q-CON-EX-GN-M-90 | Installation of Irrigation Control System |  | 2026-11-30 → 2026-11-29 (-1d) |  | -21.75d → -12.85d |
| 1 | **FIRE PROTECTION SYSTEM** | 2026-12-07 → 2026-12-03 (-4d) | 2026-12-09 → 2026-12-06 (-3d) |  |  |
| PG-Q-CON-EX-GN-M-110 | Fire Extinguisher Installation | 2026-12-07 → 2026-12-03 (-4d) | 2026-12-09 → 2026-12-06 (-3d) |  | -21.75d → -12.85d |
| 2 | **ELECTRICAL WORK** |  | 2026-12-22 → 2026-12-17 (-5d) |  |  |
| 1 | **POWER, LIGHTING & GROUNDING** |  | 2026-12-14 → 2026-12-15 (+1d) |  |  |
| PG-Q-CON-EX-GN-E-60 | Site Lighting Poles Installation |  | 2026-12-13 → 2026-12-15 A (+2d) | 80% → 100% | -21.75d → none |
| PG-Q-CON-EX-GN-E-30 | Lightning Protection System (LPS) |  | 2026-12-10 → 2026-12-07 (-3d) |  | -21.75d → -12.85d |
| PG-Q-CON-EX-GN-E-70 | Wiring Works |  | 2026-12-14 → 2026-12-09 (-5d) |  | -21.75d → -12.85d |
| PG-Q-CON-EX-GN-E-80 | Lighting Fixtures with outlets Installation |  | 2026-12-14 → 2026-12-09 (-5d) |  | -21.75d → -12.85d |
| PG-Q-CON-EX-GN-E-40 | KWH Meter and MDB Installation |  | 2026-12-10 → 2026-12-07 (-3d) |  | -21.75d → -12.85d |
| PG-Q-CON-EX-GN-E-50 | Power Panels and Distribution Boards |  | 2026-12-12 → 2026-12-08 (-4d) |  | -21.75d → -12.85d |
| 2 | **ELV SYSTEMS (TELECOM, DATA, AV & CCTV)** |  | 2026-12-20 → 2026-12-15 (-5d) |  |  |
| PG-Q-CON-EX-GN-E-90 | ELV Containment & Cabling Works |  | 2026-12-15 → 2026-12-10 (-5d) |  | -21.75d → -12.85d |
| PG-Q-CON-EX-GN-E-100 | Fiber Optic Pull Box Installation |  | 2026-12-16 → 2026-12-12 (-4d) |  | -21d → -11.85d |
| PG-Q-CON-EX-GN-E-110 | Telephone and Data Outlet Installation |  | 2026-12-16 → 2026-12-12 (-4d) |  | -21d → -11.85d |
| PG-Q-CON-EX-GN-E-130 | CCTV Rack / Cabinet Installation |  | 2026-12-19 → 2026-12-14 (-5d) |  | -21d → -11.85d |
| PG-Q-CON-EX-GN-E-120 | Telecom Equipment and AV HDMI Installation |  | 2026-12-17 → 2026-12-13 (-4d) |  | -21d → -11.85d |
| PG-Q-CON-EX-GN-E-140 | NVR and CCTV Monitor Installation |  | 2026-12-20 → 2026-12-15 (-5d) |  | -21d → -11.85d |
| PG-Q-CON-EX-GN-E-150 | IP Camera Installation |  | 2026-12-20 → 2026-12-15 (-5d) |  | -21d → -11.85d |
| 3 | **FIRE ALARM SYSTEM** |  | 2026-12-22 → 2026-12-17 (-5d) |  |  |
| PG-Q-CON-EX-GN-E-160 | Fire Alarm Containment & Cabling |  | 2026-12-17 → 2026-12-13 (-4d) |  | -21.75d → -12.85d |
| PG-Q-CON-EX-GN-E-170 | Fire Alarm Control Panel (FACP) Installation |  | 2026-12-19 → 2026-12-14 (-5d) |  | -21.75d → -12.85d |
| PG-Q-CON-EX-GN-E-180 | Initiating Devices (Detectors & Manual Pull Station) |  | 2026-12-21 → 2026-12-16 (-5d) |  | -21.75d → -12.85d |
| PG-Q-CON-EX-GN-E-190 | Notification Appliances (Strobe with Sounder) |  | 2026-12-22 → 2026-12-17 (-5d) |  | -21.75d → -12.85d |
| 3 | **PARKING WORK** |  | 2026-12-22 → 2026-12-17 (-5d) |  |  |
| PG-Q-CON-EX-GN-PR-30 | Marking & Signages |  | 2026-12-22 → 2026-12-17 (-5d) | 75% → 80% | -21.75d → -12.85d |
| 4 | **SERVICE CONNECTION** |  | 2027-01-11 → 2026-12-31 (-11d) |  |  |
| PG-Q-CON-EX-GN-SC-20 | HDPE Pipe Laying & Valve Installation |  | 2026-12-23 → 2026-12-19 (-4d) |  | -21.75d → -12.85d |
| PG-Q-CON-EX-GN-SC-30 | Connection to City Network | 2026-12-23 → 2026-11-02 A (-51d) | 2027-01-02 → 2026-12-26 (-7d) | 0% → 30% | -21.75d → -12.85d |
| PG-Q-CON-EX-GN-SC-40 | Backfilling | 2027-01-02 → 2026-11-10 A (-53d) | 2027-01-11 → 2026-12-31 (-11d) | 0% → 30% | -21.75d → -12.85d |
| LS | **LANDSCAPING WORKS** |  | 2026-11-29 → 2026-12-05 (+6d) |  |  |
| HSP | **HARDSCAPE WORK** |  | 2026-11-29 → 2026-12-05 (+6d) |  |  |
| PG-Q-CON-EX-LS-HS-50_R | Install Recycled Precast Concrete Seats(Remaining) |  | 2026-11-24 → 2026-12-01 (+7d) |  | 15.3d → 10.3d |
| PG-Q-CON-EX-LS-HS-20_R | Interlock Tiles Grey Scale with Black Marble Chips(Remaining) |  | 2026-11-15 → 2026-11-22 (+7d) |  | 8.3d → 2.6d |
| PG-Q-CON-EX-LS-HS-60 | Install Recycled Precast Concrete Trash Bins |  | 2026-11-29 → 2026-12-05 (+6d) | 60% → 70% | 15.3d → 10.3d |
| SSP | **SOFTSCAPE WORK** |  | 2026-11-22 → 2026-11-29 (+7d) |  |  |
| PG-Q-CON-EX-LS-SS-20_R | Lawn Area Preparation & Planting / Turfing(Remaining) |  | 2026-11-18 → 2026-11-25 (+7d) |  | 8.3d → 2.6d |
| PG-Q-CON-EX-LS-SS-10 | Planting Trees |  | 2026-11-22 → 2026-11-29 (+7d) |  | 15.3d → 10.3d |
| AD | **AIR DOME CONSTRUCTION** |  | 2027-02-17 → 2027-02-24 (+7d) |  |  |
| 1 | **CIVIL WORK** |  | 2026-12-08 → 2026-12-15 (+7d) |  |  |
| PG-Q-CON-EX-AD-CL-70 | Installation of Steel Cable Structural System | 2026-11-17 → 2026-11-24 (+7d) | 2026-11-29 → 2026-12-06 (+7d) |  | -70.2d → -75.9d |
| PG-Q-CON-EX-AD-CL-80 | Installation of Membrane System | 2026-11-29 → 2026-12-06 (+7d) | 2026-12-08 → 2026-12-15 (+7d) |  | -70.2d → -75.9d |
| 2 | **ARCHITECTURAL WORK** |  | 2027-02-17 → 2027-02-24 (+7d) |  |  |
| PG-Q-CON-EX-AD-AR-10 | Installation of Thermal Insulation System |  | 2027-01-26 → 2027-02-02 (+7d) |  | -70.2d → -75.9d |
| PG-Q-CON-EX-AD-AR-40 | Final Fixing of Accessories & Finishes | 2027-01-26 → 2027-02-02 (+7d) | 2027-02-04 → 2027-02-11 (+7d) |  | -70.2d → -75.9d |
| PG-Q-CON-EX-AD-AR-20 | Installation of Doors & Access Systems | 2027-02-04 → 2027-02-11 (+7d) | 2027-02-11 → 2027-02-18 (+7d) |  | -70.2d → -75.9d |
| PG-Q-CON-EX-AD-AR-30 | Installation of Logo | 2027-02-11 → 2027-02-18 (+7d) | 2027-02-17 → 2027-02-24 (+7d) |  | -70.2d → -75.9d |
| 3 | **MECHANICAL WORK** | 2026-12-08 → 2026-12-15 (+7d) | 2026-12-27 → 2027-01-03 (+7d) |  |  |
| PG-Q-CON-EX-AD-ME-10 | Installation of Main Air Package Units | 2026-12-08 → 2026-12-15 (+7d) | 2026-12-14 → 2026-12-21 (+7d) |  | -70.2d → -75.9d |
| PG-Q-CON-EX-AD-ME-20 | Installation of Backup Air Package Unit | 2026-12-14 → 2026-12-21 (+7d) | 2026-12-20 → 2026-12-27 (+7d) |  | -70.2d → -75.9d |

| ID | Task | Start | Finish | Complete | Total float |
| --- | --- | --- | --- | --- | --- |
| PG-Q-CON-EX-AD-ME-30 | Installation of Complete HVAC System | 2026-12-20 → 2026-12-27 (+7d) | 2026-12-27 → 2027-01-03 (+7d) |  | -70.2d → -75.9d |
| 4 | **ELECTRICAL WORK** |  | 2027-01-21 → 2027-01-28 (+7d) |  |  |
| PG-Q-CON-EX-AD-EL-10 | Installation of Electrical Boxes & MDBs |  | 2026-11-18 → 2026-11-25 (+7d) |  | -49.2d → -54.9d |
| PG-Q-CON-EX-AD-EL-20 | Installation of Lighting System | 2026-11-18 → 2026-11-25 (+7d) | 2026-12-02 → 2026-12-09 (+7d) |  | -49.2d → -54.9d |
| PG-Q-CON-EX-AD-EL-30 | Electrical Connections to Main Power Source (Excluding kWh Meter) | 2026-12-27 → 2027-01-03 (+7d) | 2027-01-02 → 2027-01-09 (+7d) |  | -70.2d → -75.9d |
| PG-Q-CON-EX-AD-EL-40 | Installation of Backup Generator | 2027-01-02 → 2027-01-09 (+7d) | 2027-01-09 → 2027-01-16 (+7d) |  | -70.2d → -75.9d |
| PG-Q-CON-EX-AD-EL-50 | Installation of Smart Dome System | 2027-01-09 → 2027-01-16 (+7d) | 2027-01-21 → 2027-01-28 (+7d) |  | -70.2d → -75.9d |
| B | **TOILET BUILDING WORKS** |  | 2026-11-18 → 2026-11-25 (+7d) |  |  |
| CVL | **CIVIL WORK** |  | 2026-11-18 → 2026-11-25 (+7d) |  |  |
| AR | **ARCHITECTURAL WORK** |  | 2026-11-18 → 2026-11-25 (+7d) |  |  |
| 1 | **GENERAL FINISHES** |  | 2026-11-18 → 2026-11-25 (+7d) |  |  |
| PG-Q-CON-B-AR-GF-60 | Install Doors & Windows |  | 2026-11-17 → 2026-11-24 (+7d) |  | 6.55d → 2.5d |
| PG-Q-CON-B-AR-GF-70 | Lockers and Furniture Installation |  | 2026-11-18 → 2026-11-25 (+7d) |  | 6.55d → 2.5d |
| 3 | **ROOF FINISHES** |  | 2026-11-18 → 2026-11-25 (+7d) |  |  |
| PG-Q-CON-B-AR-RF-30 | Steel ladder and Steel roof scupper Installation |  | 2026-11-18 → 2026-11-25 (+7d) |  | 6.55d → 2.5d |
| MEP | **MEP WORK** |  | 2026-11-18 → 2026-11-25 (+7d) |  |  |
| MEC | **MECANICAL WORKS** |  | 2026-11-18 → 2026-11-25 (+7d) |  |  |
| FF | **FIRE FIGHTING SYSTEM** |  | 2026-11-18 → 2026-11-25 (+7d) |  |  |
| PG-Q-CON-B-GF-FF-10 | Fire Extinguisher Installation |  | 2026-11-18 → 2026-11-25 (+7d) |  | 6.55d → 2.5d |
| DS | **SEWER AND DRAINAGE SYSTEM** |  | 2026-11-16 → 2026-11-23 (+7d) |  |  |
| PG-Q-CON-B-GF-DR-30 | Sanitaryware Installation (Final Fix) |  | 2026-11-16 → 2026-11-23 (+7d) |  | 6.55d → 2.5d |
| HV | **HVAC SYSTEM** |  | 2026-11-14 → 2026-11-21 (+7d) |  |  |
| PG-Q-CON-B-GF-AC-20 | Split AC, Grills & Diffuser Installation |  | 2026-11-14 → 2026-11-21 (+7d) |  | 7.15d → 3.1d |
| TE & CO | **PROJECT CLOSOUT** |  | 2027-03-09 → 2027-03-15 (+6d) |  |  |
| PG-Q-PCL-10_R | Testing, Commessioning for All Systems(Remaining) |  | 2027-02-17 → 2027-02-24 (+7d) |  | -70.2d → -75.9d |
| PG-Q-PCL-20 | As-Built Drawings |  | 2027-02-18 → 2027-02-25 (+7d) |  | -58.85d → -64.85d |
| PG-Q-PCL-30 | Snag list Submission |  | 2027-02-21 → 2027-02-27 (+6d) | 20% → 30% | -70.2d → -75.9d |
| PG-Q-PCL-40 | Snag list Closeout | 2027-02-21 → 2027-02-27 (+6d) | 2027-03-04 → 2027-03-10 (+6d) |  | -70.2d → -75.9d |
| PG-Q-PCL-50 | Issuing Approvals | 2027-03-04 → 2027-03-10 (+6d) | 2027-03-08 → 2027-03-14 (+6d) |  | -70.2d → -75.9d |
| PG-Q-PCL-60 | Handing Over | 2027-03-08 → 2027-03-14 (+6d) | 2027-03-09 → 2027-03-15 (+6d) |  | -70.2d → -75.9d |
| HAIL | **HAIL** |  | 2027-01-02 → 2027-01-07 (+5d) |  |  |
| PR | **PROCUREMENT** |  | 2026-11-16 → 2026-11-23 (+7d) |  |  |
| 1 | **LONG LEAD ITEMS** |  | 2026-11-16 → 2026-11-23 (+7d) |  |  |
| 4 | **DELIVERY TO SITE** |  | 2026-11-16 → 2026-11-23 (+7d) |  |  |
| 5 | **METAL WORK** |  | 2026-11-16 → 2026-11-23 (+7d) |  |  |
| PG-H-PR-LL-MT-DL-20_R | Curtain Wall(Remaining) |  | 2026-11-16 → 2026-11-23 (+7d) |  | -2.2d → -7.4d |
| 9 | **ELECTRICAL WORK** |  | 2026-11-15 → 2026-11-22 (+7d) |  |  |
| PG-H-PR-LL-EL-DL-30_R | Site Lighting Poles(Remaining) |  | 2026-11-15 → 2026-11-09 A (-6d) | 90% → 100% | 4.15d → none |
| PG-H-PR-LL-EL-DL-40_R | Lighting Fixtures(Remaining) |  | 2026-11-15 → 2026-11-22 (+7d) |  | -5.65d → -9.45d |
| PG-H-PR-LL-EL-DL-10_R | Main Distribution Board(Remaining) |  | 2026-11-14 → 2026-11-21 (+7d) |  | 2.8d → 3.05d |
| PG-H-PR-LL-EL-DL-20_R | Power Panels (Pump, Street Light)(Remaining) |  | 2026-11-14 → 2026-11-21 (+7d) |  | 3.3d → 3.45d |
| PG-H-PR-LL-EL-DL-50_R | Grounding System Materials (Earth pit rod, LPS, etc)(Remaining) |  | 2026-11-14 → 2026-11-21 (+7d) |  | 2.05d → 2.45d |
| PG-H-PR-LL-EL-DL-60_R | Telecommunications & Data System Materials (Telephone outlet, CCTV, etc)(Remaining) |  | 2026-11-15 → 2026-11-22 (+7d) |  | 6.65d → 5.45d |
| PG-H-PR-LL-EL-DL-70_R | Security and Access Control System Materials(Remaining) |  | 2026-11-15 → 2026-11-22 (+7d) |  | 10.15d → 8.95d |
| PG-H-PR-LL-EL-DL-80_R | Fire Alarm System Materials(Remaining) |  | 2026-11-15 → 2026-11-22 (+7d) |  | 7.4d → 6.2d |
| 2 | **SHORT LEAD ITEMS** |  | 2026-11-15 → 2026-11-22 (+7d) |  |  |
| 3 | **DELIVERY TO SITE** |  | 2026-11-15 → 2026-11-22 (+7d) |  |  |
| 1 | **EXTERNAL / LANDSCAPE WORK** |  | 2026-11-15 → 2026-11-22 (+7d) |  |  |
| PG-H-PR-SL-LS-DL-60_R | Traffic Signages(Remaining) |  | 2026-11-15 → 2026-11-22 (+7d) |  | -13.2d → -18.8d |
| PG-H-PR-SL-LS-DL-70_R | Trees(Remaining) |  | 2026-11-15 → 2026-11-22 (+7d) |  | -13.2d → -18.8d |
| PG-H-PR-SL-LS-DL-80_R | Lawn(Remaining) |  | 2026-11-15 → 2026-11-22 (+7d) |  | 0.1d → -5.1d |
| CO | **CONSTRUCTION STAGE** |  | 2026-12-30 → 2026-12-24 (-6d) |  |  |
| EX.SIT | **PLAYGROUND AND LANDSCAPING WORKS** |  | 2026-12-30 → 2026-12-24 (-6d) |  |  |
| 1 | **PLAYGROUND WORKS** |  | 2026-12-01 → 2026-12-08 (+7d) |  |  |
| FP | **FOOTBALL PLAYGROUND WORKS** |  | 2026-12-01 → 2026-12-08 (+7d) |  |  |
| PG-H-CON-EX-FB-40_R | Tartan flooring(Remaining) |  | 2026-11-18 → 2026-11-12 A (-6d) | 90% → 100% | 13.4d → none |
| PG-H-CON-EX-FB-90 | Turfing / Seeding Works |  | 2026-11-18 → 2026-11-25 (+7d) |  | 13.4d → 7.4d |
| PG-H-CON-EX-FB-60 | Goal Post Installation & Alignment |  | 2026-11-22 → 2026-11-29 (+7d) |  | 13.4d → 7.4d |
| PG-H-CON-EX-FB-110 | Install Playground Benches |  | 2026-11-25 → 2026-12-02 (+7d) |  | 13.4d → 7.4d |
| PG-H-CON-EX-FB-120 | Installation of Lighting System |  | 2026-11-16 → 2026-11-23 (+7d) |  | 13.4d → 7.4d |
| PG-H-CON-EX-FB-100 | Markings and Signages |  | 2026-12-01 → 2026-12-08 (+7d) |  | 13.4d → 7.4d |
| GN.SI | **GENERAL SITE WORKS** |  | 2026-12-30 → 2026-12-24 (-6d) |  |  |
| 5 | **MECHANICAL WORK** |  | 2026-11-30 → 2026-12-01 (+1d) |  |  |
| 2 | **STORM WATER AND UTILITY WORK** |  | 2026-11-29 → 2026-11-30 (+1d) |  |  |
| PG-H-CON-EX-GN-M-20_R | Bedding preparation & level control(Remaining) |  | 2026-11-14 → 2026-11-21 (+7d) |  | -11.45d → -6.05d |
| PG-H-CON-EX-GN-M-30 | Manhole Installation |  | 2026-11-15 → 2026-11-22 (+7d) |  | -11.45d → -6.05d |
| PG-H-CON-EX-GN-M-40 | 150 mm uPVC pipe laying & jointing |  | 2026-11-16 → 2026-11-23 (+7d) |  | -11.45d → -6.05d |
| PG-H-CON-EX-GN-M-50 | Concrete Encasement | 2026-11-16 → 2026-11-03 A (-13d) | 2026-11-19 → 2026-11-24 (+5d) | 0% → 50% | -11.45d → -6.05d |
| PG-H-CON-EX-GN-M-60 | Backfilling & Compaction | 2026-11-19 → 2026-11-10 A (-9d) | 2026-11-23 → 2026-11-26 (+3d) | 0% → 50% | -11.45d → -6.05d |
| PG-H-CON-EX-GN-M-70 | Surface Reinstatement & Civil Works | 2026-11-24 → 2026-11-14 A (-10d) | 2026-11-29 → 2026-11-30 (+1d) | 0% → 50% | -11.45d → -6.05d |

| ID | Task | Start | Finish | Complete | Total float |
| --- | --- | --- | --- | --- | --- |
| IR.SY | **IRRIGATION SYSTEM WORKS** |  | 2026-11-24 → 2026-11-28 (+4d) |  |  |
| PG-H-CON-EX-GN-M-80_R | Installation of HDPE Irrigation Pipe Network with Gate Valve and Box(Remaining) |  | 2026-11-23 → 2026-11-26 (+3d) |  | -11.45d → -6.05d |
| PG-H-CON-EX-GN-M-90 | Installation of Irrigation Control System |  | 2026-11-23 → 2026-11-26 (+3d) |  | -11.45d → -6.05d |
| PG-H-CON-EX-GN-M-100 | Installation of Bubblers and Sprinklers |  | 2026-11-24 → 2026-11-28 (+4d) |  | -11.45d → -6.05d |
| 1 | **FIRE PROTECTION SYSTEM** |  | 2026-11-30 → 2026-12-01 (+1d) |  |  |
| PG-H-CON-EX-GN-M-110 | Fire Extinguisher Installation |  | 2026-11-30 → 2026-12-01 (+1d) |  | -11.45d → -6.05d |
| 2 | **ELECTRICAL WORK** |  | 2026-12-16 → 2026-12-15 (-1d) |  |  |
| 1 | **POWER, LIGHTING & GROUNDING** |  | 2026-12-06 → 2026-12-05 (-1d) |  |  |
| PG-H-CON-EX-GN-E-30 | Lightning Protection System (LPS) |  |  | 75% → 80% | -11.45d → -6.05d |
| PG-H-CON-EX-GN-E-70 | Wiring Works |  | 2026-12-05 → 2026-12-03 (-2d) | 75% → 80% | -11.45d → -6.05d |
| PG-H-CON-EX-GN-E-40 | KWH Meter and MDB Installation |  | 2026-12-01 → 2026-12-02 (+1d) | 75% → 80% | -11.45d → -6.05d |
| PG-H-CON-EX-GN-E-50 | Power Panels and Distribution Boards |  | 2026-12-02 → 2026-12-03 (+1d) | 75% → 80% | -11.45d → -6.05d |
| PG-H-CON-EX-GN-E-60 | Site Lighting Poles Installation |  | 2026-12-03 → 2026-11-14 A (-19d) | 75% → 100% | -11.45d → none |
| PG-H-CON-EX-GN-E-80 | Lighting Fixtures with outlets Installation |  | 2026-12-06 → 2026-12-05 (-1d) | 75% → 80% | -11.45d → -6.05d |
| 2 | **ELV SYSTEMS (TELECOM, DATA, AV & CCTV)** |  | 2026-12-13 → 2026-12-12 (-1d) |  |  |
| PG-H-CON-EX-GN-E-150 | IP Camera Installation |  | 2026-12-13 → 2026-12-12 (-1d) |  | -11.45d → -6.05d |
| PG-H-CON-EX-GN-E-90 | ELV Containment & Cabling Works |  | 2026-12-07 → 2026-12-06 (-1d) |  | -11.45d → -6.05d |
| 3 | **FIRE ALARM SYSTEM** |  | 2026-12-16 → 2026-12-15 (-1d) |  |  |
| PG-H-CON-EX-GN-E-160 | Fire Alarm Containment & Cabling |  | 2026-12-09 → 2026-12-08 (-1d) |  | -11.45d → -6.05d |
| PG-H-CON-EX-GN-E-170 | Fire Alarm Control Panel (FACP) Installation |  | 2026-12-12 → 2026-12-10 (-2d) |  | -11.45d → -6.05d |
| PG-H-CON-EX-GN-E-180 | Initiating Devices (Detectors & Manual Pull Station) |  | 2026-12-14 → 2026-12-13 (-1d) |  | -11.45d → -6.05d |
| PG-H-CON-EX-GN-E-190 | Notification Appliances (Strobe with Sounder) |  | 2026-12-16 → 2026-12-15 (-1d) |  | -11.45d → -6.05d |
| 3 | **PARKING WORK** |  | 2026-12-16 → 2026-12-15 (-1d) |  |  |
| PG-H-CON-EX-GN-PR-10 | Installlation of Parking Accessories |  | 2026-12-14 → 2026-12-13 (-1d) |  | -11.45d → -6.05d |
| PG-H-CON-EX-GN-PR-30 | Marking & Signages |  | 2026-12-16 → 2026-12-15 (-1d) |  | -11.45d → -6.05d |
| 4 | **SERVICE CONNECTION** |  | 2026-12-30 → 2026-12-24 (-6d) |  |  |
| PG-H-CON-EX-GN-SC-30 | Connection to City Network | 2026-12-17 → 2026-08-03 A (-136d) | 2026-12-27 → 2026-12-20 (-7d) | 0% → 60% | -11.45d → -6.05d |
| PG-H-CON-EX-GN-SC-20 | HDPE Pipe Laying & Valve Installation |  | 2026-12-17 → 2026-12-16 (-1d) |  | -11.45d → -6.05d |
| PG-H-CON-EX-GN-SC-40 | Backfilling |  | 2026-12-30 → 2026-12-24 (-6d) |  | -11.45d → -6.05d |
| LS | **LANDSCAPING WORKS** |  | 2026-12-01 → 2026-12-09 (+8d) |  |  |
| HSP | **HARDSCAPE WORK** |  | 2026-12-01 → 2026-12-09 (+8d) |  |  |
| PG-H-CON-EX-LS-HS-40_R | Bike Path and Walking Path Construction(Remaining) |  | 2026-11-18 A | 95% → 100% | -13.2d → none |
| PG-H-CON-EX-LS-HS-50_R | Install Recycled Precast Concrete Seats(Remaining) |  | 2026-11-19 → 2026-11-28 (+9d) |  | -13.2d → -18.8d |
| PG-H-CON-EX-LS-HS-60 | Install Recycled Precast Concrete Trash Bins | 2026-11-19 → 2026-11-28 (+9d) | 2026-12-01 → 2026-12-09 (+8d) |  | -13.2d → -18.8d |
| SSP | **SOFTSCAPE WORK** |  | 2026-12-01 → 2026-12-09 (+8d) |  |  |
| PG-H-CON-EX-LS-SS-20_R | Lawn Area Preparation & Planting / Turfing(Remaining) |  | 2026-12-01 → 2026-12-09 (+8d) |  | -13.2d → -18.8d |
| PG-H-CON-EX-LS-SS-10 | Planting Trees |  | 2026-11-18 → 2026-11-25 (+7d) |  | -13.2d → -18.8d |
| B | **TOILET BUILDING WORKS** |  | 2026-11-25 → 2026-12-01 (+6d) |  |  |
| CVL | **CIVIL WORK** |  | 2026-11-24 → 2026-11-30 (+6d) |  |  |
| AR | **ARCHITECTURAL WORK** |  | 2026-11-24 → 2026-11-30 (+6d) |  |  |
| 1 | **GENERAL FINISHES** |  | 2026-11-24 → 2026-11-30 (+6d) |  |  |
| PG-H-CON-B-AR-GF-40 | Wall Paint |  | 2026-11-19 → 2026-11-26 (+7d) |  | -7.95d → -11.75d |
| PG-H-CON-B-AR-GF-50 | Epoxy Flooring |  | 2026-11-22 → 2026-11-08 A (-14d) | 80% → 100% | -7.95d → none |
| PG-H-CON-B-AR-GF-60 | Install Doors & Windows |  | 2026-11-23 → 2026-11-28 (+5d) |  | -7.95d → -11.75d |
| PG-H-CON-B-AR-GF-80 | Lockers and Furniture Installation |  | 2026-11-24 → 2026-11-30 (+6d) |  | -7.95d → -11.75d |
| 3 | **ROOF FINISHES** |  | 2026-11-24 → 2026-11-30 (+6d) |  |  |
| PG-H-CON-B-AR-RF-30 | Steel ladder and Steel roof scupper Installation |  | 2026-11-24 → 2026-11-30 (+6d) |  | -7.95d → -11.75d |
| MEP | **MEP WORK** |  | 2026-11-25 → 2026-12-01 (+6d) |  |  |
| MEC | **MECANICAL WORKS** |  | 2026-11-25 → 2026-12-01 (+6d) |  |  |
| FF | **FIRE FIGHTING SYSTEM** | 2026-11-24 → 2026-11-30 (+6d) | 2026-11-25 → 2026-12-01 (+6d) |  |  |
| PG-H-CON-B-GF-FF-10 | Fire Extinguisher Installation | 2026-11-24 → 2026-11-30 (+6d) | 2026-11-25 → 2026-12-01 (+6d) |  | -7.95d → -11.75d |
| DS | **SEWER AND DRAINAGE SYSTEM** |  | 2026-11-17 → 2026-11-24 (+7d) |  |  |
| PG-H-CON-B-GF-DR-30 | Sanitaryware Installation (Final Fix) | 2026-11-15 → 2026-11-22 (+7d) | 2026-11-17 → 2026-11-24 (+7d) |  | -7.95d → -11.75d |
| HV | **HVAC SYSTEM** |  | 2026-11-14 → 2026-11-21 (+7d) |  |  |
| PG-H-CON-B-GF-AC-20 | Split AC, Grills & Diffuser Installation |  | 2026-11-14 → 2026-11-21 (+7d) |  | -7.95d → -11.75d |
| WS | **WATER SUPPLY SYSTEM** |  | 2026-11-15 → 2026-11-22 (+7d) |  |  |
| PG-H-CON-B-GF-WS-30 | Water Supply Accesories and Booster pump Installation |  | 2026-11-15 → 2026-11-22 (+7d) |  | -7.95d → -11.75d |
| ELC | **ELECTRICAL WORKS** |  | 2026-11-19 → 2026-11-26 (+7d) |  |  |
| PG-H-CON-B-GF-EL-20 | Electrical Light Fixtures Installation |  | 2026-11-17 → 2026-11-24 (+7d) |  | -7.95d → -11.75d |
| PG-H-CON-B-GF-EL-30 | Fire Alarm Devices Installation |  | 2026-11-18 → 2026-11-25 (+7d) |  | -7.95d → -11.75d |
| PG-H-CON-B-GF-EL-40 | Telecom & CCTV Devices Installation |  | 2026-11-18 → 2026-11-25 (+7d) |  | -7.95d → -11.75d |
| PG-H-CON-B-GF-EL-50 | Electrical & ELV Wiring Works |  | 2026-11-19 → 2026-11-26 (+7d) |  | -7.95d → -11.75d |
| TE & CO | **PROJECT CLOSOUT** |  | 2027-01-02 → 2027-01-07 (+5d) |  |  |
| PG-H-PCL-20 | As-Built Drawings |  | 2026-12-07 → 2026-12-14 (+7d) |  | 2.7d → -3.7d |
| PG-H-PCL-10_R | Testing, Commessioning for All Systems(Remaining) |  | 2026-12-01 → 2026-12-09 (+8d) |  | -13.2d → -18.8d |
| PG-H-PCL-30 | Snag list Submission |  | 2026-12-09 → 2026-12-15 (+6d) | 20% → 30% | -13.2d → -18.8d |
| PG-H-PCL-40 | Snag list Closeout | 2026-12-09 → 2026-12-15 (+6d) | 2026-12-26 → 2026-12-31 (+5d) |  | -13.2d → -18.8d |
| PG-H-PCL-50 | Issuing Approvals | 2026-12-26 → 2026-12-31 (+5d) | 2026-12-29 → 2027-01-04 (+6d) |  | -13.2d → -18.8d |
| PG-H-PCL-60 | Handing Over | 2026-12-29 → 2027-01-04 (+6d) | 2027-01-02 → 2027-01-07 (+5d) |  | -13.2d → -18.8d |
| TABUK | **TABUK** |  | 2027-03-04 → 2027-03-11 (+7d) |  |  |

| ID | Task | Start | Finish | Complete | Total float |
| --- | --- | --- | --- | --- | --- |
| PR | **PROCUREMENT** |  | 2026-11-16 → 2026-11-23 (+7d) |  |  |
| 1 | **LONG LEAD ITEMS** |  | 2026-11-16 → 2026-11-23 (+7d) |  |  |
| 4 | **DELIVERY TO SITE** |  | 2026-11-16 → 2026-11-23 (+7d) |  |  |
| 1 | **EXTERNAL / LANDSCAPE WORK** |  | 2026-11-15 → 2026-11-22 (+7d) |  |  |
| PG-T-PR-LL-LS-DL-20_R | Benches, Seats (Rectangular & Circular)(Remaining) |  | 2026-11-15 → 2026-11-22 (+7d) |  | 12.8d → 7.5d |
| 2 | **SPORTS & RECREATIONAL FACILITIES WORK** |  | 2026-11-15 → 2026-11-22 (+7d) |  |  |
| PG-T-PR-LL-SP-DL-40_R | Tartan Floor(Remaining) |  | 2026-11-15 → 2026-11-12 A (-3d) | 90% → 100% | 14.3d → none |
| PG-T-PR-LL-SP-DL-10_R | Football Playground Materials (Flooring, goal post, nets, paints, etc)(Remaining) |  | 2026-11-15 → 2026-11-22 (+7d) |  | 20.6d → 15.6d |
| PG-T-PR-LL-SP-DL-20_R | Basketball Playground Materials (Flooring, basketball poll, nets, paints, etc)(Remaining) |  | 2026-11-15 → 2026-11-22 (+7d) |  | 15.9d → 16.7d |
| PG-T-PR-LL-SP-DL-30_R | Padel Playgound Materials (Fence, tempered glass, etc)(Remaining) |  | 2026-11-15 → 2026-11-22 (+7d) |  | 6.45d → 7.25d |
| PG-T-PR-LL-SP-DL-50 | Air Dome Materials |  | 2026-11-15 → 2026-11-22 (+7d) |  | -66.6d → -72.4d |
| 5 | **METAL WORK** |  | 2026-11-16 → 2026-11-23 (+7d) |  |  |
| PG-T-PR-LL-MT-DL-20_R | Curtain Wall(Remaining) |  | 2026-11-16 → 2026-11-23 (+7d) |  | 6.5d → 6.6d |
| 8 | **IRRIGATION WORK** |  | 2026-11-14 → 2026-11-21 (+7d) |  |  |
| PG-T-PR-LL-IR-DL-20_R | Irrigation Control System(Remaining) |  | 2026-11-14 → 2026-11-21 (+7d) |  | -19.45d → -15.1d |
| 9 | **ELECTRICAL WORK** |  | 2026-11-15 → 2026-11-22 (+7d) |  |  |
| PG-T-PR-LL-EL-DL-10_R | Main Distribution Board(Remaining) |  | 2026-11-15 → 2026-11-22 (+7d) |  | -9.35d → -7d |
| PG-T-PR-LL-EL-DL-20_R | Power Panels (Pump, Street Light)(Remaining) |  | 2026-11-15 → 2026-11-22 (+7d) |  | -8.35d → -6d |
| PG-T-PR-LL-EL-DL-30_R | Site Lighting Poles(Remaining) |  | 2026-11-15 → 2026-11-14 A (-1d) | 90% → 100% | -6.95d → none |
| PG-T-PR-LL-EL-DL-40_R | Lighting Fixtures(Remaining) |  | 2026-11-15 → 2026-11-22 (+7d) |  | -4.95d → -3.8d |
| PG-T-PR-LL-EL-DL-50_R | Grounding System Materials (Earth pit rod, LPS, etc)(Remaining) |  | 2026-11-14 → 2026-11-21 (+7d) |  | -9.35d → -7d |
| PG-T-PR-LL-EL-DL-60_R | Telecommunications & Data System Materials (Telephone outlet, CCTV, etc)(Remaining) |  | 2026-11-15 → 2026-11-22 (+7d) |  | 0.45d → 1.6d |
| PG-T-PR-LL-EL-DL-70_R | Security and Access Control System Materials(Remaining) |  | 2026-11-15 → 2026-11-22 (+7d) |  | 4.35d → 5d |
| PG-T-PR-LL-EL-DL-80_R | Fire Alarm System Materials(Remaining) |  | 2026-11-15 → 2026-11-22 (+7d) |  | 1.2d → 2.2d |
| 2 | **SHORT LEAD ITEMS** |  | 2026-11-15 → 2026-11-22 (+7d) |  |  |
| 3 | **DELIVERY TO SITE** |  | 2026-11-15 → 2026-11-22 (+7d) |  |  |
| 1 | **EXTERNAL / LANDSCAPE WORK** |  | 2026-11-14 → 2026-11-21 (+7d) |  |  |
| PG-T-PR-SL-LS-DL-60_R | Traffic Signages(Remaining) |  | 2026-11-14 → 2026-11-21 (+7d) |  | 7.9d → 5.3d |
| PG-T-PR-SL-LS-DL-70_R | Trees(Remaining) |  | 2026-11-14 → 2026-11-21 (+7d) |  | 10.6d → 5.3d |
| PG-T-PR-SL-LS-DL-80_R | Lawn(Remaining) |  | 2026-11-14 → 2026-11-21 (+7d) |  | 15.3d → 9.5d |
| 5 | **METAL WORK** |  | 2026-11-15 → 2026-11-22 (+7d) |  |  |
| PG-T-PR-SL-MT-DL-10_R | Galvanized Steel Ladder(Remaining) |  | 2026-11-15 → 2026-11-22 (+7d) |  | 7.1d → 7.2d |
| PG-T-PR-SL-MT-DL-20_R | Galvanized Steel Roof Scupper(Remaining) |  | 2026-11-15 → 2026-11-22 (+7d) |  | 7.1d → 7.2d |
| PG-T-PR-SL-MT-DL-30_R | Galvanized Steel Cover with frame(Remaining) |  | 2026-11-15 → 2026-11-22 (+7d) |  | 7.1d → 7.2d |
| 8 | **IRRIGATION WORK** |  | 2026-11-14 → 2026-11-21 (+7d) |  |  |
| PG-T-PR-SL-IR-DL-10_R | Gate Valve including valve box(Remaining) |  | 2026-11-14 → 2026-11-21 (+7d) |  | -19.9d → -15.55d |
| PG-T-PR-SL-IR-DL-20_R | Bulbblers and Spreyers(Remaining) |  | 2026-11-14 → 2026-11-21 (+7d) |  | -19.3d → -14.95d |
| CO | **CONSTRUCTION STAGE** |  | 2027-02-20 → 2027-02-27 (+7d) |  |  |
| EX.SIT | **PLAYGROUND AND LANDSCAPING WORKS** |  | 2027-01-17 → 2027-01-09 (-8d) |  |  |
| 1 | **PLAYGROUND WORKS** |  | 2026-12-09 → 2026-12-08 (-1d) |  |  |
| FP | **FOOTBALL PLAYGROUND WORKS** |  | 2026-11-25 → 2026-12-01 (+6d) |  |  |
| PG-T-CON-EX-FB-90 | Turfing / Seeding Works |  | 2026-11-16 → 2026-11-23 (+7d) |  | 18.1d → 13.1d |
| PG-T-CON-EX-FB-120 | Installation of Lighting System |  | 2026-11-15 → 2026-11-22 (+7d) |  | 18.1d → 13.1d |
| PG-T-CON-EX-FB-60 | Goal Post Installation & Alignment |  | 2026-11-19 → 2026-11-26 (+7d) |  | 18.1d → 13.1d |
| PG-T-CON-EX-FB-110 | Install Playground Benches |  | 2026-11-22 → 2026-11-29 (+7d) |  | 18.1d → 13.1d |
| PG-T-CON-EX-FB-100 | Markings and Signages |  | 2026-11-25 → 2026-12-01 (+6d) | 70% → 80% | 18.1d → 13.1d |
| BP | **BASKETBALL PLAYGROUND WORKS** |  | 2026-11-30 → 2026-11-28 (-2d) |  |  |
| PG-T-CON-EX-BB-60 | Basketball Pole Installation & Alignment |  | 2026-11-18 → 2026-11-24 (+6d) |  | 14.3d → 16.3d |
| PG-T-CON-EX-BB-80 | Court Line Marking |  | 2026-11-16 → 2026-11-22 (+6d) |  | 14.3d → 16.3d |
| PG-T-CON-EX-BB-100 | Install Playground Benches |  | 2026-11-30 → 2026-11-28 (-2d) |  | 14.3d → 16.3d |
| PG-T-CON-EX-BB-90 | Backboard & Hoop Installation |  | 2026-11-29 → 2026-11-26 (-3d) | 50% → 90% | 14.3d → 16.3d |
| PP | **PADEL PLAYGROUND WORKS** |  | 2026-12-09 → 2026-12-08 (-1d) |  |  |
| PG-T-CON-EX-PD-30_R | Tartan Flooring Layers(Remaining) |  | 2026-11-29 → 2026-12-02 (+3d) |  | 6.45d → 7.25d |
| PG-T-CON-EX-PD-40 | Steel Structure & Fence Supports Installation |  | 2026-11-17 → 2026-11-24 (+7d) |  | 6.45d → 7.25d |
| PG-T-CON-EX-PD-60 | Chain Link Fence & Gates Installation |  | 2026-11-18 → 2026-11-25 (+7d) |  | 6.45d → 7.25d |
| PG-T-CON-EX-PD-80 | Install Playground Benches |  | 2026-12-09 → 2026-12-08 (-1d) |  | 6.45d → 7.25d |
| PG-T-CON-EX-PD-50 | Tempered Glass Installation |  | 2026-11-28 → 2026-11-30 (+2d) | 60% → 80% | 6.45d → 7.25d |
| PG-T-CON-EX-PD-70 | Court Accessories Installation |  | 2026-12-07 → 2026-12-06 (-1d) | 60% → 80% | 6.45d → 7.25d |
| GN.SI | **GENERAL SITE WORKS** |  | 2027-01-17 → 2027-01-09 (-8d) |  |  |
| 5 | **MECHANICAL WORK** |  | 2026-12-03 → 2026-12-05 (+2d) |  |  |
| 2 | **STORM WATER AND UTILITY WORK** |  | 2026-11-28 → 2026-11-29 (+1d) |  |  |
| PG-T-CON-EX-GN-M-30 | Manhole Installation |  | 2026-11-14 → 2026-11-21 (+7d) |  | -26.6d → -19.25d |
| PG-T-CON-EX-GN-M-40 | 150 mm uPVC pipe laying & jointing |  | 2026-11-15 → 2026-11-22 (+7d) |  | -26.6d → -19.25d |
| PG-T-CON-EX-GN-M-50 | Concrete Encasement | 2026-11-15 → 2026-11-03 A (-12d) | 2026-11-18 → 2026-11-24 (+6d) | 0% → 50% | -26.6d → -19.25d |
| PG-T-CON-EX-GN-M-60 | Backfilling & Compaction | 2026-11-18 → 2026-11-10 A (-8d) | 2026-11-22 → 2026-11-25 (+3d) | 0% → 50% | -26.6d → -19.25d |
| PG-T-CON-EX-GN-M-70 | Surface Reinstatement & Civil Works | 2026-11-23 → 2026-11-14 A (-9d) | 2026-11-28 → 2026-11-29 (+1d) | 0% → 50% | -26.6d → -19.25d |
| IR.SY | **IRRIGATION SYSTEM WORKS** |  | 2026-11-23 → 2026-11-26 (+3d) |  |  |
| PG-T-CON-EX-GN-M-80_R | Installation of HDPE Irrigation Pipe Network with Gate Valve and Box(Remaining) |  | 2026-11-22 → 2026-11-25 (+3d) |  | -26.6d → -19.25d |
| PG-T-CON-EX-GN-M-100 | Installation of Bubblers and Sprinklers |  | 2026-11-23 → 2026-11-26 (+3d) |  | -26.6d → -19.25d |
| PG-T-CON-EX-GN-M-90 | Installation of Irrigation Control System |  | 2026-11-23 → 2026-11-26 (+3d) |  | -26.6d → -19.25d |

| ID | Task | Start | Finish | Complete | Total float |
| --- | --- | --- | --- | --- | --- |
| 1 | **FIRE PROTECTION SYSTEM** | 2026-11-28 → 2026-11-29 (+1d) | 2026-12-03 → 2026-12-05 (+2d) |  |  |
| PG-T-CON-EX-GN-M-110 | Fire Extinguisher Installation | 2026-11-28 → 2026-11-29 (+1d) | 2026-12-03 → 2026-12-05 (+2d) |  | -26.6d → -19.25d |
| 2 | **ELECTRICAL WORK** |  | 2026-12-27 → 2026-12-24 (-3d) |  |  |
| PG-T-CON-EX-GN-E-30 | Lightning Protection System (LPS) |  | 2026-12-05 → 2026-12-06 (+1d) |  | -26.6d → -19.25d |
| PG-T-CON-EX-GN-E-40 | KWH Meter and MDB Installation |  | 2026-12-06 → 2026-12-07 (+1d) |  | -26.6d → -19.25d |
| PG-T-CON-EX-GN-E-50 | Power Panels and Distribution Boards |  | 2026-12-07 → 2026-12-08 (+1d) |  | -26.6d → -19.25d |
| PG-T-CON-EX-GN-E-60 | Site Lighting Poles Installation |  | 2026-12-09 → 2026-11-18 A (-21d) | 80% → 100% | -26.6d → none |
| 2 | **ELV SYSTEMS (TELECOM, DATA, AV & CCTV)** |  | 2026-12-24 → 2026-12-22 (-2d) |  |  |
| PG-T-CON-EX-GN-E-100 | Fiber Optic Pull Box Installation |  | 2026-12-19 → 2026-12-17 (-2d) | 75% → 80% | -26.2d → -18.65d |
| PG-T-CON-EX-GN-E-110 | Telephone and Data Outlet Installation |  | 2026-12-20 → 2026-12-19 (-1d) | 75% → 80% | -26.2d → -18.65d |
| PG-T-CON-EX-GN-E-120 | Telecom Equipment and AV HDMI Installation |  | 2026-12-21 → 2026-12-20 (-1d) | 75% → 80% | -26.2d → -18.65d |
| PG-T-CON-EX-GN-E-130 | CCTV Rack / Cabinet Installation |  | 2026-12-22 → 2026-12-21 (-1d) | 75% → 80% | -26.2d → -18.65d |
| PG-T-CON-EX-GN-E-140 | NVR and CCTV Monitor Installation |  | 2026-12-23 → 2026-12-22 (-1d) | 75% → 80% | -26.2d → -18.65d |
| PG-T-CON-EX-GN-E-150 | IP Camera Installation |  | 2026-12-24 → 2026-12-22 (-2d) | 75% → 80% | -26.2d → -18.65d |
| PG-T-CON-EX-GN-E-90 | ELV Containment & Cabling Works |  |  | 75% → 80% | -26.6d → -19.25d |
| 3 | **FIRE ALARM SYSTEM** |  | 2026-12-27 → 2026-12-24 (-3d) |  |  |
| PG-T-CON-EX-GN-E-160 | Fire Alarm Containment & Cabling |  | 2026-12-20 → 2026-12-19 (-1d) | 75% → 80% | -26.6d → -19.25d |
| PG-T-CON-EX-GN-E-170 | Fire Alarm Control Panel (FACP) Installation |  | 2026-12-22 → 2026-12-21 (-1d) | 75% → 80% | -26.6d → -19.25d |
| PG-T-CON-EX-GN-E-180 | Initiating Devices (Detectors & Manual Pull Station) |  | 2026-12-24 → 2026-12-23 (-1d) | 75% → 80% | -26.6d → -19.25d |
| PG-T-CON-EX-GN-E-190 | Notification Appliances (Strobe with Sounder) |  | 2026-12-27 → 2026-12-24 (-3d) | 75% → 80% | -26.6d → -19.25d |
| 3 | **PARKING WORK** |  | 2026-12-27 → 2026-12-24 (-3d) |  |  |
| PG-T-CON-EX-GN-PR-30 | Marking & Signages |  | 2026-12-27 → 2026-12-24 (-3d) | 70% → 80% | -26.6d → -19.25d |
| 4 | **SERVICE CONNECTION** |  | 2027-01-17 → 2027-01-09 (-8d) |  |  |
| PG-T-CON-EX-GN-SC-20 | HDPE Pipe Laying & Valve Installation |  | 2026-12-27 → 2026-12-24 (-3d) |  | -26.6d → -19.25d |
| PG-T-CON-EX-GN-SC-30 | Connection to City Network | 2026-12-27 → 2026-11-02 A (-55d) | 2027-01-07 → 2027-01-02 (-5d) | 0% → 30% | -26.6d → -19.25d |
| PG-T-CON-EX-GN-SC-40 | Backfilling | 2027-01-07 → 2026-11-08 A (-60d) | 2027-01-17 → 2027-01-09 (-8d) | 0% → 30% | -26.6d → -19.25d |
| LS | **LANDSCAPING WORKS** |  | 2026-11-19 → 2026-11-26 (+7d) |  |  |
| HSP | **HARDSCAPE WORK** |  | 2026-11-19 → 2026-11-26 (+7d) |  |  |
| PG-T-CON-EX-LS-HS-50_R | Install Recycled Precast Concrete Seats(Remaining) |  | 2026-11-17 → 2026-11-24 (+7d) |  | 10.6d → 5.3d |
| PG-T-CON-EX-LS-HS-20_R | Interlock Tiles Grey Scale with Black Marble Chips(Remaining) |  | 2026-11-14 → 2026-11-21 (+7d) |  | 10.6d → 5.3d |
| PG-T-CON-EX-LS-HS-60 | Install Recycled Precast Concrete Trash Bins |  | 2026-11-19 → 2026-11-26 (+7d) | 75% → 80% | 10.6d → 5.3d |
| SSP | **SOFTSCAPE WORK** |  | 2026-11-19 → 2026-11-26 (+7d) |  |  |
| PG-T-CON-EX-LS-SS-20_R | Lawn Area Preparation & Planting / Turfing(Remaining) |  | 2026-11-19 → 2026-11-26 (+7d) |  | 10.6d → 5.3d |
| PG-T-CON-EX-LS-SS-10 | Planting Trees |  | 2026-11-16 → 2026-11-23 (+7d) |  | 10.6d → 5.3d |
| AD | **AIR DOME CONSTRUCTION** |  | 2027-02-20 → 2027-02-27 (+7d) |  |  |
| 1 | **CIVIL WORK** |  | 2026-12-02 → 2026-12-09 (+7d) |  |  |
| PG-T-CON-EX-AD-CL-70 | Installation of Steel Cable Structural System | 2026-11-14 → 2026-11-21 (+7d) | 2026-11-23 → 2026-11-30 (+7d) |  | -66.6d → -72.4d |
| PG-T-CON-EX-AD-CL-80 | Installation of Membrane System | 2026-11-24 → 2026-12-01 (+7d) | 2026-12-02 → 2026-12-09 (+7d) |  | -66.6d → -72.4d |
| 2 | **ARCHITECTURAL WORK** | 2027-01-23 → 2027-01-30 (+7d) | 2027-02-20 → 2027-02-27 (+7d) |  |  |
| PG-T-CON-EX-AD-AR-10 | Installation of Thermal Insulation System | 2027-01-23 → 2027-01-30 (+7d) | 2027-01-30 → 2027-02-06 (+7d) |  | -66.6d → -72.4d |
| PG-T-CON-EX-AD-AR-40 | Final Fixing of Accessories & Finishes | 2027-01-31 → 2027-02-07 (+7d) | 2027-02-07 → 2027-02-14 (+7d) |  | -66.6d → -72.4d |
| PG-T-CON-EX-AD-AR-20 | Installation of Doors & Access Systems | 2027-02-08 → 2027-02-15 (+7d) | 2027-02-14 → 2027-02-21 (+7d) |  | -66.6d → -72.4d |
| PG-T-CON-EX-AD-AR-30 | Installation of Logo | 2027-02-15 → 2027-02-22 (+7d) | 2027-02-20 → 2027-02-27 (+7d) |  | -66.6d → -72.4d |
| 3 | **MECHANICAL WORK** | 2026-12-03 → 2026-12-10 (+7d) | 2026-12-29 → 2027-01-05 (+7d) |  |  |
| PG-T-CON-EX-AD-ME-10 | Installation of Main Air Package Units | 2026-12-03 → 2026-12-10 (+7d) | 2026-12-08 → 2026-12-15 (+7d) |  | -66.6d → -72.4d |
| PG-T-CON-EX-AD-ME-20 | Installation of Backup Air Package Unit | 2026-12-09 → 2026-12-16 (+7d) | 2026-12-14 → 2026-12-21 (+7d) |  | -66.6d → -72.4d |
| PG-T-CON-EX-AD-ME-30 | Installation of Complete HVAC System | 2026-12-23 → 2026-12-30 (+7d) | 2026-12-29 → 2027-01-05 (+7d) |  | -65.6d → -71.4d |
| 4 | **ELECTRICAL WORK** | 2026-12-15 → 2026-12-22 (+7d) | 2027-01-21 → 2027-01-28 (+7d) |  |  |
| PG-T-CON-EX-AD-EL-10 | Installation of Electrical Boxes & MDBs | 2026-12-15 → 2026-12-22 (+7d) | 2026-12-22 → 2026-12-29 (+7d) |  | -66.6d → -72.4d |
| PG-T-CON-EX-AD-EL-20 | Installation of Lighting System | 2026-12-23 → 2026-12-30 (+7d) | 2026-12-30 → 2027-01-06 (+7d) |  | -66.6d → -72.4d |
| PG-T-CON-EX-AD-EL-30 | Electrical Connections to Main Power Source (Excluding kWh Meter) | 2026-12-31 → 2027-01-07 (+7d) | 2027-01-05 → 2027-01-12 (+7d) |  | -66.6d → -72.4d |
| PG-T-CON-EX-AD-EL-40 | Installation of Backup Generator | 2027-01-06 → 2027-01-13 (+7d) | 2027-01-12 → 2027-01-19 (+7d) |  | -66.6d → -72.4d |
| PG-T-CON-EX-AD-EL-50 | Installation of Smart Dome System | 2027-01-13 → 2027-01-20 (+7d) | 2027-01-21 → 2027-01-28 (+7d) |  | -66.6d → -72.4d |
| B | **TOILET BUILDING WORKS** |  | 2026-11-17 → 2026-11-24 (+7d) |  |  |
| CVL | **CIVIL WORK** |  | 2026-11-16 → 2026-11-23 (+7d) |  |  |
| AR | **ARCHITECTURAL WORK** |  | 2026-11-16 → 2026-11-23 (+7d) |  |  |
| 3 | **ROOF FINISHES** |  | 2026-11-16 → 2026-11-23 (+7d) |  |  |
| PG-T-CON-B-AR-RF-30 | Steel ladder and Steel roof scupper Installation |  | 2026-11-16 → 2026-11-23 (+7d) |  | 6.5d → 6.6d |
| MEP | **MEP WORK** |  | 2026-11-17 → 2026-11-24 (+7d) |  |  |
| MEC | **MECANICAL WORKS** |  | 2026-11-17 → 2026-11-24 (+7d) |  |  |
| FF | **FIRE FIGHTING SYSTEM** |  | 2026-11-17 → 2026-11-24 (+7d) |  |  |
| PG-T-CON-B-GF-FF-10 | Fire Extinguisher Installation |  | 2026-11-17 → 2026-11-24 (+7d) |  | 7.75d → 6.8d |
| DS | **SEWER AND DRAINAGE SYSTEM** |  | 2026-11-15 → 2026-11-22 (+7d) |  |  |
| PG-T-CON-B-GF-DR-30 | Sanitaryware Installation (Final Fix) |  | 2026-11-15 → 2026-11-22 (+7d) |  | 6.8d → 6.9d |
| HV | **HVAC SYSTEM** |  | 2026-11-16 → 2026-11-23 (+7d) |  |  |
| PG-T-CON-B-GF-AC-20 | Split AC, Grills & Diffuser Installation |  | 2026-11-16 → 2026-11-23 (+7d) |  | 8.85d → 7.9d |
| WS | **WATER SUPPLY SYSTEM** |  | 2026-11-14 → 2026-11-21 (+7d) |  |  |
| PG-T-CON-B-GF-WS-30 | Water Supply Accesories and Booster pump Installation |  | 2026-11-14 → 2026-11-21 (+7d) |  | 6.8d → 6.9d |
| TE & CO | **PROJECT CLOSOUT** |  | 2027-03-04 → 2027-03-11 (+7d) |  |  |
| PG-T-PCL-10_R | Testing, Commessioning for All Systems(Remaining) |  | 2027-02-20 → 2027-02-27 (+7d) |  | -66.6d → -72.4d |

| ID | Task | Start | Finish | Complete | Total float |
| --- | --- | --- | --- | --- | --- |
| PG-T-PCL-20 | As-Built Drawings |  | 2027-02-22 → 2027-03-01 (+7d) |  | -59.05d → -65.05d |
| PG-T-PCL-30 | Snag list Submission |  | 2027-02-22 → 2027-03-01 (+7d) | 20% → 30% | -66.6d → -72.4d |
| PG-T-PCL-40 | Snag list Closeout | 2027-02-22 → 2027-03-01 (+7d) | 2027-03-02 → 2027-03-09 (+7d) |  | -66.6d → -72.4d |
| PG-T-PCL-50 | Issuing Approvals | 2027-03-02 → 2027-03-09 (+7d) | 2027-03-03 → 2027-03-10 (+7d) |  | -66.6d → -72.4d |
| PG-T-PCL-60 | Handing Over | 2027-03-03 → 2027-03-10 (+7d) | 2027-03-04 → 2027-03-11 (+7d) |  | -66.6d → -72.4d |
