# Dammam 3rd Industrial City Gates and Fence - B1 - B1

How a schedule from Primavera P6 changed from version to version. A marks actual dates.

## Version 1 (data date 2026-05-06, saved 2026-08-13, file DAM3-05-012-Dammam 3rd Industrial City Gates and Fence -BL.xer)

Note of the change: Renumber project folders 01–23 in order (after removing projects 12 and 25)

| ID | WBS | Task | Duration | Start | Finish | Predecessors | Total float |
| --- | --- | --- | --- | --- | --- | --- | --- |
|  | 1 | **Key Milestones** |  | 2026-05-06 | 2026-08-05 |  |  |
|  | 1 | **General Milestones** |  | 2026-05-06 | 2026-05-06 |  |  |
| DAM3-05-012-1080 |  | Project Start | 0d | 2026-05-06 | 2026-05-06 |  | 0d |
|  | 2 | **Contractual Milestones** |  | 2026-05-25 | 2026-08-05 |  |  |
| DAM3-05-012-4880 |  | Preliminary Submittals | 0d | 2026-05-25 | 2026-05-25 | DAM3-05-012-1010 | 58d |
| DAM3-05-012-4870 |  | Mobilization | 0d | 2026-05-31 | 2026-05-31 | DAM3-05-012-1460 | 57.5d |
| DAM3-05-012-4890 |  | Shop Drawings | 0d | 2026-06-22 | 2026-06-22 | DAM3-05-012-3100 | 38d |
| DAM3-05-012-4900 |  | Material Submittal & Approval | 0d | 2026-07-18 | 2026-07-18 | DAM3-05-012-3900 | 16d |
| DAM3-05-012-4910 |  | Fabrication & Delivery | 0d | 2026-08-04 | 2026-08-04 | DAM3-05-012-4090 | 1d |
| DAM3-05-012-4860 |  | Project Finish | 0d | 2026-08-05 | 2026-08-05 | DAM3-05-012-4850 FF, DAM3-05-012-4660, DAM3-05-012-4390, DAM3-05-012-4160, DAM3-05-012-4140, DAM3-05-012-3960, DAM3-05-012-3910, DAM3-05-012-3710, DAM3-05-012-3100, DAM3-05-012-2660, DAM3-05-012-2190, DAM3-05-012-2960, DAM3-05-012-3670, DAM3-05-012-3740, DAM3-05-012-3760, DAM3-05-012-3770, DAM3-05-012-3800, DAM3-05-012-3810, DAM3-05-012-3820, DAM3-05-012-3840, DAM3-05-012-4170, DAM3-05-012-4180, DAM3-05-012-4190, DAM3-05-012-4200, DAM3-05-012-4210, DAM3-05-012-3830, DAM3-05-012-4280, DAM3-05-012-4290, DAM3-05-012-4480, DAM3-05-012-4490, DAM3-05-012-3720, DAM3-05-012-3750, DAM3-05-012-3850, DAM3-05-012-3940, DAM3-05-012-3960 FF, DAM3-05-012-4130, DAM3-05-012-2670, DAM3-05-012-2680, DAM3-05-012-2690, DAM3-05-012-2720, DAM3-05-012-2730, DAM3-05-012-4300, DAM3-05-012-4520, DAM3-05-012-4310, DAM3-05-012-4320, DAM3-05-012-4330, DAM3-05-012-4340, DAM3-05-012-4530, DAM3-05-012-4650, DAM3-05-012-4390 FF, DAM3-05-012-2700, DAM3-05-012-2710, DAM3-05-012-2740, DAM3-05-012-2750, DAM3-05-012-2760, DAM3-05-012-2770, DAM3-05-012-2780, DAM3-05-012-2790, DAM3-05-012-2800, DAM3-05-012-2810, DAM3-05-012-2820, DAM3-05-012-4360, DAM3-05-012-4370, DAM3-05-012-4380, DAM3-05-012-4540, DAM3-05-012-4550, DAM3-05-012-4350, DAM3-05-012-4560, DAM3-05-012-4570, DAM3-05-012-4580, DAM3-05-012-4590, DAM3-05-012-4600, DAM3-05-012-4610, DAM3-05-012-4620, DAM3-05-012-4630, DAM3-05-012-4640, DAM3-05-012-4660 FF, DAM3-05-012-4770, DAM3-05-012-4780, DAM3-05-012-4790, DAM3-05-012-4800, DAM3-05-012-4810, DAM3-05-012-4820, DAM3-05-012-4440, DAM3-05-012-4450, DAM3-05-012-4460, DAM3-05-012-4260, DAM3-05-012-4470, DAM3-05-012-4150, DAM3-05-012-4160 FF, DAM3-05-012-4270, DAM3-05-012-4500, DAM3-05-012-4510, DAM3-05-012-4730, DAM3-05-012-4740, DAM3-05-012-4750, DAM3-05-012-4760, DAM3-05-012-4870, DAM3-05-012-4880, DAM3-05-012-4890, DAM3-05-012-4900, DAM3-05-012-4910, DAM3-05-012-4920 | 0d |
| DAM3-05-012-4920 |  | Construction | 0d | 2026-08-05 | 2026-08-05 | DAM3-05-012-4760 | 0d |
|  | 2 | **Mobilization** |  | 2026-05-06 | 2026-05-31 |  |  |
|  | 5 | **Site Survey** |  | 2026-05-06 | 2026-05-10 |  |  |
| DAM3-05-012-1020 |  | Site Survey | 2d | 2026-05-06 | 2026-05-07 | DAM3-05-012-1080 | 0.75d |
| DAM3-05-012-1090 |  | Survey Report | 2d | 2026-05-09 | 2026-05-10 | DAM3-05-012-1020 | 0.75d |
|  | 2 | **Site Layout Plan** |  | 2026-05-11 | 2026-05-13 |  |  |
| DAM3-05-012-1100 |  | Site Office Layout Drawing Proposal Submittal | 1d | 2026-05-11 | 2026-05-11 | DAM3-05-012-1090 | 0.75d |
| DAM3-05-012-1110 |  | Site Office Layout Drawing Review & Approval | 2d | 2026-05-12 | 2026-05-13 | DAM3-05-012-1100 | 0.75d |
|  | 6 | **Construct Site Access Roads** |  | 2026-05-14 | 2026-05-19 |  |  |
| DAM3-05-012-1120 |  | Site Preparation | 1d | 2026-05-14 | 2026-05-14 | DAM3-05-012-1110 | 0.75d |
| DAM3-05-012-1150 |  | Grading & Leveling | 2d | 2026-05-16 | 2026-05-17 | DAM3-05-012-1120 | 0.75d |
| DAM3-05-012-1160 |  | Temporary Access Road | 2d | 2026-05-17 | 2026-05-19 | DAM3-05-012-1150 SS+1.25d | 0.75d |
|  | 7 | **Construct Site Office Fence** |  | 2026-05-18 | 2026-05-31 |  |  |
| DAM3-05-012-1190 |  | Excavation for Fence Foundation | 4d | 2026-05-18 | 2026-05-23 | DAM3-05-012-1160 SS+1.25d, DAM3-05-012-1150 | 2.25d |
| DAM3-05-012-1220 |  | Installation of Fence Posts | 4d | 2026-05-19 | 2026-05-24 | DAM3-05-012-1190 SS+1.25d | 2.25d |
| DAM3-05-012-1460 |  | Installation of Fence Mesh | 3d | 2026-05-23 | 2026-05-31 | DAM3-05-012-1220 SS+2.5d, DAM3-05-012-1190 | 2.5d |
|  | 8 | **Construct Site Offices** |  | 2026-05-18 | 2026-05-21 |  |  |
| DAM3-05-012-1170 |  | Installation of Site Offices | 3d | 2026-05-18 | 2026-05-20 | DAM3-05-012-1160 SS, DAM3-05-012-1110, DAM3-05-012-1150 | 1.25d |
| DAM3-05-012-1200 |  | MEP Works | 2d | 2026-05-18 | 2026-05-20 | DAM3-05-012-1170 FS-2.5d | 2.5d |
| DAM3-05-012-1210 |  | Installation of Furniture | 2d | 2026-05-19 | 2026-05-21 | DAM3-05-012-1170 FS-1.25d, DAM3-05-012-1200 SS | 1.25d |
|  | 3 | **Mobilization of Manpower** |  | 2026-05-14 | 2026-05-20 |  |  |
| DAM3-05-012-1130 |  | Mobilization of Manpower | 6d | 2026-05-14 | 2026-05-20 | DAM3-05-012-1120 SS | 1d |
|  | 4 | **Mobilization of Equipment** |  | 2026-05-14 | 2026-05-20 |  |  |
| DAM3-05-012-1140 |  | Mobilization of Tools & Equipment | 6d | 2026-05-14 | 2026-05-20 | DAM3-05-012-1130 SS | 1d |
|  | 3 | **Preliminary Submittals** |  | 2026-05-06 | 2026-05-25 |  |  |
| DAM3-05-012-1000 |  | Insurances | 17d | 2026-05-06 | 2026-05-25 | DAM3-05-012-1080 | 5d |
| DAM3-05-012-1010 |  | Performance Bonds | 17d | 2026-05-06 | 2026-05-25 | DAM3-05-012-1080 | 5d |
| DAM3-05-012-1030 |  | Contract Schedule (Baseline Program) | 13d | 2026-05-06 | 2026-05-20 | DAM3-05-012-1080 | 1d |
| DAM3-05-012-1040 |  | HSE Plan | 12d | 2026-05-06 | 2026-05-19 | DAM3-05-012-1080 | 2d |
| DAM3-05-012-1050 |  | Quality Control Plan | 10d | 2026-05-06 | 2026-05-17 | DAM3-05-012-1080 | 4d |
| DAM3-05-012-1060 |  | Project Organization Chart | 12d | 2026-05-06 | 2026-05-19 | DAM3-05-012-1080 | 2d |
| DAM3-05-012-1070 |  | Submission of Staff CVs | 10d | 2026-05-06 | 2026-05-17 | DAM3-05-012-1080 | 1.5d |
|  | 8 | **Engineering** |  | 2026-05-18 | 2026-07-18 |  |  |
|  | 3 | **Shop Drawings** |  | 2026-05-18 | 2026-06-22 |  |  |
|  | 2 | **Prepare & Submit** |  | 2026-05-18 | 2026-06-08 |  |  |
| DAM3-05-012-1180 |  | Fence Type 1 - Shopdrawings - ( Prepare & Submit) | 10.5d | 2026-05-18 | 2026-06-03 | DAM3-05-012-1070 | 1.5d |
| DAM3-05-012-1340 |  | Fence Type 2 - Shopdrawings - (Prepare & Submit) | 9d | 2026-05-21 | 2026-06-04 | DAM3-05-012-1180 SS+3d, DAM3-05-012-1200, DAM3-05-012-1130 | 2d |
| DAM3-05-012-1620 |  | Guard Room - Shopdrawings - (Prepare & Submit) | 9d | 2026-05-25 | 2026-06-08 | DAM3-05-012-1340 SS+3d, DAM3-05-012-1220 | 2d |
|  | 7 | **Review & Approve** |  | 2026-06-03 | 2026-06-22 |  |  |
| DAM3-05-012-2190 |  | Fence Type 1 - Shopdrawings - ( Prepare & Submit) | 12d | 2026-06-03 | 2026-06-17 | DAM3-05-012-1180 | 1.5d |
| DAM3-05-012-2660 |  | Fence Type 2 - Shopdrawings - (Prepare & Submit) | 12d | 2026-06-06 | 2026-06-18 | DAM3-05-012-1340 | 5d |
| DAM3-05-012-3100 |  | Guard Room - Shopdrawings - (Prepare & Submit) | 12d | 2026-06-09 | 2026-06-22 | DAM3-05-012-1620 | 2d |
|  | 1 | **Material Submittal** |  | 2026-05-20 | 2026-07-18 |  |  |
|  | 1 | **Material Prepare & Submit** |  | 2026-05-20 | 2026-07-11 |  |  |
|  | 3 | **Civil & Arch** |  | 2026-05-21 | 2026-07-11 |  |  |
| DAM3-05-012-1240 |  | Backfilling for guard rooms under G.Beams (Material Prepare & Submit) | 4d | 2026-05-21 | 2026-05-31 | DAM3-05-012-1080 SS+13d, DAM3-05-012-1230 SS+1d, DAM3-05-012-1210 FS-1d, DAM3-05-012-1160 FS+2d | 0.75d |
| DAM3-05-012-1250 |  | interlocking paving blocks (Material Prepare & Submit) | 4d | 2026-05-21 | 2026-05-31 | DAM3-05-012-1080 SS+13d, DAM3-05-012-1240 SS | 0.75d |
| DAM3-05-012-1260 |  | Concrete Masonry Unit (CMU) for walls (Material Prepare & Submit) | 4d | 2026-05-21 | 2026-05-31 | DAM3-05-012-1080 SS+13d, DAM3-05-012-1250 SS | 0.75d |
| DAM3-05-012-1270 |  | overflow galvanized steel roof scupper with gray color with angular secondary support(Material Prepare & Submit) | 4d | 2026-05-21 | 2026-05-31 | DAM3-05-012-1080 SS+13d, DAM3-05-012-1260 SS | 0.75d |
| DAM3-05-012-1280 |  | aluminum framed double glazed windows (Material Prepare & Submit) | 4d | 2026-05-21 | 2026-05-31 | DAM3-05-012-1080 SS+13d, DAM3-05-012-1270 SS | 0.75d |
| DAM3-05-012-1290 |  | Riyadh stone cladding (Material Prepare & Submit) | 4d | 2026-05-21 | 2026-05-31 | DAM3-05-012-1080 SS+13d, DAM3-05-012-1280 SS | 0.75d |
| DAM3-05-012-1300 |  | PANEL SIGNAGE (Material Prepare & Submit) | 4d | 2026-05-21 | 2026-05-31 | DAM3-05-012-1080 SS+13d, DAM3-05-012-1290 SS | 0.75d |
| DAM3-05-012-1360 |  | Aluminum Door (Material Prepare & Submit) | 4d | 2026-05-23 | 2026-06-01 | DAM3-05-012-1080 SS+14d, DAM3-05-012-1330 SS+1d | 0.75d |
| DAM3-05-012-1370 |  | structural steel members for gate frame (Material Prepare & Submit) | 4d | 2026-05-23 | 2026-06-01 | DAM3-05-012-1080 SS+14d, DAM3-05-012-1360 SS | 0.75d |
| DAM3-05-012-1380 |  | structural steel members and plates for main gates (Material Prepare & Submit) | 4d | 2026-05-23 | 2026-06-01 | DAM3-05-012-1080 SS+14d, DAM3-05-012-1370 SS | 0.75d |
| DAM3-05-012-1480 |  | plant trees, plants, and ground covers including fixations, sweet soil (Material Prepare & Submit) | 4d | 2026-05-24 | 2026-06-02 | DAM3-05-012-1080 SS+15d, DAM3-05-012-1450 SS+1d | 0.75d |
| DAM3-05-012-1500 |  | precast concrete curbstone (Material Prepare & Submit) | 4d | 2026-05-25 | 2026-06-03 | DAM3-05-012-1080 SS+16d, DAM3-05-012-1490 SS+1d | 0.75d |
| DAM3-05-012-1510 |  | stone gravel (Material Prepare & Submit) | 4d | 2026-05-25 | 2026-06-03 | DAM3-05-012-1080 SS+16d, DAM3-05-012-1500 SS | 0.75d |
| DAM3-05-012-1520 |  | PANTRY CABINET (Material Prepare & Submit) | 4d | 2026-05-25 | 2026-06-03 | DAM3-05-012-1080 SS+16d, DAM3-05-012-1510 SS | 0.75d |
| DAM3-05-012-1530 |  | COUNTER DESK (Material Prepare & Submit) | 4d | 2026-05-25 | 2026-06-03 | DAM3-05-012-1080 SS+16d, DAM3-05-012-1520 SS | 0.75d |

| ID | WBS | Task | Duration | Start | Finish | Predecessors | Total float |
| --- | --- | --- | --- | --- | --- | --- | --- |
| DAM3-05-012-1540 |  | Roller blind (Material Prepare & Submit) | 4d | 2026-05-25 | 2026-06-03 | DAM3-05-012-1080 SS+16d, DAM3-05-012-1530 SS | 0.75d |
| DAM3-05-012-1550 |  | structural steel members and plates for pedestrian gates (Material Prepare & Submit) | 4d | 2026-05-25 | 2026-06-03 | DAM3-05-012-1080 SS+16d, DAM3-05-012-1540 SS | 0.75d |
| DAM3-05-012-1640 |  | Backfilling for Roads (Material Prepare & Submit) | 4d | 2026-05-31 | 2026-06-03 | DAM3-05-012-1080 SS+17d, DAM3-05-012-1610 SS | 0d |
| DAM3-05-012-1650 |  | interlocking pedstrian paving blocks (Material Prepare & Submit) | 4d | 2026-05-31 | 2026-06-03 | DAM3-05-012-1080 SS+17d, DAM3-05-012-1640 SS | 0d |
| DAM3-05-012-1660 |  | folding & sliding mounter combination ladder for building maintenance purpose (Material Prepare & Submit) | 4d | 2026-05-31 | 2026-06-03 | DAM3-05-012-1080 SS+17d, DAM3-05-012-1650 SS | 0d |
| DAM3-05-012-1670 |  | heavy steel cover with frame including all necessary fixings(Material Prepare & Submit) | 4d | 2026-05-31 | 2026-06-03 | DAM3-05-012-1080 SS+17d, DAM3-05-012-1660 SS | 0d |
| DAM3-05-012-1680 |  | hollow metal door (Material Prepare & Submit) | 4d | 2026-05-31 | 2026-06-03 | DAM3-05-012-1080 SS+17d, DAM3-05-012-1670 SS | 0d |
| DAM3-05-012-1690 |  | granite saddles and thresholds (Material Prepare & Submit) | 4d | 2026-05-31 | 2026-06-03 | DAM3-05-012-1080 SS+17d, DAM3-05-012-1680 SS | 0d |
| DAM3-05-012-1700 |  | ceramic wall tiles (Material Prepare & Submit) | 4d | 2026-05-31 | 2026-06-03 | DAM3-05-012-1080 SS+17d, DAM3-05-012-1690 SS | 0d |
| DAM3-05-012-1710 |  | acrylic paint on internal walls (Material Prepare & Submit) | 4d | 2026-05-31 | 2026-06-03 | DAM3-05-012-1080 SS+17d, DAM3-05-012-1700 SS | 0d |
| DAM3-05-012-1720 |  | two coats of acrylic paint (suitable for exterior use) on external (Material Prepare & Submit) | 4d | 2026-05-31 | 2026-06-03 | DAM3-05-012-1080 SS+17d, DAM3-05-012-1710 SS | 0d |
| DAM3-05-012-1730 |  | aluminum cladding (Material Prepare & Submit) | 4d | 2026-05-31 | 2026-06-03 | DAM3-05-012-1080 SS+17d, DAM3-05-012-1720 SS | 0d |
| DAM3-05-012-1740 |  | gypsum board suspended ceiling (Material Prepare & Submit) | 4d | 2026-05-31 | 2026-06-03 | DAM3-05-012-1080 SS+17d, DAM3-05-012-1730 SS | 0d |
| DAM3-05-012-1750 |  | Waste Receptacle(Material Prepare & Submit) | 4d | 2026-05-31 | 2026-06-03 | DAM3-05-012-1080 SS+17d, DAM3-05-012-1740 SS | 0d |
| DAM3-05-012-1760 |  | structural steel members and steel hollow sections for wall fence (Material Prepare & Submit) | 4d | 2026-05-31 | 2026-06-03 | DAM3-05-012-1080 SS+17d, DAM3-05-012-1750 SS | 0d |
| DAM3-05-012-1770 |  | galvanized steel chain link gate (Material Prepare & Submit) | 4d | 2026-05-31 | 2026-06-03 | DAM3-05-012-1080 SS+17d, DAM3-05-012-1760 SS | 0d |
| DAM3-05-012-1780 |  | gully traps with heavy duty cover (Material Prepare & Submit) | 4d | 2026-05-31 | 2026-06-03 | DAM3-05-012-1080 SS+17d, DAM3-05-012-1770 SS | 0d |
| DAM3-05-012-1790 |  | chamber with heavy duty cover (Material Prepare & Submit) | 4d | 2026-05-31 | 2026-06-03 | DAM3-05-012-1080 SS+17d, DAM3-05-012-1780 SS | 0d |
| DAM3-05-012-2000 |  | ceramic floor tiles (Material Prepare & Submit) | 5d | 2026-06-01 | 2026-06-06 | DAM3-05-012-1080 SS+18d, DAM3-05-012-1890 SS+1d | 0d |
| DAM3-05-012-2130 |  | matt stainless steel flag pole (Material Prepare & Submit) (Material Prepare & Submit) | 5d | 2026-06-02 | 2026-06-07 | DAM3-05-012-1080 SS+19d, DAM3-05-012-2020 SS+1d | 0d |
| DAM3-05-012-2140 |  | galvanized steel chain link ,steel tube framing and posts, turn buckle, tension wir.etc(Material Prepare & Submit) | 5d | 2026-06-02 | 2026-06-07 | DAM3-05-012-1080 SS+19d, DAM3-05-012-2130 SS | 0d |
| DAM3-05-012-3070 |  | granite flooring (Material Prepare & Submit) | 5d | 2026-06-09 | 2026-06-14 | DAM3-05-012-1080 SS+25d, DAM3-05-012-2150 | 0d |
| DAM3-05-012-3780 |  | Workstation chair (Material Prepare & Submit) | 5d | 2026-07-06 | 2026-07-11 | DAM3-05-012-1080 SS+48d, DAM3-05-012-2150 | 0d |
| DAM3-05-012-3790 |  | Workstation table (Material Prepare & Submit) | 5d | 2026-07-06 | 2026-07-11 | DAM3-05-012-1080 SS+48d, DAM3-05-012-3780 SS | 0d |
|  | 1 | **Mechanical** |  | 2026-05-20 | 2026-06-03 |  |  |
| DAM3-05-012-1230 |  | Fire extinguishers as per drawings, specifications (Material Prepare & Submit) | 5d | 2026-05-20 | 2026-05-25 | DAM3-05-012-1080 SS+12d, DAM3-05-012-1160 | 1d |
| DAM3-05-012-1310 |  | HEATING, VENTILATION AND AIR CONDITIONING - (Material Prepare & Submit) | 4d | 2026-05-21 | 2026-05-31 | DAM3-05-012-1080 SS+13d, DAM3-05-012-1300 SS | 0.75d |
| DAM3-05-012-1390 |  | Bulbblers and Spreyers of IRRIGATION SYSTEM (Material Prepare & Submit) | 4d | 2026-05-23 | 2026-06-01 | DAM3-05-012-1080 SS+14d, DAM3-05-012-1380 SS | 0.75d |
| DAM3-05-012-1490 |  | TOILET ACCESSROIES (Material Prepare & Submit) | 4d | 2026-05-24 | 2026-06-02 | DAM3-05-012-1080 SS+15d, DAM3-05-012-1480 SS | 0.75d |
| DAM3-05-012-1560 |  | Exhaust fans - (Material Prepare & Submit) | 4d | 2026-05-25 | 2026-06-03 | DAM3-05-012-1080 SS+16d, DAM3-05-012-1550 SS | 0.75d |
| DAM3-05-012-1610 |  | IRRIGATION SYSTEM (Material Prepare & Submit) | 4d | 2026-05-25 | 2026-06-03 | DAM3-05-012-1080 SS+16d, DAM3-05-012-1600 SS | 0.75d |
| DAM3-05-012-1800 |  | PLUMBING FIXTURES (Material Prepare & Submit) | 4d | 2026-05-31 | 2026-06-03 | DAM3-05-012-1080 SS+17d, DAM3-05-012-1790 SS | 0d |
| DAM3-05-012-1890 |  | WATER SUPPLY SYSTEM (Material Prepare & Submit) | 4d | 2026-05-31 | 2026-06-03 | DAM3-05-012-1080 SS+17d, DAM3-05-012-1880 SS | 0d |
|  | 2 | **Electrical** |  | 2026-05-21 | 2026-06-07 |  |  |
| DAM3-05-012-1320 |  | Central (Headend) System Components; (Material Prepare & Submit) | 4d | 2026-05-21 | 2026-05-31 | DAM3-05-012-1080 SS+13d, DAM3-05-012-1310 SS | 0.75d |
| DAM3-05-012-1330 |  | Analog addressable fire alarm control panel with battery (Material Prepare & Submit) | 4d | 2026-05-21 | 2026-05-31 | DAM3-05-012-1080 SS+13d, DAM3-05-012-1320 SS | 0.75d |
| DAM3-05-012-1400 |  | LIGHTING FIXTURES (Material Prepare & Submit) | 4d | 2026-05-23 | 2026-06-01 | DAM3-05-012-1080 SS+14d, DAM3-05-012-1390 SS | 0.75d |
| DAM3-05-012-1410 |  | COMPUTERS AND RELATED PERIPHERALS (Material Prepare & Submit) | 4d | 2026-05-23 | 2026-06-01 | DAM3-05-012-1080 SS+14d, DAM3-05-012-1400 SS | 0.75d |
| DAM3-05-012-1420 |  | CCTV storage system, as specified(Material Prepare & Submit) | 4d | 2026-05-23 | 2026-06-01 | DAM3-05-012-1080 SS+14d, DAM3-05-012-1410 SS | 0.75d |
| DAM3-05-012-1430 |  | ELECTRICAL GATE BARRIER (Material Prepare & Submit) | 4d | 2026-05-23 | 2026-06-01 | DAM3-05-012-1080 SS+14d, DAM3-05-012-1420 SS | 0.75d |
| DAM3-05-012-1440 |  | LIGHTNING PROTECTION (Material Prepare & Submit) | 4d | 2026-05-23 | 2026-06-01 | DAM3-05-012-1080 SS+14d, DAM3-05-012-1430 SS | 0.75d |
| DAM3-05-012-1450 |  | Intelligent Ionization / Photoelectric smoke and heat detector with base (Material Prepare & Submit) | 4d | 2026-05-23 | 2026-06-01 | DAM3-05-012-1080 SS+14d, DAM3-05-012-1440 SS | 0.75d |
| DAM3-05-012-1570 |  | power source with built-in photocell sensor for automatic electrical connection (Material Prepare & Submit) | 4d | 2026-05-25 | 2026-06-03 | DAM3-05-012-1080 SS+16d, DAM3-05-012-1560 SS | 0.75d |
| DAM3-05-012-1580 |  | UNDERGROUND DISTRIBUTION SYSTEM -(Material Prepare & Submit) | 4d | 2026-05-25 | 2026-06-03 | DAM3-05-012-1080 SS+16d, DAM3-05-012-1570 SS | 0.75d |
| DAM3-05-012-1590 |  | GROUNDING - (Material Prepare & Submit) | 4d | 2026-05-25 | 2026-06-03 | DAM3-05-012-1080 SS+16d, DAM3-05-012-1580 SS | 0.75d |
| DAM3-05-012-1600 |  | card reader IN/OUT (Material Prepare & Submit) | 4d | 2026-05-25 | 2026-06-03 | DAM3-05-012-1080 SS+16d, DAM3-05-012-1590 SS | 0.75d |
| DAM3-05-012-1810 |  | switches and Receptacle outlets complete with device boxes (Material Prepare & Submit) | 4d | 2026-05-31 | 2026-06-03 | DAM3-05-012-1080 SS+17d, DAM3-05-012-1800 SS | 0d |
| DAM3-05-012-1820 |  | 12-Port CAT6A UTP fully loaded patch panel (Material Prepare & Submit) | 4d | 2026-05-31 | 2026-06-03 | DAM3-05-012-1080 SS+17d, DAM3-05-012-1810 SS | 0d |
| DAM3-05-012-1830 |  | (Material Prepare & Submit)Port, SMF, Fiber Optic Patch Panels | 4d | 2026-05-31 | 2026-06-03 | DAM3-05-012-1080 SS+17d, DAM3-05-012-1820 SS | 0d |
| DAM3-05-012-1840 |  | VIDEO SURVEILLANCE (Material Prepare & Submit) | 4d | 2026-05-31 | 2026-06-03 | DAM3-05-012-1080 SS+17d, DAM3-05-012-1830 SS | 0d |
| DAM3-05-012-1850 |  | VSS System, as specified; (Material Prepare & Submit) | 4d | 2026-05-31 | 2026-06-03 | DAM3-05-012-1080 SS+17d, DAM3-05-012-1840 SS | 0d |
| DAM3-05-012-1860 |  | CCTV cameras (Material Prepare & Submit) | 4d | 2026-05-31 | 2026-06-03 | DAM3-05-012-1080 SS+17d, DAM3-05-012-1850 SS | 0d |
| DAM3-05-012-1870 |  | 20A , ATS ( Automatic transfer switch) for UPS (Material Prepare & Submit) | 4d | 2026-05-31 | 2026-06-03 | DAM3-05-012-1080 SS+17d, DAM3-05-012-1860 SS | 0d |
| DAM3-05-012-1880 |  | fire alarm system including wires, conduit and other materials - (Material Prepare & Submit) | 4d | 2026-05-31 | 2026-06-03 | DAM3-05-012-1080 SS+17d, DAM3-05-012-1870 SS | 0d |
| DAM3-05-012-2010 |  | 3mm steel CNC laser cut panels (Material Prepare & Submit) | 5d | 2026-06-01 | 2026-06-06 | DAM3-05-012-1080 SS+18d, DAM3-05-012-2000 SS | 0d |
| DAM3-05-012-2020 |  | Access control panel - (Material Prepare & Submit) | 5d | 2026-06-01 | 2026-06-06 | DAM3-05-012-1080 SS+18d, DAM3-05-012-2010 SS | 0d |
| DAM3-05-012-2150 |  | LIGHTING AND POWER TYPE PANELBOARDS (Material Prepare & Submit) | 5d | 2026-06-02 | 2026-06-07 | DAM3-05-012-1080 SS+19d, DAM3-05-012-2140 SS | 1d |
|  | 2 | **Material Review & Approve** |  | 2026-05-31 | 2026-07-18 |  |  |
|  | 3 | **Civil & Arch** |  | 2026-05-31 | 2026-07-18 |  |  |
| DAM3-05-012-1900 |  | Backfilling for guard rooms under G.Beams (Material Review & Approve) | 2d | 2026-05-31 | 2026-06-02 | DAM3-05-012-1240 | 0.75d |
| DAM3-05-012-1910 |  | interlocking paving blocks (Material Review & Approve) | 6d | 2026-05-31 | 2026-06-07 | DAM3-05-012-1250 | 44.75d |
| DAM3-05-012-1920 |  | Concrete Masonry Unit (CMU) for walls (Material Review & Approve) | 6d | 2026-05-31 | 2026-06-07 | DAM3-05-012-1260 | 18.75d |
| DAM3-05-012-1930 |  | overflow galvanized steel roof scupper with gray color with angular secondary support(Material Review & Approve) | 6d | 2026-05-31 | 2026-06-07 | DAM3-05-012-1270 | 34.75d |
| DAM3-05-012-1940 |  | aluminum framed double glazed windows (Material Review & Approve) | 6d | 2026-05-31 | 2026-06-07 | DAM3-05-012-1280 | 35.75d |
| DAM3-05-012-1950 |  | Riyadh stone cladding (Material Review & Approve) | 6d | 2026-05-31 | 2026-06-07 | DAM3-05-012-1290 | 34.75d |
| DAM3-05-012-1960 |  | PANEL SIGNAGE (Material Review & Approve) | 6d | 2026-05-31 | 2026-06-07 | DAM3-05-012-1300 | 37.75d |
| DAM3-05-012-2030 |  | Aluminum Door (Material Review & Approve) | 6d | 2026-06-01 | 2026-06-08 | DAM3-05-012-1360 | 32.75d |
| DAM3-05-012-2040 |  | structural steel members for gate frame (Material Review & Approve) | 6d | 2026-06-01 | 2026-06-08 | DAM3-05-012-1370 | 7.75d |
| DAM3-05-012-2050 |  | installation of structural steel members and plates for main gates (Material Review & Approve) | 6d | 2026-06-01 | 2026-06-08 | DAM3-05-012-1380 | 12.75d |
| DAM3-05-012-2170 |  | plant trees, plants, and ground covers including fixations, sweet soil (Material Review & Approve) | 6d | 2026-06-02 | 2026-06-09 | DAM3-05-012-1480 | 34.75d |

| ID | WBS | Task | Duration | Start | Finish | Predecessors | Total float |
| --- | --- | --- | --- | --- | --- | --- | --- |
| DAM3-05-012-2200 |  | precast concrete curbstone (Material Review & Approve) | 6d | 2026-06-03 | 2026-06-10 | DAM3-05-012-1500 | 41.75d |
| DAM3-05-012-2210 |  | 19 to 38mm locally available stone gravel (Material Review & Approve) | 6d | 2026-06-03 | 2026-06-10 | DAM3-05-012-1510 | 39.75d |
| DAM3-05-012-2220 |  | PANTRY CABINET (Material Review & Approve) | 6d | 2026-06-03 | 2026-06-10 | DAM3-05-012-1520 | 32.75d |
| DAM3-05-012-2230 |  | COUNTER DESK (Material Review & Approve) | 6d | 2026-06-03 | 2026-06-10 | DAM3-05-012-1530 | 33.75d |
| DAM3-05-012-2240 |  | Roller blind (Material Review & Approve) | 6d | 2026-06-03 | 2026-06-10 | DAM3-05-012-1540 | 37.75d |
| DAM3-05-012-2250 |  | installation of structural steel members and plates for pedestrian gates (Material Review & Approve) | 6d | 2026-06-03 | 2026-06-10 | DAM3-05-012-1550 | 16.75d |
| DAM3-05-012-2340 |  | Backfilling for Roads (Material Review & Approve) | 6d | 2026-06-04 | 2026-06-10 | DAM3-05-012-1640 | 36d |
| DAM3-05-012-2350 |  | interlocking pedstrian paving blocks (Material Review & Approve) | 6d | 2026-06-04 | 2026-06-10 | DAM3-05-012-1650 | 41d |
| DAM3-05-012-2360 |  | folding & sliding mounter combination ladder for building maintenance purpose (Material Review & Approve) | 6d | 2026-06-04 | 2026-06-10 | DAM3-05-012-1660 | 31d |
| DAM3-05-012-2380 |  | hollow metal door (Material Review & Approve) | 6d | 2026-06-04 | 2026-06-10 | DAM3-05-012-1680 | 29d |
| DAM3-05-012-2390 |  | granite saddles and thresholds (Material Review & Approve) | 6d | 2026-06-04 | 2026-06-10 | DAM3-05-012-1690 | 30d |
| DAM3-05-012-2400 |  | ceramic wall tiles (Material Review & Approve) | 6d | 2026-06-04 | 2026-06-10 | DAM3-05-012-1700 | 30d |
| DAM3-05-012-2410 |  | two coats of acrylic paint on internal walls (Material Review & Approve) | 6d | 2026-06-04 | 2026-06-10 | DAM3-05-012-1710 | 36d |
| DAM3-05-012-2420 |  | two coats of acrylic paint (suitable for exterior use) on external (Material Review & Approve) | 6d | 2026-06-04 | 2026-06-10 | DAM3-05-012-1720 | 41d |
| DAM3-05-012-2430 |  | aluminum cladding (Material Review & Approve) | 6d | 2026-06-04 | 2026-06-10 | DAM3-05-012-1730 | 30d |
| DAM3-05-012-2440 |  | gypsum board suspended ceiling (Material Review & Approve) | 6d | 2026-06-04 | 2026-06-10 | DAM3-05-012-1740 | 38d |
| DAM3-05-012-2450 |  | Waste Receptacle(Material Review & Approve) | 6d | 2026-06-04 | 2026-06-10 | DAM3-05-012-1750 | 32d |
| DAM3-05-012-2460 |  | structural steel members and steel hollow sections for wall fence (Material Review & Approve) | 6d | 2026-06-04 | 2026-06-10 | DAM3-05-012-1760 | 16d |
| DAM3-05-012-2470 |  | fix galvanized steel chain link gate (Material Review & Approve) | 6d | 2026-06-04 | 2026-06-10 | DAM3-05-012-1770 | 27d |
| DAM3-05-012-2480 |  | gully traps with heavy duty cover (Material Review & Approve) | 6d | 2026-06-04 | 2026-06-10 | DAM3-05-012-1780 | 31d |
| DAM3-05-012-2490 |  | chamber with heavy duty cover (Material Review & Approve) | 6d | 2026-06-04 | 2026-06-10 | DAM3-05-012-1790 | 33d |
| DAM3-05-012-2630 |  | ceramic floor tiles (Material Review & Approve) | 6d | 2026-06-07 | 2026-06-13 | DAM3-05-012-2000 | 33d |
| DAM3-05-012-2640 |  | 3mm steel CNC laser cut panels (Material Review & Approve) | 6d | 2026-06-07 | 2026-06-13 | DAM3-05-012-2010 | 28d |
| DAM3-05-012-2920 |  | matt stainless steel flag pole (Material Review & Approve) (Material Review & Approve) | 6d | 2026-06-08 | 2026-06-14 | DAM3-05-012-2130 | 32d |
| DAM3-05-012-2930 |  | galvanized steel chain link ,steel tube framing and posts, turn buckle, tension wir.etc(Material Review & Approve) | 6d | 2026-06-08 | 2026-06-14 | DAM3-05-012-2140 | 0d |
| DAM3-05-012-3590 |  | granite flooring (Material Review & Approve) | 6d | 2026-06-15 | 2026-06-21 | DAM3-05-012-3070 | 0d |
| DAM3-05-012-3890 |  | Workstation chair (Material Review & Approve) | 6d | 2026-07-12 | 2026-07-18 | DAM3-05-012-3780 | 0d |
| DAM3-05-012-3900 |  | Workstation table (Material Review & Approve) | 6d | 2026-07-12 | 2026-07-18 | DAM3-05-012-3790 | 0d |
|  | 1 | **Mechanical** |  | 2026-05-31 | 2026-06-10 |  |  |
| DAM3-05-012-1630 |  | installation of Fire extinguishers as per drawings, specifications (Material Review & Approve) | 5d | 2026-05-31 | 2026-06-04 | DAM3-05-012-1230 | 38d |
| DAM3-05-012-2060 |  | Bulbblers and Spreyers of IRRIGATION SYSTEM (Material Review & Approve) | 6d | 2026-06-01 | 2026-06-08 | DAM3-05-012-1390 | 35.75d |
| DAM3-05-012-2180 |  | TOILET ACCESSROIES (Material Review & Approve) | 6d | 2026-06-02 | 2026-06-09 | DAM3-05-012-1490 | 33.75d |
| DAM3-05-012-2290 |  | GROUNDING - (Material Review & Approve) | 6d | 2026-06-03 | 2026-06-10 | DAM3-05-012-1590 | 38.75d |
| DAM3-05-012-2310 |  | IRRIGATION SYSTEM (Material Review & Approve) | 6d | 2026-06-03 | 2026-06-10 | DAM3-05-012-1610 | 30.75d |
| DAM3-05-012-2370 |  | heavy steel cover with frame including all necessary fixings(Material Review & Approve) | 6d | 2026-06-04 | 2026-06-10 | DAM3-05-012-1670 | 34d |
| DAM3-05-012-2500 |  | PLUMBING FIXTURES (Material Review & Approve) | 6d | 2026-06-04 | 2026-06-10 | DAM3-05-012-1800 | 35d |
| DAM3-05-012-2590 |  | WATER SUPPLY SYSTEM (Material Review & Approve) | 6d | 2026-06-04 | 2026-06-10 | DAM3-05-012-1890 | 33d |
|  | 2 | **Electrical** |  | 2026-05-31 | 2026-06-14 |  |  |
| DAM3-05-012-1970 |  | HEATING, VENTILATION AND AIR CONDITIONING - (Material Review & Approve) | 6d | 2026-05-31 | 2026-06-07 | DAM3-05-012-1310 | 36.75d |
| DAM3-05-012-1980 |  | Central (Headend) System Components; (Material Review & Approve) | 6d | 2026-05-31 | 2026-06-07 | DAM3-05-012-1320 | 37.75d |
| DAM3-05-012-1990 |  | Analog addressable fire alarm control panel with battery (Material Review & Approve) | 6d | 2026-05-31 | 2026-06-07 | DAM3-05-012-1330 | 37.75d |
| DAM3-05-012-2070 |  | LIGHTING FIXTURES (Material Review & Approve) | 6d | 2026-06-01 | 2026-06-08 | DAM3-05-012-1400 | 37.75d |
| DAM3-05-012-2080 |  | COMPUTERS AND RELATED PERIPHERALS (Material Review & Approve) | 6d | 2026-06-01 | 2026-06-08 | DAM3-05-012-1410 | 36.75d |
| DAM3-05-012-2090 |  | CCTV storage system, as specified(Material Review & Approve) | 6d | 2026-06-01 | 2026-06-08 | DAM3-05-012-1420 | 34.75d |
| DAM3-05-012-2100 |  | ELECTRICAL GATE BARRIER (Material Review & Approve) | 6d | 2026-06-01 | 2026-06-08 | DAM3-05-012-1430 | 36.75d |
| DAM3-05-012-2110 |  | LIGHTNING PROTECTION (Material Review & Approve) | 6d | 2026-06-01 | 2026-06-08 | DAM3-05-012-1440 | 34.75d |
| DAM3-05-012-2120 |  | Intelligent Ionization / Photoelectric smoke and heat detector with base (Material Review & Approve) | 6d | 2026-06-01 | 2026-06-08 | DAM3-05-012-1450 | 34.75d |
| DAM3-05-012-2260 |  | Exhaust fans - (Material Review & Approve) | 6d | 2026-06-03 | 2026-06-10 | DAM3-05-012-1560 | 31.75d |
| DAM3-05-012-2270 |  | power source with built-in photocell sensor for automatic electrical connection (Material Review & Approve) | 6d | 2026-06-03 | 2026-06-10 | DAM3-05-012-1570 | 36.75d |
| DAM3-05-012-2280 |  | UNDERGROUND DISTRIBUTION SYSTEM -(Material Review & Approve) | 6d | 2026-06-03 | 2026-06-10 | DAM3-05-012-1580 | 33.75d |
| DAM3-05-012-2300 |  | card reader IN/OUT (Material Review & Approve) | 6d | 2026-06-03 | 2026-06-10 | DAM3-05-012-1600 | 31.75d |
| DAM3-05-012-2510 |  | switches and Receptacle outlets complete with device boxes (Material Review & Approve) | 6d | 2026-06-04 | 2026-06-10 | DAM3-05-012-1810 | 33d |
| DAM3-05-012-2520 |  | 12-Port CAT6A UTP fully loaded patch panel (Material Review & Approve) | 6d | 2026-06-04 | 2026-06-10 | DAM3-05-012-1820 | 31d |
| DAM3-05-012-2530 |  | (Material Review & Approve)Port, SMF, Fiber Optic Patch Panels | 6d | 2026-06-04 | 2026-06-10 | DAM3-05-012-1830 | 31d |
| DAM3-05-012-2540 |  | VIDEO SURVEILLANCE (Material Review & Approve) | 6d | 2026-06-04 | 2026-06-10 | DAM3-05-012-1840 | 31d |
| DAM3-05-012-2550 |  | VSS System, as specified; (Material Review & Approve) | 6d | 2026-06-04 | 2026-06-10 | DAM3-05-012-1850 | 31d |
| DAM3-05-012-2560 |  | CCTV cameras (Material Review & Approve) | 6d | 2026-06-04 | 2026-06-10 | DAM3-05-012-1860 | 32d |
| DAM3-05-012-2570 |  | 20A , ATS ( Automatic transfer switch) for UPS (Material Review & Approve) | 6d | 2026-06-04 | 2026-06-10 | DAM3-05-012-1870 | 31d |
| DAM3-05-012-2580 |  | fire alarm system including wires, conduit and other materials - (Material Review & Approve) | 6d | 2026-06-04 | 2026-06-10 | DAM3-05-012-1880 | 31d |
| DAM3-05-012-2650 |  | Access control panel - (Material Review & Approve) | 6d | 2026-06-07 | 2026-06-13 | DAM3-05-012-2020 | 29d |
| DAM3-05-012-2940 |  | LIGHTING AND POWER TYPE PANELBOARDS (Material Review & Approve) | 6d | 2026-06-08 | 2026-06-14 | DAM3-05-012-2150 | 29d |
|  | 7 | **Procurement** |  | 2026-06-02 | 2026-08-04 |  |  |
|  | 5 | **Fabrication & Delivery** |  | 2026-06-02 | 2026-08-04 |  |  |
|  | 3 | **Civil & Arch** |  | 2026-06-02 | 2026-08-04 |  |  |
| DAM3-05-012-2160 |  | Backfilling for guard rooms under G.Beams (Fabrication & Delivery) | 2d | 2026-06-02 | 2026-06-04 | DAM3-05-012-1900 | 0.75d |
| DAM3-05-012-2830 |  | interlocking paving blocks (Fabrication & Delivery) | 5d | 2026-06-07 | 2026-06-13 | DAM3-05-012-1910 | 44.75d |
| DAM3-05-012-2840 |  | Concrete Masonry Unit (CMU) for walls (Fabrication & Delivery) | 4d | 2026-06-07 | 2026-06-11 | DAM3-05-012-1920 | 18.75d |
| DAM3-05-012-2850 |  | overflow galvanized steel roof scupper with gray color with angular secondary support(Fabrication & Delivery) | 15d | 2026-06-07 | 2026-06-24 | DAM3-05-012-1930 | 34.75d |
| DAM3-05-012-2860 |  | aluminum framed double glazed windows (Fabrication & Delivery) | 13d | 2026-06-07 | 2026-06-22 | DAM3-05-012-1940 | 35.75d |
| DAM3-05-012-2870 |  | Riyadh stone cladding (Fabrication & Delivery) | 12d | 2026-06-07 | 2026-06-21 | DAM3-05-012-1950 | 34.75d |

| ID | WBS | Task | Duration | Start | Finish | Predecessors | Total float |
| --- | --- | --- | --- | --- | --- | --- | --- |
| DAM3-05-012-2880 |  | PANEL SIGNAGE (Fabrication & Delivery) | 12d | 2026-06-07 | 2026-06-21 | DAM3-05-012-1960 | 37.75d |
| DAM3-05-012-2970 |  | Aluminum Door (Fabrication & Delivery) | 15d | 2026-06-08 | 2026-06-25 | DAM3-05-012-2030 | 32.75d |
| DAM3-05-012-2980 |  | structural steel members for gate frame (Fabrication & Delivery) | 15d | 2026-06-08 | 2026-06-25 | DAM3-05-012-2040 | 7.75d |
| DAM3-05-012-2990 |  | installation of structural steel members and plates for main gates (Fabrication & Delivery) | 12d | 2026-06-08 | 2026-06-22 | DAM3-05-012-2050 | 12.75d |
| DAM3-05-012-3090 |  | TOILET ACCESSROIES (Fabrication & Delivery) | 14d | 2026-06-09 | 2026-06-25 | DAM3-05-012-2180 | 33.75d |
| DAM3-05-012-3130 |  | precast concrete curbstone (Fabrication & Delivery) | 5d | 2026-06-10 | 2026-06-16 | DAM3-05-012-2200 | 41.75d |
| DAM3-05-012-3140 |  | 19 to 38mm locally available stone gravel (Fabrication & Delivery) | 5d | 2026-06-10 | 2026-06-16 | DAM3-05-012-2210 | 39.75d |
| DAM3-05-012-3150 |  | PANTRY CABINET (Fabrication & Delivery) | 14d | 2026-06-10 | 2026-06-27 | DAM3-05-012-2220 | 32.75d |
| DAM3-05-012-3160 |  | COUNTER DESK (Fabrication & Delivery) | 12d | 2026-06-10 | 2026-06-24 | DAM3-05-012-2230 | 33.75d |
| DAM3-05-012-3170 |  | Roller blind (Fabrication & Delivery) | 10d | 2026-06-10 | 2026-06-22 | DAM3-05-012-2240 | 37.75d |
| DAM3-05-012-3180 |  | installation of structural steel members and plates for pedestrian gates (Fabrication & Delivery) | 14d | 2026-06-10 | 2026-06-27 | DAM3-05-012-2250 | 16.75d |
| DAM3-05-012-3250 |  | Backfilling for Roads (Fabrication & Delivery) | 4d | 2026-06-11 | 2026-06-15 | DAM3-05-012-2340 | 36d |
| DAM3-05-012-3260 |  | interlocking pedstrian paving blocks (Fabrication & Delivery) | 5d | 2026-06-11 | 2026-06-16 | DAM3-05-012-2350 | 41d |
| DAM3-05-012-3270 |  | folding & sliding mounter combination ladder for building maintenance purpose (Fabrication & Delivery) | 15d | 2026-06-11 | 2026-06-28 | DAM3-05-012-2360 | 31d |
| DAM3-05-012-3280 |  | heavy steel cover with frame including all necessary fixings(Fabrication & Delivery) | 12d | 2026-06-11 | 2026-06-24 | DAM3-05-012-2370 | 34d |
| DAM3-05-012-3290 |  | hollow metal door (Fabrication & Delivery) | 15d | 2026-06-11 | 2026-06-28 | DAM3-05-012-2380 | 29d |
| DAM3-05-012-3300 |  | granite saddles and thresholds (Fabrication & Delivery) | 12d | 2026-06-11 | 2026-06-24 | DAM3-05-012-2390 | 30d |
| DAM3-05-012-3310 |  | ceramic wall tiles (Fabrication & Delivery) | 15d | 2026-06-11 | 2026-06-28 | DAM3-05-012-2400 | 30d |
| DAM3-05-012-3320 |  | two coats of acrylic paint on internal walls (Fabrication & Delivery) | 10d | 2026-06-11 | 2026-06-22 | DAM3-05-012-2410 | 36d |
| DAM3-05-012-3330 |  | two coats of acrylic paint (suitable for exterior use) on external (Fabrication & Delivery) | 5d | 2026-06-11 | 2026-06-16 | DAM3-05-012-2420 | 41d |
| DAM3-05-012-3340 |  | aluminum cladding (Fabrication & Delivery) | 13d | 2026-06-11 | 2026-06-25 | DAM3-05-012-2430 | 30d |
| DAM3-05-012-3350 |  | gypsum board suspended ceiling (Fabrication & Delivery) | 4d | 2026-06-11 | 2026-06-15 | DAM3-05-012-2440 | 38d |
| DAM3-05-012-3370 |  | structural steel members and steel hollow sections for wall fence (Fabrication & Delivery) | 15d | 2026-06-11 | 2026-06-28 | DAM3-05-012-2460 | 16d |
| DAM3-05-012-3380 |  | fix galvanized steel chain link gate (Fabrication & Delivery) | 10d | 2026-06-11 | 2026-06-22 | DAM3-05-012-2470 | 27d |
| DAM3-05-012-3390 |  | gully traps with heavy duty cover (Fabrication & Delivery) | 14d | 2026-06-11 | 2026-06-27 | DAM3-05-012-2480 | 31d |
| DAM3-05-012-3400 |  | chamber with heavy duty cover (Fabrication & Delivery) | 12d | 2026-06-11 | 2026-06-24 | DAM3-05-012-2490 | 33d |
| DAM3-05-012-3410 |  | PLUMBING FIXTURES (Fabrication & Delivery) | 10d | 2026-06-11 | 2026-06-22 | DAM3-05-012-2500 | 35d |
| DAM3-05-012-3510 |  | ceramic floor tiles (Fabrication & Delivery) | 10d | 2026-06-14 | 2026-06-24 | DAM3-05-012-2630 | 33d |
| DAM3-05-012-3520 |  | 3mm steel CNC laser cut panels (Fabrication & Delivery) | 12d | 2026-06-14 | 2026-06-27 | DAM3-05-012-2640 | 28d |
| DAM3-05-012-3560 |  | matt stainless steel flag pole (Fabrication & Delivery) (Fabrication & Delivery) | 10d | 2026-06-15 | 2026-06-25 | DAM3-05-012-2920 | 32d |
| DAM3-05-012-3570 |  | galvanized steel chain link ,steel tube framing and posts, turn buckle, tension wir.etc(Fabrication & Delivery) | 15d | 2026-06-15 | 2026-07-01 | DAM3-05-012-2930 | 0d |
| DAM3-05-012-4080 |  | Workstation chair (Fabrication & Delivery) | 15d | 2026-07-19 | 2026-08-04 | DAM3-05-012-3890 | 0d |
| DAM3-05-012-4090 |  | Workstation table (Fabrication & Delivery) | 15d | 2026-07-19 | 2026-08-04 | DAM3-05-012-3900 | 0d |
| DAM3-05-012-4120 |  | granite flooring (Fabrication & Delivery) | 10d | 2026-07-22 | 2026-08-02 | DAM3-05-012-3590 FS+26d | 0d |
|  | 1 | **Mechanical** |  | 2026-06-06 | 2026-06-28 |  |  |
| DAM3-05-012-2620 |  | installation of Fire extinguishers as per drawings, specifications (Fabrication & Delivery) | 12d | 2026-06-06 | 2026-06-18 | DAM3-05-012-1630 | 38d |
| DAM3-05-012-2890 |  | HEATING, VENTILATION AND AIR CONDITIONING - (Fabrication & Delivery) | 12d | 2026-06-07 | 2026-06-21 | DAM3-05-012-1970 | 36.75d |
| DAM3-05-012-3000 |  | Bulbblers and Spreyers of IRRIGATION SYSTEM (Fabrication & Delivery) | 12d | 2026-06-08 | 2026-06-22 | DAM3-05-012-2060 | 35.75d |
| DAM3-05-012-3020 |  | COMPUTERS AND RELATED PERIPHERALS (Fabrication & Delivery) | 12d | 2026-06-08 | 2026-06-22 | DAM3-05-012-2080 | 36.75d |
| DAM3-05-012-3060 |  | Intelligent Ionization / Photoelectric smoke and heat detector with base (Fabrication & Delivery) | 14d | 2026-06-08 | 2026-06-24 | DAM3-05-012-2120 | 34.75d |
| DAM3-05-012-3080 |  | plant trees, plants, and ground covers including fixations, sweet soil (Fabrication & Delivery) | 12d | 2026-06-09 | 2026-06-23 | DAM3-05-012-2170 | 34.75d |
| DAM3-05-012-3190 |  | Exhaust fans - (Fabrication & Delivery) | 14d | 2026-06-10 | 2026-06-27 | DAM3-05-012-2260 | 31.75d |
| DAM3-05-012-3240 |  | IRRIGATION SYSTEM (Fabrication & Delivery) | 15d | 2026-06-10 | 2026-06-28 | DAM3-05-012-2310 | 30.75d |
| DAM3-05-012-3360 |  | Waste Receptacle(Fabrication & Delivery) | 15d | 2026-06-11 | 2026-06-28 | DAM3-05-012-2450 | 32d |
| DAM3-05-012-3500 |  | WATER SUPPLY SYSTEM (Fabrication & Delivery) | 12d | 2026-06-11 | 2026-06-24 | DAM3-05-012-2590 | 33d |
|  | 2 | **Electrical** |  | 2026-06-07 | 2026-06-30 |  |  |
| DAM3-05-012-2900 |  | Central (Headend) System Components; (Fabrication & Delivery) | 12d | 2026-06-07 | 2026-06-21 | DAM3-05-012-1980 | 37.75d |
| DAM3-05-012-2910 |  | Analog addressable fire alarm control panel with battery (Fabrication & Delivery) | 12d | 2026-06-07 | 2026-06-21 | DAM3-05-012-1990 | 37.75d |
| DAM3-05-012-3010 |  | LIGHTING FIXTURES (Fabrication & Delivery) | 10d | 2026-06-08 | 2026-06-20 | DAM3-05-012-2070 | 37.75d |
| DAM3-05-012-3030 |  | CCTV storage system, as specified(Fabrication & Delivery) | 14d | 2026-06-08 | 2026-06-24 | DAM3-05-012-2090 | 34.75d |
| DAM3-05-012-3040 |  | ELECTRICAL GATE BARRIER (Fabrication & Delivery) | 12d | 2026-06-08 | 2026-06-22 | DAM3-05-012-2100 | 36.75d |
| DAM3-05-012-3050 |  | LIGHTNING PROTECTION (Fabrication & Delivery) | 14d | 2026-06-08 | 2026-06-24 | DAM3-05-012-2110 | 34.75d |
| DAM3-05-012-3200 |  | power source with built-in photocell sensor for automatic electrical connection (Fabrication & Delivery) | 10d | 2026-06-10 | 2026-06-22 | DAM3-05-012-2270 | 36.75d |
| DAM3-05-012-3210 |  | UNDERGROUND DISTRIBUTION SYSTEM -(Fabrication & Delivery) | 12d | 2026-06-10 | 2026-06-24 | DAM3-05-012-2280 | 33.75d |
| DAM3-05-012-3220 |  | GROUNDING - (Fabrication & Delivery) | 8d | 2026-06-10 | 2026-06-20 | DAM3-05-012-2290 | 38.75d |
| DAM3-05-012-3230 |  | card reader IN/OUT (Fabrication & Delivery) | 15d | 2026-06-10 | 2026-06-28 | DAM3-05-012-2300 | 31.75d |
| DAM3-05-012-3420 |  | switches and Receptacle outlets complete with device boxes (Fabrication & Delivery) | 12d | 2026-06-11 | 2026-06-24 | DAM3-05-012-2510 | 33d |
| DAM3-05-012-3430 |  | 12-Port CAT6A UTP fully loaded patch panel (Fabrication & Delivery) | 15d | 2026-06-11 | 2026-06-28 | DAM3-05-012-2520 | 31d |
| DAM3-05-012-3440 |  | (Fabrication & Delivery)Port, SMF, Fiber Optic Patch Panels | 15d | 2026-06-11 | 2026-06-28 | DAM3-05-012-2530 | 31d |
| DAM3-05-012-3450 |  | VIDEO SURVEILLANCE (Fabrication & Delivery) | 15d | 2026-06-11 | 2026-06-28 | DAM3-05-012-2540 | 31d |
| DAM3-05-012-3460 |  | VSS System, as specified; (Fabrication & Delivery) | 15d | 2026-06-11 | 2026-06-28 | DAM3-05-012-2550 | 31d |
| DAM3-05-012-3470 |  | CCTV cameras (Fabrication & Delivery) | 14d | 2026-06-11 | 2026-06-27 | DAM3-05-012-2560 | 32d |
| DAM3-05-012-3480 |  | 20A , ATS ( Automatic transfer switch) for UPS (Fabrication & Delivery) | 15d | 2026-06-11 | 2026-06-28 | DAM3-05-012-2570 | 31d |
| DAM3-05-012-3490 |  | fire alarm system including wires, conduit and other materials - (Fabrication & Delivery) | 15d | 2026-06-11 | 2026-06-28 | DAM3-05-012-2580 | 31d |
| DAM3-05-012-3530 |  | Access control panel - (Fabrication & Delivery) | 15d | 2026-06-14 | 2026-06-30 | DAM3-05-012-2650 | 29d |
| DAM3-05-012-3580 |  | LIGHTING AND POWER TYPE PANELBOARDS (Fabrication & Delivery) | 14d | 2026-06-15 | 2026-06-30 | DAM3-05-012-2940 | 29d |
|  | 4 | **Construction** |  | 2026-05-21 | 2026-08-05 |  |  |
|  | 1 | **SITE WORKS** |  | 2026-05-21 | 2026-08-05 |  |  |
|  | 4 | **Guard Rooms & Gates** |  | 2026-05-21 | 2026-06-15 |  |  |
| DAM3-05-012-1350 |  | Excavation for guard rooms | 8d | 2026-05-21 | 2026-06-03 | DAM3-05-012-1080, DAM3-05-012-1100, DAM3-05-012-1140, DAM3-05-012-1060, DAM3-05-012-1030, DAM3-05-012-1040, DAM3-05-012-1050, DAM3-05-012-1060 FF | 1d |

| ID | WBS | Task | Duration | Start | Finish | Predecessors | Total float |
| --- | --- | --- | --- | --- | --- | --- | --- |
| DAM3-05-012-2600 |  | Replacment Under Foundation | 2d | 2026-06-04 | 2026-06-07 | DAM3-05-012-1350, DAM3-05-012-2160 | 0.75d |
| DAM3-05-012-3540 |  | Backfilling Under G.Beam | 2d | 2026-06-13 | 2026-06-15 | DAM3-05-012-2950 | 0.75d |
| DAM3-05-012-3550 |  | Backfilling Under S.O.G | 2d | 2026-06-13 | 2026-06-15 | DAM3-05-012-2950 | 20.75d |
|  | 5 | **Guard Rooms & Gates (CONCRETE Works)** |  | 2026-06-04 | 2026-07-30 |  |  |
| DAM3-05-012-2610 |  | 50 mm thickness lean concrete under the foundation. | 3d | 2026-06-04 | 2026-06-08 | DAM3-05-012-2600 SS, DAM3-05-012-1010, DAM3-05-012-1000 | 0.75d |
| DAM3-05-012-2950 |  | Isolated Footings & Column Neck | 5d | 2026-06-07 | 2026-06-13 | DAM3-05-012-2610 SS+2d, DAM3-05-012-2600 | 0.75d |
| DAM3-05-012-3600 |  | 50 mm thickness lean concrete under grade beams. | 3d | 2026-06-15 | 2026-06-18 | DAM3-05-012-3540 | 0.75d |
| DAM3-05-012-3610 |  | Grade beams | 5d | 2026-06-18 | 2026-06-24 | DAM3-05-012-3600, DAM3-05-012-2190 | 0.75d |
| DAM3-05-012-3640 |  | Columns | 4d | 2026-06-24 | 2026-06-29 | DAM3-05-012-3610, DAM3-05-012-2660, DAM3-05-012-3100 | 0.75d |
| DAM3-05-012-3660 |  | Raft and R.C. walls | 5d | 2026-06-27 | 2026-07-02 | DAM3-05-012-3640 SS+2d | 0.75d |
| DAM3-05-012-3690 |  | Roof Slab | 8d | 2026-06-29 | 2026-07-08 | DAM3-05-012-3700 SS, DAM3-05-012-3640 | 0.75d |
| DAM3-05-012-3700 |  | Beams | 8d | 2026-06-29 | 2026-07-08 | DAM3-05-012-3640 | 0.75d |
| DAM3-05-012-3860 |  | Provide and cast concrete floor slab on grade | 5d | 2026-07-08 | 2026-07-14 | DAM3-05-012-3610 SS+2d, DAM3-05-012-3550, DAM3-05-012-3700 | 0.75d |
| DAM3-05-012-3870 |  | Concrete Pad | 3d | 2026-07-08 | 2026-07-12 | DAM3-05-012-3700 | 2.75d |
| DAM3-05-012-3880 |  | Tanks Raft | 5d | 2026-07-08 | 2026-07-14 | DAM3-05-012-3690 | 0.75d |
| DAM3-05-012-3930 |  | Tanks Walls | 5d | 2026-07-14 | 2026-07-20 | DAM3-05-012-3880, DAM3-05-012-3860, DAM3-05-012-3870 | 0.75d |
| DAM3-05-012-4140 |  | Tanks Slab | 4d | 2026-07-26 | 2026-07-30 | DAM3-05-012-3930, DAM3-05-012-4110 | 5.75d |
|  | 14 | **Fence Type 1** |  | 2026-05-23 | 2026-06-22 |  |  |
| DAM3-05-012-1470 |  | Excavation | 6d | 2026-05-23 | 2026-06-03 | DAM3-05-012-1460 SS, DAM3-05-012-1160 | 2.5d |
| DAM3-05-012-2330 |  | Replacment Under Foundation | 3d | 2026-06-04 | 2026-06-08 | DAM3-05-012-1470, DAM3-05-012-2160 | 1.75d |
| DAM3-05-012-3620 |  | Backfilling Under G.Beam | 2d | 2026-06-20 | 2026-06-22 | DAM3-05-012-3120, DAM3-05-012-2950 | 1.75d |
|  | 1 | **Fence Type 1 (CONCRETE Works)** |  | 2026-06-08 | 2026-07-05 |  |  |
| DAM3-05-012-2960 |  | 50 mm thickness lean concrete under the foundation. | 3d | 2026-06-08 | 2026-06-11 | DAM3-05-012-2330 SS+3d, DAM3-05-012-2600 SS+3d, DAM3-05-012-2330 | 1.75d |
| DAM3-05-012-3120 |  | Isolated Footings & Column Neck | 8d | 2026-06-10 | 2026-06-20 | DAM3-05-012-2960 SS+2d | 1.75d |
| DAM3-05-012-3630 |  | 50 mm thickness lean concrete under grade beams. | 3d | 2026-06-22 | 2026-06-25 | DAM3-05-012-3120, DAM3-05-012-3620, DAM3-05-012-3540 | 1.75d |
| DAM3-05-012-3650 |  | Grade beams | 8d | 2026-06-25 | 2026-07-05 | DAM3-05-012-3630 | 1.75d |
|  | 2 | **Fence Type 2** |  | 2026-06-03 | 2026-06-27 |  |  |
| DAM3-05-012-2320 |  | Excavation for Fence Type 2 | 20d | 2026-06-03 | 2026-06-27 | DAM3-05-012-1080 SS, DAM3-05-012-1470 | 16.5d |
|  | 3 | **Roads** |  | 2026-06-09 | 2026-08-05 |  |  |
| DAM3-05-012-3110 |  | Demolition of the existing asphalt layers to reach the foundation level of interlock layers | 2d | 2026-06-09 | 2026-06-11 | DAM3-05-012-2320 SS+5d | 37.5d |
| DAM3-05-012-3670 |  | Excavation for Roads | 10d | 2026-07-25 | 2026-08-05 | DAM3-05-012-2320, DAM3-05-012-2320 FF, DAM3-05-012-3110, DAM3-05-012-3930 FS+4d | 0.75d |
| DAM3-05-012-3710 |  | Backfilling for Roads | 8d | 2026-07-27 | 2026-08-05 | DAM3-05-012-3670 FF, DAM3-05-012-3250 | 0.75d |
| DAM3-05-012-3770 |  | install 19 to 38mm locally available stone gravel | 4d | 2026-07-30 | 2026-08-04 | DAM3-05-012-3760 FF-1d, DAM3-05-012-3140 | 1.75d |
| DAM3-05-012-3810 |  | plant trees, plants, and ground covers including fixations, sweet soil | 3d | 2026-08-01 | 2026-08-04 | DAM3-05-012-3770 FF, DAM3-05-012-3080 | 1.75d |
| DAM3-05-012-3820 |  | install matt stainless steel flag pole | 3d | 2026-08-01 | 2026-08-04 | DAM3-05-012-3810 FF, DAM3-05-012-3560 | 1.75d |
| DAM3-05-012-3740 |  | install interlocking paving blocks | 2d | 2026-08-03 | 2026-08-05 | DAM3-05-012-3110, DAM3-05-012-3670 FF, DAM3-05-012-2830 | 0.75d |
| DAM3-05-012-3760 |  | install precast concrete curbstone | 2d | 2026-08-03 | 2026-08-05 | DAM3-05-012-3800 FF, DAM3-05-012-3130 | 0.75d |
| DAM3-05-012-3800 |  | install interlocking pedstrian paving blocks | 2d | 2026-08-03 | 2026-08-05 | DAM3-05-012-3740 FF, DAM3-05-012-3260 | 0.75d |
|  | 3 | **MASONRY UNIT** |  | 2026-07-02 | 2026-07-06 |  |  |
| DAM3-05-012-3730 |  | install Concrete Masonry Unit (CMU) for walls | 3d | 2026-07-02 | 2026-07-06 | DAM3-05-012-2840, DAM3-05-012-3690 SS+3d, DAM3-05-012-3660 | 0.75d |
|  | 6 | **THERMAL & MOISTURE PROTECTION** |  | 2026-07-14 | 2026-07-30 |  |  |
|  | 1 | **THERMAL & MOISTURE PROTECTION - Foundation** |  | 2026-07-14 | 2026-07-19 |  |  |
| DAM3-05-012-3910 |  | apply 2 coats of bitumen waterproofing paint on concrete surface in contact with soil | 2d | 2026-07-14 | 2026-07-16 | DAM3-05-012-3920 SS | 17.75d |
| DAM3-05-012-3920 |  | install of waterproofing membrane 4mm including protection board for RC footings and RC walls | 2d | 2026-07-14 | 2026-07-16 | DAM3-05-012-3600 FS+22d | 4.75d |
| DAM3-05-012-3950 |  | lay epoxy 2 coating for inner surfaces for RC walls, RC footings | 2d | 2026-07-16 | 2026-07-19 | DAM3-05-012-3920 | 4.75d |
|  | 3 | **THERMAL & MOISTURE PROTECTION - Tanks** |  | 2026-07-18 | 2026-07-30 |  |  |
| DAM3-05-012-4070 |  | lay epoxy 2 coating for inner surfaces for bottom of the roof | 11d | 2026-07-18 | 2026-07-30 | DAM3-05-012-3970 SS | 0.75d |
| DAM3-05-012-4110 |  | install water stop for tanks according to the drawings and specification | 5d | 2026-07-20 | 2026-07-26 | DAM3-05-012-3930, DAM3-05-012-3950 | 3.75d |
|  | 7 | **ROOFING SYSTEM** |  | 2026-07-18 | 2026-07-30 |  |  |
| DAM3-05-012-3970 |  | install liquid applied waterproofing coating single-component pitch modified polyurethane based elastomeric | 11d | 2026-07-18 | 2026-07-30 | DAM3-05-012-3840 SS+10d | 0.75d |
| DAM3-05-012-3980 |  | install 4mm thick APP modified bituminous membrane - single layer | 11d | 2026-07-18 | 2026-07-30 | DAM3-05-012-4070 SS | 0.75d |
| DAM3-05-012-3990 |  | install 75mm thick rigid insulation (extruded polystyrene) | 11d | 2026-07-18 | 2026-07-30 | DAM3-05-012-3980 SS | 0.75d |
| DAM3-05-012-4000 |  | cast in place foam concrete screed, 50mm thick minimum; laid to fall and cross fall | 11d | 2026-07-18 | 2026-07-30 | DAM3-05-012-3990 SS | 0.75d |
| DAM3-05-012-4010 |  | install 300 micron polyethylene sheet | 11d | 2026-07-18 | 2026-07-30 | DAM3-05-012-4000 SS | 0.75d |
| DAM3-05-012-4020 |  | install 50mm thick loose gravel toppings | 11d | 2026-07-18 | 2026-07-30 | DAM3-05-012-4010 SS | 0.75d |
| DAM3-05-012-4030 |  | install high density polyisocynurate cover board | 11d | 2026-07-18 | 2026-07-30 | DAM3-05-012-4020 SS | 0.75d |
| DAM3-05-012-4040 |  | install UV resistant geotextile sheet | 11d | 2026-07-18 | 2026-07-30 | DAM3-05-012-4030 SS | 0.75d |
| DAM3-05-012-4050 |  | fixing 3mm thick extruded aluminum flashing 40mm with sealant and all other accessories | 11d | 2026-07-18 | 2026-07-30 | DAM3-05-012-4040 SS | 0.75d |
| DAM3-05-012-4060 |  | install Terrazzo tiles | 11d | 2026-07-18 | 2026-07-30 | DAM3-05-012-4050 SS | 0.75d |
|  | 9 | **FINISHES** |  | 2026-07-06 | 2026-08-05 |  |  |
| DAM3-05-012-3840 |  | install concrete plastering | 4d | 2026-07-06 | 2026-07-11 | DAM3-05-012-3730, DAM3-05-012-3650 | 0.75d |
| DAM3-05-012-4170 |  | install granite saddles and thresholds | 3d | 2026-07-30 | 2026-08-02 | DAM3-05-012-4200 SS, DAM3-05-012-3300, DAM3-05-012-4110 | 0d |
| DAM3-05-012-4190 |  | install 3mm steel CNC laser cut panels | 3d | 2026-07-30 | 2026-08-02 | DAM3-05-012-4210 FF, DAM3-05-012-3520 | 0d |
| DAM3-05-012-4200 |  | gypsum board suspended ceiling | 4d | 2026-07-30 | 2026-08-03 | DAM3-05-012-4490 SS-4d, DAM3-05-012-3350 | 0d |
| DAM3-05-012-3830 |  | install ceramic floor tiles | 3d | 2026-07-30 | 2026-08-03 | DAM3-05-012-2820 FF, DAM3-05-012-3510, DAM3-05-012-3820 FF-1d | 2.75d |
| DAM3-05-012-4180 |  | install Riyadh stone cladding | 3d | 2026-07-30 | 2026-08-03 | DAM3-05-012-4190 FF, DAM3-05-012-2870, DAM3-05-012-4070 | 0.75d |
| DAM3-05-012-4210 |  | install aluminum cladding | 2d | 2026-08-01 | 2026-08-02 | DAM3-05-012-4170 FF, DAM3-05-012-3340 | 0d |
| DAM3-05-012-4280 |  | install granite flooring | 2d | 2026-08-03 | 2026-08-04 | DAM3-05-012-3830 SS, DAM3-05-012-4120 | 0d |
| DAM3-05-012-4290 |  | install ceramic wall tiles | 3d | 2026-08-03 | 2026-08-05 | DAM3-05-012-4280 SS, DAM3-05-012-3310 | 0d |
| DAM3-05-012-4480 |  | install two coats of acrylic paint on internal walls | 2d | 2026-08-04 | 2026-08-05 | DAM3-05-012-4290 FF, DAM3-05-012-3320 | 0d |

| ID | WBS | Task | Duration | Start | Finish | Predecessors | Total float |
| --- | --- | --- | --- | --- | --- | --- | --- |
| DAM3-05-012-4490 |  | install two coats of acrylic paint (suitable for exterior use) on external | 2d | 2026-08-04 | 2026-08-05 | DAM3-05-012-4480 SS, DAM3-05-012-3330 | 0d |
|  | 12 | **SPECIAL CONSTRUCTION- STRUCTURAL STEEL (Fence Type 2)** |  | 2026-07-02 | 2026-08-05 |  |  |
| DAM3-05-012-3720 |  | fix galvanized steel chain link fence wall including steel tube framing and posts, turn buckle, tension wir...etc | 30d | 2026-07-02 | 2026-08-05 | DAM3-05-012-2320 SS+8d, DAM3-05-012-3570 | 0d |
| DAM3-05-012-3750 |  | install structural steel members for gate frame | 25d | 2026-07-05 | 2026-08-02 | DAM3-05-012-3720 SS+2d, DAM3-05-012-2980 | 0d |
| DAM3-05-012-3850 |  | installation of structural steel members and plates for main gates | 26d | 2026-07-07 | 2026-08-05 | DAM3-05-012-3750 SS+2d, DAM3-05-012-2990 | 0d |
| DAM3-05-012-3940 |  | installation of structural steel members and plates for pedestrian gates | 18d | 2026-07-16 | 2026-08-05 | DAM3-05-012-3850 SS+8d, DAM3-05-012-3180 | 0d |
| DAM3-05-012-3960 |  | Install structural steel members and steel hollow sections for wall fence | 17d | 2026-07-18 | 2026-08-05 | DAM3-05-012-4130 FF, DAM3-05-012-3370 | 0d |
| DAM3-05-012-4130 |  | fix galvanized steel chain link gate | 11d | 2026-07-25 | 2026-08-05 | DAM3-05-012-3940 SS+7d, DAM3-05-012-3380 | 0d |
|  | 13 | **MECHANICAL WORKS** |  | 2026-06-07 | 2026-08-05 |  |  |
|  | 1 | **MECHANICAL WORKS - 1st Fix** |  | 2026-06-07 | 2026-06-18 |  |  |
| DAM3-05-012-2670 |  | WATER SUPPLY SYSTEM - 1st Fix | 10d | 2026-06-07 | 2026-06-18 | DAM3-05-012-2690 SS | 38.75d |
| DAM3-05-012-2680 |  | SEWER AND DRAINAGE SYSTEM - 1st Fix | 10d | 2026-06-07 | 2026-06-18 | DAM3-05-012-2670 SS | 38.75d |
| DAM3-05-012-2690 |  | IRRIGATION SYSTEM - 1st Fix | 10d | 2026-06-07 | 2026-06-18 | DAM3-05-012-2950 SS | 38.75d |
| DAM3-05-012-2720 |  | HEATING, VENTILATION AND AIR CONDITIONING - 1st Fix | 10d | 2026-06-07 | 2026-06-18 | DAM3-05-012-2680 SS | 38.75d |
| DAM3-05-012-2730 |  | Exhaust fans - 1st Fix | 10d | 2026-06-07 | 2026-06-18 | DAM3-05-012-2720 SS | 38.75d |
|  | 2 | **MECHANICAL WORKS - Final Fix** |  | 2026-08-03 | 2026-08-05 |  |  |
| DAM3-05-012-4300 |  | installation of Fire extinguishers as per drawings, specifications | 3d | 2026-08-03 | 2026-08-05 | DAM3-05-012-4200 FS-1d, DAM3-05-012-2620, DAM3-05-012-2730, DAM3-05-012-4210, DAM3-05-012-4190, DAM3-05-012-4060 FS+2d | 0d |
| DAM3-05-012-4310 |  | chamber with heavy duty cover | 3d | 2026-08-03 | 2026-08-05 | DAM3-05-012-4520 FF, DAM3-05-012-3400 | 0d |
| DAM3-05-012-4320 |  | INSTALL PLUMBING FIXTURES | 3d | 2026-08-03 | 2026-08-05 | DAM3-05-012-4310 FF, DAM3-05-012-3410 | 0d |
| DAM3-05-012-4330 |  | HEATING, VENTILATION AND AIR CONDITIONING - Final Fix | 3d | 2026-08-03 | 2026-08-05 | DAM3-05-012-4320 FF, DAM3-05-012-2890 | 0d |
| DAM3-05-012-4340 |  | Exhaust fans - Final Fix | 3d | 2026-08-03 | 2026-08-05 | DAM3-05-012-4330 FF, DAM3-05-012-3190 | 0d |
| DAM3-05-012-4390 |  | IRRIGATION SYSTEM - Final Fix | 3d | 2026-08-03 | 2026-08-05 | DAM3-05-012-4650 FF, DAM3-05-012-3240 | 0d |
| DAM3-05-012-4520 |  | gully traps with heavy duty cover | 3d | 2026-08-03 | 2026-08-05 | DAM3-05-012-4300 FF, DAM3-05-012-3390 | 0d |
| DAM3-05-012-4530 |  | Bulbblers and Spreyers of IRRIGATION SYSTEM | 3d | 2026-08-03 | 2026-08-05 | DAM3-05-012-4340 FF, DAM3-05-012-3000 | 0d |
| DAM3-05-012-4650 |  | WATER SUPPLY SYSTEM - Final Fix | 3d | 2026-08-03 | 2026-08-05 | DAM3-05-012-4530 FF, DAM3-05-012-3500 | 0d |
|  | 15 | **ELECTRICAL WORKS** |  | 2026-06-07 | 2026-08-05 |  |  |
|  | 1 | **ELECTRICAL WORKS - 1st Fix** |  | 2026-06-07 | 2026-06-18 |  |  |
| DAM3-05-012-2700 |  | LIGHTING AND POWER TYPE PANELBOARDS - 1st Fix | 10d | 2026-06-07 | 2026-06-18 | DAM3-05-012-2730 SS | 39.75d |
| DAM3-05-012-2710 |  | UPS 3KVA (installed inside the rack) - 1st Fix | 10d | 2026-06-07 | 2026-06-18 | DAM3-05-012-2700 SS | 39.75d |
| DAM3-05-012-2740 |  | power source with built-in photocell sensor for automatic electrical connection during day/light times - 1st Fix | 10d | 2026-06-07 | 2026-06-18 | DAM3-05-012-2710 SS | 39.75d |
| DAM3-05-012-2750 |  | UNDERGROUND DISTRIBUTION SYSTEM - 1st Fix | 10d | 2026-06-07 | 2026-06-18 | DAM3-05-012-2740 SS | 39.75d |
| DAM3-05-012-2760 |  | LIGHTING FIXTURES - 1st Fix | 10d | 2026-06-07 | 2026-06-18 | DAM3-05-012-2750 SS | 39.75d |
| DAM3-05-012-2770 |  | installation of Wiring devices includes switches and Receptacle outlets complete with device boxes - 1st Fix | 10d | 2026-06-07 | 2026-06-18 | DAM3-05-012-2760 SS | 39.75d |
| DAM3-05-012-2780 |  | GROUNDING - 1st Fix | 10d | 2026-06-07 | 2026-06-18 | DAM3-05-012-2770 SS | 39.75d |
| DAM3-05-012-2790 |  | card reader IN/OUT - 1st Fix | 10d | 2026-06-07 | 2026-06-18 | DAM3-05-012-2780 SS | 39.75d |
| DAM3-05-012-2800 |  | CCTV cameras - 1st Fix | 10d | 2026-06-07 | 2026-06-18 | DAM3-05-012-2790 SS | 39.75d |
| DAM3-05-012-2810 |  | Access control panel - 1st Fix | 10d | 2026-06-07 | 2026-06-18 | DAM3-05-012-2800 SS | 39.75d |
| DAM3-05-012-2820 |  | fire alarm system including wires, conduit and other materials - 1st Fix | 10d | 2026-06-07 | 2026-06-18 | DAM3-05-012-2810 SS | 39.75d |
|  | 2 | **ELECTRICAL WORKS - Final Fix** |  | 2026-08-03 | 2026-08-05 |  |  |
| DAM3-05-012-4550 |  | LIGHTING FIXTURES - Final Fix | 3d | 2026-08-03 | 2026-08-05 | DAM3-05-012-4770 FF, DAM3-05-012-3010 | 0d |
| DAM3-05-012-4770 |  | UNDERGROUND DISTRIBUTION SYSTEM - Final Fix | 3d | 2026-08-03 | 2026-08-05 | DAM3-05-012-4540 FF, DAM3-05-012-3210 | 0d |
| DAM3-05-012-4780 |  | installation of Wiring devices includes switches and Receptacle outlets complete with device boxes - Final Fix | 3d | 2026-08-03 | 2026-08-05 | DAM3-05-012-4550 FF, DAM3-05-012-3420 | 0d |
| DAM3-05-012-4350 |  | GROUNDING - Final Fix | 2d | 2026-08-04 | 2026-08-05 | DAM3-05-012-4780 FF, DAM3-05-012-3220, DAM3-05-012-2820, DAM3-05-012-4180 | 0d |
| DAM3-05-012-4360 |  | 12-Port, SMF, Fiber Optic Patch Panels; | 2d | 2026-08-04 | 2026-08-05 | DAM3-05-012-4570 FF, DAM3-05-012-3440 | 0d |
| DAM3-05-012-4370 |  | VIDEO SURVEILLANCE | 2d | 2026-08-04 | 2026-08-05 | DAM3-05-012-4580 FF, DAM3-05-012-3450 | 0d |
| DAM3-05-012-4380 |  | CCTV storage system, as specified; | 2d | 2026-08-04 | 2026-08-05 | DAM3-05-012-4600 FF, DAM3-05-012-3030 | 0d |
| DAM3-05-012-4540 |  | power source with built-in photocell sensor for automatic electrical connection during day/light times - Final Fix | 2d | 2026-08-04 | 2026-08-05 | DAM3-05-012-4650 FF, DAM3-05-012-3200 | 0d |
| DAM3-05-012-4560 |  | card reader IN/OUT - Final Fix | 2d | 2026-08-04 | 2026-08-05 | DAM3-05-012-4350 FF, DAM3-05-012-3230 | 0d |
| DAM3-05-012-4570 |  | 12-Port CAT6A UTP fully loaded patch panel | 2d | 2026-08-04 | 2026-08-05 | DAM3-05-012-4790 FF, DAM3-05-012-3430 | 0d |
| DAM3-05-012-4580 |  | COMPUTERS AND RELATED PERIPHERALS | 2d | 2026-08-04 | 2026-08-05 | DAM3-05-012-4360 FF, DAM3-05-012-3020 | 0d |
| DAM3-05-012-4590 |  | Central (Headend) System Components; | 2d | 2026-08-04 | 2026-08-05 | DAM3-05-012-4370 FF, DAM3-05-012-2900 | 0d |
| DAM3-05-012-4600 |  | VSS System, as specified; | 2d | 2026-08-04 | 2026-08-05 | DAM3-05-012-4590 FF, DAM3-05-012-3460 | 0d |
| DAM3-05-012-4610 |  | CCTV cameras - Final Fix | 2d | 2026-08-04 | 2026-08-05 | DAM3-05-012-4380 FF, DAM3-05-012-3470 | 0d |
| DAM3-05-012-4620 |  | ELECTRICAL GATE BARRIER | 2d | 2026-08-04 | 2026-08-05 | DAM3-05-012-4800 FF, DAM3-05-012-3040 | 0d |
| DAM3-05-012-4630 |  | fire alarm system including wires, conduit and other materials - Final Fix | 2d | 2026-08-04 | 2026-08-05 | DAM3-05-012-4810 FF, DAM3-05-012-3490 | 0d |
| DAM3-05-012-4640 |  | Analog addressable fire alarm control panel with battery | 2d | 2026-08-04 | 2026-08-05 | DAM3-05-012-4630 FF, DAM3-05-012-2910 | 0d |
| DAM3-05-012-4660 |  | LIGHTING AND POWER TYPE PANELBOARDS - Final Fix | 2d | 2026-08-04 | 2026-08-05 | DAM3-05-012-4820 FF, DAM3-05-012-3580 | 0d |
| DAM3-05-012-4790 |  | Access control panel - Final Fix | 2d | 2026-08-04 | 2026-08-05 | DAM3-05-012-4560 FF, DAM3-05-012-3530 | 0d |
| DAM3-05-012-4800 |  | 20A , ATS ( Automatic transfer switch) for UPS | 2d | 2026-08-04 | 2026-08-05 | DAM3-05-012-4610 FF, DAM3-05-012-3480 | 0d |
| DAM3-05-012-4810 |  | LIGHTNING PROTECTION | 2d | 2026-08-04 | 2026-08-05 | DAM3-05-012-4620 FF, DAM3-05-012-3050 | 0d |
| DAM3-05-012-4820 |  | Intelligent Ionization / Photoelectric smoke and heat detector with base | 2d | 2026-08-04 | 2026-08-05 | DAM3-05-012-4640 FF, DAM3-05-012-3060 | 0d |
|  | 4 | **METALS** |  | 2026-08-04 | 2026-08-05 |  |  |
| DAM3-05-012-4440 |  | folding & sliding mounter combination ladder for building maintenance purpose | 2d | 2026-08-04 | 2026-08-05 | DAM3-05-012-4200, DAM3-05-012-3270 | 0d |
| DAM3-05-012-4450 |  | install of overflow galvanized steel roof scupper with gray color with angular secondary support | 2d | 2026-08-04 | 2026-08-05 | DAM3-05-012-4440 SS, DAM3-05-012-2850 | 0d |
| DAM3-05-012-4460 |  | install heavy steel cover with frame including all necessary fixings | 2d | 2026-08-04 | 2026-08-05 | DAM3-05-012-4450 SS, DAM3-05-012-3280 | 0d |
|  | 5 | **WOODS AND PLASTICS** |  | 2026-08-03 | 2026-08-05 |  |  |
| DAM3-05-012-4260 |  | COUNTER DESK | 3d | 2026-08-03 | 2026-08-05 | DAM3-05-012-4470 FF, DAM3-05-012-3160 | 0d |
| DAM3-05-012-4470 |  | PANTRY CABINET | 2d | 2026-08-04 | 2026-08-05 | DAM3-05-012-4460 SS, DAM3-05-012-3150 | 0d |
|  | 8 | **DOORS & WINDOWS** |  | 2026-07-29 | 2026-08-05 |  |  |
| DAM3-05-012-4150 |  | install hollow metal door | 4d | 2026-07-29 | 2026-08-03 | DAM3-05-012-4270 SF, DAM3-05-012-3290 | 3d |

| ID | WBS | Task | Duration | Start | Finish | Predecessors | Total float |
| --- | --- | --- | --- | --- | --- | --- | --- |
| DAM3-05-012-4160 |  | Install aluminum framed double glazed windows | 3d | 2026-07-29 | 2026-08-01 | DAM3-05-012-4150 SS, DAM3-05-012-2860 | 4d |
| DAM3-05-012-4270 |  | Install Aluminum Door | 3d | 2026-08-03 | 2026-08-05 | DAM3-05-012-4260 SS, DAM3-05-012-2970 | 0d |
|  | 10 | **SPECIALTIES** |  | 2026-08-04 | 2026-08-05 |  |  |
| DAM3-05-012-4500 |  | TOILET ACCESSROIES | 2d | 2026-08-04 | 2026-08-05 | DAM3-05-012-4650 SS, DAM3-05-012-3090, DAM3-05-012-4270 FF | 0d |
| DAM3-05-012-4510 |  | PANEL SIGNAGE | 2d | 2026-08-04 | 2026-08-05 | DAM3-05-012-4500 SS, DAM3-05-012-2880, DAM3-05-012-4820 FF | 0d |
|  | 11 | **FURNISHINGS** |  | 2026-08-05 | 2026-08-05 |  |  |
| DAM3-05-012-4730 |  | Workstation chair | 1d | 2026-08-05 | 2026-08-05 | DAM3-05-012-4510 FF, DAM3-05-012-4080 | 0d |
| DAM3-05-012-4740 |  | Workstation table | 1d | 2026-08-05 | 2026-08-05 | DAM3-05-012-4730 SS, DAM3-05-012-4090 | 0d |
| DAM3-05-012-4750 |  | Roller blind | 1d | 2026-08-05 | 2026-08-05 | DAM3-05-012-4740 SS, DAM3-05-012-3170 | 0d |
| DAM3-05-012-4760 |  | Waste Receptacle | 1d | 2026-08-05 | 2026-08-05 | DAM3-05-012-4750 SS, DAM3-05-012-3360 | 0d |
|  | 6 | **Testing & Commissioning** |  | 2026-08-02 | 2026-08-05 |  |  |
| DAM3-05-012-4400 |  | Testing & Commissioning - Electrical Systems | 1.5d | 2026-08-02 | 2026-08-04 | DAM3-05-012-4760 FF-2d, DAM3-05-012-4460 FF-2d | 0d |
| DAM3-05-012-4720 |  | Testing & Commissioning - Mechanical Systems | 2d | 2026-08-04 | 2026-08-05 | DAM3-05-012-4400 | 0d |
|  | 5 | **Handing Over** |  | 2026-07-30 | 2026-08-05 |  |  |
|  | 1 | **Engineering** |  | 2026-07-30 | 2026-08-05 |  |  |
|  | 1 | **As-Built Drawings** |  | 2026-07-30 | 2026-08-05 |  |  |
| DAM3-05-012-4220 |  | Prepare & Submit | 3d | 2026-07-30 | 2026-08-03 | DAM3-05-012-4400 SS-2d, DAM3-05-012-3970, DAM3-05-012-3980, DAM3-05-012-3990, DAM3-05-012-4000, DAM3-05-012-4010, DAM3-05-012-4020, DAM3-05-012-4030, DAM3-05-012-4040, DAM3-05-012-4050, DAM3-05-012-4060 | 0.5d |
| DAM3-05-012-4230 |  | Review & Approve | 4d | 2026-08-01 | 2026-08-05 | DAM3-05-012-4220 FF+2d | 0.5d |
|  | 2 | **Operational Spares** |  | 2026-08-02 | 2026-08-05 |  |  |
| DAM3-05-012-4240 |  | Prepare & Submit | 2d | 2026-08-02 | 2026-08-04 | DAM3-05-012-4400 FF | 0d |
| DAM3-05-012-4430 |  | Acceptance | 3d | 2026-08-03 | 2026-08-05 | DAM3-05-012-4690 FF | 0d |
| DAM3-05-012-4690 |  | Inspection | 2d | 2026-08-04 | 2026-08-05 | DAM3-05-012-4240 | 0d |
|  | 3 | **Warranties and Guarantees** |  | 2026-08-02 | 2026-08-05 |  |  |
| DAM3-05-012-4250 |  | Review & Approve | 2d | 2026-08-02 | 2026-08-04 | DAM3-05-012-4400 FF | 0d |
| DAM3-05-012-4700 |  | Prepare & Submit | 2d | 2026-08-04 | 2026-08-05 | DAM3-05-012-4250, DAM3-05-012-4720 FF | 0d |
|  | 2 | **Training and Manuals** |  | 2026-08-02 | 2026-08-05 |  |  |
|  | 1 | **Training** |  | 2026-08-02 | 2026-08-05 |  |  |
| DAM3-05-012-4410 |  | Prepare & Submit | 1.5d | 2026-08-02 | 2026-08-03 | DAM3-05-012-4400 SS | 0d |
| DAM3-05-012-4830 |  | Review & Approve | 2d | 2026-08-04 | 2026-08-05 | DAM3-05-012-4410 | 0d |
| DAM3-05-012-4840 |  | Fabrication & Delivery | 2d | 2026-08-04 | 2026-08-05 | DAM3-05-012-4830 FF | 0d |
|  | 2 | **Manuals** |  | 2026-08-02 | 2026-08-05 |  |  |
| DAM3-05-012-4420 |  | Prepare & Submit | 1.5d | 2026-08-02 | 2026-08-03 | DAM3-05-012-4400 SS | 0d |
| DAM3-05-012-4710 |  | Review & Approve | 2d | 2026-08-04 | 2026-08-05 | DAM3-05-012-4420 | 0d |
|  | 3 | **Demobilization** |  | 2026-08-04 | 2026-08-05 |  |  |
| DAM3-05-012-4670 |  | Demobilize | 2d | 2026-08-04 | 2026-08-05 | DAM3-05-012-4710 FF | 0d |
|  | 5 | **Snaglist Rectification** |  | 2026-08-04 | 2026-08-05 |  |  |
| DAM3-05-012-4680 |  | Snaglist Rectification | 2d | 2026-08-04 | 2026-08-05 | DAM3-05-012-4400 FF, DAM3-05-012-4670 FF | 0d |
| DAM3-05-012-4850 |  | Initial Handing Over | 1d | 2026-08-05 | 2026-08-05 | DAM3-05-012-4230 FF, DAM3-05-012-4430 FF, DAM3-05-012-4700 FF, DAM3-05-012-4840 FF, DAM3-05-012-4710 FF, DAM3-05-012-4680 FF | 0d |

## Version 2 (data date 2026-09-15, saved 2026-09-21, file DAM3-05-012-Dammam 3rd Industrial City Gates and Fence -Update DD29-Sep-2026.xer)

Last finish 2026-08-05 → 2026-10-11 (+67d). Complete tasks 0 → 362.

Changed:

| ID | Task | Start | Finish | Complete | Total float |
| --- | --- | --- | --- | --- | --- |
| 1 | **Key Milestones** | 2026-05-06 → 2026-07-13 (+68d) | 2026-08-05 → 2026-09-19 (+45d) |  |  |
| 1 | **General Milestones** | 2026-05-06 → 2026-07-13 (+68d) | 2026-05-06 → 2026-07-13 (+68d) |  |  |
| DAM3-05-012-1080 | Project Start | 2026-05-06 → 2026-07-13 A (+68d) | 2026-05-06 → 2026-07-13 A (+68d) | 0% → 100% | 0d → none |
| 2 | **Contractual Milestones** | 2026-05-25 → 2026-08-01 (+68d) | 2026-08-05 → 2026-09-19 (+45d) |  |  |
| DAM3-05-012-4880 | Preliminary Submittals | 2026-05-25 → 2026-08-01 A (+68d) | 2026-05-25 → 2026-08-01 A (+68d) | 0% → 100% | 58d → none |
| DAM3-05-012-4870 | Mobilization | 2026-05-31 → 2026-08-02 A (+63d) | 2026-05-31 → 2026-08-02 A (+63d) | 0% → 100% | 57.5d → none |
| DAM3-05-012-4910 | Fabrication & Delivery | 2026-08-04 → 2026-08-12 A (+8d) | 2026-08-04 → 2026-08-12 A (+8d) | 0% → 100% | 1d → none |
| DAM3-05-012-4890 | Shop Drawings | 2026-06-22 → 2026-08-24 A (+63d) | 2026-06-22 → 2026-08-24 A (+63d) | 0% → 100% | 38d → none |
| DAM3-05-012-4860 | Project Finish | 2026-08-05 → 2026-09-16 A (+42d) | 2026-08-05 → 2026-09-16 A (+42d) | 0% → 100% | 0d → none |
| DAM3-05-012-4920 | Construction | 2026-08-05 → 2026-09-16 A (+42d) | 2026-08-05 → 2026-09-16 A (+42d) | 0% → 100% | 0d → none |
| DAM3-05-012-4900 | Material Submittal & Approval | 2026-07-18 → 2026-09-19 A (+63d) | 2026-07-18 → 2026-09-19 A (+63d) | 0% → 100% | 16d → none |
| 2 | **Mobilization** | 2026-05-06 → 2026-07-13 (+68d) | 2026-05-31 → 2026-08-02 (+63d) |  |  |
| 5 | **Site Survey** | 2026-05-06 → 2026-07-13 (+68d) | 2026-05-10 → 2026-07-16 (+67d) |  |  |
| DAM3-05-012-1020 | Site Survey | 2026-05-06 → 2026-07-13 A (+68d) | 2026-05-07 → 2026-07-14 A (+68d) | 0% → 100% | 0.75d → none |
| DAM3-05-012-1090 | Survey Report | 2026-05-09 → 2026-07-15 A (+67d) | 2026-05-10 → 2026-07-16 A (+67d) | 0% → 100% | 0.75d → none |
| 2 | **Site Layout Plan** | 2026-05-11 → 2026-07-18 (+68d) | 2026-05-13 → 2026-07-20 (+68d) |  |  |
| DAM3-05-012-1100 | Site Office Layout Drawing Proposal Submittal | 2026-05-11 → 2026-07-18 A (+68d) | 2026-05-11 → 2026-07-18 A (+68d) | 0% → 100% | 0.75d → none |
| DAM3-05-012-1110 | Site Office Layout Drawing Review & Approval | 2026-05-12 → 2026-07-19 A (+68d) | 2026-05-13 → 2026-07-20 A (+68d) | 0% → 100% | 0.75d → none |
| 6 | **Construct Site Access Roads** | 2026-05-14 → 2026-07-21 (+68d) | 2026-05-19 → 2026-07-26 (+68d) |  |  |
| DAM3-05-012-1120 | Site Preparation | 2026-05-14 → 2026-07-21 A (+68d) | 2026-05-14 → 2026-07-21 A (+68d) | 0% → 100% | 0.75d → none |
| DAM3-05-012-1150 | Grading & Leveling | 2026-05-16 → 2026-07-22 A (+67d) | 2026-05-17 → 2026-07-23 A (+67d) | 0% → 100% | 0.75d → none |
| DAM3-05-012-1160 | Temporary Access Road | 2026-05-17 → 2026-07-23 A (+67d) | 2026-05-19 → 2026-07-26 A (+68d) | 0% → 100% | 0.75d → none |
| 7 | **Construct Site Office Fence** | 2026-05-18 → 2026-07-25 (+68d) | 2026-05-31 → 2026-08-02 (+63d) |  |  |
| DAM3-05-012-1190 | Excavation for Fence Foundation | 2026-05-18 → 2026-07-25 A (+68d) | 2026-05-23 → 2026-07-29 A (+67d) | 0% → 100% | 2.25d → none |
| DAM3-05-012-1220 | Installation of Fence Posts | 2026-05-19 → 2026-07-26 A (+68d) | 2026-05-24 → 2026-07-30 A (+67d) | 0% → 100% | 2.25d → none |
| DAM3-05-012-1460 | Installation of Fence Mesh | 2026-05-23 → 2026-07-29 A (+67d) | 2026-05-31 → 2026-08-02 A (+63d) | 0% → 100% | 2.5d → none |
| 8 | **Construct Site Offices** | 2026-05-18 → 2026-07-25 (+68d) | 2026-05-21 → 2026-07-28 (+68d) |  |  |
| DAM3-05-012-1170 | Installation of Site Offices | 2026-05-18 → 2026-07-25 A (+68d) | 2026-05-20 → 2026-07-27 A (+68d) | 0% → 100% | 1.25d → none |
| DAM3-05-012-1200 | MEP Works | 2026-05-18 → 2026-07-25 A (+68d) | 2026-05-20 → 2026-07-27 A (+68d) | 0% → 100% | 2.5d → none |
| DAM3-05-012-1210 | Installation of Furniture | 2026-05-19 → 2026-07-26 A (+68d) | 2026-05-21 → 2026-07-28 A (+68d) | 0% → 100% | 1.25d → none |
| 3 | **Mobilization of Manpower** | 2026-05-14 → 2026-07-21 (+68d) | 2026-05-20 → 2026-07-27 (+68d) |  |  |
| DAM3-05-012-1130 | Mobilization of Manpower | 2026-05-14 → 2026-07-21 A (+68d) | 2026-05-20 → 2026-07-27 A (+68d) | 0% → 100% | 1d → none |
| 4 | **Mobilization of Equipment** | 2026-05-14 → 2026-07-21 (+68d) | 2026-05-20 → 2026-07-27 (+68d) |  |  |
| DAM3-05-012-1140 | Mobilization of Tools & Equipment | 2026-05-14 → 2026-07-21 A (+68d) | 2026-05-20 → 2026-07-27 A (+68d) | 0% → 100% | 1d → none |
| 3 | **Preliminary Submittals** | 2026-05-06 → 2026-07-13 (+68d) | 2026-05-25 → 2026-08-01 (+68d) |  |  |
| DAM3-05-012-1000 | Insurances | 2026-05-06 → 2026-07-13 A (+68d) | 2026-05-25 → 2026-08-01 A (+68d) | 0% → 100% | 5d → none |
| DAM3-05-012-1010 | Performance Bonds | 2026-05-06 → 2026-07-13 A (+68d) | 2026-05-25 → 2026-08-01 A (+68d) | 0% → 100% | 5d → none |
| DAM3-05-012-1030 | Contract Schedule (Baseline Program) | 2026-05-06 → 2026-07-13 A (+68d) | 2026-05-20 → 2026-07-27 A (+68d) | 0% → 100% | 1d → none |
| DAM3-05-012-1040 | HSE Plan | 2026-05-06 → 2026-07-13 A (+68d) | 2026-05-19 → 2026-07-26 A (+68d) | 0% → 100% | 2d → none |
| DAM3-05-012-1050 | Quality Control Plan | 2026-05-06 → 2026-07-13 A (+68d) | 2026-05-17 → 2026-07-23 A (+67d) | 0% → 100% | 4d → none |
| DAM3-05-012-1060 | Project Organization Chart | 2026-05-06 → 2026-07-13 A (+68d) | 2026-05-19 → 2026-07-26 A (+68d) | 0% → 100% | 2d → none |
| DAM3-05-012-1070 | Submission of Staff CVs | 2026-05-06 → 2026-07-13 A (+68d) | 2026-05-17 → 2026-07-23 A (+67d) | 0% → 100% | 1.5d → none |
| 8 | **Engineering** | 2026-05-18 → 2026-07-25 (+68d) | 2026-07-18 → 2026-09-19 (+63d) |  |  |
| 3 | **Shop Drawings** | 2026-05-18 → 2026-07-25 (+68d) | 2026-06-22 → 2026-08-24 (+63d) |  |  |
| 2 | **Prepare & Submit** | 2026-05-18 → 2026-07-25 (+68d) | 2026-06-08 → 2026-08-10 (+63d) |  |  |
| DAM3-05-012-1180 | Fence Type 1 - Shopdrawings - ( Prepare & Submit) | 2026-05-18 → 2026-07-25 A (+68d) | 2026-06-03 → 2026-08-05 A (+63d) | 0% → 100% | 1.5d → none |
| DAM3-05-012-1340 | Fence Type 2 - Shopdrawings - (Prepare & Submit) | 2026-05-21 → 2026-07-28 A (+68d) | 2026-06-04 → 2026-08-06 A (+63d) | 0% → 100% | 2d → none |
| DAM3-05-012-1620 | Guard Room - Shopdrawings - (Prepare & Submit) | 2026-05-25 → 2026-08-01 A (+68d) | 2026-06-08 → 2026-08-10 A (+63d) | 0% → 100% | 2d → none |
| 7 | **Review & Approve** | 2026-06-03 → 2026-08-05 (+63d) | 2026-06-22 → 2026-08-24 (+63d) |  |  |
| DAM3-05-012-2190 | Fence Type 1 - Shopdrawings - ( Prepare & Submit) | 2026-06-03 → 2026-08-05 A (+63d) | 2026-06-17 → 2026-08-19 A (+63d) | 0% → 100% | 1.5d → none |
| DAM3-05-012-2660 | Fence Type 2 - Shopdrawings - (Prepare & Submit) | 2026-06-06 → 2026-08-08 A (+63d) | 2026-06-18 → 2026-08-20 A (+63d) | 0% → 100% | 5d → none |
| DAM3-05-012-3100 | Guard Room - Shopdrawings - (Prepare & Submit) | 2026-06-09 → 2026-08-11 A (+63d) | 2026-06-22 → 2026-08-24 A (+63d) | 0% → 100% | 2d → none |
| 1 | **Material Submittal** | 2026-05-20 → 2026-07-27 (+68d) | 2026-07-18 → 2026-09-19 (+63d) |  |  |
| 1 | **Material Prepare & Submit** | 2026-05-20 → 2026-07-27 (+68d) | 2026-07-11 → 2026-09-12 (+63d) |  |  |
| 3 | **Civil & Arch** | 2026-05-21 → 2026-07-28 (+68d) | 2026-07-11 → 2026-09-12 (+63d) |  |  |
| DAM3-05-012-1240 | Backfilling for guard rooms under G.Beams (Material Prepare & Submit) | 2026-05-21 → 2026-07-28 A (+68d) | 2026-05-31 → 2026-08-02 A (+63d) | 0% → 100% | 0.75d → none |
| DAM3-05-012-1250 | interlocking paving blocks (Material Prepare & Submit) | 2026-05-21 → 2026-07-28 A (+68d) | 2026-05-31 → 2026-08-02 A (+63d) | 0% → 100% | 0.75d → none |
| DAM3-05-012-1260 | Concrete Masonry Unit (CMU) for walls (Material Prepare & Submit) | 2026-05-21 → 2026-07-28 A (+68d) | 2026-05-31 → 2026-08-02 A (+63d) | 0% → 100% | 0.75d → none |
| DAM3-05-012-1270 | overflow galvanized steel roof scupper with gray color with angular secondary support(Material Prepare & Submit) | 2026-05-21 → 2026-07-28 A (+68d) | 2026-05-31 → 2026-08-02 A (+63d) | 0% → 100% | 0.75d → none |
| DAM3-05-012-1280 | aluminum framed double glazed windows (Material Prepare & Submit) | 2026-05-21 → 2026-07-28 A (+68d) | 2026-05-31 → 2026-08-02 A (+63d) | 0% → 100% | 0.75d → none |
| DAM3-05-012-1290 | Riyadh stone cladding (Material Prepare & Submit) | 2026-05-21 → 2026-07-28 A (+68d) | 2026-05-31 → 2026-08-02 A (+63d) | 0% → 100% | 0.75d → none |
| DAM3-05-012-1300 | PANEL SIGNAGE (Material Prepare & Submit) | 2026-05-21 → 2026-07-28 A (+68d) | 2026-05-31 → 2026-08-02 A (+63d) | 0% → 100% | 0.75d → none |
| DAM3-05-012-1360 | Aluminum Door (Material Prepare & Submit) | 2026-05-23 → 2026-07-29 A (+67d) | 2026-06-01 → 2026-08-03 A (+63d) | 0% → 100% | 0.75d → none |
| DAM3-05-012-1370 | structural steel members for gate frame (Material Prepare & Submit) | 2026-05-23 → 2026-07-29 A (+67d) | 2026-06-01 → 2026-08-03 A (+63d) | 0% → 100% | 0.75d → none |
| DAM3-05-012-1380 | structural steel members and plates for main gates (Material Prepare & Submit) | 2026-05-23 → 2026-07-29 A (+67d) | 2026-06-01 → 2026-08-03 A (+63d) | 0% → 100% | 0.75d → none |
| DAM3-05-012-1480 | plant trees, plants, and ground covers including fixations, sweet soil (Material Prepare & Submit) | 2026-05-24 → 2026-07-30 A (+67d) | 2026-06-02 → 2026-08-04 A (+63d) | 0% → 100% | 0.75d → none |
| DAM3-05-012-1500 | precast concrete curbstone (Material Prepare & Submit) | 2026-05-25 → 2026-08-01 A (+68d) | 2026-06-03 → 2026-08-05 A (+63d) | 0% → 100% | 0.75d → none |
| DAM3-05-012-1510 | stone gravel (Material Prepare & Submit) | 2026-05-25 → 2026-08-01 A (+68d) | 2026-06-03 → 2026-08-05 A (+63d) | 0% → 100% | 0.75d → none |
| DAM3-05-012-1520 | PANTRY CABINET (Material Prepare & Submit) | 2026-05-25 → 2026-08-01 A (+68d) | 2026-06-03 → 2026-08-05 A (+63d) | 0% → 100% | 0.75d → none |
| DAM3-05-012-1530 | COUNTER DESK (Material Prepare & Submit) | 2026-05-25 → 2026-08-01 A (+68d) | 2026-06-03 → 2026-08-05 A (+63d) | 0% → 100% | 0.75d → none |

| ID | Task | Start | Finish | Complete | Total float |
| --- | --- | --- | --- | --- | --- |
| DAM3-05-012-1540 | Roller blind (Material Prepare & Submit) | 2026-05-25 → 2026-08-01 A (+68d) | 2026-06-03 → 2026-08-05 A (+63d) | 0% → 100% | 0.75d → none |
| DAM3-05-012-1550 | structural steel members and plates for pedestrian gates (Material Prepare & Submit) | 2026-05-25 → 2026-08-01 A (+68d) | 2026-06-03 → 2026-08-05 A (+63d) | 0% → 100% | 0.75d → none |
| DAM3-05-012-1640 | Backfilling for Roads (Material Prepare & Submit) | 2026-05-31 → 2026-08-02 A (+63d) | 2026-06-03 → 2026-08-05 A (+63d) | 0% → 100% | 0d → none |
| DAM3-05-012-1650 | interlocking pedstrian paving blocks (Material Prepare & Submit) | 2026-05-31 → 2026-08-02 A (+63d) | 2026-06-03 → 2026-08-05 A (+63d) | 0% → 100% | 0d → none |
| DAM3-05-012-1660 | folding & sliding mounter combination ladder for building maintenance purpose (Material Prepare & Submit) | 2026-05-31 → 2026-08-02 A (+63d) | 2026-06-03 → 2026-08-05 A (+63d) | 0% → 100% | 0d → none |
| DAM3-05-012-1670 | heavy steel cover with frame including all necessary fixings(Material Prepare & Submit) | 2026-05-31 → 2026-08-02 A (+63d) | 2026-06-03 → 2026-08-05 A (+63d) | 0% → 100% | 0d → none |
| DAM3-05-012-1680 | hollow metal door (Material Prepare & Submit) | 2026-05-31 → 2026-08-02 A (+63d) | 2026-06-03 → 2026-08-05 A (+63d) | 0% → 100% | 0d → none |
| DAM3-05-012-1690 | granite saddles and thresholds (Material Prepare & Submit) | 2026-05-31 → 2026-08-02 A (+63d) | 2026-06-03 → 2026-08-05 A (+63d) | 0% → 100% | 0d → none |
| DAM3-05-012-1700 | ceramic wall tiles (Material Prepare & Submit) | 2026-05-31 → 2026-08-02 A (+63d) | 2026-06-03 → 2026-08-05 A (+63d) | 0% → 100% | 0d → none |
| DAM3-05-012-1710 | acrylic paint on internal walls (Material Prepare & Submit) | 2026-05-31 → 2026-08-02 A (+63d) | 2026-06-03 → 2026-08-05 A (+63d) | 0% → 100% | 0d → none |
| DAM3-05-012-1720 | two coats of acrylic paint (suitable for exterior use) on external (Material Prepare & Submit) | 2026-05-31 → 2026-08-02 A (+63d) | 2026-06-03 → 2026-08-05 A (+63d) | 0% → 100% | 0d → none |
| DAM3-05-012-1730 | aluminum cladding (Material Prepare & Submit) | 2026-05-31 → 2026-08-02 A (+63d) | 2026-06-03 → 2026-08-05 A (+63d) | 0% → 100% | 0d → none |
| DAM3-05-012-1740 | gypsum board suspended ceiling (Material Prepare & Submit) | 2026-05-31 → 2026-08-02 A (+63d) | 2026-06-03 → 2026-08-05 A (+63d) | 0% → 100% | 0d → none |
| DAM3-05-012-1750 | Waste Receptacle(Material Prepare & Submit) | 2026-05-31 → 2026-08-02 A (+63d) | 2026-06-03 → 2026-08-05 A (+63d) | 0% → 100% | 0d → none |
| DAM3-05-012-1760 | structural steel members and steel hollow sections for wall fence (Material Prepare & Submit) | 2026-05-31 → 2026-08-02 A (+63d) | 2026-06-03 → 2026-08-05 A (+63d) | 0% → 100% | 0d → none |
| DAM3-05-012-1770 | galvanized steel chain link gate (Material Prepare & Submit) | 2026-05-31 → 2026-08-02 A (+63d) | 2026-06-03 → 2026-08-05 A (+63d) | 0% → 100% | 0d → none |
| DAM3-05-012-1780 | gully traps with heavy duty cover (Material Prepare & Submit) | 2026-05-31 → 2026-08-02 A (+63d) | 2026-06-03 → 2026-08-05 A (+63d) | 0% → 100% | 0d → none |
| DAM3-05-012-1790 | chamber with heavy duty cover (Material Prepare & Submit) | 2026-05-31 → 2026-08-02 A (+63d) | 2026-06-03 → 2026-08-05 A (+63d) | 0% → 100% | 0d → none |
| DAM3-05-012-2000 | ceramic floor tiles (Material Prepare & Submit) | 2026-06-01 → 2026-08-03 A (+63d) | 2026-06-06 → 2026-08-08 A (+63d) | 0% → 100% | 0d → none |
| DAM3-05-012-2130 | matt stainless steel flag pole (Material Prepare & Submit) (Material Prepare & Submit) | 2026-06-02 → 2026-08-04 A (+63d) | 2026-06-07 → 2026-08-09 A (+63d) | 0% → 100% | 0d → none |
| DAM3-05-012-2140 | galvanized steel chain link ,steel tube framing and posts, turn buckle, tension wir.etc(Material Prepare & Submit) | 2026-06-02 → 2026-08-04 A (+63d) | 2026-06-07 → 2026-08-09 A (+63d) | 0% → 100% | 0d → none |
| DAM3-05-012-3070 | granite flooring (Material Prepare & Submit) | 2026-06-09 → 2026-08-11 A (+63d) | 2026-06-14 → 2026-08-16 A (+63d) | 0% → 100% | 0d → none |
| DAM3-05-012-3780 | Workstation chair (Material Prepare & Submit) | 2026-07-06 → 2026-09-07 A (+63d) | 2026-07-11 → 2026-09-12 A (+63d) | 0% → 100% | 0d → none |
| DAM3-05-012-3790 | Workstation table (Material Prepare & Submit) | 2026-07-06 → 2026-09-07 A (+63d) | 2026-07-11 → 2026-09-12 A (+63d) | 0% → 100% | 0d → none |
| 1 | **Mechanical** | 2026-05-20 → 2026-07-27 (+68d) | 2026-06-03 → 2026-08-05 (+63d) |  |  |
| DAM3-05-012-1230 | Fire extinguishers as per drawings, specifications (Material Prepare & Submit) | 2026-05-20 → 2026-07-27 A (+68d) | 2026-05-25 → 2026-08-01 A (+68d) | 0% → 100% | 1d → none |
| DAM3-05-012-1310 | HEATING, VENTILATION AND AIR CONDITIONING - (Material Prepare & Submit) | 2026-05-21 → 2026-07-28 A (+68d) | 2026-05-31 → 2026-08-02 A (+63d) | 0% → 100% | 0.75d → none |
| DAM3-05-012-1390 | Bulbblers and Spreyers of IRRIGATION SYSTEM (Material Prepare & Submit) | 2026-05-23 → 2026-07-29 A (+67d) | 2026-06-01 → 2026-08-03 A (+63d) | 0% → 100% | 0.75d → none |
| DAM3-05-012-1490 | TOILET ACCESSROIES (Material Prepare & Submit) | 2026-05-24 → 2026-07-30 A (+67d) | 2026-06-02 → 2026-08-04 A (+63d) | 0% → 100% | 0.75d → none |
| DAM3-05-012-1560 | Exhaust fans - (Material Prepare & Submit) | 2026-05-25 → 2026-08-01 A (+68d) | 2026-06-03 → 2026-08-05 A (+63d) | 0% → 100% | 0.75d → none |
| DAM3-05-012-1610 | IRRIGATION SYSTEM (Material Prepare & Submit) | 2026-05-25 → 2026-08-01 A (+68d) | 2026-06-03 → 2026-08-05 A (+63d) | 0% → 100% | 0.75d → none |
| DAM3-05-012-1800 | PLUMBING FIXTURES (Material Prepare & Submit) | 2026-05-31 → 2026-08-02 A (+63d) | 2026-06-03 → 2026-08-05 A (+63d) | 0% → 100% | 0d → none |
| DAM3-05-012-1890 | WATER SUPPLY SYSTEM (Material Prepare & Submit) | 2026-05-31 → 2026-08-02 A (+63d) | 2026-06-03 → 2026-08-05 A (+63d) | 0% → 100% | 0d → none |
| 2 | **Electrical** | 2026-05-21 → 2026-07-28 (+68d) | 2026-06-07 → 2026-08-09 (+63d) |  |  |
| DAM3-05-012-1320 | Central (Headend) System Components; (Material Prepare & Submit) | 2026-05-21 → 2026-07-28 A (+68d) | 2026-05-31 → 2026-08-02 A (+63d) | 0% → 100% | 0.75d → none |
| DAM3-05-012-1330 | Analog addressable fire alarm control panel with battery (Material Prepare & Submit) | 2026-05-21 → 2026-07-28 A (+68d) | 2026-05-31 → 2026-08-02 A (+63d) | 0% → 100% | 0.75d → none |
| DAM3-05-012-1400 | LIGHTING FIXTURES (Material Prepare & Submit) | 2026-05-23 → 2026-07-29 A (+67d) | 2026-06-01 → 2026-08-03 A (+63d) | 0% → 100% | 0.75d → none |
| DAM3-05-012-1410 | COMPUTERS AND RELATED PERIPHERALS (Material Prepare & Submit) | 2026-05-23 → 2026-07-29 A (+67d) | 2026-06-01 → 2026-08-03 A (+63d) | 0% → 100% | 0.75d → none |
| DAM3-05-012-1420 | CCTV storage system, as specified(Material Prepare & Submit) | 2026-05-23 → 2026-07-29 A (+67d) | 2026-06-01 → 2026-08-03 A (+63d) | 0% → 100% | 0.75d → none |
| DAM3-05-012-1430 | ELECTRICAL GATE BARRIER (Material Prepare & Submit) | 2026-05-23 → 2026-07-29 A (+67d) | 2026-06-01 → 2026-08-03 A (+63d) | 0% → 100% | 0.75d → none |
| DAM3-05-012-1440 | LIGHTNING PROTECTION (Material Prepare & Submit) | 2026-05-23 → 2026-07-29 A (+67d) | 2026-06-01 → 2026-08-03 A (+63d) | 0% → 100% | 0.75d → none |
| DAM3-05-012-1450 | Intelligent Ionization / Photoelectric smoke and heat detector with base (Material Prepare & Submit) | 2026-05-23 → 2026-07-29 A (+67d) | 2026-06-01 → 2026-08-03 A (+63d) | 0% → 100% | 0.75d → none |
| DAM3-05-012-1570 | power source with built-in photocell sensor for automatic electrical connection (Material Prepare & Submit) | 2026-05-25 → 2026-08-01 A (+68d) | 2026-06-03 → 2026-08-05 A (+63d) | 0% → 100% | 0.75d → none |
| DAM3-05-012-1580 | UNDERGROUND DISTRIBUTION SYSTEM -(Material Prepare & Submit) | 2026-05-25 → 2026-08-01 A (+68d) | 2026-06-03 → 2026-08-05 A (+63d) | 0% → 100% | 0.75d → none |
| DAM3-05-012-1590 | GROUNDING - (Material Prepare & Submit) | 2026-05-25 → 2026-08-01 A (+68d) | 2026-06-03 → 2026-08-05 A (+63d) | 0% → 100% | 0.75d → none |
| DAM3-05-012-1600 | card reader IN/OUT (Material Prepare & Submit) | 2026-05-25 → 2026-08-01 A (+68d) | 2026-06-03 → 2026-08-05 A (+63d) | 0% → 100% | 0.75d → none |
| DAM3-05-012-1810 | switches and Receptacle outlets complete with device boxes (Material Prepare & Submit) | 2026-05-31 → 2026-08-02 A (+63d) | 2026-06-03 → 2026-08-05 A (+63d) | 0% → 100% | 0d → none |
| DAM3-05-012-1820 | 12-Port CAT6A UTP fully loaded patch panel (Material Prepare & Submit) | 2026-05-31 → 2026-08-02 A (+63d) | 2026-06-03 → 2026-08-05 A (+63d) | 0% → 100% | 0d → none |
| DAM3-05-012-1830 | (Material Prepare & Submit)Port, SMF, Fiber Optic Patch Panels | 2026-05-31 → 2026-08-02 A (+63d) | 2026-06-03 → 2026-08-05 A (+63d) | 0% → 100% | 0d → none |
| DAM3-05-012-1840 | VIDEO SURVEILLANCE (Material Prepare & Submit) | 2026-05-31 → 2026-08-02 A (+63d) | 2026-06-03 → 2026-08-05 A (+63d) | 0% → 100% | 0d → none |
| DAM3-05-012-1850 | VSS System, as specified; (Material Prepare & Submit) | 2026-05-31 → 2026-08-02 A (+63d) | 2026-06-03 → 2026-08-05 A (+63d) | 0% → 100% | 0d → none |
| DAM3-05-012-1860 | CCTV cameras (Material Prepare & Submit) | 2026-05-31 → 2026-08-02 A (+63d) | 2026-06-03 → 2026-08-05 A (+63d) | 0% → 100% | 0d → none |
| DAM3-05-012-1870 | 20A , ATS ( Automatic transfer switch) for UPS (Material Prepare & Submit) | 2026-05-31 → 2026-08-02 A (+63d) | 2026-06-03 → 2026-08-05 A (+63d) | 0% → 100% | 0d → none |
| DAM3-05-012-1880 | fire alarm system including wires, conduit and other materials - (Material Prepare & Submit) | 2026-05-31 → 2026-08-02 A (+63d) | 2026-06-03 → 2026-08-05 A (+63d) | 0% → 100% | 0d → none |
| DAM3-05-012-2010 | 3mm steel CNC laser cut panels (Material Prepare & Submit) | 2026-06-01 → 2026-08-03 A (+63d) | 2026-06-06 → 2026-08-08 A (+63d) | 0% → 100% | 0d → none |
| DAM3-05-012-2020 | Access control panel - (Material Prepare & Submit) | 2026-06-01 → 2026-08-03 A (+63d) | 2026-06-06 → 2026-08-08 A (+63d) | 0% → 100% | 0d → none |
| DAM3-05-012-2150 | LIGHTING AND POWER TYPE PANELBOARDS (Material Prepare & Submit) | 2026-06-02 → 2026-08-04 A (+63d) | 2026-06-07 → 2026-08-09 A (+63d) | 0% → 100% | 1d → none |
| 2 | **Material Review & Approve** | 2026-05-31 → 2026-08-02 (+63d) | 2026-07-18 → 2026-09-19 (+63d) |  |  |
| 3 | **Civil & Arch** | 2026-05-31 → 2026-08-02 (+63d) | 2026-07-18 → 2026-09-19 (+63d) |  |  |
| DAM3-05-012-1900 | Backfilling for guard rooms under G.Beams (Material Review & Approve) | 2026-05-31 → 2026-08-02 A (+63d) | 2026-06-02 → 2026-08-04 A (+63d) | 0% → 100% | 0.75d → none |
| DAM3-05-012-1910 | interlocking paving blocks (Material Review & Approve) | 2026-05-31 → 2026-08-02 A (+63d) | 2026-06-07 → 2026-08-09 A (+63d) | 0% → 100% | 44.75d → none |
| DAM3-05-012-1920 | Concrete Masonry Unit (CMU) for walls (Material Review & Approve) | 2026-05-31 → 2026-08-02 A (+63d) | 2026-06-07 → 2026-08-09 A (+63d) | 0% → 100% | 18.75d → none |
| DAM3-05-012-1930 | overflow galvanized steel roof scupper with gray color with angular secondary support(Material Review & Approve) | 2026-05-31 → 2026-08-02 A (+63d) | 2026-06-07 → 2026-08-09 A (+63d) | 0% → 100% | 34.75d → none |
| DAM3-05-012-1940 | aluminum framed double glazed windows (Material Review & Approve) | 2026-05-31 → 2026-08-02 A (+63d) | 2026-06-07 → 2026-08-09 A (+63d) | 0% → 100% | 35.75d → none |
| DAM3-05-012-1950 | Riyadh stone cladding (Material Review & Approve) | 2026-05-31 → 2026-08-02 A (+63d) | 2026-06-07 → 2026-08-09 A (+63d) | 0% → 100% | 34.75d → none |
| DAM3-05-012-1960 | PANEL SIGNAGE (Material Review & Approve) | 2026-05-31 → 2026-08-02 A (+63d) | 2026-06-07 → 2026-08-09 A (+63d) | 0% → 100% | 37.75d → none |
| DAM3-05-012-2030 | Aluminum Door (Material Review & Approve) | 2026-06-01 → 2026-08-03 A (+63d) | 2026-06-08 → 2026-08-10 A (+63d) | 0% → 100% | 32.75d → none |
| DAM3-05-012-2040 | structural steel members for gate frame (Material Review & Approve) | 2026-06-01 → 2026-08-03 A (+63d) | 2026-06-08 → 2026-08-10 A (+63d) | 0% → 100% | 7.75d → none |
| DAM3-05-012-2050 | installation of structural steel members and plates for main gates (Material Review & Approve) | 2026-06-01 → 2026-08-03 A (+63d) | 2026-06-08 → 2026-08-10 A (+63d) | 0% → 100% | 12.75d → none |
| DAM3-05-012-2170 | plant trees, plants, and ground covers including fixations, sweet soil (Material Review & Approve) | 2026-06-02 → 2026-08-04 A (+63d) | 2026-06-09 → 2026-08-11 A (+63d) | 0% → 100% | 34.75d → none |

| ID | Task | Start | Finish | Complete | Total float |
| --- | --- | --- | --- | --- | --- |
| DAM3-05-012-2200 | precast concrete curbstone (Material Review & Approve) | 2026-06-03 → 2026-08-05 A (+63d) | 2026-06-10 → 2026-08-12 A (+63d) | 0% → 100% | 41.75d → none |
| DAM3-05-012-2210 | 19 to 38mm locally available stone gravel (Material Review & Approve) | 2026-06-03 → 2026-08-05 A (+63d) | 2026-06-10 → 2026-08-12 A (+63d) | 0% → 100% | 39.75d → none |
| DAM3-05-012-2220 | PANTRY CABINET (Material Review & Approve) | 2026-06-03 → 2026-08-05 A (+63d) | 2026-06-10 → 2026-08-12 A (+63d) | 0% → 100% | 32.75d → none |
| DAM3-05-012-2230 | COUNTER DESK (Material Review & Approve) | 2026-06-03 → 2026-08-05 A (+63d) | 2026-06-10 → 2026-08-12 A (+63d) | 0% → 100% | 33.75d → none |
| DAM3-05-012-2240 | Roller blind (Material Review & Approve) | 2026-06-03 → 2026-08-05 A (+63d) | 2026-06-10 → 2026-08-12 A (+63d) | 0% → 100% | 37.75d → none |
| DAM3-05-012-2250 | installation of structural steel members and plates for pedestrian gates (Material Review & Approve) | 2026-06-03 → 2026-08-05 A (+63d) | 2026-06-10 → 2026-08-12 A (+63d) | 0% → 100% | 16.75d → none |
| DAM3-05-012-2340 | Backfilling for Roads (Material Review & Approve) | 2026-06-04 → 2026-08-06 A (+63d) | 2026-06-10 → 2026-08-12 A (+63d) | 0% → 100% | 36d → none |
| DAM3-05-012-2350 | interlocking pedstrian paving blocks (Material Review & Approve) | 2026-06-04 → 2026-08-06 A (+63d) | 2026-06-10 → 2026-08-12 A (+63d) | 0% → 100% | 41d → none |
| DAM3-05-012-2360 | folding & sliding mounter combination ladder for building maintenance purpose (Material Review & Approve) | 2026-06-04 → 2026-08-06 A (+63d) | 2026-06-10 → 2026-08-12 A (+63d) | 0% → 100% | 31d → none |
| DAM3-05-012-2380 | hollow metal door (Material Review & Approve) | 2026-06-04 → 2026-08-06 A (+63d) | 2026-06-10 → 2026-08-12 A (+63d) | 0% → 100% | 29d → none |
| DAM3-05-012-2390 | granite saddles and thresholds (Material Review & Approve) | 2026-06-04 → 2026-08-06 A (+63d) | 2026-06-10 → 2026-08-12 A (+63d) | 0% → 100% | 30d → none |
| DAM3-05-012-2400 | ceramic wall tiles (Material Review & Approve) | 2026-06-04 → 2026-08-06 A (+63d) | 2026-06-10 → 2026-08-12 A (+63d) | 0% → 100% | 30d → none |
| DAM3-05-012-2410 | two coats of acrylic paint on internal walls (Material Review & Approve) | 2026-06-04 → 2026-08-06 A (+63d) | 2026-06-10 → 2026-08-12 A (+63d) | 0% → 100% | 36d → none |
| DAM3-05-012-2420 | two coats of acrylic paint (suitable for exterior use) on external (Material Review & Approve) | 2026-06-04 → 2026-08-06 A (+63d) | 2026-06-10 → 2026-08-12 A (+63d) | 0% → 100% | 41d → none |
| DAM3-05-012-2430 | aluminum cladding (Material Review & Approve) | 2026-06-04 → 2026-08-06 A (+63d) | 2026-06-10 → 2026-08-12 A (+63d) | 0% → 100% | 30d → none |
| DAM3-05-012-2440 | gypsum board suspended ceiling (Material Review & Approve) | 2026-06-04 → 2026-08-06 A (+63d) | 2026-06-10 → 2026-08-12 A (+63d) | 0% → 100% | 38d → none |
| DAM3-05-012-2450 | Waste Receptacle(Material Review & Approve) | 2026-06-04 → 2026-08-06 A (+63d) | 2026-06-10 → 2026-08-12 A (+63d) | 0% → 100% | 32d → none |
| DAM3-05-012-2460 | structural steel members and steel hollow sections for wall fence (Material Review & Approve) | 2026-06-04 → 2026-08-06 A (+63d) | 2026-06-10 → 2026-08-12 A (+63d) | 0% → 100% | 16d → none |
| DAM3-05-012-2470 | fix galvanized steel chain link gate (Material Review & Approve) | 2026-06-04 → 2026-08-06 A (+63d) | 2026-06-10 → 2026-08-12 A (+63d) | 0% → 100% | 27d → none |
| DAM3-05-012-2480 | gully traps with heavy duty cover (Material Review & Approve) | 2026-06-04 → 2026-08-06 A (+63d) | 2026-06-10 → 2026-08-12 A (+63d) | 0% → 100% | 31d → none |
| DAM3-05-012-2490 | chamber with heavy duty cover (Material Review & Approve) | 2026-06-04 → 2026-08-06 A (+63d) | 2026-06-10 → 2026-08-12 A (+63d) | 0% → 100% | 33d → none |
| DAM3-05-012-2630 | ceramic floor tiles (Material Review & Approve) | 2026-06-07 → 2026-08-09 A (+63d) | 2026-06-13 → 2026-08-15 A (+63d) | 0% → 100% | 33d → none |
| DAM3-05-012-2640 | 3mm steel CNC laser cut panels (Material Review & Approve) | 2026-06-07 → 2026-08-09 A (+63d) | 2026-06-13 → 2026-08-15 A (+63d) | 0% → 100% | 28d → none |
| DAM3-05-012-2920 | matt stainless steel flag pole (Material Review & Approve) (Material Review & Approve) | 2026-06-08 → 2026-08-10 A (+63d) | 2026-06-14 → 2026-08-16 A (+63d) | 0% → 100% | 32d → none |
| DAM3-05-012-2930 | galvanized steel chain link ,steel tube framing and posts, turn buckle, tension wir.etc(Material Review & Approve) | 2026-06-08 → 2026-08-10 A (+63d) | 2026-06-14 → 2026-08-16 A (+63d) | 0% → 100% | 0d → none |
| DAM3-05-012-3590 | granite flooring (Material Review & Approve) | 2026-06-15 → 2026-08-17 A (+63d) | 2026-06-21 → 2026-08-23 A (+63d) | 0% → 100% | 0d → none |
| DAM3-05-012-3890 | Workstation chair (Material Review & Approve) | 2026-07-12 → 2026-09-13 A (+63d) | 2026-07-18 → 2026-09-19 A (+63d) | 0% → 100% | 0d → none |
| DAM3-05-012-3900 | Workstation table (Material Review & Approve) | 2026-07-12 → 2026-09-13 A (+63d) | 2026-07-18 → 2026-09-19 A (+63d) | 0% → 100% | 0d → none |
| 1 | **Mechanical** | 2026-05-31 → 2026-08-02 (+63d) | 2026-06-10 → 2026-08-12 (+63d) |  |  |
| DAM3-05-012-1630 | installation of Fire extinguishers as per drawings, specifications (Material Review & Approve) | 2026-05-31 → 2026-08-02 A (+63d) | 2026-06-04 → 2026-08-06 A (+63d) | 0% → 100% | 38d → none |
| DAM3-05-012-2060 | Bulbblers and Spreyers of IRRIGATION SYSTEM (Material Review & Approve) | 2026-06-01 → 2026-08-03 A (+63d) | 2026-06-08 → 2026-08-10 A (+63d) | 0% → 100% | 35.75d → none |
| DAM3-05-012-2180 | TOILET ACCESSROIES (Material Review & Approve) | 2026-06-02 → 2026-08-04 A (+63d) | 2026-06-09 → 2026-08-11 A (+63d) | 0% → 100% | 33.75d → none |
| DAM3-05-012-2290 | GROUNDING - (Material Review & Approve) | 2026-06-03 → 2026-08-05 A (+63d) | 2026-06-10 → 2026-08-12 A (+63d) | 0% → 100% | 38.75d → none |
| DAM3-05-012-2310 | IRRIGATION SYSTEM (Material Review & Approve) | 2026-06-03 → 2026-08-05 A (+63d) | 2026-06-10 → 2026-08-12 A (+63d) | 0% → 100% | 30.75d → none |
| DAM3-05-012-2370 | heavy steel cover with frame including all necessary fixings(Material Review & Approve) | 2026-06-04 → 2026-08-06 A (+63d) | 2026-06-10 → 2026-08-12 A (+63d) | 0% → 100% | 34d → none |
| DAM3-05-012-2500 | PLUMBING FIXTURES (Material Review & Approve) | 2026-06-04 → 2026-08-06 A (+63d) | 2026-06-10 → 2026-08-12 A (+63d) | 0% → 100% | 35d → none |
| DAM3-05-012-2590 | WATER SUPPLY SYSTEM (Material Review & Approve) | 2026-06-04 → 2026-08-06 A (+63d) | 2026-06-10 → 2026-08-12 A (+63d) | 0% → 100% | 33d → none |
| 2 | **Electrical** | 2026-05-31 → 2026-08-02 (+63d) | 2026-06-14 → 2026-08-16 (+63d) |  |  |
| DAM3-05-012-1970 | HEATING, VENTILATION AND AIR CONDITIONING - (Material Review & Approve) | 2026-05-31 → 2026-08-02 A (+63d) | 2026-06-07 → 2026-08-09 A (+63d) | 0% → 100% | 36.75d → none |
| DAM3-05-012-1980 | Central (Headend) System Components; (Material Review & Approve) | 2026-05-31 → 2026-08-02 A (+63d) | 2026-06-07 → 2026-08-09 A (+63d) | 0% → 100% | 37.75d → none |
| DAM3-05-012-1990 | Analog addressable fire alarm control panel with battery (Material Review & Approve) | 2026-05-31 → 2026-08-02 A (+63d) | 2026-06-07 → 2026-08-09 A (+63d) | 0% → 100% | 37.75d → none |
| DAM3-05-012-2070 | LIGHTING FIXTURES (Material Review & Approve) | 2026-06-01 → 2026-08-03 A (+63d) | 2026-06-08 → 2026-08-10 A (+63d) | 0% → 100% | 37.75d → none |
| DAM3-05-012-2080 | COMPUTERS AND RELATED PERIPHERALS (Material Review & Approve) | 2026-06-01 → 2026-08-03 A (+63d) | 2026-06-08 → 2026-08-10 A (+63d) | 0% → 100% | 36.75d → none |
| DAM3-05-012-2090 | CCTV storage system, as specified(Material Review & Approve) | 2026-06-01 → 2026-08-03 A (+63d) | 2026-06-08 → 2026-08-10 A (+63d) | 0% → 100% | 34.75d → none |
| DAM3-05-012-2100 | ELECTRICAL GATE BARRIER (Material Review & Approve) | 2026-06-01 → 2026-08-03 A (+63d) | 2026-06-08 → 2026-08-10 A (+63d) | 0% → 100% | 36.75d → none |
| DAM3-05-012-2110 | LIGHTNING PROTECTION (Material Review & Approve) | 2026-06-01 → 2026-08-03 A (+63d) | 2026-06-08 → 2026-08-10 A (+63d) | 0% → 100% | 34.75d → none |
| DAM3-05-012-2120 | Intelligent Ionization / Photoelectric smoke and heat detector with base (Material Review & Approve) | 2026-06-01 → 2026-08-03 A (+63d) | 2026-06-08 → 2026-08-10 A (+63d) | 0% → 100% | 34.75d → none |
| DAM3-05-012-2260 | Exhaust fans - (Material Review & Approve) | 2026-06-03 → 2026-08-05 A (+63d) | 2026-06-10 → 2026-08-12 A (+63d) | 0% → 100% | 31.75d → none |
| DAM3-05-012-2270 | power source with built-in photocell sensor for automatic electrical connection (Material Review & Approve) | 2026-06-03 → 2026-08-05 A (+63d) | 2026-06-10 → 2026-08-12 A (+63d) | 0% → 100% | 36.75d → none |
| DAM3-05-012-2280 | UNDERGROUND DISTRIBUTION SYSTEM -(Material Review & Approve) | 2026-06-03 → 2026-08-05 A (+63d) | 2026-06-10 → 2026-08-12 A (+63d) | 0% → 100% | 33.75d → none |
| DAM3-05-012-2300 | card reader IN/OUT (Material Review & Approve) | 2026-06-03 → 2026-08-05 A (+63d) | 2026-06-10 → 2026-08-12 A (+63d) | 0% → 100% | 31.75d → none |
| DAM3-05-012-2510 | switches and Receptacle outlets complete with device boxes (Material Review & Approve) | 2026-06-04 → 2026-08-06 A (+63d) | 2026-06-10 → 2026-08-12 A (+63d) | 0% → 100% | 33d → none |
| DAM3-05-012-2520 | 12-Port CAT6A UTP fully loaded patch panel (Material Review & Approve) | 2026-06-04 → 2026-08-06 A (+63d) | 2026-06-10 → 2026-08-12 A (+63d) | 0% → 100% | 31d → none |
| DAM3-05-012-2530 | (Material Review & Approve)Port, SMF, Fiber Optic Patch Panels | 2026-06-04 → 2026-08-06 A (+63d) | 2026-06-10 → 2026-08-12 A (+63d) | 0% → 100% | 31d → none |
| DAM3-05-012-2540 | VIDEO SURVEILLANCE (Material Review & Approve) | 2026-06-04 → 2026-08-06 A (+63d) | 2026-06-10 → 2026-08-12 A (+63d) | 0% → 100% | 31d → none |
| DAM3-05-012-2550 | VSS System, as specified; (Material Review & Approve) | 2026-06-04 → 2026-08-06 A (+63d) | 2026-06-10 → 2026-08-12 A (+63d) | 0% → 100% | 31d → none |
| DAM3-05-012-2560 | CCTV cameras (Material Review & Approve) | 2026-06-04 → 2026-08-06 A (+63d) | 2026-06-10 → 2026-08-12 A (+63d) | 0% → 100% | 32d → none |
| DAM3-05-012-2570 | 20A , ATS ( Automatic transfer switch) for UPS (Material Review & Approve) | 2026-06-04 → 2026-08-06 A (+63d) | 2026-06-10 → 2026-08-12 A (+63d) | 0% → 100% | 31d → none |
| DAM3-05-012-2580 | fire alarm system including wires, conduit and other materials - (Material Review & Approve) | 2026-06-04 → 2026-08-06 A (+63d) | 2026-06-10 → 2026-08-12 A (+63d) | 0% → 100% | 31d → none |
| DAM3-05-012-2650 | Access control panel - (Material Review & Approve) | 2026-06-07 → 2026-08-09 A (+63d) | 2026-06-13 → 2026-08-15 A (+63d) | 0% → 100% | 29d → none |
| DAM3-05-012-2940 | LIGHTING AND POWER TYPE PANELBOARDS (Material Review & Approve) | 2026-06-08 → 2026-08-10 A (+63d) | 2026-06-14 → 2026-08-16 A (+63d) | 0% → 100% | 29d → none |
| 7 | **Procurement** | 2026-06-02 → 2026-03-01 (-93d) | 2026-08-04 → 2026-09-12 (+39d) |  |  |
| 5 | **Fabrication & Delivery** | 2026-06-02 → 2026-03-01 (-93d) | 2026-08-04 → 2026-09-12 (+39d) |  |  |
| 3 | **Civil & Arch** | 2026-06-02 → 2026-06-07 (+5d) | 2026-08-04 → 2026-09-12 (+39d) |  |  |
| DAM3-05-012-2850 | overflow galvanized steel roof scupper with gray color with angular secondary support(Fabrication & Delivery) | 2026-06-07 A | 2026-06-24 → 2026-08-12 A (+49d) | 0% → 100% | 34.75d → none |
| DAM3-05-012-2860 | aluminum framed double glazed windows (Fabrication & Delivery) | 2026-06-07 A | 2026-06-22 → 2026-08-12 A (+51d) | 0% → 100% | 35.75d → none |
| DAM3-05-012-2870 | Riyadh stone cladding (Fabrication & Delivery) | 2026-06-07 A | 2026-06-21 → 2026-07-22 A (+31d) | 0% → 100% | 34.75d → none |
| DAM3-05-012-2880 | PANEL SIGNAGE (Fabrication & Delivery) | 2026-06-07 A | 2026-06-21 → 2026-08-12 A (+52d) | 0% → 100% | 37.75d → none |
| DAM3-05-012-2970 | Aluminum Door (Fabrication & Delivery) | 2026-06-08 → 2026-06-07 A (-1d) | 2026-06-25 → 2026-08-12 A (+48d) | 0% → 100% | 32.75d → none |
| DAM3-05-012-2980 | structural steel members for gate frame (Fabrication & Delivery) | 2026-06-08 → 2026-06-07 A (-1d) | 2026-06-25 → 2026-08-12 A (+48d) | 0% → 100% | 7.75d → none |

| ID | Task | Start | Finish | Complete | Total float |
| --- | --- | --- | --- | --- | --- |
| DAM3-05-012-2990 | installation of structural steel members and plates for main gates (Fabrication & Delivery) | 2026-06-08 → 2026-06-07 A (-1d) | 2026-06-22 → 2026-08-12 A (+51d) | 0% → 100% | 12.75d → none |
| DAM3-05-012-3090 | TOILET ACCESSROIES (Fabrication & Delivery) | 2026-06-09 → 2026-06-07 A (-2d) | 2026-06-25 → 2026-08-12 A (+48d) | 0% → 100% | 33.75d → none |
| DAM3-05-012-3130 | precast concrete curbstone (Fabrication & Delivery) | 2026-06-10 → 2026-06-07 A (-3d) | 2026-06-16 → 2026-08-12 A (+57d) | 0% → 100% | 41.75d → none |
| DAM3-05-012-3140 | 19 to 38mm locally available stone gravel (Fabrication & Delivery) | 2026-06-10 → 2026-06-07 A (-3d) | 2026-06-16 → 2026-08-12 A (+57d) | 0% → 100% | 39.75d → none |
| DAM3-05-012-3150 | PANTRY CABINET (Fabrication & Delivery) | 2026-06-10 → 2026-06-07 A (-3d) | 2026-06-27 → 2026-08-12 A (+46d) | 0% → 100% | 32.75d → none |
| DAM3-05-012-3160 | COUNTER DESK (Fabrication & Delivery) | 2026-06-10 → 2026-06-07 A (-3d) | 2026-06-24 → 2026-08-12 A (+49d) | 0% → 100% | 33.75d → none |
| DAM3-05-012-3170 | Roller blind (Fabrication & Delivery) | 2026-06-10 → 2026-06-07 A (-3d) | 2026-06-22 → 2026-08-12 A (+51d) | 0% → 100% | 37.75d → none |
| DAM3-05-012-3180 | installation of structural steel members and plates for pedestrian gates (Fabrication & Delivery) | 2026-06-10 → 2026-06-07 A (-3d) | 2026-06-27 → 2026-08-12 A (+46d) | 0% → 100% | 16.75d → none |
| DAM3-05-012-3250 | Backfilling for Roads (Fabrication & Delivery) | 2026-06-11 → 2026-06-07 A (-4d) | 2026-06-15 → 2026-08-12 A (+58d) | 0% → 100% | 36d → none |
| DAM3-05-012-3260 | interlocking pedstrian paving blocks (Fabrication & Delivery) | 2026-06-11 → 2026-06-07 A (-4d) | 2026-06-16 → 2026-08-12 A (+57d) | 0% → 100% | 41d → none |
| DAM3-05-012-3270 | folding & sliding mounter combination ladder for building maintenance purpose (Fabrication & Delivery) | 2026-06-11 → 2026-06-07 A (-4d) | 2026-06-28 → 2026-08-12 A (+45d) | 0% → 100% | 31d → none |
| DAM3-05-012-3280 | heavy steel cover with frame including all necessary fixings(Fabrication & Delivery) | 2026-06-11 → 2026-06-07 A (-4d) | 2026-06-24 → 2026-08-12 A (+49d) | 0% → 100% | 34d → none |
| DAM3-05-012-3290 | hollow metal door (Fabrication & Delivery) | 2026-06-11 → 2026-06-07 A (-4d) | 2026-06-28 → 2026-08-12 A (+45d) | 0% → 100% | 29d → none |
| DAM3-05-012-3300 | granite saddles and thresholds (Fabrication & Delivery) | 2026-06-11 → 2026-06-07 A (-4d) | 2026-06-24 → 2026-08-12 A (+49d) | 0% → 100% | 30d → none |
| DAM3-05-012-3310 | ceramic wall tiles (Fabrication & Delivery) | 2026-06-11 → 2026-06-07 A (-4d) | 2026-06-28 → 2026-08-12 A (+45d) | 0% → 100% | 30d → none |
| DAM3-05-012-3320 | two coats of acrylic paint on internal walls (Fabrication & Delivery) | 2026-06-11 → 2026-06-07 A (-4d) | 2026-06-22 → 2026-08-12 A (+51d) | 0% → 100% | 36d → none |
| DAM3-05-012-3330 | two coats of acrylic paint (suitable for exterior use) on external (Fabrication & Delivery) | 2026-06-11 → 2026-06-07 A (-4d) | 2026-06-16 → 2026-08-12 A (+57d) | 0% → 100% | 41d → none |
| DAM3-05-012-3340 | aluminum cladding (Fabrication & Delivery) | 2026-06-11 → 2026-06-07 A (-4d) | 2026-06-25 → 2026-08-12 A (+48d) | 0% → 100% | 30d → none |
| DAM3-05-012-3350 | gypsum board suspended ceiling (Fabrication & Delivery) | 2026-06-11 → 2026-06-07 A (-4d) | 2026-06-15 → 2026-08-12 A (+58d) | 0% → 100% | 38d → none |
| DAM3-05-012-3370 | structural steel members and steel hollow sections for wall fence (Fabrication & Delivery) | 2026-06-11 → 2026-06-07 A (-4d) | 2026-06-28 → 2026-08-12 A (+45d) | 0% → 100% | 16d → none |
| DAM3-05-012-3380 | fix galvanized steel chain link gate (Fabrication & Delivery) | 2026-06-11 → 2026-06-07 A (-4d) | 2026-06-22 → 2026-08-12 A (+51d) | 0% → 100% | 27d → none |
| DAM3-05-012-3390 | gully traps with heavy duty cover (Fabrication & Delivery) | 2026-06-11 → 2026-06-07 A (-4d) | 2026-06-27 → 2026-08-12 A (+46d) | 0% → 100% | 31d → none |
| DAM3-05-012-3400 | chamber with heavy duty cover (Fabrication & Delivery) | 2026-06-11 → 2026-06-07 A (-4d) | 2026-06-24 → 2026-08-12 A (+49d) | 0% → 100% | 33d → none |
| DAM3-05-012-3410 | PLUMBING FIXTURES (Fabrication & Delivery) | 2026-06-11 → 2026-06-07 A (-4d) | 2026-06-22 → 2026-08-12 A (+51d) | 0% → 100% | 35d → none |
| DAM3-05-012-3510 | ceramic floor tiles (Fabrication & Delivery) | 2026-06-14 → 2026-06-07 A (-7d) | 2026-06-24 → 2026-08-12 A (+49d) | 0% → 100% | 33d → none |
| DAM3-05-012-3520 | 3mm steel CNC laser cut panels (Fabrication & Delivery) | 2026-06-14 → 2026-06-07 A (-7d) | 2026-06-27 → 2026-08-12 A (+46d) | 0% → 100% | 28d → none |
| DAM3-05-012-3560 | matt stainless steel flag pole (Fabrication & Delivery) (Fabrication & Delivery) | 2026-06-15 → 2026-06-07 A (-8d) | 2026-06-25 → 2026-08-12 A (+48d) | 0% → 100% | 32d → none |
| DAM3-05-012-3570 | galvanized steel chain link ,steel tube framing and posts, turn buckle, tension wir.etc(Fabrication & Delivery) | 2026-06-15 → 2026-06-07 A (-8d) | 2026-07-01 → 2026-08-12 A (+42d) | 0% → 100% | 0d → none |
| DAM3-05-012-4080 | Workstation chair (Fabrication & Delivery) | 2026-07-19 → 2026-06-07 A (-42d) | 2026-08-04 → 2026-08-12 A (+8d) | 0% → 100% | 0d → none |
| DAM3-05-012-4090 | Workstation table (Fabrication & Delivery) | 2026-07-19 → 2026-06-07 A (-42d) | 2026-08-04 → 2026-08-12 A (+8d) | 0% → 100% | 0d → none |
| DAM3-05-012-4120 | granite flooring (Fabrication & Delivery) | 2026-07-22 → 2026-06-07 A (-45d) | 2026-08-02 → 2026-09-12 A (+41d) | 0% → 100% | 0d → none |
| DAM3-05-012-2160 | Backfilling for guard rooms under G.Beams (Fabrication & Delivery) | 2026-06-02 → 2026-08-04 A (+63d) | 2026-06-04 → 2026-08-06 A (+63d) | 0% → 100% | 0.75d → none |
| DAM3-05-012-2830 | interlocking paving blocks (Fabrication & Delivery) | 2026-06-07 → 2026-08-09 A (+63d) | 2026-06-13 → 2026-08-15 A (+63d) | 0% → 100% | 44.75d → none |
| DAM3-05-012-2840 | Concrete Masonry Unit (CMU) for walls (Fabrication & Delivery) | 2026-06-07 → 2026-08-09 A (+63d) | 2026-06-11 → 2026-08-13 A (+63d) | 0% → 100% | 18.75d → none |
| 1 | **Mechanical** | 2026-06-06 → 2026-03-01 (-97d) | 2026-06-28 → 2026-08-12 (+45d) |  |  |
| DAM3-05-012-3360 | Waste Receptacle(Fabrication & Delivery) | 2026-06-11 → 2026-03-01 A (-102d) | 2026-06-28 → 2026-08-12 A (+45d) | 0% → 100% | 32d → none |
| DAM3-05-012-3020 | COMPUTERS AND RELATED PERIPHERALS (Fabrication & Delivery) | 2026-06-08 → 2026-04-05 A (-64d) | 2026-06-22 → 2026-08-12 A (+51d) | 0% → 100% | 36.75d → none |
| DAM3-05-012-3190 | Exhaust fans - (Fabrication & Delivery) | 2026-06-10 → 2026-04-06 A (-65d) | 2026-06-27 → 2026-08-12 A (+46d) | 0% → 100% | 31.75d → none |
| DAM3-05-012-3240 | IRRIGATION SYSTEM (Fabrication & Delivery) | 2026-06-10 → 2026-04-13 A (-58d) | 2026-06-28 → 2026-08-12 A (+45d) | 0% → 100% | 30.75d → none |
| DAM3-05-012-3080 | plant trees, plants, and ground covers including fixations, sweet soil (Fabrication & Delivery) | 2026-06-09 → 2026-05-05 A (-35d) | 2026-06-23 → 2026-08-12 A (+50d) | 0% → 100% | 34.75d → none |
| DAM3-05-012-3000 | Bulbblers and Spreyers of IRRIGATION SYSTEM (Fabrication & Delivery) | 2026-06-08 → 2026-05-10 A (-29d) | 2026-06-22 → 2026-08-12 A (+51d) | 0% → 100% | 35.75d → none |
| DAM3-05-012-3500 | WATER SUPPLY SYSTEM (Fabrication & Delivery) | 2026-06-11 → 2026-06-08 A (-3d) | 2026-06-24 → 2026-08-12 A (+49d) | 0% → 100% | 33d → none |
| DAM3-05-012-2890 | HEATING, VENTILATION AND AIR CONDITIONING - (Fabrication & Delivery) | 2026-06-07 → 2026-07-05 A (+28d) | 2026-06-21 → 2026-08-12 A (+52d) | 0% → 100% | 36.75d → none |
| DAM3-05-012-3060 | Intelligent Ionization / Photoelectric smoke and heat detector with base (Fabrication & Delivery) | 2026-06-08 → 2026-07-05 A (+27d) | 2026-06-24 → 2026-08-12 A (+49d) | 0% → 100% | 34.75d → none |
| DAM3-05-012-2620 | installation of Fire extinguishers as per drawings, specifications (Fabrication & Delivery) | 2026-06-06 → 2026-07-12 A (+36d) | 2026-06-18 → 2026-08-12 A (+55d) | 0% → 100% | 38d → none |
| 2 | **Electrical** | 2026-06-07 → 2026-07-21 (+44d) | 2026-06-30 → 2026-08-12 (+43d) |  |  |
| DAM3-05-012-2900 | Central (Headend) System Components; (Fabrication & Delivery) | 2026-06-07 → 2026-07-21 A (+44d) | 2026-06-21 → 2026-08-12 A (+52d) | 0% → 100% | 37.75d → none |
| DAM3-05-012-2910 | Analog addressable fire alarm control panel with battery (Fabrication & Delivery) | 2026-06-07 → 2026-07-21 A (+44d) | 2026-06-21 → 2026-08-12 A (+52d) | 0% → 100% | 37.75d → none |
| DAM3-05-012-3010 | LIGHTING FIXTURES (Fabrication & Delivery) | 2026-06-08 → 2026-07-21 A (+43d) | 2026-06-20 → 2026-08-12 A (+53d) | 0% → 100% | 37.75d → none |
| DAM3-05-012-3030 | CCTV storage system, as specified(Fabrication & Delivery) | 2026-06-08 → 2026-07-21 A (+43d) | 2026-06-24 → 2026-08-12 A (+49d) | 0% → 100% | 34.75d → none |
| DAM3-05-012-3040 | ELECTRICAL GATE BARRIER (Fabrication & Delivery) | 2026-06-08 → 2026-07-21 A (+43d) | 2026-06-22 → 2026-08-12 A (+51d) | 0% → 100% | 36.75d → none |
| DAM3-05-012-3050 | LIGHTNING PROTECTION (Fabrication & Delivery) | 2026-06-08 → 2026-07-21 A (+43d) | 2026-06-24 → 2026-08-12 A (+49d) | 0% → 100% | 34.75d → none |
| DAM3-05-012-3200 | power source with built-in photocell sensor for automatic electrical connection (Fabrication & Delivery) | 2026-06-10 → 2026-07-21 A (+41d) | 2026-06-22 → 2026-08-12 A (+51d) | 0% → 100% | 36.75d → none |
| DAM3-05-012-3210 | UNDERGROUND DISTRIBUTION SYSTEM -(Fabrication & Delivery) | 2026-06-10 → 2026-07-21 A (+41d) | 2026-06-24 → 2026-08-12 A (+49d) | 0% → 100% | 33.75d → none |
| DAM3-05-012-3220 | GROUNDING - (Fabrication & Delivery) | 2026-06-10 → 2026-07-21 A (+41d) | 2026-06-20 → 2026-08-12 A (+53d) | 0% → 100% | 38.75d → none |
| DAM3-05-012-3230 | card reader IN/OUT (Fabrication & Delivery) | 2026-06-10 → 2026-07-21 A (+41d) | 2026-06-28 → 2026-08-12 A (+45d) | 0% → 100% | 31.75d → none |
| DAM3-05-012-3420 | switches and Receptacle outlets complete with device boxes (Fabrication & Delivery) | 2026-06-11 → 2026-07-21 A (+40d) | 2026-06-24 → 2026-08-12 A (+49d) | 0% → 100% | 33d → none |
| DAM3-05-012-3430 | 12-Port CAT6A UTP fully loaded patch panel (Fabrication & Delivery) | 2026-06-11 → 2026-07-21 A (+40d) | 2026-06-28 → 2026-08-12 A (+45d) | 0% → 100% | 31d → none |
| DAM3-05-012-3440 | (Fabrication & Delivery)Port, SMF, Fiber Optic Patch Panels | 2026-06-11 → 2026-07-21 A (+40d) | 2026-06-28 → 2026-08-12 A (+45d) | 0% → 100% | 31d → none |
| DAM3-05-012-3450 | VIDEO SURVEILLANCE (Fabrication & Delivery) | 2026-06-11 → 2026-07-21 A (+40d) | 2026-06-28 → 2026-08-12 A (+45d) | 0% → 100% | 31d → none |
| DAM3-05-012-3460 | VSS System, as specified; (Fabrication & Delivery) | 2026-06-11 → 2026-07-21 A (+40d) | 2026-06-28 → 2026-08-12 A (+45d) | 0% → 100% | 31d → none |
| DAM3-05-012-3470 | CCTV cameras (Fabrication & Delivery) | 2026-06-11 → 2026-07-21 A (+40d) | 2026-06-27 → 2026-08-12 A (+46d) | 0% → 100% | 32d → none |
| DAM3-05-012-3480 | 20A , ATS ( Automatic transfer switch) for UPS (Fabrication & Delivery) | 2026-06-11 → 2026-07-21 A (+40d) | 2026-06-28 → 2026-08-12 A (+45d) | 0% → 100% | 31d → none |
| DAM3-05-012-3490 | fire alarm system including wires, conduit and other materials - (Fabrication & Delivery) | 2026-06-11 → 2026-07-21 A (+40d) | 2026-06-28 → 2026-08-12 A (+45d) | 0% → 100% | 31d → none |
| DAM3-05-012-3530 | Access control panel - (Fabrication & Delivery) | 2026-06-14 → 2026-07-21 A (+37d) | 2026-06-30 → 2026-08-12 A (+43d) | 0% → 100% | 29d → none |
| DAM3-05-012-3580 | LIGHTING AND POWER TYPE PANELBOARDS (Fabrication & Delivery) | 2026-06-15 → 2026-07-21 A (+36d) | 2026-06-30 → 2026-08-12 A (+43d) | 0% → 100% | 29d → none |
| 4 | **Construction** | 2026-05-21 → 2025-04-06 (-410d) | 2026-08-05 → 2026-10-11 (+67d) |  |  |
| 1 | **SITE WORKS** | 2026-05-21 → 2025-07-14 (-311d) | 2026-08-05 → 2026-10-08 (+64d) |  |  |
| 4 | **Guard Rooms & Gates** | 2026-05-21 → 2026-07-28 (+68d) | 2026-06-15 → 2026-08-17 (+63d) |  |  |
| DAM3-05-012-1350 | Excavation for guard rooms | 2026-05-21 → 2026-07-28 A (+68d) | 2026-06-03 → 2026-08-05 A (+63d) | 0% → 100% | 1d → none |

| ID | Task | Start | Finish | Complete | Total float |
| --- | --- | --- | --- | --- | --- |
| DAM3-05-012-2600 | Replacment Under Foundation | 2026-06-04 → 2026-08-06 A (+63d) | 2026-06-07 → 2026-08-09 A (+63d) | 0% → 100% | 0.75d → none |
| DAM3-05-012-3540 | Backfilling Under G.Beam | 2026-06-13 → 2026-08-15 A (+63d) | 2026-06-15 → 2026-08-17 A (+63d) | 0% → 100% | 0.75d → none |
| DAM3-05-012-3550 | Backfilling Under S.O.G | 2026-06-13 → 2026-08-15 A (+63d) | 2026-06-15 → 2026-08-17 A (+63d) | 0% → 100% | 20.75d → none |
| 5 | **Guard Rooms & Gates (CONCRETE Works)** | 2026-06-04 → 2026-07-06 (+32d) | 2026-07-30 → 2026-09-28 (+60d) |  |  |
| DAM3-05-012-3930 | Tanks Walls | 2026-07-14 → 2026-07-06 A (-8d) | 2026-07-20 → 2026-07-21 A (+1d) | 0% → 100% | 0.75d → none |
| DAM3-05-012-2610 | 50 mm thickness lean concrete under the foundation. | 2026-06-04 → 2026-08-06 A (+63d) | 2026-06-08 → 2026-08-10 A (+63d) | 0% → 100% | 0.75d → none |
| DAM3-05-012-2950 | Isolated Footings & Column Neck | 2026-06-07 → 2026-08-09 A (+63d) | 2026-06-13 → 2026-08-15 A (+63d) | 0% → 100% | 0.75d → none |
| DAM3-05-012-3600 | 50 mm thickness lean concrete under grade beams. | 2026-06-15 → 2026-08-17 A (+63d) | 2026-06-18 → 2026-08-20 A (+63d) | 0% → 100% | 0.75d → none |
| DAM3-05-012-3610 | Grade beams | 2026-06-18 → 2026-08-20 A (+63d) | 2026-06-24 → 2026-08-26 A (+63d) | 0% → 100% | 0.75d → none |
| DAM3-05-012-3640 | Columns | 2026-06-24 → 2026-08-26 A (+63d) | 2026-06-29 → 2026-08-31 A (+63d) | 0% → 100% | 0.75d → none |
| DAM3-05-012-3660 | Raft and R.C. walls | 2026-06-27 → 2026-08-29 A (+63d) | 2026-07-02 → 2026-09-03 A (+63d) | 0% → 100% | 0.75d → none |
| DAM3-05-012-3690 | Roof Slab | 2026-06-29 → 2026-08-31 A (+63d) | 2026-07-08 → 2026-09-09 A (+63d) | 0% → 100% | 0.75d → none |
| DAM3-05-012-3700 | Beams | 2026-06-29 → 2026-08-31 A (+63d) | 2026-07-08 → 2026-09-09 A (+63d) | 0% → 100% | 0.75d → none |
| DAM3-05-012-3860 | Provide and cast concrete floor slab on grade | 2026-07-08 → 2026-09-09 A (+63d) | 2026-07-14 → 2026-09-15 A (+63d) | 0% → 100% | 0.75d → none |
| DAM3-05-012-3870 | Concrete Pad | 2026-07-08 → 2026-09-09 A (+63d) | 2026-07-12 → 2026-09-13 A (+63d) | 0% → 100% | 2.75d → none |
| DAM3-05-012-3880 | Tanks Raft | 2026-07-08 → 2026-09-09 A (+63d) | 2026-07-14 → 2026-09-09 A (+57d) | 0% → 100% | 0.75d → none |
| DAM3-05-012-4140 | Tanks Slab | 2026-07-26 → 2026-09-28 A (+64d) | 2026-07-30 → 2026-09-28 A (+60d) | 0% → 100% | 5.75d → none |
| 14 | **Fence Type 1** | 2026-05-23 → 2026-07-29 (+67d) | 2026-06-22 → 2026-08-24 (+63d) |  |  |
| DAM3-05-012-1470 | Excavation | 2026-05-23 → 2026-07-29 A (+67d) | 2026-06-03 → 2026-08-05 A (+63d) | 0% → 100% | 2.5d → none |
| DAM3-05-012-2330 | Replacment Under Foundation | 2026-06-04 → 2026-08-06 A (+63d) | 2026-06-08 → 2026-08-10 A (+63d) | 0% → 100% | 1.75d → none |
| DAM3-05-012-3620 | Backfilling Under G.Beam | 2026-06-20 → 2026-08-22 A (+63d) | 2026-06-22 → 2026-08-24 A (+63d) | 0% → 100% | 1.75d → none |
| 1 | **Fence Type 1 (CONCRETE Works)** | 2026-06-08 → 2026-08-10 (+63d) | 2026-07-05 → 2026-09-06 (+63d) |  |  |
| DAM3-05-012-2960 | 50 mm thickness lean concrete under the foundation. | 2026-06-08 → 2026-08-10 A (+63d) | 2026-06-11 → 2026-08-13 A (+63d) | 0% → 100% | 1.75d → none |
| DAM3-05-012-3120 | Isolated Footings & Column Neck | 2026-06-10 → 2026-08-12 A (+63d) | 2026-06-20 → 2026-08-22 A (+63d) | 0% → 100% | 1.75d → none |
| DAM3-05-012-3630 | 50 mm thickness lean concrete under grade beams. | 2026-06-22 → 2026-08-24 A (+63d) | 2026-06-25 → 2026-08-27 A (+63d) | 0% → 100% | 1.75d → none |
| DAM3-05-012-3650 | Grade beams | 2026-06-25 → 2026-08-27 A (+63d) | 2026-07-05 → 2026-09-06 A (+63d) | 0% → 100% | 1.75d → none |
| 2 | **Fence Type 2** | 2026-06-03 → 2026-06-08 (+5d) | 2026-06-27 → 2026-09-16 (+81d) |  |  |
| DAM3-05-012-2320 | Excavation for Fence Type 2 | 2026-06-03 → 2026-06-08 A (+5d) | 2026-06-27 → 2026-09-16 (+81d) | 0% → 95% | 16.5d → -39.5d |
| 3 | **Roads** | 2026-06-09 → 2025-07-14 (-330d) | 2026-08-05 → 2026-10-08 (+64d) |  |  |
| DAM3-05-012-3760 | install precast concrete curbstone | 2026-08-03 → 2025-07-14 A (-385d) | 2026-08-05 → 2026-09-16 (+42d) | 0% → 97% | 0.75d → -38.5d |
| DAM3-05-012-3740 | install interlocking paving blocks | 2026-08-03 → 2026-04-06 A (-119d) | 2026-08-05 → 2026-09-09 A (+35d) | 0% → 100% | 0.75d → none |
| DAM3-05-012-3800 | install interlocking pedstrian paving blocks | 2026-08-03 → 2026-06-07 A (-57d) | 2026-08-05 → 2026-09-16 (+42d) | 0% → 95% | 0.75d → -38.5d |
| DAM3-05-012-3710 | Backfilling for Roads | 2026-07-27 → 2026-07-12 A (-15d) | 2026-08-05 → 2026-09-16 (+42d) | 0% → 95% | 0.75d → -36d |
| DAM3-05-012-3110 | Demolition of the existing asphalt layers to reach the foundation level of interlock layers | 2026-06-09 → 2026-07-23 A (+44d) | 2026-06-11 → 2026-09-09 A (+90d) | 0% → 100% | 37.5d → none |
| DAM3-05-012-3820 | install matt stainless steel flag pole | 2026-08-01 → 2026-07-25 A (-7d) | 2026-08-04 → 2026-09-12 A (+39d) | 0% → 100% | 1.75d → none |
| DAM3-05-012-3770 | install 19 to 38mm locally available stone gravel | 2026-07-30 → 2026-08-12 A (+13d) | 2026-08-04 → 2026-09-09 A (+36d) | 0% → 100% | 1.75d → none |
| DAM3-05-012-3810 | plant trees, plants, and ground covers including fixations, sweet soil | 2026-08-01 → 2026-09-16 A (+46d) | 2026-08-04 → 2026-09-19 (+46d) | 0% → 77% | 1.75d → -41.5d |
| DAM3-05-012-3670 | Excavation for Roads | 2026-07-25 → 2026-09-27 A (+64d) | 2026-08-05 → 2026-10-08 A (+64d) | 0% → 100% | 0.75d → none |
| 3 | **MASONRY UNIT** | 2026-07-02 → 2026-04-19 (-74d) | 2026-07-06 → 2026-07-26 (+20d) |  |  |
| DAM3-05-012-3730 | install Concrete Masonry Unit (CMU) for walls | 2026-07-02 → 2026-04-19 A (-74d) | 2026-07-06 → 2026-07-26 A (+20d) | 0% → 100% | 0.75d → none |
| 6 | **THERMAL & MOISTURE PROTECTION** | 2026-07-14 → 2026-09-09 (+57d) | 2026-07-30 → 2026-09-21 (+53d) |  |  |
| 1 | **THERMAL & MOISTURE PROTECTION - Foundation** | 2026-07-14 → 2026-09-09 (+57d) | 2026-07-19 → 2026-09-17 (+60d) |  |  |
| DAM3-05-012-3950 | lay epoxy 2 coating for inner surfaces for RC walls, RC footings | 2026-07-16 → 2026-09-09 A (+55d) | 2026-07-19 → 2026-09-10 A (+53d) | 0% → 100% | 4.75d → none |
| DAM3-05-012-3910 | apply 2 coats of bitumen waterproofing paint on concrete surface in contact with soil | 2026-07-14 → 2026-09-15 A (+63d) | 2026-07-16 → 2026-09-17 A (+63d) | 0% → 100% | 17.75d → none |
| DAM3-05-012-3920 | install of waterproofing membrane 4mm including protection board for RC footings and RC walls | 2026-07-14 → 2026-09-15 A (+63d) | 2026-07-16 → 2026-09-15 A (+61d) | 0% → 100% | 4.75d → none |
| 3 | **THERMAL & MOISTURE PROTECTION - Tanks** | 2026-07-18 → 2026-09-09 (+53d) | 2026-07-30 → 2026-09-21 (+53d) |  |  |
| DAM3-05-012-4070 | lay epoxy 2 coating for inner surfaces for bottom of the roof | 2026-07-18 → 2026-09-09 A (+53d) | 2026-07-30 → 2026-09-21 A (+53d) | 0% → 100% | 0.75d → none |
| DAM3-05-012-4110 | install water stop for tanks according to the drawings and specification | 2026-07-20 → 2026-09-21 A (+63d) | 2026-07-26 → 2026-09-21 A (+57d) | 0% → 100% | 3.75d → none |
| 7 | **ROOFING SYSTEM** | 2026-07-18 → 2026-08-02 (+15d) | 2026-07-30 → 2026-08-24 (+25d) |  |  |
| DAM3-05-012-4010 | install 300 micron polyethylene sheet | 2026-07-18 → 2026-08-02 A (+15d) | 2026-07-30 → 2026-08-13 A (+14d) | 0% → 100% | 0.75d → none |
| DAM3-05-012-4040 | install UV resistant geotextile sheet | 2026-07-18 → 2026-08-02 A (+15d) | 2026-07-30 → 2026-08-13 A (+14d) | 0% → 100% | 0.75d → none |
| DAM3-05-012-3970 | install liquid applied waterproofing coating single-component pitch modified polyurethane based elastomeric | 2026-07-18 → 2026-08-02 A (+15d) | 2026-07-30 → 2026-08-18 A (+19d) | 0% → 100% | 0.75d → none |
| DAM3-05-012-3980 | install 4mm thick APP modified bituminous membrane - single layer | 2026-07-18 → 2026-08-02 A (+15d) | 2026-07-30 → 2026-08-18 A (+19d) | 0% → 100% | 0.75d → none |
| DAM3-05-012-4060 | install Terrazzo tiles | 2026-07-18 → 2026-08-03 A (+16d) | 2026-07-30 → 2026-08-20 A (+21d) | 0% → 100% | 0.75d → none |
| DAM3-05-012-4000 | cast in place foam concrete screed, 50mm thick minimum; laid to fall and cross fall | 2026-07-18 → 2026-08-06 A (+19d) | 2026-07-30 → 2026-08-19 A (+20d) | 0% → 100% | 0.75d → none |
| DAM3-05-012-3990 | install 75mm thick rigid insulation (extruded polystyrene) | 2026-07-18 → 2026-08-10 A (+23d) | 2026-07-30 → 2026-08-13 A (+14d) | 0% → 100% | 0.75d → none |
| DAM3-05-012-4030 | install high density polyisocynurate cover board | 2026-07-18 → 2026-08-10 A (+23d) | 2026-07-30 → 2026-08-13 A (+14d) | 0% → 100% | 0.75d → none |
| DAM3-05-012-4050 | fixing 3mm thick extruded aluminum flashing 40mm with sealant and all other accessories | 2026-07-18 → 2026-08-10 A (+23d) | 2026-07-30 → 2026-08-13 A (+14d) | 0% → 100% | 0.75d → none |
| DAM3-05-012-4020 | install 50mm thick loose gravel toppings | 2026-07-18 → 2026-08-12 A (+25d) | 2026-07-30 → 2026-08-24 A (+25d) | 0% → 100% | 0.75d → none |
| 9 | **FINISHES** | 2026-07-06 → 2025-04-06 (-456d) | 2026-08-05 → 2026-10-03 (+59d) |  |  |
| DAM3-05-012-3830 | install ceramic floor tiles | 2026-07-30 → 2025-04-06 A (-480d) | 2026-08-03 → 2026-07-27 A (-7d) | 0% → 100% | 2.75d → none |
| DAM3-05-012-4190 | install 3mm steel CNC laser cut panels | 2026-07-30 → 2026-04-12 A (-109d) | 2026-08-02 → 2026-08-29 A (+27d) | 0% → 100% | 0d → none |
| DAM3-05-012-4180 | install Riyadh stone cladding | 2026-07-30 → 2026-06-08 A (-52d) | 2026-08-03 → 2026-09-06 A (+34d) | 0% → 100% | 0.75d → none |
| DAM3-05-012-4210 | install aluminum cladding | 2026-08-01 → 2026-07-05 A (-27d) | 2026-08-02 → 2026-09-13 A (+42d) | 0% → 100% | 0d → none |
| DAM3-05-012-4290 | install ceramic wall tiles | 2026-08-03 → 2026-07-12 A (-22d) | 2026-08-05 → 2026-08-24 A (+19d) | 0% → 100% | 0d → none |
| DAM3-05-012-4480 | install two coats of acrylic paint on internal walls | 2026-08-04 → 2026-08-23 A (+19d) | 2026-08-05 → 2026-09-12 A (+38d) | 0% → 100% | 0d → none |
| DAM3-05-012-4490 | install two coats of acrylic paint (suitable for exterior use) on external | 2026-08-04 → 2026-08-23 A (+19d) | 2026-08-05 → 2026-09-20 (+46d) | 0% → 97% | 0d → -41.5d |
| DAM3-05-012-4280 | install granite flooring | 2026-08-03 → 2026-08-24 A (+21d) | 2026-08-04 → 2026-09-20 (+47d) | 0% → 85% | 0d → -41.5d |
| DAM3-05-012-4170 | install granite saddles and thresholds | 2026-07-30 → 2026-08-27 A (+28d) | 2026-08-02 → 2026-09-13 A (+42d) | 0% → 100% | 0d → none |
| DAM3-05-012-3840 | install concrete plastering | 2026-07-06 → 2026-09-07 A (+63d) | 2026-07-11 → 2026-09-07 A (+58d) | 0% → 100% | 0.75d → none |

| ID | Task | Start | Finish | Complete | Total float |
| --- | --- | --- | --- | --- | --- |
| DAM3-05-012-4200 | gypsum board suspended ceiling | 2026-07-30 → 2026-10-03 A (+65d) | 2026-08-03 → 2026-10-03 A (+61d) | 0% → 100% | 0d → none |
| 12 | **SPECIAL CONSTRUCTION- STRUCTURAL STEEL (Fence Type 2)** | 2026-07-02 → 2025-04-06 (-452d) | 2026-08-05 → 2026-10-08 (+64d) |  |  |
| DAM3-05-012-3720 | fix galvanized steel chain link fence wall including steel tube framing and posts, turn buckle, tension wir...etc | 2026-07-02 → 2025-04-06 A (-452d) | 2026-08-05 → 2026-09-21 (+47d) | 0% → 95% | 0d → -39.5d |
| DAM3-05-012-3850 | installation of structural steel members and plates for main gates | 2026-07-07 → 2026-08-15 A (+39d) | 2026-08-05 → 2026-10-07 A (+63d) | 0% → 100% | 0d → none |
| DAM3-05-012-4130 | fix galvanized steel chain link gate | 2026-07-25 → 2026-09-01 A (+38d) | 2026-08-05 → 2026-09-17 (+43d) | 0% → 95% | 0d → -36.55d |
| DAM3-05-012-3750 | install structural steel members for gate frame | 2026-07-05 → 2026-09-06 A (+63d) | 2026-08-02 → 2026-10-05 A (+64d) | 0% → 100% | 0d → none |
| DAM3-05-012-3940 | installation of structural steel members and plates for pedestrian gates | 2026-07-16 → 2026-09-09 A (+55d) | 2026-08-05 → 2026-09-30 A (+56d) | 0% → 100% | 0d → none |
| DAM3-05-012-3960 | Install structural steel members and steel hollow sections for wall fence | 2026-07-18 → 2026-09-19 A (+63d) | 2026-08-05 → 2026-10-08 A (+64d) | 0% → 100% | 0d → none |
| 13 | **MECHANICAL WORKS** | 2026-06-07 → 2025-07-06 (-336d) | 2026-08-05 → 2026-10-06 (+62d) |  |  |
| 1 | **MECHANICAL WORKS - 1st Fix** | 2026-06-07 → 2025-07-06 (-336d) | 2026-06-18 → 2026-08-20 (+63d) |  |  |
| DAM3-05-012-2690 | IRRIGATION SYSTEM - 1st Fix | 2026-06-07 → 2025-07-06 A (-336d) | 2026-06-18 → 2026-08-02 A (+45d) | 0% → 100% | 38.75d → none |
| DAM3-05-012-2670 | WATER SUPPLY SYSTEM - 1st Fix | 2026-06-07 → 2026-08-09 A (+63d) | 2026-06-18 → 2026-08-20 A (+63d) | 0% → 100% | 38.75d → none |
| DAM3-05-012-2680 | SEWER AND DRAINAGE SYSTEM - 1st Fix | 2026-06-07 → 2026-08-09 A (+63d) | 2026-06-18 → 2026-08-20 A (+63d) | 0% → 100% | 38.75d → none |
| DAM3-05-012-2720 | HEATING, VENTILATION AND AIR CONDITIONING - 1st Fix | 2026-06-07 → 2026-08-09 A (+63d) | 2026-06-18 → 2026-08-20 A (+63d) | 0% → 100% | 38.75d → none |
| DAM3-05-012-2730 | Exhaust fans - 1st Fix | 2026-06-07 → 2026-08-09 A (+63d) | 2026-06-18 → 2026-08-20 A (+63d) | 0% → 100% | 38.75d → none |
| 2 | **MECHANICAL WORKS - Final Fix** | 2026-08-03 → 2026-06-07 (-57d) | 2026-08-05 → 2026-10-06 (+62d) |  |  |
| DAM3-05-012-4520 | gully traps with heavy duty cover | 2026-08-03 → 2026-06-07 A (-57d) | 2026-08-05 → 2026-09-13 A (+39d) | 0% → 100% | 0d → none |
| DAM3-05-012-4340 | Exhaust fans - Final Fix | 2026-08-03 → 2026-08-26 A (+23d) | 2026-08-05 → 2026-09-16 A (+42d) | 0% → 100% | 0d → none |
| DAM3-05-012-4390 | IRRIGATION SYSTEM - Final Fix | 2026-08-03 → 2026-08-26 A (+23d) | 2026-08-05 → 2026-09-13 A (+39d) | 0% → 100% | 0d → none |
| DAM3-05-012-4530 | Bulbblers and Spreyers of IRRIGATION SYSTEM | 2026-08-03 → 2026-08-26 A (+23d) | 2026-08-05 → 2026-09-13 A (+39d) | 0% → 100% | 0d → none |
| DAM3-05-012-4330 | HEATING, VENTILATION AND AIR CONDITIONING - Final Fix | 2026-08-03 → 2026-08-29 A (+26d) | 2026-08-05 → 2026-09-16 A (+42d) | 0% → 100% | 0d → none |
| DAM3-05-012-4310 | chamber with heavy duty cover | 2026-08-03 → 2026-09-02 A (+30d) | 2026-08-05 → 2026-09-13 A (+39d) | 0% → 100% | 0d → none |
| DAM3-05-012-4650 | WATER SUPPLY SYSTEM - Final Fix | 2026-08-03 → 2026-09-02 A (+30d) | 2026-08-05 → 2026-09-13 A (+39d) | 0% → 100% | 0d → none |
| DAM3-05-012-4300 | installation of Fire extinguishers as per drawings, specifications | 2026-08-03 → 2026-09-13 A (+41d) | 2026-08-05 → 2026-09-16 A (+42d) | 0% → 100% | 0d → none |
| DAM3-05-012-4320 | INSTALL PLUMBING FIXTURES | 2026-08-03 → 2026-10-06 A (+64d) | 2026-08-05 → 2026-10-06 A (+62d) | 0% → 100% | 0d → none |
| 15 | **ELECTRICAL WORKS** | 2026-06-07 → 2025-07-20 (-322d) | 2026-08-05 → 2026-10-11 (+67d) |  |  |
| 1 | **ELECTRICAL WORKS - 1st Fix** | 2026-06-07 → 2026-08-09 (+63d) | 2026-06-18 → 2026-08-20 (+63d) |  |  |
| DAM3-05-012-2700 | LIGHTING AND POWER TYPE PANELBOARDS - 1st Fix | 2026-06-07 → 2026-08-09 A (+63d) | 2026-06-18 → 2026-08-13 A (+56d) | 0% → 100% | 39.75d → none |
| DAM3-05-012-2710 | UPS 3KVA (installed inside the rack) - 1st Fix | 2026-06-07 → 2026-08-09 A (+63d) | 2026-06-18 → 2026-08-20 A (+63d) | 0% → 100% | 39.75d → none |
| DAM3-05-012-2740 | power source with built-in photocell sensor for automatic electrical connection during day/light times - 1st Fix | 2026-06-07 → 2026-08-09 A (+63d) | 2026-06-18 → 2026-08-20 A (+63d) | 0% → 100% | 39.75d → none |
| DAM3-05-012-2750 | UNDERGROUND DISTRIBUTION SYSTEM - 1st Fix | 2026-06-07 → 2026-08-09 A (+63d) | 2026-06-18 → 2026-08-20 A (+63d) | 0% → 100% | 39.75d → none |
| DAM3-05-012-2760 | LIGHTING FIXTURES - 1st Fix | 2026-06-07 → 2026-08-09 A (+63d) | 2026-06-18 → 2026-08-20 A (+63d) | 0% → 100% | 39.75d → none |
| DAM3-05-012-2770 | installation of Wiring devices includes switches and Receptacle outlets complete with device boxes - 1st Fix | 2026-06-07 → 2026-08-09 A (+63d) | 2026-06-18 → 2026-08-20 A (+63d) | 0% → 100% | 39.75d → none |
| DAM3-05-012-2780 | GROUNDING - 1st Fix | 2026-06-07 → 2026-08-09 A (+63d) | 2026-06-18 → 2026-08-20 A (+63d) | 0% → 100% | 39.75d → none |
| DAM3-05-012-2790 | card reader IN/OUT - 1st Fix | 2026-06-07 → 2026-08-09 A (+63d) | 2026-06-18 → 2026-08-20 A (+63d) | 0% → 100% | 39.75d → none |
| DAM3-05-012-2800 | CCTV cameras - 1st Fix | 2026-06-07 → 2026-08-09 A (+63d) | 2026-06-18 → 2026-08-20 A (+63d) | 0% → 100% | 39.75d → none |
| DAM3-05-012-2810 | Access control panel - 1st Fix | 2026-06-07 → 2026-08-09 A (+63d) | 2026-06-18 → 2026-08-20 A (+63d) | 0% → 100% | 39.75d → none |
| DAM3-05-012-2820 | fire alarm system including wires, conduit and other materials - 1st Fix | 2026-06-07 → 2026-08-09 A (+63d) | 2026-06-18 → 2026-08-20 A (+63d) | 0% → 100% | 39.75d → none |
| 2 | **ELECTRICAL WORKS - Final Fix** | 2026-08-03 → 2025-07-20 (-379d) | 2026-08-05 → 2026-10-11 (+67d) |  |  |
| DAM3-05-012-4630 | fire alarm system including wires, conduit and other materials - Final Fix | 2026-08-04 → 2025-07-20 A (-380d) | 2026-08-05 → 2026-09-14 A (+40d) | 0% → 100% | 0d → none |
| DAM3-05-012-4780 | installation of Wiring devices includes switches and Receptacle outlets complete with device boxes - Final Fix | 2026-08-03 → 2026-04-05 A (-120d) | 2026-08-05 → 2026-09-06 A (+32d) | 0% → 100% | 0d → none |
| DAM3-05-012-4790 | Access control panel - Final Fix | 2026-08-04 → 2026-04-05 A (-121d) | 2026-08-05 → 2026-09-14 A (+40d) | 0% → 100% | 0d → none |
| DAM3-05-012-4620 | ELECTRICAL GATE BARRIER | 2026-08-04 → 2026-04-12 A (-114d) | 2026-08-05 → 2026-09-20 (+46d) | 0% → 95% | 0d → -41.5d |
| DAM3-05-012-4610 | CCTV cameras - Final Fix | 2026-08-04 → 2026-07-05 A (-30d) | 2026-08-05 → 2026-09-14 A (+40d) | 0% → 100% | 0d → none |
| DAM3-05-012-4640 | Analog addressable fire alarm control panel with battery | 2026-08-04 → 2026-07-12 A (-23d) | 2026-08-05 → 2026-09-14 A (+40d) | 0% → 100% | 0d → none |
| DAM3-05-012-4660 | LIGHTING AND POWER TYPE PANELBOARDS - Final Fix | 2026-08-04 → 2026-07-12 A (-23d) | 2026-08-05 → 2026-08-31 A (+26d) | 0% → 100% | 0d → none |
| DAM3-05-012-4770 | UNDERGROUND DISTRIBUTION SYSTEM - Final Fix | 2026-08-03 → 2026-07-12 A (-22d) | 2026-08-05 → 2026-08-23 A (+18d) | 0% → 100% | 0d → none |
| DAM3-05-012-4550 | LIGHTING FIXTURES - Final Fix | 2026-08-03 → 2026-08-11 A (+8d) | 2026-08-05 → 2026-09-20 (+46d) | 0% → 90% | 0d → -41.5d |
| DAM3-05-012-4350 | GROUNDING - Final Fix | 2026-08-04 → 2026-09-14 A (+41d) | 2026-08-05 → 2026-09-16 A (+42d) | 0% → 100% | 0d → none |
| DAM3-05-012-4360 | 12-Port, SMF, Fiber Optic Patch Panels; | 2026-08-04 → 2026-09-14 A (+41d) | 2026-08-05 → 2026-09-21 A (+47d) | 0% → 100% | 0d → none |
| DAM3-05-012-4370 | VIDEO SURVEILLANCE | 2026-08-04 → 2026-09-14 A (+41d) | 2026-08-05 → 2026-09-21 A (+47d) | 0% → 100% | 0d → none |
| DAM3-05-012-4380 | CCTV storage system, as specified; | 2026-08-04 → 2026-09-14 A (+41d) | 2026-08-05 → 2026-09-21 A (+47d) | 0% → 100% | 0d → none |
| DAM3-05-012-4540 | power source with built-in photocell sensor for automatic electrical connection during day/light times - Final Fix | 2026-08-04 → 2026-09-14 A (+41d) | 2026-08-05 → 2026-09-14 A (+40d) | 0% → 100% | 0d → none |
| DAM3-05-012-4560 | card reader IN/OUT - Final Fix | 2026-08-04 → 2026-09-14 A (+41d) | 2026-08-05 → 2026-09-21 A (+47d) | 0% → 100% | 0d → none |
| DAM3-05-012-4570 | 12-Port CAT6A UTP fully loaded patch panel | 2026-08-04 → 2026-09-14 A (+41d) | 2026-08-05 → 2026-09-21 A (+47d) | 0% → 100% | 0d → none |
| DAM3-05-012-4580 | COMPUTERS AND RELATED PERIPHERALS | 2026-08-04 → 2026-09-14 A (+41d) | 2026-08-05 → 2026-09-21 A (+47d) | 0% → 100% | 0d → none |
| DAM3-05-012-4590 | Central (Headend) System Components; | 2026-08-04 → 2026-09-14 A (+41d) | 2026-08-05 → 2026-09-21 A (+47d) | 0% → 100% | 0d → none |
| DAM3-05-012-4800 | 20A , ATS ( Automatic transfer switch) for UPS | 2026-08-04 → 2026-09-14 A (+41d) | 2026-08-05 → 2026-09-14 A (+40d) | 0% → 100% | 0d → none |
| DAM3-05-012-4810 | LIGHTNING PROTECTION | 2026-08-04 → 2026-09-14 A (+41d) | 2026-08-05 → 2026-09-16 A (+42d) | 0% → 100% | 0d → none |
| DAM3-05-012-4820 | Intelligent Ionization / Photoelectric smoke and heat detector with base | 2026-08-04 → 2026-09-14 A (+41d) | 2026-08-05 → 2026-09-20 (+46d) | 0% → 85% | 0d → -41.5d |
| DAM3-05-012-4600 | VSS System, as specified; | 2026-08-04 → 2026-10-11 A (+68d) | 2026-08-05 → 2026-10-11 A (+67d) | 0% → 100% | 0d → none |
| 4 | **METALS** | 2026-08-04 → 2026-08-27 (+23d) | 2026-08-05 → 2026-10-08 (+64d) |  |  |
| DAM3-05-012-4460 | install heavy steel cover with frame including all necessary fixings | 2026-08-04 → 2026-08-27 A (+23d) | 2026-08-05 → 2026-09-05 A (+31d) | 0% → 100% | 0d → none |
| DAM3-05-012-4440 | folding & sliding mounter combination ladder for building maintenance purpose | 2026-08-04 → 2026-10-07 A (+64d) | 2026-08-05 → 2026-10-08 A (+64d) | 0% → 100% | 0d → none |
| DAM3-05-012-4450 | install of overflow galvanized steel roof scupper with gray color with angular secondary support | 2026-08-04 → 2026-10-07 A (+64d) | 2026-08-05 → 2026-10-07 A (+63d) | 0% → 100% | 0d → none |
| 5 | **WOODS AND PLASTICS** | 2026-08-03 → 2026-08-15 (+12d) | 2026-08-05 → 2026-08-29 (+24d) |  |  |
| DAM3-05-012-4260 | COUNTER DESK | 2026-08-03 → 2026-08-15 A (+12d) | 2026-08-05 → 2026-08-29 A (+24d) | 0% → 100% | 0d → none |
| DAM3-05-012-4470 | PANTRY CABINET | 2026-08-04 → 2026-08-16 A (+12d) | 2026-08-05 → 2026-08-29 A (+24d) | 0% → 100% | 0d → none |
| 8 | **DOORS & WINDOWS** | 2026-07-29 → 2026-09-05 (+38d) | 2026-08-05 → 2026-09-09 (+35d) |  |  |
| DAM3-05-012-4150 | install hollow metal door | 2026-07-29 → 2026-09-05 A (+38d) | 2026-08-03 → 2026-09-09 A (+37d) | 0% → 100% | 3d → none |

| ID | Task | Start | Finish | Complete | Total float |
| --- | --- | --- | --- | --- | --- |
| DAM3-05-012-4160 | Install aluminum framed double glazed windows | 2026-07-29 → 2026-09-05 A (+38d) | 2026-08-01 → 2026-09-05 A (+35d) | 0% → 100% | 4d → none |
| DAM3-05-012-4270 | Install Aluminum Door | 2026-08-03 → 2026-09-09 A (+37d) | 2026-08-05 → 2026-09-09 A (+35d) | 0% → 100% | 0d → none |
| 10 | **SPECIALTIES** | 2026-08-04 → 2026-08-29 (+25d) | 2026-08-05 → 2026-09-16 (+42d) |  |  |
| DAM3-05-012-4500 | TOILET ACCESSROIES | 2026-08-04 → 2026-08-29 A (+25d) | 2026-08-05 → 2026-09-15 A (+41d) | 0% → 100% | 0d → none |
| DAM3-05-012-4510 | PANEL SIGNAGE | 2026-08-04 → 2026-09-14 A (+41d) | 2026-08-05 → 2026-09-16 A (+42d) | 0% → 100% | 0d → none |
| 11 | **FURNISHINGS** | 2026-08-05 → 2026-08-26 (+21d) | 2026-08-05 → 2026-09-16 (+42d) |  |  |
| DAM3-05-012-4730 | Workstation chair | 2026-08-05 → 2026-08-26 A (+21d) | 2026-08-05 → 2026-08-26 A (+21d) | 0% → 100% | 0d → none |
| DAM3-05-012-4740 | Workstation table | 2026-08-05 → 2026-08-26 A (+21d) | 2026-08-05 → 2026-09-08 A (+34d) | 0% → 100% | 0d → none |
| DAM3-05-012-4750 | Roller blind | 2026-08-05 → 2026-09-15 A (+41d) | 2026-08-05 → 2026-09-16 A (+42d) | 0% → 100% | 0d → none |
| DAM3-05-012-4760 | Waste Receptacle | 2026-08-05 → 2026-09-15 A (+41d) | 2026-08-05 → 2026-09-16 A (+42d) | 0% → 100% | 0d → none |
| 6 | **Testing & Commissioning** | 2026-08-02 → 2026-08-30 (+28d) | 2026-08-05 → 2026-09-21 (+47d) |  |  |
| DAM3-05-012-4400 | Testing & Commissioning - Electrical Systems | 2026-08-02 → 2026-08-30 A (+28d) | 2026-08-04 → 2026-09-20 (+47d) | 0% → 43% | 0d → -41.5d |
| DAM3-05-012-4720 | Testing & Commissioning - Mechanical Systems | 2026-08-04 → 2026-09-01 A (+28d) | 2026-08-05 → 2026-09-21 (+47d) | 0% → 40% | 0d → -40d |
| 5 | **Handing Over** | 2026-07-30 → 2026-09-06 (+38d) | 2026-08-05 → 2026-09-24 (+50d) |  |  |
| 1 | **Engineering** | 2026-07-30 → 2026-09-06 (+38d) | 2026-08-05 → 2026-09-24 (+50d) |  |  |
| 1 | **As-Built Drawings** | 2026-07-30 → 2026-09-06 (+38d) | 2026-08-05 → 2026-09-24 (+50d) |  |  |
| DAM3-05-012-4220 | Prepare & Submit | 2026-07-30 → 2026-09-06 A (+38d) | 2026-08-03 → 2026-09-21 (+49d) |  | 0.5d → -41.5d |
| DAM3-05-012-4230 | Review & Approve | 2026-08-01 → 2026-09-07 A (+37d) | 2026-08-05 → 2026-09-24 (+50d) |  | 0.5d → -41.5d |
| 2 | **Operational Spares** | 2026-08-02 → 2026-09-06 (+35d) | 2026-08-05 → 2026-09-21 (+47d) |  |  |
| DAM3-05-012-4240 | Prepare & Submit | 2026-08-02 → 2026-09-06 A (+35d) | 2026-08-04 → 2026-09-20 (+47d) |  | 0d → -40d |
| DAM3-05-012-4430 | Acceptance | 2026-08-03 → 2026-09-07 A (+35d) | 2026-08-05 → 2026-09-21 (+47d) |  | 0d → -40d |
| DAM3-05-012-4690 | Inspection | 2026-08-04 → 2026-09-08 A (+35d) | 2026-08-05 → 2026-09-21 (+47d) |  | 0d → -40d |
| 3 | **Warranties and Guarantees** | 2026-08-02 → 2026-09-06 (+35d) | 2026-08-05 → 2026-09-21 (+47d) |  |  |
| DAM3-05-012-4250 | Review & Approve | 2026-08-02 → 2026-09-06 A (+35d) | 2026-08-04 → 2026-09-20 (+47d) |  | 0d → -40d |
| DAM3-05-012-4700 | Prepare & Submit | 2026-08-04 → 2026-09-08 A (+35d) | 2026-08-05 → 2026-09-21 (+47d) |  | 0d → -40d |
| 2 | **Training and Manuals** | 2026-08-02 → 2026-09-06 (+35d) | 2026-08-05 → 2026-09-21 (+47d) |  |  |
| 1 | **Training** | 2026-08-02 → 2026-09-06 (+35d) | 2026-08-05 → 2026-09-21 (+47d) |  |  |
| DAM3-05-012-4410 | Prepare & Submit | 2026-08-02 → 2026-09-06 A (+35d) | 2026-08-03 → 2026-09-19 (+47d) |  | 0d → -40d |
| DAM3-05-012-4830 | Review & Approve | 2026-08-04 → 2026-09-08 A (+35d) | 2026-08-05 → 2026-09-21 (+47d) |  | 0d → -40d |
| DAM3-05-012-4840 | Fabrication & Delivery | 2026-08-04 → 2026-09-08 A (+35d) | 2026-08-05 → 2026-09-21 (+47d) |  | 0d → -40d |
| 2 | **Manuals** | 2026-08-02 → 2026-09-06 (+35d) | 2026-08-05 → 2026-09-21 (+47d) |  |  |
| DAM3-05-012-4420 | Prepare & Submit | 2026-08-02 → 2026-09-06 A (+35d) | 2026-08-03 → 2026-09-19 (+47d) |  | 0d → -40d |
| DAM3-05-012-4710 | Review & Approve | 2026-08-04 → 2026-09-08 A (+35d) | 2026-08-05 → 2026-09-21 (+47d) |  | 0d → -40d |
| 3 | **Demobilization** | 2026-08-04 → 2026-09-08 (+35d) | 2026-08-05 → 2026-09-21 (+47d) |  |  |
| DAM3-05-012-4670 | Demobilize | 2026-08-04 → 2026-09-08 A (+35d) | 2026-08-05 → 2026-09-21 (+47d) |  | 0d → -40d |
| 5 | **Snaglist Rectification** | 2026-08-04 → 2026-09-08 (+35d) | 2026-08-05 → 2026-09-24 (+50d) |  |  |
| DAM3-05-012-4680 | Snaglist Rectification | 2026-08-04 → 2026-09-08 A (+35d) | 2026-08-05 → 2026-09-21 (+47d) |  | 0d → -40d |
| DAM3-05-012-4850 | Initial Handing Over | 2026-08-05 → 2026-09-10 A (+36d) | 2026-08-05 → 2026-09-24 (+50d) |  | 0d → -41.5d |

## Version 3 (data date 2026-10-06, saved 2026-10-13, file DAM3-05-012-Dammam 3rd Industrial City Gates and Fence -Update DD13-Oct-2026.xer)

Note of the change: Renumber project folders 01–23 in order (after removing projects 12 and 25)

Last finish 2026-10-11 → 2026-10-12 (+1d).

Changed:

| ID | Task | Finish | Complete | Total float |
| --- | --- | --- | --- | --- |
| 2 | **Fence Type 2** | 2026-09-16 → 2026-10-07 (+21d) |  |  |
| DAM3-05-012-2320 | Excavation for Fence Type 2 | 2026-09-16 → 2026-10-07 (+21d) |  | -39.5d → -55.5d |
| DAM3-05-012-3760 | install precast concrete curbstone | 2026-09-16 → 2026-10-07 (+21d) |  | -38.5d → -55.5d |
| DAM3-05-012-3800 | install interlocking pedstrian paving blocks | 2026-09-16 → 2026-10-07 (+21d) |  | -38.5d → -55.5d |
| DAM3-05-012-3710 | Backfilling for Roads | 2026-09-16 → 2026-10-07 (+21d) |  | -36d → -53d |
| DAM3-05-012-3810 | plant trees, plants, and ground covers including fixations, sweet soil | 2026-09-19 → 2026-10-07 (+18d) | 77% → 95% | -41.5d → -56.19d |
| 9 | **FINISHES** | 2026-10-03 → 2026-10-07 (+4d) |  |  |
| DAM3-05-012-4490 | install two coats of acrylic paint (suitable for exterior use) on external | 2026-09-20 → 2026-10-07 (+17d) |  | -41.5d → -56.19d |
| DAM3-05-012-4280 | install granite flooring | 2026-09-20 → 2026-10-07 (+17d) | 85% → 90% | -41.5d → -56.19d |
| DAM3-05-012-3720 | fix galvanized steel chain link fence wall including steel tube framing and posts, turn buckle, tension wir...etc | 2026-09-21 → 2026-10-08 (+17d) |  | -39.5d → -53.5d |
| DAM3-05-012-4130 | fix galvanized steel chain link gate | 2026-09-17 → 2026-10-07 (+20d) |  | -36.55d → -52.55d |
| DAM3-05-012-4620 | ELECTRICAL GATE BARRIER | 2026-09-20 → 2026-10-07 (+17d) |  | -41.5d → -56.19d |
| DAM3-05-012-4550 | LIGHTING FIXTURES - Final Fix | 2026-09-20 → 2026-10-07 (+17d) |  | -41.5d → -56.19d |
| DAM3-05-012-4820 | Intelligent Ionization / Photoelectric smoke and heat detector with base | 2026-09-20 → 2026-10-07 (+17d) |  | -41.5d → -56.19d |
| 6 | **Testing & Commissioning** | 2026-09-21 → 2026-10-11 (+20d) |  |  |
| DAM3-05-012-4400 | Testing & Commissioning - Electrical Systems | 2026-09-20 → 2026-10-08 (+18d) | 43% → 68% | -41.5d → -57d |
| DAM3-05-012-4720 | Testing & Commissioning - Mechanical Systems | 2026-09-21 → 2026-10-11 (+20d) | 40% → 60% | -40d → -55.5d |
| 5 | **Handing Over** | 2026-09-24 → 2026-10-12 (+18d) |  |  |
| 1 | **Engineering** | 2026-09-24 → 2026-10-12 (+18d) |  |  |
| 1 | **As-Built Drawings** | 2026-09-24 → 2026-10-12 (+18d) |  |  |
| DAM3-05-012-4220 | Prepare & Submit | 2026-09-21 → 2026-10-10 (+19d) |  | -41.5d → -57d |
| DAM3-05-012-4230 | Review & Approve | 2026-09-24 → 2026-10-12 (+18d) |  | -41.5d → -57d |
| 2 | **Operational Spares** | 2026-09-21 → 2026-10-11 (+20d) |  |  |
| DAM3-05-012-4240 | Prepare & Submit | 2026-09-20 → 2026-10-08 (+18d) |  | -40d → -56d |
| DAM3-05-012-4430 | Acceptance | 2026-09-21 → 2026-10-11 (+20d) |  | -40d → -56d |
| DAM3-05-012-4690 | Inspection | 2026-09-21 → 2026-10-11 (+20d) |  | -40d → -56d |
| 3 | **Warranties and Guarantees** | 2026-09-21 → 2026-10-11 (+20d) |  |  |
| DAM3-05-012-4250 | Review & Approve | 2026-09-20 → 2026-10-08 (+18d) |  | -40d → -56d |
| DAM3-05-012-4700 | Prepare & Submit | 2026-09-21 → 2026-10-11 (+20d) |  | -40d → -56d |
| 2 | **Training and Manuals** | 2026-09-21 → 2026-10-11 (+20d) |  |  |
| 1 | **Training** | 2026-09-21 → 2026-10-11 (+20d) |  |  |
| DAM3-05-012-4410 | Prepare & Submit | 2026-09-19 → 2026-10-08 (+19d) |  | -40d → -55.5d |
| DAM3-05-012-4830 | Review & Approve | 2026-09-21 → 2026-10-11 (+20d) |  | -40d → -55.5d |
| DAM3-05-012-4840 | Fabrication & Delivery | 2026-09-21 → 2026-10-11 (+20d) |  | -40d → -55.5d |
| 2 | **Manuals** | 2026-09-21 → 2026-10-11 (+20d) |  |  |
| DAM3-05-012-4420 | Prepare & Submit | 2026-09-19 → 2026-10-08 (+19d) |  | -40d → -55.5d |
| DAM3-05-012-4710 | Review & Approve | 2026-09-21 → 2026-10-11 (+20d) |  | -40d → -55.5d |
| 3 | **Demobilization** | 2026-09-21 → 2026-10-11 (+20d) |  |  |
| DAM3-05-012-4670 | Demobilize | 2026-09-21 → 2026-10-11 (+20d) |  | -40d → -55.5d |
| 5 | **Snaglist Rectification** | 2026-09-24 → 2026-10-12 (+18d) |  |  |
| DAM3-05-012-4680 | Snaglist Rectification | 2026-09-21 → 2026-10-11 (+20d) |  | -40d → -55.5d |
| DAM3-05-012-4850 | Initial Handing Over | 2026-09-24 → 2026-10-12 (+18d) |  | -41.5d → -57d |

## Version 4 (data date 2026-10-20, saved 2026-10-20, file DAM3-05-012-Dammam 3rd Industrial City Gates and Fence -Update DD20-Oct-2026.xer)

Note of the change: Renumber project folders 01–23 in order (after removing projects 12 and 25)

Last finish 2026-10-12 → 2026-10-26 (+14d). Complete tasks 362 → 370.

Changed:

| ID | Task | Finish | Complete | Total float |
| --- | --- | --- | --- | --- |
| 4 | **Construction** | 2026-10-11 → 2026-10-21 (+10d) |  |  |
| DAM3-05-012-2320 | Excavation for Fence Type 2 | 2026-10-07 A | 95% → 100% | -55.5d → none |
| DAM3-05-012-3760 | install precast concrete curbstone | 2026-10-07 A | 97% → 100% | -55.5d → none |
| DAM3-05-012-3800 | install interlocking pedstrian paving blocks | 2026-10-07 A | 95% → 100% | -55.5d → none |
| DAM3-05-012-3710 | Backfilling for Roads | 2026-10-07 A | 95% → 100% | -53d → none |
| DAM3-05-012-3810 | plant trees, plants, and ground covers including fixations, sweet soil | 2026-10-07 A | 95% → 100% | -56.19d → none |
| DAM3-05-012-4490 | install two coats of acrylic paint (suitable for exterior use) on external | 2026-10-07 A | 97% → 100% | -56.19d → none |
| DAM3-05-012-4280 | install granite flooring | 2026-10-07 A | 90% → 100% | -56.19d → none |
| 12 | **SPECIAL CONSTRUCTION- STRUCTURAL STEEL (Fence Type 2)** | 2026-10-08 → 2026-10-21 (+13d) |  |  |
| DAM3-05-012-3720 | fix galvanized steel chain link fence wall including steel tube framing and posts, turn buckle, tension wir...etc | 2026-10-08 A | 95% → 100% | -53.5d → none |
| DAM3-05-012-4130 | fix galvanized steel chain link gate | 2026-10-07 → 2026-10-21 (+14d) |  | -52.55d → -64.55d |
| 15 | **ELECTRICAL WORKS** | 2026-10-11 → 2026-10-21 (+10d) |  |  |
| 2 | **ELECTRICAL WORKS - Final Fix** | 2026-10-11 → 2026-10-21 (+10d) |  |  |
| DAM3-05-012-4620 | ELECTRICAL GATE BARRIER | 2026-10-07 → 2026-10-21 (+14d) |  | -56.19d → -67.8d |
| DAM3-05-012-4550 | LIGHTING FIXTURES - Final Fix | 2026-10-07 → 2026-10-21 (+14d) |  | -56.19d → -67.8d |
| DAM3-05-012-4820 | Intelligent Ionization / Photoelectric smoke and heat detector with base | 2026-10-07 → 2026-10-21 (+14d) |  | -56.19d → -67.8d |
| 6 | **Testing & Commissioning** | 2026-10-11 → 2026-10-25 (+14d) |  |  |
| DAM3-05-012-4400 | Testing & Commissioning - Electrical Systems | 2026-10-08 → 2026-10-22 (+14d) | 68% → 75% | -57d → -69d |
| DAM3-05-012-4720 | Testing & Commissioning - Mechanical Systems | 2026-10-11 → 2026-10-25 (+14d) | 60% → 65% | -55.5d → -67.5d |
| 5 | **Handing Over** | 2026-10-12 → 2026-10-26 (+14d) |  |  |
| 1 | **Engineering** | 2026-10-12 → 2026-10-26 (+14d) |  |  |
| 1 | **As-Built Drawings** | 2026-10-12 → 2026-10-26 (+14d) |  |  |
| DAM3-05-012-4220 | Prepare & Submit | 2026-10-10 → 2026-10-24 (+14d) |  | -57d → -69d |
| DAM3-05-012-4230 | Review & Approve | 2026-10-12 → 2026-10-26 (+14d) |  | -57d → -69d |
| 2 | **Operational Spares** | 2026-10-11 → 2026-10-25 (+14d) |  |  |
| DAM3-05-012-4240 | Prepare & Submit | 2026-10-08 → 2026-10-22 (+14d) |  | -56d → -68d |
| DAM3-05-012-4430 | Acceptance | 2026-10-11 → 2026-10-25 (+14d) |  | -56d → -68d |
| DAM3-05-012-4690 | Inspection | 2026-10-11 → 2026-10-25 (+14d) |  | -56d → -68d |
| 3 | **Warranties and Guarantees** | 2026-10-11 → 2026-10-25 (+14d) |  |  |
| DAM3-05-012-4250 | Review & Approve | 2026-10-08 → 2026-10-22 (+14d) |  | -56d → -68d |
| DAM3-05-012-4700 | Prepare & Submit | 2026-10-11 → 2026-10-25 (+14d) |  | -56d → -68d |
| 2 | **Training and Manuals** | 2026-10-11 → 2026-10-25 (+14d) |  |  |
| 1 | **Training** | 2026-10-11 → 2026-10-25 (+14d) |  |  |
| DAM3-05-012-4410 | Prepare & Submit | 2026-10-08 → 2026-10-22 (+14d) |  | -55.5d → -67.5d |
| DAM3-05-012-4830 | Review & Approve | 2026-10-11 → 2026-10-25 (+14d) |  | -55.5d → -67.5d |
| DAM3-05-012-4840 | Fabrication & Delivery | 2026-10-11 → 2026-10-25 (+14d) |  | -55.5d → -67.5d |
| 2 | **Manuals** | 2026-10-11 → 2026-10-25 (+14d) |  |  |
| DAM3-05-012-4420 | Prepare & Submit | 2026-10-08 → 2026-10-22 (+14d) |  | -55.5d → -67.5d |
| DAM3-05-012-4710 | Review & Approve | 2026-10-11 → 2026-10-25 (+14d) |  | -55.5d → -67.5d |
| 3 | **Demobilization** | 2026-10-11 → 2026-10-25 (+14d) |  |  |
| DAM3-05-012-4670 | Demobilize | 2026-10-11 → 2026-10-25 (+14d) |  | -55.5d → -67.5d |
| 5 | **Snaglist Rectification** | 2026-10-12 → 2026-10-26 (+14d) |  |  |
| DAM3-05-012-4680 | Snaglist Rectification | 2026-10-11 → 2026-10-25 (+14d) |  | -55.5d → -67.5d |
| DAM3-05-012-4850 | Initial Handing Over | 2026-10-12 → 2026-10-26 (+14d) |  | -57d → -69d |

## Version 5 (data date 2026-10-27, saved 2026-11-03, file DAM3-05-012-Dammam 3rd Industrial City Gates and Fence -Update DD03-11-2026.xer)

Note of the change: Renumber project folders 01–23 in order (after removing projects 12 and 25)

Last finish 2026-10-26 → 2026-11-02 (+7d).

Changed:

| ID | Task | Finish | Complete | Total float |
| --- | --- | --- | --- | --- |
| 4 | **Construction** | 2026-10-21 → 2026-10-28 (+7d) |  |  |
| 12 | **SPECIAL CONSTRUCTION- STRUCTURAL STEEL (Fence Type 2)** | 2026-10-21 → 2026-10-28 (+7d) |  |  |
| DAM3-05-012-4130 | fix galvanized steel chain link gate | 2026-10-21 → 2026-10-28 (+7d) |  | -64.55d → -70.55d |
| 15 | **ELECTRICAL WORKS** | 2026-10-21 → 2026-10-28 (+7d) |  |  |
| 2 | **ELECTRICAL WORKS - Final Fix** | 2026-10-21 → 2026-10-28 (+7d) |  |  |
| DAM3-05-012-4620 | ELECTRICAL GATE BARRIER | 2026-10-21 → 2026-10-28 (+7d) |  | -67.8d → -73.65d |
| DAM3-05-012-4550 | LIGHTING FIXTURES - Final Fix | 2026-10-21 → 2026-10-28 (+7d) | 90% → 95% | -67.8d → -73.65d |
| DAM3-05-012-4820 | Intelligent Ionization / Photoelectric smoke and heat detector with base | 2026-10-21 → 2026-10-28 (+7d) | 85% → 95% | -67.8d → -73.65d |
| 6 | **Testing & Commissioning** | 2026-10-25 → 2026-11-01 (+7d) |  |  |
| DAM3-05-012-4400 | Testing & Commissioning - Electrical Systems | 2026-10-22 → 2026-10-29 (+7d) | 75% → 88% | -69d → -75d |
| DAM3-05-012-4720 | Testing & Commissioning - Mechanical Systems | 2026-10-25 → 2026-11-01 (+7d) | 65% → 88% | -67.5d → -73.5d |
| 5 | **Handing Over** | 2026-10-26 → 2026-11-02 (+7d) |  |  |
| 1 | **Engineering** | 2026-10-26 → 2026-11-02 (+7d) |  |  |
| 1 | **As-Built Drawings** | 2026-10-26 → 2026-11-02 (+7d) |  |  |
| DAM3-05-012-4220 | Prepare & Submit | 2026-10-24 → 2026-10-31 (+7d) | 0% → 85% | -69d → -75d |
| DAM3-05-012-4230 | Review & Approve | 2026-10-26 → 2026-11-02 (+7d) | 0% → 85% | -69d → -75d |
| 2 | **Operational Spares** | 2026-10-25 → 2026-11-01 (+7d) |  |  |
| DAM3-05-012-4240 | Prepare & Submit | 2026-10-22 → 2026-10-29 (+7d) | 0% → 85% | -68d → -74d |
| DAM3-05-012-4430 | Acceptance | 2026-10-25 → 2026-11-01 (+7d) | 0% → 85% | -68d → -74d |
| DAM3-05-012-4690 | Inspection | 2026-10-25 → 2026-11-01 (+7d) | 0% → 35% | -68d → -74d |
| 3 | **Warranties and Guarantees** | 2026-10-25 → 2026-11-01 (+7d) |  |  |
| DAM3-05-012-4250 | Review & Approve | 2026-10-22 → 2026-10-29 (+7d) | 0% → 35% | -68d → -74d |
| DAM3-05-012-4700 | Prepare & Submit | 2026-10-25 → 2026-11-01 (+7d) | 0% → 35% | -68d → -74d |
| 2 | **Training and Manuals** | 2026-10-25 → 2026-11-01 (+7d) |  |  |
| 1 | **Training** | 2026-10-25 → 2026-11-01 (+7d) |  |  |
| DAM3-05-012-4410 | Prepare & Submit | 2026-10-22 → 2026-10-29 (+7d) | 0% → 24% | -67.5d → -73.5d |
| DAM3-05-012-4830 | Review & Approve | 2026-10-25 → 2026-11-01 (+7d) | 0% → 20% | -67.5d → -73.5d |
| DAM3-05-012-4840 | Fabrication & Delivery | 2026-10-25 → 2026-11-01 (+7d) | 0% → 20% | -67.5d → -73.5d |
| 2 | **Manuals** | 2026-10-25 → 2026-11-01 (+7d) |  |  |
| DAM3-05-012-4420 | Prepare & Submit | 2026-10-22 → 2026-10-29 (+7d) | 0% → 20% | -67.5d → -73.5d |
| DAM3-05-012-4710 | Review & Approve | 2026-10-25 → 2026-11-01 (+7d) | 0% → 20% | -67.5d → -73.5d |
| 3 | **Demobilization** | 2026-10-25 → 2026-11-01 (+7d) |  |  |
| DAM3-05-012-4670 | Demobilize | 2026-10-25 → 2026-11-01 (+7d) |  | -67.5d → -73.5d |
| 5 | **Snaglist Rectification** | 2026-10-26 → 2026-11-02 (+7d) |  |  |
| DAM3-05-012-4680 | Snaglist Rectification | 2026-10-25 → 2026-11-01 (+7d) |  | -67.5d → -73.5d |
| DAM3-05-012-4850 | Initial Handing Over | 2026-10-26 → 2026-11-02 (+7d) |  | -69d → -75d |

## Version 6 (data date 2026-11-10, saved 2026-11-10, file DAM3-05-012-Dammam 3rd Industrial City Gates and Fence -Update DD10-11-2026.xer)

Note of the change: Renumber project folders 01–23 in order (after removing projects 12 and 25)

Last finish 2026-11-02 → 2026-11-16 (+14d).

Changed:

| ID | Task | Finish | Complete | Total float |
| --- | --- | --- | --- | --- |
| 4 | **Construction** | 2026-10-28 → 2026-11-11 (+14d) |  |  |
| 12 | **SPECIAL CONSTRUCTION- STRUCTURAL STEEL (Fence Type 2)** | 2026-10-28 → 2026-11-11 (+14d) |  |  |
| DAM3-05-012-4130 | fix galvanized steel chain link gate | 2026-10-28 → 2026-11-11 (+14d) |  | -70.55d → -82.55d |
| 15 | **ELECTRICAL WORKS** | 2026-10-28 → 2026-11-11 (+14d) |  |  |
| 2 | **ELECTRICAL WORKS - Final Fix** | 2026-10-28 → 2026-11-11 (+14d) |  |  |
| DAM3-05-012-4620 | ELECTRICAL GATE BARRIER | 2026-10-28 → 2026-11-11 (+14d) |  | -73.65d → -85.65d |
| DAM3-05-012-4550 | LIGHTING FIXTURES - Final Fix | 2026-10-28 → 2026-11-11 (+14d) |  | -73.65d → -85.65d |
| DAM3-05-012-4820 | Intelligent Ionization / Photoelectric smoke and heat detector with base | 2026-10-28 → 2026-11-11 (+14d) |  | -73.65d → -85.65d |
| 6 | **Testing & Commissioning** | 2026-11-01 → 2026-11-15 (+14d) |  |  |
| DAM3-05-012-4400 | Testing & Commissioning - Electrical Systems | 2026-10-29 → 2026-11-12 (+14d) |  | -75d → -87d |
| DAM3-05-012-4720 | Testing & Commissioning - Mechanical Systems | 2026-11-01 → 2026-11-15 (+14d) |  | -73.5d → -85.5d |
| 5 | **Handing Over** | 2026-11-02 → 2026-11-16 (+14d) |  |  |
| 1 | **Engineering** | 2026-11-02 → 2026-11-16 (+14d) |  |  |
| 1 | **As-Built Drawings** | 2026-11-02 → 2026-11-16 (+14d) |  |  |
| DAM3-05-012-4220 | Prepare & Submit | 2026-10-31 → 2026-11-14 (+14d) | 85% → 88% | -75d → -87d |
| DAM3-05-012-4230 | Review & Approve | 2026-11-02 → 2026-11-16 (+14d) | 85% → 88% | -75d → -87d |
| 2 | **Operational Spares** | 2026-11-01 → 2026-11-15 (+14d) |  |  |
| DAM3-05-012-4240 | Prepare & Submit | 2026-10-29 → 2026-11-12 (+14d) | 85% → 88% | -74d → -86d |
| DAM3-05-012-4430 | Acceptance | 2026-11-01 → 2026-11-15 (+14d) | 85% → 88% | -74d → -86d |
| DAM3-05-012-4690 | Inspection | 2026-11-01 → 2026-11-15 (+14d) | 35% → 88% | -74d → -86d |
| 3 | **Warranties and Guarantees** | 2026-11-01 → 2026-11-15 (+14d) |  |  |
| DAM3-05-012-4250 | Review & Approve | 2026-10-29 → 2026-11-12 (+14d) | 35% → 88% | -74d → -86d |
| DAM3-05-012-4700 | Prepare & Submit | 2026-11-01 → 2026-11-15 (+14d) | 35% → 88% | -74d → -86d |
| 2 | **Training and Manuals** | 2026-11-01 → 2026-11-15 (+14d) |  |  |
| 1 | **Training** | 2026-11-01 → 2026-11-15 (+14d) |  |  |
| DAM3-05-012-4410 | Prepare & Submit | 2026-10-29 → 2026-11-12 (+14d) | 24% → 88% | -73.5d → -85.5d |
| DAM3-05-012-4830 | Review & Approve | 2026-11-01 → 2026-11-15 (+14d) | 20% → 88% | -73.5d → -85.5d |
| DAM3-05-012-4840 | Fabrication & Delivery | 2026-11-01 → 2026-11-15 (+14d) | 20% → 52% | -73.5d → -85.5d |
| 2 | **Manuals** | 2026-11-01 → 2026-11-15 (+14d) |  |  |
| DAM3-05-012-4420 | Prepare & Submit | 2026-10-29 → 2026-11-12 (+14d) |  | -73.5d → -85.5d |
| DAM3-05-012-4710 | Review & Approve | 2026-11-01 → 2026-11-15 (+14d) |  | -73.5d → -85.5d |
| 3 | **Demobilization** | 2026-11-01 → 2026-11-15 (+14d) |  |  |
| DAM3-05-012-4670 | Demobilize | 2026-11-01 → 2026-11-15 (+14d) |  | -73.5d → -85.5d |
| 5 | **Snaglist Rectification** | 2026-11-02 → 2026-11-16 (+14d) |  |  |
| DAM3-05-012-4680 | Snaglist Rectification | 2026-11-01 → 2026-11-15 (+14d) |  | -73.5d → -85.5d |
| DAM3-05-012-4850 | Initial Handing Over | 2026-11-02 → 2026-11-16 (+14d) |  | -75d → -87d |
