# MLTX-02-005_WPR30-23-11-26

How a schedule from Primavera P6 changed from version to version. A marks actual dates.

## Version 13 (data date 2026-11-23, saved 2026-11-24, file MLTX-02-005_WPR30-23-11-26.xer)

| ID | WBS | Task | Duration | Start | Finish | Predecessors | Complete | Total float |
| --- | --- | --- | --- | --- | --- | --- | --- | --- |
|  | KEY | **KEY MILESTONES** |  | 2026-03-03 | 2027-03-29 |  |  |  |
|  | GEN | **GENERAL MILESTONES** |  | 2026-03-03 | 2027-03-29 |  |  |  |
| MLTX-02-005-MS-1010 |  | Project Commencement Date | 0d | 2026-03-03 A | 2026-03-03 A |  | 100% |  |
| MLTX-02-005-MS-1030 |  | Project Completion | 0d | 2027-03-29 | 2027-03-29 | MLTX-02-005-MS-1160, MLTX-02-005-MS-1140, MLTX-02-005-MS-1150, MLTX-02-005-CN-13470, MLTX-02-005-CN-10670, MLTX-02-005-CN-13910, MLTX-02-005-MS-1170, MLTX-02-005-MS-1180, MLTX-02-005-MS-1130, MLTX-02-005-CN-10620, MLTX-02-005-CN-13671, MLTX-02-005-CO-12110, MLTX-02-005-MS-1070, MLTX-02-005-CN-12040, MLTX-02-005-TC-11930 |  | -69.1d |
|  | OVER ALL | **CONTRACTUAL MILESTONE** |  | 2026-04-02 | 2027-03-27 |  |  |  |
| MLTX-02-005-MS-1050 |  | Completion of Mobilization | 0d | 2026-04-02 A | 2026-04-02 A | MLTX-02-005-MB-1750, MLTX-02-005-MB-1440, MLTX-02-005-MB-1720, MLTX-02-005-MB-2200, MLTX-02-005-MB-1770, MLTX-02-005-MB-1420, MLTX-02-005-MB-1970, MLTX-02-005-MB-1940, MLTX-02-005-MB-2180, MLTX-02-005-MB-1710, MLTX-02-005-MB-1960, MLTX-02-005-MB-1380, MLTX-02-005-MB-2080, MLTX-02-005-MB-1430, MLTX-02-005-MB-1950, MLTX-02-005-MB-2050, MLTX-02-005-MB-2190, MLTX-02-005-MB-1690, MLTX-02-005-MB-1990, MLTX-02-005-MB-1730, MLTX-02-005-MB-1980, MLTX-02-005-MB-1740, MLTX-02-005-MB-2010, MLTX-02-005-MB-1840, MLTX-02-005-MB-2090, MLTX-02-005-MB-1810, MLTX-02-005-MB-1930, MLTX-02-005-MB-1700, MLTX-02-005-MB-1410, MLTX-02-005-MB-1850, MLTX-02-005-MB-2210, MLTX-02-005-MB-2170, MLTX-02-005-MB-1340, MLTX-02-005-MB-1320, MLTX-02-005-MB-1680, MLTX-02-005-MB-1860, MLTX-02-005-MB-1920, MLTX-02-005-MB-2100, MLTX-02-005-MB-2160 | 100% |  |
| MLTX-02-005-MS-1060 |  | Baseline Programme Approval | 0d | 2026-04-04 A | 2026-04-04 A | MLTX-02-005-MB-1920, MLTX-02-005-MB-2160, MLTX-02-005-MB-1680 | 100% |  |
| MLTX-02-005-MS-1120 |  | Completion of Levelling Works | 0d | 2026-05-02 A | 2026-05-02 A | MLTX-02-005-CN-9930, MLTX-02-005-CN-13310, MLTX-02-005-CN-11880, MLTX-02-005-CN-11910, MLTX-02-005-CN-11920, MLTX-02-005-CN-11930, MLTX-02-005-CN-13340, MLTX-02-005-CN-13350, MLTX-02-005-CN-13360, MLTX-02-005-CN-9960, MLTX-02-005-CN-9970, MLTX-02-005-CN-9980 | 100% |  |
| MLTX-02-005-MS-1100 |  | Completion of Engineering | 0d | 2027-01-20 | 2027-01-20 | MLTX-02-005-EN-16340, MLTX-02-005-EN-16310, MLTX-02-005-EN-1840, MLTX-02-005-EN-10120, MLTX-02-005-EN-10990, MLTX-02-005-EN-11000, MLTX-02-005-EN-11010, MLTX-02-005-EN-11020, MLTX-02-005-EN-11030, MLTX-02-005-EN-11040, MLTX-02-005-EN-11050, MLTX-02-005-EN-11060, MLTX-02-005-EN-11070, MLTX-02-005-EN-11080, MLTX-02-005-EN-11090, MLTX-02-005-EN-11100, MLTX-02-005-EN-11110, MLTX-02-005-EN-11120, MLTX-02-005-EN-11130, MLTX-02-005-EN-11140, MLTX-02-005-EN-11150, MLTX-02-005-EN-11160, MLTX-02-005-EN-11170, MLTX-02-005-EN-11180, MLTX-02-005-EN-11190, MLTX-02-005-EN-11200, MLTX-02-005-EN-11210, MLTX-02-005-EN-11220, MLTX-02-005-EN-11240, MLTX-02-005-EN-11250, MLTX-02-005-EN-11320, MLTX-02-005-EN-11330, MLTX-02-005-EN-11340, MLTX-02-005-EN-11350, MLTX-02-005-EN-11360, MLTX-02-005-EN-11370, MLTX-02-005-EN-11380, MLTX-02-005-EN-11390, MLTX-02-005-EN-11400, MLTX-02-005-EN-11410, MLTX-02-005-EN-11420, MLTX-02-005-EN-11430, MLTX-02-005-EN-11440, MLTX-02-005-EN-11450, MLTX-02-005-EN-11460, MLTX-02-005-EN-11470, MLTX-02-005-EN-11480, MLTX-02-005-EN-11490, MLTX-02-005-EN-11500, MLTX-02-005-EN-11510, MLTX-02-005-EN-11520, MLTX-02-005-EN-11530, MLTX-02-005-EN-11540, MLTX-02-005-EN-11550, MLTX-02-005-EN-11580, MLTX-02-005-EN-11590, MLTX-02-005-EN-11620, MLTX-02-005-EN-11630, MLTX-02-005-EN-11640, MLTX-02-005-EN-11650, MLTX-02-005-EN-11660, MLTX-02-005-EN-11670, MLTX-02-005-EN-11680, MLTX-02-005-EN-11690, MLTX-02-005-EN-11700, MLTX-02-005-EN-11710, MLTX-02-005-EN-11720, MLTX-02-005-EN-11730, MLTX-02-005-EN-11740, MLTX-02-005-EN-11750, MLTX-02-005-EN-11760, MLTX-02-005-EN-11770, MLTX-02-005-EN-11780, MLTX-02-005-EN-11790, MLTX-02-005-EN-11800, MLTX-02-005-EN-11810, MLTX-02-005-EN-11820, MLTX-02-005-EN-11830, MLTX-02-005-EN-11840, MLTX-02-005-EN-11850, MLTX-02-005-EN-11860, MLTX-02-005-EN-11870, MLTX-02-005-EN-11880, MLTX-02-005-EN-11890, MLTX-02-005-EN-11910, MLTX-02-005-EN-11930, MLTX-02-005-EN-11950, MLTX-02-005-EN-11970, MLTX-02-005-EN-11980, MLTX-02-005-EN-11990, MLTX-02-005-EN-12000, MLTX-02-005-EN-12020, MLTX-02-005-EN-12030, MLTX-02-005-EN-12040, MLTX-02-005-EN-12050, MLTX-02-005-EN-12060, MLTX-02-005-EN-12070, MLTX-02-005-EN-12080, MLTX-02-005-EN-12090, MLTX-02-005-EN-12990, MLTX-02-005-EN-13250, MLTX-02-005-EN-13280, MLTX-02-005-EN-13300, MLTX-02-005-EN-13320, MLTX-02-005-EN-13360, MLTX-02-005-EN-13370, MLTX-02-005-EN-13380, MLTX-02-005-EN-13390, MLTX-02-005-EN-13410, MLTX-02-005-EN-13430, MLTX-02-005-EN-13450, MLTX-02-005-EN-13470, MLTX-02-005-EN-13490, MLTX-02-005-EN-13510, MLTX-02-005-EN-13530, MLTX-02-005-EN-13550, MLTX-02-005-EN-13570, MLTX-02-005-EN-13590, MLTX-02-005-EN-13610, MLTX-02-005-EN-13630, MLTX-02-005-EN-13650, MLTX-02-005-EN-13680, MLTX-02-005-EN-13700, MLTX-02-005-EN-13720, MLTX-02-005-EN-13740, MLTX-02-005-EN-13760, MLTX-02-005-EN-13780, MLTX-02-005-EN-13800, MLTX-02-005-EN-13820, MLTX-02-005-EN-13840, MLTX-02-005-EN-13900, MLTX-02-005-EN-13920, MLTX-02-005-EN-13940, MLTX-02-005-EN-13960, MLTX-02-005-EN-13980, MLTX-02-005-EN-14000, MLTX-02-005-EN-14020, MLTX-02-005-EN-14080, MLTX-02-005-EN-14100, MLTX-02-005-EN-14120, MLTX-02-005-EN-14140, MLTX-02-005-EN-14150, MLTX-02-005-EN-14160, MLTX-02-005-EN-14170, MLTX-02-005-EN-14180, MLTX-02-005-EN-14190, MLTX-02-005-EN-14200, MLTX-02-005-EN-14210, MLTX-02-005-EN-14220, MLTX-02-005-EN-14230, MLTX-02-005-EN-14390, MLTX-02-005-EN-15260, MLTX-02-005-EN-15270, MLTX-02-005-EN-15280, MLTX-02-005-EN-15290, MLTX-02-005-EN-15300, MLTX-02-005-EN-15310, MLTX-02-005-EN-15320, MLTX-02-005-EN-15330, MLTX-02-005-EN-15340, MLTX-02-005-EN-15350, MLTX-02-005-EN-15360, MLTX-02-005-EN-15370, MLTX-02-005-EN-15380, MLTX-02-005-EN-15390, MLTX-02-005-EN-15400, MLTX-02-005-EN-15410, MLTX-02-005-EN-15420, MLTX-02-005-EN-15430, MLTX-02-005-EN-15440, MLTX-02-005-EN-15450, MLTX-02-005-EN-15460, MLTX-02-005-EN-15470, MLTX-02-005-EN-15480, MLTX-02-005-EN-15490, MLTX-02-005-EN-15500, MLTX-02-005-EN-15510, MLTX-02-005-EN-15520, MLTX-02-005-EN-15590, MLTX-02-005-EN-15600, MLTX-02-005-EN-15610, MLTX-02-005-EN-15620, MLTX-02-005-EN-15630, MLTX-02-005-EN-15640, MLTX-02-005-EN-15650, MLTX-02-005-EN-15660, MLTX-02-005-EN-15670, MLTX-02-005-EN-15680, MLTX-02-005-EN-15690, MLTX-02-005-EN-15700, MLTX-02-005-EN-15710, MLTX-02-005-EN-15720, MLTX-02-005-EN-15730, MLTX-02-005-EN-15740, MLTX-02-005-EN-15750, MLTX-02-005-EN-15760, MLTX-02-005-EN-15770, MLTX-02-005-EN-15780, MLTX-02-005-EN-15790, MLTX-02-005-EN-15800, MLTX-02-005-EN-15810, MLTX-02-005-EN-15820, MLTX-02-005-EN-15830, MLTX-02-005-EN-15840, MLTX-02-005-EN-15850, MLTX-02-005-EN-15860, MLTX-02-005-EN-15870, MLTX-02-005-EN-15880, MLTX-02-005-EN-15890, MLTX-02-005-EN-15900, MLTX-02-005-EN-15910, MLTX-02-005-EN-15920, MLTX-02-005-EN-15930, MLTX-02-005-EN-15940, MLTX-02-005-EN-15950, MLTX-02-005-EN-15960, MLTX-02-005-EN-15970, MLTX-02-005-EN-15980, MLTX-02-005-EN-15990, MLTX-02-005-EN-16000, MLTX-02-005-EN-16010, MLTX-02-005-EN-16020, MLTX-02-005-EN-16030, MLTX-02-005-EN-16040, MLTX-02-005-EN-16050, MLTX-02-005-EN-16060, MLTX-02-005-EN-16070, MLTX-02-005-EN-16080, MLTX-02-005-EN-16090, MLTX-02-005-EN-16100, MLTX-02-005-EN-16110, MLTX-02-005-EN-16120, MLTX-02-005-EN-16130, MLTX-02-005-EN-16140, MLTX-02-005-EN-16150, MLTX-02-005-EN-16170, MLTX-02-005-EN-16180, MLTX-02-005-EN-16190, MLTX-02-005-EN-16200, MLTX-02-005-EN-16210, MLTX-02-005-EN-16220, MLTX-02-005-EN-16240, MLTX-02-005-EN-16260, MLTX-02-005-EN-16320, MLTX-02-005-EN-16330, MLTX-02-005-EN-16350, MLTX-02-005-EN-16360, MLTX-02-005-EN-2950, MLTX-02-005-EN-2980, MLTX-02-005-EN-2990, MLTX-02-005-EN-3000, MLTX-02-005-EN-3010, MLTX-02-005-EN-3020, MLTX-02-005-EN-3030, MLTX-02-005-EN-3040, MLTX-02-005-EN-3060, MLTX-02-005-EN-3070, MLTX-02-005-EN-3080, MLTX-02-005-EN-3100, MLTX-02-005-EN-3110, MLTX-02-005-EN-3120, MLTX-02-005-EN-3130, MLTX-02-005-EN-3140, MLTX-02-005-EN-3150, MLTX-02-005-EN-3160, MLTX-02-005-EN-3170, MLTX-02-005-EN-3180, MLTX-02-005-EN-3190, MLTX-02-005-EN-3210, MLTX-02-005-EN-3220, MLTX-02-005-EN-3230, MLTX-02-005-EN-3240, MLTX-02-005-EN-3250, MLTX-02-005-EN-3260, MLTX-02-005-EN-3270, MLTX-02-005-EN-3280, MLTX-02-005-EN-3290, MLTX-02-005-EN-3300, MLTX-02-005-EN-3310, MLTX-02-005-EN-3320, MLTX-02-005-EN-3330, MLTX-02-005-EN-3340, MLTX-02-005-EN-3370, MLTX-02-005-EN-3380, MLTX-02-005-EN-3400, MLTX-02-005-EN-3460, MLTX-02-005-EN-3500, MLTX-02-005-EN-3520, MLTX-02-005-EN-3530, MLTX-02-005-EN-3550, MLTX-02-005-EN-3610, MLTX-02-005-EN-3630, MLTX-02-005-EN-3700, MLTX-02-005-EN-3770, MLTX-02-005-EN-3780, MLTX-02-005-EN-3810, MLTX-02-005-EN-3820, MLTX-02-005-EN-3830, MLTX-02-005-EN-3840, MLTX-02-005-EN-3880, MLTX-02-005-EN-3920, MLTX-02-005-EN-3950, MLTX-02-005-EN-3960, MLTX-02-005-EN-3970, MLTX-02-005-EN-3980, MLTX-02-005-EN-4370, MLTX-02-005-EN-4380, MLTX-02-005-EN-4400, MLTX-02-005-EN-4410, MLTX-02-005-EN-4420, MLTX-02-005-EN-4430, MLTX-02-005-EN-4440, MLTX-02-005-EN-4450, MLTX-02-005-EN-4460, MLTX-02-005-EN-4470, MLTX-02-005-EN-4490, MLTX-02-005-EN-4510, MLTX-02-005-EN-4520, MLTX-02-005-EN-4540, MLTX-02-005-EN-4550, MLTX-02-005-EN-4560, MLTX-02-005-EN-4570, MLTX-02-005-EN-4580, MLTX-02-005-EN-4600, MLTX-02-005-EN-4620, MLTX-02-005-EN-4630, MLTX-02-005-EN-4640, MLTX-02-005-EN-4650, MLTX-02-005-EN-4660, MLTX-02-005-EN-4670, MLTX-02-005-EN-4820, MLTX-02-005-EN-6300, MLTX-02-005-EN-6330, MLTX-02-005-EN-6360, MLTX-02-005-EN-6420, MLTX-02-005-EN-6450, MLTX-02-005-EN-6480, MLTX-02-005-EN-6510, MLTX-02-005-EN-6540, MLTX-02-005-EN-6570, MLTX-02-005-EN-6600, MLTX-02-005-EN-6630, MLTX-02-005-EN-6660, MLTX-02-005-EN-6690, MLTX-02-005-EN-6720, MLTX-02-005-EN-6750, MLTX-02-005-EN-6780, MLTX-02-005-EN-6810, MLTX-02-005-EN-6840, MLTX-02-005-EN-6880, MLTX-02-005-EN-6910, MLTX-02-005-EN-6940, MLTX-02-005-EN-6970, MLTX-02-005-EN-7000, MLTX-02-005-EN-7030, MLTX-02-005-EN-7060, MLTX-02-005-EN-7090, MLTX-02-005-EN-7120, MLTX-02-005-EN-7150, MLTX-02-005-EN-7180, MLTX-02-005-EN-7210, MLTX-02-005-EN-7240, MLTX-02-005-EN-7270, MLTX-02-005-EN-7300, MLTX-02-005-EN-7330, MLTX-02-005-EN-7360, MLTX-02-005-EN-7390, MLTX-02-005-EN-7420, MLTX-02-005-EN-7450, MLTX-02-005-EN-7480, MLTX-02-005-EN-7510, MLTX-02-005-EN-7550, MLTX-02-005-EN-7580, MLTX-02-005-EN-7610, MLTX-02-005-EN-7640, MLTX-02-005-EN-7670, MLTX-02-005-EN-7700, MLTX-02-005-EN-7730, MLTX-02-005-EN-7760, MLTX-02-005-EN-7790, MLTX-02-005-EN-7820, MLTX-02-005-EN-8720, MLTX-02-005-EN-8730, MLTX-02-005-EN-8980, MLTX-02-005-EN-9010, MLTX-02-005-EN-9030, MLTX-02-005-EN-9050, MLTX-02-005-EN-9090, MLTX-02-005-EN-9100, MLTX-02-005-EN-9110, MLTX-02-005-EN-9120, MLTX-02-005-EN-9140, MLTX-02-005-EN-9160, MLTX-02-005-EN-9180, MLTX-02-005-EN-9200, MLTX-02-005-EN-9220, MLTX-02-005-EN-9240, MLTX-02-005-EN-9260, MLTX-02-005-EN-9280, MLTX-02-005-EN-9300, MLTX-02-005-EN-9320, MLTX-02-005-EN-9340, MLTX-02-005-EN-9360, MLTX-02-005-EN-9380, MLTX-02-005-EN-9410, MLTX-02-005-EN-9430, MLTX-02-005-EN-9450, MLTX-02-005-EN-9470, MLTX-02-005-EN-9490, MLTX-02-005-EN-9510, MLTX-02-005-EN-9530, MLTX-02-005-EN-9550, MLTX-02-005-EN-9570, MLTX-02-005-EN-9630, MLTX-02-005-EN-9650, MLTX-02-005-EN-9670, MLTX-02-005-EN-9690, MLTX-02-005-EN-9710, MLTX-02-005-EN-9730, MLTX-02-005-EN-9750, MLTX-02-005-EN-9810, MLTX-02-005-EN-9830, MLTX-02-005-EN-9850, MLTX-02-005-EN-9870, MLTX-02-005-EN-9880, MLTX-02-005-EN-9890, MLTX-02-005-EN-9900, MLTX-02-005-EN-9910, MLTX-02-005-EN-9920, MLTX-02-005-EN-9930, MLTX-02-005-EN-9940, MLTX-02-005-EN-9950, MLTX-02-005-EN-9960, MLTX-02-005-EN-12010, MLTX-02-005-EN-13000, MLTX-02-005-EN-13110, MLTX-02-005-EN-16230, MLTX-02-005-EN-2400, MLTX-02-005-EN-3510, MLTX-02-005-EN-8700, MLTX-02-005-EN-8880 |  | -19.1d |
| MLTX-02-005-MS-1130 |  | Completion of Toilet Building | 0d | 2027-03-09 | 2027-03-09 | MLTX-02-005-CN-12990, MLTX-02-005-CN-13040, MLTX-02-005-CN-12670, MLTX-02-005-CN-11220, MLTX-02-005-CN-12890, MLTX-02-005-CN-14420, MLTX-02-005-CN-14270, MLTX-02-005-CN-14100, MLTX-02-005-CN-11170, MLTX-02-005-CN-11130, MLTX-02-005-CN-14250, MLTX-02-005-MS-1100, MLTX-02-005-CN-12710, MLTX-02-005-CN-11780, MLTX-02-005-CN-14470, MLTX-02-005-CN-11400, MLTX-02-005-CN-14490, MLTX-02-005-CN-13060, MLTX-02-005-CN-14140, MLTX-02-005-CN-11120, MLTX-02-005-CN-11380, MLTX-02-005-CN-11550, MLTX-02-005-CN-11620, MLTX-02-005-CN-11740, MLTX-02-005-CN-11750, MLTX-02-005-CN-11760, MLTX-02-005-CN-11770, MLTX-02-005-CN-11790, MLTX-02-005-CN-11820, MLTX-02-005-CN-11830, MLTX-02-005-CN-11870, MLTX-02-005-CN-12770, MLTX-02-005-CN-12810, MLTX-02-005-CN-12820, MLTX-02-005-CN-12840, MLTX-02-005-CN-12870, MLTX-02-005-CN-12910, MLTX-02-005-CN-12950, MLTX-02-005-CN-12960, MLTX-02-005-CN-12970, MLTX-02-005-CN-12980, MLTX-02-005-CN-13160, MLTX-02-005-CN-13270, MLTX-02-005-CN-14200, MLTX-02-005-CN-14240, MLTX-02-005-CN-14300, MLTX-02-005-CN-14320, MLTX-02-005-CN-14340, MLTX-02-005-CN-14380, MLTX-02-005-CN-14390, MLTX-02-005-CN-14400, MLTX-02-005-CN-14410, MLTX-02-005-CN-14590, MLTX-02-005-CN-14700, MLTX-02-005-MS-1140, MLTX-02-005-CN-14430, MLTX-02-005-CN-14090, MLTX-02-005-CN-14210, MLTX-02-005-CN-11500, MLTX-02-005-CN-14740, MLTX-02-005-CN-12190, MLTX-02-005-CN-13030, MLTX-02-005-PR-10220, MLTX-02-005-EN-11080, MLTX-02-005-CN-13120, MLTX-02-005-CN-13140, MLTX-02-005-CN-14120, MLTX-02-005-CN-14480, MLTX-02-005-EN-15350, MLTX-02-005-CN-14460, MLTX-02-005-PR-11520, MLTX-02-005-PR-11500, MLTX-02-005-PR-11480, MLTX-02-005-EN-15470, MLTX-02-005-CN-14180, MLTX-02-005-CN-14570 |  | -56.1d |
| MLTX-02-005-MS-1140 |  | Completion of Playground Area | 0d | 2027-03-09 | 2027-03-09 | MLTX-02-005-CN-12220, MLTX-02-005-CN-12170, MLTX-02-005-CN-13390, MLTX-02-005-CN-11960, MLTX-02-005-CN-12210, MLTX-02-005-CN-10220, MLTX-02-005-CN-13600, MLTX-02-005-MS-1100, MLTX-02-005-CN-10140, MLTX-02-005-CN-13640, MLTX-02-005-CN-12270, MLTX-02-005-CN-13671, MLTX-02-005-CN-13700, MLTX-02-005-CN-13650, MLTX-02-005-PR-10050, MLTX-02-005-CN-12120 |  | -56.1d |
| MLTX-02-005-MS-1170 |  | Completion of Hasa Oasis Works | 0d | 2027-03-09 | 2027-03-09 | MLTX-02-005-CN-12220, MLTX-02-005-CN-12270, MLTX-02-005-CN-12340, MLTX-02-005-CN-12210, MLTX-02-005-CN-11960, MLTX-02-005-CN-12040, MLTX-02-005-CN-12480, MLTX-02-005-CN-12670, MLTX-02-005-CN-12710, MLTX-02-005-CN-12770, MLTX-02-005-CN-12810, MLTX-02-005-CN-12820, MLTX-02-005-CN-12870, MLTX-02-005-CN-12890, MLTX-02-005-CN-12910, MLTX-02-005-CN-12950, MLTX-02-005-CN-12960, MLTX-02-005-CN-12970, MLTX-02-005-CN-12980, MLTX-02-005-CN-12990, MLTX-02-005-CN-13040, MLTX-02-005-CN-13060, MLTX-02-005-CN-13160, MLTX-02-005-CN-13220, MLTX-02-005-CN-13270, MLTX-02-005-CN-12100, MLTX-02-005-CN-12110, MLTX-02-005-CN-12150, MLTX-02-005-CN-12160, MLTX-02-005-CN-12170, MLTX-02-005-CN-12320, MLTX-02-005-MS-1140, MLTX-02-005-CN-14740, MLTX-02-005-CN-12190, MLTX-02-005-CN-13030, MLTX-02-005-PR-10220, MLTX-02-005-EN-11080, MLTX-02-005-CN-13120, MLTX-02-005-CN-13140, MLTX-02-005-PR-10050, MLTX-02-005-CN-12120 |  | -55.1d |
| MLTX-02-005-MS-1180 |  | Completion of Dammam Works | 0d | 2027-03-23 | 2027-03-23 | MLTX-02-005-CN-13640, MLTX-02-005-TC-11940, MLTX-02-005-CN-13770, MLTX-02-005-CN-13550, MLTX-02-005-MS-1100, MLTX-02-005-CN-13390, MLTX-02-005-CN-13490, MLTX-02-005-CN-13671, MLTX-02-005-CN-13850, MLTX-02-005-CN-13910, MLTX-02-005-CN-14100, MLTX-02-005-CN-14140, MLTX-02-005-CN-14200, MLTX-02-005-CN-14240, MLTX-02-005-CN-14250, MLTX-02-005-CN-14270, MLTX-02-005-CN-14300, MLTX-02-005-CN-14320, MLTX-02-005-CN-14340, MLTX-02-005-CN-14380, MLTX-02-005-CN-14390, MLTX-02-005-CN-14400, MLTX-02-005-CN-14410, MLTX-02-005-CN-14420, MLTX-02-005-CN-14470, MLTX-02-005-CN-14490, MLTX-02-005-CN-14700, MLTX-02-005-CN-13600, MLTX-02-005-CN-13650, MLTX-02-005-CN-13660, MLTX-02-005-CN-13670, MLTX-02-005-CN-13680, MLTX-02-005-CN-13690, MLTX-02-005-CN-13700, MLTX-02-005-CN-14120, MLTX-02-005-CN-14480, MLTX-02-005-PR-11520, MLTX-02-005-PR-11500, MLTX-02-005-PR-11480, MLTX-02-005-EN-15470, MLTX-02-005-CN-14590, MLTX-02-005-CN-14460, MLTX-02-005-CN-14570, MLTX-02-005-CN-14430 |  | -64.1d |
| MLTX-02-005-MS-1070 |  | Completion of Testing & Commissioning | 0d | 2027-03-27 | 2027-03-27 | MLTX-02-005-TC-11890, MLTX-02-005-TC-11860, MLTX-02-005-TC-11870, MLTX-02-005-TC-11880, MLTX-02-005-TC-11900, MLTX-02-005-TC-11910, MLTX-02-005-TC-11920, MLTX-02-005-TC-11930, MLTX-02-005-TC-11940 |  | -67.1d |
| MLTX-02-005-MS-1150 |  | Completion of Natural Landscape Works | 0d | 2027-03-27 | 2027-03-27 | MLTX-02-005-CN-13490, MLTX-02-005-CN-10550, MLTX-02-005-CN-12060, MLTX-02-005-CN-13640, MLTX-02-005-CN-10390, MLTX-02-005-MS-1100, MLTX-02-005-CN-10580, MLTX-02-005-CN-10620, MLTX-02-005-CN-10670, MLTX-02-005-CN-11460, MLTX-02-005-CN-12040, MLTX-02-005-CN-12480, MLTX-02-005-CN-13220, MLTX-02-005-CN-13470, MLTX-02-005-CN-13910, MLTX-02-005-MS-1130 |  | -67.1d |
| MLTX-02-005-MS-1160 |  | Completion of Arar Works | 0d | 2027-03-27 | 2027-03-27 | MLTX-02-005-CN-12060, MLTX-02-005-MS-1100, MLTX-02-005-TC-11880, MLTX-02-005-CN-10390, MLTX-02-005-CN-10140, MLTX-02-005-CN-10220, MLTX-02-005-CN-10380, MLTX-02-005-CN-10580, MLTX-02-005-CN-10620, MLTX-02-005-CN-10670, MLTX-02-005-CN-11120, MLTX-02-005-CN-11130, MLTX-02-005-CN-11170, MLTX-02-005-CN-11220, MLTX-02-005-CN-11380, MLTX-02-005-CN-11400, MLTX-02-005-CN-11460, MLTX-02-005-CN-11550, MLTX-02-005-CN-11620, MLTX-02-005-CN-11750, MLTX-02-005-CN-11760, MLTX-02-005-CN-11770, MLTX-02-005-CN-11780, MLTX-02-005-CN-11790, MLTX-02-005-CN-11820, MLTX-02-005-CN-11830, MLTX-02-005-CN-11870, MLTX-02-005-CN-11500 |  | -67.1d |
|  | 1 | **ARAR** |  | 2026-03-04 | 2027-03-27 |  |  |  |
|  | MOB | **MOBILIZATION** |  | 2026-03-04 | 2026-04-04 |  |  |  |
|  | SURV | **TOPOGRAPHIC SURVEY** |  | 2026-03-04 | 2026-03-08 |  |  |  |
| MLTX-02-005-MB-1320 |  | Site Survey Works | 4d | 2026-03-04 A | 2026-03-08 A | MLTX-02-005-MS-1010 | 100% |  |
|  | OFFICE | **SITE FACILITIES & OFFICES** |  | 2026-03-04 | 2026-04-02 |  |  |  |
| MLTX-02-005-MB-1340 |  | Site Layout Plan | 3d | 2026-03-04 A | 2026-03-08 A | MLTX-02-005-MS-1010 | 100% |  |
| MLTX-02-005-MB-1350 |  | Clear & Grub for Offices & Access Road | 3d | 2026-03-09 A | 2026-03-11 A | MLTX-02-005-MB-1340, MLTX-02-005-MB-1390 | 100% |  |
| MLTX-02-005-MB-1360 |  | Construct Site Access Roads | 3d | 2026-03-09 A | 2026-03-12 A | MLTX-02-005-MB-1340 | 100% |  |
| MLTX-02-005-MB-1370 |  | Construct Temporary Fence | 5d | 2026-03-12 A | 2026-03-19 A | MLTX-02-005-MB-1350, MLTX-02-005-MB-1390 | 100% |  |
| MLTX-02-005-MB-1380 |  | Construct Site Offices & Storage | 10d | 2026-03-14 A | 2026-04-01 A | MLTX-02-005-MB-1360, MLTX-02-005-MB-1350 | 100% |  |
| MLTX-02-005-MB-1390 |  | Install Project Signs | 8d | 2026-03-14 A | 2026-03-25 A | MLTX-02-005-MB-1360 | 100% |  |
| MLTX-02-005-MB-1400 |  | Install Site Facilities | 4d | 2026-03-16 A | 2026-03-28 A | MLTX-02-005-MB-1370, MLTX-02-005-MB-1430 | 100% |  |
| MLTX-02-005-MB-1410 |  | Electrical Works & Connections | 6d | 2026-03-24 A | 2026-03-30 A | MLTX-02-005-MB-1370, MLTX-02-005-MB-1430 | 100% |  |
| MLTX-02-005-MB-1420 |  | Construct Parking Sheds | 6d | 2026-03-24 A | 2026-03-30 A | MLTX-02-005-MB-1370, MLTX-02-005-MB-1430 | 100% |  |
| MLTX-02-005-MB-1440 |  | Manpower Mobalization | 3d | 2026-03-24 A | 2026-04-02 A | MLTX-02-005-MB-1400, MLTX-02-005-MB-1680 | 100% |  |
| MLTX-02-005-MB-1430 |  | Equipment Mobalization | 5d | 2026-03-26 A | 2026-04-02 A | MLTX-02-005-MB-1390 | 100% |  |
|  | PRELI | **PRELIMINARY SUBMITTALS** |  | 2026-03-09 | 2026-04-04 |  |  |  |
|  | P&S | **PREPARATIONS & SUBMITTAL BY CONTRACTORS** |  | 2026-03-09 | 2026-03-19 |  |  |  |
| MLTX-02-005-MB-1540 |  | Preparation and Submittal of Detailed Work Order Programme (Baseline) | 10d | 2026-03-09 A | 2026-03-19 A | MLTX-02-005-MB-1340, MLTX-02-005-MB-1550 | 100% |  |
| MLTX-02-005-MB-1550 |  | Preparation and Submittal of Project Execution Plan | 8d | 2026-03-09 A | 2026-03-17 A | MLTX-02-005-MB-1340 | 100% |  |
| MLTX-02-005-MB-1560 |  | Submission of Contractor Project Quality Plan | 8d | 2026-03-09 A | 2026-03-17 A | MLTX-02-005-MB-1340, MLTX-02-005-MB-1550 | 100% |  |
| MLTX-02-005-MB-1570 |  | Submission of Construction Safety & Environmental Management Plan | 8d | 2026-03-09 A | 2026-03-17 A | MLTX-02-005-MB-1340, MLTX-02-005-MB-1550 | 100% |  |
| MLTX-02-005-MB-1580 |  | Preparation and Submittal of Organization Chart | 8d | 2026-03-09 A | 2026-03-17 A | MLTX-02-005-MB-1340, MLTX-02-005-MB-1550 | 100% |  |
| MLTX-02-005-MB-1590 |  | Preparation and Submittal of Communication Plan | 8d | 2026-03-09 A | 2026-03-17 A | MLTX-02-005-MB-1340, MLTX-02-005-MB-1550 | 100% |  |
|  | APP | **APPROVALS BY EMPLOYERS** |  | 2026-03-18 | 2026-04-04 |  |  |  |
| MLTX-02-005-MB-1690 |  | Approval of Project Execution Plan | 10d | 2026-03-18 A | 2026-04-01 A | MLTX-02-005-MB-1550 | 100% |  |
| MLTX-02-005-MB-1700 |  | Approval of Contractor Project Quality Plan | 10d | 2026-03-18 A | 2026-04-01 A | MLTX-02-005-MB-1560, MLTX-02-005-MB-1690 | 100% |  |
| MLTX-02-005-MB-1710 |  | Approval of Construction Safety & Environmental Management Plan | 10d | 2026-03-18 A | 2026-04-01 A | MLTX-02-005-MB-1570, MLTX-02-005-MB-1690 | 100% |  |
| MLTX-02-005-MB-1720 |  | Approval of Organization Chart | 10d | 2026-03-18 A | 2026-04-01 A | MLTX-02-005-MB-1580, MLTX-02-005-MB-1690 | 100% |  |
| MLTX-02-005-MB-1730 |  | Approval of Communication Plan | 10d | 2026-03-18 A | 2026-04-01 A | MLTX-02-005-MB-1590, MLTX-02-005-MB-1690 | 100% |  |
| MLTX-02-005-MB-1680 |  | Approval of Detailed Work Order Programme (Baseline) | 10d | 2026-03-24 A | 2026-04-04 A | MLTX-02-005-MB-1540, MLTX-02-005-MB-1690 | 100% |  |
|  | ENGG | **ENGINEERING** |  | 2026-03-07 | 2026-11-08 |  |  |  |
|  | SD | **SHOP DRAWINGS** |  | 2026-03-07 | 2026-11-08 |  |  |  |
|  | SUB | **SHOP DRAWINGS SUBMISSION** |  | 2026-03-07 | 2026-11-08 |  |  |  |
|  | 2 | **SHOP DRAWING SUBMITTALS FOR EARTHING WORKS** |  | 2026-03-09 | 2026-03-14 |  |  |  |
| MLTX-02-005-EN-1790 |  | Shop DWG Submittal for Layout Plan | 15d | 2026-03-09 A | 2026-03-14 A | MLTX-02-005-MB-1320 | 100% |  |
| MLTX-02-005-EN-1800 |  | Shop DWG Submittal for Setting Out | 16d | 2026-03-09 A | 2026-03-14 A | MLTX-02-005-MB-1320 | 100% |  |
| MLTX-02-005-EN-1810 |  | Shop DWG Submittal for Grading Layout Plan | 15d | 2026-03-09 A | 2026-03-14 A | MLTX-02-005-MB-1320, MLTX-02-005-EN-2910 | 100% |  |
| MLTX-02-005-EN-1820 |  | Shop DWG Submittal for Curb Setting Out Points | 15d | 2026-03-09 A | 2026-03-14 A | MLTX-02-005-MB-1320 | 100% |  |
| MLTX-02-005-EN-1830 |  | Shop DWG Submittal for Signing & Marking Layout Plan | 15d | 2026-03-09 A | 2026-03-14 A | MLTX-02-005-MB-1320, MLTX-02-005-EN-1790 | 100% |  |
| MLTX-02-005-EN-1840 |  | Shop DWG Submittal for Standards Details | 15d | 2026-03-09 A | 2026-03-14 A | MLTX-02-005-MB-1320 | 100% |  |
|  | ROAD | **SHOP DRAWING SUBMITTALS FOR SERVICE/TOILET WORKS** |  | 2026-03-07 | 2026-07-30 |  |  |  |
|  | 2 | **ARCHITECTURE WORKS** |  | 2026-03-09 | 2026-03-14 |  |  |  |
| MLTX-02-005-EN-1870 |  | Shop DWG Submittal for Floor Plan | 15d | 2026-03-09 A | 2026-03-14 A | MLTX-02-005-EN-1800 SS, MLTX-02-005-EN-1790 SS, MLTX-02-005-EN-1820 | 100% |  |
| MLTX-02-005-EN-1880 |  | Shop DWG Submittal for Elevations | 15d | 2026-03-09 A | 2026-03-14 A | MLTX-02-005-EN-1870 SS, MLTX-02-005-EN-1790 | 100% |  |
| MLTX-02-005-EN-1890 |  | Shop DWG Submittal for Sections | 15d | 2026-03-09 A | 2026-03-14 A | MLTX-02-005-EN-1810 SS, MLTX-02-005-EN-1880 SS | 100% |  |
| MLTX-02-005-EN-1900 |  | Shop DWG Submittal for Ceiling Plan | 15d | 2026-03-09 A | 2026-03-14 A | MLTX-02-005-EN-1890 SS | 100% |  |
| MLTX-02-005-EN-1910 |  | Shop DWG Submittal for Finishes Plan | 15d | 2026-03-09 A | 2026-03-14 A | MLTX-02-005-EN-1900 SS | 100% |  |
| MLTX-02-005-EN-1920 |  | Shop DWG Submittal for Toilet Details | 15d | 2026-03-09 A | 2026-03-14 A | MLTX-02-005-EN-1910 SS | 100% |  |
| MLTX-02-005-EN-1930 |  | Shop DWG Submittal for Doors/Windows Schedule | 15d | 2026-03-09 A | 2026-03-14 A | MLTX-02-005-EN-1920 SS | 100% |  |
|  | 1 | **STRUCTURE WORKS** |  | 2026-03-15 | 2026-03-19 |  |  |  |
| MLTX-02-005-EN-1950 |  | Shop DWG Submittal for Foundation Plan | 15d | 2026-03-15 A | 2026-03-19 A | MLTX-02-005-EN-1930 | 100% |  |
| MLTX-02-005-EN-1960 |  | Shop DWG Submittal for Ground Floor Framing Plan | 21d | 2026-03-15 A | 2026-03-19 A | MLTX-02-005-EN-1950 SS | 100% |  |
| MLTX-02-005-EN-1970 |  | Shop DWG Submittal for Sections/Details | 21d | 2026-03-15 A | 2026-03-19 A | MLTX-02-005-EN-1930, MLTX-02-005-EN-2100 | 100% |  |

| ID | WBS | Task | Duration | Start | Finish | Predecessors | Complete |
| --- | --- | --- | --- | --- | --- | --- | --- |
|  | 3 | **MECHANCAL WORKS** |  | 2026-03-07 | 2026-05-07 |  |  |
| MLTX-02-005-EN-2020 |  | Shop DWG Submittal for Drainage Layout | 30d | 2026-03-07 A | 2026-05-07 A | MLTX-02-005-EN-1930 | 100% |
| MLTX-02-005-EN-2030 |  | Shop DWG Submittal for Drainage Details | 30d | 2026-03-12 A | 2026-05-06 A | MLTX-02-005-EN-1930 | 100% |
| MLTX-02-005-EN-2040 |  | Shop DWG Submittal for Dut Routing Layout | 30d | 2026-03-12 A | 2026-05-04 A | MLTX-02-005-EN-1930, MLTX-02-005-EN-2100 | 100% |
| MLTX-02-005-EN-2050 |  | Shop DWG Submittal for Diffusers Layout | 30d | 2026-03-12 A | 2026-05-06 A | MLTX-02-005-EN-1930, MLTX-02-005-EN-2270 | 100% |
| MLTX-02-005-EN-1990 |  | Shop DWG Submittal for HVAC Plan | 30d | 2026-03-15 A | 2026-03-19 A | MLTX-02-005-EN-1930, MLTX-02-005-EN-2100 | 100% |
| MLTX-02-005-EN-2000 |  | Shop DWG Submittal for Exhaust Air Plan | 30d | 2026-03-15 A | 2026-03-19 A | MLTX-02-005-EN-1930, MLTX-02-005-EN-2100 | 100% |
| MLTX-02-005-EN-2010 |  | Shop DWG Submittal for HVAC Equipment Schedule | 30d | 2026-03-15 A | 2026-03-19 A | MLTX-02-005-EN-1930, MLTX-02-005-EN-2100 | 100% |
| MLTX-02-005-EN-2060 |  | Shop DWG Submittal for Fire Fighting Layout | 30d | 2026-03-15 A | 2026-03-19 A | MLTX-02-005-EN-1930, MLTX-02-005-EN-2590 | 100% |
| MLTX-02-005-EN-2070 |  | Shop DWG Submittal for Water Supply Layout | 30d | 2026-03-15 A | 2026-03-19 A | MLTX-02-005-EN-1930, MLTX-02-005-EN-2100 | 100% |
| MLTX-02-005-EN-2080 |  | Shop DWG Submittal for Water Supply Details | 30d | 2026-03-15 A | 2026-03-19 A | MLTX-02-005-EN-1930, MLTX-02-005-EN-2100 | 100% |
|  | 4 | **ELECTRICAL WORKS** |  | 2026-03-12 | 2026-07-30 |  |  |
| MLTX-02-005-EN-2120 |  | Shop DWG Submittal for Power Single Line Diagram | 30d | 2026-03-12 A | 2026-05-05 A | MLTX-02-005-EN-1930, MLTX-02-005-EN-2100 | 100% |
| MLTX-02-005-EN-2130 |  | Shop DWG Submittal for Panel Board Schedules | 30d | 2026-03-12 A | 2026-05-09 A | MLTX-02-005-EN-1930 | 100% |
| MLTX-02-005-EN-2160 |  | Shop DWG Submittal for Cable Tray Installation Details | 30d | 2026-03-12 A | 2026-05-05 A | MLTX-02-005-EN-2150 SS | 100% |
| MLTX-02-005-EN-2170 |  | Shop DWG Submittal for Manhole & Ductbank Details | 30d | 2026-03-12 A | 2026-05-07 A | MLTX-02-005-EN-2160 SS | 100% |
| MLTX-02-005-EN-2100 |  | Shop DWG Submittal for Lighting Layout | 30d | 2026-03-15 A | 2026-03-19 A | MLTX-02-005-EN-1930, MLTX-02-005-EN-2920 | 100% |
| MLTX-02-005-EN-2110 |  | Shop DWG Submittal for Power Layout | 30d | 2026-03-15 A | 2026-03-19 A | MLTX-02-005-EN-1930, MLTX-02-005-EN-2100 | 100% |
| MLTX-02-005-EN-2140 |  | Shop DWG Submittal for Lighting Installation Details | 30d | 2026-03-15 A | 2026-03-19 A | MLTX-02-005-EN-2150 SS, MLTX-02-005-EN-2100 | 100% |
| MLTX-02-005-EN-2150 |  | Shop DWG Submittal for Power Installation Details | 30d | 2026-03-15 A | 2026-03-19 A | MLTX-02-005-EN-2130 SS | 100% |
| MLTX-02-005-EN-2180 |  | Shop DWG Submittal for Grounding Details | 30d | 2026-03-15 A | 2026-03-19 A | MLTX-02-005-EN-2170 SS | 100% |
| MLTX-02-005-EN-2190 |  | Shop DWG Submittal for Fire Alarm Installation Details | 30d | 2026-03-15 A | 2026-03-19 A | MLTX-02-005-EN-2210 SS | 100% |
| MLTX-02-005-EN-2200 |  | Shop DWG Submittal for Fire Alarm Layout | 30d | 2026-03-15 A | 2026-03-19 A | MLTX-02-005-EN-2220 SS | 100% |
| MLTX-02-005-EN-2210 |  | Shop DWG Submittal for Lightning Protection Details | 30d | 2026-03-15 A | 2026-03-19 A | MLTX-02-005-EN-2180 SS | 100% |
| MLTX-02-005-EN-2220 |  | Shop DWG Submittal for Lightning Protection System Layout | 30d | 2026-03-15 A | 2026-03-19 A | MLTX-02-005-EN-2270 SS | 100% |
| MLTX-02-005-EN-2230 |  | Shop DWG Submittal for Fire Alarm Riser Diagram | 30d | 2026-03-15 A | 2026-03-19 A | MLTX-02-005-EN-2200 SS | 100% |
| MLTX-02-005-EN-2260 |  | Shop DWG Submittal for Telephone & Data Layout | 30d | 2026-03-15 A | 2026-03-19 A | MLTX-02-005-EN-2230 | 100% |
| MLTX-02-005-EN-2270 |  | Shop DWG Submittal for Grounding Layout | 30d | 2026-03-15 A | 2026-03-19 A | MLTX-02-005-EN-2190 | 100% |
| MLTX-02-005-EN-2290 |  | Shop DWG Submittal for Telephone & Data Riser Diagram | 30d | 2026-03-15 A | 2026-03-19 A | MLTX-02-005-EN-2260 SS, MLTX-02-005-EN-1930 | 100% |
| MLTX-02-005-EN-2250 |  | Shop DWG Submittal for CCTV Layout | 30d | 2026-07-12 A | 2026-07-12 A | MLTX-02-005-EN-2230 SS | 100% |
| MLTX-02-005-EN-2280 |  | Shop DWG Submittal for CCTV Riser Diagram | 30d | 2026-07-12 A | 2026-07-12 A | MLTX-02-005-EN-2250 SS, MLTX-02-005-EN-2100 | 100% |
| MLTX-02-005-EN-2240 |  | Shop DWG Submittal for CCTV Details | 30d | 2026-07-30 A | 2026-07-30 A | MLTX-02-005-EN-2190 SS | 100% |
|  | ELE | **SHOP DRAWINGS SUBMITTALS FOR PLAYGROUND WORKS** |  | 2026-03-08 | 2026-11-08 |  |  |
|  | 3 | **ARCHITECTURE WORKS** |  | 2026-03-08 | 2026-05-25 |  |  |
| MLTX-02-005-EN-2330 |  | Shop DWG Submittal for Furniture & Marking | 15d | 2026-03-08 A | 2026-05-12 A | MLTX-02-005-EN-2320 SS | 100% |
| MLTX-02-005-EN-2370 |  | Shop DWG Submittal for Dome Internal Layout | 30d | 2026-03-08 A | 2026-05-25 A | MLTX-02-005-EN-2360 SS | 100% |
| MLTX-02-005-EN-2320 |  | Shop DWG Submittal for Playground Plan/Layout | 15d | 2026-03-09 A | 2026-03-14 A | MLTX-02-005-MB-1320 | 100% |
| MLTX-02-005-EN-2340 |  | Shop DWG Submittal for Sections | 15d | 2026-03-09 A | 2026-03-14 A | MLTX-02-005-EN-2330 SS | 100% |
| MLTX-02-005-EN-2350 |  | Shop DWG Submittal for Interlock Pattern Plan | 30d | 2026-03-09 A | 2026-03-14 A | MLTX-02-005-EN-2340 SS | 100% |
| MLTX-02-005-EN-2360 |  | Shop DWG Submittal for Doors/Windows Schedule | 30d | 2026-03-09 A | 2026-03-14 A | MLTX-02-005-EN-2350 SS | 100% |
|  | 4 | **STRUCTURE WORKS** |  | 2026-03-14 | 2026-07-14 |  |  |
| MLTX-02-005-EN-2390 |  | Shop DWG Submittal for Air Dome System | 30d | 2026-03-14 A | 2026-05-07 A | MLTX-02-005-EN-2370, MLTX-02-005-EN-2900, MLTX-02-005-EN-2930 | 100% |
| MLTX-02-005-EN-2400 |  | Shop DWG Submittal for Foundation of Air Dome | 30d | 2026-07-14 A | 2026-07-14 A | MLTX-02-005-EN-2390 SS, MLTX-02-005-EN-2940, MLTX-02-005-EN-1810 | 100% |
| MLTX-02-005-EN-2420 |  | Shop DWG Submittal for Anchor Bolt Layout of Air Dome | 30d | 2026-07-14 A | 2026-07-14 A | MLTX-02-005-EN-2400 SS, MLTX-02-005-EN-2390 | 100% |
|  | 5 | **AIR DOME SYSTEM** |  | 2026-03-14 | 2026-05-24 |  |  |
| MLTX-02-005-EN-2440 |  | Shop DWG Submittal for Air Dome Structural Layout | 30d | 2026-03-14 A | 2026-05-07 A | MLTX-02-005-EN-2390 | 100% |
| MLTX-02-005-EN-2450 |  | Shop DWG Submittal for Membrane Panel Layout | 30d | 2026-03-14 A | 2026-05-24 A | MLTX-02-005-EN-2440 SS | 100% |
| MLTX-02-005-EN-2460 |  | Shop DWG Submittal for Cable Tension Layout | 30d | 2026-03-14 A | 2026-05-24 A | MLTX-02-005-EN-2450 SS | 100% |
| MLTX-02-005-EN-2470 |  | Shop DWG Submittal for Airlock Door Details | 30d | 2026-03-14 A | 2026-05-24 A | MLTX-02-005-EN-2460 SS | 100% |
| MLTX-02-005-EN-2480 |  | Shop DWG Submittal for Emergency Exit Details | 30d | 2026-03-14 A | 2026-05-24 A | MLTX-02-005-EN-2470 SS | 100% |
|  | 6 | **SPORTS EQUIPMENT** |  | 2026-03-14 | 2026-05-25 |  |  |
| MLTX-02-005-EN-2500 |  | Shop DWG Submittal for Football Turf Installation | 30d | 2026-03-14 A | 2026-05-25 A | MLTX-02-005-EN-2480 SS | 100% |
| MLTX-02-005-EN-2510 |  | Shop DWG Submittal for Basketball Court Marking | 30d | 2026-03-14 A | 2026-05-25 A | MLTX-02-005-EN-2500 SS | 100% |
| MLTX-02-005-EN-2520 |  | Shop DWG Submittal for Padel Court Structure | 30d | 2026-03-14 A | 2026-05-25 A | MLTX-02-005-EN-2510 SS | 100% |
|  | 1 | **MECHANCAL WORKS** |  | 2026-03-14 | 2026-05-03 |  |  |
| MLTX-02-005-EN-2540 |  | Shop DWG Submittal for HVAC Plan | 30d | 2026-03-14 A | 2026-05-03 A | MLTX-02-005-EN-2520 SS | 100% |
| MLTX-02-005-EN-2550 |  | Shop DWG Submittal for Exhaust Air Plan | 30d | 2026-03-14 A | 2026-05-03 A | MLTX-02-005-EN-2540 SS | 100% |
|  | 2 | **ELECTRICAL WORKS** |  | 2026-03-14 | 2026-11-08 |  |  |
| MLTX-02-005-EN-2570 |  | Shop DWG Submittal for Lighting Layout | 30d | 2026-03-14 A | 2026-04-19 A | MLTX-02-005-EN-2550 SS | 100% |
| MLTX-02-005-EN-2590 |  | Shop DWG Submittal for Power Installation Details | 30d | 2026-06-10 A | 2026-06-10 A | MLTX-02-005-EN-2630 SS, MLTX-02-005-EN-2850 | 100% |
| MLTX-02-005-EN-2620 |  | Shop DWG Submittal for Power Single Line Diagram | 30d | 2026-06-10 A | 2026-06-10 A | MLTX-02-005-EN-2650 SS | 100% |
| MLTX-02-005-EN-2630 |  | Shop DWG Submittal for Panel Board Schedules | 30d | 2026-06-10 A | 2026-06-10 A | MLTX-02-005-EN-2620 SS | 100% |
| MLTX-02-005-EN-2650 |  | Shop DWG Submittal for CCTV Details | 30d | 2026-06-10 A | 2026-06-10 A | MLTX-02-005-EN-2570 SS | 100% |
| MLTX-02-005-EN-2600 |  | Shop DWG Submittal for Fire Alarm Installation Details | 30d | 2026-07-07 A | 2026-07-07 A | MLTX-02-005-EN-2590 SS | 100% |
| MLTX-02-005-EN-2660 |  | Shop DWG Submittal for CCTV Layout | 30d | 2026-08-20 A | 2026-08-20 A | MLTX-02-005-EN-2250 | 100% |
| MLTX-02-005-EN-2670 |  | Shop DWG Submittal for CCTV Riser Diagram | 30d | 2026-08-20 A | 2026-08-20 A | MLTX-02-005-EN-2660 SS | 100% |
| MLTX-02-005-EN-2610 |  | Shop DWG Submittal for Fire Alarm Layout | 15d | 2026-10-24 A | 2026-10-24 A | MLTX-02-005-EN-2600 SS, MLTX-02-005-EN-2600 FF, MLTX-02-005-EN-3500 | 100% |
| MLTX-02-005-EN-2640 |  | Shop DWG Submittal for Fire Alarm Riser Diagram | 15d | 2026-10-24 A | 2026-10-24 A | MLTX-02-005-EN-2610, MLTX-02-005-EN-2600 SS | 100% |
| MLTX-02-005-EN-2580 |  | Shop DWG Submittal for Power Layout | 27d | 2026-11-08 A | 2026-11-08 A | MLTX-02-005-EN-2650 SS, MLTX-02-005-EN-3500 | 100% |
|  | EAR | **SHOP DRAWINGS SUBMITTALS FOR LANDSCAPE WORKS** |  | 2026-03-08 | 2026-07-13 |  |  |

| ID | WBS | Task | Duration | Start | Finish | Predecessors | Complete |
| --- | --- | --- | --- | --- | --- | --- | --- |
|  | 3 | **ARCHITECTURE WORKS** |  | 2026-03-09 | 2026-05-05 |  |  |
| MLTX-02-005-EN-2700 |  | Shop DWG Submittal for Landscape Layout | 21d | 2026-03-09 A | 2026-03-14 A | MLTX-02-005-MB-1320, MLTX-02-005-EN-1810 | 100% |
| MLTX-02-005-EN-2710 |  | Shop DWG Submittal for Hardscape Plan | 21d | 2026-03-09 A | 2026-03-14 A | MLTX-02-005-MB-1320, MLTX-02-005-EN-1810 | 100% |
| MLTX-02-005-EN-2730 |  | Shop DWG Submittal for Landscape Details | 15d | 2026-03-09 A | 2026-03-14 A | MLTX-02-005-MB-1320, MLTX-02-005-EN-2860 | 100% |
| MLTX-02-005-EN-2720 |  | Shop DWG Submittal for Planting Plan | 15d | 2026-03-14 A | 2026-05-05 A | MLTX-02-005-EN-2730, MLTX-02-005-EN-2810 | 100% |
|  | 1 | **MECHANCAL WORKS** |  | 2026-03-08 | 2026-06-03 |  |  |
| MLTX-02-005-EN-2770 |  | Shop DWG Submittal for Irrigation Details | 30d | 2026-03-08 A | 2026-06-03 A | MLTX-02-005-MB-1320 | 100% |
| MLTX-02-005-EN-2810 |  | Shop DWG Submittal for Irrigation Layout | 30d | 2026-03-08 A | 2026-06-03 A | MLTX-02-005-MB-1320, MLTX-02-005-EN-2770 | 100% |
|  | 2 | **ELECTRICAL WORKS** |  | 2026-07-12 | 2026-07-13 |  |  |
| MLTX-02-005-EN-2860 |  | Shop DWG Submittal for Lighting General Arrangement | 30d | 2026-07-12 A | 2026-07-12 A | MLTX-02-005-MB-1320 | 100% |
| MLTX-02-005-EN-2870 |  | Shop DWG Submittal for Lighting Network Layout | 30d | 2026-07-12 A | 2026-07-12 A | MLTX-02-005-MB-1320, MLTX-02-005-EN-2270 | 100% |
| MLTX-02-005-EN-2840 |  | Shop DWG Submittal for Lighting Details | 30d | 2026-07-13 A | 2026-07-13 A | MLTX-02-005-MB-1320, MLTX-02-005-EN-2270 | 100% |
| MLTX-02-005-EN-2850 |  | Shop DWG Submittal for Lighting Single Line Diagram | 30d | 2026-07-13 A | 2026-07-13 A | MLTX-02-005-MB-1320, MLTX-02-005-EN-2270 | 100% |
|  | APP | **SHOP DRAWINGS APPROVALS** |  | 2026-03-14 | 2026-11-08 |  |  |
|  | 2 | **SHOP DRAWING APPROVAL FOR EARTHING WORKS** |  | 2026-03-15 | 2026-03-29 |  |  |
| MLTX-02-005-EN-2900 |  | Shop DWG Approval for Layout Plan | 15d | 2026-03-15 A | 2026-03-29 A | MLTX-02-005-EN-1790 | 100% |
| MLTX-02-005-EN-2910 |  | Shop DWG Approval for Setting Out | 15d | 2026-03-15 A | 2026-03-29 A | MLTX-02-005-EN-1800 | 100% |
| MLTX-02-005-EN-2920 |  | Shop DWG Approval for Grading Layout Plan | 16d | 2026-03-15 A | 2026-03-29 A | MLTX-02-005-EN-1810 | 100% |
| MLTX-02-005-EN-2930 |  | Shop DWG Approval for Curb Setting Out Points | 15d | 2026-03-15 A | 2026-03-29 A | MLTX-02-005-EN-1820 | 100% |
| MLTX-02-005-EN-2940 |  | Shop DWG Approval for Signing & Marking Layout Plan | 15d | 2026-03-15 A | 2026-03-29 A | MLTX-02-005-EN-1830, MLTX-02-005-EN-2900 | 100% |
| MLTX-02-005-EN-2950 |  | Shop DWG Approval for Standards Details | 15d | 2026-03-15 A | 2026-03-29 A | MLTX-02-005-EN-1840 | 100% |
|  | ROAD | **SHOP DRAWING APPROVAL FOR SERVICE/TOILET WORKS** |  | 2026-03-15 | 2026-07-30 |  |  |
|  | 2 | **ARCHITECTURE WORKS** |  | 2026-03-15 | 2026-03-29 |  |  |
| MLTX-02-005-EN-2980 |  | Shop DWG Approval for Floor Plan | 30d | 2026-03-15 A | 2026-03-29 A | MLTX-02-005-EN-1870, MLTX-02-005-EN-3070 | 100% |
| MLTX-02-005-EN-2990 |  | Shop DWG Approval for Elevations | 30d | 2026-03-15 A | 2026-03-29 A | MLTX-02-005-EN-1880, MLTX-02-005-EN-3070 | 100% |
| MLTX-02-005-EN-3000 |  | Shop DWG Approval for Sections | 30d | 2026-03-15 A | 2026-03-29 A | MLTX-02-005-EN-1890 | 100% |
| MLTX-02-005-EN-3010 |  | Shop DWG Approval for Ceiling Plan | 30d | 2026-03-15 A | 2026-03-29 A | MLTX-02-005-EN-1900, MLTX-02-005-EN-2570 | 100% |
| MLTX-02-005-EN-3020 |  | Shop DWG Approval for Finishes Plan | 30d | 2026-03-15 A | 2026-03-29 A | MLTX-02-005-EN-1910, MLTX-02-005-EN-3070 | 100% |
| MLTX-02-005-EN-3030 |  | Shop DWG Approval for Toilet Details | 30d | 2026-03-15 A | 2026-03-29 A | MLTX-02-005-EN-1920, MLTX-02-005-EN-3070 | 100% |
| MLTX-02-005-EN-3040 |  | Shop DWG Approval for Doors/Windows Schedule | 30d | 2026-03-15 A | 2026-03-29 A | MLTX-02-005-EN-1930, MLTX-02-005-EN-3070 | 100% |
|  | 1 | **STRUCTURE WORKS** |  | 2026-03-24 | 2026-04-04 |  |  |
| MLTX-02-005-EN-3060 |  | Shop DWG Approval for Foundation Plan | 4d | 2026-03-24 A | 2026-04-04 A | MLTX-02-005-EN-1950, MLTX-02-005-EN-3080 | 100% |
| MLTX-02-005-EN-3070 |  | Shop DWG Approval for Ground Floor Framing Plan | 21d | 2026-03-24 A | 2026-04-04 A | MLTX-02-005-EN-1960 | 100% |
| MLTX-02-005-EN-3080 |  | Shop DWG Approval for Sections/Details | 21d | 2026-03-24 A | 2026-04-04 A | MLTX-02-005-EN-1970, MLTX-02-005-EN-3020 | 100% |
|  | 3 | **MECHANCAL WORKS** |  | 2026-03-18 | 2026-05-10 |  |  |
| MLTX-02-005-EN-3130 |  | Shop DWG Approval for Drainage Layout | 30d | 2026-03-18 A | 2026-05-09 A | MLTX-02-005-EN-2020 | 100% |
| MLTX-02-005-EN-3140 |  | Shop DWG Approval for Drainage Details | 30d | 2026-03-18 A | 2026-05-09 A | MLTX-02-005-EN-2030 | 100% |
| MLTX-02-005-EN-3150 |  | Shop DWG Approval for Duct Routing Layout | 30d | 2026-03-18 A | 2026-05-10 A | MLTX-02-005-EN-2040, MLTX-02-005-EN-3010 | 100% |
| MLTX-02-005-EN-3160 |  | Shop DWG Approval for Diffusers Layout | 30d | 2026-03-18 A | 2026-05-10 A | MLTX-02-005-EN-2050, MLTX-02-005-EN-3380 | 100% |
| MLTX-02-005-EN-3100 |  | Shop DWG Approval for HVAC Plan | 30d | 2026-03-24 A | 2026-04-04 A | MLTX-02-005-EN-1990, MLTX-02-005-EN-3010 | 100% |
| MLTX-02-005-EN-3110 |  | Shop DWG Approval for Exhaust Air Plan | 30d | 2026-03-24 A | 2026-04-04 A | MLTX-02-005-EN-2000, MLTX-02-005-EN-3010 | 100% |
| MLTX-02-005-EN-3120 |  | Shop DWG Approval for HVAC Equipment Schedule | 30d | 2026-03-24 A | 2026-04-04 A | MLTX-02-005-EN-2010, MLTX-02-005-EN-3010 | 100% |
| MLTX-02-005-EN-3170 |  | Shop DWG Approval for Fire Fighting Layout | 30d | 2026-03-24 A | 2026-04-04 A | MLTX-02-005-EN-2060 | 100% |
| MLTX-02-005-EN-3180 |  | Shop DWG Approval for Water Supply Layout | 30d | 2026-03-24 A | 2026-04-04 A | MLTX-02-005-EN-2070, MLTX-02-005-EN-3010 | 100% |
| MLTX-02-005-EN-3190 |  | Shop DWG Approval for Water Supply Details | 30d | 2026-03-24 A | 2026-04-04 A | MLTX-02-005-EN-2080, MLTX-02-005-EN-3010 | 100% |
|  | 4 | **ELECTRICAL WORKS** |  | 2026-03-18 | 2026-07-30 |  |  |
| MLTX-02-005-EN-3230 |  | Shop DWG Approval for Power Single Line Diagram | 30d | 2026-03-18 A | 2026-05-05 A | MLTX-02-005-EN-2120, MLTX-02-005-EN-3210 | 100% |
| MLTX-02-005-EN-3270 |  | Shop DWG Approval for Cable Tray Installation Details | 30d | 2026-03-18 A | 2026-05-05 A | MLTX-02-005-EN-2160, MLTX-02-005-EN-3210 | 100% |
| MLTX-02-005-EN-3280 |  | Shop DWG Approval for Manhole & Ductbank Details | 30d | 2026-03-18 A | 2026-05-05 A | MLTX-02-005-EN-2170, MLTX-02-005-EN-3210 | 100% |
| MLTX-02-005-EN-3210 |  | Shop DWG Approval for Lighting Layout | 30d | 2026-03-24 A | 2026-04-04 A | MLTX-02-005-EN-2100 | 100% |
| MLTX-02-005-EN-3220 |  | Shop DWG Approval for Power Layout | 30d | 2026-03-24 A | 2026-04-04 A | MLTX-02-005-EN-2110, MLTX-02-005-EN-3210 | 100% |
| MLTX-02-005-EN-3250 |  | Shop DWG Approval for Lighting Installation Details | 30d | 2026-03-24 A | 2026-04-04 A | MLTX-02-005-EN-2140, MLTX-02-005-EN-3210 | 100% |
| MLTX-02-005-EN-3260 |  | Shop DWG Approval for Power Installation Details | 30d | 2026-03-24 A | 2026-04-04 A | MLTX-02-005-EN-2150, MLTX-02-005-EN-3210 | 100% |
| MLTX-02-005-EN-3290 |  | Shop DWG Approval for Grounding Details | 30d | 2026-03-24 A | 2026-04-04 A | MLTX-02-005-EN-2180, MLTX-02-005-EN-3210 | 100% |
| MLTX-02-005-EN-3300 |  | Shop DWG Approval for Fire Alarm Installation Details | 30d | 2026-03-24 A | 2026-04-04 A | MLTX-02-005-EN-2190 | 100% |
| MLTX-02-005-EN-3310 |  | Shop DWG Approval for Fire Alarm Layout | 30d | 2026-03-24 A | 2026-04-04 A | MLTX-02-005-EN-2200 | 100% |
| MLTX-02-005-EN-3320 |  | Shop DWG Approval for Lightning Protection Details | 30d | 2026-03-24 A | 2026-04-04 A | MLTX-02-005-EN-2210, MLTX-02-005-EN-3210 | 100% |
| MLTX-02-005-EN-3330 |  | Shop DWG Approval for Lightning Protection System Layout | 30d | 2026-03-24 A | 2026-04-04 A | MLTX-02-005-EN-2220, MLTX-02-005-EN-3210 | 100% |
| MLTX-02-005-EN-3340 |  | Shop DWG Approval for Fire Alarm Riser Diagram | 30d | 2026-03-24 A | 2026-04-04 A | MLTX-02-005-EN-2230 | 100% |
| MLTX-02-005-EN-3370 |  | Shop DWG Approval for Telephone & Data Layout | 30d | 2026-03-24 A | 2026-04-04 A | MLTX-02-005-EN-2260 | 100% |
| MLTX-02-005-EN-3380 |  | Shop DWG Approval for Grounding Layout | 30d | 2026-03-24 A | 2026-04-04 A | MLTX-02-005-EN-2270 | 100% |
| MLTX-02-005-EN-3400 |  | Shop DWG Approval for Telephone & Data Riser Diagram | 30d | 2026-03-24 A | 2026-04-04 A | MLTX-02-005-EN-2290 | 100% |
| MLTX-02-005-EN-3240 |  | Shop DWG Approval for Panel Board Schedules | 30d | 2026-07-16 A | 2026-07-16 A | MLTX-02-005-EN-2130, MLTX-02-005-EN-3210 | 100% |
| MLTX-02-005-EN-3350 |  | Shop DWG Approval for CCTV Details | 30d | 2026-07-30 A | 2026-07-30 A | MLTX-02-005-EN-2240 | 100% |
| MLTX-02-005-EN-3360 |  | Shop DWG Approval for CCTV Layout | 30d | 2026-07-30 A | 2026-07-30 A | MLTX-02-005-EN-3350, MLTX-02-005-EN-2250 | 100% |
| MLTX-02-005-EN-3390 |  | Shop DWG Approval for CCTV Riser Diagram | 30d | 2026-07-30 A | 2026-07-30 A | MLTX-02-005-EN-2280, MLTX-02-005-EN-3360 | 100% |
|  | ELE | **SHOP DRAWINGS APPROVAL FOR PLAYGROUND WORKS** |  | 2026-03-14 | 2026-11-08 |  |  |
|  | 3 | **ARCHITECTURE WORKS** |  | 2026-03-14 | 2026-10-24 |  |  |
| MLTX-02-005-EN-3440 |  | Shop DWG Approval for Furniture & Marking | 30d | 2026-03-14 A | 2026-05-12 A | MLTX-02-005-EN-2330, MLTX-02-005-EN-3970 | 100% |
| MLTX-02-005-EN-3430 |  | Shop DWG Approval for Playground Plan/Layout | 15d | 2026-03-15 A | 2026-03-29 A | MLTX-02-005-EN-2320, MLTX-02-005-EN-2940 | 100% |

| ID | WBS | Task | Duration | Start | Finish | Predecessors | Complete |
| --- | --- | --- | --- | --- | --- | --- | --- |
| MLTX-02-005-EN-3450 |  | Shop DWG Approval for Sections | 15d | 2026-03-15 A | 2026-03-29 A | MLTX-02-005-EN-2340, MLTX-02-005-EN-3000 | 100% |
| MLTX-02-005-EN-3460 |  | Shop DWG Approval for Interlock Pattern Plan | 30d | 2026-03-15 A | 2026-03-29 A | MLTX-02-005-EN-2350 | 100% |
| MLTX-02-005-EN-3470 |  | Shop DWG Approval for Doors/Windows Schedule | 30d | 2026-03-15 A | 2026-03-29 A | MLTX-02-005-EN-2360 | 100% |
| MLTX-02-005-EN-3480 |  | Shop DWG Approval for Dome Internal Layout | 26d | 2026-10-24 A | 2026-10-24 A | MLTX-02-005-EN-2370, MLTX-02-005-EN-3450, MLTX-02-005-EN-3440, MLTX-02-005-EN-3560 | 100% |
|  | 4 | **STRUCTURE WORKS** |  | 2026-03-19 | 2026-07-16 |  |  |
| MLTX-02-005-EN-3500 |  | Shop DWG Approval for Air Dome System | 30d | 2026-03-19 A | 2026-05-09 A | MLTX-02-005-EN-2390 | 100% |
| MLTX-02-005-EN-3510 |  | Shop DWG Approval for Foundation of Air Dome | 30d | 2026-07-16 A | 2026-07-16 A | MLTX-02-005-EN-2400, MLTX-02-005-EN-3770 | 100% |
| MLTX-02-005-EN-3520 |  | Shop DWG Approval for Foundation of Air Dome | 30d | 2026-07-16 A | 2026-07-16 A | MLTX-02-005-EN-3510 SS, MLTX-02-005-EN-3770 | 100% |
| MLTX-02-005-EN-3530 |  | Shop DWG Approval for Anchor Bolt Layout of Air Dome | 30d | 2026-07-16 A | 2026-07-16 A | MLTX-02-005-EN-2420, MLTX-02-005-EN-3470, MLTX-02-005-EN-3770 | 100% |
|  | 5 | **AIR DOME SYSTEM** |  | 2026-03-19 | 2026-10-24 |  |  |
| MLTX-02-005-EN-3550 |  | Shop DWG Approval for Air Dome Structural Layout | 30d | 2026-03-19 A | 2026-05-09 A | MLTX-02-005-EN-2440 | 100% |
| MLTX-02-005-EN-3560 |  | Shop DWG Approval for Membrane Panel Layout | 15d | 2026-10-24 A | 2026-10-24 A | MLTX-02-005-EN-2450, MLTX-02-005-EN-2420 | 100% |
| MLTX-02-005-EN-3570 |  | Shop DWG Approval for Cable Tension Layout | 13d | 2026-10-24 A | 2026-10-24 A | MLTX-02-005-EN-2460, MLTX-02-005-EN-3560 FF, MLTX-02-005-EN-3560 SS | 100% |
| MLTX-02-005-EN-3580 |  | Shop DWG Approval for Airlock Door Details | 13d | 2026-10-24 A | 2026-10-24 A | MLTX-02-005-EN-3570, MLTX-02-005-EN-2470 | 100% |
| MLTX-02-005-EN-3590 |  | Shop DWG Approval for Emergency Exit Details | 13d | 2026-10-24 A | 2026-10-24 A | MLTX-02-005-EN-3580, MLTX-02-005-EN-2480 | 100% |
|  | 6 | **SPORTS EQUIPMENT** |  | 2026-07-20 | 2026-10-24 |  |  |
| MLTX-02-005-EN-3630 |  | Shop DWG Approval for Padel Court Structure | 30d | 2026-07-20 A | 2026-07-20 A | MLTX-02-005-EN-2520, MLTX-02-005-EN-3620, MLTX-02-005-EN-3660 | 100% |
| MLTX-02-005-EN-3620 |  | Shop DWG Approval for Basketball Court Marking | 30d | 2026-08-25 A | 2026-08-25 A | MLTX-02-005-EN-2510, MLTX-02-005-EN-3500 | 100% |
| MLTX-02-005-EN-3610 |  | Shop DWG Approval for Football Turf Installation | 13d | 2026-10-24 A | 2026-10-24 A | MLTX-02-005-EN-3480, MLTX-02-005-EN-3590, MLTX-02-005-EN-2500 | 100% |
|  | 1 | **MECHANCAL WORKS** |  | 2026-03-19 | 2026-05-04 |  |  |
| MLTX-02-005-EN-3650 |  | Shop DWG Approval for HVAC Plan | 30d | 2026-03-19 A | 2026-05-04 A | MLTX-02-005-EN-2540 | 100% |
| MLTX-02-005-EN-3660 |  | Shop DWG Approval for Exhaust Air Plan | 30d | 2026-03-19 A | 2026-05-04 A | MLTX-02-005-EN-2550, MLTX-02-005-EN-3650, MLTX-02-005-EN-3950, MLTX-02-005-EN-3980 | 100% |
|  | 2 | **ELECTRICAL WORKS** |  | 2026-06-13 | 2026-11-08 |  |  |
| MLTX-02-005-EN-3740 |  | Shop DWG Approval for Panel Board Schedules | 20d | 2026-06-13 A | 2026-06-13 A | MLTX-02-005-EN-2630 | 100% |
| MLTX-02-005-EN-3730 |  | Shop DWG Approval for Power Single Line Diagram | 30d | 2026-07-16 A | 2026-07-16 A | MLTX-02-005-EN-2620, MLTX-02-005-EN-3740 | 100% |
| MLTX-02-005-EN-3760 |  | Shop DWG Approval for CCTV Details | 25d | 2026-08-25 A | 2026-08-25 A | MLTX-02-005-EN-2650, MLTX-02-005-EN-3740 | 100% |
| MLTX-02-005-EN-3770 |  | Shop DWG Approval for CCTV Layout | 3d | 2026-08-25 A | 2026-08-25 A | MLTX-02-005-EN-3760, MLTX-02-005-EN-2660 | 100% |
| MLTX-02-005-EN-3780 |  | Shop DWG Approval for CCTV Riser Diagram | 30d | 2026-08-25 A | 2026-08-25 A | MLTX-02-005-EN-2670, MLTX-02-005-EN-3390 FF, MLTX-02-005-EN-3470 | 100% |
| MLTX-02-005-EN-3680 |  | Shop DWG Approval for Lighting Layout | 23d | 2026-10-24 A | 2026-10-24 A | MLTX-02-005-EN-2570, MLTX-02-005-EN-3780 | 100% |
| MLTX-02-005-EN-3690 |  | Shop DWG Approval for Power Layout | 13d | 2026-11-08 A | 2026-11-08 A | MLTX-02-005-EN-3680, MLTX-02-005-EN-2580, MLTX-02-005-EN-3660, MLTX-02-005-EN-2640 | 100% |
| MLTX-02-005-EN-3700 |  | Shop DWG Approval for Power Installation Details | 13d | 2026-11-08 A | 2026-11-08 A | MLTX-02-005-EN-3690, MLTX-02-005-EN-2590 | 100% |
|  | EAR | **SHOP DRAWINGS APPROVAL FOR LANDSCAPE WORKS** |  | 2026-03-15 | 2026-07-16 |  |  |
|  | 3 | **ARCHITECTURE WORKS** |  | 2026-03-15 | 2026-05-19 |  |  |
| MLTX-02-005-EN-3810 |  | Shop DWG Approval for Landscape Layout | 21d | 2026-03-15 A | 2026-03-29 A | MLTX-02-005-EN-2700, MLTX-02-005-EN-3430, MLTX-02-005-EN-3970 | 100% |
| MLTX-02-005-EN-3820 |  | Shop DWG Approval for Hardscape Plan | 21d | 2026-03-15 A | 2026-03-29 A | MLTX-02-005-EN-2710, MLTX-02-005-EN-3970 | 100% |
| MLTX-02-005-EN-3840 |  | Shop DWG Approval for Landscape Details | 21d | 2026-03-15 A | 2026-03-29 A | MLTX-02-005-EN-2730, MLTX-02-005-EN-3970 | 100% |
| MLTX-02-005-EN-3830 |  | Shop DWG Approval for Planting Plan | 15d | 2026-03-19 A | 2026-05-19 A | MLTX-02-005-EN-2720, MLTX-02-005-EN-3970 | 100% |
|  | 1 | **MECHANCAL WORKS** |  | 2026-07-07 | 2026-07-07 |  |  |
| MLTX-02-005-EN-3880 |  | Shop DWG Approval for Irrigation Details | 30d | 2026-07-07 A | 2026-07-07 A | MLTX-02-005-EN-2770 | 100% |
| MLTX-02-005-EN-3920 |  | Shop DWG Approval for Irrigation Layout | 30d | 2026-07-07 A | 2026-07-07 A | MLTX-02-005-EN-2810, MLTX-02-005-EN-3880 | 100% |
|  | 2 | **ELECTRICAL WORKS** |  | 2026-07-16 | 2026-07-16 |  |  |
| MLTX-02-005-EN-3950 |  | Shop DWG Approval for Lighting Details | 30d | 2026-07-16 A | 2026-07-16 A | MLTX-02-005-EN-2840, MLTX-02-005-EN-3760 | 100% |
| MLTX-02-005-EN-3960 |  | Shop DWG Approval for Lighting Single Line Diagram | 30d | 2026-07-16 A | 2026-07-16 A | MLTX-02-005-EN-3730, MLTX-02-005-EN-2850, MLTX-02-005-EN-3760 | 100% |
| MLTX-02-005-EN-3970 |  | Shop DWG Approval for Lighting General Arrangement | 30d | 2026-07-16 A | 2026-07-16 A | MLTX-02-005-EN-2860 | 100% |
| MLTX-02-005-EN-3980 |  | Shop DWG Approval for Lighting Network Layout | 30d | 2026-07-16 A | 2026-07-16 A | MLTX-02-005-EN-2870, MLTX-02-005-EN-3760 | 100% |
|  | MTS | **METHOD STATEMENTS** |  | 2026-03-07 | 2026-09-12 |  |  |
|  | 1 | **METHOD STATEMENT SUBMITTAL** |  | 2026-03-07 | 2026-06-04 |  |  |
|  | 4 | **CIVIL WORKS** |  | 2026-03-09 | 2026-03-14 |  |  |
| MLTX-02-005-EN-4020 |  | Preparation & Submission of Method Statement for Earthwork | 15d | 2026-03-09 A | 2026-03-14 A | MLTX-02-005-MB-1340 | 100% |
| MLTX-02-005-EN-4030 |  | Preparation & Submission of Method Statement for Concrete Works | 30d | 2026-03-09 A | 2026-03-14 A | MLTX-02-005-MB-1340 | 100% |
| MLTX-02-005-EN-4040 |  | Preparation & Submission of Method Statement for Waterproofing | 21d | 2026-03-09 A | 2026-03-14 A | MLTX-02-005-MB-1340 | 100% |
|  | 1 | **ARCHITECTURE WORKS** |  | 2026-03-07 | 2026-06-02 |  |  |
| MLTX-02-005-EN-4070 |  | Preparation & Submission of Method Statement for Masonary Works | 30d | 2026-03-07 A | 2026-05-11 A | MLTX-02-005-MB-1340, MLTX-02-005-EN-4060 | 100% |
| MLTX-02-005-EN-4080 |  | Preparation & Submission of Method Statement for Tilling Works | 30d | 2026-03-07 A | 2026-05-17 A | MLTX-02-005-MB-1340, MLTX-02-005-EN-4130 | 100% |
| MLTX-02-005-EN-4090 |  | Preparation & Submission of Method Statement for Seats/Benches Works | 30d | 2026-03-07 A | 2026-06-02 A | MLTX-02-005-MB-1340, MLTX-02-005-EN-4130 | 100% |
| MLTX-02-005-EN-4100 |  | Preparation & Submission of Method Statement for Doors/Windows Works | 30d | 2026-03-07 A | 2026-06-02 A | MLTX-02-005-MB-1340, MLTX-02-005-EN-4380 | 100% |
| MLTX-02-005-EN-4110 |  | Preparation & Submission of Method Statement for Interlock/Curbstone Works | 30d | 2026-03-07 A | 2026-05-02 A | MLTX-02-005-MB-1340 | 100% |
| MLTX-02-005-EN-4120 |  | Preparation & Submission of Method Statement for Parking Works | 30d | 2026-03-07 A | 2026-05-24 A | MLTX-02-005-MB-1340, MLTX-02-005-EN-4100 | 100% |
| MLTX-02-005-EN-4130 |  | Preparation & Submission of Method Statement for Soft Scape Works | 30d | 2026-03-07 A | 2026-06-02 A | MLTX-02-005-MB-1340, MLTX-02-005-EN-4180 | 100% |
| MLTX-02-005-EN-4140 |  | Preparation & Submission of Method Statement for Fence Works | 30d | 2026-03-07 A | 2026-06-02 A | MLTX-02-005-MB-1340, MLTX-02-005-EN-4310 | 100% |
| MLTX-02-005-EN-4150 |  | Preparation & Submission of Method Statement for Air Dome Works | 30d | 2026-03-07 A | 2026-06-02 A | MLTX-02-005-MB-1340, MLTX-02-005-EN-4310 | 100% |
| MLTX-02-005-EN-4160 |  | Preparation & Submission of Method Statement for Metal Works | 30d | 2026-03-07 A | 2026-06-02 A | MLTX-02-005-MB-1340, MLTX-02-005-EN-4060 | 100% |
| MLTX-02-005-EN-4170 |  | Preparation & Submission of Method Statement for Partitions Works | 30d | 2026-03-07 A | 2026-06-02 A | MLTX-02-005-MB-1340, MLTX-02-005-EN-4310 | 100% |
| MLTX-02-005-EN-4180 |  | Preparation & Submission of Method Statement for Gypsum Board Works | 30d | 2026-03-07 A | 2026-06-02 A | MLTX-02-005-MB-1340, MLTX-02-005-EN-4220 | 100% |
| MLTX-02-005-EN-4060 |  | Preparation & Submission of Method Statement for Plastering Works | 15d | 2026-03-09 A | 2026-03-14 A | MLTX-02-005-MB-1340, MLTX-02-005-EN-4200 | 100% |
|  | 2 | **MECHANICAL WORKS** |  | 2026-03-12 | 2026-06-04 |  |  |
| MLTX-02-005-EN-4200 |  | Preparation & Submission of Method Statement for Sewage/Drainage System | 30d | 2026-03-12 A | 2026-05-02 A | MLTX-02-005-EN-4020 | 100% |
| MLTX-02-005-EN-4210 |  | Preparation & Submission of Method Statement for Water Supply System | 30d | 2026-03-12 A | 2026-05-02 A | MLTX-02-005-EN-4030 | 100% |
| MLTX-02-005-EN-4220 |  | Preparation & Submission of Method Statement for Fire Fighting System | 30d | 2026-03-12 A | 2026-06-04 A | MLTX-02-005-EN-4040 | 100% |
| MLTX-02-005-EN-4230 |  | Preparation & Submission of Method Statement for Irrigation System | 15d | 2026-03-12 A | 2026-06-04 A | MLTX-02-005-EN-4060, MLTX-02-005-EN-4210 | 100% |

| ID | WBS | Task | Duration | Start | Finish | Predecessors | Complete |
| --- | --- | --- | --- | --- | --- | --- | --- |
| MLTX-02-005-EN-4240 |  | Preparation & Submission of Method Statement for HVAC System | 30d | 2026-03-12 A | 2026-06-04 A | MLTX-02-005-EN-4070, MLTX-02-005-EN-4380 | 100% |
|  | 5 | **ELECTRICAL WORKS** |  | 2026-03-12 | 2026-05-11 |  |  |
| MLTX-02-005-EN-4260 |  | Preparation & Submission of Method Statement for Telecommunication & Data System | 30d | 2026-03-12 A | 2026-05-11 A | MLTX-02-005-EN-4140, MLTX-02-005-EN-4170 | 100% |
| MLTX-02-005-EN-4270 |  | Preparation & Submission of Method Statement for CCTV System | 30d | 2026-03-12 A | 2026-05-11 A | MLTX-02-005-EN-4150, MLTX-02-005-EN-4140, MLTX-02-005-EN-4170 | 100% |
| MLTX-02-005-EN-4280 |  | Preparation & Submission of Method Statement for Lighting Works | 30d | 2026-03-12 A | 2026-05-11 A | MLTX-02-005-EN-4160, MLTX-02-005-EN-4140 | 100% |
| MLTX-02-005-EN-4290 |  | Preparation & Submission of Method Statement for Earthing/Lightning Works | 30d | 2026-03-12 A | 2026-05-06 A | MLTX-02-005-EN-4170, MLTX-02-005-EN-4600 | 100% |
| MLTX-02-005-EN-4300 |  | Preparation & Submission of Method Statement for Panel Boards Works | 30d | 2026-03-12 A | 2026-05-11 A | MLTX-02-005-EN-4180, MLTX-02-005-EN-4170 | 100% |
| MLTX-02-005-EN-4310 |  | Preparation & Submission of Method Statement for Electrical Conduits/Pulling Works | 30d | 2026-03-12 A | 2026-05-11 A | MLTX-02-005-EN-4110 | 100% |
| MLTX-02-005-EN-4330 |  | Preparation & Submission of Method Statement for Lighting Poles Installation | 30d | 2026-03-12 A | 2026-05-11 A | MLTX-02-005-EN-4130, MLTX-02-005-EN-4260 | 100% |
|  | 2 | **METHOD STATEMENT APPROVAL** |  | 2026-03-12 | 2026-09-12 |  |  |
|  | 4 | **CIVIL WORKS** |  | 2026-03-12 | 2026-04-30 |  |  |
| MLTX-02-005-EN-4360 |  | Approval of Method Statement for Earthwork | 15d | 2026-03-12 A | 2026-04-30 A | MLTX-02-005-EN-4020, MLTX-02-005-EN-4380 | 100% |
| MLTX-02-005-EN-4370 |  | Approval of Method Statement for Concrete Works | 30d | 2026-03-12 A | 2026-04-30 A | MLTX-02-005-EN-4030, MLTX-02-005-EN-4360, MLTX-02-005-EN-4130 | 100% |
| MLTX-02-005-EN-4380 |  | Approval of Method Statement for Waterproofing | 21d | 2026-03-12 A | 2026-04-30 A | MLTX-02-005-EN-4040, MLTX-02-005-EN-4540 | 100% |
|  | 1 | **ARCHITECTURE WORKS** |  | 2026-03-12 | 2026-09-12 |  |  |
| MLTX-02-005-EN-4400 |  | Approval of Method Statement for Plastering Works | 30d | 2026-03-12 A | 2026-04-30 A | MLTX-02-005-EN-4060, MLTX-02-005-EN-4480 | 100% |
| MLTX-02-005-EN-4410 |  | Approval of Method Statement for Masonary Works | 30d | 2026-03-12 A | 2026-05-24 A | MLTX-02-005-EN-4070, MLTX-02-005-EN-4600 | 100% |
| MLTX-02-005-EN-4420 |  | Approval of Method Statement for Tilling Works | 30d | 2026-03-12 A | 2026-05-24 A | MLTX-02-005-EN-4080, MLTX-02-005-EN-4480, MLTX-02-005-EN-4090 | 100% |
| MLTX-02-005-EN-4450 |  | Approval of Method Statement for Interlock/Curbstone Works | 30d | 2026-03-12 A | 2026-05-05 A | MLTX-02-005-EN-4110, MLTX-02-005-EN-4480 | 100% |
| MLTX-02-005-EN-4460 |  | Approval of Method Statement for Parking Works | 30d | 2026-05-20 A | 2026-05-20 A | MLTX-02-005-EN-4120, MLTX-02-005-EN-4470 | 100% |
| MLTX-02-005-EN-4510 |  | Approval of Method Statement for Partitions Works | 30d | 2026-06-29 A | 2026-06-29 A | MLTX-02-005-EN-4170, MLTX-02-005-EN-4670 | 100% |
| MLTX-02-005-EN-4470 |  | Approval of Method Statement for Soft Scape Works | 30d | 2026-07-19 A | 2026-07-19 A | MLTX-02-005-EN-4130, MLTX-02-005-EN-4480 | 100% |
| MLTX-02-005-EN-4480 |  | Approval of Method Statement for Fence Works | 20d | 2026-07-19 A | 2026-07-19 A | MLTX-02-005-EN-4140, MLTX-02-005-EN-7030 | 100% |
| MLTX-02-005-EN-4520 |  | Approval of Method Statement for Gypsum Board Works | 30d | 2026-08-20 A | 2026-08-20 A | MLTX-02-005-EN-4180, MLTX-02-005-EN-4510 | 100% |
| MLTX-02-005-EN-4430 |  | Approval of Method Statement for Seats/Benches Works | 30d | 2026-09-12 A | 2026-09-12 A | MLTX-02-005-EN-4090, MLTX-02-005-EN-4400, MLTX-02-005-EN-4450 | 100% |
| MLTX-02-005-EN-4440 |  | Approval of Method Statement for Doors/Windows Works | 30d | 2026-09-12 A | 2026-09-12 A | MLTX-02-005-EN-4100, MLTX-02-005-EN-3010 | 100% |
| MLTX-02-005-EN-4490 |  | Approval of Method Statement for Air Dome Works | 30d | 2026-09-12 A | 2026-09-12 A | MLTX-02-005-EN-4150, MLTX-02-005-EN-4470 | 100% |
|  | 2 | **MECHANICAL WORKS** |  | 2026-06-14 | 2026-08-26 |  |  |
| MLTX-02-005-EN-4540 |  | Approval of Method Statement for Sewage/Drainage System | 30d | 2026-06-14 A | 2026-06-14 A | MLTX-02-005-EN-4200 | 100% |
| MLTX-02-005-EN-4550 |  | Approval of Method Statement for Water Supply System | 30d | 2026-06-14 A | 2026-06-14 A | MLTX-02-005-EN-4210, MLTX-02-005-EN-4480 | 100% |
| MLTX-02-005-EN-4570 |  | Approval of Method Statement for Irrigation System | 15d | 2026-06-14 A | 2026-06-14 A | MLTX-02-005-EN-4230, MLTX-02-005-EN-4540 | 100% |
| MLTX-02-005-EN-4580 |  | Approval of Method Statement for HVAC System | 30d | 2026-07-14 A | 2026-07-22 A | MLTX-02-005-EN-4240, MLTX-02-005-EN-4480 | 100% |
| MLTX-02-005-EN-4560 |  | Approval of Method Statement for Fire Fighting System | 30d | 2026-08-26 A | 2026-08-26 A | MLTX-02-005-EN-4220 | 100% |
|  | 5 | **ELECTRICAL WORKS** |  | 2026-06-06 | 2026-06-14 |  |  |
| MLTX-02-005-EN-4600 |  | Approval of Method Statement for Electrical Conduits/Pulling Works | 30d | 2026-06-06 A | 2026-06-06 A | MLTX-02-005-EN-4310 | 100% |
| MLTX-02-005-EN-4620 |  | Approval of Method Statement for Lighting Poles Installation | 30d | 2026-06-14 A | 2026-06-14 A | MLTX-02-005-EN-4330, MLTX-02-005-EN-4660 | 100% |
| MLTX-02-005-EN-4630 |  | Approval of Method Statement for Telecommunication & Data System | 30d | 2026-06-14 A | 2026-06-14 A | MLTX-02-005-EN-4260, MLTX-02-005-EN-4480 | 100% |
| MLTX-02-005-EN-4640 |  | Approval of Method Statement for CCTV System | 30d | 2026-06-14 A | 2026-06-14 A | MLTX-02-005-EN-4270, MLTX-02-005-EN-4480, MLTX-02-005-EN-4290 | 100% |
| MLTX-02-005-EN-4650 |  | Approval of Method Statement for Lighting Works | 30d | 2026-06-14 A | 2026-06-14 A | MLTX-02-005-EN-4280, MLTX-02-005-EN-4480 | 100% |
| MLTX-02-005-EN-4660 |  | Approval of Method Statement for Earthing/Lightning Works | 30d | 2026-06-14 A | 2026-06-14 A | MLTX-02-005-EN-4290, MLTX-02-005-EN-2980 | 100% |
| MLTX-02-005-EN-4670 |  | Approval of Method Statement for Panel Boards Works | 30d | 2026-06-14 A | 2026-06-14 A | MLTX-02-005-EN-3740, MLTX-02-005-EN-4300 | 100% |
|  | PREQ | **PRE-QUALIFICATION & MATERIAL** |  | 2026-03-07 | 2026-09-12 |  |  |
|  | PRE | **PRE-QUALIFICATION** |  | 2026-03-07 | 2026-06-07 |  |  |
|  | TOI | **TOILET/SERVICE WORKS** |  | 2026-03-07 | 2026-06-07 |  |  |
|  | 1 | **STEEL REINFORCEMENT** |  | 2026-03-09 | 2026-03-19 |  |  |
| MLTX-02-005-EN-4720 |  | Pre-Qualification Submittal for Steel Reinforcement | 15d | 2026-03-09 A | 2026-03-11 A | MLTX-02-005-MB-1340 | 100% |
| MLTX-02-005-EN-4730 |  | Pre-Qualification Approval for Steel Reinforcement | 15d | 2026-03-12 A | 2026-03-19 A | MLTX-02-005-EN-4720 | 100% |
|  | 2 | **READY MIX CONCRETE** |  | 2026-03-09 | 2026-03-19 |  |  |
| MLTX-02-005-EN-4750 |  | Pre-Qualification Submittal for Ready Mixed Concrete | 15d | 2026-03-09 A | 2026-03-11 A | MLTX-02-005-EN-4720 SS, MLTX-02-005-MB-1340 | 100% |
| MLTX-02-005-EN-4760 |  | Pre-Qualification Approval of Ready Mixed Concrete | 15d | 2026-03-12 A | 2026-03-19 A | MLTX-02-005-EN-4750 | 100% |
|  | 3 | **CONCRETE BLOCKS** |  | 2026-03-09 | 2026-03-19 |  |  |
| MLTX-02-005-EN-4780 |  | Pre-Qualification Submittal for Concrete Blocks | 15d | 2026-03-09 A | 2026-03-11 A | MLTX-02-005-MB-1340, MLTX-02-005-EN-4750 SS | 100% |
| MLTX-02-005-EN-4790 |  | Pre-Qualification Approval for Concrete Blocks | 15d | 2026-03-12 A | 2026-03-19 A | MLTX-02-005-EN-4780, MLTX-02-005-EN-5080 | 100% |
|  | 4 | **WATER PROOFING** |  | 2026-03-09 | 2026-03-19 |  |  |
| MLTX-02-005-EN-4810 |  | Pre-Qualification Submittal for Water Proofing | 15d | 2026-03-09 A | 2026-03-11 A | MLTX-02-005-MB-1340, MLTX-02-005-EN-4780 SS | 100% |
| MLTX-02-005-EN-4820 |  | Pre-Qualification Approval for Water Proofing | 30d | 2026-03-12 A | 2026-03-19 A | MLTX-02-005-EN-4810, MLTX-02-005-EN-5390 | 100% |
|  | 6 | **FLOOR/WALL TILES** |  | 2026-03-07 | 2026-04-07 |  |  |
| MLTX-02-005-EN-4840 |  | Pre-Qualification Submittal for Tilling Materials | 15d | 2026-03-07 A | 2026-03-29 A | MLTX-02-005-EN-4810 SS, MLTX-02-005-MB-1340 | 100% |
| MLTX-02-005-EN-4850 |  | Pre-Qualification Approval for Tailling Material | 15d | 2026-03-10 A | 2026-04-07 A | MLTX-02-005-EN-4840, MLTX-02-005-EN-5080 | 100% |
|  | 7 | **SUSPENDED CEILING** |  | 2026-03-09 | 2026-03-19 |  |  |
| MLTX-02-005-EN-4870 |  | Pre-Qualification Submittal for Suspend Ceiling | 15d | 2026-03-09 A | 2026-03-11 A | MLTX-02-005-EN-4840 SS, MLTX-02-005-MB-1340 | 100% |
| MLTX-02-005-EN-4880 |  | Pre-Qualification Approval for Suspend Ceiling | 15d | 2026-03-12 A | 2026-03-19 A | MLTX-02-005-EN-4870, MLTX-02-005-EN-5080 | 100% |
|  | 8 | **DOORS/WINDOWS** |  | 2026-03-09 | 2026-03-19 |  |  |
| MLTX-02-005-EN-4900 |  | Pre-Qualification Submittal for Doors/Windows | 15d | 2026-03-09 A | 2026-03-11 A | MLTX-02-005-MB-1340, MLTX-02-005-EN-4870 SS | 100% |
| MLTX-02-005-EN-4910 |  | Pre-Qualification Approval for Doors/Windows | 15d | 2026-03-12 A | 2026-03-19 A | MLTX-02-005-EN-4900, MLTX-02-005-EN-5080 | 100% |
|  | 9 | **FURNITURES** |  | 2026-03-07 | 2026-04-07 |  |  |
| MLTX-02-005-EN-4930 |  | Pre-Qualification Submittal for Furnitures | 15d | 2026-03-07 A | 2026-04-04 A | MLTX-02-005-EN-4900 SS, MLTX-02-005-MB-1340 | 100% |
| MLTX-02-005-EN-4940 |  | Pre-Qualification Approval for Furnitures | 15d | 2026-03-10 A | 2026-04-07 A | MLTX-02-005-EN-4930, MLTX-02-005-EN-5080 | 100% |
|  | 10 | **SANITARY FIXTURES** |  | 2026-03-07 | 2026-04-09 |  |  |
| MLTX-02-005-EN-4960 |  | Pre-Qualification Submittal for Sanitary Fixtures | 15d | 2026-03-07 A | 2026-04-05 A | MLTX-02-005-EN-4930 SS, MLTX-02-005-MB-1340 | 100% |

| ID | WBS | Task | Duration | Start | Finish | Predecessors | Complete |
| --- | --- | --- | --- | --- | --- | --- | --- |
| MLTX-02-005-EN-4970 |  | Pre-Qualification Approval for Sanitary Fixtures | 15d | 2026-03-10 A | 2026-04-09 A | MLTX-02-005-EN-4960, MLTX-02-005-EN-4760 | 100% |
|  | 11 | **WATER SUPPLY PIPES** |  | 2026-03-07 | 2026-03-29 |  |  |
| MLTX-02-005-EN-4990 |  | Pre-Qualification Submittal for Water Supply Pipes | 15d | 2026-03-07 A | 2026-03-23 A | MLTX-02-005-EN-4960 SS, MLTX-02-005-MB-1340 | 100% |
| MLTX-02-005-EN-5000 |  | Pre-Qualification Approval for Water Supply Pipes | 15d | 2026-03-10 A | 2026-03-29 A | MLTX-02-005-EN-4990, MLTX-02-005-EN-5080 | 100% |
|  | 12 | **SEWAGE/DRAINAGE PIPES** |  | 2026-03-07 | 2026-03-29 |  |  |
| MLTX-02-005-EN-5020 |  | Pre-Qualification Submittal for Sewage/Drainage Pipes | 15d | 2026-03-07 A | 2026-03-23 A | MLTX-02-005-EN-4990 SS | 100% |
| MLTX-02-005-EN-5030 |  | Pre-Qualification Approval for Sewage/Drainage Pipes | 15d | 2026-03-10 A | 2026-03-29 A | MLTX-02-005-EN-5020 | 100% |
|  | 16 | **PACKAGE AC UNITS** |  | 2026-03-10 | 2026-04-07 |  |  |
| MLTX-02-005-EN-5050 |  | Pre-Qualification Submittal for Package AC Units | 15d | 2026-03-10 A | 2026-04-01 A | MLTX-02-005-EN-4720, MLTX-02-005-EN-4970 | 100% |
| MLTX-02-005-EN-5060 |  | Pre-Qualification Approval for Package AC Units | 15d | 2026-03-14 A | 2026-04-07 A | MLTX-02-005-EN-5050, MLTX-02-005-EN-5330 | 100% |
|  | 17 | **AIR DIFUSSERS/GRILLS** |  | 2026-03-10 | 2026-06-07 |  |  |
| MLTX-02-005-EN-5080 |  | Pre-Qualification Submittal for Air Diffusers/Grills | 15d | 2026-03-10 A | 2026-05-25 A | MLTX-02-005-EN-4750, MLTX-02-005-EN-5390 | 100% |
| MLTX-02-005-EN-5090 |  | Pre-Qualification Approval for Air Diffusers/Grills | 15d | 2026-03-14 A | 2026-06-07 A | MLTX-02-005-EN-5080, MLTX-02-005-EN-5690 | 100% |
|  | 18 | **GALVANIZED DUCTS** |  | 2026-03-10 | 2026-04-30 |  |  |
| MLTX-02-005-EN-5110 |  | Pre-Qualification Submittal for Galvanized Ducts | 15d | 2026-03-10 A | 2026-04-25 A | MLTX-02-005-EN-4780 | 100% |
| MLTX-02-005-EN-5120 |  | Pre-Qualification Approval for Galvanized Ducts | 15d | 2026-03-14 A | 2026-04-30 A | MLTX-02-005-EN-5110 | 100% |
|  | 19 | **EXHAUST FANS** |  | 2026-03-10 | 2026-04-08 |  |  |
| MLTX-02-005-EN-5140 |  | Pre-Qualification Submittal for Exhaust Fans | 15d | 2026-03-10 A | 2026-04-01 A | MLTX-02-005-EN-4810 | 100% |
| MLTX-02-005-EN-5150 |  | Pre-Qualification Approval for Exhaust Fans | 15d | 2026-03-14 A | 2026-04-08 A | MLTX-02-005-EN-5140 | 100% |
|  | 13 | **LIGHTING FIXTURES** |  | 2026-03-10 | 2026-06-07 |  |  |
| MLTX-02-005-EN-5170 |  | Pre-Qualification Submittal for Lighting Fixtures | 15d | 2026-03-10 A | 2026-05-25 A | MLTX-02-005-EN-4840 | 100% |
| MLTX-02-005-EN-5180 |  | Pre-Qualification Approval for Lighting Fixtures | 15d | 2026-03-14 A | 2026-06-07 A | MLTX-02-005-EN-5170 | 100% |
|  | 14 | **SWITCHES/SOCKETS** |  | 2026-03-10 | 2026-06-07 |  |  |
| MLTX-02-005-EN-5200 |  | Pre-Qualification Submittal for Switches/Sockets | 15d | 2026-03-10 A | 2026-05-25 A | MLTX-02-005-EN-4870, MLTX-02-005-EN-5080 | 100% |
| MLTX-02-005-EN-5210 |  | Pre-Qualification Approval for Switches/Sockets | 15d | 2026-03-14 A | 2026-06-07 A | MLTX-02-005-EN-5200, MLTX-02-005-EN-5080 | 100% |
|  | 15 | **EARTHING SYSTEM** |  | 2026-03-10 | 2026-05-11 |  |  |
| MLTX-02-005-EN-5230 |  | Pre-Qualification Submittal for Earthing System | 15d | 2026-03-10 A | 2026-05-09 A | MLTX-02-005-EN-4900, MLTX-02-005-EN-5080 | 100% |
| MLTX-02-005-EN-5240 |  | Pre-Qualification Approval for Earthing System | 15d | 2026-03-14 A | 2026-05-11 A | MLTX-02-005-EN-5230, MLTX-02-005-EN-4820 | 100% |
|  | 5 | **DISTRIBUTION PANNELS** |  | 2026-03-10 | 2026-05-06 |  |  |
| MLTX-02-005-EN-5260 |  | Pre-Qualification Submittal for Distribution Panels | 15d | 2026-03-10 A | 2026-04-30 A | MLTX-02-005-EN-4930, MLTX-02-005-EN-5210 | 100% |
| MLTX-02-005-EN-5270 |  | Pre-Qualification Approval for Distribution Panels | 15d | 2026-03-14 A | 2026-05-06 A | MLTX-02-005-EN-5260, MLTX-02-005-EN-5670 | 100% |
|  | PLG | **PLAYGROUND WORKS** |  | 2026-03-07 | 2026-06-07 |  |  |
|  | 5 | **PVC MEMBRANE** |  | 2026-03-07 | 2026-05-24 |  |  |
| MLTX-02-005-EN-5300 |  | Pre-Qualification Submittal for PVC Membrane | 15d | 2026-03-07 A | 2026-05-24 A | MLTX-02-005-EN-5020 SS | 100% |
| MLTX-02-005-EN-5310 |  | Pre-Qualification Approval for PVC Membrane | 21d | 2026-03-10 A | 2026-05-20 A | MLTX-02-005-EN-5300, MLTX-02-005-EN-5730 | 100% |
|  | 6 | **STEEL TENSION CABLES** |  | 2026-03-07 | 2026-05-24 |  |  |
| MLTX-02-005-EN-5330 |  | Pre-Qualification Submittal for Steel Tension Cables | 15d | 2026-03-07 A | 2026-05-20 A | MLTX-02-005-EN-5300 SS, MLTX-02-005-EN-5610 | 100% |
| MLTX-02-005-EN-5340 |  | Pre-Qualification Approval for Steel Tension Cables | 15d | 2026-03-10 A | 2026-05-24 A | MLTX-02-005-EN-5330, MLTX-02-005-EN-5700 | 100% |
|  | 7 | **EMERGENCY DOORS** |  | 2026-03-07 | 2026-05-24 |  |  |
| MLTX-02-005-EN-5360 |  | Pre-Qualification Submittal for Emergency Doors | 15d | 2026-03-07 A | 2026-05-20 A | MLTX-02-005-MB-1340, MLTX-02-005-EN-7810 | 100% |
| MLTX-02-005-EN-5370 |  | Pre-Qualification Approval for Emergency Doors | 15d | 2026-03-10 A | 2026-05-24 A | MLTX-02-005-EN-5360, MLTX-02-005-EN-7150 | 100% |
|  | 8 | **PRESSURE UNITS** |  | 2026-03-07 | 2026-05-24 |  |  |
| MLTX-02-005-EN-5390 |  | Pre-Qualification Submittal for Pressure Units | 15d | 2026-03-07 A | 2026-05-20 A | MLTX-02-005-MB-1340, MLTX-02-005-EN-5610 | 100% |
| MLTX-02-005-EN-5400 |  | Pre-Qualification Approval for Pressure Units | 15d | 2026-03-10 A | 2026-05-24 A | MLTX-02-005-EN-5390, MLTX-02-005-EN-5690 | 100% |
|  | 9 | **AIR LOCK DOORS** |  | 2026-03-07 | 2026-05-24 |  |  |
| MLTX-02-005-EN-5420 |  | Pre-Qualification Submittal for Lock Doors | 15d | 2026-03-07 A | 2026-05-20 A | MLTX-02-005-MB-1340, MLTX-02-005-EN-5610 | 100% |
| MLTX-02-005-EN-5430 |  | Pre-Qualification Approval for Lock Doors | 15d | 2026-03-10 A | 2026-05-24 A | MLTX-02-005-EN-5420, MLTX-02-005-EN-5360 | 100% |
|  | 15 | **ARTIFICIAL TURF** |  | 2026-03-07 | 2026-04-09 |  |  |
| MLTX-02-005-EN-5450 |  | Pre-Qualification Submittal for Artificial TURF | 15d | 2026-03-07 A | 2026-03-29 A | MLTX-02-005-MB-1340 | 100% |
| MLTX-02-005-EN-5460 |  | Pre-Qualification Approval for Artificial TURF | 30d | 2026-03-10 A | 2026-04-09 A | MLTX-02-005-EN-5450 | 100% |
|  | 20 | **RUBBER GRANULES** |  | 2026-03-07 | 2026-05-10 |  |  |
| MLTX-02-005-EN-5480 |  | Pre-Qualification Submittal for Rubber Granules | 15d | 2026-03-07 A | 2026-05-06 A | MLTX-02-005-MB-1340, MLTX-02-005-EN-5610 | 100% |
| MLTX-02-005-EN-5490 |  | Pre-Qualification Approval for Rubber Granules | 21d | 2026-03-10 A | 2026-05-10 A | MLTX-02-005-EN-5480, MLTX-02-005-EN-5730 | 100% |
|  | 21 | **PADEL GLASS** |  | 2026-03-07 | 2026-05-10 |  |  |
| MLTX-02-005-EN-5510 |  | Pre-Qualification Submittal for Padel Glass | 15d | 2026-03-07 A | 2026-05-06 A | MLTX-02-005-MB-1340, MLTX-02-005-EN-5610 | 100% |
| MLTX-02-005-EN-5520 |  | Pre-Qualification Approval for Padel Glass | 15d | 2026-03-10 A | 2026-05-10 A | MLTX-02-005-EN-5510, MLTX-02-005-EN-5700 | 100% |
|  | 22 | **PADEL WIRE MESH/STEEL SETS** |  | 2026-03-07 | 2026-05-10 |  |  |
| MLTX-02-005-EN-5540 |  | Pre-Qualification Submittal for Wire Mesh/Steel Sets | 15d | 2026-03-07 A | 2026-05-06 A | MLTX-02-005-MB-1340 | 100% |
| MLTX-02-005-EN-5550 |  | Pre-Qualification Approval for Wire Mesh/Steel Sets | 15d | 2026-03-10 A | 2026-05-10 A | MLTX-02-005-EN-5540, MLTX-02-005-EN-5640 | 100% |
|  | 1 | **AGGREGATE BASE COURSE** |  | 2026-03-07 | 2026-04-26 |  |  |
| MLTX-02-005-EN-5570 |  | Pre-Qualification Submittal for Aggregate Base Course | 15d | 2026-03-07 A | 2026-04-19 A | MLTX-02-005-MB-1340 | 100% |
| MLTX-02-005-EN-5580 |  | Pre-Qualification Approval for Aggregate Base Course | 21d | 2026-03-10 A | 2026-04-26 A | MLTX-02-005-EN-5570 | 100% |
|  | 16 | **PACKAGE AC UNITS** |  | 2026-03-10 | 2026-04-07 |  |  |
| MLTX-02-005-EN-5690 |  | Pre-Qualification Submittal for Package AC Units | 15d | 2026-03-10 A | 2026-04-01 A | MLTX-02-005-EN-5390, MLTX-02-005-EN-5420 | 100% |
| MLTX-02-005-EN-5700 |  | Pre-Qualification Approval for Package AC Units | 15d | 2026-03-14 A | 2026-04-07 A | MLTX-02-005-EN-5690, MLTX-02-005-EN-5780 | 100% |
|  | 17 | **AIR DIFUSSERS/GRILLS** |  | 2026-03-10 | 2026-04-30 |  |  |
| MLTX-02-005-EN-5720 |  | Pre-Qualification Submittal for Air Difussers/Grills | 15d | 2026-03-10 A | 2026-04-26 A | MLTX-02-005-EN-5420, MLTX-02-005-EN-5360 | 100% |
| MLTX-02-005-EN-5730 |  | Pre-Qualification Approval for Air Difussers/Grills | 15d | 2026-03-14 A | 2026-04-30 A | MLTX-02-005-EN-5720, MLTX-02-005-EN-5360 | 100% |
|  | 2 | **BITUMINOUS BASE & WEARING COURSE** |  | 2026-03-10 | 2026-04-26 |  |  |
| MLTX-02-005-EN-5600 |  | Pre-Qualification Submittal for Bituminous Base & Wearing Cource | 15d | 2026-03-10 A | 2026-04-19 A | MLTX-02-005-EN-5300 | 100% |

| ID | WBS | Task | Duration | Start | Finish | Predecessors | Complete |
| --- | --- | --- | --- | --- | --- | --- | --- |
| MLTX-02-005-EN-5610 |  | Pre-Qualification Approval for the Site | 15d | 2026-03-14 A | 2026-04-26 A | MLTX-02-005-EN-5600 | 100% |
|  | 3 | **INTERLOCKING PAVING** |  | 2026-03-12 | 2026-03-24 |  |  |
| MLTX-02-005-EN-5630 |  | Pre-Qualification Submittal for Interlocking Block Pavers | 15d | 2026-03-12 A | 2026-03-15 A | MLTX-02-005-EN-5330, MLTX-02-005-EN-5390 | 100% |
| MLTX-02-005-EN-5640 |  | Pre-Qualification Approval for Interlocking Block Pavers | 15d | 2026-03-16 A | 2026-03-24 A | MLTX-02-005-EN-5630, MLTX-02-005-EN-5690 | 100% |
|  | 4 | **MARKING PAINT** |  | 2026-03-10 | 2026-05-09 |  |  |
| MLTX-02-005-EN-5660 |  | Pre-Qualification Submittal for Marking Paint | 15d | 2026-03-10 A | 2026-05-05 A | MLTX-02-005-EN-5360, MLTX-02-005-EN-5370 | 100% |
| MLTX-02-005-EN-5670 |  | Pre-Qualification Approval for Marking Paint | 15d | 2026-03-14 A | 2026-05-09 A | MLTX-02-005-EN-5660, MLTX-02-005-EN-7030 | 100% |
|  | 18 | **GALVANIZED DUCTS** |  | 2026-03-10 | 2026-04-30 |  |  |
| MLTX-02-005-EN-5750 |  | Pre-Qualification Submittal for Galvanized Duct | 15d | 2026-03-10 A | 2026-04-26 A | MLTX-02-005-EN-5720 SS, MLTX-02-005-EN-5360 | 100% |
| MLTX-02-005-EN-5760 |  | Pre-Qualification Approval for Galvanized Duct | 15d | 2026-03-14 A | 2026-04-30 A | MLTX-02-005-EN-5750, MLTX-02-005-EN-5360 | 100% |
|  | 19 | **EXHAUST FANS** |  | 2026-03-10 | 2026-04-08 |  |  |
| MLTX-02-005-EN-5780 |  | Pre-Qualification Submittal for Exhaust Fans | 15d | 2026-03-10 A | 2026-04-01 A | MLTX-02-005-EN-5450, MLTX-02-005-EN-5420 | 100% |
| MLTX-02-005-EN-5790 |  | Pre-Qualification Approval for Exhaust Fans | 15d | 2026-03-14 A | 2026-04-08 A | MLTX-02-005-EN-5780, MLTX-02-005-EN-5360 | 100% |
|  | 10 | **DISTRIBUTION BOARDS** |  | 2026-03-10 | 2026-06-07 |  |  |
| MLTX-02-005-EN-5810 |  | Pre-Qualification Submittal for Distribution Boards | 15d | 2026-03-10 A | 2026-05-25 A | MLTX-02-005-EN-5420, MLTX-02-005-EN-5360 | 100% |
| MLTX-02-005-EN-5820 |  | Pre-Qualification Approval for Distribution Boards | 15d | 2026-03-14 A | 2026-06-07 A | MLTX-02-005-EN-5810, MLTX-02-005-EN-5360 | 100% |
|  | 11 | **POWER CABLES** |  | 2026-03-10 | 2026-05-11 |  |  |
| MLTX-02-005-EN-5840 |  | Pre-Qualification Submittal for Power Cables | 15d | 2026-03-10 A | 2026-05-09 A | MLTX-02-005-EN-5540 | 100% |
| MLTX-02-005-EN-5850 |  | Pre-Qualification Approval for Power Cables | 15d | 2026-03-14 A | 2026-05-11 A | MLTX-02-005-EN-5840 | 100% |
|  | 12 | **LIGHT FIXTURES** |  | 2026-03-10 | 2026-06-07 |  |  |
| MLTX-02-005-EN-5870 |  | Pre-Qualification Submittal for Light Fixtures | 15d | 2026-03-10 A | 2026-05-25 A | MLTX-02-005-EN-5480, MLTX-02-005-EN-5420 | 100% |
| MLTX-02-005-EN-5880 |  | Pre-Qualification Approval for Light Fixtures | 15d | 2026-03-14 A | 2026-06-07 A | MLTX-02-005-EN-5870, MLTX-02-005-EN-5360 | 100% |
|  | 13 | **CCTV MATERIALS** |  | 2026-03-10 | 2026-06-07 |  |  |
| MLTX-02-005-EN-5900 |  | Pre-Qualification Submittal for CCTV | 15d | 2026-03-10 A | 2026-05-25 A | MLTX-02-005-EN-5510, MLTX-02-005-EN-5390 | 100% |
| MLTX-02-005-EN-5910 |  | Pre-Qualification Approval for CCTV | 15d | 2026-03-14 A | 2026-06-07 A | MLTX-02-005-EN-5900, MLTX-02-005-EN-5690 | 100% |
|  | 14 | **POWER OUTLETS/SWITCHES** |  | 2026-03-10 | 2026-06-07 |  |  |
| MLTX-02-005-EN-5930 |  | Pre-Qualification Submittal for Power Outlets/Switches | 15d | 2026-03-10 A | 2026-05-25 A | MLTX-02-005-EN-5570, MLTX-02-005-EN-5600 | 100% |
| MLTX-02-005-EN-5940 |  | Pre-Qualification Approval for Power Outlets/Switches | 15d | 2026-03-14 A | 2026-06-07 A | MLTX-02-005-EN-5930, MLTX-02-005-EN-5610 | 100% |
|  | LSC | **LANDSCAPE WORKS** |  | 2026-03-10 | 2026-05-11 |  |  |
|  | 7 | **INTERLOCKING PAVING** |  | 2026-03-12 | 2026-03-24 |  |  |
| MLTX-02-005-EN-5970 |  | Pre-Qualification Submittal for Interlocking Block Pavers | 15d | 2026-03-12 A | 2026-03-15 A | MLTX-02-005-EN-5570, MLTX-02-005-EN-6240 | 100% |
| MLTX-02-005-EN-5980 |  | Pre-Qualification Approval for Interlocking Block Pavers | 15d | 2026-03-16 A | 2026-03-24 A | MLTX-02-005-EN-5970, MLTX-02-005-EN-6250 | 100% |
|  | 9 | **CURBSTONE** |  | 2026-03-12 | 2026-03-24 |  |  |
| MLTX-02-005-EN-6000 |  | Pre-Qualification Submittal for Curbstone | 15d | 2026-03-12 A | 2026-03-15 A | MLTX-02-005-EN-5570 | 100% |
| MLTX-02-005-EN-6010 |  | Pre-Qualification Approval for Curbstone | 15d | 2026-03-16 A | 2026-03-24 A | MLTX-02-005-EN-6000 | 100% |
|  | 1 | **PAVEMENT MARKING** |  | 2026-03-10 | 2026-05-09 |  |  |
| MLTX-02-005-EN-6030 |  | Pre-Qualification Submittal for Pavement Markings | 15d | 2026-03-10 A | 2026-05-05 A | MLTX-02-005-EN-5570, MLTX-02-005-EN-6240 | 100% |
| MLTX-02-005-EN-6040 |  | Pre-Qualification Approval for Pavement Markings | 15d | 2026-03-14 A | 2026-05-09 A | MLTX-02-005-EN-6030, MLTX-02-005-EN-6250 | 100% |
|  | 2 | **TRAFFIC SIGNS** |  | 2026-03-10 | 2026-05-09 |  |  |
| MLTX-02-005-EN-6060 |  | Pre-Qualification Submittal for Traffic Signs | 15d | 2026-03-10 A | 2026-05-05 A | MLTX-02-005-EN-5570, MLTX-02-005-EN-6250 | 100% |
| MLTX-02-005-EN-6070 |  | Pre-Qualification Approval for Traffic Signs | 15d | 2026-03-14 A | 2026-05-09 A | MLTX-02-005-EN-6060, MLTX-02-005-EN-6160 | 100% |
|  | 3 | **IRRIGATION PIPES/SPRINKLERS** |  | 2026-03-10 | 2026-05-05 |  |  |
| MLTX-02-005-EN-6090 |  | Pre-Qualification Submittal for Irrigation Pipes/Sprinkles | 15d | 2026-03-10 A | 2026-04-14 A | MLTX-02-005-EN-5570 | 100% |
| MLTX-02-005-EN-6100 |  | Pre-Qualification Approval for Irrigation Pipes/Sprinkles | 15d | 2026-03-14 A | 2026-05-05 A | MLTX-02-005-EN-6090 | 100% |
|  | 5 | **AGRICULTURE SOIL** |  | 2026-03-10 | 2026-05-05 |  |  |
| MLTX-02-005-EN-6120 |  | Pre-Qualification Submittal for Agriculture Soil | 15d | 2026-03-10 A | 2026-04-14 A | MLTX-02-005-EN-5570, MLTX-02-005-EN-6060 | 100% |
| MLTX-02-005-EN-6130 |  | Pre-Qualification Approval for Agriculture Soil | 15d | 2026-03-14 A | 2026-05-05 A | MLTX-02-005-EN-6120, MLTX-02-005-EN-6070 | 100% |
|  | 8 | **TRACK SURFACE** |  | 2026-03-10 | 2026-05-05 |  |  |
| MLTX-02-005-EN-6150 |  | Pre-Qualification Submittal for Track Surface | 15d | 2026-03-10 A | 2026-04-19 A | MLTX-02-005-EN-5570, MLTX-02-005-EN-6240 | 100% |
| MLTX-02-005-EN-6160 |  | Pre-Qualification Approval for Track Surface | 15d | 2026-03-14 A | 2026-05-05 A | MLTX-02-005-EN-6150, MLTX-02-005-EN-6250 | 100% |
|  | 10 | **GRASS/TREES** |  | 2026-03-10 | 2026-05-05 |  |  |
| MLTX-02-005-EN-6180 |  | Pre-Qualification Submittal for Grass/Trees | 15d | 2026-03-10 A | 2026-04-14 A | MLTX-02-005-EN-5570, MLTX-02-005-EN-6250 | 100% |
| MLTX-02-005-EN-6190 |  | Pre-Qualification Approval for Grass/Trees | 15d | 2026-03-14 A | 2026-05-05 A | MLTX-02-005-EN-6180, MLTX-02-005-EN-5050 | 100% |
|  | 6 | **CABLES** |  | 2026-03-10 | 2026-05-11 |  |  |
| MLTX-02-005-EN-6210 |  | Pre-Qualification Submittal for Cables | 15d | 2026-03-10 A | 2026-05-09 A | MLTX-02-005-EN-5570, MLTX-02-005-EN-6060 | 100% |
| MLTX-02-005-EN-6220 |  | Pre-Qualification Approval for Cables | 15d | 2026-03-14 A | 2026-05-11 A | MLTX-02-005-EN-6210, MLTX-02-005-EN-6070 | 100% |
|  | 4 | **LIGHT POLES** |  | 2026-03-10 | 2026-04-30 |  |  |
| MLTX-02-005-EN-6240 |  | Pre-Qualification Submittal for Lighting poles | 15d | 2026-03-10 A | 2026-04-26 A | MLTX-02-005-EN-5570 | 100% |
| MLTX-02-005-EN-6250 |  | Pre-Qualification Approval for Lighting poles | 15d | 2026-03-14 A | 2026-04-30 A | MLTX-02-005-EN-6240 | 100% |
|  | MAT | **MATERIAL SUBMITTAL & APPROVAL** |  | 2026-03-18 | 2026-09-12 |  |  |
|  | TOI | **TOILET/SERVICE WORKS** |  | 2026-03-18 | 2026-07-11 |  |  |
|  | 1 | **STEEL REINFORCEMENT** |  | 2026-03-18 | 2026-04-12 |  |  |
| MLTX-02-005-EN-6290 |  | Material Submittal for Steel Reinforcement | 15d | 2026-03-18 A | 2026-04-07 A | MLTX-02-005-EN-4730 | 100% |
| MLTX-02-005-EN-6300 |  | Material Approval for Steel Reinforcement | 15d | 2026-03-25 A | 2026-04-12 A | MLTX-02-005-EN-6290, MLTX-02-005-EN-6350 | 100% |
|  | 2 | **READY MIX CONCRETE** |  | 2026-03-18 | 2026-04-12 |  |  |
| MLTX-02-005-EN-6320 |  | Material Submittal for Ready Mixed Concrete | 15d | 2026-03-18 A | 2026-04-07 A | MLTX-02-005-EN-4760 | 100% |
| MLTX-02-005-EN-6330 |  | Material Approval of Ready Mixed Concrete | 15d | 2026-03-25 A | 2026-04-12 A | MLTX-02-005-EN-6320 | 100% |
|  | 3 | **CONCRETE BLOCKS** |  | 2026-03-18 | 2026-05-11 |  |  |
| MLTX-02-005-EN-6350 |  | Material Submittal for Concrete Blocks | 15d | 2026-03-18 A | 2026-05-06 A | MLTX-02-005-EN-4790, MLTX-02-005-EN-7180 | 100% |
| MLTX-02-005-EN-6360 |  | Material Approval for Concrete Blocks | 15d | 2026-03-25 A | 2026-05-11 A | MLTX-02-005-EN-6350, MLTX-02-005-EN-6410 | 100% |

| ID | WBS | Task | Duration | Start | Finish | Predecessors | Complete |
| --- | --- | --- | --- | --- | --- | --- | --- |
|  | 6 | **FLOOR/WALL TILES** |  | 2026-03-18 | 2026-05-17 |  |  |
| MLTX-02-005-EN-6410 |  | Material Submittal for Tilling Materials | 15d | 2026-03-18 A | 2026-05-13 A | MLTX-02-005-EN-4850, MLTX-02-005-EN-7180 | 100% |
| MLTX-02-005-EN-6420 |  | Material Approval for Tilling Material | 15d | 2026-03-25 A | 2026-05-17 A | MLTX-02-005-EN-6410, MLTX-02-005-EN-6560 | 100% |
|  | 7 | **SUSPENDED CEILING** |  | 2026-03-18 | 2026-04-19 |  |  |
| MLTX-02-005-EN-6440 |  | Material Submittal for Suspend Ceiling | 15d | 2026-03-18 A | 2026-04-15 A | MLTX-02-005-EN-4880, MLTX-02-005-EN-6560 | 100% |
| MLTX-02-005-EN-6450 |  | Material Approval for Suspend Ceiling | 15d | 2026-03-25 A | 2026-04-19 A | MLTX-02-005-EN-6440, MLTX-02-005-EN-6560 | 100% |
|  | 8 | **DOORS/WINDOWS** |  | 2026-03-18 | 2026-05-06 |  |  |
| MLTX-02-005-EN-6470 |  | Material Submittal for Doors/Windows | 15d | 2026-03-18 A | 2026-05-06 A | MLTX-02-005-EN-4910, MLTX-02-005-EN-7030 | 100% |
| MLTX-02-005-EN-6480 |  | Material Approval for Doors/Windows | 15d | 2026-03-25 A | 2026-04-12 A | MLTX-02-005-EN-6470, MLTX-02-005-EN-6770 | 100% |
|  | 9 | **FURNITURES** |  | 2026-03-18 | 2026-04-07 |  |  |
| MLTX-02-005-EN-6500 |  | Material Submittal for Furnitures | 15d | 2026-03-18 A | 2026-04-02 A | MLTX-02-005-EN-4940, MLTX-02-005-EN-6560 | 100% |
| MLTX-02-005-EN-6510 |  | Material Approval for Furnitures | 15d | 2026-03-25 A | 2026-04-07 A | MLTX-02-005-EN-6500, MLTX-02-005-EN-6560 | 100% |
|  | 10 | **SANITARY FIXTURES** |  | 2026-03-18 | 2026-04-16 |  |  |
| MLTX-02-005-EN-6530 |  | Material Submittal for Sanitary Fixtures | 15d | 2026-03-18 A | 2026-04-13 A | MLTX-02-005-EN-4970, MLTX-02-005-EN-6290 | 100% |
| MLTX-02-005-EN-6540 |  | Material Approval for Sanitary Fixtures | 15d | 2026-03-25 A | 2026-04-16 A | MLTX-02-005-EN-6530, MLTX-02-005-EN-6330 | 100% |
|  | 11 | **WATER SUPPLY PIPES** |  | 2026-03-18 | 2026-04-16 |  |  |
| MLTX-02-005-EN-6560 |  | Material Submittal for Water Supply Pipes | 15d | 2026-03-18 A | 2026-04-04 A | MLTX-02-005-EN-5000, MLTX-02-005-EN-7180 | 100% |
| MLTX-02-005-EN-6570 |  | Material Approval for Water Supply Pipes | 15d | 2026-03-25 A | 2026-04-16 A | MLTX-02-005-EN-6560, MLTX-02-005-EN-6470 | 100% |
|  | 12 | **SEWAGE/DRAINAGE PIPES** |  | 2026-03-18 | 2026-04-16 |  |  |
| MLTX-02-005-EN-6590 |  | Material Submittal for Sewage/Drainage Pipes | 15d | 2026-03-18 A | 2026-04-04 A | MLTX-02-005-EN-5030 | 100% |
| MLTX-02-005-EN-6600 |  | Material Approval for Sewage/Drainage Pipes | 15d | 2026-03-25 A | 2026-04-16 A | MLTX-02-005-EN-6590 | 100% |
|  | 16 | **PACKAGE AC UNITS** |  | 2026-06-21 | 2026-07-02 |  |  |
| MLTX-02-005-EN-6620 |  | Material Submittal for Package AC Units | 15d | 2026-06-21 A | 2026-06-21 A | MLTX-02-005-EN-5060, MLTX-02-005-EN-6810 | 100% |
| MLTX-02-005-EN-6630 |  | Material Approval for Package AC Units | 15d | 2026-07-02 A | 2026-07-02 A | MLTX-02-005-EN-6620, MLTX-02-005-EN-6830 | 100% |
|  | 17 | **AIR DIFUSSERS/GRILLS** |  | 2026-06-11 | 2026-06-11 |  |  |
| MLTX-02-005-EN-6650 |  | Material Submittal for Air Diffusers/Grills | 15d | 2026-06-11 A | 2026-06-11 A | MLTX-02-005-EN-5090, MLTX-02-005-EN-7030 | 100% |
| MLTX-02-005-EN-6660 |  | Material Approval for Air Diffusers/Grills | 15d | 2026-06-11 A | 2026-06-11 A | MLTX-02-005-EN-6650, MLTX-02-005-EN-7030 | 100% |
|  | 18 | **GALVANIZED DUCTS** |  | 2026-03-19 | 2026-05-10 |  |  |
| MLTX-02-005-EN-6680 |  | Material Submittal for Galvanized Ducts | 15d | 2026-03-19 A | 2026-05-06 A | MLTX-02-005-EN-5120 | 100% |
| MLTX-02-005-EN-6690 |  | Material Approval for Galvanized Ducts | 15d | 2026-03-26 A | 2026-05-10 A | MLTX-02-005-EN-6680 | 100% |
|  | 19 | **EXHAUST FANS** |  | 2026-06-11 | 2026-06-11 |  |  |
| MLTX-02-005-EN-6710 |  | Material Submittal for Exhaust Fans | 15d | 2026-06-11 A | 2026-06-11 A | MLTX-02-005-EN-5150 | 100% |
| MLTX-02-005-EN-6720 |  | Material Approval for Exhaust Fans | 15d | 2026-06-11 A | 2026-06-11 A | MLTX-02-005-EN-6710 | 100% |
|  | 13 | **LIGHTING FIXTURES** |  | 2026-07-11 | 2026-07-11 |  |  |
| MLTX-02-005-EN-6740 |  | Material Submittal for Lighting Fixtures | 15d | 2026-07-11 A | 2026-07-11 A | MLTX-02-005-EN-5180 | 100% |
| MLTX-02-005-EN-6750 |  | Material Approval for Lighting Fixtures | 15d | 2026-07-11 A | 2026-07-11 A | MLTX-02-005-EN-6740 | 100% |
|  | 14 | **SWITCHES/SOCKETS** |  | 2026-06-25 | 2026-06-27 |  |  |
| MLTX-02-005-EN-6770 |  | Material Submittal for Switches/Sockets | 15d | 2026-06-25 A | 2026-06-25 A | MLTX-02-005-EN-5210, MLTX-02-005-EN-7030 | 100% |
| MLTX-02-005-EN-6780 |  | Material Approval for Switches/Sockets | 15d | 2026-06-27 A | 2026-06-27 A | MLTX-02-005-EN-6770, MLTX-02-005-EN-6650 | 100% |
|  | 15 | **EARTHING SYSTEM** |  | 2026-03-19 | 2026-05-19 |  |  |
| MLTX-02-005-EN-6800 |  | Material Submittal for Earthing System | 15d | 2026-03-19 A | 2026-05-14 A | MLTX-02-005-EN-5240, MLTX-02-005-EN-6560 | 100% |
| MLTX-02-005-EN-6810 |  | Material Approval for Earthing System | 15d | 2026-03-26 A | 2026-05-19 A | MLTX-02-005-EN-6800, MLTX-02-005-EN-6470 | 100% |
|  | 5 | **DISTRIBUTION PANNELS** |  | 2026-03-19 | 2026-06-18 |  |  |
| MLTX-02-005-EN-6830 |  | Material Submittal for Distribution Panels | 15d | 2026-03-19 A | 2026-05-11 A | MLTX-02-005-EN-5270, MLTX-02-005-EN-6480 | 100% |
| MLTX-02-005-EN-6840 |  | Material Approval for Distribution Panels | 15d | 2026-06-18 A | 2026-06-18 A | MLTX-02-005-EN-6830, MLTX-02-005-EN-7240 | 100% |
|  | PLG | **PLAYGROUND WORKS** |  | 2026-03-18 | 2026-09-12 |  |  |
|  | 5 | **PVC MEMBRANE** |  | 2026-08-26 | 2026-08-26 |  |  |
| MLTX-02-005-EN-6870 |  | Material Submittal for PVC Membrane | 21d | 2026-08-26 A | 2026-08-26 A | MLTX-02-005-EN-5310, MLTX-02-005-EN-7200 | 100% |
| MLTX-02-005-EN-6880 |  | Material Approval for PVC Membrane | 21d | 2026-08-26 A | 2026-08-26 A | MLTX-02-005-EN-6870, MLTX-02-005-EN-7050 | 100% |
|  | 6 | **STEEL TENSION CABLES** |  | 2026-08-26 | 2026-08-26 |  |  |
| MLTX-02-005-EN-6900 |  | Material Submittal for Steel Tension Cables | 15d | 2026-08-26 A | 2026-08-26 A | MLTX-02-005-EN-5340, MLTX-02-005-EN-7030 | 100% |
| MLTX-02-005-EN-6910 |  | Material Approval for Steel Tension Cables | 15d | 2026-08-26 A | 2026-08-26 A | MLTX-02-005-EN-6900, MLTX-02-005-EN-7260 | 100% |
|  | 7 | **EMERGENCY DOORS** |  | 2026-08-26 | 2026-09-12 |  |  |
| MLTX-02-005-EN-6930 |  | Material Submittal for Emergency Doors | 15d | 2026-08-26 A | 2026-08-26 A | MLTX-02-005-EN-5370, MLTX-02-005-EN-7030 | 100% |
| MLTX-02-005-EN-6940 |  | Material Approval for Emergency Doors | 15d | 2026-09-12 A | 2026-09-12 A | MLTX-02-005-EN-6930, MLTX-02-005-EN-1970 | 100% |
|  | 8 | **PRESSURE UNITS** |  | 2026-09-12 | 2026-09-12 |  |  |
| MLTX-02-005-EN-6960 |  | Material Submittal for Pressure Units | 15d | 2026-09-12 A | 2026-09-12 A | MLTX-02-005-EN-5400, MLTX-02-005-EN-7030 | 100% |
| MLTX-02-005-EN-6970 |  | Material Approval for Pressure Units | 15d | 2026-09-12 A | 2026-09-12 A | MLTX-02-005-EN-6960, MLTX-02-005-EN-7030 | 100% |
|  | 9 | **AIR LOCK DOORS** |  | 2026-08-26 | 2026-09-12 |  |  |
| MLTX-02-005-EN-6990 |  | Material Submittal for Lock Doors | 15d | 2026-08-26 A | 2026-08-26 A | MLTX-02-005-EN-5430, MLTX-02-005-EN-7030 | 100% |
| MLTX-02-005-EN-7000 |  | Material Approval for Lock Doors | 15d | 2026-09-12 A | 2026-09-12 A | MLTX-02-005-EN-6990, MLTX-02-005-EN-7030 | 100% |
|  | 15 | **ARTIFICIAL TURF** |  | 2026-03-18 | 2026-05-19 |  |  |
| MLTX-02-005-EN-7020 |  | Material Submittal for Artificial TURF | 30d | 2026-03-18 A | 2026-05-14 A | MLTX-02-005-EN-5460 | 100% |
| MLTX-02-005-EN-7030 |  | Material Approval for Artificial TURF | 30d | 2026-03-25 A | 2026-05-19 A | MLTX-02-005-EN-7020 | 100% |
|  | 20 | **RUBBER GRANULES** |  | 2026-03-18 | 2026-05-19 |  |  |
| MLTX-02-005-EN-7050 |  | Material Submittal for Rubber Granules | 21d | 2026-03-18 A | 2026-05-14 A | MLTX-02-005-EN-5490, MLTX-02-005-EN-7290 | 100% |
| MLTX-02-005-EN-7060 |  | Material Approval for Rubber Granules | 21d | 2026-03-25 A | 2026-05-19 A | MLTX-02-005-EN-7050, MLTX-02-005-EN-7240 | 100% |
|  | 21 | **PADEL GLASS** |  | 2026-03-18 | 2026-05-19 |  |  |
| MLTX-02-005-EN-7080 |  | Material Submittal for Padel Glass | 15d | 2026-03-18 A | 2026-05-14 A | MLTX-02-005-EN-5520, MLTX-02-005-EN-7030 | 100% |
| MLTX-02-005-EN-7090 |  | Material Approval for Padel Glass | 15d | 2026-03-25 A | 2026-05-19 A | MLTX-02-005-EN-7080, MLTX-02-005-EN-7260 | 100% |

| ID | WBS | Task | Duration | Start | Finish | Predecessors | Complete |
| --- | --- | --- | --- | --- | --- | --- | --- |
|  | 22 | **PADEL WIRE MESH/STEEL SETS** |  | 2026-03-18 | 2026-05-19 |  |  |
| MLTX-02-005-EN-7110 |  | Material Submittal for Wire Mesh/Steel Sets | 15d | 2026-03-18 A | 2026-05-14 A | MLTX-02-005-EN-5550, MLTX-02-005-EN-7030 | 100% |
| MLTX-02-005-EN-7120 |  | Material Approval for Wire Mesh/Steel Sets | 15d | 2026-03-25 A | 2026-05-19 A | MLTX-02-005-EN-7110, MLTX-02-005-EN-7200 | 100% |
|  | 1 | **AGGREGATE BASE COURSE** |  | 2026-03-18 | 2026-05-03 |  |  |
| MLTX-02-005-EN-7140 |  | Material Submittal for Aggregate Base Course | 21d | 2026-03-18 A | 2026-04-30 A | MLTX-02-005-EN-5580 | 100% |
| MLTX-02-005-EN-7150 |  | Material Approval for Aggregate Base Course | 21d | 2026-03-25 A | 2026-05-03 A | MLTX-02-005-EN-7140 | 100% |
|  | 16 | **PACKAGE AC UNITS** |  | 2026-07-11 | 2026-07-11 |  |  |
| MLTX-02-005-EN-7260 |  | Material Submittal for Package AC Units | 15d | 2026-07-11 A | 2026-07-11 A | MLTX-02-005-EN-5700, MLTX-02-005-EN-7030 | 100% |
| MLTX-02-005-EN-7270 |  | Material Approval for Package AC Units | 15d | 2026-07-11 A | 2026-07-11 A | MLTX-02-005-EN-7260, MLTX-02-005-EN-7030 | 100% |
|  | 17 | **AIR DIFUSSERS/GRILLS** |  | 2026-09-12 | 2026-09-12 |  |  |
| MLTX-02-005-EN-7290 |  | Material Submittal for Air Difussers/Grills | 15d | 2026-09-12 A | 2026-09-12 A | MLTX-02-005-EN-5730, MLTX-02-005-EN-7030 | 100% |
| MLTX-02-005-EN-7300 |  | Material Approval for Air Difussers/Grills | 15d | 2026-09-12 A | 2026-09-12 A | MLTX-02-005-EN-7290, MLTX-02-005-EN-7030 | 100% |
|  | 2 | **BITUMINOUS BASE & WEARING COURSE** |  | 2026-03-19 | 2026-05-04 |  |  |
| MLTX-02-005-EN-7170 |  | Material Submittal for Bituminous Base & Wearing Cource | 15d | 2026-03-19 A | 2026-04-30 A | MLTX-02-005-EN-5610, MLTX-02-005-EN-7140 | 100% |
| MLTX-02-005-EN-7180 |  | Material Approval for the Site | 15d | 2026-03-26 A | 2026-05-04 A | MLTX-02-005-EN-7170, MLTX-02-005-EN-7420 | 100% |
|  | 3 | **INTERLOCKING PAVING** |  | 2026-03-19 | 2026-05-10 |  |  |
| MLTX-02-005-EN-7200 |  | Material Submittal for Interlocking Block Pavers | 15d | 2026-03-19 A | 2026-05-05 A | MLTX-02-005-EN-5640, MLTX-02-005-EN-7030 | 100% |
| MLTX-02-005-EN-7210 |  | Material Approval for Interlocking Block Pavers | 15d | 2026-03-26 A | 2026-05-10 A | MLTX-02-005-EN-7200, MLTX-02-005-EN-7030 | 100% |
|  | 4 | **MARKING PAINT** |  | 2026-03-19 | 2026-05-18 |  |  |
| MLTX-02-005-EN-7230 |  | Material Submittal for Marking Paint | 15d | 2026-03-19 A | 2026-05-13 A | MLTX-02-005-EN-5670, MLTX-02-005-EN-6930 | 100% |
| MLTX-02-005-EN-7240 |  | Material Approval for Marking Paint | 15d | 2026-03-26 A | 2026-05-18 A | MLTX-02-005-EN-7230, MLTX-02-005-EN-6940 | 100% |
|  | 18 | **GALVANIZED DUCTS** |  | 2026-03-19 | 2026-05-10 |  |  |
| MLTX-02-005-EN-7320 |  | Material Submittal for Galvanized Duct | 15d | 2026-03-19 A | 2026-05-06 A | MLTX-02-005-EN-5760, MLTX-02-005-EN-7030 | 100% |
| MLTX-02-005-EN-7330 |  | Material Approval for Galvanized Duct | 15d | 2026-03-26 A | 2026-05-10 A | MLTX-02-005-EN-7320, MLTX-02-005-EN-7030 | 100% |
|  | 19 | **EXHAUST FANS** |  | 2026-06-11 | 2026-06-11 |  |  |
| MLTX-02-005-EN-7350 |  | Material Submittal for Exhaust Fans | 15d | 2026-06-11 A | 2026-06-11 A | MLTX-02-005-EN-5790, MLTX-02-005-EN-7030 | 100% |
| MLTX-02-005-EN-7360 |  | Material Approval for Exhaust Fans | 15d | 2026-06-11 A | 2026-06-11 A | MLTX-02-005-EN-7350, MLTX-02-005-EN-7030 | 100% |
|  | 10 | **DISTRIBUTION BOARDS** |  | 2026-06-15 | 2026-06-18 |  |  |
| MLTX-02-005-EN-7380 |  | Material Submittal for Distribution Boards | 15d | 2026-06-15 A | 2026-06-15 A | MLTX-02-005-EN-5820, MLTX-02-005-EN-7030 | 100% |
| MLTX-02-005-EN-7390 |  | Material Approval for Distribution Boards | 15d | 2026-06-18 A | 2026-06-18 A | MLTX-02-005-EN-7380, MLTX-02-005-EN-7030 | 100% |
|  | 11 | **POWER CABLES** |  | 2026-03-19 | 2026-05-19 |  |  |
| MLTX-02-005-EN-7410 |  | Material Submittal for Power Cables | 15d | 2026-03-19 A | 2026-05-14 A | MLTX-02-005-EN-5850 | 100% |
| MLTX-02-005-EN-7420 |  | Material Approval for Power Cables | 15d | 2026-03-26 A | 2026-05-19 A | MLTX-02-005-EN-7410 | 100% |
|  | 12 | **LIGHT FIXTURES** |  | 2026-07-11 | 2026-07-11 |  |  |
| MLTX-02-005-EN-7440 |  | Material Submittal for Light Fixtures | 15d | 2026-07-11 A | 2026-07-11 A | MLTX-02-005-EN-5880, MLTX-02-005-EN-7030 | 100% |
| MLTX-02-005-EN-7450 |  | Material Approval for Light Fixtures | 15d | 2026-07-11 A | 2026-07-11 A | MLTX-02-005-EN-7440, MLTX-02-005-EN-7030 | 100% |
|  | 13 | **CCTV MATERIALS** |  | 2026-08-26 | 2026-09-12 |  |  |
| MLTX-02-005-EN-7470 |  | Material Submittal for CCTV | 15d | 2026-08-26 A | 2026-08-26 A | MLTX-02-005-EN-5910, MLTX-02-005-EN-7030 | 100% |
| MLTX-02-005-EN-7480 |  | Material Approval for CCTV | 15d | 2026-09-12 A | 2026-09-12 A | MLTX-02-005-EN-7470, MLTX-02-005-EN-7030 | 100% |
|  | 14 | **POWER OUTLETS/SWITCHES** |  | 2026-06-25 | 2026-06-27 |  |  |
| MLTX-02-005-EN-7500 |  | Material Submittal for Power Outlets/Switches | 15d | 2026-06-25 A | 2026-06-25 A | MLTX-02-005-EN-5940, MLTX-02-005-EN-7140 | 100% |
| MLTX-02-005-EN-7510 |  | Material Approval for Power Outlets/Switches | 15d | 2026-06-27 A | 2026-06-27 A | MLTX-02-005-EN-7500, MLTX-02-005-EN-7170 | 100% |
|  | LSC | **LANDSCAPE WORKS** |  | 2026-03-19 | 2026-07-11 |  |  |
|  | 7 | **INTERLOCKING PAVING** |  | 2026-03-19 | 2026-05-10 |  |  |
| MLTX-02-005-EN-7540 |  | Material Submittal for Interlocking Block Pavers | 15d | 2026-03-19 A | 2026-05-05 A | MLTX-02-005-EN-5980, MLTX-02-005-EN-7810 | 100% |
| MLTX-02-005-EN-7550 |  | Material Approval for Interlocking Block Pavers | 15d | 2026-03-26 A | 2026-05-10 A | MLTX-02-005-EN-7540, MLTX-02-005-EN-7820 | 100% |
|  | 9 | **CURBSTONE** |  | 2026-03-19 | 2026-05-11 |  |  |
| MLTX-02-005-EN-7570 |  | Material Submittal for Curbstone | 15d | 2026-03-19 A | 2026-05-05 A | MLTX-02-005-EN-6010 | 100% |
| MLTX-02-005-EN-7580 |  | Material Approval for Curbstone | 15d | 2026-03-26 A | 2026-05-11 A | MLTX-02-005-EN-7570 | 100% |
|  | 1 | **PAVEMENT MARKING** |  | 2026-03-19 | 2026-05-18 |  |  |
| MLTX-02-005-EN-7600 |  | Material Submittal for Pavement Markings | 15d | 2026-03-19 A | 2026-05-12 A | MLTX-02-005-EN-6040, MLTX-02-005-EN-7810 | 100% |
| MLTX-02-005-EN-7610 |  | Material Approval for Pavement Markings | 15d | 2026-03-26 A | 2026-05-18 A | MLTX-02-005-EN-7600, MLTX-02-005-EN-7820 | 100% |
|  | 2 | **TRAFFIC SIGNS** |  | 2026-03-19 | 2026-05-18 |  |  |
| MLTX-02-005-EN-7630 |  | Material Submittal for Traffic Signs | 15d | 2026-03-19 A | 2026-05-12 A | MLTX-02-005-EN-6070, MLTX-02-005-EN-7820 | 100% |
| MLTX-02-005-EN-7640 |  | Material Approval for Traffic Signs | 15d | 2026-03-26 A | 2026-05-18 A | MLTX-02-005-EN-7630, MLTX-02-005-EN-7730 | 100% |
|  | 3 | **IRRIGATION PIPES/SPRINKLERS** |  | 2026-06-16 | 2026-06-18 |  |  |
| MLTX-02-005-EN-7660 |  | Material Submittal for Irrigation Pipes/Sprinkles | 15d | 2026-06-16 A | 2026-06-16 A | MLTX-02-005-EN-6100 | 100% |
| MLTX-02-005-EN-7670 |  | Material Approval for Irrigation Pipes/Sprinkles | 15d | 2026-06-18 A | 2026-06-18 A | MLTX-02-005-EN-7660 | 100% |
|  | 5 | **AGRICULTURE SOIL** |  | 2026-03-19 | 2026-05-21 |  |  |
| MLTX-02-005-EN-7690 |  | Material Submittal for Agriculture Soil | 15d | 2026-03-19 A | 2026-05-14 A | MLTX-02-005-EN-6130, MLTX-02-005-EN-7630 | 100% |
| MLTX-02-005-EN-7700 |  | Material Approval for Agriculture Soil | 15d | 2026-03-26 A | 2026-05-21 A | MLTX-02-005-EN-7690, MLTX-02-005-EN-7640 | 100% |
|  | 8 | **TRACK SURFACE** |  | 2026-03-19 | 2026-05-19 |  |  |
| MLTX-02-005-EN-7720 |  | Material Submittal for Track Surface | 15d | 2026-03-19 A | 2026-05-14 A | MLTX-02-005-EN-6160, MLTX-02-005-EN-7810 | 100% |
| MLTX-02-005-EN-7730 |  | Material Approval for Track Surface | 15d | 2026-03-26 A | 2026-05-19 A | MLTX-02-005-EN-7720, MLTX-02-005-EN-7820 | 100% |
|  | 10 | **GRASS/TREES** |  | 2026-03-19 | 2026-05-21 |  |  |
| MLTX-02-005-EN-7750 |  | Material Submittal for Grass/Trees | 15d | 2026-03-19 A | 2026-05-14 A | MLTX-02-005-EN-6190, MLTX-02-005-EN-7820 | 100% |
| MLTX-02-005-EN-7760 |  | Material Approval for Grass/Trees | 15d | 2026-03-26 A | 2026-05-21 A | MLTX-02-005-EN-7750, MLTX-02-005-EN-7180 | 100% |
|  | 6 | **CABLES** |  | 2026-03-19 | 2026-05-19 |  |  |
| MLTX-02-005-EN-7780 |  | Material Submittal for Cables | 15d | 2026-03-19 A | 2026-05-14 A | MLTX-02-005-EN-6220, MLTX-02-005-EN-7630 | 100% |
| MLTX-02-005-EN-7790 |  | Material Approval for Cables | 15d | 2026-03-26 A | 2026-05-19 A | MLTX-02-005-EN-7780, MLTX-02-005-EN-7640 | 100% |

| ID | WBS | Task | Duration | Start | Finish | Predecessors | Complete | Total float |
| --- | --- | --- | --- | --- | --- | --- | --- | --- |
|  | 4 | **LIGHT POLES** |  | 2026-07-11 | 2026-07-11 |  |  |  |
| MLTX-02-005-EN-7810 |  | Material Submittal for Lighting poles | 15d | 2026-07-11 A | 2026-07-11 A | MLTX-02-005-EN-6250 | 100% |  |
| MLTX-02-005-EN-7820 |  | Material Approval for Lighting poles | 15d | 2026-07-11 A | 2026-07-11 A | MLTX-02-005-EN-7810 | 100% |  |
|  | CONST | **CONSTRUCTION PHASE** |  | 2026-04-04 | 2027-03-27 |  |  |  |
|  | SW | **SITE WORKS** |  | 2026-04-04 | 2027-03-27 |  |  |  |
|  | 1 | **EARTH WORKS** |  | 2026-04-04 | 2026-08-05 |  |  |  |
| MLTX-02-005-CN-9940 |  | Excavation (in all types of soil) including Compaction (Service/Toilet Building) | 14d | 2026-04-04 A | 2026-08-02 A | MLTX-02-005-EN-2950 | 100% |  |
| MLTX-02-005-CN-9930 |  | Excavation (in all types of soil) including Compaction (Playground Area) | 12d | 2026-04-06 A | 2026-04-12 A | MLTX-02-005-CN-9940 SS | 100% |  |
| MLTX-02-005-CN-9970 |  | Backfilling on Layers (Selected Soil) including Compaction (Service/Toilet Building) | 20d | 2026-04-06 A | 2026-04-08 A | MLTX-02-005-CN-9940 SS, MLTX-02-005-CN-9940 FF, MLTX-02-005-CN-9960 | 100% |  |
| MLTX-02-005-CN-9960 |  | Backfilling on Layers (Selected Soil) including Compaction (Playground Area) | 21d | 2026-04-13 A | 2026-04-30 A | MLTX-02-005-CN-9930 | 100% |  |
| MLTX-02-005-CN-9980 |  | Backfilling on Layers (Selected Soil) including Compaction (Landscape Area) | 8d | 2026-04-21 A | 2026-08-05 A | MLTX-02-005-CN-9950 SS, MLTX-02-005-CN-9950 FF, MLTX-02-005-CN-10020 | 100% |  |
| MLTX-02-005-CN-9950 |  | Excavation (in all types of soil) including Compaction (Landscape Area) | 7d | 2026-06-28 A | 2026-08-05 A | MLTX-02-005-EN-3840, MLTX-02-005-EN-3830, MLTX-02-005-CN-9930, MLTX-02-005-EN-3820, MLTX-02-005-EN-3810, MLTX-02-005-CN-10020 | 100% |  |
|  | 4 | **LANDSCAPE WORKS** |  | 2026-05-17 | 2027-03-27 |  |  |  |
|  | 4 | **PLAYGROUND AREA** |  | 2026-05-19 | 2027-02-23 |  |  |  |
|  | 6 | **FOOTBALL PLAYGROUND** |  | 2026-05-19 | 2027-02-17 |  |  |  |
| MLTX-02-005-CN-10020 |  | Preparation and Proofing for Subgrade (Football Playground) | 20d | 2026-05-19 A | 2026-06-01 A | MLTX-02-005-CN-9960 | 100% |  |
| MLTX-02-005-CN-10030 |  | Backfilling and Compaction of Base Layers (Football Playground) | 21d | 2026-06-01 A | 2026-06-22 A | MLTX-02-005-CN-10020 | 100% |  |
| MLTX-02-005-CN-10070 |  | Aggregate base course layer (Football Playground) | 21d | 2026-08-02 A | 2026-08-06 A | MLTX-02-005-CN-10030, MLTX-02-005-CN-10130 | 100% |  |
| MLTX-02-005-CN-10040 |  | Finishing Asphalt & Concrete Surface (Football Playground) | 15d | 2027-01-09 | 2027-01-26 | MLTX-02-005-CN-10070, MLTX-02-005-CN-10270 |  | -31.1d |
| MLTX-02-005-CN-10050 |  | Install Sport Equipments - Goal / Nets - (Football Playground) | 5d | 2027-02-11 | 2027-02-17 | MLTX-02-005-CN-10060 FF, MLTX-02-005-EN-3610, MLTX-02-005-CN-10060 SS, MLTX-02-005-CN-10040 |  | -45.1d |
| MLTX-02-005-CN-10060 |  | Surface Marking and Painting Finishing Work (Football Playground) | 5d | 2027-02-11 | 2027-02-17 | MLTX-02-005-CN-10370, MLTX-02-005-PR-9110 |  | -45.1d |
|  | 7 | **PADEL PLAYGROUND** |  | 2026-05-19 | 2027-02-17 |  |  |  |
| MLTX-02-005-CN-10080 |  | Preparation and Proofing for Subgrade (Padel Playground) | 21d | 2026-05-19 A | 2026-06-01 A | MLTX-02-005-CN-10020 | 100% |  |
| MLTX-02-005-CN-10090 |  | Backfilling and Compaction of Base Layers (Padel Playground) | 21d | 2026-06-01 A | 2026-06-14 A | MLTX-02-005-CN-10030, MLTX-02-005-PR-9000, MLTX-02-005-PR-9020, MLTX-02-005-CN-10080 | 100% |  |
| MLTX-02-005-CN-10130 |  | Aggregate base course layer (Padel Playground) | 21d | 2026-06-15 A | 2026-06-28 A | MLTX-02-005-CN-10030, MLTX-02-005-CN-10090 | 100% |  |
| MLTX-02-005-CN-10100 |  | Finishing Asphalt & Concrete Surface (Padel Playground) | 21d | 2026-08-29 A | 2026-08-31 A | MLTX-02-005-CN-10090 | 100% |  |
| MLTX-02-005-CN-10110 |  | Install Sport Equipments - Goal / Nets - (Padel Playground) | 5d | 2027-02-11 | 2027-02-17 | MLTX-02-005-CN-10050 FF, MLTX-02-005-CN-10100, MLTX-02-005-CN-10050 SS, MLTX-02-005-EN-3630 |  | -45.1d |
| MLTX-02-005-CN-10120 |  | Surface Marking and Painting Finishing Work (Padel Playground) | 5d | 2027-02-11 | 2027-02-17 | MLTX-02-005-CN-10060 SS, MLTX-02-005-CN-10100, MLTX-02-005-CN-10110 FF, MLTX-02-005-PR-9110, MLTX-02-005-CN-10110 SS |  | -45.1d |
|  | 8 | **BASKETBALL PLAYGROUND** |  | 2026-05-19 | 2027-02-23 |  |  |  |
| MLTX-02-005-CN-10180 |  | Preparation and Proofing for Subgrade (Basketball Playground) | 20d | 2026-05-19 A | 2026-06-01 A | MLTX-02-005-CN-10080 | 100% |  |
| MLTX-02-005-CN-10190 |  | Backfilling and Compaction of Base Layers (Basketball Playground) | 21d | 2026-06-01 A | 2026-06-14 A | MLTX-02-005-CN-10180, MLTX-02-005-CN-10030 | 100% |  |
| MLTX-02-005-CN-10230 |  | Aggregate base course layer (Basketball Playground) | 21d | 2026-06-15 A | 2026-06-28 A | MLTX-02-005-CN-10190, MLTX-02-005-CN-10030, MLTX-02-005-CN-10130 | 100% |  |
| MLTX-02-005-CN-10200 |  | Finishing Asphalt & Concrete Surface (Basketball Playground) | 21d | 2026-08-19 A | 2026-08-31 A | MLTX-02-005-CN-10070, MLTX-02-005-CN-10230 | 100% |  |
| MLTX-02-005-CN-10210 |  | Install Sport Equipments - Goal / Nets - (Basketball Playground) | 5d | 2027-02-11 | 2027-02-17 | MLTX-02-005-CN-10110 SS |  | -41.1d |
| MLTX-02-005-CN-10220 |  | Surface Marking and Painting Finishing Work (Basketball Playground) | 4d | 2027-02-17 | 2027-02-23 | MLTX-02-005-CN-10060, MLTX-02-005-CN-10210 SS, MLTX-02-005-CN-10210 FF, MLTX-02-005-CN-10200, MLTX-02-005-CN-10120, MLTX-02-005-PR-9110 |  | -45.1d |
|  | 9 | **PADEL FENCE** |  | 2026-08-08 | 2027-01-09 |  |  |  |
| MLTX-02-005-CN-10240 |  | Excavation for Fence | 8d | 2026-08-08 A | 2026-08-08 A | MLTX-02-005-CN-10130 | 100% |  |
| MLTX-02-005-CN-10250 |  | Concrete Foundation for Fence including Posts Fixation | 7d | 2026-08-15 A | 2026-08-19 A | MLTX-02-005-CN-10240 SS, MLTX-02-005-CN-10240 FF | 100% |  |
| MLTX-02-005-CN-10251 |  | Backfilling and Reinstatement for Concrete Foundation | 17d | 2026-10-13 A | 2026-10-13 A | MLTX-02-005-CN-10250 | 100% |  |
| MLTX-02-005-CN-10260 |  | Tempered Glass Fenc Installation and Fixation | 20d | 2026-11-23 | 2026-12-16 | MLTX-02-005-CN-10251 |  | -31.1d |
| MLTX-02-005-CN-10270 |  | Chain Link Fence Installation and Fixation | 20d | 2026-12-16 | 2027-01-09 | MLTX-02-005-CN-10260, MLTX-02-005-CN-10200 |  | -31.1d |
| MLTX-02-005-CN-10280 |  | Install of Fence Gates | 12d | 2026-12-26 | 2027-01-09 | MLTX-02-005-CN-10260, MLTX-02-005-CN-10270 FF, MLTX-02-005-CN-10270 SS |  | -7.1d |
|  | 1 | **CURBSTOEN/INTERLOCK** |  | 2026-08-15 | 2026-11-22 |  |  |  |
| MLTX-02-005-CN-10150 |  | Concrete Works Under Curbstone | 7d | 2026-08-15 A | 2026-08-15 A | MLTX-02-005-EN-4450, MLTX-02-005-EN-3460, MLTX-02-005-CN-10240, MLTX-02-005-EN-8040 | 100% |  |
| MLTX-02-005-CN-10160 |  | Curbstone Installation | 4d | 2026-08-19 A | 2026-09-05 A | MLTX-02-005-CN-10150, MLTX-02-005-PR-9560, MLTX-02-005-CN-10230 | 100% |  |
| MLTX-02-005-CN-10140 |  | Interlock Installation (Grey Scale) for LandScape (Including Finishing Works) | 20d | 2026-11-04 A | 2026-11-22 A | MLTX-02-005-PR-9520, MLTX-02-005-CN-10160, MLTX-02-005-PR-9070 | 100% |  |
|  | 10 | **AIR DOME** |  | 2026-05-17 | 2027-03-01 |  |  |  |
|  | 1 | **CIVIL WORKS** |  | 2026-05-17 | 2027-02-11 |  |  |  |
| MLTX-02-005-CN-10320 |  | Excavation for Foundation (Air Dome) | 6d | 2026-05-17 A | 2026-05-31 A | MLTX-02-005-CN-10090, MLTX-02-005-EN-3450, MLTX-02-005-EN-3500, MLTX-02-005-EN-3550, MLTX-02-005-EN-2480, MLTX-02-005-EN-2470, MLTX-02-005-CN-10180, MLTX-02-005-EN-3470, MLTX-02-005-EN-2450, MLTX-02-005-EN-4150, MLTX-02-005-EN-2390, MLTX-02-005-EN-2460 | 100% |  |
| MLTX-02-005-CN-10330 |  | Concrete Works for Foundations including Anchor Bolts (Air Dome) | 13d | 2026-07-29 A | 2026-09-21 A | MLTX-02-005-EN-3510, MLTX-02-005-CN-10320, MLTX-02-005-EN-3520, MLTX-02-005-EN-3530 | 100% |  |
| MLTX-02-005-CN-10340 |  | Cable System Installation (Air Dome) | 7d | 2026-09-21 A | 2026-09-21 A | MLTX-02-005-CN-10320 | 100% |  |
| MLTX-02-005-CN-10400 |  | Perimeter Clamping System Installation | 7d | 2026-09-21 A | 2026-09-28 A | MLTX-02-005-CN-10320 | 100% |  |
| MLTX-02-005-CN-10360 |  | Install of Membrane Covering System (Air Dome) | 20d | 2027-01-19 | 2027-02-11 | MLTX-02-005-CN-10400, MLTX-02-005-CN-11740, MLTX-02-005-CN-10520 |  | -47.1d |
| MLTX-02-005-CN-10370 |  | Thermal Insulation Works (Air Dome) | 20d | 2027-01-19 | 2027-02-11 | MLTX-02-005-CN-10360 SS, MLTX-02-005-PR-9470, MLTX-02-005-CN-10360 FF, MLTX-02-005-CN-11740 |  | -47.1d |
|  | 3 | **MECHANICAL WORKS** |  | 2027-02-11 | 2027-02-24 |  |  |  |
| MLTX-02-005-CN-10410 |  | Air Ducts and Grills Installation (Air Dome) | 10d | 2027-02-11 | 2027-02-24 | MLTX-02-005-PR-9910, MLTX-02-005-CN-10370, MLTX-02-005-CN-11830 |  | -47.1d |
| MLTX-02-005-CN-10420 |  | Air Units Installation (Air Dome) | 10d | 2027-02-11 | 2027-02-24 | MLTX-02-005-CN-10410 SS, MLTX-02-005-CN-10410 FF |  | -47.1d |
| MLTX-02-005-CN-10430 |  | Exhaust Fans and Ducts Installation (Air Dome) | 10d | 2027-02-11 | 2027-02-24 | MLTX-02-005-CN-10420 SS, MLTX-02-005-CN-10410 FF, MLTX-02-005-CN-10410 SS, MLTX-02-005-CN-10420 FF |  | -47.1d |
|  | 4 | **ELECTRICAL WORKS** |  | 2027-02-15 | 2027-02-28 |  |  |  |
| MLTX-02-005-CN-10450 |  | Light Fixture Works (Air Dome) | 7d | 2027-02-15 | 2027-02-24 | MLTX-02-005-CN-10420 FF, MLTX-02-005-EN-3700, MLTX-02-005-CN-10430 FF, MLTX-02-005-CN-10420 SS, MLTX-02-005-CN-10430 SS, MLTX-02-005-EN-3770 |  | -47.1d |
| MLTX-02-005-CN-10460 |  | Distribution Board and Electrical Works (Air Dome) | 5d | 2027-02-17 | 2027-02-24 | MLTX-02-005-CN-10450 SS, MLTX-02-005-CN-10450 FF |  | -47.1d |
| MLTX-02-005-CN-10470 |  | External Electrical Connection Works (Air Dome) | 5d | 2027-02-17 | 2027-02-24 | MLTX-02-005-CN-10460 FF, MLTX-02-005-CN-10460 SS |  | -47.1d |
| MLTX-02-005-CN-10480 |  | Emergency Generator Installation (Air Dome) | 3d | 2027-02-20 | 2027-02-24 | MLTX-02-005-CN-10470 FF, MLTX-02-005-CN-10470 SS |  | -47.1d |
| MLTX-02-005-CN-10490 |  | Control System Installation (Air Dome) | 2d | 2027-02-25 | 2027-02-28 | MLTX-02-005-PR-9350, MLTX-02-005-CN-10480 SS, MLTX-02-005-CN-10480 FF |  | -50.1d |
|  | 2 | **FINISHES WORKS** |  | 2027-02-17 | 2027-03-01 |  |  |  |
| MLTX-02-005-CN-10380 |  | Doors Installation Including Emergency, Entrance doors (Air Dome) | 5d | 2027-02-17 | 2027-02-24 | MLTX-02-005-PR-9900, MLTX-02-005-PR-9920, MLTX-02-005-CN-10420 FF, MLTX-02-005-PR-8930 |  | -47.1d |
| MLTX-02-005-CN-10390 |  | Logo and Signs Installation (Air Dome) | 1d | 2027-02-28 | 2027-03-01 | MLTX-02-005-CN-10490, MLTX-02-005-CN-10380 |  | -50.1d |
|  | 1 | **IRRIGATION NETWORK** |  | 2026-08-18 | 2026-12-14 |  |  |  |
| MLTX-02-005-CN-11430 |  | Installing of HDPE Pipes for Irrigation Network (Main Line) | 4d | 2026-08-18 A | 2026-09-02 A | MLTX-02-005-EN-4570, MLTX-02-005-EN-3880, MLTX-02-005-EN-3920, MLTX-02-005-PR-9680 | 100% |  |
| MLTX-02-005-CN-11440 |  | Installing of HDPE Pipes for Irrigation Network (Branch Lines) | 4d | 2026-09-03 A | 2026-09-10 A | MLTX-02-005-CN-11430 | 100% |  |

| ID | WBS | Task | Duration | Start | Finish | Predecessors | Complete | Total float |
| --- | --- | --- | --- | --- | --- | --- | --- | --- |
| MLTX-02-005-CN-11450 |  | Installing of Valves and fittings for Irrigation Network | 4d | 2026-09-10 A | 2026-10-13 A | MLTX-02-005-CN-11440 | 100% |  |
| MLTX-02-005-CN-11460 |  | Installing of Bubblers and Spreyers | 3d | 2026-12-10 | 2026-12-14 | MLTX-02-005-CN-10540 FF, MLTX-02-005-CN-10540 SS, MLTX-02-005-PR-9720, MLTX-02-005-CN-11450, MLTX-02-005-CN-10520, MLTX-02-005-CN-10200 |  | 4.9d |
|  | 5 | **NATURAL GROUND** |  | 2026-10-27 | 2026-11-30 |  |  |  |
| MLTX-02-005-CN-10550 |  | Compacted Natural Ground Soil Installation Works for Landscape | 6d | 2026-10-27 A | 2026-11-19 A | MLTX-02-005-CN-11710, MLTX-02-005-CN-11450, MLTX-02-005-CN-10200, MLTX-02-005-PR-9840, MLTX-02-005-EN-4620 | 100% |  |
| MLTX-02-005-CN-10540 |  | Tartan Floor Installation Works for Landscape (Including Finishing Works) | 6d | 2026-11-22 A | 2026-11-30 | MLTX-02-005-CN-10550 | 20% | 0.9d |
|  | 2 | **PLANTING** |  | 2026-10-31 | 2026-11-29 |  |  |  |
| MLTX-02-005-CN-10570 |  | Placement of Sweet/Agricultural Soil (Including Levelling and Grading) | 6d | 2026-10-31 A | 2026-11-18 A | MLTX-02-005-PR-9720 FF, MLTX-02-005-EN-4470 | 100% |  |
| MLTX-02-005-CN-10580 |  | Placement of Lawn Ground Cover (Rolling and Compaction) | 4d | 2026-10-31 A | 2026-11-28 | MLTX-02-005-CN-10590 SS, MLTX-02-005-CN-11710, MLTX-02-005-CN-11360, MLTX-02-005-PR-9840, MLTX-02-005-EN-4620 | 40% | 30.9d |
| MLTX-02-005-CN-10590 |  | Placement and Fixation of Trees | 5d | 2026-10-31 A | 2026-11-29 | MLTX-02-005-CN-10570 SS | 40% | 29.9d |
|  | 3 | **WALKING/BIKE PATHS** |  | 2026-06-11 | 2026-12-10 |  |  |  |
| MLTX-02-005-CN-10510 |  | Bike Path Preparation and Installation Works | 12d | 2026-06-11 A | 2026-12-10 | MLTX-02-005-PR-9760 FF, MLTX-02-005-CN-9930, MLTX-02-005-CN-10570 FF, MLTX-02-005-PR-11310, MLTX-02-005-PR-10840 FF | 60% | -22.1d |
| MLTX-02-005-CN-10520 |  | Walking Path Preparation and Installation Works | 12d | 2026-06-11 A | 2026-12-10 | MLTX-02-005-CN-10510 SS, MLTX-02-005-PR-9760 FF, MLTX-02-005-CN-10570 FF, MLTX-02-005-CN-10340, MLTX-02-005-CN-10400 | 60% | -13.1d |
|  | 6 | **GENERAL/FURNITURE** |  | 2026-10-03 | 2027-03-27 |  |  |  |
| MLTX-02-005-CN-11710 |  | Preleminary Works for Site Light Poles Including Cable and Bases Works | 7d | 2026-10-03 A | 2026-10-15 A | MLTX-02-005-EN-3970, MLTX-02-005-EN-3960, MLTX-02-005-EN-3950, MLTX-02-005-CN-10160, MLTX-02-005-EN-3980 | 100% |  |
| MLTX-02-005-CN-11800 |  | Installing of Site Light Poles | 13d | 2026-10-18 A | 2026-11-03 A | MLTX-02-005-PR-9930, MLTX-02-005-CN-11710, MLTX-02-005-PR-9840, MLTX-02-005-EN-4620 | 100% |  |
| MLTX-02-005-CN-10610 |  | Stamped Concrete Works for LandScape (Including Finishing Works) | 5d | 2026-11-23 A | 2026-11-29 | MLTX-02-005-CN-11710, MLTX-02-005-PR-9840, MLTX-02-005-EN-4620 | 10% | 12.9d |
| MLTX-02-005-CN-10630 |  | Fixation and Installation of Steel Frame for Benches | 7d | 2027-02-03 | 2027-02-11 | MLTX-02-005-EN-4430, MLTX-02-005-CN-10510, MLTX-02-005-CN-11710, MLTX-02-005-CN-11360, MLTX-02-005-PR-9840, MLTX-02-005-EN-4620, MLTX-02-005-PR-9600, MLTX-02-005-PR-9800 |  | -69.1d |
| MLTX-02-005-CN-10640 |  | Fixation and Installation of Benches | 7d | 2027-02-11 | 2027-02-20 | MLTX-02-005-CN-10630, MLTX-02-005-CN-11710, MLTX-02-005-CN-11800, MLTX-02-005-PR-9840, MLTX-02-005-EN-4620 |  | -69.1d |
| MLTX-02-005-CN-10650 |  | Fixation and Installation of Precast Concrete Seats (Rectangular) | 7d | 2027-02-11 | 2027-02-20 | MLTX-02-005-CN-10640 FF, MLTX-02-005-CN-10640 SS, MLTX-02-005-CN-11710, MLTX-02-005-CN-11800, MLTX-02-005-PR-9840, MLTX-02-005-EN-4620, MLTX-02-005-PR-9030 |  | -69.1d |
| MLTX-02-005-CN-10660 |  | Fixation and Installation of Precast Concrete Seats (Circular) | 7d | 2027-02-11 | 2027-02-20 | MLTX-02-005-CN-10650 SS, MLTX-02-005-CN-10650 FF, MLTX-02-005-CN-11710, MLTX-02-005-CN-11800, MLTX-02-005-PR-9840, MLTX-02-005-EN-4620 |  | -69.1d |
| MLTX-02-005-CN-10670 |  | Fixation and Installation of Precast Concrete Trash Bins | 11d | 2027-02-20 | 2027-03-06 | MLTX-02-005-CN-10690, MLTX-02-005-CN-10660, MLTX-02-005-CN-11710, MLTX-02-005-CN-10540, MLTX-02-005-PR-9840, MLTX-02-005-EN-4620 |  | -69.1d |
| MLTX-02-005-CN-10620 |  | Traffic Signs Posts and Poles Installation | 15d | 2027-03-06 | 2027-03-27 | MLTX-02-005-CN-10660, MLTX-02-005-CN-10690, MLTX-02-005-CN-11800, MLTX-02-005-PR-9640, MLTX-02-005-CN-10670, MLTX-02-005-PR-9890, MLTX-02-005-CN-10610 |  | -69.1d |
|  | 2 | **PARKING** |  | 2026-05-16 | 2026-10-12 |  |  |  |
| MLTX-02-005-CN-10700 |  | Site Preparation & Compaction Under Interlock for Parking Area | 3d | 2026-05-16 A | 2026-07-22 A | MLTX-02-005-EN-4460, MLTX-02-005-CN-10330 | 100% |  |
| MLTX-02-005-CN-10690 |  | Interlock Installation (8 Cm) for Parking Area (Including Finishing Works) | 20d | 2026-10-03 A | 2026-10-12 A | MLTX-02-005-CN-10700, MLTX-02-005-CN-10340, MLTX-02-005-CN-10330, MLTX-02-005-EN-4490 | 100% |  |
|  | TO | **TOILET/SERVICE BUILDING** |  | 2026-05-21 | 2027-02-15 |  |  |  |
|  | 13 | **STRUCTURE WORKS** |  | 2026-05-21 | 2026-08-02 |  |  |  |
|  | 2 | **CONCRETE WORKS** |  | 2026-06-20 | 2026-07-12 |  |  |  |
|  | 1 | **SUB-STRUCTURE** |  | 2026-06-20 | 2026-06-25 |  |  |  |
| MLTX-02-005-CN-10750 |  | Plain Concrete Under Footing | 4d | 2026-06-20 A | 2026-06-21 A | MLTX-02-005-EN-6330, MLTX-02-005-EN-3080, MLTX-02-005-CN-10930, MLTX-02-005-EN-3070, MLTX-02-005-EN-4370, MLTX-02-005-EN-3060, MLTX-02-005-CN-10960, MLTX-02-005-CN-10840 | 100% |  |
| MLTX-02-005-CN-10800 |  | Reinforced Concrete Works for Slab on Grade Including Steel Fixing | 5d | 2026-06-22 A | 2026-06-25 A | MLTX-02-005-PR-7900, MLTX-02-005-CN-10750, MLTX-02-005-CN-11050 | 100% |  |
|  | 2 | **SUPER-STRUCTURE** |  | 2026-07-07 | 2026-07-12 |  |  |  |
| MLTX-02-005-CN-10820 |  | AAC Panels Works for Walls | 7d | 2026-07-07 A | 2026-07-08 A | MLTX-02-005-EN-3020, MLTX-02-005-EN-3000, MLTX-02-005-EN-4410, MLTX-02-005-EN-2990, MLTX-02-005-EN-3040, MLTX-02-005-EN-3030, MLTX-02-005-EN-3010, MLTX-02-005-EN-2980 | 100% |  |
| MLTX-02-005-CN-10830 |  | AAC Panels Works for Slabs | 3d | 2026-07-09 A | 2026-07-11 A | MLTX-02-005-CN-10820 | 100% |  |
| MLTX-02-005-CN-10840 |  | Parpet Works and Lintels | 4d | 2026-07-11 A | 2026-07-12 A | MLTX-02-005-CN-10830, MLTX-02-005-CN-10890 | 100% |  |
|  | 1 | **UNDER GROUND SEPTIC TANK** |  | 2026-05-31 | 2026-06-24 |  |  |  |
| MLTX-02-005-CN-10860 |  | Plain Concrete Under Footing | 3d | 2026-05-31 A | 2026-06-01 A | MLTX-02-005-CN-10950, MLTX-02-005-CN-10920, MLTX-02-005-CN-11430 | 100% |  |
| MLTX-02-005-CN-10880 |  | Reinforced Concrete Works for Tank Walls Including Steel Fixing | 11d | 2026-06-07 A | 2026-06-11 A | MLTX-02-005-CN-10870, MLTX-02-005-CN-11590 | 100% |  |
| MLTX-02-005-CN-10870 |  | Reinforced Concrete Works for Tank Foundation Including Shuttering and Steel Fixing | 8d | 2026-06-10 A | 2026-06-13 A | MLTX-02-005-CN-10860, MLTX-02-005-CN-11430 | 100% |  |
| MLTX-02-005-CN-10890 |  | Reinforced Concrete Works for Tank Slab Including Shuttering and Steel Fixing | 10d | 2026-06-20 A | 2026-06-24 A | MLTX-02-005-CN-10880, MLTX-02-005-CN-11590 | 100% |  |
|  | 3 | **THERMAL & MOISTER PROTECTION** |  | 2026-05-21 | 2026-08-02 |  |  |  |
|  | 1 | **ANTI TERMIT CONTROL** |  | 2026-05-21 | 2026-05-25 |  |  |  |
| MLTX-02-005-CN-10930 |  | Anti Termite Works Under Slab on Grade and Grade Beams | 1d | 2026-05-21 A | 2026-05-21 A | MLTX-02-005-CN-10870, MLTX-02-005-CN-10840 | 100% |  |
| MLTX-02-005-CN-10920 |  | Anti Termite Works Under Foundation | 1d | 2026-05-24 A | 2026-05-25 A | MLTX-02-005-CN-9980 SS, MLTX-02-005-CN-9970, MLTX-02-005-CN-11430 | 100% |  |
|  | 2 | **POLYETHYLENE SHEET** |  | 2026-05-25 | 2026-06-21 |  |  |  |
| MLTX-02-005-CN-10950 |  | Water Proofing Under Blinding Concrete (Polythelen Sheet) | 1d | 2026-05-25 A | 2026-05-31 A | MLTX-02-005-EN-4820, MLTX-02-005-EN-4380, MLTX-02-005-CN-10920 SS, MLTX-02-005-CN-11430 | 100% |  |
| MLTX-02-005-CN-10960 |  | Water Proofing Under Slab on Grade (Polythelen Sheet) | 1d | 2026-06-21 A | 2026-06-21 A | MLTX-02-005-CN-10870, MLTX-02-005-EN-4820, MLTX-02-005-CN-10930 SS, MLTX-02-005-CN-10840 | 100% |  |
|  | 4 | **EPOXY** |  | 2026-07-12 | 2026-08-02 |  |  |  |
| MLTX-02-005-CN-11000 |  | Surface Preparation for Epoxy Coating | 3d | 2026-07-12 A | 2026-07-12 A | MLTX-02-005-CN-10880, MLTX-02-005-CN-10890, MLTX-02-005-CN-10960 | 100% |  |
| MLTX-02-005-CN-11010 |  | Epoxy Coating for Walls and Slab of Tank | 5d | 2026-07-25 A | 2026-08-02 A | MLTX-02-005-CN-11000, MLTX-02-005-CN-10960 | 100% |  |
|  | 5 | **MASONARY WORK** |  | 2026-07-13 | 2026-07-14 |  |  |  |
| MLTX-02-005-CN-11030 |  | CMU Masonary Works Including all Accessories | 5d | 2026-07-13 A | 2026-07-14 A | MLTX-02-005-EN-4410, MLTX-02-005-CN-10800, MLTX-02-005-PR-7970 | 100% |  |
|  | 3 | **THERMAL & MOISTER PROTECTION** |  | 2026-09-26 | 2026-11-07 |  |  |  |
| MLTX-02-005-CN-11050 |  | Preparing Surface and Preliminary Works for Toilets Waterproofing | 2d | 2026-09-26 A | 2026-09-26 A | MLTX-02-005-CN-11010, MLTX-02-005-CN-10840 | 100% |  |
| MLTX-02-005-CN-11060 |  | Preparing Surface and Preliminary Works for Roofing and Wet Areas Insulation | 5d | 2026-09-30 A | 2026-09-30 A | MLTX-02-005-CN-11050 | 100% |  |
| MLTX-02-005-CN-11080 |  | Finalize Water Proofing Works for Roofing and Wet Areas | 8d | 2026-10-03 A | 2026-11-07 A | MLTX-02-005-CN-11060 | 100% |  |
| MLTX-02-005-CN-11070 |  | Finalize Water Proofing Works for Toilets | 6d | 2026-10-19 A | 2026-10-19 A | MLTX-02-005-CN-11050 | 100% |  |
|  | 11 | **MECHANICAL WORK** |  | 2026-07-18 | 2026-12-01 |  |  |  |
|  | 4 | **HVAC SYSTEM** |  | 2026-07-19 | 2026-11-03 |  |  |  |
| MLTX-02-005-CN-11480 |  | Preliminary HVAC and Ventilation Works | 3d | 2026-07-19 A | 2026-07-22 A | MLTX-02-005-EN-4580, MLTX-02-005-EN-3120, MLTX-02-005-EN-3100, MLTX-02-005-EN-3160, MLTX-02-005-EN-3110, MLTX-02-005-EN-3150, MLTX-02-005-CN-11670 | 100% |  |
| MLTX-02-005-CN-11490 |  | Exhaust, Air Ducts Installation with all Accessories | 6d | 2026-09-12 A | 2026-09-12 A | MLTX-02-005-CN-11480, MLTX-02-005-PR-8450 | 100% |  |
| MLTX-02-005-CN-11500 |  | Install and Finish HVAC and Ventilation Works Including Split Air Units | 3d | 2026-11-03 A | 2026-11-03 A | MLTX-02-005-CN-11490 FF, MLTX-02-005-CN-11260, MLTX-02-005-PR-8370, MLTX-02-005-PR-8330, MLTX-02-005-PR-8410 | 100% |  |
|  | 2 | **WATER SUPPLY SYSTEM** |  | 2026-07-28 | 2026-12-01 |  |  |  |
| MLTX-02-005-CN-11540 |  | Installing of PPR Pipes and Fittings for Water Network | 3d | 2026-07-28 A | 2026-08-02 A | MLTX-02-005-EN-3180, MLTX-02-005-CN-11590, MLTX-02-005-EN-4550, MLTX-02-005-EN-3190, MLTX-02-005-PR-8250, MLTX-02-005-CN-10800 | 100% |  |
| MLTX-02-005-CN-11520 |  | Installing of Valves and Fittings | 2d | 2026-09-05 A | 2026-09-05 A | MLTX-02-005-CN-11540, MLTX-02-005-CN-11480 | 100% |  |
| MLTX-02-005-CN-11560 |  | Installing of GRP Tanks | 8d | 2026-09-28 A | 2026-10-13 A | MLTX-02-005-CN-11520 | 100% |  |
| MLTX-02-005-CN-11530 |  | Installing of HDPE Pipes and Valves for Water Supply Network | 3d | 2026-09-29 A | 2026-10-17 A | MLTX-02-005-CN-11520, MLTX-02-005-CN-11480 | 100% |  |
| MLTX-02-005-CN-11860 |  | Installing of Water Heater | 4d | 2026-10-20 A | 2026-10-20 A | MLTX-02-005-CN-11520 | 100% |  |
| MLTX-02-005-CN-11550 |  | Installing of Booster Pump Units Including fittings and accessories | 7d | 2026-11-23 | 2026-12-01 | MLTX-02-005-CN-11490, MLTX-02-005-CN-11560, MLTX-02-005-CN-11500, MLTX-02-005-CN-11270, MLTX-02-005-CN-11260, MLTX-02-005-PR-8410, MLTX-02-005-CN-11760 |  | 15.9d |
|  | 1 | **SEWER/DRAINAGE SYSTEM** |  | 2026-07-18 | 2026-11-29 |  |  |  |

| ID | WBS | Task | Duration | Start | Finish | Predecessors | Complete | Total float |
| --- | --- | --- | --- | --- | --- | --- | --- | --- |
| MLTX-02-005-CN-11590 |  | Installing UPVC Pipes for Sewage Network | 2d | 2026-07-18 A | 2026-07-22 A | MLTX-02-005-EN-3130, MLTX-02-005-EN-3140, MLTX-02-005-EN-4540, MLTX-02-005-PR-8290 | 100% |  |
| MLTX-02-005-CN-11850 |  | Installing Inspection Chamber for Sewage Network | 5d | 2026-10-22 A | 2026-11-29 | MLTX-02-005-CN-11590, MLTX-02-005-CN-11480 | 90% | 18.9d |
| MLTX-02-005-CN-11870 |  | Installing of Toilet Fixtures and Accessories Such as Closets and Basins | 4d | 2026-11-03 A | 2026-11-07 A | MLTX-02-005-CN-11590 | 100% |  |
| MLTX-02-005-CN-11600 |  | Installing of Plumping Fixtures and Accessories | 2d | 2026-11-05 A | 2026-11-07 A | MLTX-02-005-CN-11580, MLTX-02-005-CN-11230, MLTX-02-005-CN-11490, MLTX-02-005-CN-11560 | 100% |  |
| MLTX-02-005-CN-11580 |  | Installing UPVC Pipes for External Connection for Sewage Network | 4d | 2026-11-07 A | 2026-11-07 A | MLTX-02-005-CN-11480 | 100% |  |
|  | 3 | **FIRE PROTECTION** |  | 2026-11-23 | 2026-11-25 |  |  |  |
| MLTX-02-005-CN-11620 |  | Installing of Fire Fighting Extinguisher and accessories (PFE-1, PFE-2) | 2d | 2026-11-23 | 2026-11-25 | MLTX-02-005-EN-3170, MLTX-02-005-CN-11840, MLTX-02-005-CN-11350, MLTX-02-005-EN-4560, MLTX-02-005-CN-11500, MLTX-02-005-CN-11080 |  | 20.9d |
|  | 12 | **ELECTRICAL WORKS** |  | 2026-07-19 | 2027-01-19 |  |  |  |
|  | 1 | **ROUGH-IN WORKS** |  | 2026-07-19 | 2026-08-09 |  |  |  |
| MLTX-02-005-CN-11650 |  | Preleminary Works for Earthing Works | 2d | 2026-07-19 A | 2026-08-09 A | MLTX-02-005-EN-3380, MLTX-02-005-PR-8570, MLTX-02-005-CN-10820, MLTX-02-005-EN-4660, MLTX-02-005-CN-10840, MLTX-02-005-EN-3290, MLTX-02-005-CN-11030, MLTX-02-005-CN-11660 | 100% |  |
| MLTX-02-005-CN-11660 |  | Preleminary Works for Panel Boards | 2d | 2026-07-19 A | 2026-07-20 A | MLTX-02-005-EN-3230, MLTX-02-005-EN-4670, MLTX-02-005-EN-3240, MLTX-02-005-EN-3270, MLTX-02-005-EN-3220, MLTX-02-005-CN-10840, MLTX-02-005-EN-3260, MLTX-02-005-CN-11060 | 100% |  |
| MLTX-02-005-CN-11670 |  | Preleminary Works for Cable Works | 2d | 2026-07-19 A | 2026-07-22 A | MLTX-02-005-EN-3250, MLTX-02-005-EN-3210, MLTX-02-005-EN-3280, MLTX-02-005-EN-4650, MLTX-02-005-EN-4600, MLTX-02-005-CN-10840, MLTX-02-005-CN-10820, MLTX-02-005-CN-11660 | 100% |  |
| MLTX-02-005-CN-11680 |  | Preleminary Works for Sockets and Power Points | 2d | 2026-07-19 A | 2026-07-20 A | MLTX-02-005-CN-10820, MLTX-02-005-CN-10840, MLTX-02-005-CN-11660 | 100% |  |
| MLTX-02-005-CN-11690 |  | Preleminary Works for Lightning Works | 2d | 2026-07-19 A | 2026-08-09 A | MLTX-02-005-EN-3320, MLTX-02-005-CN-10840, MLTX-02-005-EN-4660, MLTX-02-005-CN-10820, MLTX-02-005-EN-3330, MLTX-02-005-CN-11660 | 100% |  |
| MLTX-02-005-CN-11700 |  | Preleminary Works for Data & Telecommunication System | 2d | 2026-07-19 A | 2026-08-09 A | MLTX-02-005-CN-10840, MLTX-02-005-EN-2280, MLTX-02-005-EN-3370, MLTX-02-005-CN-10820, MLTX-02-005-EN-3400, MLTX-02-005-EN-4630 | 100% |  |
| MLTX-02-005-CN-11720 |  | Preleminary Works for Security and Access Control System | 2d | 2026-07-19 A | 2026-08-09 A | MLTX-02-005-CN-10840, MLTX-02-005-CN-10820, MLTX-02-005-EN-4640, MLTX-02-005-CN-11660 | 100% |  |
|  | 2 | **FIXTURE WORKS** |  | 2026-11-17 | 2027-01-19 |  |  |  |
| MLTX-02-005-CN-11790 |  | Installing and Finalize Works of Lighting Works including Light Fixtures | 4d | 2026-11-17 A | 2026-11-18 A | MLTX-02-005-CN-11670, MLTX-02-005-PR-8490, MLTX-02-005-CN-11840 | 100% |  |
| MLTX-02-005-CN-11760 |  | Installing and Finalize Works of Sockets and Power Points | 4d | 2026-11-18 A | 2026-11-19 A | MLTX-02-005-CN-11840, MLTX-02-005-PR-8530, MLTX-02-005-CN-11680 | 100% |  |
| MLTX-02-005-CN-11770 |  | Installing and Finalize Works of Earthing Works | 3d | 2026-11-18 A | 2026-11-19 A | MLTX-02-005-CN-11260, MLTX-02-005-CN-11650 | 100% |  |
| MLTX-02-005-CN-11820 |  | Installing and Finalize Works of Lightning Protection System | 6d | 2026-11-18 A | 2026-11-18 A | MLTX-02-005-CN-11690, MLTX-02-005-CN-11260 | 100% |  |
| MLTX-02-005-CN-11830 |  | Installing and Finalize Works of Security and Access Control System | 4d | 2026-11-18 A | 2026-11-18 A | MLTX-02-005-CN-11260, MLTX-02-005-CN-11720, MLTX-02-005-CN-11770 | 100% |  |
| MLTX-02-005-CN-11780 |  | Installing of Fire automation and Fire Alarm System | 4d | 2026-11-21 A | 2026-11-28 | MLTX-02-005-CN-11500, MLTX-02-005-EN-3300, MLTX-02-005-EN-3310, MLTX-02-005-EN-3340, MLTX-02-005-CN-11770 | 80% | 18.9d |
| MLTX-02-005-CN-11750 |  | Installing Data and Telecommunication System with all Accessories | 4d | 2026-11-23 | 2026-11-28 | MLTX-02-005-CN-11860, MLTX-02-005-CN-11700, MLTX-02-005-CN-11840, MLTX-02-005-CN-11770 |  | 18.9d |
| MLTX-02-005-CN-11740 |  | Installing and Finish Works of Panel Boards | 5d | 2027-01-13 | 2027-01-19 | MLTX-02-005-PR-8610, MLTX-02-005-CN-11660, MLTX-02-005-CN-11260, MLTX-02-005-CN-11070 |  | -56.1d |
|  | 7 | **DOORS/WINDOWS** |  | 2026-10-20 | 2026-11-02 |  |  |  |
| MLTX-02-005-CN-11110 |  | Preliminary Works For Doors | 3d | 2026-10-20 A | 2026-10-20 A | MLTX-02-005-PR-8130, MLTX-02-005-CN-10840, MLTX-02-005-EN-4440 | 100% |  |
| MLTX-02-005-CN-11120 |  | Finalize Metal Doors for Toilets Building | 9d | 2026-10-20 A | 2026-10-20 A | MLTX-02-005-CN-11110 | 100% |  |
| MLTX-02-005-CN-11100 |  | Preliminary Works For Windows/Curtain Wall | 2d | 2026-11-02 A | 2026-11-02 A | MLTX-02-005-CN-10840, MLTX-02-005-PR-8130, MLTX-02-005-CN-11720 | 100% |  |
| MLTX-02-005-CN-11130 |  | Finalize Glazzed Curtain Wall Works | 7d | 2026-11-02 A | 2026-11-02 A | MLTX-02-005-CN-11100, MLTX-02-005-CN-11260 | 100% |  |
|  | 4 | **METAL WORKS** |  | 2026-09-16 | 2026-12-03 |  |  |  |
| MLTX-02-005-CN-11170 |  | Installation of Galvanized Steel Roof Scupper | 4d | 2026-09-16 A | 2026-09-16 A | MLTX-02-005-CN-11290 | 100% |  |
| MLTX-02-005-CN-11150 |  | Installation of Galvanized Steel Ladder | 10d | 2026-10-22 A | 2026-10-22 A | MLTX-02-005-CN-11170 | 100% |  |
| MLTX-02-005-CN-11160 |  | Installation of DI Cover for Tank | 4d | 2026-11-29 | 2026-12-03 | MLTX-02-005-CN-11010, MLTX-02-005-EN-4160, MLTX-02-005-CN-11030, MLTX-02-005-CN-11850 |  | 18.9d |
|  | 6 | **FINISHING WORKS** |  | 2026-08-10 | 2026-12-01 |  |  |  |
|  | 1 | **FLOOR FINISHES** |  | 2026-10-17 | 2026-11-28 |  |  |  |
| MLTX-02-005-CN-11200 |  | Creamic Tiles Floor Finish Works | 2d | 2026-10-17 A | 2026-10-18 A | MLTX-02-005-PR-8050, MLTX-02-005-CN-11280, MLTX-02-005-EN-4420, MLTX-02-005-CN-11540, MLTX-02-005-CN-11170 | 100% |  |
| MLTX-02-005-CN-11230 |  | Ceramic Skirting Tiles Finish Works | 4d | 2026-10-19 A | 2026-10-19 A | MLTX-02-005-CN-11310 | 100% |  |
| MLTX-02-005-CN-11220 |  | Epoxy Coat on Concrete Floor | 3d | 2026-11-18 A | 2026-11-21 A | MLTX-02-005-CN-11260, MLTX-02-005-CN-11830 | 100% |  |
| MLTX-02-005-CN-11210 |  | Granite Tiles Floor Finish Works | 4d | 2026-11-23 | 2026-11-28 | MLTX-02-005-CN-11200 |  | 23.9d |
|  | 2 | **WALL FINISHES** |  | 2026-08-10 | 2026-12-01 |  |  |  |
| MLTX-02-005-CN-11280 |  | Preliminary Works for Wall Finish Works including Plastering (Internal) | 5d | 2026-08-10 A | 2026-08-19 A | MLTX-02-005-CN-11650, MLTX-02-005-CN-11660, MLTX-02-005-CN-11680, MLTX-02-005-CN-11670, MLTX-02-005-CN-11720, MLTX-02-005-CN-11690, MLTX-02-005-EN-4400, MLTX-02-005-CN-11700 | 100% |  |
| MLTX-02-005-CN-11290 |  | Preliminary Works for Wall Finish Works (External) | 4d | 2026-08-15 A | 2026-08-29 A | MLTX-02-005-CN-11540, MLTX-02-005-CN-11030 | 100% |  |
| MLTX-02-005-CN-11310 |  | Ceramic Finish Works for Walls | 5d | 2026-09-20 A | 2026-09-26 A | MLTX-02-005-CN-11170 | 100% |  |
| MLTX-02-005-CN-11250 |  | Stone Cladding Finish Works for External Walls | 5d | 2026-10-13 A | 2026-10-13 A | MLTX-02-005-CN-11280 | 100% |  |
| MLTX-02-005-CN-11300 |  | Painting Finish Works for External Walls | 7d | 2026-10-20 A | 2026-12-01 | MLTX-02-005-CN-11290, MLTX-02-005-CN-11530, MLTX-02-005-CN-11280, MLTX-02-005-EN-8040 | 90% | 20.9d |
| MLTX-02-005-CN-11840 |  | Painting Finish Works for Internal Walls | 2d | 2026-10-21 A | 2026-10-25 A | MLTX-02-005-CN-11310 | 100% |  |
| MLTX-02-005-CN-11270 |  | Granite Capping for Parpet | 2d | 2026-10-25 A | 2026-10-25 A | MLTX-02-005-CN-11310 | 100% |  |
| MLTX-02-005-CN-11260 |  | Glass Partitions including all accessories and doors | 7d | 2026-11-02 A | 2026-11-02 A | MLTX-02-005-EN-4510 | 100% |  |
| MLTX-02-005-CN-11320 |  | Phenolic Partitions for Toilets | 7d | 2026-11-14 A | 2026-11-17 A | MLTX-02-005-CN-11360, MLTX-02-005-CN-11230, MLTX-02-005-CN-11250 | 100% |  |
|  | 3 | **CELLING FINISHES** |  | 2026-10-19 | 2026-10-25 |  |  |  |
| MLTX-02-005-CN-11360 |  | Gypsum Board Suspended Ceiling Finish Works For Ceiling | 7d | 2026-10-19 A | 2026-10-22 A | MLTX-02-005-CN-11480, MLTX-02-005-CN-11310 | 100% |  |
| MLTX-02-005-CN-11340 |  | Preliminary Works for Ceiling Painting Works | 15d | 2026-10-24 A | 2026-10-25 A | MLTX-02-005-PR-8090, MLTX-02-005-CN-11280, MLTX-02-005-EN-4520 | 100% |  |
| MLTX-02-005-CN-11350 |  | Painting Finish Works for Ceiling | 3d | 2026-10-25 A | 2026-10-25 A | MLTX-02-005-CN-11340, MLTX-02-005-CN-11360, MLTX-02-005-CN-11840 | 100% |  |
|  | 8 | **SPECIALTIES WORK** |  | 2026-11-18 | 2027-02-15 |  |  |  |
| MLTX-02-005-CN-11380 |  | Installation of Phenolic Locker | 3d | 2026-11-18 A | 2026-11-18 A | MLTX-02-005-CN-11320 | 100% |  |
| MLTX-02-005-CN-11390 |  | Sanitary Fixtures and Accessories Works | 5d | 2026-11-18 A | 2026-11-29 | MLTX-02-005-PR-8210, MLTX-02-005-CN-11600 | 50% | 17.9d |
| MLTX-02-005-CN-11400 |  | Installation of MODON Logo on the entrance | 3d | 2027-02-11 | 2027-02-15 | MLTX-02-005-CN-11840, MLTX-02-005-PR-8170, MLTX-02-005-CN-11150, MLTX-02-005-CN-11760, MLTX-02-005-CN-11300, MLTX-02-005-CN-11160, MLTX-02-005-CN-11210 |  | -41.1d |
|  | PRO | **PROCUREMENT** |  | 2026-04-02 | 2027-02-25 |  |  |  |
|  | SLI | **SHORT LEAD ITEM** |  | 2026-04-02 | 2027-02-25 |  |  |  |
|  | TOI | **TOILET/SERVICE WORKS** |  | 2026-04-02 | 2027-02-11 |  |  |  |
|  | 1 | **STEEL REINFORCEMENT** |  | 2026-04-02 | 2026-05-24 |  |  |  |
| MLTX-02-005-PR-7880 |  | PO for Steel Reinforcement | 5d | 2026-04-02 A | 2026-05-10 A | MLTX-02-005-EN-6300, MLTX-02-005-PR-9450 | 100% |  |
| MLTX-02-005-PR-7900 |  | Material Delivery of Steel Reinforcement | 5d | 2026-05-24 A | 2026-05-24 A | MLTX-02-005-PR-7880, MLTX-02-005-PR-8030 | 100% |  |
|  | 3 | **CONCRETE BLOCKS** |  | 2026-04-08 | 2026-07-07 |  |  |  |
| MLTX-02-005-PR-7950 |  | PO for Concrete Blocks | 5d | 2026-04-08 A | 2026-05-10 A | MLTX-02-005-PR-7880, MLTX-02-005-EN-6360, MLTX-02-005-EN-6330 | 100% |  |
| MLTX-02-005-PR-7970 |  | Material Delivery of Concrete Blocks | 8d | 2026-07-07 A | 2026-07-07 A | MLTX-02-005-PR-7950, MLTX-02-005-PR-8030 | 100% |  |
|  | 6 | **FLOOR/WALL TILES** |  | 2026-08-18 | 2026-08-20 |  |  |  |
| MLTX-02-005-PR-8030 |  | PO for Tilling Materials | 5d | 2026-08-18 A | 2026-08-18 A | MLTX-02-005-EN-6420, MLTX-02-005-PR-7950 | 100% |  |
| MLTX-02-005-PR-8050 |  | Material Delivery of Tailling Material | 13d | 2026-08-20 A | 2026-08-20 A | MLTX-02-005-PR-8030, MLTX-02-005-PR-8230 | 100% |  |

| ID | WBS | Task | Duration | Start | Finish | Predecessors | Complete | Total float |
| --- | --- | --- | --- | --- | --- | --- | --- | --- |
|  | 7 | **SUSPENDED CEILING** |  | 2026-07-26 | 2026-08-20 |  |  |  |
| MLTX-02-005-PR-8070 |  | PO for Suspend Ceiling | 5d | 2026-07-26 A | 2026-07-26 A | MLTX-02-005-EN-6450 | 100% |  |
| MLTX-02-005-PR-8090 |  | Material Delivery of Suspend Ceiling | 13d | 2026-08-20 A | 2026-08-20 A | MLTX-02-005-PR-8070 | 100% |  |
|  | 8 | **DOORS/WINDOWS** |  | 2026-09-15 | 2026-09-20 |  |  |  |
| MLTX-02-005-PR-8110 |  | PO for Doors/Windows | 5d | 2026-09-15 A | 2026-09-15 A | MLTX-02-005-EN-7330, MLTX-02-005-EN-6690, MLTX-02-005-EN-7360, MLTX-02-005-EN-6570, MLTX-02-005-EN-6480, MLTX-02-005-EN-6660, MLTX-02-005-EN-6780, MLTX-02-005-PR-8030, MLTX-02-005-EN-7610, MLTX-02-005-EN-7640, MLTX-02-005-EN-7790, MLTX-02-005-EN-6750, MLTX-02-005-EN-7820, MLTX-02-005-EN-7450, MLTX-02-005-EN-7480, MLTX-02-005-EN-6510, MLTX-02-005-EN-7700, MLTX-02-005-EN-7580, MLTX-02-005-EN-7730, MLTX-02-005-EN-6450, MLTX-02-005-EN-7420, MLTX-02-005-EN-6940, MLTX-02-005-EN-7390, MLTX-02-005-EN-7270, MLTX-02-005-EN-7300, MLTX-02-005-EN-6970, MLTX-02-005-EN-7000, MLTX-02-005-EN-7510, MLTX-02-005-EN-7760, MLTX-02-005-EN-7670, MLTX-02-005-EN-7210, MLTX-02-005-EN-7550 | 100% |  |
| MLTX-02-005-PR-8130 |  | Material Delivery for Doors/Windows | 15d | 2026-09-20 A | 2026-09-20 A | MLTX-02-005-PR-8110 | 100% |  |
|  | 11 | **WATER SUPPLY PIPES** |  | 2026-04-28 | 2026-07-07 |  |  |  |
| MLTX-02-005-PR-8230 |  | PO for Water Supply Pipes | 5d | 2026-04-28 A | 2026-05-03 A | MLTX-02-005-EN-6570, MLTX-02-005-EN-6690, MLTX-02-005-PR-8110 | 100% |  |
| MLTX-02-005-PR-8250 |  | Material Delivery for Water Supply Pipes | 7d | 2026-07-07 A | 2026-07-07 A | MLTX-02-005-PR-8230, MLTX-02-005-PR-8130 | 100% |  |
|  | 12 | **SEWAGE/DRAINAGE PIPES** |  | 2026-04-26 | 2026-07-07 |  |  |  |
| MLTX-02-005-PR-8270 |  | PO for Sewage/Drainage Pipes | 5d | 2026-04-26 A | 2026-05-10 A | MLTX-02-005-EN-6600, MLTX-02-005-EN-6690 | 100% |  |
| MLTX-02-005-PR-8290 |  | Material Delivery for Sewage/Drainage Pipes | 7d | 2026-07-07 A | 2026-07-07 A | MLTX-02-005-PR-8270, MLTX-02-005-PR-8430 | 100% |  |
|  | 10 | **SANITARY FIXTURES** |  | 2026-07-28 | 2026-08-20 |  |  |  |
| MLTX-02-005-PR-8190 |  | PO for Sanitary Fixtures | 5d | 2026-07-28 A | 2026-07-28 A | MLTX-02-005-PR-8270, MLTX-02-005-EN-6540 | 100% |  |
| MLTX-02-005-PR-8210 |  | Material Delivery for Sanitary Fixtures | 13d | 2026-08-20 A | 2026-08-20 A | MLTX-02-005-PR-8190, MLTX-02-005-PR-8130 | 100% |  |
|  | 16 | **PACKAGE AC UNITS** |  | 2026-07-07 | 2026-07-07 |  |  |  |
| MLTX-02-005-PR-8310 |  | PO for Package AC Units | 5d | 2026-07-07 A | 2026-07-07 A | MLTX-02-005-PR-8270, MLTX-02-005-EN-5060 | 100% |  |
| MLTX-02-005-PR-8330 |  | Material Delivery for Package AC Units | 15d | 2026-07-07 A | 2026-07-07 A | MLTX-02-005-PR-8310 | 100% |  |
|  | 17 | **AIR DIFUSSERS/GRILLS** |  | 2026-08-18 | 2026-08-20 |  |  |  |
| MLTX-02-005-PR-8350 |  | PO for Air Diffusers/Grills | 5d | 2026-08-18 A | 2026-08-18 A | MLTX-02-005-PR-8190, MLTX-02-005-EN-6660 | 100% |  |
| MLTX-02-005-PR-8370 |  | Material Delivery for Air Diffusers/Grills | 15d | 2026-08-20 A | 2026-08-20 A | MLTX-02-005-PR-8350 | 100% |  |
|  | 18 | **GALVANIZED DUCTS** |  | 2026-08-18 | 2026-08-20 |  |  |  |
| MLTX-02-005-PR-8390 |  | PO for Galvanized Ducts | 5d | 2026-08-18 A | 2026-08-18 A | MLTX-02-005-EN-6690, MLTX-02-005-PR-8350 | 100% |  |
| MLTX-02-005-PR-8410 |  | Material Delivery for Galvanized Ducts | 15d | 2026-08-20 A | 2026-08-20 A | MLTX-02-005-PR-8390, MLTX-02-005-PR-8350 | 100% |  |
|  | 19 | **EXHAUST FANS** |  | 2026-08-20 | 2026-08-20 |  |  |  |
| MLTX-02-005-PR-8430 |  | PO for Exhaust Fans | 5d | 2026-08-20 A | 2026-08-20 A | MLTX-02-005-EN-6720, MLTX-02-005-PR-8190 | 100% |  |
| MLTX-02-005-PR-8450 |  | Material Delivery for Exhaust Fans | 10d | 2026-08-20 A | 2026-08-20 A | MLTX-02-005-PR-8430, MLTX-02-005-PR-8130 | 100% |  |
|  | 13 | **LIGHTING FIXTURES** |  | 2026-07-07 | 2026-11-08 |  |  |  |
| MLTX-02-005-PR-8470 |  | PO for Lighting Fixtures | 5d | 2026-07-07 A | 2026-07-07 A | MLTX-02-005-EN-6750, MLTX-02-005-PR-8270 | 100% |  |
| MLTX-02-005-PR-8490 |  | Material Delivery for Lighting Fixtures | 40d | 2026-11-08 A | 2026-11-08 A | MLTX-02-005-PR-8470, MLTX-02-005-PR-8430 | 100% |  |
|  | 14 | **SWITCHES/SOCKETS** |  | 2026-10-13 | 2026-11-17 |  |  |  |
| MLTX-02-005-PR-8510 |  | PO for Switches/Sockets | 15d | 2026-10-13 A | 2026-10-13 A | MLTX-02-005-PR-8470, MLTX-02-005-EN-6780, MLTX-02-005-PR-8450 | 100% |  |
| MLTX-02-005-PR-8530 |  | Material Delivery for Switches/Sockets | 27d | 2026-11-17 A | 2026-11-17 A | MLTX-02-005-PR-8510, MLTX-02-005-PR-8350 | 100% |  |
|  | 15 | **EARTHING SYSTEM** |  | 2026-07-12 | 2026-07-12 |  |  |  |
| MLTX-02-005-PR-8550 |  | PO for Earthing System | 5d | 2026-07-12 A | 2026-07-12 A | MLTX-02-005-EN-6810 | 100% |  |
| MLTX-02-005-PR-8570 |  | Material Delivery for Earthing System | 15d | 2026-07-12 A | 2026-07-12 A | MLTX-02-005-PR-8550, MLTX-02-005-PR-8110 | 100% |  |
|  | 5 | **DISTRIBUTION PANNELS** |  | 2026-10-13 | 2027-01-13 |  |  |  |
| MLTX-02-005-PR-8590 |  | PO for Distribution Panels | 5d | 2026-10-13 A | 2026-10-13 A | MLTX-02-005-EN-6840, MLTX-02-005-PR-8450 | 100% |  |
| MLTX-02-005-PR-8610 |  | Material Delivery for Distribution Panels | 15d | 2026-12-27 | 2027-01-13 | MLTX-02-005-PR-8590, MLTX-02-005-PR-8150 |  | -56.1d |
|  | 9 | **FURNITURES** |  | 2026-11-23 | 2027-02-11 |  |  |  |
| MLTX-02-005-PR-8150 |  | PO for Furnitures | 29d | 2026-11-23 | 2026-12-27 | MLTX-02-005-PR-8430, MLTX-02-005-EN-6510, MLTX-02-005-PR-8230 |  | -56.1d |
| MLTX-02-005-PR-8170 |  | Material Delivery for Furnitures | 40d | 2026-12-27 | 2027-02-11 | MLTX-02-005-PR-8150, MLTX-02-005-PR-9170 |  | -41.1d |
|  | PLG | **PLAYGROUND WORKS** |  | 2026-04-02 | 2027-02-25 |  |  |  |
|  | 5 | **PVC MEMBRANE** |  | 2026-04-02 | 2027-01-04 |  |  |  |
| MLTX-02-005-PR-8640 |  | PO for PVC Membrane | 10d | 2026-04-02 A | 2026-05-19 A | MLTX-02-005-EN-5310, MLTX-02-005-PR-9370 | 100% |  |
| MLTX-02-005-PR-8650 |  | Material Delivery for PVC Membrane | 21d | 2026-12-10 | 2027-01-04 | MLTX-02-005-EN-6880, MLTX-02-005-PR-8640, MLTX-02-005-PR-8970 |  | -47.1d |
|  | 15 | **ARTIFICIAL TURF** |  | 2026-04-02 | 2027-01-18 |  |  |  |
| MLTX-02-005-PR-8830 |  | PO for Artificial TURF | 5d | 2026-04-02 A | 2026-05-19 A | MLTX-02-005-EN-7030 | 100% |  |
| MLTX-02-005-PR-8850 |  | Material Delivery for Artificial TURF | 12d | 2027-01-04 | 2027-01-18 | MLTX-02-005-PR-8650, MLTX-02-005-PR-8830, MLTX-02-005-PR-9110 |  | -47.1d |
|  | 20 | **RUBBER GRANULES** |  | 2026-04-02 | 2027-01-17 |  |  |  |
| MLTX-02-005-PR-8870 |  | PO for Rubber Granules | 5d | 2026-04-02 A | 2026-05-19 A | MLTX-02-005-EN-7060 | 100% |  |
| MLTX-02-005-PR-8890 |  | Material Delivery for Rubber Granules | 32d | 2026-12-10 | 2027-01-17 | MLTX-02-005-PR-8870, MLTX-02-005-PR-9090 |  | -46.1d |
|  | 21 | **PADEL GLASS** |  | 2026-04-02 | 2027-02-08 |  |  |  |
| MLTX-02-005-PR-8910 |  | PO for Padel Glass | 5d | 2026-04-02 A | 2026-05-19 A | MLTX-02-005-EN-7090 | 100% |  |
| MLTX-02-005-PR-8930 |  | Material Delivery for Padel Glass | 18d | 2027-01-18 | 2027-02-08 | MLTX-02-005-PR-8890, MLTX-02-005-PR-8850, MLTX-02-005-PR-8910, MLTX-02-005-PR-9050 |  | -47.1d |
|  | 22 | **PADEL WIRE MESH/STEEL SETS** |  | 2026-04-08 | 2026-12-10 |  |  |  |
| MLTX-02-005-PR-8950 |  | PO for Wire Mesh/Steel Sets | 5d | 2026-04-08 A | 2026-05-19 A | MLTX-02-005-PR-8910, MLTX-02-005-EN-7120 | 100% |  |
| MLTX-02-005-PR-8970 |  | Material Delivery for Wire Mesh/Steel Sets | 15d | 2026-11-23 | 2026-12-10 | MLTX-02-005-PR-8950, MLTX-02-005-PR-8110 |  | -64.1d |
|  | 1 | **AGGREGATE BASE COURSE** |  | 2026-07-07 | 2026-07-07 |  |  |  |
| MLTX-02-005-PR-8990 |  | PO for Aggregate Base Course | 5d | 2026-07-07 A | 2026-07-07 A | MLTX-02-005-EN-7150 | 100% |  |
| MLTX-02-005-PR-9000 |  | Material Delivery for Aggregate Base Course | 7d | 2026-07-07 A | 2026-07-07 A | MLTX-02-005-PR-8990 | 100% |  |
|  | 16 | **PACKAGE AC UNITS** |  | 2026-07-04 | 2026-07-10 |  |  |  |
| MLTX-02-005-PR-9130 |  | PO for Package AC Units | 5d | 2026-07-04 A | 2026-07-04 A | MLTX-02-005-EN-7270, MLTX-02-005-PR-8310, MLTX-02-005-PR-9370 | 100% |  |
| MLTX-02-005-PR-9150 |  | Material Delivery for Package AC Units | 15d | 2026-07-10 A | 2026-07-10 A | MLTX-02-005-PR-9130, MLTX-02-005-PR-9370 | 100% |  |
|  | 17 | **AIR DIFUSSERS/GRILLS** |  | 2026-12-10 | 2027-01-03 |  |  |  |
| MLTX-02-005-PR-9170 |  | PO for Air Difussers/Grills | 5d | 2026-12-10 | 2026-12-16 | MLTX-02-005-EN-7300, MLTX-02-005-EN-6630, MLTX-02-005-PR-8190, MLTX-02-005-PR-8310, MLTX-02-005-PR-9090 |  | -50.1d |
| MLTX-02-005-PR-9190 |  | Material Delivery for Air Difussers/Grills | 15d | 2026-12-16 | 2027-01-03 | MLTX-02-005-PR-9170, MLTX-02-005-PR-9090 |  | -50.1d |
|  | 2 | **BITUMINOUS BASE & WEARING COURSE** |  | 2026-04-02 | 2027-01-11 |  |  |  |
| MLTX-02-005-PR-9020 |  | PO for Bituminous Base & Wearing Course | 5d | 2026-04-02 A | 2026-05-14 A | MLTX-02-005-EN-7180, MLTX-02-005-PR-9000 | 100% |  |
| MLTX-02-005-PR-9030 |  | Material Delivery for the Site | 27d | 2026-12-10 | 2027-01-11 | MLTX-02-005-PR-9020, MLTX-02-005-PR-9090 |  | -42.1d |

| ID | WBS | Task | Duration | Start | Finish | Predecessors | Complete | Total float |
| --- | --- | --- | --- | --- | --- | --- | --- | --- |
|  | 3 | **INTERLOCKING PAVING** |  | 2026-09-15 | 2026-11-03 |  |  |  |
| MLTX-02-005-PR-9050 |  | PO for Interlocking Block Pavers | 15d | 2026-09-15 A | 2026-09-15 A | MLTX-02-005-EN-7210 | 100% |  |
| MLTX-02-005-PR-9070 |  | Material Delivery for Interlocking Block Pavers | 17d | 2026-11-03 A | 2026-11-03 A | MLTX-02-005-PR-9050 | 100% |  |
|  | 4 | **MARKING PAINT** |  | 2026-11-23 | 2026-12-30 |  |  |  |
| MLTX-02-005-PR-9090 |  | PO for Marking Paint | 15d | 2026-11-23 | 2026-12-10 | MLTX-02-005-EN-7240, MLTX-02-005-PR-9020, MLTX-02-005-PR-8130 |  | -69.1d |
| MLTX-02-005-PR-9110 |  | Material Delivery for Marking Paint | 17d | 2026-12-10 | 2026-12-30 | MLTX-02-005-PR-9090, MLTX-02-005-PR-9760 |  | -69.1d |
|  | 18 | **GALVANIZED DUCTS** |  | 2026-10-13 | 2026-10-13 |  |  |  |
| MLTX-02-005-PR-9210 |  | PO for Galvanized Duct | 5d | 2026-10-13 A | 2026-10-13 A | MLTX-02-005-EN-7330, MLTX-02-005-PR-8310 | 100% |  |
| MLTX-02-005-PR-9230 |  | Material Delivery for Galvanized Duct | 15d | 2026-10-13 A | 2026-10-13 A | MLTX-02-005-PR-9210 | 100% |  |
|  | 19 | **EXHAUST FANS** |  | 2026-10-13 | 2026-10-13 |  |  |  |
| MLTX-02-005-PR-9250 |  | PO for Exhaust Fans | 5d | 2026-10-13 A | 2026-10-13 A | MLTX-02-005-EN-7360, MLTX-02-005-PR-8310, MLTX-02-005-PR-9370 | 100% |  |
| MLTX-02-005-PR-9270 |  | Material Delivery for Exhaust Fans | 15d | 2026-10-13 A | 2026-10-13 A | MLTX-02-005-PR-9250, MLTX-02-005-PR-9370 | 100% |  |
|  | 10 | **DISTRIBUTION BOARDS** |  | 2026-12-10 | 2027-01-03 |  |  |  |
| MLTX-02-005-PR-9290 |  | PO for Distribution Boards | 5d | 2026-12-10 | 2026-12-16 | MLTX-02-005-EN-7390, MLTX-02-005-PR-8970, MLTX-02-005-PR-8310, MLTX-02-005-PR-9090 |  | -64.1d |
| MLTX-02-005-PR-9310 |  | Material Delivery for Distribution Boards | 15d | 2026-12-16 | 2027-01-03 | MLTX-02-005-PR-9290, MLTX-02-005-PR-9090 |  | -50.1d |
|  | 11 | **POWER CABLES** |  | 2026-12-16 | 2027-02-25 |  |  |  |
| MLTX-02-005-PR-9330 |  | PO for Power Cables | 5d | 2026-12-16 | 2026-12-22 | MLTX-02-005-PR-9290, MLTX-02-005-EN-7420, MLTX-02-005-PR-9090 |  | -64.1d |
| MLTX-02-005-PR-9350 |  | Material Delivery for Power Cables | 30d | 2027-01-20 | 2027-02-25 | MLTX-02-005-PR-9330, MLTX-02-005-PR-9430 |  | -50.1d |
|  | 12 | **LIGHT FIXTURES** |  | 2026-07-07 | 2027-01-03 |  |  |  |
| MLTX-02-005-PR-9370 |  | PO for Light Fixtures | 5d | 2026-07-07 A | 2026-07-07 A | MLTX-02-005-EN-7420, MLTX-02-005-EN-7450, MLTX-02-005-PR-8270, MLTX-02-005-PR-8130 | 100% |  |
| MLTX-02-005-PR-9390 |  | Material Delivery for Light Fixtures | 10d | 2026-12-22 | 2027-01-03 | MLTX-02-005-PR-9330, MLTX-02-005-PR-9370, MLTX-02-005-PR-8450, MLTX-02-005-PR-9090 |  | -50.1d |
|  | 13 | **CCTV MATERIALS** |  | 2026-11-23 | 2027-01-20 |  |  |  |
| MLTX-02-005-PR-9410 |  | PO for CCTV | 25d | 2026-11-23 | 2026-12-22 | MLTX-02-005-PR-9370, MLTX-02-005-EN-7480, MLTX-02-005-EN-3780 |  | -40.1d |
| MLTX-02-005-PR-9430 |  | Material Delivery for CCTV | 15d | 2027-01-03 | 2027-01-20 | MLTX-02-005-PR-9270, MLTX-02-005-PR-9390, MLTX-02-005-PR-9150, MLTX-02-005-PR-9410, MLTX-02-005-PR-9310, MLTX-02-005-PR-9190, MLTX-02-005-PR-9230 |  | -50.1d |
|  | 14 | **POWER OUTLETS/SWITCHES** |  | 2026-07-07 | 2026-12-28 |  |  |  |
| MLTX-02-005-PR-9450 |  | PO for Power Outlets/Switches | 6d | 2026-07-07 A | 2026-07-07 A | MLTX-02-005-PR-8330, MLTX-02-005-EN-7510 | 100% |  |
| MLTX-02-005-PR-9470 |  | Material Delivery for Power Outlets/Switches | 30d | 2026-11-23 | 2026-12-28 | MLTX-02-005-PR-9450 |  | -28.1d |
|  | LSC | **LANDSCAPE WORKS** |  | 2026-05-16 | 2027-02-03 |  |  |  |
|  | 7 | **INTERLOCKING PAVING** |  | 2026-08-26 | 2026-08-26 |  |  |  |
| MLTX-02-005-PR-9500 |  | PO for Interlocking Block Pavers | 5d | 2026-08-26 A | 2026-08-26 A | MLTX-02-005-EN-7550, MLTX-02-005-PR-9450 | 100% |  |
| MLTX-02-005-PR-9520 |  | Material Delivery for Interlocking Block Pavers | 12d | 2026-08-26 A | 2026-08-26 A | MLTX-02-005-PR-9500 | 100% |  |
|  | 9 | **CURBSTONE** |  | 2026-07-28 | 2026-07-28 |  |  |  |
| MLTX-02-005-PR-9540 |  | PO for Curbstone | 5d | 2026-07-28 A | 2026-07-28 A | MLTX-02-005-EN-7580 | 100% |  |
| MLTX-02-005-PR-9560 |  | Material Delivery for Curbstone | 12d | 2026-07-28 A | 2026-07-28 A | MLTX-02-005-PR-9540 | 100% |  |
|  | 1 | **PAVEMENT MARKING** |  | 2026-11-23 | 2027-02-03 |  |  |  |
| MLTX-02-005-PR-9580 |  | PO for Pavement Markings | 5d | 2026-11-23 | 2026-11-29 | MLTX-02-005-PR-9450, MLTX-02-005-EN-7610 |  | -69.1d |
| MLTX-02-005-PR-9600 |  | Material Delivery for Pavement Markings | 30d | 2026-12-30 | 2027-02-03 | MLTX-02-005-PR-9580, MLTX-02-005-PR-9110 |  | -69.1d |
|  | 2 | **TRAFFIC SIGNS** |  | 2026-10-13 | 2026-11-08 |  |  |  |
| MLTX-02-005-PR-9620 |  | PO for Traffic Signs | 15d | 2026-10-13 A | 2026-10-13 A | MLTX-02-005-EN-7640, MLTX-02-005-PR-9780 | 100% |  |
| MLTX-02-005-PR-9640 |  | Material Delivery for Traffic Signs | 10d | 2026-11-08 A | 2026-11-08 A | MLTX-02-005-PR-9620 | 100% |  |
|  | 3 | **IRRIGATION PIPES/SPRINKLERS** |  | 2026-06-10 | 2026-07-02 |  |  |  |
| MLTX-02-005-PR-9660 |  | PO for Irrigation Pipes/Sprinkles | 5d | 2026-06-10 A | 2026-06-10 A | MLTX-02-005-EN-7670 | 100% |  |
| MLTX-02-005-PR-9680 |  | Material Delivery for Irrigation Pipes/Sprinkles | 8d | 2026-07-02 A | 2026-07-02 A | MLTX-02-005-PR-9660 | 100% |  |
|  | 5 | **AGRICULTURE SOIL** |  | 2026-10-13 | 2026-11-08 |  |  |  |
| MLTX-02-005-PR-9700 |  | PO for Agriculture Soil | 15d | 2026-10-13 A | 2026-10-13 A | MLTX-02-005-EN-7700, MLTX-02-005-PR-9780 | 100% |  |
| MLTX-02-005-PR-9720 |  | Material Delivery for Agriculture Soil | 22d | 2026-11-08 A | 2026-11-08 A | MLTX-02-005-PR-9700, MLTX-02-005-PR-9620 | 100% |  |
|  | 8 | **TRACK SURFACE** |  | 2026-05-16 | 2026-12-10 |  |  |  |
| MLTX-02-005-PR-9740 |  | PO for Track Surface | 5d | 2026-05-16 A | 2026-05-19 A | MLTX-02-005-EN-7730, MLTX-02-005-EN-5370, MLTX-02-005-EN-7610, MLTX-02-005-PR-9560 | 100% |  |
| MLTX-02-005-PR-9760 |  | Material Delivery for Track Surface | 10d | 2026-11-29 | 2026-12-10 | MLTX-02-005-PR-9740, MLTX-02-005-PR-9580, MLTX-02-005-PR-9640 |  | -69.1d |
|  | 10 | **GRASS/TREES** |  | 2026-05-17 | 2026-12-22 |  |  |  |
| MLTX-02-005-PR-9780 |  | PO for Grass/Trees | 5d | 2026-05-17 A | 2026-05-20 A | MLTX-02-005-EN-7760, MLTX-02-005-PR-9740 | 100% |  |
| MLTX-02-005-PR-9800 |  | Material Delivery for Grass/Trees | 25d | 2026-11-23 | 2026-12-22 | MLTX-02-005-PR-9700, MLTX-02-005-PR-9780, MLTX-02-005-PR-9930 |  | -32.1d |
|  | 6 | **CABLES** |  | 2026-09-15 | 2026-09-15 |  |  |  |
| MLTX-02-005-PR-9820 |  | PO for Cables | 5d | 2026-09-15 A | 2026-09-15 A | MLTX-02-005-EN-7790 | 100% |  |
| MLTX-02-005-PR-9840 |  | Material Delivery for Cables | 15d | 2026-09-15 A | 2026-09-15 A | MLTX-02-005-PR-9820 | 100% |  |
|  | LLI | **LONG LEAD ITEM** |  | 2026-07-07 | 2027-02-07 |  |  |  |
|  | PLG | **PLAYGROUND WORKS** |  | 2026-10-13 | 2027-02-07 |  |  |  |
|  | 6 | **STEEL TENSION CABLES** |  | 2026-10-13 | 2026-12-24 |  |  |  |
| MLTX-02-005-PR-8670 |  | PO for Steel Tension Cables | 7d | 2026-10-13 A | 2026-10-13 A | MLTX-02-005-EN-6910 | 100% |  |
| MLTX-02-005-PR-8680 |  | Material Fabrication for Steel Tension Cables | 15d | 2026-10-13 A | 2026-10-13 A | MLTX-02-005-PR-8670, MLTX-02-005-PR-9870 | 100% |  |
| MLTX-02-005-PR-8690 |  | Material Delivery for Steel Tension Cables | 15d | 2026-11-23 | 2026-12-10 | MLTX-02-005-PR-8680, MLTX-02-005-PR-8750 |  | -9.1d |
| MLTX-02-005-PR-9890 |  | Staging time | 12d | 2026-12-10 | 2026-12-24 | MLTX-02-005-PR-8690, MLTX-02-005-PR-8710 |  | -9.1d |
|  | 7 | **EMERGENCY DOORS** |  | 2026-10-13 | 2027-02-07 |  |  |  |
| MLTX-02-005-PR-8710 |  | PO for Emergency Doors | 20d | 2026-10-13 A | 2026-10-13 A | MLTX-02-005-EN-6940, MLTX-02-005-PR-9870 | 100% |  |
| MLTX-02-005-PR-8720 |  | Material Fabrication for Emergency Doors | 20d | 2026-10-13 A | 2026-10-13 A | MLTX-02-005-PR-8710, MLTX-02-005-PR-9880 | 100% |  |
| MLTX-02-005-PR-8730 |  | Material Delivery for Emergency Doors | 20d | 2026-11-23 | 2026-12-16 | MLTX-02-005-PR-8720, MLTX-02-005-PR-9930 |  | -8.1d |
| MLTX-02-005-PR-9900 |  | Staging time | 15d | 2027-01-20 | 2027-02-07 | MLTX-02-005-PR-8730, MLTX-02-005-PR-9430 |  | -38.1d |
|  | 8 | **PRESSURE UNITS** |  | 2026-10-13 | 2026-12-28 |  |  |  |
| MLTX-02-005-PR-8750 |  | PO for Pressure Units | 10d | 2026-10-13 A | 2026-10-13 A | MLTX-02-005-EN-6970, MLTX-02-005-PR-9870 | 100% |  |
| MLTX-02-005-PR-8760 |  | Material Fabrication for Pressure Units | 20d | 2026-10-13 A | 2026-10-13 A | MLTX-02-005-PR-8750, MLTX-02-005-PR-8710 | 100% |  |

| ID | WBS | Task | Duration | Start | Finish | Predecessors | Complete | Total float |
| --- | --- | --- | --- | --- | --- | --- | --- | --- |
| MLTX-02-005-PR-8770 |  | Material Delivery for Pressure Units | 25d | 2026-11-23 | 2026-12-22 | MLTX-02-005-PR-8760, MLTX-02-005-PR-8790 |  | -8.1d |
| MLTX-02-005-PR-9910 |  | Staging time | 5d | 2026-12-22 | 2026-12-28 | MLTX-02-005-PR-8770, MLTX-02-005-PR-8730 |  | -8.1d |
|  | 9 | **AIR LOCK DOORS** |  | 2026-10-13 | 2027-01-20 |  |  |  |
| MLTX-02-005-PR-8790 |  | PO for Lock Doors | 10d | 2026-10-13 A | 2026-10-13 A | MLTX-02-005-EN-7000, MLTX-02-005-PR-8710 | 100% |  |
| MLTX-02-005-PR-8800 |  | Material Fabrication for Lock Doors | 20d | 2026-11-23 | 2026-12-16 | MLTX-02-005-PR-8790, MLTX-02-005-PR-8710 |  | -23.1d |
| MLTX-02-005-PR-8810 |  | Material Delivery for Lock Doors | 25d | 2026-12-16 | 2027-01-14 | MLTX-02-005-PR-8800, MLTX-02-005-PR-8720 |  | -23.1d |
| MLTX-02-005-PR-9920 |  | Staging time | 5d | 2027-01-14 | 2027-01-20 | MLTX-02-005-PR-8810, MLTX-02-005-PR-8730 |  | -23.1d |
|  | LSC | **LANDSCAPE WORKS** |  | 2026-07-07 | 2026-09-20 |  |  |  |
|  | 4 | **LIGHT POLES** |  | 2026-07-07 | 2026-09-20 |  |  |  |
| MLTX-02-005-PR-9860 |  | PO for Lighting poles | 10d | 2026-07-07 A | 2026-07-07 A | MLTX-02-005-EN-7820, MLTX-02-005-PR-8290 | 100% |  |
| MLTX-02-005-PR-9870 |  | Material Fabrication for Lighting poles | 30d | 2026-08-26 A | 2026-08-26 A | MLTX-02-005-PR-9520, MLTX-02-005-PR-9860 | 100% |  |
| MLTX-02-005-PR-9880 |  | Material Delivery for Lighting poles | 20d | 2026-09-20 A | 2026-09-20 A | MLTX-02-005-PR-9870 | 100% |  |
| MLTX-02-005-PR-9930 |  | Staging time | 15d | 2026-09-20 A | 2026-09-20 A | MLTX-02-005-PR-9880 | 100% |  |
|  | T & C | **TESTING & COMMISSIONING** |  | 2027-02-01 | 2027-03-27 |  |  |  |
| MLTX-02-005-TC-11870 |  | Testing and Commissioning for MEP Works for Toilet/Service Building | 12d | 2027-02-01 | 2027-02-15 | MLTX-02-005-CN-11780, MLTX-02-005-CN-11620, MLTX-02-005-CN-11740, MLTX-02-005-CN-11770, MLTX-02-005-CN-11820, MLTX-02-005-CN-11550, MLTX-02-005-CN-11870, MLTX-02-005-CN-11460, MLTX-02-005-CN-11380, MLTX-02-005-CN-11580, MLTX-02-005-CN-11790, MLTX-02-005-CN-11500, MLTX-02-005-CN-11760, MLTX-02-005-CN-11750, MLTX-02-005-CN-11860, MLTX-02-005-CN-11390, MLTX-02-005-CN-11830, MLTX-02-005-CN-11170 FF, MLTX-02-005-CN-11220 FF, MLTX-02-005-CN-11130 FF, MLTX-02-005-CN-11120 FF, MLTX-02-005-CN-11400 FF |  | -37.1d |
| MLTX-02-005-TC-11860 |  | Testing and Commissioning for MEP Works for Playground Area | 2d | 2027-03-01 | 2027-03-03 | MLTX-02-005-CN-10220, MLTX-02-005-CN-10390, MLTX-02-005-CN-10280, MLTX-02-005-CN-10140 FF, MLTX-02-005-CN-11120 FF |  | -50.1d |
| MLTX-02-005-TC-11880 |  | Testing and Commissioning for MEP Works for Landscape Works | 5d | 2027-03-21 | 2027-03-27 | MLTX-02-005-CN-10540, MLTX-02-005-CN-10580 FF, MLTX-02-005-CN-9960 FF, MLTX-02-005-CN-9970 FF, MLTX-02-005-CN-11460 FF, MLTX-02-005-CN-9980 FF, MLTX-02-005-CN-10620 FF, MLTX-02-005-CN-10670 FF, MLTX-02-005-CN-11120 FF |  | -67.1d |
|  | 2 | **HASA OASIS** |  | 2026-03-04 | 2027-03-21 |  |  |  |
|  | MOB | **MOBILIZATION** |  | 2026-03-04 | 2026-04-04 |  |  |  |
|  | SURV | **TOPOGRAPHIC SURVEY** |  | 2026-03-04 | 2026-03-08 |  |  |  |
| MLTX-02-005-MB-1860 |  | Site Survey Works | 5d | 2026-03-04 A | 2026-03-08 A | MLTX-02-005-MS-1010 | 100% |  |
|  | OFFICE | **SITE FACILITIES & OFFICES** |  | 2026-03-04 | 2026-04-02 |  |  |  |
| MLTX-02-005-MB-1770 |  | Site Layout Plan | 4d | 2026-03-04 A | 2026-03-08 A | MLTX-02-005-MS-1010 | 100% |  |
| MLTX-02-005-MB-1780 |  | Clear & Grub for Offices & Access Road | 3d | 2026-03-09 A | 2026-03-11 A | MLTX-02-005-MB-1770 | 100% |  |
| MLTX-02-005-MB-1790 |  | Construct Site Access Roads | 4d | 2026-03-09 A | 2026-03-12 A | MLTX-02-005-MB-1770, MLTX-02-005-MB-1780 | 100% |  |
| MLTX-02-005-MB-1800 |  | Construct Temporary Fence | 7d | 2026-03-12 A | 2026-03-19 A | MLTX-02-005-MB-1780 | 100% |  |
| MLTX-02-005-MB-1810 |  | Construct Site Offices & Storage | 14d | 2026-03-14 A | 2026-04-01 A | MLTX-02-005-MB-1790, MLTX-02-005-MB-1800 | 100% |  |
| MLTX-02-005-MB-1820 |  | Install Project Signs | 8d | 2026-03-14 A | 2026-03-25 A | MLTX-02-005-MB-1790, MLTX-02-005-MB-1800 | 100% |  |
| MLTX-02-005-MB-1830 |  | Install Site Facilities | 4d | 2026-03-24 A | 2026-03-28 A | MLTX-02-005-MB-1800 | 100% |  |
| MLTX-02-005-MB-1840 |  | Electrical Works & Connections | 6d | 2026-03-24 A | 2026-03-30 A | MLTX-02-005-MB-1800, MLTX-02-005-MB-1850 | 100% |  |
| MLTX-02-005-MB-1850 |  | Construct Parking Sheds | 6d | 2026-03-24 A | 2026-03-30 A | MLTX-02-005-MB-1800 | 100% |  |
| MLTX-02-005-MB-1750 |  | Equipment Mobalization | 7d | 2026-03-26 A | 2026-04-02 A | MLTX-02-005-MB-1820, MLTX-02-005-MB-1830 | 100% |  |
| MLTX-02-005-MB-1740 |  | Manpower Mobalization | 5d | 2026-03-29 A | 2026-04-02 A | MLTX-02-005-MB-1830, MLTX-02-005-MB-1850 | 100% |  |
|  | PRELI | **PRELIMINARY SUBMITTALS** |  | 2026-03-09 | 2026-04-04 |  |  |  |
|  | P&S | **PREPARATIONS & SUBMITTAL BY CONTRACTORS** |  | 2026-03-09 | 2026-03-19 |  |  |  |
| MLTX-02-005-MB-1760 |  | Preparation and Submittal of Detailed Work Order Programme (Baseline) | 10d | 2026-03-09 A | 2026-03-19 A | MLTX-02-005-MB-1770 | 100% |  |
| MLTX-02-005-MB-1870 |  | Preparation and Submittal of Project Execution Plan | 8d | 2026-03-09 A | 2026-03-17 A | MLTX-02-005-MB-1770, MLTX-02-005-MB-1880 | 100% |  |
| MLTX-02-005-MB-1880 |  | Submission of Contractor Project Quality Plan | 8d | 2026-03-09 A | 2026-03-17 A | MLTX-02-005-MB-1770 | 100% |  |
| MLTX-02-005-MB-1890 |  | Submission of Construction Safety & Environmental Management Plan | 8d | 2026-03-09 A | 2026-03-17 A | MLTX-02-005-MB-1770, MLTX-02-005-MB-1880 | 100% |  |
| MLTX-02-005-MB-1900 |  | Preparation and Submittal of Organization Chart | 8d | 2026-03-09 A | 2026-03-17 A | MLTX-02-005-MB-1770, MLTX-02-005-MB-1880 | 100% |  |
| MLTX-02-005-MB-1910 |  | Preparation and Submittal of Communication Plan | 8d | 2026-03-09 A | 2026-03-17 A | MLTX-02-005-MB-1770, MLTX-02-005-MB-1880 | 100% |  |
|  | APP | **APPROVALS BY EMPLOYERS** |  | 2026-03-18 | 2026-04-04 |  |  |  |
| MLTX-02-005-MB-1930 |  | Approval of Project Execution Plan | 10d | 2026-03-18 A | 2026-04-01 A | MLTX-02-005-MB-1870, MLTX-02-005-MB-1940 | 100% |  |
| MLTX-02-005-MB-1940 |  | Approval of Contractor Project Quality Plan | 10d | 2026-03-18 A | 2026-04-01 A | MLTX-02-005-MB-1880 | 100% |  |
| MLTX-02-005-MB-1950 |  | Approval of Construction Safety & Environmental Management Plan | 10d | 2026-03-18 A | 2026-04-01 A | MLTX-02-005-MB-1890, MLTX-02-005-MB-1940 | 100% |  |
| MLTX-02-005-MB-1960 |  | Approval of Organization Chart | 10d | 2026-03-18 A | 2026-04-01 A | MLTX-02-005-MB-1900, MLTX-02-005-MB-1940 | 100% |  |
| MLTX-02-005-MB-1970 |  | Approval of Communication Plan | 10d | 2026-03-18 A | 2026-04-01 A | MLTX-02-005-MB-1910, MLTX-02-005-MB-1940 | 100% |  |
| MLTX-02-005-MB-1920 |  | Approval of Detailed Work Order Programme (Baseline) | 10d | 2026-03-24 A | 2026-04-04 A | MLTX-02-005-MB-1760 | 100% |  |
|  | ENGG | **ENGINEERING** |  | 2026-03-08 | 2027-01-20 |  |  |  |
|  | SD | **SHOP DRAWINGS** |  | 2026-03-09 | 2027-01-20 |  |  |  |
|  | SUB | **SHOP DRAWINGS SUBMISSION** |  | 2026-03-09 | 2026-12-22 |  |  |  |
|  | 2 | **SHOP DRAWING SUBMITTALS FOR EARTHING WORKS** |  | 2026-03-09 | 2026-03-14 |  |  |  |
| MLTX-02-005-EN-7830 |  | Shop DWG Submittal for Layout Plan | 15d | 2026-03-09 A | 2026-03-14 A | MLTX-02-005-MB-1860 | 100% |  |
| MLTX-02-005-EN-7840 |  | Shop DWG Submittal for Setting Out | 15d | 2026-03-09 A | 2026-03-14 A | MLTX-02-005-MB-1860 | 100% |  |
| MLTX-02-005-EN-7850 |  | Shop DWG Submittal for Grading Layout Plan | 15d | 2026-03-09 A | 2026-03-14 A | MLTX-02-005-MB-1860 | 100% |  |
| MLTX-02-005-EN-7860 |  | Shop DWG Submittal for Curb Setting Out Points | 15d | 2026-03-09 A | 2026-03-14 A | MLTX-02-005-MB-1860, MLTX-02-005-EN-8840 | 100% |  |
| MLTX-02-005-EN-7870 |  | Shop DWG Submittal for Signing & Marking Layout Plan | 15d | 2026-03-09 A | 2026-03-14 A | MLTX-02-005-MB-1860, MLTX-02-005-EN-7860 | 100% |  |
| MLTX-02-005-EN-7880 |  | Shop DWG Submittal for Standards Details | 15d | 2026-03-09 A | 2026-03-14 A | MLTX-02-005-MB-1860, MLTX-02-005-EN-7860 | 100% |  |
|  | ROAD | **SHOP DRAWING SUBMITTALS FOR SERVICE/TOILET WORKS** |  | 2026-03-09 | 2026-07-30 |  |  |  |
|  | 2 | **ARCHITECTURE WORKS** |  | 2026-03-09 | 2026-03-14 |  |  |  |
| MLTX-02-005-EN-8210 |  | Shop DWG Submittal for Floor Plan | 15d | 2026-03-09 A | 2026-03-14 A | MLTX-02-005-EN-7830 SS, MLTX-02-005-EN-7840 SS | 100% |  |
| MLTX-02-005-EN-8220 |  | Shop DWG Submittal for Elevations | 15d | 2026-03-09 A | 2026-03-14 A | MLTX-02-005-EN-8210 SS | 100% |  |
| MLTX-02-005-EN-8230 |  | Shop DWG Submittal for Sections | 15d | 2026-03-09 A | 2026-03-14 A | MLTX-02-005-EN-7850 SS, MLTX-02-005-EN-8220 SS | 100% |  |
| MLTX-02-005-EN-8240 |  | Shop DWG Submittal for Ceiling Plan | 15d | 2026-03-09 A | 2026-03-14 A | MLTX-02-005-EN-8230 SS | 100% |  |
| MLTX-02-005-EN-8250 |  | Shop DWG Submittal for Finishes Plan | 15d | 2026-03-09 A | 2026-03-14 A | MLTX-02-005-EN-8240 SS | 100% |  |
| MLTX-02-005-EN-8260 |  | Shop DWG Submittal for Toilet Details | 15d | 2026-03-09 A | 2026-03-14 A | MLTX-02-005-EN-8250 SS | 100% |  |
| MLTX-02-005-EN-8270 |  | Shop DWG Submittal for Doors/Windows Schedule | 15d | 2026-03-09 A | 2026-03-14 A | MLTX-02-005-EN-8260 SS | 100% |  |
|  | 1 | **STRUCTURE WORKS** |  | 2026-03-15 | 2026-03-19 |  |  |  |
| MLTX-02-005-EN-8280 |  | Shop DWG Submittal for Foundation Plan | 15d | 2026-03-15 A | 2026-03-19 A | MLTX-02-005-EN-8270 | 100% |  |
| MLTX-02-005-EN-8290 |  | Shop DWG Submittal for Ground Floor Framing Plan | 21d | 2026-03-15 A | 2026-03-19 A | MLTX-02-005-EN-8280 SS | 100% |  |

| ID | WBS | Task | Duration | Start | Finish | Predecessors | Complete | Total float |
| --- | --- | --- | --- | --- | --- | --- | --- | --- |
| MLTX-02-005-EN-8300 |  | Shop DWG Submittal for Sections/Details | 21d | 2026-03-15 A | 2026-03-19 A | MLTX-02-005-EN-8270 | 100% |  |
|  | 3 | **MECHANCAL WORKS** |  | 2026-03-15 | 2026-07-07 |  |  |  |
| MLTX-02-005-EN-8310 |  | Shop DWG Submittal for HVAC Plan | 21d | 2026-03-15 A | 2026-03-19 A | MLTX-02-005-EN-8270, MLTX-02-005-EN-11300 | 100% |  |
| MLTX-02-005-EN-8320 |  | Shop DWG Submittal for Exhaust Air Plan | 21d | 2026-03-15 A | 2026-03-19 A | MLTX-02-005-EN-8270, MLTX-02-005-EN-8350 | 100% |  |
| MLTX-02-005-EN-8330 |  | Shop DWG Submittal for HVAC Equipment Schedule | 21d | 2026-03-15 A | 2026-03-19 A | MLTX-02-005-EN-8270, MLTX-02-005-EN-8320 | 100% |  |
| MLTX-02-005-EN-8340 |  | Shop DWG Submittal for Fire Fighting Layout | 21d | 2026-03-15 A | 2026-03-19 A | MLTX-02-005-EN-8270, MLTX-02-005-EN-8310 | 100% |  |
| MLTX-02-005-EN-8350 |  | Shop DWG Submittal for Water Supply Layout | 21d | 2026-03-15 A | 2026-05-20 A | MLTX-02-005-EN-8270, MLTX-02-005-EN-11270 | 100% |  |
| MLTX-02-005-EN-8360 |  | Shop DWG Submittal for Water Supply Details | 21d | 2026-03-15 A | 2026-05-20 A | MLTX-02-005-EN-8270, MLTX-02-005-EN-11270 | 100% |  |
| MLTX-02-005-EN-8370 |  | Shop DWG Submittal for Drainage Layout | 21d | 2026-03-15 A | 2026-06-02 A | MLTX-02-005-EN-8270, MLTX-02-005-EN-8560 | 100% |  |
| MLTX-02-005-EN-8380 |  | Shop DWG Submittal for Drainage Details | 21d | 2026-03-15 A | 2026-06-02 A | MLTX-02-005-EN-8270, MLTX-02-005-EN-11270 | 100% |  |
| MLTX-02-005-EN-8920 |  | Shop DWG Submittal for Dut Routing Layout | 21d | 2026-03-15 A | 2026-03-19 A | MLTX-02-005-EN-8270, MLTX-02-005-EN-8350 | 100% |  |
| MLTX-02-005-EN-8930 |  | Shop DWG Submittal for Diffusers Layout | 21d | 2026-07-07 A | 2026-07-07 A | MLTX-02-005-EN-8270, MLTX-02-005-EN-11300 | 100% |  |
|  | 4 | **ELECTRICAL WORKS** |  | 2026-03-15 | 2026-07-30 |  |  |  |
| MLTX-02-005-EN-8390 |  | Shop DWG Submittal for Lighting Layout | 21d | 2026-03-15 A | 2026-03-19 A | MLTX-02-005-EN-8270, MLTX-02-005-EN-11270 | 100% |  |
| MLTX-02-005-EN-8400 |  | Shop DWG Submittal for Power Layout | 21d | 2026-03-15 A | 2026-03-19 A | MLTX-02-005-EN-8270, MLTX-02-005-EN-8560 | 100% |  |
| MLTX-02-005-EN-8430 |  | Shop DWG Submittal for Lighting Installation Details | 21d | 2026-03-15 A | 2026-03-19 A | MLTX-02-005-EN-8440 SS, MLTX-02-005-EN-11270 | 100% |  |
| MLTX-02-005-EN-8440 |  | Shop DWG Submittal for Power Installation Details | 15d | 2026-03-15 A | 2026-03-19 A | MLTX-02-005-EN-8270 | 100% |  |
| MLTX-02-005-EN-8450 |  | Shop DWG Submittal for Cable Tray Installation Details | 15d | 2026-03-15 A | 2026-03-19 A | MLTX-02-005-EN-8440 SS | 100% |  |
| MLTX-02-005-EN-8460 |  | Shop DWG Submittal for Manhole & Ductbank Details | 15d | 2026-03-15 A | 2026-03-19 A | MLTX-02-005-EN-8450 SS | 100% |  |
| MLTX-02-005-EN-8470 |  | Shop DWG Submittal for Grounding Details | 15d | 2026-03-15 A | 2026-03-19 A | MLTX-02-005-EN-8460 SS | 100% |  |
| MLTX-02-005-EN-8480 |  | Shop DWG Submittal for Lightning Protection Details | 15d | 2026-03-15 A | 2026-03-19 A | MLTX-02-005-EN-8470 SS | 100% |  |
| MLTX-02-005-EN-8490 |  | Shop DWG Submittal for Fire Alarm Installation Details | 15d | 2026-03-15 A | 2026-03-19 A | MLTX-02-005-EN-8480 SS | 100% |  |
| MLTX-02-005-EN-8510 |  | Shop DWG Submittal for Grounding Layout | 15d | 2026-03-15 A | 2026-03-19 A | MLTX-02-005-EN-8490 | 100% |  |
| MLTX-02-005-EN-8520 |  | Shop DWG Submittal for Lightning Protection System Layout | 15d | 2026-03-15 A | 2026-03-19 A | MLTX-02-005-EN-8510 SS | 100% |  |
| MLTX-02-005-EN-8530 |  | Shop DWG Submittal for Fire Alarm Layout | 15d | 2026-03-15 A | 2026-03-19 A | MLTX-02-005-EN-8520 SS | 100% |  |
| MLTX-02-005-EN-8540 |  | Shop DWG Submittal for Fire Alarm Riser Diagram | 15d | 2026-03-15 A | 2026-03-19 A | MLTX-02-005-EN-8530 SS | 100% |  |
| MLTX-02-005-EN-8550 |  | Shop DWG Submittal for CCTV Layout | 15d | 2026-03-15 A | 2026-03-19 A | MLTX-02-005-EN-8540 SS | 100% |  |
| MLTX-02-005-EN-8560 |  | Shop DWG Submittal for CCTV Riser Diagram | 15d | 2026-03-15 A | 2026-03-19 A | MLTX-02-005-EN-8550 SS | 100% |  |
| MLTX-02-005-EN-8570 |  | Shop DWG Submittal for Telephone & Data Layout | 21d | 2026-03-15 A | 2026-03-19 A | MLTX-02-005-EN-8540 | 100% |  |
| MLTX-02-005-EN-8580 |  | Shop DWG Submittal for Telephone & Data Riser Diagram | 21d | 2026-03-15 A | 2026-03-19 A | MLTX-02-005-EN-8270, MLTX-02-005-EN-8570 SS, MLTX-02-005-EN-11270 | 100% |  |
| MLTX-02-005-EN-8410 |  | Shop DWG Submittal for Power Single Line Diagram | 21d | 2026-06-10 A | 2026-06-10 A | MLTX-02-005-EN-8270, MLTX-02-005-EN-8320 | 100% |  |
| MLTX-02-005-EN-8420 |  | Shop DWG Submittal for Panel Board Schedules | 15d | 2026-06-10 A | 2026-06-10 A | MLTX-02-005-EN-8270, MLTX-02-005-EN-8570 | 100% |  |
| MLTX-02-005-EN-8500 |  | Shop DWG Submittal for CCTV Details | 15d | 2026-07-30 A | 2026-07-30 A | MLTX-02-005-EN-8490 SS, MLTX-02-005-EN-8560 | 100% |  |
|  | ELE | **SHOP DRAWINGS SUBMITTALS FOR PLAYGROUND WORKS** |  | 2026-03-09 | 2026-12-22 |  |  |  |
|  | 3 | **ARCHITECTURE WORKS** |  | 2026-03-09 | 2026-07-13 |  |  |  |
| MLTX-02-005-EN-8780 |  | Shop DWG Submittal for Playground Plan/Layout | 15d | 2026-03-09 A | 2026-03-14 A | MLTX-02-005-MB-1860 | 100% |  |
| MLTX-02-005-EN-8790 |  | Shop DWG Submittal for Furniture & Marking | 15d | 2026-03-09 A | 2026-04-28 A | MLTX-02-005-EN-8780 SS | 100% |  |
| MLTX-02-005-EN-8800 |  | Shop DWG Submittal for Sections | 15d | 2026-03-09 A | 2026-03-14 A | MLTX-02-005-EN-8790 SS | 100% |  |
| MLTX-02-005-EN-8810 |  | Shop DWG Submittal for Interlock Pattern Plan | 21d | 2026-03-09 A | 2026-03-14 A | MLTX-02-005-EN-8800 SS | 100% |  |
| MLTX-02-005-EN-8850 |  | Shop DWG Submittal for Dome Internal Layout | 21d | 2026-03-09 A | 2026-05-20 A | MLTX-02-005-EN-8810 | 100% |  |
| MLTX-02-005-EN-8820 |  | Shop DWG Submittal for Doors/Windows Schedule | 21d | 2026-07-13 A | 2026-07-13 A | MLTX-02-005-EN-8800, MLTX-02-005-EN-8370 | 100% |  |
|  | 4 | **STRUCTURE WORKS** |  | 2026-03-15 | 2026-07-14 |  |  |  |
| MLTX-02-005-EN-8830 |  | Shop DWG Submittal for Air Dome System | 21d | 2026-03-15 A | 2026-05-10 A | MLTX-02-005-EN-8850 | 100% |  |
| MLTX-02-005-EN-8840 |  | Shop DWG Submittal for Foundation of Air Dome | 21d | 2026-07-14 A | 2026-07-14 A | MLTX-02-005-EN-8830 SS, MLTX-02-005-EN-8870, MLTX-02-005-EN-8420 | 100% |  |
| MLTX-02-005-EN-8860 |  | Shop DWG Submittal for Anchor Bolt Layout of Air Dome | 21d | 2026-07-14 A | 2026-07-14 A | MLTX-02-005-EN-8840 SS, MLTX-02-005-EN-8870 | 100% |  |
|  | 5 | **AIR DOME SYSTEM** |  | 2026-03-15 | 2026-05-25 |  |  |  |
| MLTX-02-005-EN-8870 |  | Shop DWG Submittal for Air Dome Structural Layout | 21d | 2026-03-15 A | 2026-05-10 A | MLTX-02-005-EN-8830 | 100% |  |
| MLTX-02-005-EN-8880 |  | Shop DWG Submittal for Membrane Panel Layout | 21d | 2026-03-15 A | 2026-05-25 A | MLTX-02-005-EN-8870 SS | 100% |  |
| MLTX-02-005-EN-8890 |  | Shop DWG Submittal for Cable Tension Layout | 21d | 2026-03-15 A | 2026-05-25 A | MLTX-02-005-EN-8880 SS | 100% |  |
| MLTX-02-005-EN-8900 |  | Shop DWG Submittal for Airlock Door Details | 21d | 2026-03-15 A | 2026-05-25 A | MLTX-02-005-EN-8890 SS | 100% |  |
| MLTX-02-005-EN-8910 |  | Shop DWG Submittal for Emergency Exit Details | 21d | 2026-03-15 A | 2026-05-25 A | MLTX-02-005-EN-8900 SS | 100% |  |
|  | 6 | **SPORTS EQUIPMENT** |  | 2026-06-29 | 2026-06-29 |  |  |  |
| MLTX-02-005-EN-8940 |  | Shop DWG Submittal for Football Turf Installation | 21d | 2026-06-29 A | 2026-06-29 A | MLTX-02-005-EN-8910 SS | 100% |  |
| MLTX-02-005-EN-8950 |  | Shop DWG Submittal for Basketball Court Marking | 21d | 2026-06-29 A | 2026-06-29 A | MLTX-02-005-EN-8940 SS | 100% |  |
| MLTX-02-005-EN-8960 |  | Shop DWG Submittal for Padel Court Structure | 21d | 2026-06-29 A | 2026-06-29 A | MLTX-02-005-EN-8950 SS, MLTX-02-005-EN-11300 | 100% |  |
|  | 1 | **MECHANCAL WORKS** |  | 2026-10-14 | 2026-10-14 |  |  |  |
| MLTX-02-005-EN-8760 |  | Shop DWG Submittal for HVAC Plan | 25d | 2026-10-14 A | 2026-10-14 A | MLTX-02-005-EN-11310, MLTX-02-005-EN-8960 SS | 100% |  |
| MLTX-02-005-EN-8770 |  | Shop DWG Submittal for Exhaust Air Plan | 25d | 2026-10-14 A | 2026-10-14 A | MLTX-02-005-EN-8760 SS, MLTX-02-005-EN-8820 | 100% |  |
|  | 2 | **ELECTRICAL WORKS** |  | 2026-08-20 | 2026-12-22 |  |  |  |
| MLTX-02-005-EN-8710 |  | Shop DWG Submittal for CCTV Details | 21d | 2026-08-20 A | 2026-08-20 A | MLTX-02-005-EN-8550 | 100% |  |
| MLTX-02-005-EN-8740 |  | Shop DWG Submittal for CCTV Layout | 21d | 2026-08-20 A | 2026-08-20 A | MLTX-02-005-EN-8710, MLTX-02-005-EN-8330 | 100% |  |
| MLTX-02-005-EN-8750 |  | Shop DWG Submittal for CCTV Riser Diagram | 21d | 2026-08-20 A | 2026-08-20 A | MLTX-02-005-EN-8740 SS, MLTX-02-005-EN-8330 | 100% |  |
| MLTX-02-005-EN-8650 |  | Shop DWG Submittal for Lighting Layout | 25d | 2026-10-14 A | 2026-10-14 A | MLTX-02-005-EN-8770 SS | 100% |  |
| MLTX-02-005-EN-8670 |  | Shop DWG Submittal for Power Single Line Diagram | 25d | 2026-10-14 A | 2026-10-14 A | MLTX-02-005-EN-8710 SS, MLTX-02-005-EN-8330 | 100% |  |
| MLTX-02-005-EN-8680 |  | Shop DWG Submittal for Panel Board Schedules | 25d | 2026-10-14 A | 2026-10-14 A | MLTX-02-005-EN-8670 SS, MLTX-02-005-EN-8330 | 100% |  |
| MLTX-02-005-EN-8690 |  | Shop DWG Submittal for Power Installation Details | 25d | 2026-10-14 A | 2026-10-14 A | MLTX-02-005-EN-8680 SS, MLTX-02-005-EN-8330 | 100% |  |
| MLTX-02-005-EN-8700 |  | Shop DWG Submittal for Fire Alarm Installation Details | 30d | 2026-10-14 A | 2026-10-14 A | MLTX-02-005-EN-8690 SS, MLTX-02-005-EN-8650 | 100% |  |
| MLTX-02-005-EN-8720 |  | Shop DWG Submittal for Fire Alarm Layout | 30d | 2026-10-24 A | 2026-10-24 A | MLTX-02-005-EN-8700 SS, MLTX-02-005-EN-8650 | 100% |  |
| MLTX-02-005-EN-8730 |  | Shop DWG Submittal for Fire Alarm Riser Diagram | 30d | 2026-10-24 A | 2026-10-24 A | MLTX-02-005-EN-8700 SS, MLTX-02-005-EN-8650, MLTX-02-005-EN-8680 | 100% |  |
| MLTX-02-005-EN-8660 |  | Shop DWG Submittal for Power Layout | 25d | 2026-11-23 | 2026-12-22 | MLTX-02-005-EN-8710 SS |  | -42.1d |

| ID | WBS | Task | Duration | Start | Finish | Predecessors | Complete |
| --- | --- | --- | --- | --- | --- | --- | --- |
|  | EAR | **SHOP DRAWINGS SUBMITTALS FOR LANDSCAPE WORKS** |  | 2026-03-09 | 2026-07-29 |  |  |
|  | 3 | **ARCHITECTURE WORKS** |  | 2026-03-09 | 2026-03-19 |  |  |
| MLTX-02-005-EN-8590 |  | Shop DWG Submittal for Landscape Layout | 21d | 2026-03-09 A | 2026-03-14 A | MLTX-02-005-MB-1860 | 100% |
| MLTX-02-005-EN-8600 |  | Shop DWG Submittal for Hardscape Plan | 21d | 2026-03-09 A | 2026-03-14 A | MLTX-02-005-MB-1860 | 100% |
| MLTX-02-005-EN-8620 |  | Shop DWG Submittal for Landscape Details | 15d | 2026-03-09 A | 2026-03-14 A | MLTX-02-005-MB-1860 | 100% |
| MLTX-02-005-EN-8610 |  | Shop DWG Submittal for Planting Plan | 15d | 2026-03-15 A | 2026-03-19 A | MLTX-02-005-EN-8620 | 100% |
|  | 1 | **MECHANCAL WORKS** |  | 2026-07-06 | 2026-07-06 |  |  |
| MLTX-02-005-EN-8630 |  | Shop DWG Submittal for Irrigation Details | 30d | 2026-07-06 A | 2026-07-06 A | MLTX-02-005-MB-1860, MLTX-02-005-EN-8840 | 100% |
| MLTX-02-005-EN-8640 |  | Shop DWG Submittal for Irrigation Layout | 30d | 2026-07-06 A | 2026-07-06 A | MLTX-02-005-MB-1860, MLTX-02-005-EN-8840 | 100% |
|  | 2 | **ELECTRICAL WORKS** |  | 2026-07-29 | 2026-07-29 |  |  |
| MLTX-02-005-EN-7890 |  | Shop DWG Submittal for Lighting General Arrangement | 30d | 2026-07-29 A | 2026-07-29 A | MLTX-02-005-MB-1860, MLTX-02-005-EN-8840 | 100% |
| MLTX-02-005-EN-7900 |  | Shop DWG Submittal for Lighting Network Layout | 30d | 2026-07-29 A | 2026-07-29 A | MLTX-02-005-MB-1860 | 100% |
| MLTX-02-005-EN-7910 |  | Shop DWG Submittal for Lighting Details | 30d | 2026-07-29 A | 2026-07-29 A | MLTX-02-005-MB-1860, MLTX-02-005-EN-8840 | 100% |
| MLTX-02-005-EN-7920 |  | Shop DWG Submittal for Lighting Single Line Diagram | 30d | 2026-07-29 A | 2026-07-29 A | MLTX-02-005-MB-1860, MLTX-02-005-EN-8840 | 100% |
|  | APP | **SHOP DRAWINGS APPROVALS** |  | 2026-03-15 | 2027-01-20 |  |  |
|  | 2 | **SHOP DRAWING APPROVAL FOR EARTHING WORKS** |  | 2026-03-15 | 2026-03-29 |  |  |
| MLTX-02-005-EN-11260 |  | Shop DWG Approval for Layout Plan | 15d | 2026-03-15 A | 2026-03-29 A | MLTX-02-005-EN-7830, MLTX-02-005-EN-11900 | 100% |
| MLTX-02-005-EN-11270 |  | Shop DWG Approval for Setting Out | 15d | 2026-03-15 A | 2026-03-29 A | MLTX-02-005-EN-7840, MLTX-02-005-EN-11260 | 100% |
| MLTX-02-005-EN-11280 |  | Shop DWG Approval for Grading Layout Plan | 15d | 2026-03-15 A | 2026-03-29 A | MLTX-02-005-EN-11270, MLTX-02-005-EN-7850 | 100% |
| MLTX-02-005-EN-11290 |  | Shop DWG Approval for Curb Setting Out Points | 15d | 2026-03-15 A | 2026-03-29 A | MLTX-02-005-EN-11280, MLTX-02-005-EN-7860 | 100% |
| MLTX-02-005-EN-11300 |  | Shop DWG Approval for Signing & Marking Layout Plan | 15d | 2026-03-15 A | 2026-03-29 A | MLTX-02-005-EN-11290, MLTX-02-005-EN-7870 | 100% |
| MLTX-02-005-EN-11310 |  | Shop DWG Approval for Standards Details | 15d | 2026-03-15 A | 2026-03-29 A | MLTX-02-005-EN-11300, MLTX-02-005-EN-7880 | 100% |
|  | ROAD | **SHOP DRAWING APPROVAL FOR SERVICE/TOILET WORKS** |  | 2026-03-15 | 2026-07-30 |  |  |
|  | 2 | **ARCHITECTURE WORKS** |  | 2026-03-15 | 2026-03-29 |  |  |
| MLTX-02-005-EN-11360 |  | Shop DWG Approval for Floor Plan | 30d | 2026-03-15 A | 2026-03-29 A | MLTX-02-005-EN-8210 | 100% |
| MLTX-02-005-EN-11370 |  | Shop DWG Approval for Elevations | 30d | 2026-03-15 A | 2026-03-29 A | MLTX-02-005-EN-8220, MLTX-02-005-EN-11360 | 100% |
| MLTX-02-005-EN-11380 |  | Shop DWG Approval for Sections | 30d | 2026-03-15 A | 2026-03-29 A | MLTX-02-005-EN-8230, MLTX-02-005-EN-11920 | 100% |
| MLTX-02-005-EN-11390 |  | Shop DWG Approval for Ceiling Plan | 30d | 2026-03-15 A | 2026-03-29 A | MLTX-02-005-EN-8240, MLTX-02-005-EN-11360 | 100% |
| MLTX-02-005-EN-11400 |  | Shop DWG Approval for Finishes Plan | 30d | 2026-03-15 A | 2026-03-29 A | MLTX-02-005-EN-8250, MLTX-02-005-EN-11360 | 100% |
| MLTX-02-005-EN-11410 |  | Shop DWG Approval for Toilet Details | 30d | 2026-03-15 A | 2026-03-29 A | MLTX-02-005-EN-8260, MLTX-02-005-EN-11360 | 100% |
| MLTX-02-005-EN-11420 |  | Shop DWG Approval for Doors/Windows Schedule | 30d | 2026-03-15 A | 2026-03-29 A | MLTX-02-005-EN-8270, MLTX-02-005-EN-11940 | 100% |
|  | 1 | **STRUCTURE WORKS** |  | 2026-03-24 | 2026-04-04 |  |  |
| MLTX-02-005-EN-11430 |  | Shop DWG Approval for Foundation Plan | 15d | 2026-03-24 A | 2026-04-04 A | MLTX-02-005-EN-8280, MLTX-02-005-EN-11360 | 100% |
| MLTX-02-005-EN-11440 |  | Shop DWG Approval for Ground Floor Framing Plan | 21d | 2026-03-24 A | 2026-04-04 A | MLTX-02-005-EN-8290, MLTX-02-005-EN-11770 | 100% |
| MLTX-02-005-EN-11450 |  | Shop DWG Approval for Sections/Details | 21d | 2026-03-24 A | 2026-04-04 A | MLTX-02-005-EN-8300 | 100% |
|  | 3 | **MECHANCAL WORKS** |  | 2026-03-24 | 2026-07-30 |  |  |
| MLTX-02-005-EN-11470 |  | Shop DWG Approval for Exhaust Air Plan | 21d | 2026-03-24 A | 2026-04-04 A | MLTX-02-005-EN-8320, MLTX-02-005-EN-11500 | 100% |
| MLTX-02-005-EN-11490 |  | Shop DWG Approval for Fire Fighting Layout | 21d | 2026-03-24 A | 2026-04-04 A | MLTX-02-005-EN-8340 | 100% |
| MLTX-02-005-EN-12050 |  | Shop DWG Approval for Duct Routing Layout | 21d | 2026-03-24 A | 2026-04-04 A | MLTX-02-005-EN-8920, MLTX-02-005-EN-11500 | 100% |
| MLTX-02-005-EN-11520 |  | Shop DWG Approval for Drainage Layout | 21d | 2026-03-30 A | 2026-06-04 A | MLTX-02-005-EN-8370, MLTX-02-005-EN-11280 | 100% |
| MLTX-02-005-EN-11530 |  | Shop DWG Approval for Drainage Details | 21d | 2026-03-30 A | 2026-06-04 A | MLTX-02-005-EN-8380, MLTX-02-005-EN-11280 | 100% |
| MLTX-02-005-EN-11500 |  | Shop DWG Approval for Water Supply Layout | 21d | 2026-06-03 A | 2026-06-03 A | MLTX-02-005-EN-8350, MLTX-02-005-EN-11290 | 100% |
| MLTX-02-005-EN-11510 |  | Shop DWG Approval for Water Supply Details | 21d | 2026-06-03 A | 2026-06-03 A | MLTX-02-005-EN-8360, MLTX-02-005-EN-11290 | 100% |
| MLTX-02-005-EN-11460 |  | Shop DWG Approval for HVAC Plan | 21d | 2026-07-30 A | 2026-07-30 A | MLTX-02-005-EN-8310 | 100% |
| MLTX-02-005-EN-11480 |  | Shop DWG Approval for HVAC Equipment Schedule | 21d | 2026-07-30 A | 2026-07-30 A | MLTX-02-005-EN-8330, MLTX-02-005-EN-11470 | 100% |
| MLTX-02-005-EN-12060 |  | Shop DWG Approval for Diffusers Layout | 21d | 2026-07-30 A | 2026-07-30 A | MLTX-02-005-EN-8930 | 100% |
|  | 4 | **ELECTRICAL WORKS** |  | 2026-03-24 | 2026-07-30 |  |  |
| MLTX-02-005-EN-11540 |  | Shop DWG Approval for Lighting Layout | 21d | 2026-03-24 A | 2026-04-04 A | MLTX-02-005-EN-8390, MLTX-02-005-EN-11280 | 100% |
| MLTX-02-005-EN-11550 |  | Shop DWG Approval for Power Layout | 21d | 2026-03-24 A | 2026-04-04 A | MLTX-02-005-EN-8400, MLTX-02-005-EN-11570 | 100% |
| MLTX-02-005-EN-11580 |  | Shop DWG Approval for Lighting Installation Details | 21d | 2026-03-24 A | 2026-04-04 A | MLTX-02-005-EN-8430, MLTX-02-005-EN-11280 | 100% |
| MLTX-02-005-EN-11590 |  | Shop DWG Approval for Power Installation Details | 30d | 2026-03-24 A | 2026-04-04 A | MLTX-02-005-EN-8440, MLTX-02-005-EN-12080 | 100% |
| MLTX-02-005-EN-11620 |  | Shop DWG Approval for Grounding Details | 30d | 2026-03-24 A | 2026-04-04 A | MLTX-02-005-EN-8470, MLTX-02-005-EN-11600 | 100% |
| MLTX-02-005-EN-11630 |  | Shop DWG Approval for Lightning Protection Details | 30d | 2026-03-24 A | 2026-04-04 A | MLTX-02-005-EN-8480, MLTX-02-005-EN-11600 | 100% |
| MLTX-02-005-EN-11640 |  | Shop DWG Approval for Fire Alarm Installation Details | 30d | 2026-03-24 A | 2026-04-04 A | MLTX-02-005-EN-8490, MLTX-02-005-EN-11470 | 100% |
| MLTX-02-005-EN-11660 |  | Shop DWG Approval for Grounding Layout | 30d | 2026-03-24 A | 2026-04-04 A | MLTX-02-005-EN-8510, MLTX-02-005-EN-11600 | 100% |
| MLTX-02-005-EN-11670 |  | Shop DWG Approval for Lightning Protection System Layout | 30d | 2026-03-24 A | 2026-04-04 A | MLTX-02-005-EN-8520, MLTX-02-005-EN-11600 | 100% |
| MLTX-02-005-EN-11680 |  | Shop DWG Approval for Fire Alarm Layout | 30d | 2026-03-24 A | 2026-04-04 A | MLTX-02-005-EN-8530, MLTX-02-005-EN-11470 | 100% |
| MLTX-02-005-EN-11690 |  | Shop DWG Approval for Fire Alarm Riser Diagram | 30d | 2026-03-24 A | 2026-04-04 A | MLTX-02-005-EN-8540, MLTX-02-005-EN-11470 | 100% |
| MLTX-02-005-EN-11720 |  | Shop DWG Approval for Telephone & Data Layout | 21d | 2026-03-24 A | 2026-04-04 A | MLTX-02-005-EN-8570, MLTX-02-005-EN-11380 | 100% |
| MLTX-02-005-EN-11570 |  | Shop DWG Approval for Panel Board Schedules | 30d | 2026-07-22 A | 2026-07-22 A | MLTX-02-005-EN-8420, MLTX-02-005-EN-11260 | 100% |
| MLTX-02-005-EN-11560 |  | Shop DWG Approval for Power Single Line Diagram | 21d | 2026-07-30 A | 2026-07-30 A | MLTX-02-005-EN-8410, MLTX-02-005-EN-11310, MLTX-02-005-EN-11780, MLTX-02-005-EN-11790 | 100% |
| MLTX-02-005-EN-11600 |  | Shop DWG Approval for Cable Tray Installation Details | 30d | 2026-07-30 A | 2026-07-30 A | MLTX-02-005-EN-8450, MLTX-02-005-EN-8420, MLTX-02-005-EN-11720 | 100% |
| MLTX-02-005-EN-11610 |  | Shop DWG Approval for Manhole & Ductbank Details | 30d | 2026-07-30 A | 2026-07-30 A | MLTX-02-005-EN-8460, MLTX-02-005-EN-11720 | 100% |
| MLTX-02-005-EN-11650 |  | Shop DWG Approval for CCTV Details | 30d | 2026-07-30 A | 2026-07-30 A | MLTX-02-005-EN-8500, MLTX-02-005-EN-11610, MLTX-02-005-EN-11600, MLTX-02-005-EN-11570 | 100% |
| MLTX-02-005-EN-11700 |  | Shop DWG Approval for CCTV Layout | 30d | 2026-07-30 A | 2026-07-30 A | MLTX-02-005-EN-8550, MLTX-02-005-EN-11600 | 100% |
| MLTX-02-005-EN-11710 |  | Shop DWG Approval for CCTV Riser Diagram | 30d | 2026-07-30 A | 2026-07-30 A | MLTX-02-005-EN-11600, MLTX-02-005-EN-8560, MLTX-02-005-EN-12080 | 100% |
| MLTX-02-005-EN-11730 |  | Shop DWG Approval for Telephone & Data Riser Diagram | 21d | 2026-07-30 A | 2026-07-30 A | MLTX-02-005-EN-8560, MLTX-02-005-EN-8580, MLTX-02-005-EN-11570, MLTX-02-005-EN-11280 | 100% |
|  | ELE | **SHOP DRAWINGS APPROVAL FOR PLAYGROUND WORKS** |  | 2026-03-15 | 2027-01-20 |  |  |
|  | 3 | **ARCHITECTURE WORKS** |  | 2026-03-15 | 2026-05-24 |  |  |
| MLTX-02-005-EN-11900 |  | Shop DWG Approval for Playground Plan/Layout | 15d | 2026-03-15 A | 2026-03-29 A | MLTX-02-005-EN-8780, MLTX-02-005-EN-11330, MLTX-02-005-EN-11450, MLTX-02-005-EN-11440 | 100% |

| ID | WBS | Task | Duration | Start | Finish | Predecessors | Complete | Total float |
| --- | --- | --- | --- | --- | --- | --- | --- | --- |
| MLTX-02-005-EN-11910 |  | Shop DWG Approval for Furniture & Marking | 30d | 2026-03-15 A | 2026-05-14 A | MLTX-02-005-EN-8790, MLTX-02-005-EN-11290 | 100% |  |
| MLTX-02-005-EN-11920 |  | Shop DWG Approval for Sections | 20d | 2026-03-15 A | 2026-03-29 A | MLTX-02-005-EN-8800 | 100% |  |
| MLTX-02-005-EN-11930 |  | Shop DWG Approval for Interlock Pattern Plan | 30d | 2026-03-15 A | 2026-03-29 A | MLTX-02-005-EN-8810, MLTX-02-005-EN-12000 | 100% |  |
| MLTX-02-005-EN-11940 |  | Shop DWG Approval for Doors/Windows Schedule | 20d | 2026-03-15 A | 2026-05-24 A | MLTX-02-005-EN-8810 | 100% |  |
| MLTX-02-005-EN-11980 |  | Shop DWG Approval for Dome Internal Layout | 30d | 2026-03-15 A | 2026-05-24 A | MLTX-02-005-EN-8850, MLTX-02-005-EN-11900 | 100% |  |
|  | 4 | **STRUCTURE WORKS** |  | 2026-03-24 | 2026-07-16 |  |  |  |
| MLTX-02-005-EN-11950 |  | Shop DWG Approval for Air Dome System | 21d | 2026-03-24 A | 2026-05-16 A | MLTX-02-005-EN-8830 | 100% |  |
| MLTX-02-005-EN-11960 |  | Shop DWG Approval for Foundation of Air Dome | 21d | 2026-07-16 A | 2026-07-16 A | MLTX-02-005-EN-8840, MLTX-02-005-EN-11980 | 100% |  |
| MLTX-02-005-EN-11970 |  | Shop DWG Approval for Foundation of Air Dome | 21d | 2026-07-16 A | 2026-07-16 A | MLTX-02-005-EN-11960 SS, MLTX-02-005-EN-11980 | 100% |  |
| MLTX-02-005-EN-11990 |  | Shop DWG Approval for Anchor Bolt Layout of Air Dome | 21d | 2026-07-16 A | 2026-07-16 A | MLTX-02-005-EN-8860, MLTX-02-005-EN-11980 | 100% |  |
|  | 5 | **AIR DOME SYSTEM** |  | 2026-03-24 | 2026-05-25 |  |  |  |
| MLTX-02-005-EN-12000 |  | Shop DWG Approval for Air Dome Structural Layout | 21d | 2026-03-24 A | 2026-05-16 A | MLTX-02-005-EN-8870 | 100% |  |
| MLTX-02-005-EN-12010 |  | Shop DWG Approval for Membrane Panel Layout | 21d | 2026-03-24 A | 2026-05-25 A | MLTX-02-005-EN-8880 | 100% |  |
| MLTX-02-005-EN-12020 |  | Shop DWG Approval for Cable Tension Layout | 21d | 2026-03-24 A | 2026-05-25 A | MLTX-02-005-EN-8890, MLTX-02-005-EN-12010 SS | 100% |  |
| MLTX-02-005-EN-12030 |  | Shop DWG Approval for Airlock Door Details | 21d | 2026-03-24 A | 2026-05-25 A | MLTX-02-005-EN-8900 | 100% |  |
| MLTX-02-005-EN-12040 |  | Shop DWG Approval for Emergency Exit Details | 21d | 2026-03-24 A | 2026-05-25 A | MLTX-02-005-EN-8910 | 100% |  |
|  | 6 | **SPORTS EQUIPMENT** |  | 2026-07-20 | 2026-10-24 |  |  |  |
| MLTX-02-005-EN-12090 |  | Shop DWG Approval for Padel Court Structure | 30d | 2026-07-20 A | 2026-07-20 A | MLTX-02-005-EN-8960 | 100% |  |
| MLTX-02-005-EN-12080 |  | Shop DWG Approval for Basketball Court Marking | 30d | 2026-08-25 A | 2026-08-25 A | MLTX-02-005-EN-8950 | 100% |  |
| MLTX-02-005-EN-12070 |  | Shop DWG Approval for Football Turf Installation | 21d | 2026-10-24 A | 2026-10-24 A | MLTX-02-005-EN-8940, MLTX-02-005-EN-11470 | 100% |  |
|  | 1 | **MECHANCAL WORKS** |  | 2026-10-24 | 2026-10-24 |  |  |  |
| MLTX-02-005-EN-11880 |  | Shop DWG Approval for HVAC Plan | 23d | 2026-10-24 A | 2026-10-24 A | MLTX-02-005-EN-8760 | 100% |  |
| MLTX-02-005-EN-11890 |  | Shop DWG Approval for Exhaust Air Plan | 23d | 2026-10-24 A | 2026-10-24 A | MLTX-02-005-EN-8770 | 100% |  |
|  | 2 | **ELECTRICAL WORKS** |  | 2026-08-25 | 2027-01-20 |  |  |  |
| MLTX-02-005-EN-11850 |  | Shop DWG Approval for CCTV Details | 21d | 2026-08-25 A | 2026-08-25 A | MLTX-02-005-EN-8710, MLTX-02-005-EN-11480 | 100% |  |
| MLTX-02-005-EN-11860 |  | Shop DWG Approval for CCTV Layout | 21d | 2026-08-25 A | 2026-08-25 A | MLTX-02-005-EN-8740, MLTX-02-005-EN-11480 | 100% |  |
| MLTX-02-005-EN-11870 |  | Shop DWG Approval for CCTV Riser Diagram | 21d | 2026-08-25 A | 2026-08-25 A | MLTX-02-005-EN-8750, MLTX-02-005-EN-11480 | 100% |  |
| MLTX-02-005-EN-11800 |  | Shop DWG Approval for Lighting Layout | 25d | 2026-10-24 A | 2026-10-24 A | MLTX-02-005-EN-8650 | 100% |  |
| MLTX-02-005-EN-11820 |  | Shop DWG Approval for Power Single Line Diagram | 25d | 2026-10-24 A | 2026-10-24 A | MLTX-02-005-EN-11560, MLTX-02-005-EN-8670, MLTX-02-005-EN-8650 | 100% |  |
| MLTX-02-005-EN-11830 |  | Shop DWG Approval for Panel Board Schedules | 25d | 2026-10-24 A | 2026-10-24 A | MLTX-02-005-EN-8680, MLTX-02-005-EN-8650 | 100% |  |
| MLTX-02-005-EN-11840 |  | Shop DWG Approval for Power Installation Details | 25d | 2026-11-23 | 2026-12-22 | MLTX-02-005-EN-8690, MLTX-02-005-EN-8650 |  | -17.1d |
| MLTX-02-005-EN-11810 |  | Shop DWG Approval for Power Layout | 25d | 2026-12-22 | 2027-01-20 | MLTX-02-005-EN-8660 |  | -42.1d |
|  | EAR | **SHOP DRAWINGS APPROVAL FOR LANDSCAPE WORKS** |  | 2026-03-15 | 2026-07-30 |  |  |  |
|  | 3 | **ARCHITECTURE WORKS** |  | 2026-03-15 | 2026-05-19 |  |  |  |
| MLTX-02-005-EN-11740 |  | Shop DWG Approval for Landscape Layout | 21d | 2026-03-15 A | 2026-03-29 A | MLTX-02-005-EN-8590 | 100% |  |
| MLTX-02-005-EN-11750 |  | Shop DWG Approval for Hardscape Plan | 21d | 2026-03-15 A | 2026-03-29 A | MLTX-02-005-EN-8600 | 100% |  |
| MLTX-02-005-EN-11770 |  | Shop DWG Approval for Landscape Details | 21d | 2026-03-15 A | 2026-03-29 A | MLTX-02-005-EN-8620 | 100% |  |
| MLTX-02-005-EN-11760 |  | Shop DWG Approval for Planting Plan | 15d | 2026-03-24 A | 2026-05-19 A | MLTX-02-005-EN-8610 | 100% |  |
|  | 1 | **MECHANCAL WORKS** |  | 2026-07-08 | 2026-07-08 |  |  |  |
| MLTX-02-005-EN-11780 |  | Shop DWG Approval for Irrigation Details | 30d | 2026-07-08 A | 2026-07-08 A | MLTX-02-005-EN-8630, MLTX-02-005-EN-11290 | 100% |  |
| MLTX-02-005-EN-11790 |  | Shop DWG Approval for Irrigation Layout | 30d | 2026-07-08 A | 2026-07-08 A | MLTX-02-005-EN-8640, MLTX-02-005-EN-11290 | 100% |  |
|  | 2 | **ELECTRICAL WORKS** |  | 2026-07-30 | 2026-07-30 |  |  |  |
| MLTX-02-005-EN-11320 |  | Shop DWG Approval for Lighting General Arrangement | 30d | 2026-07-30 A | 2026-07-30 A | MLTX-02-005-EN-7890, MLTX-02-005-EN-11960 | 100% |  |
| MLTX-02-005-EN-11330 |  | Shop DWG Approval for Lighting Network Layout | 30d | 2026-07-30 A | 2026-07-30 A | MLTX-02-005-EN-7900 | 100% |  |
| MLTX-02-005-EN-11340 |  | Shop DWG Approval for Lighting Details | 30d | 2026-07-30 A | 2026-07-30 A | MLTX-02-005-EN-7910, MLTX-02-005-EN-11960 | 100% |  |
| MLTX-02-005-EN-11350 |  | Shop DWG Approval for Lighting Single Line Diagram | 30d | 2026-07-30 A | 2026-07-30 A | MLTX-02-005-EN-7920, MLTX-02-005-EN-11960 | 100% |  |
|  | MTS | **METHOD STATEMENTS** |  | 2026-03-08 | 2026-09-12 |  |  |  |
|  | 1 | **METHOD STATEMENT SUBMITTAL** |  | 2026-03-08 | 2026-06-04 |  |  |  |
|  | 4 | **CIVIL WORKS** |  | 2026-03-09 | 2026-03-14 |  |  |  |
| MLTX-02-005-EN-7930 |  | Preparation & Submission of Method Statement for Earthwork | 15d | 2026-03-09 A | 2026-03-14 A | MLTX-02-005-MB-1770 | 100% |  |
| MLTX-02-005-EN-7940 |  | Preparation & Submission of Method Statement for Concrete Works | 21d | 2026-03-09 A | 2026-03-14 A | MLTX-02-005-MB-1770, MLTX-02-005-EN-7930 | 100% |  |
| MLTX-02-005-EN-7950 |  | Preparation & Submission of Method Statement for Waterproofing | 21d | 2026-03-09 A | 2026-03-14 A | MLTX-02-005-MB-1770 | 100% |  |
|  | 1 | **ARCHITECTURE WORKS** |  | 2026-03-08 | 2026-06-02 |  |  |  |
| MLTX-02-005-EN-7990 |  | Preparation & Submission of Method Statement for Masonary Works | 21d | 2026-03-08 A | 2026-05-11 A | MLTX-02-005-MB-1770 | 100% |  |
| MLTX-02-005-EN-8000 |  | Preparation & Submission of Method Statement for Tilling Works | 30d | 2026-03-08 A | 2026-05-17 A | MLTX-02-005-MB-1770, MLTX-02-005-EN-8070 | 100% |  |
| MLTX-02-005-EN-8010 |  | Preparation & Submission of Method Statement for Seats/Benches Works | 30d | 2026-03-08 A | 2026-06-02 A | MLTX-02-005-MB-1770, MLTX-02-005-EN-7980 | 100% |  |
| MLTX-02-005-EN-8020 |  | Preparation & Submission of Method Statement for Doors/Windows Works | 30d | 2026-03-08 A | 2026-06-02 A | MLTX-02-005-MB-1770, MLTX-02-005-EN-7970 | 100% |  |
| MLTX-02-005-EN-8030 |  | Preparation & Submission of Method Statement for Interlock/Curbstone Works | 21d | 2026-03-08 A | 2026-05-24 A | MLTX-02-005-MB-1770 | 100% |  |
| MLTX-02-005-EN-8040 |  | Preparation & Submission of Method Statement for Parking Works | 30d | 2026-03-08 A | 2026-05-24 A | MLTX-02-005-MB-1770, MLTX-02-005-EN-11590 | 100% |  |
| MLTX-02-005-EN-8050 |  | Preparation & Submission of Method Statement for Soft Scape Works | 21d | 2026-03-08 A | 2026-06-02 A | MLTX-02-005-MB-1770, MLTX-02-005-EN-7980 | 100% |  |
| MLTX-02-005-EN-8060 |  | Preparation & Submission of Method Statement for Fence Works | 30d | 2026-03-08 A | 2026-06-02 A | MLTX-02-005-MB-1770 | 100% |  |
| MLTX-02-005-EN-8070 |  | Preparation & Submission of Method Statement for Air Dome Works | 30d | 2026-03-08 A | 2026-06-02 A | MLTX-02-005-MB-1770, MLTX-02-005-EN-8160, MLTX-02-005-EN-11230 | 100% |  |
| MLTX-02-005-EN-8080 |  | Preparation & Submission of Method Statement for Metal Works | 21d | 2026-03-08 A | 2026-06-02 A | MLTX-02-005-MB-1770 | 100% |  |
| MLTX-02-005-EN-8090 |  | Preparation & Submission of Method Statement for Partitions Works | 21d | 2026-03-08 A | 2026-06-02 A | MLTX-02-005-MB-1770, MLTX-02-005-EN-7990 | 100% |  |
| MLTX-02-005-EN-8100 |  | Preparation & Submission of Method Statement for Gypsum Board Works | 21d | 2026-03-08 A | 2026-06-02 A | MLTX-02-005-MB-1770, MLTX-02-005-EN-8070 | 100% |  |
| MLTX-02-005-EN-7980 |  | Preparation & Submission of Method Statement for Plastering Works | 15d | 2026-03-09 A | 2026-03-14 A | MLTX-02-005-MB-1770, MLTX-02-005-EN-11260 | 100% |  |
|  | 2 | **MECHANICAL WORKS** |  | 2026-03-14 | 2026-06-04 |  |  |  |
| MLTX-02-005-EN-8110 |  | Preparation & Submission of Method Statement for Sewage/Drainage System | 21d | 2026-03-14 A | 2026-05-04 A | MLTX-02-005-EN-7930, MLTX-02-005-EN-7980 | 100% |  |
| MLTX-02-005-EN-8120 |  | Preparation & Submission of Method Statement for Water Supply System | 21d | 2026-03-14 A | 2026-05-04 A | MLTX-02-005-EN-7940, MLTX-02-005-EN-7980 | 100% |  |
| MLTX-02-005-EN-8130 |  | Preparation & Submission of Method Statement for Fire Fighting System | 21d | 2026-03-14 A | 2026-06-04 A | MLTX-02-005-EN-7950, MLTX-02-005-EN-8040, MLTX-02-005-EN-11190 | 100% |  |

| ID | WBS | Task | Duration | Start | Finish | Predecessors | Complete |
| --- | --- | --- | --- | --- | --- | --- | --- |
| MLTX-02-005-EN-8140 |  | Preparation & Submission of Method Statement for Irrigation System | 15d | 2026-03-14 A | 2026-06-04 A | MLTX-02-005-EN-7980, MLTX-02-005-EN-8170 | 100% |
| MLTX-02-005-EN-8150 |  | Preparation & Submission of Method Statement for HVAC System | 21d | 2026-03-14 A | 2026-06-04 A | MLTX-02-005-EN-7990, MLTX-02-005-EN-8110 | 100% |
|  | 5 | **ELECTRICAL WORKS** |  | 2026-03-14 | 2026-05-11 |  |  |
| MLTX-02-005-EN-7960 |  | Preparation & Submission of Method Statement for Electrical Conduits/Pulling Works | 21d | 2026-03-14 A | 2026-05-11 A | MLTX-02-005-EN-8030 | 100% |
| MLTX-02-005-EN-7970 |  | Preparation & Submission of Method Statement for Lighting Poles Installation | 21d | 2026-03-14 A | 2026-05-11 A | MLTX-02-005-EN-8050, MLTX-02-005-EN-8170 | 100% |
| MLTX-02-005-EN-8160 |  | Preparation & Submission of Method Statement for Telecommunication & Data System | 30d | 2026-03-14 A | 2026-05-11 A | MLTX-02-005-EN-8060 | 100% |
| MLTX-02-005-EN-8170 |  | Preparation & Submission of Method Statement for CCTV System | 30d | 2026-03-14 A | 2026-05-11 A | MLTX-02-005-EN-8070, MLTX-02-005-EN-11240 | 100% |
| MLTX-02-005-EN-8180 |  | Preparation & Submission of Method Statement for Lighting Works | 21d | 2026-03-14 A | 2026-05-11 A | MLTX-02-005-EN-8080 | 100% |
| MLTX-02-005-EN-8190 |  | Preparation & Submission of Method Statement for Earthing/Lightning Works | 21d | 2026-03-14 A | 2026-05-11 A | MLTX-02-005-EN-8090, MLTX-02-005-EN-7960 | 100% |
| MLTX-02-005-EN-8200 |  | Preparation & Submission of Method Statement for Panel Boards Works | 21d | 2026-03-14 A | 2026-05-11 A | MLTX-02-005-EN-8100, MLTX-02-005-EN-7980 | 100% |
|  | 2 | **METHOD STATEMENT APPROVAL** |  | 2026-03-14 | 2026-09-12 |  |  |
|  | 4 | **CIVIL WORKS** |  | 2026-03-14 | 2026-04-30 |  |  |
| MLTX-02-005-EN-10990 |  | Approval of Method Statement for Earthwork | 15d | 2026-03-14 A | 2026-04-30 A | MLTX-02-005-EN-7930 | 100% |
| MLTX-02-005-EN-11000 |  | Approval of Method Statement for Concrete Works | 30d | 2026-03-14 A | 2026-04-30 A | MLTX-02-005-EN-7940, MLTX-02-005-EN-10990 | 100% |
| MLTX-02-005-EN-11010 |  | Approval of Method Statement for Waterproofing | 21d | 2026-03-14 A | 2026-04-30 A | MLTX-02-005-EN-7950 | 100% |
|  | 1 | **ARCHITECTURE WORKS** |  | 2026-03-14 | 2026-09-12 |  |  |
| MLTX-02-005-EN-11040 |  | Approval of Method Statement for Plastering Works | 30d | 2026-03-14 A | 2026-04-30 A | MLTX-02-005-EN-7980, MLTX-02-005-EN-11130 | 100% |
| MLTX-02-005-EN-11050 |  | Approval of Method Statement for Masonary Works | 30d | 2026-03-14 A | 2026-05-21 A | MLTX-02-005-EN-7990, MLTX-02-005-EN-11010 | 100% |
| MLTX-02-005-EN-11060 |  | Approval of Method Statement for Tilling Works | 30d | 2026-03-14 A | 2026-05-21 A | MLTX-02-005-EN-8000, MLTX-02-005-EN-11130 | 100% |
| MLTX-02-005-EN-11130 |  | Approval of Method Statement for Air Dome Works | 30d | 2026-07-11 A | 2026-07-22 A | MLTX-02-005-EN-8070, MLTX-02-005-EN-11210 | 100% |
| MLTX-02-005-EN-11120 |  | Approval of Method Statement for Fence Works | 30d | 2026-08-10 A | 2026-08-10 A | MLTX-02-005-EN-8060, MLTX-02-005-EN-11070, MLTX-02-005-EN-11150, MLTX-02-005-EN-8020, MLTX-02-005-EN-8750 | 100% |
| MLTX-02-005-EN-11090 |  | Approval of Method Statement for Interlock/Curbstone Works | 30d | 2026-08-15 A | 2026-08-15 A | MLTX-02-005-EN-8030, MLTX-02-005-EN-11130 | 100% |
| MLTX-02-005-EN-11150 |  | Approval of Method Statement for Gypsum Board Works | 30d | 2026-08-20 A | 2026-08-20 A | MLTX-02-005-EN-8100, MLTX-02-005-EN-11040 | 100% |
| MLTX-02-005-EN-11100 |  | Approval of Method Statement for Parking Works | 30d | 2026-08-26 A | 2026-08-26 A | MLTX-02-005-EN-8040, MLTX-02-005-EN-11470 | 100% |
| MLTX-02-005-EN-11070 |  | Approval of Method Statement for Seats/Benches Works | 30d | 2026-09-12 A | 2026-09-12 A | MLTX-02-005-EN-8010, MLTX-02-005-EN-11040 | 100% |
| MLTX-02-005-EN-11080 |  | Approval of Method Statement for Doors/Windows Works | 30d | 2026-09-12 A | 2026-09-12 A | MLTX-02-005-EN-8020, MLTX-02-005-EN-11110, MLTX-02-005-EN-11100 | 100% |
| MLTX-02-005-EN-11110 |  | Approval of Method Statement for Soft Scape Works | 30d | 2026-09-12 A | 2026-09-12 A | MLTX-02-005-EN-8050, MLTX-02-005-EN-11040 | 100% |
| MLTX-02-005-EN-11140 |  | Approval of Method Statement for Partitions Works | 30d | 2026-09-12 A | 2026-09-12 A | MLTX-02-005-EN-8090, MLTX-02-005-EN-11040 | 100% |
|  | 2 | **MECHANICAL WORKS** |  | 2026-06-02 | 2026-08-26 |  |  |
| MLTX-02-005-EN-11170 |  | Approval of Method Statement for Water Supply System | 21d | 2026-06-02 A | 2026-06-02 A | MLTX-02-005-EN-8120, MLTX-02-005-EN-8140 | 100% |
| MLTX-02-005-EN-11160 |  | Approval of Method Statement for Sewage/Drainage System | 21d | 2026-06-09 A | 2026-06-09 A | MLTX-02-005-EN-8110, MLTX-02-005-EN-11130 | 100% |
| MLTX-02-005-EN-11190 |  | Approval of Method Statement for Irrigation System | 15d | 2026-06-28 A | 2026-06-28 A | MLTX-02-005-EN-8140, MLTX-02-005-EN-11040 | 100% |
| MLTX-02-005-EN-11200 |  | Approval of Method Statement for HVAC System | 21d | 2026-08-25 A | 2026-08-25 A | MLTX-02-005-EN-8150, MLTX-02-005-EN-11160 | 100% |
| MLTX-02-005-EN-11180 |  | Approval of Method Statement for Fire Fighting System | 21d | 2026-08-26 A | 2026-08-26 A | MLTX-02-005-EN-8130, MLTX-02-005-EN-8740 | 100% |
|  | 5 | **ELECTRICAL WORKS** |  | 2026-07-12 | 2026-08-26 |  |  |
| MLTX-02-005-EN-11020 |  | Approval of Method Statement for Electrical Conduits/Pulling Works | 21d | 2026-07-12 A | 2026-07-16 A | MLTX-02-005-EN-7960, MLTX-02-005-EN-11130 | 100% |
| MLTX-02-005-EN-11250 |  | Approval of Method Statement for Panel Boards Works | 21d | 2026-07-12 A | 2026-07-22 A | MLTX-02-005-EN-8200, MLTX-02-005-EN-11130 | 100% |
| MLTX-02-005-EN-11210 |  | Approval of Method Statement for Telecommunication & Data System | 30d | 2026-08-10 A | 2026-08-10 A | MLTX-02-005-EN-8160 | 100% |
| MLTX-02-005-EN-11220 |  | Approval of Method Statement for CCTV System | 30d | 2026-08-10 A | 2026-08-10 A | MLTX-02-005-EN-8170, MLTX-02-005-EN-11130 | 100% |
| MLTX-02-005-EN-11230 |  | Approval of Method Statement for Lighting Works | 21d | 2026-08-10 A | 2026-08-10 A | MLTX-02-005-EN-8180 | 100% |
| MLTX-02-005-EN-11240 |  | Approval of Method Statement for Earthing/Lightning Works | 21d | 2026-08-10 A | 2026-08-10 A | MLTX-02-005-EN-11230, MLTX-02-005-EN-8190 | 100% |
| MLTX-02-005-EN-11030 |  | Approval of Method Statement for Lighting Poles Installation | 21d | 2026-08-26 A | 2026-08-26 A | MLTX-02-005-EN-7970, MLTX-02-005-EN-11220, MLTX-02-005-EN-11020 | 100% |
|  | PREQ | **PRE-QUALIFICATION & MATERIAL** |  | 2026-03-08 | 2026-09-12 |  |  |
|  | PRE | **PRE-QUALIFICATION** |  | 2026-03-08 | 2026-06-07 |  |  |
|  | TOI | **TOILET/SERVICE WORKS** |  | 2026-03-08 | 2026-06-07 |  |  |
|  | 1 | **STEEL REINFORCEMENT** |  | 2026-03-09 | 2026-03-19 |  |  |
| MLTX-02-005-EN-9990 |  | Pre-Qualification Submittal for Steel Reinforcement | 15d | 2026-03-09 A | 2026-03-11 A | MLTX-02-005-MB-1770 | 100% |
| MLTX-02-005-EN-10110 |  | Pre-Qualification Approval for Steel Reinforcement | 15d | 2026-03-12 A | 2026-03-19 A | MLTX-02-005-EN-9990 | 100% |
|  | 2 | **READY MIX CONCRETE** |  | 2026-03-09 | 2026-03-19 |  |  |
| MLTX-02-005-EN-10000 |  | Pre-Qualification Submittal for Ready Mixed Concrete | 15d | 2026-03-09 A | 2026-03-11 A | MLTX-02-005-MB-1770, MLTX-02-005-EN-9990 SS | 100% |
| MLTX-02-005-EN-10010 |  | Pre-Qualification Approval of Ready Mixed Concrete | 15d | 2026-03-12 A | 2026-03-19 A | MLTX-02-005-EN-10000 | 100% |
|  | 3 | **CONCRETE BLOCKS** |  | 2026-03-09 | 2026-03-19 |  |  |
| MLTX-02-005-EN-10210 |  | Pre-Qualification Submittal for Concrete Blocks | 15d | 2026-03-09 A | 2026-03-11 A | MLTX-02-005-EN-10000 SS, MLTX-02-005-MB-1770 | 100% |
| MLTX-02-005-EN-10220 |  | Pre-Qualification Approval for Concrete Blocks | 15d | 2026-03-12 A | 2026-03-19 A | MLTX-02-005-EN-10210 | 100% |
|  | 4 | **WATER PROOFING** |  | 2026-03-09 | 2026-03-19 |  |  |
| MLTX-02-005-EN-10020 |  | Pre-Qualification Submittal for Water Proofing | 15d | 2026-03-09 A | 2026-03-11 A | MLTX-02-005-MB-1770, MLTX-02-005-EN-10210 SS | 100% |
| MLTX-02-005-EN-10120 |  | Pre-Qualification Approval for Water Proofing | 21d | 2026-03-12 A | 2026-03-19 A | MLTX-02-005-EN-10020, MLTX-02-005-EN-10010 | 100% |
|  | 6 | **FLOOR/WALL TILES** |  | 2026-03-08 | 2026-05-10 |  |  |
| MLTX-02-005-EN-10230 |  | Pre-Qualification Submittal for Tilling Materials | 15d | 2026-03-08 A | 2026-05-05 A | MLTX-02-005-MB-1770, MLTX-02-005-EN-10020 SS | 100% |
| MLTX-02-005-EN-10240 |  | Pre-Qualification Approval for Tailling Material | 15d | 2026-03-11 A | 2026-05-10 A | MLTX-02-005-EN-10230, MLTX-02-005-EN-10460 | 100% |
|  | 7 | **SUSPENDED CEILING** |  | 2026-03-09 | 2026-03-19 |  |  |
| MLTX-02-005-EN-10250 |  | Pre-Qualification Submittal for Suspend Ceiling | 15d | 2026-03-09 A | 2026-03-11 A | MLTX-02-005-EN-10230 SS, MLTX-02-005-MB-1770 | 100% |
| MLTX-02-005-EN-10260 |  | Pre-Qualification Approval for Suspend Ceiling | 15d | 2026-03-12 A | 2026-03-19 A | MLTX-02-005-EN-10250, MLTX-02-005-EN-10280 | 100% |
|  | 8 | **DOORS/WINDOWS** |  | 2026-03-09 | 2026-03-19 |  |  |
| MLTX-02-005-EN-10270 |  | Pre-Qualification Submittal for Doors/Windows | 15d | 2026-03-09 A | 2026-03-11 A | MLTX-02-005-EN-10250 SS, MLTX-02-005-MB-1770 | 100% |
| MLTX-02-005-EN-10280 |  | Pre-Qualification Approval for Doors/Windows | 15d | 2026-03-12 A | 2026-03-19 A | MLTX-02-005-EN-10270, MLTX-02-005-EN-10100 | 100% |
|  | 9 | **FURNITURES** |  | 2026-03-08 | 2026-05-10 |  |  |
| MLTX-02-005-EN-10390 |  | Pre-Qualification Submittal for Furnitures | 15d | 2026-03-08 A | 2026-05-06 A | MLTX-02-005-MB-1770, MLTX-02-005-EN-10270 SS | 100% |
| MLTX-02-005-EN-10400 |  | Pre-Qualification Approval for Furnitures | 15d | 2026-03-11 A | 2026-05-10 A | MLTX-02-005-EN-10390, MLTX-02-005-EN-10010 | 100% |
|  | 10 | **SANITARY FIXTURES** |  | 2026-03-08 | 2026-05-10 |  |  |

| ID | WBS | Task | Duration | Start | Finish | Predecessors | Complete |
| --- | --- | --- | --- | --- | --- | --- | --- |
| MLTX-02-005-EN-10290 |  | Pre-Qualification Submittal for Sanitary Fixtures | 15d | 2026-03-08 A | 2026-05-06 A | MLTX-02-005-EN-10390 SS, MLTX-02-005-MB-1770 | 100% |
| MLTX-02-005-EN-10300 |  | Pre-Qualification Approval for Sanitary Fixtures | 15d | 2026-03-11 A | 2026-05-10 A | MLTX-02-005-EN-10290 | 100% |
|  | 11 | **WATER SUPPLY PIPES** |  | 2026-03-09 | 2026-03-19 |  |  |
| MLTX-02-005-EN-10310 |  | Pre-Qualification Submittal for Water Supply Pipes | 15d | 2026-03-09 A | 2026-03-11 A | MLTX-02-005-EN-10290 SS, MLTX-02-005-MB-1770 | 100% |
| MLTX-02-005-EN-10320 |  | Pre-Qualification Approval for Water Supply Pipes | 15d | 2026-03-12 A | 2026-03-19 A | MLTX-02-005-EN-10310, MLTX-02-005-EN-10460 | 100% |
|  | 12 | **SEWAGE/DRAINAGE PIPES** |  | 2026-03-09 | 2026-03-19 |  |  |
| MLTX-02-005-EN-10330 |  | Pre-Qualification Submittal for Sewage/Drainage Pipes | 15d | 2026-03-09 A | 2026-03-11 A | MLTX-02-005-EN-10310 SS | 100% |
| MLTX-02-005-EN-10340 |  | Pre-Qualification Approval for Sewage/Drainage Pipes | 15d | 2026-03-12 A | 2026-03-19 A | MLTX-02-005-EN-10330 | 100% |
|  | 16 | **PACKAGE AC UNITS** |  | 2026-03-12 | 2026-03-24 |  |  |
| MLTX-02-005-EN-10420 |  | Pre-Qualification Submittal for Package AC Units | 15d | 2026-03-12 A | 2026-03-15 A | MLTX-02-005-EN-9990 | 100% |
| MLTX-02-005-EN-10430 |  | Pre-Qualification Approval for Package AC Units | 15d | 2026-03-16 A | 2026-03-24 A | MLTX-02-005-EN-10420 | 100% |
|  | 17 | **AIR DIFUSSERS/GRILLS** |  | 2026-03-12 | 2026-05-06 |  |  |
| MLTX-02-005-EN-10440 |  | Pre-Qualification Submittal for Air Diffusers/Grills | 15d | 2026-03-12 A | 2026-05-06 A | MLTX-02-005-EN-10000, MLTX-02-005-EN-10200 | 100% |
| MLTX-02-005-EN-10450 |  | Pre-Qualification Approval for Air Diffusers/Grills | 15d | 2026-03-16 A | 2026-05-06 A | MLTX-02-005-EN-10440, MLTX-02-005-EN-10280 | 100% |
|  | 18 | **GALVANIZED DUCTS** |  | 2026-03-11 | 2026-04-30 |  |  |
| MLTX-02-005-EN-10460 |  | Pre-Qualification Submittal for Galvanized Ducts | 15d | 2026-03-11 A | 2026-04-25 A | MLTX-02-005-EN-10210, MLTX-02-005-EN-10080 | 100% |
| MLTX-02-005-EN-10470 |  | Pre-Qualification Approval for Galvanized Ducts | 15d | 2026-03-15 A | 2026-04-30 A | MLTX-02-005-EN-10460, MLTX-02-005-EN-10840 | 100% |
|  | 19 | **EXHAUST FANS** |  | 2026-03-11 | 2026-06-07 |  |  |
| MLTX-02-005-EN-10480 |  | Pre-Qualification Submittal for Exhaust Fans | 15d | 2026-03-11 A | 2026-05-25 A | MLTX-02-005-EN-10020 | 100% |
| MLTX-02-005-EN-10490 |  | Pre-Qualification Approval for Exhaust Fans | 15d | 2026-03-15 A | 2026-06-07 A | MLTX-02-005-EN-10480 | 100% |
|  | 13 | **LIGHTING FIXTURES** |  | 2026-03-11 | 2026-06-07 |  |  |
| MLTX-02-005-EN-10350 |  | Pre-Qualification Submittal for Lighting Fixtures | 15d | 2026-03-11 A | 2026-05-25 A | MLTX-02-005-EN-10230 | 100% |
| MLTX-02-005-EN-10360 |  | Pre-Qualification Approval for Lighting Fixtures | 15d | 2026-03-15 A | 2026-06-07 A | MLTX-02-005-EN-10350 | 100% |
|  | 14 | **SWITCHES/SOCKETS** |  | 2026-03-11 | 2026-06-07 |  |  |
| MLTX-02-005-EN-10370 |  | Pre-Qualification Submittal for Switches/Sockets | 15d | 2026-03-11 A | 2026-05-25 A | MLTX-02-005-EN-10250 | 100% |
| MLTX-02-005-EN-10380 |  | Pre-Qualification Approval for Switches/Sockets | 15d | 2026-03-15 A | 2026-06-07 A | MLTX-02-005-EN-10370 | 100% |
|  | 15 | **EARTHING SYSTEM** |  | 2026-03-11 | 2026-05-11 |  |  |
| MLTX-02-005-EN-10170 |  | Pre-Qualification Submittal for Earthing System | 15d | 2026-03-11 A | 2026-05-09 A | MLTX-02-005-EN-10270, MLTX-02-005-EN-10730 | 100% |
| MLTX-02-005-EN-10180 |  | Pre-Qualification Approval for Earthing System | 15d | 2026-03-15 A | 2026-05-11 A | MLTX-02-005-EN-10170, MLTX-02-005-EN-10460 | 100% |
|  | 5 | **DISTRIBUTION PANNELS** |  | 2026-03-11 | 2026-06-07 |  |  |
| MLTX-02-005-EN-10190 |  | Pre-Qualification Submittal for Distribution Panels | 15d | 2026-03-11 A | 2026-05-25 A | MLTX-02-005-EN-10390, MLTX-02-005-EN-10690 | 100% |
| MLTX-02-005-EN-10200 |  | Pre-Qualification Approval for Distribution Panels | 15d | 2026-03-15 A | 2026-06-07 A | MLTX-02-005-EN-10190, MLTX-02-005-EN-10170 | 100% |
|  | PLG | **PLAYGROUND WORKS** |  | 2026-03-08 | 2026-06-07 |  |  |
|  | 5 | **PVC MEMBRANE** |  | 2026-03-08 | 2026-05-24 |  |  |
| MLTX-02-005-EN-10580 |  | Pre-Qualification Submittal for PVC Membrane | 15d | 2026-03-08 A | 2026-05-20 A | MLTX-02-005-EN-10330 SS | 100% |
| MLTX-02-005-EN-10590 |  | Pre-Qualification Approval for PVC Membrane | 15d | 2026-03-11 A | 2026-05-24 A | MLTX-02-005-EN-10580, MLTX-02-005-EN-10040 | 100% |
|  | 6 | **STEEL TENSION CABLES** |  | 2026-03-08 | 2026-05-24 |  |  |
| MLTX-02-005-EN-10600 |  | Pre-Qualification Submittal for Steel Tension Cables | 15d | 2026-03-08 A | 2026-05-20 A | MLTX-02-005-EN-10580 SS, MLTX-02-005-EN-10040 | 100% |
| MLTX-02-005-EN-10900 |  | Pre-Qualification Approval for Steel Tension Cables | 15d | 2026-03-11 A | 2026-05-24 A | MLTX-02-005-EN-10600, MLTX-02-005-EN-10620 | 100% |
|  | 7 | **EMERGENCY DOORS** |  | 2026-03-08 | 2026-05-24 |  |  |
| MLTX-02-005-EN-10610 |  | Pre-Qualification Submittal for Emergency Doors | 15d | 2026-03-08 A | 2026-05-20 A | MLTX-02-005-MB-1770, MLTX-02-005-EN-10030 | 100% |
| MLTX-02-005-EN-10910 |  | Pre-Qualification Approval for Emergency Doors | 15d | 2026-03-11 A | 2026-05-24 A | MLTX-02-005-EN-10610, MLTX-02-005-EN-10050 | 100% |
|  | 8 | **PRESSURE UNITS** |  | 2026-03-08 | 2026-05-24 |  |  |
| MLTX-02-005-EN-10620 |  | Pre-Qualification Submittal for Pressure Units | 15d | 2026-03-08 A | 2026-05-20 A | MLTX-02-005-MB-1770, MLTX-02-005-EN-9030 | 100% |
| MLTX-02-005-EN-10920 |  | Pre-Qualification Approval for Pressure Units | 15d | 2026-03-11 A | 2026-05-24 A | MLTX-02-005-EN-10620, MLTX-02-005-EN-10930 | 100% |
|  | 9 | **AIR LOCK DOORS** |  | 2026-03-08 | 2026-05-24 |  |  |
| MLTX-02-005-EN-10630 |  | Pre-Qualification Submittal for Lock Doors | 15d | 2026-03-08 A | 2026-05-20 A | MLTX-02-005-MB-1770, MLTX-02-005-EN-10690 | 100% |
| MLTX-02-005-EN-10930 |  | Pre-Qualification Approval for Lock Doors | 15d | 2026-03-11 A | 2026-05-24 A | MLTX-02-005-EN-10630, MLTX-02-005-EN-9670 | 100% |
|  | 15 | **ARTIFICIAL TURF** |  | 2026-03-08 | 2026-05-10 |  |  |
| MLTX-02-005-EN-10780 |  | Pre-Qualification Submittal for Artificial TURF | 15d | 2026-03-08 A | 2026-05-06 A | MLTX-02-005-MB-1770 | 100% |
| MLTX-02-005-EN-10940 |  | Pre-Qualification Approval for Artificial TURF | 15d | 2026-03-11 A | 2026-05-10 A | MLTX-02-005-EN-10780 | 100% |
|  | 20 | **RUBBER GRANULES** |  | 2026-03-08 | 2026-05-10 |  |  |
| MLTX-02-005-EN-10790 |  | Pre-Qualification Submittal for Rubber Granules | 15d | 2026-03-08 A | 2026-05-06 A | MLTX-02-005-MB-1770 | 100% |
| MLTX-02-005-EN-10950 |  | Pre-Qualification Approval for Rubber Granules | 21d | 2026-03-11 A | 2026-05-10 A | MLTX-02-005-EN-10790 | 100% |
|  | 21 | **PADEL GLASS** |  | 2026-03-08 | 2026-05-10 |  |  |
| MLTX-02-005-EN-10800 |  | Pre-Qualification Submittal for Padel Glass | 15d | 2026-03-08 A | 2026-05-06 A | MLTX-02-005-MB-1770, MLTX-02-005-EN-10030 | 100% |
| MLTX-02-005-EN-10960 |  | Pre-Qualification Approval for Padel Glass | 15d | 2026-03-11 A | 2026-05-10 A | MLTX-02-005-EN-10800, MLTX-02-005-EN-10040 | 100% |
|  | 22 | **PADEL WIRE MESH/STEEL SETS** |  | 2026-03-08 | 2026-05-10 |  |  |
| MLTX-02-005-EN-10810 |  | Pre-Qualification Submittal for Wire Mesh/Steel Sets | 15d | 2026-03-08 A | 2026-05-06 A | MLTX-02-005-MB-1770 | 100% |
| MLTX-02-005-EN-10970 |  | Pre-Qualification Approval for Wire Mesh/Steel Sets | 15d | 2026-03-11 A | 2026-05-10 A | MLTX-02-005-EN-10810, MLTX-02-005-EN-10930 | 100% |
|  | 1 | **AGGREGATE BASE COURSE** |  | 2026-03-08 | 2026-04-30 |  |  |
| MLTX-02-005-EN-10030 |  | Pre-Qualification Submittal for Aggregate Base Course | 15d | 2026-03-08 A | 2026-04-26 A | MLTX-02-005-MB-1770 | 100% |
| MLTX-02-005-EN-10040 |  | Pre-Qualification Approval for Aggregate Base Course | 21d | 2026-03-11 A | 2026-04-30 A | MLTX-02-005-EN-10030 | 100% |
|  | 16 | **PACKAGE AC UNITS** |  | 2026-03-11 | 2026-06-07 |  |  |
| MLTX-02-005-EN-10500 |  | Pre-Qualification Submittal for Package AC Units | 15d | 2026-03-11 A | 2026-05-25 A | MLTX-02-005-EN-10620, MLTX-02-005-EN-10930 | 100% |
| MLTX-02-005-EN-10510 |  | Pre-Qualification Approval for Package AC Units | 15d | 2026-03-15 A | 2026-06-07 A | MLTX-02-005-EN-10500, MLTX-02-005-EN-10520 | 100% |
|  | 17 | **AIR DIFUSSERS/GRILLS** |  | 2026-03-11 | 2026-06-07 |  |  |
| MLTX-02-005-EN-10520 |  | Pre-Qualification Submittal for Air Difussers/Grills | 15d | 2026-03-11 A | 2026-05-25 A | MLTX-02-005-EN-10630, MLTX-02-005-EN-10930 | 100% |
| MLTX-02-005-EN-10530 |  | Pre-Qualification Approval for Air Difussers/Grills | 15d | 2026-03-15 A | 2026-06-07 A | MLTX-02-005-EN-10520, MLTX-02-005-EN-10930 | 100% |
|  | 2 | **BITUMINOUS BASE & WEARING COURSE** |  | 2026-03-11 | 2026-04-30 |  |  |

| ID | WBS | Task | Duration | Start | Finish | Predecessors | Complete |
| --- | --- | --- | --- | --- | --- | --- | --- |
| MLTX-02-005-EN-10050 |  | Pre-Qualification Submittal for Bituminous Base & Wearing Cource | 15d | 2026-03-11 A | 2026-04-26 A | MLTX-02-005-EN-10580 | 100% |
| MLTX-02-005-EN-10060 |  | Pre-Qualification Approval for the Site | 15d | 2026-03-15 A | 2026-04-30 A | MLTX-02-005-EN-10050 | 100% |
|  | 3 | **INTERLOCKING PAVING** |  | 2026-03-11 | 2026-04-14 |  |  |
| MLTX-02-005-EN-10070 |  | Pre-Qualification Submittal for Interlocking Block Pavers | 15d | 2026-03-11 A | 2026-04-11 A | MLTX-02-005-EN-10600, MLTX-02-005-EN-10590 | 100% |
| MLTX-02-005-EN-10130 |  | Pre-Qualification Approval for Interlocking Block Pavers | 15d | 2026-03-15 A | 2026-04-14 A | MLTX-02-005-EN-10070, MLTX-02-005-EN-10730 | 100% |
|  | 4 | **MARKING PAINT** |  | 2026-03-11 | 2026-05-09 |  |  |
| MLTX-02-005-EN-10410 |  | Pre-Qualification Submittal for Marking Paint | 15d | 2026-03-11 A | 2026-05-05 A | MLTX-02-005-EN-10610, MLTX-02-005-EN-10050 | 100% |
| MLTX-02-005-EN-10980 |  | Pre-Qualification Approval for Marking Paint | 15d | 2026-03-15 A | 2026-05-09 A | MLTX-02-005-EN-10410, MLTX-02-005-EN-10040 | 100% |
|  | 18 | **GALVANIZED DUCTS** |  | 2026-03-11 | 2026-04-30 |  |  |
| MLTX-02-005-EN-10540 |  | Pre-Qualification Submittal for Galvanized Duct | 15d | 2026-03-11 A | 2026-04-30 A | MLTX-02-005-EN-10520 SS, MLTX-02-005-EN-10930 | 100% |
| MLTX-02-005-EN-10550 |  | Pre-Qualification Approval for Galvanized Duct | 15d | 2026-03-15 A | 2026-04-25 A | MLTX-02-005-EN-10540, MLTX-02-005-EN-10930 | 100% |
|  | 19 | **EXHAUST FANS** |  | 2026-03-11 | 2026-06-07 |  |  |
| MLTX-02-005-EN-10560 |  | Pre-Qualification Submittal for Exhaust Fans | 15d | 2026-03-11 A | 2026-05-25 A | MLTX-02-005-EN-10780, MLTX-02-005-EN-10620 | 100% |
| MLTX-02-005-EN-10570 |  | Pre-Qualification Approval for Exhaust Fans | 15d | 2026-03-15 A | 2026-06-07 A | MLTX-02-005-EN-10560, MLTX-02-005-EN-10930 | 100% |
|  | 10 | **DISTRIBUTION BOARDS** |  | 2026-03-11 | 2026-06-07 |  |  |
| MLTX-02-005-EN-10640 |  | Pre-Qualification Submittal for Distribution Boards | 15d | 2026-03-11 A | 2026-05-25 A | MLTX-02-005-EN-10630, MLTX-02-005-EN-10930 | 100% |
| MLTX-02-005-EN-10650 |  | Pre-Qualification Approval for Distribution Boards | 15d | 2026-03-15 A | 2026-06-07 A | MLTX-02-005-EN-10640, MLTX-02-005-EN-9610 | 100% |
|  | 11 | **POWER CABLES** |  | 2026-03-11 | 2026-05-11 |  |  |
| MLTX-02-005-EN-10660 |  | Pre-Qualification Submittal for Power Cables | 15d | 2026-03-11 A | 2026-05-09 A | MLTX-02-005-EN-10810 | 100% |
| MLTX-02-005-EN-10670 |  | Pre-Qualification Approval for Power Cables | 15d | 2026-03-15 A | 2026-05-11 A | MLTX-02-005-EN-10660 | 100% |
|  | 12 | **LIGHT FIXTURES** |  | 2026-03-11 | 2026-06-07 |  |  |
| MLTX-02-005-EN-10680 |  | Pre-Qualification Submittal for Light Fixtures | 15d | 2026-03-11 A | 2026-05-25 A | MLTX-02-005-EN-10790, MLTX-02-005-EN-10050 | 100% |
| MLTX-02-005-EN-10690 |  | Pre-Qualification Approval for Light Fixtures | 15d | 2026-03-15 A | 2026-06-07 A | MLTX-02-005-EN-10680, MLTX-02-005-EN-10040 | 100% |
|  | 13 | **CCTV MATERIALS** |  | 2026-03-11 | 2026-06-07 |  |  |
| MLTX-02-005-EN-10700 |  | Pre-Qualification Submittal for CCTV | 15d | 2026-03-11 A | 2026-05-25 A | MLTX-02-005-EN-10800, MLTX-02-005-EN-10050 | 100% |
| MLTX-02-005-EN-10710 |  | Pre-Qualification Approval for CCTV | 15d | 2026-03-15 A | 2026-06-07 A | MLTX-02-005-EN-10700, MLTX-02-005-EN-10040 | 100% |
|  | 14 | **POWER OUTLETS/SWITCHES** |  | 2026-03-11 | 2026-06-07 |  |  |
| MLTX-02-005-EN-10720 |  | Pre-Qualification Submittal for Power Outlets/Switches | 15d | 2026-03-11 A | 2026-05-25 A | MLTX-02-005-EN-10030, MLTX-02-005-EN-10040 | 100% |
| MLTX-02-005-EN-10730 |  | Pre-Qualification Approval for Power Outlets/Switches | 15d | 2026-03-15 A | 2026-06-07 A | MLTX-02-005-EN-10720, MLTX-02-005-EN-10960 | 100% |
|  | LSC | **LANDSCAPE WORKS** |  | 2026-03-11 | 2026-05-18 |  |  |
|  | 7 | **INTERLOCKING PAVING** |  | 2026-03-12 | 2026-03-24 |  |  |
| MLTX-02-005-EN-10760 |  | Pre-Qualification Submittal for Interlocking Block Pavers | 15d | 2026-03-12 A | 2026-03-15 A | MLTX-02-005-EN-10030 | 100% |
| MLTX-02-005-EN-10770 |  | Pre-Qualification Approval for Interlocking Block Pavers | 15d | 2026-03-16 A | 2026-03-24 A | MLTX-02-005-EN-10760 | 100% |
|  | 9 | **CURBSTONE** |  | 2026-03-12 | 2026-03-24 |  |  |
| MLTX-02-005-EN-10860 |  | Pre-Qualification Submittal for Curbstone | 15d | 2026-03-12 A | 2026-03-15 A | MLTX-02-005-EN-10030, MLTX-02-005-EN-10080 | 100% |
| MLTX-02-005-EN-10870 |  | Pre-Qualification Approval for Curbstone | 15d | 2026-03-16 A | 2026-03-24 A | MLTX-02-005-EN-10860, MLTX-02-005-EN-10840 | 100% |
|  | 1 | **PAVEMENT MARKING** |  | 2026-03-11 | 2026-05-09 |  |  |
| MLTX-02-005-EN-10080 |  | Pre-Qualification Submittal for Pavement Markings | 15d | 2026-03-11 A | 2026-05-05 A | MLTX-02-005-EN-10030, MLTX-02-005-EN-10690 | 100% |
| MLTX-02-005-EN-10140 |  | Pre-Qualification Approval for Pavement Markings | 15d | 2026-03-15 A | 2026-05-09 A | MLTX-02-005-EN-10080, MLTX-02-005-EN-10880 | 100% |
|  | 2 | **TRAFFIC SIGNS** |  | 2026-03-11 | 2026-05-09 |  |  |
| MLTX-02-005-EN-10090 |  | Pre-Qualification Submittal for Traffic Signs | 15d | 2026-03-11 A | 2026-05-05 A | MLTX-02-005-EN-10030, MLTX-02-005-EN-10880 | 100% |
| MLTX-02-005-EN-10100 |  | Pre-Qualification Approval for Traffic Signs | 15d | 2026-03-15 A | 2026-05-09 A | MLTX-02-005-EN-10090, MLTX-02-005-EN-10840 | 100% |
|  | 3 | **IRRIGATION PIPES/SPRINKLERS** |  | 2026-03-11 | 2026-05-10 |  |  |
| MLTX-02-005-EN-10150 |  | Pre-Qualification Submittal for Irrigation Pipes/Sprinkles | 15d | 2026-03-11 A | 2026-05-06 A | MLTX-02-005-EN-10030, MLTX-02-005-EN-10820 | 100% |
| MLTX-02-005-EN-10160 |  | Pre-Qualification Approval for Irrigation Pipes/Sprinkles | 15d | 2026-03-15 A | 2026-05-10 A | MLTX-02-005-EN-10150, MLTX-02-005-EN-10830 | 100% |
|  | 5 | **AGRICULTURE SOIL** |  | 2026-03-11 | 2026-05-14 |  |  |
| MLTX-02-005-EN-10820 |  | Pre-Qualification Submittal for Agriculture Soil | 15d | 2026-03-11 A | 2026-05-07 A | MLTX-02-005-EN-10030, MLTX-02-005-EN-10840 | 100% |
| MLTX-02-005-EN-10830 |  | Pre-Qualification Approval for Agriculture Soil | 15d | 2026-03-15 A | 2026-05-14 A | MLTX-02-005-EN-10820, MLTX-02-005-EN-10850 | 100% |
|  | 8 | **TRACK SURFACE** |  | 2026-03-11 | 2026-05-13 |  |  |
| MLTX-02-005-EN-10840 |  | Pre-Qualification Submittal for Track Surface | 15d | 2026-03-11 A | 2026-05-10 A | MLTX-02-005-EN-10030, MLTX-02-005-EN-10630 | 100% |
| MLTX-02-005-EN-10850 |  | Pre-Qualification Approval for Track Surface | 15d | 2026-03-15 A | 2026-05-13 A | MLTX-02-005-EN-10840, MLTX-02-005-EN-10620 | 100% |
|  | 10 | **GRASS/TREES** |  | 2026-03-11 | 2026-05-18 |  |  |
| MLTX-02-005-EN-10880 |  | Pre-Qualification Submittal for Grass/Trees | 15d | 2026-03-11 A | 2026-05-13 A | MLTX-02-005-EN-10030, MLTX-02-005-EN-10730 | 100% |
| MLTX-02-005-EN-10890 |  | Pre-Qualification Approval for Grass/Trees | 15d | 2026-03-15 A | 2026-05-18 A | MLTX-02-005-EN-10880, MLTX-02-005-EN-10840 | 100% |
|  | 6 | **CABLES** |  | 2026-03-11 | 2026-05-11 |  |  |
| MLTX-02-005-EN-10740 |  | Pre-Qualification Submittal for Cables | 15d | 2026-03-11 A | 2026-05-09 A | MLTX-02-005-EN-10030 | 100% |
| MLTX-02-005-EN-10750 |  | Pre-Qualification Approval for Cables | 15d | 2026-03-15 A | 2026-05-11 A | MLTX-02-005-EN-10740 | 100% |
|  | 4 | **LIGHT POLES** |  | 2026-03-11 | 2026-05-04 |  |  |
| MLTX-02-005-EN-9970 |  | Pre-Qualification Submittal for Lighting poles | 15d | 2026-03-11 A | 2026-04-30 A | MLTX-02-005-EN-10030 | 100% |
| MLTX-02-005-EN-9980 |  | Pre-Qualification Approval for Lighting poles | 15d | 2026-03-15 A | 2026-05-04 A | MLTX-02-005-EN-9970 | 100% |
|  | MAT | **MATERIAL SUBMITTAL** |  | 2026-03-19 | 2026-09-12 |  |  |
|  | TOI | **TOILET/SERVICE WORKS** |  | 2026-03-19 | 2026-07-30 |  |  |
|  | 1 | **STEEL REINFORCEMENT** |  | 2026-03-24 | 2026-04-04 |  |  |
| MLTX-02-005-EN-8990 |  | Material Submittal for Steel Reinforcement | 15d | 2026-03-24 A | 2026-03-26 A | MLTX-02-005-EN-10110 | 100% |
| MLTX-02-005-EN-9100 |  | Material Approval for Steel Reinforcement | 15d | 2026-03-28 A | 2026-04-04 A | MLTX-02-005-EN-8990 | 100% |
|  | 2 | **READY MIX CONCRETE** |  | 2026-03-24 | 2026-04-04 |  |  |
| MLTX-02-005-EN-9000 |  | Material Submittal for Ready Mixed Concrete | 15d | 2026-03-24 A | 2026-03-26 A | MLTX-02-005-EN-10010 | 100% |
| MLTX-02-005-EN-9010 |  | Material Approval of Ready Mixed Concrete | 15d | 2026-03-28 A | 2026-04-04 A | MLTX-02-005-EN-9000 | 100% |
|  | 3 | **CONCRETE BLOCKS** |  | 2026-03-24 | 2026-04-04 |  |  |
| MLTX-02-005-EN-9190 |  | Material Submittal for Concrete Blocks | 15d | 2026-03-24 A | 2026-03-26 A | MLTX-02-005-EN-10220 | 100% |

| ID | WBS | Task | Duration | Start | Finish | Predecessors | Complete |
| --- | --- | --- | --- | --- | --- | --- | --- |
| MLTX-02-005-EN-9200 |  | Material Approval for Concrete Blocks | 15d | 2026-03-28 A | 2026-04-04 A | MLTX-02-005-EN-9190 | 100% |
|  | 6 | **FLOOR/WALL TILES** |  | 2026-03-19 | 2026-05-17 |  |  |
| MLTX-02-005-EN-9210 |  | Material Submittal for Tilling Materials | 15d | 2026-03-19 A | 2026-05-12 A | MLTX-02-005-EN-10240, MLTX-02-005-EN-9710 | 100% |
| MLTX-02-005-EN-9220 |  | Material Approval for Tilling Material | 15d | 2026-03-26 A | 2026-05-17 A | MLTX-02-005-EN-9210, MLTX-02-005-EN-9440 | 100% |
|  | 7 | **SUSPENDED CEILING** |  | 2026-03-24 | 2026-04-04 |  |  |
| MLTX-02-005-EN-9230 |  | Material Submittal for Suspend Ceiling | 15d | 2026-03-24 A | 2026-03-26 A | MLTX-02-005-EN-10260, MLTX-02-005-EN-9160 | 100% |
| MLTX-02-005-EN-9240 |  | Material Approval for Suspend Ceiling | 15d | 2026-03-28 A | 2026-04-04 A | MLTX-02-005-EN-9230, MLTX-02-005-EN-9170 | 100% |
|  | 8 | **DOORS/WINDOWS** |  | 2026-03-24 | 2026-04-04 |  |  |
| MLTX-02-005-EN-9250 |  | Material Submittal for Doors/Windows | 15d | 2026-03-24 A | 2026-03-26 A | MLTX-02-005-EN-10280, MLTX-02-005-EN-9160 | 100% |
| MLTX-02-005-EN-9260 |  | Material Approval for Doors/Windows | 15d | 2026-03-28 A | 2026-04-04 A | MLTX-02-005-EN-9250, MLTX-02-005-EN-9170 | 100% |
|  | 9 | **FURNITURES** |  | 2026-03-19 | 2026-05-17 |  |  |
| MLTX-02-005-EN-9370 |  | Material Submittal for Furnitures | 15d | 2026-03-19 A | 2026-05-13 A | MLTX-02-005-EN-10400, MLTX-02-005-EN-8990 | 100% |
| MLTX-02-005-EN-9380 |  | Material Approval for Furnitures | 15d | 2026-03-26 A | 2026-05-17 A | MLTX-02-005-EN-9370, MLTX-02-005-EN-9010 | 100% |
|  | 10 | **SANITARY FIXTURES** |  | 2026-03-19 | 2026-05-17 |  |  |
| MLTX-02-005-EN-9270 |  | Material Submittal for Sanitary Fixtures | 15d | 2026-03-19 A | 2026-05-13 A | MLTX-02-005-EN-10300 | 100% |
| MLTX-02-005-EN-9280 |  | Material Approval for Sanitary Fixtures | 15d | 2026-03-26 A | 2026-05-17 A | MLTX-02-005-EN-9270 | 100% |
|  | 11 | **WATER SUPPLY PIPES** |  | 2026-03-24 | 2026-04-04 |  |  |
| MLTX-02-005-EN-9290 |  | Material Submittal for Water Supply Pipes | 15d | 2026-03-24 A | 2026-03-26 A | MLTX-02-005-EN-10320, MLTX-02-005-EN-9710 | 100% |
| MLTX-02-005-EN-9300 |  | Material Approval for Water Supply Pipes | 15d | 2026-03-28 A | 2026-04-04 A | MLTX-02-005-EN-9290, MLTX-02-005-EN-9150 | 100% |
|  | 12 | **SEWAGE/DRAINAGE PIPES** |  | 2026-06-08 | 2026-06-15 |  |  |
| MLTX-02-005-EN-9310 |  | Material Submittal for Sewage/Drainage Pipes | 15d | 2026-06-08 A | 2026-06-08 A | MLTX-02-005-EN-10340 | 100% |
| MLTX-02-005-EN-9320 |  | Material Approval for Sewage/Drainage Pipes | 15d | 2026-06-15 A | 2026-06-15 A | MLTX-02-005-EN-9310 | 100% |
|  | 16 | **PACKAGE AC UNITS** |  | 2026-07-07 | 2026-07-07 |  |  |
| MLTX-02-005-EN-9400 |  | Material Submittal for Package AC Units | 15d | 2026-07-07 A | 2026-07-07 A | MLTX-02-005-EN-10430 | 100% |
| MLTX-02-005-EN-9410 |  | Material Approval for Package AC Units | 15d | 2026-07-07 A | 2026-07-07 A | MLTX-02-005-EN-9400 | 100% |
|  | 17 | **AIR DIFUSSERS/GRILLS** |  | 2026-07-27 | 2026-07-30 |  |  |
| MLTX-02-005-EN-9420 |  | Material Submittal for Air Diffusers/Grills | 15d | 2026-07-27 A | 2026-07-27 A | MLTX-02-005-EN-10450, MLTX-02-005-EN-9160 | 100% |
| MLTX-02-005-EN-9430 |  | Material Approval for Air Diffusers/Grills | 15d | 2026-07-30 A | 2026-07-30 A | MLTX-02-005-EN-9420, MLTX-02-005-EN-9170 | 100% |
|  | 18 | **GALVANIZED DUCTS** |  | 2026-03-24 | 2026-04-30 |  |  |
| MLTX-02-005-EN-9440 |  | Material Submittal for Galvanized Ducts | 15d | 2026-03-24 A | 2026-04-25 A | MLTX-02-005-EN-10470, MLTX-02-005-EN-9710 | 100% |
| MLTX-02-005-EN-9450 |  | Material Approval for Galvanized Ducts | 15d | 2026-03-28 A | 2026-04-30 A | MLTX-02-005-EN-9440, MLTX-02-005-EN-9860 | 100% |
|  | 19 | **EXHAUST FANS** |  | 2026-07-27 | 2026-07-30 |  |  |
| MLTX-02-005-EN-9460 |  | Material Submittal for Exhaust Fans | 15d | 2026-07-27 A | 2026-07-27 A | MLTX-02-005-EN-10490 | 100% |
| MLTX-02-005-EN-9470 |  | Material Approval for Exhaust Fans | 15d | 2026-07-30 A | 2026-07-30 A | MLTX-02-005-EN-9460 | 100% |
|  | 13 | **LIGHTING FIXTURES** |  | 2026-07-07 | 2026-07-07 |  |  |
| MLTX-02-005-EN-9330 |  | Material Submittal for Lighting Fixtures | 15d | 2026-07-07 A | 2026-07-07 A | MLTX-02-005-EN-10360 | 100% |
| MLTX-02-005-EN-9340 |  | Material Approval for Lighting Fixtures | 15d | 2026-07-07 A | 2026-07-07 A | MLTX-02-005-EN-9330 | 100% |
|  | 14 | **SWITCHES/SOCKETS** |  | 2026-07-27 | 2026-07-30 |  |  |
| MLTX-02-005-EN-9350 |  | Material Submittal for Switches/Sockets | 15d | 2026-07-27 A | 2026-07-27 A | MLTX-02-005-EN-10380 | 100% |
| MLTX-02-005-EN-9360 |  | Material Approval for Switches/Sockets | 15d | 2026-07-30 A | 2026-07-30 A | MLTX-02-005-EN-9350 | 100% |
|  | 15 | **EARTHING SYSTEM** |  | 2026-03-24 | 2026-05-18 |  |  |
| MLTX-02-005-EN-9150 |  | Material Submittal for Earthing System | 15d | 2026-03-24 A | 2026-05-14 A | MLTX-02-005-EN-10180, MLTX-02-005-EN-9710 | 100% |
| MLTX-02-005-EN-9160 |  | Material Approval for Earthing System | 15d | 2026-03-28 A | 2026-05-18 A | MLTX-02-005-EN-9150, MLTX-02-005-EN-9210 | 100% |
|  | 5 | **DISTRIBUTION PANNELS** |  | 2026-07-27 | 2026-07-30 |  |  |
| MLTX-02-005-EN-9170 |  | Material Submittal for Distribution Panels | 15d | 2026-07-27 A | 2026-07-27 A | MLTX-02-005-EN-10200, MLTX-02-005-EN-9160 | 100% |
| MLTX-02-005-EN-9180 |  | Material Approval for Distribution Panels | 15d | 2026-07-30 A | 2026-07-30 A | MLTX-02-005-EN-9170, MLTX-02-005-EN-9500 | 100% |
|  | PLG | **PLAYGROUND WORKS** |  | 2026-03-19 | 2026-09-12 |  |  |
|  | 5 | **PVC MEMBRANE** |  | 2026-03-24 | 2026-04-04 |  |  |
| MLTX-02-005-EN-9560 |  | Material Submittal for PVC Membrane | 15d | 2026-03-24 A | 2026-03-26 A | MLTX-02-005-EN-10590, MLTX-02-005-EN-9020 | 100% |
| MLTX-02-005-EN-9570 |  | Material Approval for PVC Membrane | 15d | 2026-03-28 A | 2026-04-04 A | MLTX-02-005-EN-9560, MLTX-02-005-EN-9780 | 100% |
|  | 6 | **STEEL TENSION CABLES** |  | 2026-08-26 | 2026-08-26 |  |  |
| MLTX-02-005-EN-9580 |  | Material Submittal for Steel Tension Cables | 15d | 2026-08-26 A | 2026-08-26 A | MLTX-02-005-EN-10900, MLTX-02-005-EN-9710 | 100% |
| MLTX-02-005-EN-9880 |  | Material Approval for Steel Tension Cables | 15d | 2026-08-26 A | 2026-08-26 A | MLTX-02-005-EN-9580, MLTX-02-005-EN-9110 | 100% |
|  | 7 | **EMERGENCY DOORS** |  | 2026-08-26 | 2026-09-12 |  |  |
| MLTX-02-005-EN-9590 |  | Material Submittal for Emergency Doors | 15d | 2026-08-26 A | 2026-08-26 A | MLTX-02-005-EN-10910, MLTX-02-005-EN-9760 | 100% |
| MLTX-02-005-EN-9890 |  | Material Approval for Emergency Doors | 15d | 2026-09-12 A | 2026-09-12 A | MLTX-02-005-EN-9590, MLTX-02-005-EN-9020 | 100% |
|  | 8 | **PRESSURE UNITS** |  | 2026-09-12 | 2026-09-12 |  |  |
| MLTX-02-005-EN-9600 |  | Material Submittal for Pressure Units | 15d | 2026-09-12 A | 2026-09-12 A | MLTX-02-005-EN-10920, MLTX-02-005-EN-9610 | 100% |
| MLTX-02-005-EN-9900 |  | Material Approval for Pressure Units | 15d | 2026-09-12 A | 2026-09-12 A | MLTX-02-005-EN-9600, MLTX-02-005-EN-9790 | 100% |
|  | 9 | **AIR LOCK DOORS** |  | 2026-08-26 | 2026-09-12 |  |  |
| MLTX-02-005-EN-9610 |  | Material Submittal for Lock Doors | 15d | 2026-08-26 A | 2026-08-26 A | MLTX-02-005-EN-10930, MLTX-02-005-EN-7980 | 100% |
| MLTX-02-005-EN-9910 |  | Material Approval for Lock Doors | 15d | 2026-09-12 A | 2026-09-12 A | MLTX-02-005-EN-9610, MLTX-02-005-EN-12080 | 100% |
|  | 15 | **ARTIFICIAL TURF** |  | 2026-03-19 | 2026-05-19 |  |  |
| MLTX-02-005-EN-9760 |  | Material Submittal for Artificial TURF | 15d | 2026-03-19 A | 2026-05-14 A | MLTX-02-005-EN-10940 | 100% |
| MLTX-02-005-EN-9920 |  | Material Approval for Artificial TURF | 15d | 2026-03-26 A | 2026-05-19 A | MLTX-02-005-EN-9760, MLTX-02-005-EN-9500 | 100% |
|  | 20 | **RUBBER GRANULES** |  | 2026-03-19 | 2026-05-19 |  |  |
| MLTX-02-005-EN-9770 |  | Material Submittal for Rubber Granules | 21d | 2026-03-19 A | 2026-05-14 A | MLTX-02-005-EN-10950 | 100% |
| MLTX-02-005-EN-9930 |  | Material Approval for Rubber Granules | 21d | 2026-03-26 A | 2026-05-19 A | MLTX-02-005-EN-9770 | 100% |
|  | 21 | **PADEL GLASS** |  | 2026-03-19 | 2026-05-19 |  |  |
| MLTX-02-005-EN-9780 |  | Material Submittal for Padel Glass | 15d | 2026-03-19 A | 2026-05-14 A | MLTX-02-005-EN-10960, MLTX-02-005-EN-9020 | 100% |

| ID | WBS | Task | Duration | Start | Finish | Predecessors | Complete |
| --- | --- | --- | --- | --- | --- | --- | --- |
| MLTX-02-005-EN-9940 |  | Material Approval for Padel Glass | 15d | 2026-03-26 A | 2026-05-19 A | MLTX-02-005-EN-9780, MLTX-02-005-EN-9050 | 100% |
|  | 22 | **PADEL WIRE MESH/STEEL SETS** |  | 2026-03-19 | 2026-05-19 |  |  |
| MLTX-02-005-EN-9790 |  | Material Submittal for Wire Mesh/Steel Sets | 15d | 2026-03-19 A | 2026-05-14 A | MLTX-02-005-EN-10970, MLTX-02-005-EN-9610 | 100% |
| MLTX-02-005-EN-9950 |  | Material Approval for Wire Mesh/Steel Sets | 15d | 2026-03-26 A | 2026-05-19 A | MLTX-02-005-EN-9790, MLTX-02-005-EN-9910 | 100% |
|  | 1 | **AGGREGATE BASE COURSE** |  | 2026-03-19 | 2026-05-07 |  |  |
| MLTX-02-005-EN-9020 |  | Material Submittal for Aggregate Base Course | 21d | 2026-03-19 A | 2026-05-04 A | MLTX-02-005-EN-10040 | 100% |
| MLTX-02-005-EN-9030 |  | Material Approval for Aggregate Base Course | 21d | 2026-03-26 A | 2026-05-07 A | MLTX-02-005-EN-9020 | 100% |
|  | 16 | **PACKAGE AC UNITS** |  | 2026-07-07 | 2026-07-07 |  |  |
| MLTX-02-005-EN-9480 |  | Material Submittal for Package AC Units | 15d | 2026-07-07 A | 2026-07-07 A | MLTX-02-005-EN-10510, MLTX-02-005-EN-9600 | 100% |
| MLTX-02-005-EN-9490 |  | Material Approval for Package AC Units | 15d | 2026-07-07 A | 2026-07-07 A | MLTX-02-005-EN-9480, MLTX-02-005-EN-9500 | 100% |
|  | 17 | **AIR DIFUSSERS/GRILLS** |  | 2026-09-12 | 2026-09-12 |  |  |
| MLTX-02-005-EN-9500 |  | Material Submittal for Air Difussers/Grills | 15d | 2026-09-12 A | 2026-09-12 A | MLTX-02-005-EN-10530, MLTX-02-005-EN-9610 | 100% |
| MLTX-02-005-EN-9510 |  | Material Approval for Air Difussers/Grills | 15d | 2026-09-12 A | 2026-09-12 A | MLTX-02-005-EN-9500, MLTX-02-005-EN-9910 | 100% |
|  | 2 | **BITUMINOUS BASE & WEARING COURSE** |  | 2026-03-24 | 2026-05-07 |  |  |
| MLTX-02-005-EN-9040 |  | Material Submittal for Bituminous Base & Wearing Cource | 15d | 2026-03-24 A | 2026-05-04 A | MLTX-02-005-EN-10060 | 100% |
| MLTX-02-005-EN-9050 |  | Material Approval for the Site | 15d | 2026-03-28 A | 2026-05-07 A | MLTX-02-005-EN-9040 | 100% |
|  | 3 | **INTERLOCKING PAVING** |  | 2026-03-24 | 2026-05-07 |  |  |
| MLTX-02-005-EN-9060 |  | Material Submittal for Interlocking Block Pavers | 15d | 2026-03-24 A | 2026-05-04 A | MLTX-02-005-EN-10130, MLTX-02-005-EN-9570 | 100% |
| MLTX-02-005-EN-9110 |  | Material Approval for Interlocking Block Pavers | 15d | 2026-03-28 A | 2026-05-07 A | MLTX-02-005-EN-9060, MLTX-02-005-EN-9710 | 100% |
|  | 4 | **MARKING PAINT** |  | 2026-03-24 | 2026-05-18 |  |  |
| MLTX-02-005-EN-9390 |  | Material Submittal for Marking Paint | 15d | 2026-03-24 A | 2026-05-12 A | MLTX-02-005-EN-10980, MLTX-02-005-EN-9020 | 100% |
| MLTX-02-005-EN-9960 |  | Material Approval for Marking Paint | 15d | 2026-03-28 A | 2026-05-18 A | MLTX-02-005-EN-9390, MLTX-02-005-EN-9560, MLTX-02-005-EN-9380 | 100% |
|  | 18 | **GALVANIZED DUCTS** |  | 2026-03-24 | 2026-05-10 |  |  |
| MLTX-02-005-EN-9520 |  | Material Submittal for Galvanized Duct | 15d | 2026-03-24 A | 2026-05-05 A | MLTX-02-005-EN-10550, MLTX-02-005-EN-9610 | 100% |
| MLTX-02-005-EN-9530 |  | Material Approval for Galvanized Duct | 15d | 2026-03-28 A | 2026-05-10 A | MLTX-02-005-EN-9520, MLTX-02-005-EN-9500 | 100% |
|  | 19 | **EXHAUST FANS** |  | 2026-09-12 | 2026-09-12 |  |  |
| MLTX-02-005-EN-9540 |  | Material Submittal for Exhaust Fans | 15d | 2026-09-12 A | 2026-09-12 A | MLTX-02-005-EN-10570, MLTX-02-005-EN-9110 | 100% |
| MLTX-02-005-EN-9550 |  | Material Approval for Exhaust Fans | 15d | 2026-09-12 A | 2026-09-12 A | MLTX-02-005-EN-9540, MLTX-02-005-EN-9600, MLTX-02-005-EN-9880 | 100% |
|  | 10 | **DISTRIBUTION BOARDS** |  | 2026-08-26 | 2026-08-26 |  |  |
| MLTX-02-005-EN-9620 |  | Material Submittal for Distribution Boards | 15d | 2026-08-26 A | 2026-08-26 A | MLTX-02-005-EN-10650, MLTX-02-005-EN-9910 | 100% |
| MLTX-02-005-EN-9630 |  | Material Approval for Distribution Boards | 15d | 2026-08-26 A | 2026-08-26 A | MLTX-02-005-EN-9620, MLTX-02-005-EN-11590 | 100% |
|  | 11 | **POWER CABLES** |  | 2026-03-24 | 2026-05-19 |  |  |
| MLTX-02-005-EN-9640 |  | Material Submittal for Power Cables | 15d | 2026-03-24 A | 2026-05-14 A | MLTX-02-005-EN-10670 | 100% |
| MLTX-02-005-EN-9650 |  | Material Approval for Power Cables | 15d | 2026-03-28 A | 2026-05-19 A | MLTX-02-005-EN-9640 | 100% |
|  | 12 | **LIGHT FIXTURES** |  | 2026-07-07 | 2026-07-07 |  |  |
| MLTX-02-005-EN-9660 |  | Material Submittal for Light Fixtures | 15d | 2026-07-07 A | 2026-07-07 A | MLTX-02-005-EN-10690, MLTX-02-005-EN-9020 | 100% |
| MLTX-02-005-EN-9670 |  | Material Approval for Light Fixtures | 15d | 2026-07-07 A | 2026-07-07 A | MLTX-02-005-EN-9660, MLTX-02-005-EN-9050 | 100% |
|  | 13 | **CCTV MATERIALS** |  | 2026-08-26 | 2026-09-12 |  |  |
| MLTX-02-005-EN-9680 |  | Material Submittal for CCTV | 15d | 2026-08-26 A | 2026-08-26 A | MLTX-02-005-EN-10710, MLTX-02-005-EN-9020 | 100% |
| MLTX-02-005-EN-9690 |  | Material Approval for CCTV | 15d | 2026-09-12 A | 2026-09-12 A | MLTX-02-005-EN-9680, MLTX-02-005-EN-9780 | 100% |
|  | 14 | **POWER OUTLETS/SWITCHES** |  | 2026-08-26 | 2026-08-26 |  |  |
| MLTX-02-005-EN-9700 |  | Material Submittal for Power Outlets/Switches | 15d | 2026-08-26 A | 2026-08-26 A | MLTX-02-005-EN-10730, MLTX-02-005-EN-9780 | 100% |
| MLTX-02-005-EN-9710 |  | Material Approval for Power Outlets/Switches | 15d | 2026-08-26 A | 2026-08-26 A | MLTX-02-005-EN-9700, MLTX-02-005-EN-9670 | 100% |
|  | LSC | **LANDSCAPE WORKS** |  | 2026-03-24 | 2026-09-12 |  |  |
|  | 7 | **INTERLOCKING PAVING** |  | 2026-03-25 | 2026-04-04 |  |  |
| MLTX-02-005-EN-9740 |  | Material Submittal for Interlocking Block Pavers | 15d | 2026-03-25 A | 2026-03-28 A | MLTX-02-005-EN-10770 | 100% |
| MLTX-02-005-EN-9750 |  | Material Approval for Interlocking Block Pavers | 15d | 2026-03-29 A | 2026-04-04 A | MLTX-02-005-EN-9740 | 100% |
|  | 9 | **CURBSTONE** |  | 2026-03-25 | 2026-04-04 |  |  |
| MLTX-02-005-EN-9840 |  | Material Submittal for Curbstone | 15d | 2026-03-25 A | 2026-03-28 A | MLTX-02-005-EN-10870, MLTX-02-005-EN-9070 | 100% |
| MLTX-02-005-EN-9850 |  | Material Approval for Curbstone | 15d | 2026-03-29 A | 2026-04-04 A | MLTX-02-005-EN-9840, MLTX-02-005-EN-9860 | 100% |
|  | 1 | **PAVEMENT MARKING** |  | 2026-03-24 | 2026-05-18 |  |  |
| MLTX-02-005-EN-9070 |  | Material Submittal for Pavement Markings | 15d | 2026-03-24 A | 2026-05-12 A | MLTX-02-005-EN-10140, MLTX-02-005-EN-9700 | 100% |
| MLTX-02-005-EN-9120 |  | Material Approval for Pavement Markings | 15d | 2026-03-28 A | 2026-05-18 A | MLTX-02-005-EN-9070, MLTX-02-005-EN-9710 | 100% |
|  | 2 | **TRAFFIC SIGNS** |  | 2026-03-24 | 2026-05-18 |  |  |
| MLTX-02-005-EN-9080 |  | Material Submittal for Traffic Signs | 15d | 2026-03-24 A | 2026-05-12 A | MLTX-02-005-EN-10100, MLTX-02-005-EN-9710 | 100% |
| MLTX-02-005-EN-9090 |  | Material Approval for Traffic Signs | 15d | 2026-03-28 A | 2026-05-18 A | MLTX-02-005-EN-9080, MLTX-02-005-EN-9860 | 100% |
|  | 3 | **IRRIGATION PIPES/SPRINKLERS** |  | 2026-09-12 | 2026-09-12 |  |  |
| MLTX-02-005-EN-9130 |  | Material Submittal for Irrigation Pipes/Sprinkles | 15d | 2026-09-12 A | 2026-09-12 A | MLTX-02-005-EN-10160, MLTX-02-005-EN-9800 | 100% |
| MLTX-02-005-EN-9140 |  | Material Approval for Irrigation Pipes/Sprinkles | 15d | 2026-09-12 A | 2026-09-12 A | MLTX-02-005-EN-9130, MLTX-02-005-EN-9810 | 100% |
|  | 5 | **AGRICULTURE SOIL** |  | 2026-03-24 | 2026-05-21 |  |  |
| MLTX-02-005-EN-9800 |  | Material Submittal for Agriculture Soil | 15d | 2026-03-24 A | 2026-05-16 A | MLTX-02-005-EN-10830, MLTX-02-005-EN-9820 | 100% |
| MLTX-02-005-EN-9810 |  | Material Approval for Agriculture Soil | 15d | 2026-03-28 A | 2026-05-21 A | MLTX-02-005-EN-9800, MLTX-02-005-EN-9820 | 100% |
|  | 8 | **TRACK SURFACE** |  | 2026-09-12 | 2026-09-12 |  |  |
| MLTX-02-005-EN-9820 |  | Material Submittal for Track Surface | 15d | 2026-09-12 A | 2026-09-12 A | MLTX-02-005-EN-10850, MLTX-02-005-EN-10930 | 100% |
| MLTX-02-005-EN-9830 |  | Material Approval for Track Surface | 15d | 2026-09-12 A | 2026-09-12 A | MLTX-02-005-EN-9820, MLTX-02-005-EN-9610 | 100% |
|  | 10 | **GRASS/TREES** |  | 2026-03-24 | 2026-05-21 |  |  |
| MLTX-02-005-EN-9860 |  | Material Submittal for Grass/Trees | 15d | 2026-03-24 A | 2026-05-16 A | MLTX-02-005-EN-10890, MLTX-02-005-EN-9710 | 100% |
| MLTX-02-005-EN-9870 |  | Material Approval for Grass/Trees | 15d | 2026-03-28 A | 2026-05-21 A | MLTX-02-005-EN-9860, MLTX-02-005-EN-9820 | 100% |
|  | 6 | **CABLES** |  | 2026-03-24 | 2026-05-19 |  |  |
| MLTX-02-005-EN-9720 |  | Material Submittal for Cables | 15d | 2026-03-24 A | 2026-05-14 A | MLTX-02-005-EN-10750 | 100% |

| ID | WBS | Task | Duration | Start | Finish | Predecessors | Complete | Total float |
| --- | --- | --- | --- | --- | --- | --- | --- | --- |
| MLTX-02-005-EN-9730 |  | Material Approval for Cables | 15d | 2026-03-28 A | 2026-05-19 A | MLTX-02-005-EN-9720 | 100% |  |
|  | 4 | **LIGHT POLES** |  | 2026-07-11 | 2026-07-11 |  |  |  |
| MLTX-02-005-EN-8970 |  | Material Submittal for Lighting poles | 15d | 2026-07-11 A | 2026-07-11 A | MLTX-02-005-EN-9980 | 100% |  |
| MLTX-02-005-EN-8980 |  | Material Approval for Lighting poles | 15d | 2026-07-11 A | 2026-07-11 A | MLTX-02-005-EN-8970 | 100% |  |
|  | CONST | **CONSTRUCTION PHASE** |  | 2026-04-04 | 2027-03-09 |  |  |  |
|  | SW | **SITE WORKS** |  | 2026-04-04 | 2027-03-09 |  |  |  |
|  | 1 | **EARTH WORKS** |  | 2026-04-04 | 2026-08-08 |  |  |  |
| MLTX-02-005-CN-11890 |  | Excavation (in all types of soil) including Compaction (Service/Toilet Building) | 20d | 2026-04-04 A | 2026-08-02 A | MLTX-02-005-EN-10990 | 100% |  |
| MLTX-02-005-CN-11880 |  | Excavation (in all types of soil) including Compaction (Playground Area) | 21d | 2026-04-06 A | 2026-04-12 A | MLTX-02-005-EN-1840 | 100% |  |
| MLTX-02-005-CN-11900 |  | Excavation (in all types of soil) including Compaction (Landscape Area) | 12d | 2026-04-06 A | 2026-08-05 A | MLTX-02-005-CN-11880, MLTX-02-005-EN-11740, MLTX-02-005-EN-11760, MLTX-02-005-EN-11750, MLTX-02-005-EN-11770 | 100% |  |
| MLTX-02-005-CN-11920 |  | Backfilling on Layers (Selected Soil) including Compaction (Service/Toilet Building) | 19d | 2026-04-06 A | 2026-04-08 A | MLTX-02-005-CN-11890 SS, MLTX-02-005-CN-11890 FF | 100% |  |
| MLTX-02-005-CN-11910 |  | Backfilling on Layers (Selected Soil) including Compaction (Playground Area) | 20d | 2026-04-13 A | 2026-05-03 A | MLTX-02-005-MS-1060, MLTX-02-005-CN-11880, MLTX-02-005-MS-1050 | 100% |  |
| MLTX-02-005-CN-11930 |  | Backfilling on Layers (Selected Soil) including Compaction (Landscape Area) | 8d | 2026-04-21 A | 2026-08-08 A | MLTX-02-005-CN-11900 SS, MLTX-02-005-CN-11900 FF | 100% |  |
|  | 4 | **LANDSCAPE WORKS** |  | 2026-05-16 | 2027-03-09 |  |  |  |
|  | 4 | **PLAYGROUND AREA** |  | 2026-05-18 | 2027-03-09 |  |  |  |
|  | 6 | **FOOTBALL PLAYGROUND** |  | 2026-05-18 | 2027-01-23 |  |  |  |
| MLTX-02-005-CN-12080 |  | Preparation and Proofing for Subgrade (Football Playground) | 20d | 2026-05-18 A | 2026-05-31 A | MLTX-02-005-CN-11910 | 100% |  |
| MLTX-02-005-CN-12090 |  | Backfilling and Compaction of Base Layers (Football Playground) | 21d | 2026-06-01 A | 2026-06-23 A | MLTX-02-005-CN-12080 | 100% |  |
| MLTX-02-005-CN-14740 |  | Aggregate basecourse layer (Football Playground) | 21d | 2026-06-24 A | 2026-06-27 A | MLTX-02-005-CN-12090, MLTX-02-005-CN-12030, MLTX-02-005-PR-9930 | 100% |  |
| MLTX-02-005-CN-12100 |  | Finishing Asphalt & Concrete Surface (Football Playground) | 21d | 2026-09-14 A | 2026-09-21 A | MLTX-02-005-CN-12090 | 100% |  |
| MLTX-02-005-CN-12110 |  | Install Sport Equipments - Goal / Nets - (Football Playground) | 20d | 2026-12-26 | 2027-01-18 | MLTX-02-005-EN-12070, MLTX-02-005-CN-14750, MLTX-02-005-CN-12440, MLTX-02-005-CN-14740, MLTX-02-005-CN-12190 |  | -32.1d |
| MLTX-02-005-CN-12120 |  | Surface Marking and Painting (Football Playground) | 3d | 2027-01-19 | 2027-01-23 | MLTX-02-005-CN-12210 SS, MLTX-02-005-CN-12320 SS |  | -44.1d |
|  | 7 | **PADEL PLAYGROUND** |  | 2026-05-18 | 2027-02-13 |  |  |  |
| MLTX-02-005-CN-12130 |  | Preparation and Proofing for Subgrade (Padel Playground) | 20d | 2026-05-18 A | 2026-05-31 A | MLTX-02-005-CN-12080 | 100% |  |
| MLTX-02-005-CN-12140 |  | Backfilling and Compaction of Base Layers (Padel Playground) | 21d | 2026-06-01 A | 2026-06-23 A | MLTX-02-005-CN-12090, MLTX-02-005-CN-12130, MLTX-02-005-PR-9990, MLTX-02-005-EN-9050 | 100% |  |
| MLTX-02-005-CN-14750 |  | Aggregate basecourse layer (Padel Playground) | 21d | 2026-06-23 A | 2026-06-28 A | MLTX-02-005-CN-12140 | 100% |  |
| MLTX-02-005-CN-12150 |  | Finishing Asphalt & Concrete Surface (Padel Playground) | 21d | 2026-08-30 A | 2026-08-30 A | MLTX-02-005-CN-12140, MLTX-02-005-CN-14750, MLTX-02-005-CN-14740, MLTX-02-005-CN-12190 | 100% |  |
| MLTX-02-005-CN-12160 |  | Install Sport Equipments - Goal / Nets - (Padel Playground) | 15d | 2027-01-23 | 2027-02-09 | MLTX-02-005-EN-12090, MLTX-02-005-CN-12100, MLTX-02-005-CN-12150, MLTX-02-005-CN-12110, MLTX-02-005-CN-12120 |  | -36.1d |
| MLTX-02-005-CN-12170 |  | Surface Marking and Painting (Padel Playground) | 3d | 2027-02-09 | 2027-02-13 | MLTX-02-005-CN-12120 SS, MLTX-02-005-PR-10360, MLTX-02-005-CN-12160, MLTX-02-005-CN-12100, MLTX-02-005-CN-12250 |  | -36.1d |
|  | 8 | **BASKETBALL PLAYGROUND** |  | 2026-05-18 | 2027-02-13 |  |  |  |
| MLTX-02-005-CN-12180 |  | Preparation and Proofing for Subgrade (Basketball Playground) | 20d | 2026-05-18 A | 2026-05-31 A | MLTX-02-005-CN-12130, MLTX-02-005-EN-10200, MLTX-02-005-EN-8910, MLTX-02-005-PR-10530, MLTX-02-005-PR-10790, MLTX-02-005-PR-10810, MLTX-02-005-MS-1120 | 100% |  |
| MLTX-02-005-CN-12190 |  | Backfilling and Compaction of Base Layers (Basketball Playground) | 21d | 2026-06-01 A | 2026-06-23 A | MLTX-02-005-PR-9990, MLTX-02-005-EN-9960, MLTX-02-005-CN-12180, MLTX-02-005-CN-12090, MLTX-02-005-EN-9050, MLTX-02-005-PR-10150, MLTX-02-005-CN-12030 | 100% |  |
| MLTX-02-005-CN-14760 |  | Aggregate basecourse layer (Basketball Playground) | 21d | 2026-06-23 A | 2026-06-28 A | MLTX-02-005-CN-12180, MLTX-02-005-CN-12100 | 100% |  |
| MLTX-02-005-CN-12200 |  | Finishing Asphalt & Concrete Surface (Basketball Playground) | 21d | 2026-08-29 A | 2026-08-30 A | MLTX-02-005-CN-14750 | 100% |  |
| MLTX-02-005-CN-12210 |  | Install Sport Equipments - Goal / Nets - (Basketball Playground) | 10d | 2026-12-26 | 2027-01-06 | MLTX-02-005-EN-12080, MLTX-02-005-CN-14750, MLTX-02-005-CN-12440, MLTX-02-005-CN-14740, MLTX-02-005-CN-12190 |  | -23.1d |
| MLTX-02-005-CN-12220 |  | Surface Marking and Painting (Basketball Playground) | 3d | 2027-02-09 | 2027-02-13 | MLTX-02-005-PR-10360, MLTX-02-005-CN-12210 SS, MLTX-02-005-CN-12170 SS, MLTX-02-005-CN-12120 SS, MLTX-02-005-CN-12200, MLTX-02-005-CN-12120 FF, MLTX-02-005-CN-12250, MLTX-02-005-CN-14760, MLTX-02-005-CN-14740, MLTX-02-005-CN-12190, MLTX-02-005-CN-11970 |  | -36.1d |
|  | 9 | **PADEL FENCE** |  | 2026-08-06 | 2027-03-09 |  |  |  |
| MLTX-02-005-CN-12230 |  | Excavation for Fence | 8d | 2026-08-06 A | 2026-08-06 A | MLTX-02-005-CN-12190, MLTX-02-005-EN-11120 | 100% |  |
| MLTX-02-005-CN-12240 |  | Concrete Foundation for Fence including Posts Fixation | 7d | 2026-08-15 A | 2026-08-19 A | MLTX-02-005-CN-12230 SS, MLTX-02-005-CN-12230 FF | 100% |  |
| MLTX-02-005-CN-12241 |  | Backfilling and Reinstatement for Concrete Foundation | 18d | 2026-10-13 A | 2026-10-13 A | MLTX-02-005-CN-12240 SS, MLTX-02-005-CN-12240 FF | 100% |  |
| MLTX-02-005-CN-12250 |  | Tempered Glass Fenc Installation and Fixation | 15d | 2027-01-23 | 2027-02-09 | MLTX-02-005-CN-12241 SS, MLTX-02-005-CN-12241 FF, MLTX-02-005-PR-10820, MLTX-02-005-CN-12120 |  | -44.1d |
| MLTX-02-005-CN-12260 |  | Chain Link Fence Installation and Fixation | 15d | 2027-01-23 | 2027-02-09 | MLTX-02-005-CN-12250 FF, MLTX-02-005-PR-10840, MLTX-02-005-CN-12250 SS, MLTX-02-005-CN-12120 |  | -44.1d |
| MLTX-02-005-CN-12270 |  | Install of Fence Gates | 26d | 2027-02-06 | 2027-03-09 | MLTX-02-005-CN-12260 FF, MLTX-02-005-CN-12250 SS, MLTX-02-005-CN-12260 SS, MLTX-02-005-CN-12330 |  | -56.1d |
|  | 1 | **CURBSTOEN/INTERLOCK** |  | 2026-08-12 | 2026-11-15 |  |  |  |
| MLTX-02-005-CN-12020 |  | Concrete Works Under Curbstone | 12d | 2026-08-12 A | 2026-08-12 A | MLTX-02-005-EN-11930, MLTX-02-005-CN-12290, MLTX-02-005-EN-11090, MLTX-02-005-CN-14760 | 100% |  |
| MLTX-02-005-CN-12030 |  | Curbstone Installation | 4d | 2026-08-12 A | 2026-08-23 A | MLTX-02-005-PR-10900, MLTX-02-005-CN-12020, MLTX-02-005-CN-12430, MLTX-02-005-CN-13190, MLTX-02-005-CN-12200 | 100% |  |
| MLTX-02-005-CN-11960 |  | Interlock Installation (Grey Scale) for LandScape (Including Finishing Works) | 3d | 2026-09-21 A | 2026-11-15 A | MLTX-02-005-CN-12030, MLTX-02-005-PR-10760, MLTX-02-005-PR-10030 | 100% |  |
|  | 10 | **AIR DOME** |  | 2026-05-16 | 2027-02-24 |  |  |  |
|  | 1 | **CIVIL WORKS** |  | 2026-05-16 | 2027-02-11 |  |  |  |
| MLTX-02-005-CN-12280 |  | Excavation for Foundation (Air Dome) | 15d | 2026-05-16 A | 2026-06-01 A | MLTX-02-005-EN-12010, MLTX-02-005-EN-8830, MLTX-02-005-EN-11950, MLTX-02-005-EN-11980, MLTX-02-005-EN-8070, MLTX-02-005-CN-12140, MLTX-02-005-EN-12000, MLTX-02-005-EN-12020, MLTX-02-005-CN-12180, MLTX-02-005-EN-12030, MLTX-02-005-EN-12040 | 100% |  |
| MLTX-02-005-CN-12290 |  | Concrete Works for Foundations including Anchor Bolts (Air Dome) | 15d | 2026-07-22 A | 2026-09-21 A | MLTX-02-005-EN-11990, MLTX-02-005-EN-11130, MLTX-02-005-EN-8860, MLTX-02-005-EN-11970, MLTX-02-005-CN-12280, MLTX-02-005-EN-11960, MLTX-02-005-CN-12670 | 100% |  |
| MLTX-02-005-CN-12300 |  | Cable System Installation (Air Dome) | 10d | 2026-09-21 A | 2026-09-21 A | MLTX-02-005-CN-12290 | 100% |  |
| MLTX-02-005-CN-12430 |  | Perimeter Clamping System Installation | 13d | 2026-09-21 A | 2026-09-28 A | MLTX-02-005-CN-12300 FF, MLTX-02-005-CN-12300 SS | 100% |  |
| MLTX-02-005-CN-12310 |  | Install of Membrane Covering System (Air Dome) | 20d | 2027-01-19 | 2027-02-11 | MLTX-02-005-PR-10540, MLTX-02-005-CN-12430, MLTX-02-005-CN-11740, MLTX-02-005-PR-10970, MLTX-02-005-CN-12010 |  | -53.1d |
| MLTX-02-005-CN-12320 |  | Thermal Insulation Works (Air Dome) | 20d | 2027-01-19 | 2027-02-11 | MLTX-02-005-CN-12310 SS, MLTX-02-005-CN-12310 FF, MLTX-02-005-CN-11740 |  | -53.1d |
|  | 3 | **MECHANICAL WORKS** |  | 2027-01-19 | 2027-02-06 |  |  |  |
| MLTX-02-005-CN-12350 |  | Air Ducts and Grills Installation (Air Dome) | 15d | 2027-01-19 | 2027-02-06 | MLTX-02-005-EN-11890, MLTX-02-005-EN-11880, MLTX-02-005-PR-10500, MLTX-02-005-PR-10480, MLTX-02-005-PR-10990, MLTX-02-005-CN-12320 SS |  | -48.1d |
| MLTX-02-005-CN-12360 |  | Air Units Installation (Air Dome) | 8d | 2027-01-27 | 2027-02-06 | MLTX-02-005-PR-10460, MLTX-02-005-CN-12350 FF, MLTX-02-005-CN-12350 SS |  | -48.1d |
| MLTX-02-005-CN-12370 |  | Exhaust Fans and Ducts Installation (Air Dome) | 8d | 2027-01-27 | 2027-02-06 | MLTX-02-005-PR-10520, MLTX-02-005-CN-12360 SS, MLTX-02-005-CN-12360 FF, MLTX-02-005-CN-12350 SS, MLTX-02-005-CN-12350 FF |  | -48.1d |
|  | 4 | **ELECTRICAL WORKS** |  | 2027-02-07 | 2027-02-24 |  |  |  |
| MLTX-02-005-CN-12380 |  | Light Fixture Works (Air Dome) | 8d | 2027-02-07 | 2027-02-16 | MLTX-02-005-CN-12360 FF, MLTX-02-005-CN-12360 SS, MLTX-02-005-CN-12370 SS, MLTX-02-005-CN-12370 FF, MLTX-02-005-PR-10680, MLTX-02-005-PR-10660 |  | -57.1d |
| MLTX-02-005-CN-12390 |  | Distribution Board and Electrical Works (Air Dome) | 8d | 2027-02-07 | 2027-02-16 | MLTX-02-005-EN-11840, MLTX-02-005-CN-12380 FF, MLTX-02-005-CN-12380 SS, MLTX-02-005-EN-11820, MLTX-02-005-EN-11830, MLTX-02-005-EN-11810, MLTX-02-005-PR-10720, MLTX-02-005-PR-10640, MLTX-02-005-EN-11800, MLTX-02-005-PR-10660 |  | -57.1d |
| MLTX-02-005-CN-12400 |  | External Electrical Connection Works (Air Dome) | 8d | 2027-02-07 | 2027-02-16 | MLTX-02-005-CN-12390 FF, MLTX-02-005-CN-12390 SS |  | -57.1d |
| MLTX-02-005-CN-12410 |  | Emergency Generator Installation (Air Dome) | 8d | 2027-02-07 | 2027-02-16 | MLTX-02-005-CN-12400 FF, MLTX-02-005-EN-8700, MLTX-02-005-CN-12400 SS, MLTX-02-005-EN-8730, MLTX-02-005-EN-8720 |  | -57.1d |
| MLTX-02-005-CN-12420 |  | Control System Installation (Air Dome) | 8d | 2027-02-14 | 2027-02-24 | MLTX-02-005-CN-12410 FF, MLTX-02-005-EN-11860, MLTX-02-005-EN-11850, MLTX-02-005-EN-11870, MLTX-02-005-PR-10700 |  | -63.1d |
|  | 2 | **FINISHES WORKS** |  | 2027-01-19 | 2027-02-24 |  |  |  |
| MLTX-02-005-CN-12330 |  | Doors Installation Including Emergency, Entrance doors (Air Dome) | 15d | 2027-01-19 | 2027-02-06 | MLTX-02-005-CN-11740, MLTX-02-005-PR-11000 |  | -56.1d |
| MLTX-02-005-CN-12340 |  | Logo and Signs Installation (Air Dome) | 2d | 2027-02-21 | 2027-02-24 | MLTX-02-005-CN-12330 FF, MLTX-02-005-CN-12420 FF, MLTX-02-005-CN-12420 SS |  | -63.1d |
|  | 1 | **IRRIGATION NETWORK** |  | 2026-07-18 | 2026-11-14 |  |  |  |
| MLTX-02-005-CN-13190 |  | Installing of HDPE Pipes for Irrigation Network (Main Line) | 15d | 2026-07-18 A | 2026-07-20 A | MLTX-02-005-CN-12290 | 100% |  |

| ID | WBS | Task | Duration | Start | Finish | Predecessors | Complete | Total float |
| --- | --- | --- | --- | --- | --- | --- | --- | --- |
| MLTX-02-005-CN-13200 |  | Installing of HDPE Pipes for Irrigation Network (Branch Lines) | 15d | 2026-08-24 A | 2026-09-01 A | MLTX-02-005-CN-13190, MLTX-02-005-EN-11780, MLTX-02-005-EN-11790, MLTX-02-005-PR-10100, MLTX-02-005-EN-11190, MLTX-02-005-CN-12030 | 100% |  |
| MLTX-02-005-CN-13210 |  | Installing of Valves and fittings for Irrigation Network | 10d | 2026-09-10 A | 2026-10-13 A | MLTX-02-005-CN-13200 | 100% |  |
| MLTX-02-005-CN-13220 |  | Installing of Bubblers and Spreyers | 3d | 2026-11-10 A | 2026-11-14 A | MLTX-02-005-CN-13210, MLTX-02-005-PR-10860, MLTX-02-005-CN-13120 | 100% |  |
|  | 5 | **NATURAL GROUND** |  | 2026-10-13 | 2026-11-26 |  |  |  |
| MLTX-02-005-CN-11990 |  | Compacted Natural Ground Soil Installation Works for Landscape | 5d | 2026-10-13 A | 2026-11-03 A | MLTX-02-005-CN-13210, MLTX-02-005-CN-12920 | 100% |  |
| MLTX-02-005-CN-11980 |  | Tartan Floor Installation Works for Landscape (Including Finishing Works) | 3d | 2026-10-14 A | 2026-11-26 | MLTX-02-005-CN-11990 SS | 70% | 22.9d |
|  | 2 | **PLANTING** |  | 2026-10-03 | 2026-11-26 |  |  |  |
| MLTX-02-005-CN-12050 |  | Placement of Sweet/Agricultural Soil (Including Levelling and Grading) | 3d | 2026-10-03 A | 2026-11-11 A | MLTX-02-005-EN-11110, MLTX-02-005-PR-10860, MLTX-02-005-CN-12920 | 100% |  |
| MLTX-02-005-CN-12060 |  | Placement of Lawn Ground Cover (Rolling and Compaction) | 3d | 2026-10-14 A | 2026-11-26 | MLTX-02-005-CN-12070 SS, MLTX-02-005-CN-12010 SS | 50% | 31.9d |
| MLTX-02-005-CN-12070 |  | Placement and Fixation of Trees | 3d | 2026-10-14 A | 2026-11-21 A | MLTX-02-005-CN-12010 SS | 100% |  |
|  | 3 | **WALKING/BIKE PATHS** |  | 2026-06-01 | 2026-11-23 |  |  |  |
| MLTX-02-005-CN-12000 |  | Bike Path Preparation and Installation Works | 8d | 2026-06-01 A | 2026-11-23 | MLTX-02-005-CN-11880, MLTX-02-005-CN-12030 | 80% | -33.1d |
| MLTX-02-005-CN-12010 |  | Walking Path Preparation and Installation Works | 8d | 2026-06-10 A | 2026-11-23 | MLTX-02-005-CN-12000 SS, MLTX-02-005-CN-12030 | 80% | -4.1d |
|  | 6 | **GENERAL/FURNITURE** |  | 2026-09-03 | 2027-02-17 |  |  |  |
| MLTX-02-005-CN-12920 |  | Preleminary Works for Site Light Poles Including Cable and Bases Works | 8d | 2026-09-03 A | 2026-09-07 A | MLTX-02-005-PR-10740, MLTX-02-005-EN-11320, MLTX-02-005-CN-12030, MLTX-02-005-EN-11340, MLTX-02-005-EN-11330, MLTX-02-005-EN-11910, MLTX-02-005-EN-11030, MLTX-02-005-EN-11350 | 100% |  |
| MLTX-02-005-CN-12930 |  | Installing of Site Light Poles | 22d | 2026-10-01 A | 2026-10-26 A | MLTX-02-005-CN-12920, MLTX-02-005-PR-11010 | 100% |  |
| MLTX-02-005-CN-11970 |  | Stamped Concrete Works for LandScape (Including Finishing Works) | 18d | 2026-10-14 A | 2026-12-14 | MLTX-02-005-CN-12010 SS, MLTX-02-005-CN-12920 | 50% | 12.9d |
| MLTX-02-005-CN-12440 |  | Fixation and Installation of Steel Frame for Benches | 28d | 2026-11-23 | 2026-12-26 | MLTX-02-005-CN-12000, MLTX-02-005-EN-11070, MLTX-02-005-CN-12920 |  | -33.1d |
| MLTX-02-005-CN-12450 |  | Fixation and Installation of Benches | 14d | 2026-12-26 | 2027-01-11 | MLTX-02-005-CN-12440, MLTX-02-005-CN-12920 |  | -33.1d |
| MLTX-02-005-CN-12460 |  | Fixation and Installation of Precast Concrete Seats (Rectangular) | 14d | 2026-12-26 | 2027-01-11 | MLTX-02-005-CN-12450 SS, MLTX-02-005-CN-12450 FF, MLTX-02-005-CN-12920, MLTX-02-005-CN-12930 |  | -19.1d |
| MLTX-02-005-CN-12470 |  | Fixation and Installation of Precast Concrete Seats (Circular) | 14d | 2027-01-11 | 2027-01-27 | MLTX-02-005-CN-12460 FF, MLTX-02-005-CN-12460 SS, MLTX-02-005-CN-12920, MLTX-02-005-CN-12450 |  | -33.1d |
| MLTX-02-005-CN-12040 |  | Traffic Signs Posts and Poles Installation | 3d | 2027-02-11 | 2027-02-15 | MLTX-02-005-CN-11940, MLTX-02-005-CN-12470, MLTX-02-005-CN-12930, MLTX-02-005-PR-10080, MLTX-02-005-CN-12310 |  | -46.1d |
| MLTX-02-005-CN-12480 |  | Fixation and Installation of Precast Concrete Trash Bins | 2d | 2027-02-15 | 2027-02-17 | MLTX-02-005-CN-12470, MLTX-02-005-CN-11940, MLTX-02-005-PR-10880, MLTX-02-005-CN-12920, MLTX-02-005-CN-12040, MLTX-02-005-CN-12050, MLTX-02-005-CN-11980 |  | -46.1d |
|  | 2 | **PARKING** |  | 2026-05-14 | 2026-09-19 |  |  |  |
| MLTX-02-005-CN-11950 |  | Site Preparation & Compaction Under Interlock for Parking Area | 5d | 2026-05-14 A | 2026-06-30 A | MLTX-02-005-PR-10870, MLTX-02-005-EN-8040, MLTX-02-005-EN-11180 | 100% |  |
| MLTX-02-005-CN-11940 |  | Interlock Installation (8 Cm) for Parking Area (Including Finishing Works) | 7d | 2026-09-10 A | 2026-09-19 A | MLTX-02-005-CN-11950, MLTX-02-005-EN-11100, MLTX-02-005-CN-12030 | 100% |  |
|  | TO | **TOILET/SERVICE BUILDING** |  | 2026-05-24 | 2027-02-18 |  |  |  |
|  | 13 | **STRUCTURE WORKS** |  | 2026-05-24 | 2026-08-10 |  |  |  |
|  | 2 | **CONCRETE WORKS** |  | 2026-05-25 | 2026-07-02 |  |  |  |
|  | 1 | **SUB-STRUCTURE** |  | 2026-05-25 | 2026-06-06 |  |  |  |
| MLTX-02-005-CN-12490 |  | Plain Concrete Under Footing | 2d | 2026-05-25 A | 2026-05-31 A | MLTX-02-005-EN-9010, MLTX-02-005-EN-11000, MLTX-02-005-EN-11440, MLTX-02-005-EN-11430, MLTX-02-005-CN-12550, MLTX-02-005-EN-11450 | 100% |  |
| MLTX-02-005-CN-12520 |  | Reinforced Concrete Works for Slab on Grade Including Steel Fixing | 5d | 2026-06-03 A | 2026-06-06 A | MLTX-02-005-PR-10070, MLTX-02-005-CN-12490 | 100% |  |
|  | 2 | **SUPER-STRUCTURE** |  | 2026-06-28 | 2026-07-02 |  |  |  |
| MLTX-02-005-CN-12500 |  | AAC Panels Works for Walls | 7d | 2026-06-28 A | 2026-06-30 A | MLTX-02-005-EN-11420, MLTX-02-005-EN-11400, MLTX-02-005-EN-11390, MLTX-02-005-EN-11410, MLTX-02-005-EN-11370, MLTX-02-005-CN-12600, MLTX-02-005-EN-11360, MLTX-02-005-EN-11380 | 100% |  |
| MLTX-02-005-CN-12530 |  | AAC Panels Works for Slabs | 2d | 2026-07-01 A | 2026-07-01 A | MLTX-02-005-CN-12500 | 100% |  |
| MLTX-02-005-CN-12510 |  | Parpet Works and Lintels | 3d | 2026-07-02 A | 2026-07-02 A | MLTX-02-005-CN-12530, MLTX-02-005-CN-13090 | 100% |  |
|  | 1 | **UNDER GROUND SEPTIC TANK** |  | 2026-06-04 | 2026-07-06 |  |  |  |
| MLTX-02-005-CN-13080 |  | Plain Concrete Under Footing | 3d | 2026-06-04 A | 2026-06-06 A | MLTX-02-005-CN-12540 | 100% |  |
| MLTX-02-005-CN-13100 |  | Reinforced Concrete Works for Tank Foundation Including Shuttering and Steel Fixing | 7d | 2026-06-18 A | 2026-06-20 A | MLTX-02-005-CN-13080 | 100% |  |
| MLTX-02-005-CN-13110 |  | Reinforced Concrete Works for Tank Walls Including Steel Fixing | 10d | 2026-06-20 A | 2026-06-29 A | MLTX-02-005-CN-13100 | 100% |  |
| MLTX-02-005-CN-13090 |  | Reinforced Concrete Works for Tank Slab Including Shuttering and Steel Fixing | 8d | 2026-07-02 A | 2026-07-06 A | MLTX-02-005-CN-13110 | 100% |  |
|  | 3 | **THERMAL & MOISTER PROTECTION** |  | 2026-05-24 | 2026-08-10 |  |  |  |
|  | 1 | **ANTI TERMIT CONTROL** |  | 2026-05-24 | 2026-06-03 |  |  |  |
| MLTX-02-005-CN-12570 |  | Anti Termite Works Under Slab on Grade and Grade Beams | 1d | 2026-05-24 A | 2026-05-25 A | MLTX-02-005-CN-13100 | 100% |  |
| MLTX-02-005-CN-12560 |  | Anti Termite Works Under Foundation | 1d | 2026-05-31 A | 2026-06-03 A | MLTX-02-005-CN-11930 SS, MLTX-02-005-CN-11920 | 100% |  |
|  | 2 | **POLYETHYLENE SHEET** |  | 2026-05-25 | 2026-06-04 |  |  |  |
| MLTX-02-005-CN-12550 |  | Water Proofing Under Slab on Grade (Polythelen Sheet) | 1d | 2026-05-25 A | 2026-05-31 A | MLTX-02-005-EN-10120, MLTX-02-005-CN-12570 | 100% |  |
| MLTX-02-005-CN-12540 |  | Water Proofing Under Blinding Concrete (Polythelen Sheet) | 1d | 2026-06-01 A | 2026-06-04 A | MLTX-02-005-EN-10120, MLTX-02-005-CN-12560, MLTX-02-005-EN-11010 | 100% |  |
|  | 4 | **EPOXY** |  | 2026-07-11 | 2026-08-10 |  |  |  |
| MLTX-02-005-CN-12580 |  | Surface Preparation for Epoxy Coating | 3d | 2026-07-11 A | 2026-07-11 A | MLTX-02-005-CN-13090, MLTX-02-005-CN-13110 | 100% |  |
| MLTX-02-005-CN-12590 |  | Epoxy Coating for Walls and Slab of Tank | 5d | 2026-07-28 A | 2026-08-10 A | MLTX-02-005-CN-12580 | 100% |  |
|  | 5 | **MASONARY WORK** |  | 2026-07-06 | 2026-07-08 |  |  |  |
| MLTX-02-005-CN-12600 |  | CMU Masonary Works Including all Accessories | 5d | 2026-07-06 A | 2026-07-08 A | MLTX-02-005-EN-11050, MLTX-02-005-PR-10160, MLTX-02-005-CN-12520 | 100% |  |
|  | 3 | **THERMAL & MOISTER PROTECTION** |  | 2026-09-10 | 2026-12-14 |  |  |  |
| MLTX-02-005-CN-12620 |  | Preparing Surface and Preliminary Works for Toilets Waterproofing | 2d | 2026-09-10 A | 2026-09-10 A | MLTX-02-005-CN-12510, MLTX-02-005-CN-12590 | 100% |  |
| MLTX-02-005-CN-12630 |  | Finalize Water Proofing Works for Toilets | 5d | 2026-09-12 A | 2026-09-12 A | MLTX-02-005-CN-12620 | 100% |  |
| MLTX-02-005-CN-12640 |  | Preparing Surface and Preliminary Works for Roofing and Wet Areas Insulation | 16d | 2026-09-20 A | 2026-09-20 A | MLTX-02-005-CN-12630 | 100% |  |
| MLTX-02-005-CN-12650 |  | Finalize Water Proofing Works for Roofing and Wet Areas | 18d | 2026-09-20 A | 2026-12-14 | MLTX-02-005-CN-12640 | 90% | -11.1d |
|  | 11 | **MECHANICAL WORK** |  | 2026-07-12 | 2027-01-17 |  |  |  |
|  | 4 | **HVAC SYSTEM** |  | 2026-07-12 | 2026-10-08 |  |  |  |
| MLTX-02-005-CN-12720 |  | Preliminary HVAC and Ventilation Works | 3d | 2026-07-12 A | 2026-07-12 A | MLTX-02-005-EN-8330, MLTX-02-005-EN-8930, MLTX-02-005-EN-11200, MLTX-02-005-EN-8310, MLTX-02-005-EN-8150, MLTX-02-005-EN-12050, MLTX-02-005-EN-11060, MLTX-02-005-EN-9450, MLTX-02-005-EN-9280, MLTX-02-005-EN-11470, MLTX-02-005-CN-12750, MLTX-02-005-PR-9840 | 100% |  |
| MLTX-02-005-CN-12740 |  | Exhaust, Air Ducts Installation with all Accessories | 6d | 2026-08-25 A | 2026-08-29 A | MLTX-02-005-CN-13180 | 100% |  |
| MLTX-02-005-CN-12730 |  | Install and Finish HVAC and Ventilation Works Including Split Air Units | 4d | 2026-10-08 A | 2026-10-08 A | MLTX-02-005-CN-12740 FF, MLTX-02-005-PR-10380, MLTX-02-005-CN-13260 | 100% |  |
|  | 2 | **WATER SUPPLY SYSTEM** |  | 2026-07-21 | 2026-10-08 |  |  |  |
| MLTX-02-005-CN-12750 |  | Installing of PPR Pipes and Fittings for Water Network | 6d | 2026-07-21 A | 2026-07-21 A | MLTX-02-005-CN-12790, MLTX-02-005-EN-11510, MLTX-02-005-PR-10260, MLTX-02-005-EN-11170, MLTX-02-005-EN-11500 | 100% |  |
| MLTX-02-005-CN-13170 |  | Installing of Valves and Fittings | 5d | 2026-09-05 A | 2026-09-05 A | MLTX-02-005-CN-12750, MLTX-02-005-CN-12880, MLTX-02-005-CN-12770 | 100% |  |
| MLTX-02-005-CN-12780 |  | Installing of GRP Tanks | 20d | 2026-09-06 A | 2026-09-14 A | MLTX-02-005-CN-12790 | 100% |  |
| MLTX-02-005-CN-12760 |  | Installing of HDPE Pipes and Valves for Water Supply Network | 7d | 2026-09-19 A | 2026-10-08 A | MLTX-02-005-CN-13170, MLTX-02-005-CN-12690, MLTX-02-005-PR-8870 | 100% |  |
| MLTX-02-005-CN-13260 |  | Installing of Water Heater | 3d | 2026-09-29 A | 2026-09-29 A | MLTX-02-005-CN-14750 | 100% |  |
| MLTX-02-005-CN-12770 |  | Installing of Booster Pump Units Including fittings and accessories | 20d | 2026-10-04 A | 2026-10-04 A | MLTX-02-005-CN-13260 | 100% |  |

| ID | WBS | Task | Duration | Start | Finish | Predecessors | Complete | Total float |
| --- | --- | --- | --- | --- | --- | --- | --- | --- |
|  | 1 | **SEWER/DRAINAGE SYSTEM** |  | 2026-07-21 | 2026-10-12 |  |  |  |
| MLTX-02-005-CN-12790 |  | Installing UPVC Pipes for Sewage Network | 2d | 2026-07-21 A | 2026-07-22 A | MLTX-02-005-EN-11530, MLTX-02-005-PR-10280, MLTX-02-005-EN-11520, MLTX-02-005-EN-11160 | 100% |  |
| MLTX-02-005-CN-13250 |  | Installing Inspection Chamber for Sewage Network | 10d | 2026-10-03 A | 2026-10-03 A | MLTX-02-005-CN-12790 | 100% |  |
| MLTX-02-005-CN-12800 |  | Installing of Plumping Fixtures and Accessories | 5d | 2026-10-04 A | 2026-10-12 A | MLTX-02-005-CN-13180, MLTX-02-005-CN-13070, MLTX-02-005-CN-12990, MLTX-02-005-CN-12780 | 100% |  |
| MLTX-02-005-CN-13180 |  | Installing UPVC Pipes for External Connection for Sewage Network | 8d | 2026-10-08 A | 2026-10-08 A | MLTX-02-005-CN-13250, MLTX-02-005-CN-12750, MLTX-02-005-CN-13270 | 100% |  |
| MLTX-02-005-CN-13270 |  | Installing of Toilet Fixtures and Accessories Such as Closets and Basins | 21d | 2026-10-08 A | 2026-10-12 A | MLTX-02-005-CN-13260 | 100% |  |
|  | 3 | **FIRE PROTECTION** |  | 2026-12-23 | 2027-01-17 |  |  |  |
| MLTX-02-005-CN-12810 |  | Installing of Fire Fighting Extinguisher and accessories (PFE-1, PFE-2) | 21d | 2026-12-23 | 2027-01-17 | MLTX-02-005-EN-11490, MLTX-02-005-CN-13280, MLTX-02-005-EN-11180, MLTX-02-005-CN-13240, MLTX-02-005-CN-13260, MLTX-02-005-EN-11850, MLTX-02-005-CN-13300, MLTX-02-005-PR-10200, MLTX-02-005-EN-11150, MLTX-02-005-CN-13140, MLTX-02-005-CN-12840, MLTX-02-005-CN-14740, MLTX-02-005-CN-12190, MLTX-02-005-CN-13030, MLTX-02-005-PR-10970, MLTX-02-005-CN-12010, MLTX-02-005-CN-12650 |  | -19.1d |
|  | 12 | **ELECTRICAL WORKS** |  | 2026-07-14 | 2027-01-09 |  |  |  |
|  | 1 | **ROUGH-IN WORKS** |  | 2026-07-14 | 2026-08-17 |  |  |  |
| MLTX-02-005-CN-12860 |  | Preleminary Works for Sockets and Power Points | 2d | 2026-07-14 A | 2026-08-09 A | MLTX-02-005-CN-12510, MLTX-02-005-CN-12500, MLTX-02-005-CN-12880 | 100% |  |
| MLTX-02-005-CN-12830 |  | Preleminary Works for Panel Boards | 2d | 2026-07-22 A | 2026-08-09 A | MLTX-02-005-EN-11550, MLTX-02-005-EN-11590, MLTX-02-005-EN-11250, MLTX-02-005-CN-12500, MLTX-02-005-CN-12510, MLTX-02-005-CN-12880 | 100% |  |
| MLTX-02-005-CN-12850 |  | Preleminary Works for Cable Works | 2d | 2026-07-22 A | 2026-08-09 A | MLTX-02-005-EN-11020, MLTX-02-005-CN-12510, MLTX-02-005-EN-11540, MLTX-02-005-CN-12500, MLTX-02-005-EN-11580, MLTX-02-005-CN-12880 | 100% |  |
| MLTX-02-005-CN-12880 |  | Preleminary Works for Lightning Works | 2d | 2026-08-09 A | 2026-08-17 A | MLTX-02-005-EN-11630, MLTX-02-005-CN-12510, MLTX-02-005-CN-12500, MLTX-02-005-EN-11670, MLTX-02-005-EN-11240 | 100% |  |
| MLTX-02-005-CN-12900 |  | Preleminary Works for Data & Telecommunication System | 2d | 2026-08-09 A | 2026-08-17 A | MLTX-02-005-EN-11210, MLTX-02-005-CN-12510, MLTX-02-005-EN-11720, MLTX-02-005-EN-11730, MLTX-02-005-CN-12500, MLTX-02-005-CN-12880 | 100% |  |
| MLTX-02-005-CN-12940 |  | Preleminary Works for Security and Access Control System | 2d | 2026-08-09 A | 2026-08-17 A | MLTX-02-005-EN-11710, MLTX-02-005-EN-11700, MLTX-02-005-CN-12500, MLTX-02-005-EN-11220, MLTX-02-005-CN-12510, MLTX-02-005-EN-11650, MLTX-02-005-CN-12880 | 100% |  |
| MLTX-02-005-CN-13230 |  | Preleminary Works for Earthing Works | 2d | 2026-08-09 A | 2026-08-17 A | MLTX-02-005-EN-8500, MLTX-02-005-CN-12500, MLTX-02-005-PR-10120, MLTX-02-005-CN-12510, MLTX-02-005-EN-11240, MLTX-02-005-EN-11660, MLTX-02-005-EN-11620, MLTX-02-005-CN-12880 | 100% |  |
|  | 2 | **FIXTURE WORKS** |  | 2026-10-29 | 2027-01-09 |  |  |  |
| MLTX-02-005-CN-12870 |  | Installing and Finalize Works of Sockets and Power Points | 20d | 2026-10-29 A | 2026-10-31 A | MLTX-02-005-CN-13240, MLTX-02-005-PR-10320, MLTX-02-005-CN-12860, MLTX-02-005-EN-11850, MLTX-02-005-CN-13140 | 100% |  |
| MLTX-02-005-CN-12890 |  | Installing and Finalize Works of Lighting Works including Light Fixtures | 21d | 2026-11-01 A | 2026-11-01 A | MLTX-02-005-PR-10300, MLTX-02-005-CN-13240, MLTX-02-005-CN-12850, MLTX-02-005-EN-11850, MLTX-02-005-CN-13140 | 100% |  |
| MLTX-02-005-CN-12970 |  | Installing and Finalize Works of Lightning Protection System | 20d | 2026-11-01 A | 2026-11-01 A | MLTX-02-005-CN-13140, MLTX-02-005-CN-12880, MLTX-02-005-CN-13260, MLTX-02-005-CN-14740, MLTX-02-005-CN-12190 | 100% |  |
| MLTX-02-005-CN-12840 |  | Installing and Finish Works of Panel Boards | 20d | 2026-11-03 A | 2026-12-16 | MLTX-02-005-PR-10140, MLTX-02-005-CN-13140, MLTX-02-005-CN-12830, MLTX-02-005-CN-12190 | 40% | -13.1d |
| MLTX-02-005-CN-12960 |  | Installing and Finalize Works of Earthing Works | 20d | 2026-11-03 A | 2026-11-03 A | MLTX-02-005-CN-13140, MLTX-02-005-CN-13230 | 100% |  |
| MLTX-02-005-CN-12950 |  | Installing and Finalize Works of Security and Access Control System | 20d | 2026-11-18 A | 2026-11-18 A | MLTX-02-005-CN-12940, MLTX-02-005-CN-13140, MLTX-02-005-CN-13260, MLTX-02-005-CN-14740, MLTX-02-005-CN-12190, MLTX-02-005-CN-13030 | 100% |  |
| MLTX-02-005-CN-12820 |  | Installing of Fire automation and Fire Alarm System | 18d | 2026-11-21 A | 2026-12-14 | MLTX-02-005-EN-11690, MLTX-02-005-CN-12730, MLTX-02-005-EN-11640, MLTX-02-005-EN-11680, MLTX-02-005-CN-13260, MLTX-02-005-PR-10440, MLTX-02-005-EN-11460, MLTX-02-005-PR-10400, MLTX-02-005-EN-12060, MLTX-02-005-PR-10420, MLTX-02-005-EN-11480, MLTX-02-005-CN-12720, MLTX-02-005-CN-14740, MLTX-02-005-CN-12190, MLTX-02-005-CN-13030, MLTX-02-005-CN-13140 | 80% | 9.9d |
| MLTX-02-005-CN-12910 |  | Installing Data and Telecommunication System with all Accessories | 20d | 2026-12-16 | 2027-01-09 | MLTX-02-005-CN-13260, MLTX-02-005-CN-13240, MLTX-02-005-CN-12900, MLTX-02-005-CN-14750, MLTX-02-005-EN-11850, MLTX-02-005-CN-13140, MLTX-02-005-CN-12840, MLTX-02-005-CN-14740, MLTX-02-005-CN-12190, MLTX-02-005-CN-13030 |  | -12.1d |
|  | 7 | **DOORS/WINDOWS** |  | 2026-09-28 | 2026-10-28 |  |  |  |
| MLTX-02-005-CN-12660 |  | Preliminary Works For Doors | 13d | 2026-09-28 A | 2026-09-28 A | MLTX-02-005-CN-12510 | 100% |  |
| MLTX-02-005-CN-12670 |  | Finalize Metal Doors for Toilets Building | 11d | 2026-09-29 A | 2026-09-29 A | MLTX-02-005-CN-12660 | 100% |  |
| MLTX-02-005-CN-13120 |  | Preliminary Works For Windows/Curtain Wall | 12d | 2026-10-24 A | 2026-10-27 A | MLTX-02-005-CN-12510, MLTX-02-005-PR-10220 | 100% |  |
| MLTX-02-005-CN-13040 |  | Finalize Glazzed Curtain Wall Works | 11d | 2026-10-27 A | 2026-10-28 A | MLTX-02-005-CN-13120, MLTX-02-005-CN-11950 | 100% |  |
|  | 4 | **METAL WORKS** |  | 2026-09-06 | 2027-01-02 |  |  |  |
| MLTX-02-005-CN-12990 |  | Installation of Galvanized Steel Roof Scupper | 4d | 2026-09-06 A | 2026-09-06 A | MLTX-02-005-CN-13000 | 100% |  |
| MLTX-02-005-CN-12610 |  | Installation of Galvanized Steel Ladder | 14d | 2026-10-18 A | 2026-10-18 A | MLTX-02-005-CN-12660 | 100% |  |
| MLTX-02-005-CN-12980 |  | Installation of DI Cover for Tank | 14d | 2026-12-16 | 2027-01-02 | MLTX-02-005-CN-12610, MLTX-02-005-CN-12590, MLTX-02-005-EN-8080, MLTX-02-005-PR-9290 |  | -6.1d |
|  | 6 | **FINISHING WORKS** |  | 2026-08-17 | 2027-02-18 |  |  |  |
|  | 1 | **FLOOR FINISHES** |  | 2026-09-15 | 2027-02-18 |  |  |  |
| MLTX-02-005-CN-12680 |  | Creamic Tiles Floor Finish Works | 2d | 2026-09-15 A | 2026-09-16 A | MLTX-02-005-CN-12690, MLTX-02-005-PR-10180, MLTX-02-005-CN-12750, MLTX-02-005-EN-11060 | 100% |  |
| MLTX-02-005-CN-13070 |  | Ceramic Skirting Tiles Finish Works | 4d | 2026-10-04 A | 2026-10-04 A | MLTX-02-005-CN-13020, MLTX-02-005-CN-13280 | 100% |  |
| MLTX-02-005-CN-13050 |  | Granite Tiles Floor Finish Works | 6d | 2026-10-25 A | 2026-10-25 A | MLTX-02-005-CN-12680, MLTX-02-005-CN-13020 | 100% |  |
| MLTX-02-005-CN-13060 |  | Epoxy Coat on Concrete Floor | 23d | 2027-01-23 | 2027-02-18 | MLTX-02-005-CN-13140, MLTX-02-005-CN-13260, MLTX-02-005-CN-12120, MLTX-02-005-CN-14740, MLTX-02-005-CN-12190, MLTX-02-005-CN-13030 |  | -41.1d |
|  | 2 | **WALL FINISHES** |  | 2026-08-17 | 2026-11-26 |  |  |  |
| MLTX-02-005-CN-12690 |  | Preliminary Works for Wall Finish Works including Plastering (Internal) | 3d | 2026-08-17 A | 2026-08-19 A | MLTX-02-005-CN-13230, MLTX-02-005-CN-12880, MLTX-02-005-EN-11040, MLTX-02-005-CN-12900, MLTX-02-005-CN-12850, MLTX-02-005-CN-12940, MLTX-02-005-CN-12860, MLTX-02-005-CN-12830 | 100% |  |
| MLTX-02-005-CN-13000 |  | Preliminary Works for Wall Finish Works (External) | 6d | 2026-08-19 A | 2026-08-31 A | MLTX-02-005-CN-12690, MLTX-02-005-CN-13020 | 100% |  |
| MLTX-02-005-CN-13020 |  | Ceramic Finish Works for Walls | 5d | 2026-09-01 A | 2026-09-03 A | MLTX-02-005-CN-12690 | 100% |  |
| MLTX-02-005-CN-13010 |  | Painting Finish Works for External Walls | 3d | 2026-09-27 A | 2026-11-26 | MLTX-02-005-CN-12760, MLTX-02-005-CN-13000, MLTX-02-005-CN-13020, MLTX-02-005-CN-13240, MLTX-02-005-CN-13300 | 90% | 13.9d |
| MLTX-02-005-CN-13240 |  | Painting Finish Works for Internal Walls | 2d | 2026-09-29 A | 2026-10-06 A | MLTX-02-005-CN-13000 | 100% |  |
| MLTX-02-005-CN-13130 |  | Stone Cladding Finish Works for External Walls | 5d | 2026-10-04 A | 2026-10-04 A | MLTX-02-005-CN-13020 | 100% |  |
| MLTX-02-005-CN-13140 |  | Glass Partitions including all accessories and doors | 5d | 2026-10-24 A | 2026-10-28 A | MLTX-02-005-EN-11140 | 100% |  |
| MLTX-02-005-CN-13150 |  | Granite Capping for Parpet | 12d | 2026-10-25 A | 2026-10-25 A | MLTX-02-005-CN-13020 | 100% |  |
| MLTX-02-005-CN-13030 |  | Phenolic Partitions for Toilets | 7d | 2026-11-03 A | 2026-11-07 A | MLTX-02-005-CN-13290, MLTX-02-005-CN-13070, MLTX-02-005-CN-13130, MLTX-02-005-PR-10210, MLTX-02-005-CN-12800, MLTX-02-005-CN-12720, MLTX-02-005-CN-12730, MLTX-02-005-CN-13050, MLTX-02-005-CN-13150 | 100% |  |
|  | 3 | **CELLING FINISHES** |  | 2026-09-28 | 2026-10-01 |  |  |  |
| MLTX-02-005-CN-13290 |  | Gypsum Board Suspended Ceiling Finish Works For Ceiling | 5d | 2026-09-28 A | 2026-09-29 A | MLTX-02-005-CN-13020 | 100% |  |
| MLTX-02-005-CN-13300 |  | Preliminary Works for Ceiling Painting Works | 13d | 2026-09-28 A | 2026-09-29 A | MLTX-02-005-CN-12690 | 100% |  |
| MLTX-02-005-CN-13280 |  | Painting Finish Works for Ceiling | 13d | 2026-09-30 A | 2026-10-01 A | MLTX-02-005-CN-12300 | 100% |  |
|  | 8 | **SPECIALTIES WORK** |  | 2026-10-04 | 2027-01-05 |  |  |  |
| MLTX-02-005-CN-12700 |  | Sanitary Fixtures and Accessories Works | 3d | 2026-10-04 A | 2026-11-26 | MLTX-02-005-PR-10240, MLTX-02-005-CN-13020 | 80% | 24.9d |
| MLTX-02-005-CN-13160 |  | Installation of Phenolic Locker | 12d | 2026-11-07 A | 2026-11-07 A | MLTX-02-005-CN-13030, MLTX-02-005-CN-12730, MLTX-02-005-PR-10440, MLTX-02-005-EN-11460, MLTX-02-005-PR-10400, MLTX-02-005-EN-12060, MLTX-02-005-PR-10420, MLTX-02-005-EN-11480, MLTX-02-005-CN-12720, MLTX-02-005-CN-14740, MLTX-02-005-CN-12190, MLTX-02-005-CN-13140 | 100% |  |
| MLTX-02-005-CN-12710 |  | Installation of MODON Logo on the entrance | 17d | 2026-12-16 | 2027-01-05 | MLTX-02-005-CN-13240, MLTX-02-005-PR-10340, MLTX-02-005-CN-13120, MLTX-02-005-CN-13140, MLTX-02-005-CN-12840, MLTX-02-005-CN-13010 |  | -3.1d |
|  | PRO | **PROCUREMENT** |  | 2026-04-04 | 2027-02-14 |  |  |  |
|  | SLI | **SHORT LEAD ITEM** |  | 2026-04-04 | 2027-02-14 |  |  |  |
|  | TOI | **TOILET/SERVICE WORKS** |  | 2026-04-04 | 2026-11-09 |  |  |  |
|  | 1 | **STEEL REINFORCEMENT** |  | 2026-04-04 | 2026-07-07 |  |  |  |
| MLTX-02-005-PR-9970 |  | PO for Steel Reinforcement | 5d | 2026-04-04 A | 2026-05-18 A | MLTX-02-005-EN-9100 | 100% |  |
| MLTX-02-005-PR-10070 |  | Material Delivery of Steel Reinforcement | 5d | 2026-07-07 A | 2026-07-07 A | MLTX-02-005-PR-9970 | 100% |  |
|  | 3 | **CONCRETE BLOCKS** |  | 2026-04-09 | 2026-07-07 |  |  |  |
| MLTX-02-005-PR-10150 |  | PO for Concrete Blocks | 5d | 2026-04-09 A | 2026-05-18 A | MLTX-02-005-PR-9970, MLTX-02-005-EN-9010, MLTX-02-005-EN-9200 | 100% |  |
| MLTX-02-005-PR-10160 |  | Material Delivery of Concrete Blocks | 8d | 2026-07-07 A | 2026-07-07 A | MLTX-02-005-PR-10150 | 100% |  |
|  | 6 | **FLOOR/WALL TILES** |  | 2026-08-18 | 2026-08-20 |  |  |  |
| MLTX-02-005-PR-10170 |  | PO for Tilling Materials | 5d | 2026-08-18 A | 2026-08-18 A | MLTX-02-005-PR-10150, MLTX-02-005-EN-9220, MLTX-02-005-PR-10020 | 100% |  |

| ID | WBS | Task | Duration | Start | Finish | Predecessors | Complete | Total float |
| --- | --- | --- | --- | --- | --- | --- | --- | --- |
| MLTX-02-005-PR-10180 |  | Material Delivery of Tailling Material | 13d | 2026-08-20 A | 2026-08-20 A | MLTX-02-005-PR-10170, MLTX-02-005-PR-10020 | 100% |  |
|  | 7 | **SUSPENDED CEILING** |  | 2026-07-28 | 2026-08-18 |  |  |  |
| MLTX-02-005-PR-10190 |  | PO for Suspend Ceiling | 5d | 2026-07-28 A | 2026-07-28 A | MLTX-02-005-EN-9240, MLTX-02-005-PR-10240 | 100% |  |
| MLTX-02-005-PR-10200 |  | Material Delivery of Suspend Ceiling | 13d | 2026-08-18 A | 2026-08-18 A | MLTX-02-005-PR-10190, MLTX-02-005-PR-10240 | 100% |  |
|  | 8 | **DOORS/WINDOWS** |  | 2026-09-15 | 2026-09-20 |  |  |  |
| MLTX-02-005-PR-10210 |  | PO for Doors/Windows | 15d | 2026-09-15 A | 2026-09-15 A | MLTX-02-005-EN-9340, MLTX-02-005-EN-9120, MLTX-02-005-EN-9650, MLTX-02-005-EN-9490, MLTX-02-005-EN-9110, MLTX-02-005-EN-9550, MLTX-02-005-EN-9380, MLTX-02-005-EN-9240, MLTX-02-005-EN-9730, MLTX-02-005-EN-9090, MLTX-02-005-PR-10170, MLTX-02-005-EN-8980, MLTX-02-005-EN-9910, MLTX-02-005-EN-9140, MLTX-02-005-EN-9870, MLTX-02-005-EN-9510, MLTX-02-005-EN-9830, MLTX-02-005-EN-9360, MLTX-02-005-EN-9900, MLTX-02-005-EN-9810, MLTX-02-005-EN-9630, MLTX-02-005-EN-9450, MLTX-02-005-EN-9300, MLTX-02-005-EN-9890, MLTX-02-005-EN-9260, MLTX-02-005-EN-9850, MLTX-02-005-EN-9750, MLTX-02-005-EN-9430, MLTX-02-005-EN-9670, MLTX-02-005-EN-9530, MLTX-02-005-EN-9690, MLTX-02-005-EN-9710, MLTX-02-005-PR-10850 | 100% |  |
| MLTX-02-005-PR-10220 |  | Material Delivery for Doors/Windows | 25d | 2026-09-20 A | 2026-09-20 A | MLTX-02-005-PR-10210, MLTX-02-005-PR-10090 | 100% |  |
|  | 11 | **WATER SUPPLY PIPES** |  | 2026-07-07 | 2026-07-08 |  |  |  |
| MLTX-02-005-PR-10250 |  | PO for Water Supply Pipes | 5d | 2026-07-07 A | 2026-07-07 A | MLTX-02-005-EN-9300, MLTX-02-005-EN-9450, MLTX-02-005-PR-10170 | 100% |  |
| MLTX-02-005-PR-10260 |  | Material Delivery for Water Supply Pipes | 7d | 2026-07-08 A | 2026-07-08 A | MLTX-02-005-PR-10250, MLTX-02-005-PR-10170 | 100% |  |
|  | 12 | **SEWAGE/DRAINAGE PIPES** |  | 2026-06-13 | 2026-06-20 |  |  |  |
| MLTX-02-005-PR-10280 |  | Material Delivery for Sewage/Drainage Pipes | 7d | 2026-06-13 A | 2026-06-13 A | MLTX-02-005-PR-10270, MLTX-02-005-PR-10110 | 100% |  |
| MLTX-02-005-PR-10270 |  | PO for Sewage/Drainage Pipes | 5d | 2026-06-20 A | 2026-06-20 A | MLTX-02-005-EN-9320 | 100% |  |
|  | 10 | **SANITARY FIXTURES** |  | 2026-07-28 | 2026-07-28 |  |  |  |
| MLTX-02-005-PR-10230 |  | PO for Sanitary Fixtures | 5d | 2026-07-28 A | 2026-07-28 A | MLTX-02-005-EN-9280, MLTX-02-005-PR-10270 | 100% |  |
| MLTX-02-005-PR-10240 |  | Material Delivery for Sanitary Fixtures | 13d | 2026-07-28 A | 2026-07-28 A | MLTX-02-005-PR-10230, MLTX-02-005-PR-10260 | 100% |  |
|  | 16 | **PACKAGE AC UNITS** |  | 2026-07-07 | 2026-07-07 |  |  |  |
| MLTX-02-005-PR-10370 |  | PO for Package AC Units | 5d | 2026-07-07 A | 2026-07-07 A | MLTX-02-005-EN-9410, MLTX-02-005-EN-9280 | 100% |  |
| MLTX-02-005-PR-10380 |  | Material Delivery for Package AC Units | 15d | 2026-07-07 A | 2026-07-07 A | MLTX-02-005-PR-10370 | 100% |  |
|  | 17 | **AIR DIFUSSERS/GRILLS** |  | 2026-08-18 | 2026-08-20 |  |  |  |
| MLTX-02-005-PR-10390 |  | PO for Air Diffusers/Grills | 5d | 2026-08-18 A | 2026-08-18 A | MLTX-02-005-PR-10230, MLTX-02-005-EN-9430, MLTX-02-005-PR-10210 | 100% |  |
| MLTX-02-005-PR-10400 |  | Material Delivery for Air Diffusers/Grills | 15d | 2026-08-20 A | 2026-08-20 A | MLTX-02-005-PR-10390, MLTX-02-005-PR-10210 | 100% |  |
|  | 18 | **GALVANIZED DUCTS** |  | 2026-08-20 | 2026-08-20 |  |  |  |
| MLTX-02-005-PR-10410 |  | PO for Galvanized Ducts | 5d | 2026-08-20 A | 2026-08-20 A | MLTX-02-005-EN-9450, MLTX-02-005-PR-10230, MLTX-02-005-PR-10210 | 100% |  |
| MLTX-02-005-PR-10420 |  | Material Delivery for Galvanized Ducts | 15d | 2026-08-20 A | 2026-08-20 A | MLTX-02-005-PR-10410, MLTX-02-005-PR-10210 | 100% |  |
|  | 19 | **EXHAUST FANS** |  | 2026-08-18 | 2026-08-18 |  |  |  |
| MLTX-02-005-PR-10430 |  | PO for Exhaust Fans | 5d | 2026-08-18 A | 2026-08-18 A | MLTX-02-005-EN-9470, MLTX-02-005-PR-10230 | 100% |  |
| MLTX-02-005-PR-10440 |  | Material Delivery for Exhaust Fans | 10d | 2026-08-18 A | 2026-08-18 A | MLTX-02-005-PR-10430, MLTX-02-005-PR-10210 | 100% |  |
|  | 13 | **LIGHTING FIXTURES** |  | 2026-07-07 | 2026-10-31 |  |  |  |
| MLTX-02-005-PR-10290 |  | PO for Lighting Fixtures | 5d | 2026-07-07 A | 2026-07-07 A | MLTX-02-005-EN-9280, MLTX-02-005-EN-9340 | 100% |  |
| MLTX-02-005-PR-10300 |  | Material Delivery for Lighting Fixtures | 20d | 2026-10-31 A | 2026-10-31 A | MLTX-02-005-PR-10430, MLTX-02-005-PR-10290 | 100% |  |
|  | 14 | **SWITCHES/SOCKETS** |  | 2026-10-28 | 2026-10-28 |  |  |  |
| MLTX-02-005-PR-10310 |  | PO for Switches/Sockets | 15d | 2026-10-28 A | 2026-10-28 A | MLTX-02-005-PR-10290, MLTX-02-005-EN-9360 | 100% |  |
| MLTX-02-005-PR-10320 |  | Material Delivery for Switches/Sockets | 17d | 2026-10-28 A | 2026-10-28 A | MLTX-02-005-PR-10310 | 100% |  |
|  | 15 | **EARTHING SYSTEM** |  | 2026-08-10 | 2026-08-10 |  |  |  |
| MLTX-02-005-PR-10110 |  | PO for Earthing System | 5d | 2026-08-10 A | 2026-08-10 A | MLTX-02-005-EN-9160 | 100% |  |
| MLTX-02-005-PR-10120 |  | Material Delivery for Earthing System | 15d | 2026-08-10 A | 2026-08-10 A | MLTX-02-005-PR-10110 | 100% |  |
|  | 5 | **DISTRIBUTION PANNELS** |  | 2026-11-03 | 2026-11-03 |  |  |  |
| MLTX-02-005-PR-10130 |  | PO for Distribution Panels | 5d | 2026-11-03 A | 2026-11-03 A | MLTX-02-005-EN-9180, MLTX-02-005-PR-10240 | 100% |  |
| MLTX-02-005-PR-10140 |  | Material Delivery for Distribution Panels | 15d | 2026-11-03 A | 2026-11-03 A | MLTX-02-005-PR-10130, MLTX-02-005-PR-10240 | 100% |  |
|  | 9 | **FURNITURES** |  | 2026-11-09 | 2026-11-09 |  |  |  |
| MLTX-02-005-PR-10330 |  | PO for Furnitures | 19d | 2026-11-09 A | 2026-11-09 A | MLTX-02-005-EN-9380, MLTX-02-005-PR-10430 | 100% |  |
| MLTX-02-005-PR-10340 |  | Material Delivery for Furnitures | 30d | 2026-11-09 A | 2026-11-09 A | MLTX-02-005-PR-10330 | 100% |  |
|  | PLG | **PLAYGROUND WORKS** |  | 2026-04-04 | 2027-02-14 |  |  |  |
|  | 5 | **PVC MEMBRANE** |  | 2026-04-04 | 2027-01-14 |  |  |  |
| MLTX-02-005-PR-10530 |  | PO for PVC Membrane | 4d | 2026-04-04 A | 2026-05-19 A | MLTX-02-005-EN-9570, MLTX-02-005-PR-9980 | 100% |  |
| MLTX-02-005-PR-10540 |  | Material Delivery for PVC Membrane | 30d | 2026-12-10 | 2027-01-14 | MLTX-02-005-PR-10530, MLTX-02-005-PR-10510 |  | -49.1d |
|  | 15 | **ARTIFICIAL TURF** |  | 2026-04-04 | 2026-12-28 |  |  |  |
| MLTX-02-005-PR-10770 |  | PO for Artificial TURF | 5d | 2026-04-04 A | 2026-05-19 A | MLTX-02-005-EN-9920, MLTX-02-005-PR-10030 | 100% |  |
| MLTX-02-005-PR-10780 |  | Material Delivery for Artificial TURF | 30d | 2026-11-23 | 2026-12-28 | MLTX-02-005-PR-10770, MLTX-02-005-PR-10830 |  | -37.1d |
|  | 20 | **RUBBER GRANULES** |  | 2026-04-04 | 2026-12-28 |  |  |  |
| MLTX-02-005-PR-10790 |  | PO for Rubber Granules | 5d | 2026-04-04 A | 2026-05-19 A | MLTX-02-005-EN-9930 | 100% |  |
| MLTX-02-005-PR-10800 |  | Material Delivery for Rubber Granules | 30d | 2026-11-23 | 2026-12-28 | MLTX-02-005-PR-10790, MLTX-02-005-PR-10900 |  | -42.1d |
|  | 21 | **PADEL GLASS** |  | 2026-04-04 | 2026-12-28 |  |  |  |
| MLTX-02-005-PR-10810 |  | PO for Padel Glass | 5d | 2026-04-04 A | 2026-05-19 A | MLTX-02-005-EN-9940, MLTX-02-005-PR-9980 | 100% |  |
| MLTX-02-005-PR-10820 |  | Material Delivery for Padel Glass | 30d | 2026-11-23 | 2026-12-28 | MLTX-02-005-PR-10810, MLTX-02-005-PR-10830 |  | -57.1d |
|  | 22 | **PADEL WIRE MESH/STEEL SETS** |  | 2026-04-09 | 2026-12-10 |  |  |  |
| MLTX-02-005-PR-10830 |  | PO for Wire Mesh/Steel Sets | 5d | 2026-04-09 A | 2026-05-19 A | MLTX-02-005-PR-10810, MLTX-02-005-EN-9950, MLTX-02-005-PR-10030 | 100% |  |
| MLTX-02-005-PR-10840 |  | Material Delivery for Wire Mesh/Steel Sets | 15d | 2026-11-23 | 2026-12-10 | MLTX-02-005-PR-10830, MLTX-02-005-PR-10030 |  | -47.1d |
|  | 1 | **AGGREGATE BASE COURSE** |  | 2026-04-04 | 2026-07-07 |  |  |  |
| MLTX-02-005-PR-9980 |  | PO for Aggregate Base Course | 5d | 2026-04-04 A | 2026-05-14 A | MLTX-02-005-EN-9030 | 100% |  |
| MLTX-02-005-PR-9990 |  | Material Delivery for Aggregate Base Course | 7d | 2026-07-07 A | 2026-07-07 A | MLTX-02-005-PR-9980 | 100% |  |
|  | 16 | **PACKAGE AC UNITS** |  | 2026-07-07 | 2026-07-07 |  |  |  |
| MLTX-02-005-PR-10450 |  | PO for Package AC Units | 5d | 2026-07-07 A | 2026-07-07 A | MLTX-02-005-PR-10370, MLTX-02-005-PR-10770, MLTX-02-005-EN-9960, MLTX-02-005-PR-10810, MLTX-02-005-PR-10790, MLTX-02-005-EN-9490, MLTX-02-005-PR-10090 | 100% |  |
| MLTX-02-005-PR-10460 |  | Material Delivery for Package AC Units | 15d | 2026-07-07 A | 2026-07-07 A | MLTX-02-005-PR-10450 | 100% |  |
|  | 17 | **AIR DIFUSSERS/GRILLS** |  | 2026-11-23 | 2027-01-09 |  |  |  |
| MLTX-02-005-PR-10470 |  | PO for Air Difussers/Grills | 15d | 2026-11-23 | 2026-12-10 | MLTX-02-005-PR-10370, MLTX-02-005-EN-9510, MLTX-02-005-PR-10230, MLTX-02-005-PR-10030 |  | -47.1d |
| MLTX-02-005-PR-10480 |  | Material Delivery for Air Difussers/Grills | 25d | 2026-12-10 | 2027-01-09 | MLTX-02-005-PR-10470, MLTX-02-005-PR-10450 |  | -47.1d |
|  | 2 | **BITUMINOUS BASE & WEARING COURSE** |  | 2026-09-15 | 2026-09-21 |  |  |  |
| MLTX-02-005-PR-10000 |  | PO for Bituminous Base & Wearing Course | 15d | 2026-09-15 A | 2026-09-15 A | MLTX-02-005-EN-9050 | 100% |  |

| ID | WBS | Task | Duration | Start | Finish | Predecessors | Complete | Total float |
| --- | --- | --- | --- | --- | --- | --- | --- | --- |
| MLTX-02-005-PR-10010 |  | Material Delivery for the Site | 27d | 2026-09-21 A | 2026-09-21 A | MLTX-02-005-PR-10000 | 100% |  |
|  | 3 | **INTERLOCKING PAVING** |  | 2026-09-15 | 2026-09-15 |  |  |  |
| MLTX-02-005-PR-10020 |  | PO for Interlocking Block Pavers | 15d | 2026-09-15 A | 2026-09-15 A | MLTX-02-005-EN-9110 | 100% |  |
| MLTX-02-005-PR-10030 |  | Material Delivery for Interlocking Block Pavers | 17d | 2026-09-15 A | 2026-09-15 A | MLTX-02-005-PR-10020, MLTX-02-005-PR-10010 | 100% |  |
|  | 4 | **MARKING PAINT** |  | 2026-11-23 | 2026-12-30 |  |  |  |
| MLTX-02-005-PR-10350 |  | PO for Marking Paint | 15d | 2026-11-23 | 2026-12-10 | MLTX-02-005-EN-9960, MLTX-02-005-PR-10000 |  | -39.1d |
| MLTX-02-005-PR-10360 |  | Material Delivery for Marking Paint | 17d | 2026-12-10 | 2026-12-30 | MLTX-02-005-PR-10350 |  | -39.1d |
|  | 18 | **GALVANIZED DUCTS** |  | 2026-11-23 | 2027-01-09 |  |  |  |
| MLTX-02-005-PR-10490 |  | PO for Galvanized Duct | 15d | 2026-11-23 | 2026-12-10 | MLTX-02-005-EN-9530, MLTX-02-005-PR-10370, MLTX-02-005-PR-10030 |  | -47.1d |
| MLTX-02-005-PR-10500 |  | Material Delivery for Galvanized Duct | 25d | 2026-12-10 | 2027-01-09 | MLTX-02-005-PR-10490, MLTX-02-005-PR-10470 |  | -47.1d |
|  | 19 | **EXHAUST FANS** |  | 2026-11-23 | 2027-01-09 |  |  |  |
| MLTX-02-005-PR-10510 |  | PO for Exhaust Fans | 15d | 2026-11-23 | 2026-12-10 | MLTX-02-005-EN-9550, MLTX-02-005-PR-10370, MLTX-02-005-PR-10030 |  | -49.1d |
| MLTX-02-005-PR-10520 |  | Material Delivery for Exhaust Fans | 25d | 2026-12-10 | 2027-01-09 | MLTX-02-005-PR-10510, MLTX-02-005-PR-10840 |  | -47.1d |
|  | 10 | **DISTRIBUTION BOARDS** |  | 2026-12-10 | 2027-01-03 |  |  |  |
| MLTX-02-005-PR-10630 |  | PO for Distribution Boards | 5d | 2026-12-10 | 2026-12-16 | MLTX-02-005-EN-9630, MLTX-02-005-PR-10370, MLTX-02-005-PR-10840, MLTX-02-005-PR-10450 |  | -47.1d |
| MLTX-02-005-PR-10640 |  | Material Delivery for Distribution Boards | 15d | 2026-12-16 | 2027-01-03 | MLTX-02-005-PR-10630, MLTX-02-005-PR-10450 |  | -42.1d |
|  | 11 | **POWER CABLES** |  | 2026-12-28 | 2027-02-07 |  |  |  |
| MLTX-02-005-PR-10650 |  | PO for Power Cables | 15d | 2026-12-28 | 2027-01-14 | MLTX-02-005-EN-9650, MLTX-02-005-PR-10630, MLTX-02-005-PR-10450, MLTX-02-005-PR-10820, MLTX-02-005-PR-10200 |  | -57.1d |
| MLTX-02-005-PR-10660 |  | Material Delivery for Power Cables | 20d | 2027-01-14 | 2027-02-07 | MLTX-02-005-PR-10650, MLTX-02-005-PR-10800 |  | -57.1d |
|  | 12 | **LIGHT FIXTURES** |  | 2026-07-07 | 2027-02-07 |  |  |  |
| MLTX-02-005-PR-10670 |  | PO for Light Fixtures | 5d | 2026-07-07 A | 2026-07-07 A | MLTX-02-005-EN-9650, MLTX-02-005-EN-9280, MLTX-02-005-EN-9670, MLTX-02-005-PR-9980 | 100% |  |
| MLTX-02-005-PR-10680 |  | Material Delivery for Light Fixtures | 20d | 2027-01-14 | 2027-02-07 | MLTX-02-005-PR-10670, MLTX-02-005-PR-10440, MLTX-02-005-PR-10650, MLTX-02-005-PR-10920 |  | -57.1d |
|  | 13 | **CCTV MATERIALS** |  | 2026-11-23 | 2027-02-14 |  |  |  |
| MLTX-02-005-PR-10690 |  | PO for CCTV | 15d | 2026-11-23 | 2026-12-10 | MLTX-02-005-EN-9690, MLTX-02-005-PR-10670, MLTX-02-005-PR-9980 |  | -63.1d |
| MLTX-02-005-PR-10700 |  | Material Delivery for CCTV | 15d | 2027-01-27 | 2027-02-14 | MLTX-02-005-PR-10640, MLTX-02-005-PR-10800, MLTX-02-005-PR-10460, MLTX-02-005-PR-10690, MLTX-02-005-PR-10820, MLTX-02-005-PR-10780, MLTX-02-005-PR-10520, MLTX-02-005-PR-10480, MLTX-02-005-PR-10360, MLTX-02-005-PR-10500, MLTX-02-005-PR-10720 |  | -63.1d |
|  | 14 | **POWER OUTLETS/SWITCHES** |  | 2026-12-10 | 2027-01-27 |  |  |  |
| MLTX-02-005-PR-10710 |  | PO for Power Outlets/Switches | 16d | 2026-12-10 | 2026-12-29 | MLTX-02-005-PR-10690, MLTX-02-005-PR-10380, MLTX-02-005-EN-9710, MLTX-02-005-PR-10320, MLTX-02-005-PR-10300 |  | -63.1d |
| MLTX-02-005-PR-10720 |  | Material Delivery for Power Outlets/Switches | 25d | 2026-12-29 | 2027-01-27 | MLTX-02-005-PR-10710, MLTX-02-005-PR-10100 |  | -63.1d |
|  | LSC | **LANDSCAPE WORKS** |  | 2026-05-16 | 2027-02-06 |  |  |  |
|  | 7 | **INTERLOCKING PAVING** |  | 2026-08-26 | 2026-08-26 |  |  |  |
| MLTX-02-005-PR-10750 |  | PO for Interlocking Block Pavers | 5d | 2026-08-26 A | 2026-08-26 A | MLTX-02-005-EN-9750 | 100% |  |
| MLTX-02-005-PR-10760 |  | Material Delivery for Interlocking Block Pavers | 12d | 2026-08-26 A | 2026-08-26 A | MLTX-02-005-PR-10750 | 100% |  |
|  | 9 | **CURBSTONE** |  | 2026-07-28 | 2026-07-28 |  |  |  |
| MLTX-02-005-PR-10890 |  | PO for Curbstone | 5d | 2026-07-28 A | 2026-07-28 A | MLTX-02-005-EN-9850 | 100% |  |
| MLTX-02-005-PR-10900 |  | Material Delivery for Curbstone | 12d | 2026-07-28 A | 2026-07-28 A | MLTX-02-005-PR-10890 | 100% |  |
|  | 1 | **PAVEMENT MARKING** |  | 2026-12-29 | 2027-02-06 |  |  |  |
| MLTX-02-005-PR-10040 |  | PO for Pavement Markings | 13d | 2026-12-29 | 2027-01-13 | MLTX-02-005-EN-9120, MLTX-02-005-PR-10710 |  | -48.1d |
| MLTX-02-005-PR-10050 |  | Material Delivery for Pavement Markings | 20d | 2027-01-13 | 2027-02-06 | MLTX-02-005-PR-10040, MLTX-02-005-PR-10100 |  | -48.1d |
|  | 2 | **TRAFFIC SIGNS** |  | 2026-10-13 | 2026-11-09 |  |  |  |
| MLTX-02-005-PR-10060 |  | PO for Traffic Signs | 15d | 2026-10-13 A | 2026-10-13 A | MLTX-02-005-PR-10910, MLTX-02-005-EN-9090 | 100% |  |
| MLTX-02-005-PR-10080 |  | Material Delivery for Traffic Signs | 5d | 2026-11-09 A | 2026-11-09 A | MLTX-02-005-PR-10060 | 100% |  |
|  | 3 | **IRRIGATION PIPES/SPRINKLERS** |  | 2026-06-17 | 2026-07-21 |  |  |  |
| MLTX-02-005-PR-10090 |  | PO for Irrigation Pipes/Sprinkles | 5d | 2026-06-17 A | 2026-06-17 A | MLTX-02-005-PR-10250 | 100% |  |
| MLTX-02-005-PR-10100 |  | Material Delivery for Irrigation Pipes/Sprinkles | 8d | 2026-07-21 A | 2026-07-21 A | MLTX-02-005-PR-10090 | 100% |  |
|  | 5 | **AGRICULTURE SOIL** |  | 2026-10-01 | 2026-10-03 |  |  |  |
| MLTX-02-005-PR-10850 |  | PO for Agriculture Soil | 15d | 2026-10-01 A | 2026-10-01 A | MLTX-02-005-EN-9810, MLTX-02-005-PR-10870 | 100% |  |
| MLTX-02-005-PR-10860 |  | Material Delivery for Agriculture Soil | 22d | 2026-10-03 A | 2026-10-03 A | MLTX-02-005-PR-10850 | 100% |  |
|  | 8 | **TRACK SURFACE** |  | 2026-05-16 | 2027-01-16 |  |  |  |
| MLTX-02-005-PR-10870 |  | PO for Track Surface | 5d | 2026-05-16 A | 2026-05-19 A | MLTX-02-005-EN-8140, MLTX-02-005-EN-10850, MLTX-02-005-EN-9120 | 100% |  |
| MLTX-02-005-PR-10880 |  | Material Delivery for Track Surface | 2d | 2027-01-13 | 2027-01-16 | MLTX-02-005-PR-10980, MLTX-02-005-PR-10040, MLTX-02-005-EN-9830, MLTX-02-005-PR-10870 |  | -20.1d |
|  | 10 | **GRASS/TREES** |  | 2026-05-17 | 2026-12-22 |  |  |  |
| MLTX-02-005-PR-10910 |  | PO for Grass/Trees | 5d | 2026-05-17 A | 2026-05-20 A | MLTX-02-005-PR-10870, MLTX-02-005-EN-9870 | 100% |  |
| MLTX-02-005-PR-10920 |  | Material Delivery for Grass/Trees | 25d | 2026-11-23 | 2026-12-22 | MLTX-02-005-PR-10850, MLTX-02-005-PR-10910, MLTX-02-005-PR-10060 |  | -37.1d |
|  | 6 | **CABLES** |  | 2026-08-26 | 2026-08-26 |  |  |  |
| MLTX-02-005-PR-10730 |  | PO for Cables | 5d | 2026-08-26 A | 2026-08-26 A | MLTX-02-005-EN-9730 | 100% |  |
| MLTX-02-005-PR-10740 |  | Material Delivery for Cables | 15d | 2026-08-26 A | 2026-08-26 A | MLTX-02-005-PR-10730, MLTX-02-005-PR-10870 | 100% |  |
|  | LLI | **LONG LEAD ITEM** |  | 2026-07-07 | 2026-12-29 |  |  |  |
|  | PLG | **PLAYGROUND WORKS** |  | 2026-10-13 | 2026-12-29 |  |  |  |
|  | 6 | **STEEL TENSION CABLES** |  | 2026-10-13 | 2026-12-23 |  |  |  |
| MLTX-02-005-PR-10550 |  | PO for Steel Tension Cables | 7d | 2026-10-13 A | 2026-10-13 A | MLTX-02-005-EN-9880, MLTX-02-005-PR-10610 | 100% |  |
| MLTX-02-005-PR-10930 |  | Material Fabrication for Steel Tension Cables | 10d | 2026-10-13 A | 2026-10-13 A | MLTX-02-005-PR-10550, MLTX-02-005-PR-10610 | 100% |  |
| MLTX-02-005-PR-10560 |  | Material Delivery for Steel Tension Cables | 16d | 2026-11-23 | 2026-12-12 | MLTX-02-005-PR-10930, MLTX-02-005-PR-10590 |  | -38.1d |
| MLTX-02-005-PR-10970 |  | Staging time | 10d | 2026-12-12 | 2026-12-23 | MLTX-02-005-PR-10560, MLTX-02-005-PR-10960 |  | -38.1d |
|  | 7 | **EMERGENCY DOORS** |  | 2026-10-13 | 2026-12-28 |  |  |  |
| MLTX-02-005-PR-10570 |  | PO for Emergency Doors | 10d | 2026-10-13 A | 2026-10-13 A | MLTX-02-005-EN-9890, MLTX-02-005-PR-9970 | 100% |  |
| MLTX-02-005-PR-10940 |  | Material Fabrication for Emergency Doors | 20d | 2026-10-13 A | 2026-10-14 A | MLTX-02-005-PR-10570, MLTX-02-005-PR-9940 | 100% |  |
| MLTX-02-005-PR-10580 |  | Material Delivery for Emergency Doors | 25d | 2026-11-23 | 2026-12-22 | MLTX-02-005-PR-10940, MLTX-02-005-PR-10310 |  | -6.1d |
| MLTX-02-005-PR-10980 |  | Staging time | 5d | 2026-12-22 | 2026-12-28 | MLTX-02-005-PR-10580, MLTX-02-005-PR-9950 |  | -6.1d |
|  | 8 | **PRESSURE UNITS** |  | 2026-10-13 | 2026-12-28 |  |  |  |
| MLTX-02-005-PR-10590 |  | PO for Pressure Units | 10d | 2026-10-13 A | 2026-10-13 A | MLTX-02-005-EN-9900, MLTX-02-005-PR-10610 | 100% |  |

| ID | WBS | Task | Duration | Start | Finish | Predecessors | Complete | Total float |
| --- | --- | --- | --- | --- | --- | --- | --- | --- |
| MLTX-02-005-PR-10950 |  | Material Fabrication for Pressure Units | 20d | 2026-10-13 A | 2026-10-14 A | MLTX-02-005-PR-10590, MLTX-02-005-PR-9960 | 100% |  |
| MLTX-02-005-PR-10600 |  | Material Delivery for Pressure Units | 25d | 2026-11-23 | 2026-12-22 | MLTX-02-005-PR-10950, MLTX-02-005-PR-10960 |  | -29.1d |
| MLTX-02-005-PR-10990 |  | Staging time | 5d | 2026-12-22 | 2026-12-28 | MLTX-02-005-PR-10600, MLTX-02-005-PR-10620 |  | -29.1d |
|  | 9 | **AIR LOCK DOORS** |  | 2026-10-13 | 2026-12-29 |  |  |  |
| MLTX-02-005-PR-10610 |  | PO for Lock Doors | 10d | 2026-10-13 A | 2026-10-13 A | MLTX-02-005-EN-9910 | 100% |  |
| MLTX-02-005-PR-10960 |  | Material Fabrication for Lock Doors | 20d | 2026-10-13 A | 2026-10-13 A | MLTX-02-005-PR-10610, MLTX-02-005-PR-9960 | 100% |  |
| MLTX-02-005-PR-10620 |  | Material Delivery for Lock Doors | 25d | 2026-11-23 | 2026-12-22 | MLTX-02-005-PR-10960, MLTX-02-005-PR-11010 |  | -37.1d |
| MLTX-02-005-PR-11000 |  | Staging time | 5d | 2026-12-23 | 2026-12-29 | MLTX-02-005-PR-10620, MLTX-02-005-PR-10920, MLTX-02-005-PR-10970 |  | -38.1d |
|  | LSC | **LANDSCAPE WORKS** |  | 2026-07-07 | 2026-09-20 |  |  |  |
|  | 4 | **LIGHT POLES** |  | 2026-07-07 | 2026-09-20 |  |  |  |
| MLTX-02-005-PR-9940 |  | PO for Lighting poles | 10d | 2026-07-07 A | 2026-07-07 A | MLTX-02-005-EN-8980, MLTX-02-005-EN-9730 | 100% |  |
| MLTX-02-005-PR-9950 |  | Material Fabrication for Lighting poles | 30d | 2026-08-26 A | 2026-08-26 A | MLTX-02-005-PR-9940, MLTX-02-005-PR-10760, MLTX-02-005-PR-10730 | 100% |  |
| MLTX-02-005-PR-11010 |  | Staging time | 15d | 2026-09-20 A | 2026-09-20 A | MLTX-02-005-PR-9960 | 100% |  |
| MLTX-02-005-PR-9960 |  | Material Delivery for Lighting poles | 30d | 2026-09-20 A | 2026-09-20 A | MLTX-02-005-PR-9950 | 100% |  |
|  | T & C | **TESTING & COMMISSIONING** |  | 2027-02-11 | 2027-03-21 |  |  |  |
| MLTX-02-005-TC-11910 |  | Testing and Commissioning for MEP Works for Landscape Works | 21d | 2027-02-11 | 2027-03-09 | MLTX-02-005-CN-11940, MLTX-02-005-CN-11910 FF, MLTX-02-005-CN-11920 FF, MLTX-02-005-CN-11930 FF, MLTX-02-005-CN-12040 FF, MLTX-02-005-CN-12480 FF, MLTX-02-005-CN-13220 FF, MLTX-02-005-CN-12270 FF, MLTX-02-005-EN-12090 |  | -55.1d |
| MLTX-02-005-TC-11890 |  | Testing and Commissioning for MEP Works for Playground Area | 18d | 2027-02-24 | 2027-03-21 | MLTX-02-005-CN-13220, MLTX-02-005-CN-12340, MLTX-02-005-CN-12420, MLTX-02-005-CN-12310, MLTX-02-005-CN-12320, MLTX-02-005-CN-11960 FF, MLTX-02-005-CN-12270 FF, MLTX-02-005-CN-12170 FF, MLTX-02-005-CN-12220 FF, MLTX-02-005-CN-12210 FF, MLTX-02-005-CN-12150, MLTX-02-005-PR-10050, MLTX-02-005-CN-12120 |  | -63.1d |
| MLTX-02-005-TC-11900 |  | Testing and Commissioning for MEP Works for Toilet/Service Building | 7d | 2027-03-01 | 2027-03-09 | MLTX-02-005-CN-12480, MLTX-02-005-CN-12700, MLTX-02-005-CN-12950, MLTX-02-005-CN-13160, MLTX-02-005-CN-12810, MLTX-02-005-CN-12960, MLTX-02-005-CN-12980, MLTX-02-005-CN-12730, MLTX-02-005-CN-12970, MLTX-02-005-CN-13270, MLTX-02-005-CN-12910, MLTX-02-005-CN-13180, MLTX-02-005-CN-13260, MLTX-02-005-CN-13220, MLTX-02-005-CN-12770, MLTX-02-005-CN-12820, MLTX-02-005-CN-12840, MLTX-02-005-CN-12890, MLTX-02-005-CN-12870, MLTX-02-005-CN-12990 FF, MLTX-02-005-CN-13040 FF, MLTX-02-005-CN-12670 FF, MLTX-02-005-CN-13060 FF, MLTX-02-005-CN-12710 FF, MLTX-02-005-CN-12270 FF, MLTX-02-005-CN-12800, MLTX-02-005-PR-10400, MLTX-02-005-PR-10420, MLTX-02-005-CN-12720, MLTX-02-005-CN-12780, MLTX-02-005-CN-12750, MLTX-02-005-PR-10440, MLTX-02-005-EN-11460, MLTX-02-005-EN-12060, MLTX-02-005-EN-11480, MLTX-02-005-CN-14740, MLTX-02-005-CN-12190, MLTX-02-005-CN-13030, MLTX-02-005-CN-13140, MLTX-02-005-PR-10220, MLTX-02-005-EN-11080, MLTX-02-005-CN-13120 |  | -55.1d |
|  | 3 | **DAMMAM** |  | 2026-03-04 | 2027-03-23 |  |  |  |
|  | MOB | **MOBILIZATION** |  | 2026-03-04 | 2026-04-04 |  |  |  |
|  | SURV | **TOPOGRAPHIC SURVEY** |  | 2026-03-04 | 2026-03-08 |  |  |  |
| MLTX-02-005-MB-2100 |  | Site Survey Works | 5d | 2026-03-04 A | 2026-03-08 A | MLTX-02-005-MS-1010 | 100% |  |
|  | OFFICE | **SITE FACILITIES & OFFICES** |  | 2026-03-04 | 2026-04-02 |  |  |  |
| MLTX-02-005-MB-2010 |  | Site Layout Plan | 5d | 2026-03-04 A | 2026-03-08 A | MLTX-02-005-MS-1010 | 100% |  |
| MLTX-02-005-MB-2020 |  | Clear & Grub for Offices & Access Road | 3d | 2026-03-09 A | 2026-03-11 A | MLTX-02-005-MB-2010 | 100% |  |
| MLTX-02-005-MB-2030 |  | Construct Site Access Roads | 4d | 2026-03-09 A | 2026-03-12 A | MLTX-02-005-MB-2010 | 100% |  |
| MLTX-02-005-MB-2040 |  | Construct Temporary Fence | 7d | 2026-03-12 A | 2026-03-19 A | MLTX-02-005-MB-2020 | 100% |  |
| MLTX-02-005-MB-2050 |  | Construct Site Offices & Storage | 14d | 2026-03-14 A | 2026-04-01 A | MLTX-02-005-MB-2030, MLTX-02-005-MB-2040 | 100% |  |
| MLTX-02-005-MB-2060 |  | Install Project Signs | 8d | 2026-03-14 A | 2026-03-25 A | MLTX-02-005-MB-2030 | 100% |  |
| MLTX-02-005-MB-2070 |  | Install Site Facilities | 4d | 2026-03-24 A | 2026-03-28 A | MLTX-02-005-MB-2040 | 100% |  |
| MLTX-02-005-MB-2080 |  | Electrical Works & Connections | 6d | 2026-03-24 A | 2026-03-30 A | MLTX-02-005-MB-2040, MLTX-02-005-MB-2070 | 100% |  |
| MLTX-02-005-MB-2090 |  | Construct Parking Sheds | 6d | 2026-03-24 A | 2026-03-30 A | MLTX-02-005-MB-2040, MLTX-02-005-MB-2070 | 100% |  |
| MLTX-02-005-MB-1990 |  | Equipment Mobalization | 7d | 2026-03-26 A | 2026-04-02 A | MLTX-02-005-MB-2060 | 100% |  |
| MLTX-02-005-MB-1980 |  | Manpower Mobalization | 5d | 2026-03-29 A | 2026-04-02 A | MLTX-02-005-MB-2070 | 100% |  |
|  | PRELI | **PRELIMINARY SUBMITTALS** |  | 2026-03-09 | 2026-04-04 |  |  |  |
|  | P&S | **PREPARATIONS & SUBMITTAL BY CONTRACTORS** |  | 2026-03-09 | 2026-03-19 |  |  |  |
| MLTX-02-005-MB-2000 |  | Preparation and Submittal of Detailed Work Order Programme (Baseline) | 10d | 2026-03-09 A | 2026-03-19 A | MLTX-02-005-MB-2010 | 100% |  |
| MLTX-02-005-MB-2110 |  | Preparation and Submittal of Project Execution Plan | 8d | 2026-03-09 A | 2026-03-17 A | MLTX-02-005-MB-2010 | 100% |  |
| MLTX-02-005-MB-2120 |  | Submission of Contractor Project Quality Plan | 8d | 2026-03-09 A | 2026-03-17 A | MLTX-02-005-MB-2010, MLTX-02-005-MB-2110 | 100% |  |
| MLTX-02-005-MB-2130 |  | Submission of Construction Safety & Environmental Management Plan | 8d | 2026-03-09 A | 2026-03-17 A | MLTX-02-005-MB-2010, MLTX-02-005-MB-2110 | 100% |  |
| MLTX-02-005-MB-2140 |  | Preparation and Submittal of Organization Chart | 8d | 2026-03-09 A | 2026-03-17 A | MLTX-02-005-MB-2010, MLTX-02-005-MB-2110 | 100% |  |
| MLTX-02-005-MB-2150 |  | Preparation and Submittal of Communication Plan | 8d | 2026-03-09 A | 2026-03-17 A | MLTX-02-005-MB-2010, MLTX-02-005-MB-2110 | 100% |  |
|  | APP | **APPROVALS BY EMPLOYERS** |  | 2026-03-18 | 2026-04-04 |  |  |  |
| MLTX-02-005-MB-2170 |  | Approval of Project Execution Plan | 10d | 2026-03-18 A | 2026-04-01 A | MLTX-02-005-MB-2110 | 100% |  |
| MLTX-02-005-MB-2180 |  | Approval of Contractor Project Quality Plan | 10d | 2026-03-18 A | 2026-04-01 A | MLTX-02-005-MB-2120, MLTX-02-005-MB-2170 | 100% |  |
| MLTX-02-005-MB-2190 |  | Approval of Construction Safety & Environmental Management Plan | 10d | 2026-03-18 A | 2026-04-01 A | MLTX-02-005-MB-2130, MLTX-02-005-MB-2170 | 100% |  |
| MLTX-02-005-MB-2200 |  | Approval of Organization Chart | 10d | 2026-03-18 A | 2026-04-01 A | MLTX-02-005-MB-2140, MLTX-02-005-MB-2170 | 100% |  |
| MLTX-02-005-MB-2210 |  | Approval of Communication Plan | 10d | 2026-03-18 A | 2026-04-01 A | MLTX-02-005-MB-2150, MLTX-02-005-MB-2170 | 100% |  |
| MLTX-02-005-MB-2160 |  | Approval of Detailed Work Order Programme (Baseline) | 10d | 2026-03-24 A | 2026-04-04 A | MLTX-02-005-MB-2000 | 100% |  |
|  | ENGG | **ENGINEERING** |  | 2026-03-08 | 2026-11-08 |  |  |  |
|  | SD | **SHOP DRAWINGS** |  | 2026-03-08 | 2026-11-08 |  |  |  |
|  | SUB | **SHOP DRAWINGS SUBMISSION** |  | 2026-03-08 | 2026-11-08 |  |  |  |
|  | 2 | **SHOP DRAWING SUBMITTALS FOR EARTHING WORKS** |  | 2026-03-09 | 2026-03-14 |  |  |  |
| MLTX-02-005-EN-12100 |  | Shop DWG Submittal for Layout Plan | 15d | 2026-03-09 A | 2026-03-14 A | MLTX-02-005-MB-2100 | 100% |  |
| MLTX-02-005-EN-12110 |  | Shop DWG Submittal for Setting Out | 15d | 2026-03-09 A | 2026-03-14 A | MLTX-02-005-MB-2100 | 100% |  |
| MLTX-02-005-EN-12120 |  | Shop DWG Submittal for Grading Layout Plan | 15d | 2026-03-09 A | 2026-03-14 A | MLTX-02-005-EN-15540, MLTX-02-005-MB-2100 | 100% |  |
| MLTX-02-005-EN-12130 |  | Shop DWG Submittal for Curb Setting Out Points | 15d | 2026-03-09 A | 2026-03-14 A | MLTX-02-005-MB-2100 | 100% |  |
| MLTX-02-005-EN-12140 |  | Shop DWG Submittal for Signing & Marking Layout Plan | 15d | 2026-03-09 A | 2026-03-14 A | MLTX-02-005-MB-2100 | 100% |  |
| MLTX-02-005-EN-12150 |  | Shop DWG Submittal for Standards Details | 15d | 2026-03-09 A | 2026-03-14 A | MLTX-02-005-MB-2100 | 100% |  |
|  | ROAD | **SHOP DRAWING SUBMITTALS FOR SERVICE/TOILET WORKS** |  | 2026-03-09 | 2026-07-08 |  |  |  |
|  | 2 | **ARCHITECTURE WORKS** |  | 2026-03-09 | 2026-03-14 |  |  |  |
| MLTX-02-005-EN-12480 |  | Shop DWG Submittal for Floor Plan | 15d | 2026-03-09 A | 2026-03-14 A | MLTX-02-005-EN-12110 SS, MLTX-02-005-EN-12100 SS, MLTX-02-005-EN-12130 | 100% |  |
| MLTX-02-005-EN-12490 |  | Shop DWG Submittal for Elevations | 15d | 2026-03-09 A | 2026-03-14 A | MLTX-02-005-EN-12480 SS, MLTX-02-005-EN-12100 | 100% |  |
| MLTX-02-005-EN-12500 |  | Shop DWG Submittal for Sections | 15d | 2026-03-09 A | 2026-03-14 A | MLTX-02-005-EN-12490 SS, MLTX-02-005-EN-12120 SS | 100% |  |
| MLTX-02-005-EN-12510 |  | Shop DWG Submittal for Ceiling Plan | 15d | 2026-03-09 A | 2026-03-14 A | MLTX-02-005-EN-12500 SS | 100% |  |
| MLTX-02-005-EN-12520 |  | Shop DWG Submittal for Finishes Plan | 15d | 2026-03-09 A | 2026-03-14 A | MLTX-02-005-EN-12510 SS, MLTX-02-005-EN-15570 | 100% |  |
| MLTX-02-005-EN-12530 |  | Shop DWG Submittal for Toilet Details | 15d | 2026-03-09 A | 2026-03-14 A | MLTX-02-005-EN-12520 SS | 100% |  |
| MLTX-02-005-EN-12540 |  | Shop DWG Submittal for Doors/Windows Schedule | 15d | 2026-03-09 A | 2026-03-14 A | MLTX-02-005-EN-12530 SS | 100% |  |
|  | 1 | **STRUCTURE WORKS** |  | 2026-03-15 | 2026-03-19 |  |  |  |
| MLTX-02-005-EN-12550 |  | Shop DWG Submittal for Foundation Plan | 15d | 2026-03-15 A | 2026-03-19 A | MLTX-02-005-EN-12540, MLTX-02-005-EN-15580 | 100% |  |

| ID | WBS | Task | Duration | Start | Finish | Predecessors | Complete |
| --- | --- | --- | --- | --- | --- | --- | --- |
| MLTX-02-005-EN-12560 |  | Shop DWG Submittal for Ground Floor Framing Plan | 21d | 2026-03-15 A | 2026-03-19 A | MLTX-02-005-EN-12550 SS | 100% |
| MLTX-02-005-EN-12570 |  | Shop DWG Submittal for Sections/Details | 21d | 2026-03-15 A | 2026-03-19 A | MLTX-02-005-EN-12540 | 100% |
|  | 3 | **MECHANCAL WORKS** |  | 2026-03-12 | 2026-07-08 |  |  |
| MLTX-02-005-EN-12620 |  | Shop DWG Submittal for Water Supply Layout | 21d | 2026-03-12 A | 2026-05-31 A | MLTX-02-005-EN-12540, MLTX-02-005-EN-12770 | 100% |
| MLTX-02-005-EN-12630 |  | Shop DWG Submittal for Water Supply Details | 21d | 2026-03-12 A | 2026-05-31 A | MLTX-02-005-EN-12540, MLTX-02-005-EN-12770 | 100% |
| MLTX-02-005-EN-12640 |  | Shop DWG Submittal for Drainage Layout | 21d | 2026-03-12 A | 2026-05-31 A | MLTX-02-005-EN-12540, MLTX-02-005-EN-12770 | 100% |
| MLTX-02-005-EN-12650 |  | Shop DWG Submittal for Drainage Details | 21d | 2026-03-12 A | 2026-05-31 A | MLTX-02-005-EN-12540, MLTX-02-005-EN-12770 | 100% |
| MLTX-02-005-EN-12580 |  | Shop DWG Submittal for HVAC Plan | 21d | 2026-07-08 A | 2026-07-08 A | MLTX-02-005-EN-12540, MLTX-02-005-EN-15550, MLTX-02-005-EN-12770 | 100% |
| MLTX-02-005-EN-12590 |  | Shop DWG Submittal for Exhaust Air Plan | 21d | 2026-07-08 A | 2026-07-08 A | MLTX-02-005-EN-12540, MLTX-02-005-EN-12770, MLTX-02-005-EN-13000, MLTX-02-005-EN-12190, MLTX-02-005-EN-12180 | 100% |
| MLTX-02-005-EN-12600 |  | Shop DWG Submittal for HVAC Equipment Schedule | 21d | 2026-07-08 A | 2026-07-08 A | MLTX-02-005-EN-12540, MLTX-02-005-EN-12770 | 100% |
| MLTX-02-005-EN-12610 |  | Shop DWG Submittal for Fire Fighting Layout | 21d | 2026-07-08 A | 2026-07-08 A | MLTX-02-005-EN-12540 | 100% |
| MLTX-02-005-EN-13190 |  | Shop DWG Submittal for Dut Routing Layout | 21d | 2026-07-08 A | 2026-07-08 A | MLTX-02-005-EN-12540, MLTX-02-005-EN-12770 | 100% |
| MLTX-02-005-EN-13200 |  | Shop DWG Submittal for Diffusers Layout | 21d | 2026-07-08 A | 2026-07-08 A | MLTX-02-005-EN-12540, MLTX-02-005-EN-12770 | 100% |
|  | 4 | **ELECTRICAL WORKS** |  | 2026-03-12 | 2026-05-04 |  |  |
| MLTX-02-005-EN-12680 |  | Shop DWG Submittal for Power Single Line Diagram | 21d | 2026-03-12 A | 2026-05-04 A | MLTX-02-005-EN-12540, MLTX-02-005-EN-12970 | 100% |
| MLTX-02-005-EN-12690 |  | Shop DWG Submittal for Panel Board Schedules | 15d | 2026-03-12 A | 2026-05-04 A | MLTX-02-005-EN-12540 | 100% |
| MLTX-02-005-EN-12720 |  | Shop DWG Submittal for Cable Tray Installation Details | 15d | 2026-03-12 A | 2026-05-04 A | MLTX-02-005-EN-15560, MLTX-02-005-EN-12710 SS | 100% |
| MLTX-02-005-EN-12730 |  | Shop DWG Submittal for Manhole & Ductbank Details | 15d | 2026-03-12 A | 2026-05-04 A | MLTX-02-005-EN-12720 SS | 100% |
| MLTX-02-005-EN-12660 |  | Shop DWG Submittal for Lighting Layout | 21d | 2026-03-15 A | 2026-03-19 A | MLTX-02-005-EN-12540, MLTX-02-005-EN-12970 | 100% |
| MLTX-02-005-EN-12670 |  | Shop DWG Submittal for Power Layout | 21d | 2026-03-15 A | 2026-03-19 A | MLTX-02-005-EN-12540, MLTX-02-005-EN-12970 | 100% |
| MLTX-02-005-EN-12700 |  | Shop DWG Submittal for Lighting Installation Details | 21d | 2026-03-15 A | 2026-03-19 A | MLTX-02-005-EN-12710 SS, MLTX-02-005-EN-12970 | 100% |
| MLTX-02-005-EN-12710 |  | Shop DWG Submittal for Power Installation Details | 15d | 2026-03-15 A | 2026-03-19 A | MLTX-02-005-EN-12690 SS | 100% |
| MLTX-02-005-EN-12740 |  | Shop DWG Submittal for Grounding Details | 15d | 2026-03-15 A | 2026-03-19 A | MLTX-02-005-EN-12730 SS | 100% |
| MLTX-02-005-EN-12750 |  | Shop DWG Submittal for Lightning Protection Details | 15d | 2026-03-15 A | 2026-03-19 A | MLTX-02-005-EN-12740 SS | 100% |
| MLTX-02-005-EN-12760 |  | Shop DWG Submittal for Fire Alarm Installation Details | 15d | 2026-03-15 A | 2026-03-19 A | MLTX-02-005-EN-12750 SS | 100% |
| MLTX-02-005-EN-12770 |  | Shop DWG Submittal for CCTV Details | 15d | 2026-03-15 A | 2026-03-19 A | MLTX-02-005-EN-12760 SS, MLTX-02-005-EN-12970 | 100% |
| MLTX-02-005-EN-12780 |  | Shop DWG Submittal for Grounding Layout | 15d | 2026-03-15 A | 2026-03-19 A | MLTX-02-005-EN-12760, MLTX-02-005-EN-15530 | 100% |
| MLTX-02-005-EN-12790 |  | Shop DWG Submittal for Lightning Protection System Layout | 15d | 2026-03-15 A | 2026-03-19 A | MLTX-02-005-EN-12780 SS | 100% |
| MLTX-02-005-EN-12800 |  | Shop DWG Submittal for Fire Alarm Layout | 15d | 2026-03-15 A | 2026-03-19 A | MLTX-02-005-EN-12790 SS | 100% |
| MLTX-02-005-EN-12810 |  | Shop DWG Submittal for Fire Alarm Riser Diagram | 15d | 2026-03-15 A | 2026-03-19 A | MLTX-02-005-EN-12800 SS | 100% |
| MLTX-02-005-EN-12820 |  | Shop DWG Submittal for CCTV Layout | 15d | 2026-03-15 A | 2026-03-15 A | MLTX-02-005-EN-12810 SS, MLTX-02-005-EN-12970 | 100% |
| MLTX-02-005-EN-12840 |  | Shop DWG Submittal for Telephone & Data Layout | 21d | 2026-03-15 A | 2026-03-19 A | MLTX-02-005-EN-12810, MLTX-02-005-EN-12970 | 100% |
| MLTX-02-005-EN-12850 |  | Shop DWG Submittal for Telephone & Data Riser Diagram | 21d | 2026-03-15 A | 2026-03-19 A | MLTX-02-005-EN-12840 SS, MLTX-02-005-EN-12540, MLTX-02-005-EN-12970 | 100% |
| MLTX-02-005-EN-12830 |  | Shop DWG Submittal for CCTV Riser Diagram | 15d | 2026-03-24 A | 2026-04-04 A | MLTX-02-005-EN-12820 SS, MLTX-02-005-EN-12970 | 100% |
|  | ELE | **SHOP DRAWINGS SUBMITTALS FOR PLAYGROUND WORKS** |  | 2026-03-08 | 2026-11-08 |  |  |
|  | 3 | **ARCHITECTURE WORKS** |  | 2026-03-08 | 2026-05-24 |  |  |
| MLTX-02-005-EN-13090 |  | Shop DWG Submittal for Doors/Windows Schedule | 21d | 2026-03-08 A | 2026-05-24 A | MLTX-02-005-EN-13080 SS | 100% |
| MLTX-02-005-EN-13050 |  | Shop DWG Submittal for Playground Plan/Layout | 15d | 2026-03-09 A | 2026-03-14 A | MLTX-02-005-MB-2100 | 100% |
| MLTX-02-005-EN-13060 |  | Shop DWG Submittal for Furniture & Marking | 15d | 2026-03-09 A | 2026-03-14 A | MLTX-02-005-EN-13050 SS | 100% |
| MLTX-02-005-EN-13070 |  | Shop DWG Submittal for Sections | 15d | 2026-03-09 A | 2026-03-14 A | MLTX-02-005-EN-13060 SS | 100% |
| MLTX-02-005-EN-13080 |  | Shop DWG Submittal for Interlock Pattern Plan | 21d | 2026-03-09 A | 2026-03-14 A | MLTX-02-005-EN-13070 SS | 100% |
| MLTX-02-005-EN-13120 |  | Shop DWG Submittal for Dome Internal Layout | 21d | 2026-03-09 A | 2026-03-14 A | MLTX-02-005-EN-13090 SS | 100% |
|  | 4 | **STRUCTURE WORKS** |  | 2026-03-14 | 2026-06-02 |  |  |
| MLTX-02-005-EN-13100 |  | Shop DWG Submittal for Air Dome System | 21d | 2026-03-14 A | 2026-05-10 A | MLTX-02-005-EN-13120 | 100% |
| MLTX-02-005-EN-13110 |  | Shop DWG Submittal for Foundation of Air Dome | 21d | 2026-03-14 A | 2026-06-02 A | MLTX-02-005-EN-13100 SS | 100% |
| MLTX-02-005-EN-13130 |  | Shop DWG Submittal for Anchor Bolt Layout of Air Dome | 21d | 2026-03-14 A | 2026-06-02 A | MLTX-02-005-EN-13110 SS | 100% |
|  | 5 | **AIR DOME SYSTEM** |  | 2026-03-14 | 2026-10-13 |  |  |
| MLTX-02-005-EN-13140 |  | Shop DWG Submittal for Air Dome Structural Layout | 21d | 2026-03-14 A | 2026-05-10 A | MLTX-02-005-EN-13130 SS | 100% |
| MLTX-02-005-EN-13150 |  | Shop DWG Submittal for Membrane Panel Layout | 21d | 2026-06-21 A | 2026-06-21 A | MLTX-02-005-EN-13140 SS | 100% |
| MLTX-02-005-EN-13160 |  | Shop DWG Submittal for Cable Tension Layout | 15d | 2026-10-13 A | 2026-10-13 A | MLTX-02-005-EN-13150 SS, MLTX-02-005-EN-12170 | 100% |
| MLTX-02-005-EN-13170 |  | Shop DWG Submittal for Airlock Door Details | 25d | 2026-10-13 A | 2026-10-13 A | MLTX-02-005-EN-13160 SS, MLTX-02-005-EN-13140 | 100% |
| MLTX-02-005-EN-13180 |  | Shop DWG Submittal for Emergency Exit Details | 30d | 2026-10-13 A | 2026-10-13 A | MLTX-02-005-EN-13170 SS, MLTX-02-005-EN-13140 | 100% |
|  | 6 | **SPORTS EQUIPMENT** |  | 2026-06-29 | 2026-06-29 |  |  |
| MLTX-02-005-EN-13210 |  | Shop DWG Submittal for Football Turf Installation | 21d | 2026-06-29 A | 2026-06-29 A | MLTX-02-005-EN-13140, MLTX-02-005-EN-16060 | 100% |
| MLTX-02-005-EN-13220 |  | Shop DWG Submittal for Basketball Court Marking | 21d | 2026-06-29 A | 2026-06-29 A | MLTX-02-005-EN-13210 SS | 100% |
| MLTX-02-005-EN-13230 |  | Shop DWG Submittal for Padel Court Structure | 21d | 2026-06-29 A | 2026-06-29 A | MLTX-02-005-EN-13220 SS | 100% |
|  | 1 | **MECHANCAL WORKS** |  | 2026-10-14 | 2026-10-14 |  |  |
| MLTX-02-005-EN-13030 |  | Shop DWG Submittal for HVAC Plan | 15d | 2026-10-14 A | 2026-10-14 A | MLTX-02-005-EN-13230 SS | 100% |
| MLTX-02-005-EN-13040 |  | Shop DWG Submittal for Exhaust Air Plan | 15d | 2026-10-14 A | 2026-10-14 A | MLTX-02-005-EN-13030 SS, MLTX-02-005-EN-12990 | 100% |
|  | 2 | **ELECTRICAL WORKS** |  | 2026-03-14 | 2026-11-08 |  |  |
| MLTX-02-005-EN-12990 |  | Shop DWG Submittal for Fire Alarm Layout | 21d | 2026-03-14 A | 2026-05-04 A | MLTX-02-005-EN-13140 | 100% |
| MLTX-02-005-EN-13000 |  | Shop DWG Submittal for Fire Alarm Riser Diagram | 21d | 2026-03-14 A | 2026-05-04 A | MLTX-02-005-EN-13140 | 100% |
| MLTX-02-005-EN-12920 |  | Shop DWG Submittal for Lighting Layout | 21d | 2026-08-25 A | 2026-08-25 A | MLTX-02-005-EN-13210 | 100% |
| MLTX-02-005-EN-12970 |  | Shop DWG Submittal for Fire Alarm Installation Details | 21d | 2026-08-25 A | 2026-08-25 A | MLTX-02-005-EN-12920, MLTX-02-005-EN-15940, MLTX-02-005-EN-15960, MLTX-02-005-EN-15950, MLTX-02-005-EN-15760 | 100% |
| MLTX-02-005-EN-12980 |  | Shop DWG Submittal for CCTV Details | 21d | 2026-08-25 A | 2026-08-25 A | MLTX-02-005-EN-12920 SS | 100% |
| MLTX-02-005-EN-13010 |  | Shop DWG Submittal for CCTV Layout | 21d | 2026-08-25 A | 2026-08-25 A | MLTX-02-005-EN-13000 SS, MLTX-02-005-EN-12970 | 100% |
| MLTX-02-005-EN-13020 |  | Shop DWG Submittal for CCTV Riser Diagram | 21d | 2026-08-25 A | 2026-08-25 A | MLTX-02-005-EN-13010 SS | 100% |
| MLTX-02-005-EN-12940 |  | Shop DWG Submittal for Power Single Line Diagram | 25d | 2026-10-14 A | 2026-10-14 A | MLTX-02-005-EN-12980 SS | 100% |
| MLTX-02-005-EN-12950 |  | Shop DWG Submittal for Panel Board Schedules | 25d | 2026-10-14 A | 2026-10-14 A | MLTX-02-005-EN-12940 SS | 100% |
| MLTX-02-005-EN-12930 |  | Shop DWG Submittal for Power Layout | 25d | 2026-11-08 A | 2026-11-08 A | MLTX-02-005-EN-12980 SS | 100% |

| ID | WBS | Task | Duration | Start | Finish | Predecessors | Complete |
| --- | --- | --- | --- | --- | --- | --- | --- |
| MLTX-02-005-EN-12960 |  | Shop DWG Submittal for Power Installation Details | 30d | 2026-11-08 A | 2026-11-08 A | MLTX-02-005-EN-12950 SS | 100% |
|  | EAR | **SHOP DRAWINGS SUBMITTALS FOR LANDSCAPE WORKS** |  | 2026-03-08 | 2026-07-30 |  |  |
|  | 3 | **ARCHITECTURE WORKS** |  | 2026-03-09 | 2026-03-19 |  |  |
| MLTX-02-005-EN-12860 |  | Shop DWG Submittal for Landscape Layout | 21d | 2026-03-09 A | 2026-03-14 A | MLTX-02-005-MB-2100, MLTX-02-005-EN-12890 | 100% |
| MLTX-02-005-EN-12870 |  | Shop DWG Submittal for Hardscape Plan | 21d | 2026-03-09 A | 2026-03-14 A | MLTX-02-005-MB-2100 | 100% |
| MLTX-02-005-EN-12890 |  | Shop DWG Submittal for Landscape Details | 15d | 2026-03-09 A | 2026-03-14 A | MLTX-02-005-MB-2100 | 100% |
| MLTX-02-005-EN-12880 |  | Shop DWG Submittal for Planting Plan | 15d | 2026-03-15 A | 2026-03-19 A | MLTX-02-005-EN-12890, MLTX-02-005-EN-12860 | 100% |
|  | 1 | **MECHANCAL WORKS** |  | 2026-03-08 | 2026-06-04 |  |  |
| MLTX-02-005-EN-12900 |  | Shop DWG Submittal for Irrigation Details | 21d | 2026-03-08 A | 2026-06-04 A | MLTX-02-005-MB-2100 | 100% |
| MLTX-02-005-EN-12910 |  | Shop DWG Submittal for Irrigation Layout | 21d | 2026-03-08 A | 2026-06-04 A | MLTX-02-005-MB-2100 | 100% |
|  | 2 | **ELECTRICAL WORKS** |  | 2026-07-30 | 2026-07-30 |  |  |
| MLTX-02-005-EN-12160 |  | Shop DWG Submittal for Lighting General Arrangement | 30d | 2026-07-30 A | 2026-07-30 A | MLTX-02-005-MB-2100 | 100% |
| MLTX-02-005-EN-12170 |  | Shop DWG Submittal for Lighting Network Layout | 30d | 2026-07-30 A | 2026-07-30 A | MLTX-02-005-MB-2100 | 100% |
| MLTX-02-005-EN-12180 |  | Shop DWG Submittal for Lighting Details | 30d | 2026-07-30 A | 2026-07-30 A | MLTX-02-005-MB-2100, MLTX-02-005-EN-12920 | 100% |
| MLTX-02-005-EN-12190 |  | Shop DWG Submittal for Lighting Single Line Diagram | 30d | 2026-07-30 A | 2026-07-30 A | MLTX-02-005-MB-2100, MLTX-02-005-EN-12920 | 100% |
|  | APP | **SHOP DRAWINGS APPROVALS** |  | 2026-03-14 | 2026-11-08 |  |  |
|  | 2 | **SHOP DRAWING APPROVAL FOR EARTHING WORKS** |  | 2026-03-15 | 2026-03-29 |  |  |
| MLTX-02-005-EN-15530 |  | Shop DWG Approval for Layout Plan | 21d | 2026-03-15 A | 2026-03-29 A | MLTX-02-005-EN-12100 | 100% |
| MLTX-02-005-EN-15540 |  | Shop DWG Approval for Setting Out | 10d | 2026-03-15 A | 2026-03-29 A | MLTX-02-005-EN-12110 | 100% |
| MLTX-02-005-EN-15550 |  | Shop DWG Approval for Grading Layout Plan | 16d | 2026-03-15 A | 2026-03-29 A | MLTX-02-005-EN-12120 | 100% |
| MLTX-02-005-EN-15560 |  | Shop DWG Approval for Curb Setting Out Points | 21d | 2026-03-15 A | 2026-03-29 A | MLTX-02-005-EN-12130 | 100% |
| MLTX-02-005-EN-15570 |  | Shop DWG Approval for Signing & Marking Layout Plan | 10d | 2026-03-15 A | 2026-03-29 A | MLTX-02-005-EN-12140 | 100% |
| MLTX-02-005-EN-15580 |  | Shop DWG Approval for Standards Details | 15d | 2026-03-15 A | 2026-03-29 A | MLTX-02-005-EN-12150 | 100% |
|  | ROAD | **SHOP DRAWING APPROVAL FOR SERVICE/TOILET WORKS** |  | 2026-03-15 | 2026-07-28 |  |  |
|  | 2 | **ARCHITECTURE WORKS** |  | 2026-03-15 | 2026-03-29 |  |  |
| MLTX-02-005-EN-15630 |  | Shop DWG Approval for Floor Plan | 30d | 2026-03-15 A | 2026-03-29 A | MLTX-02-005-EN-12480, MLTX-02-005-EN-15880, MLTX-02-005-EN-15890, MLTX-02-005-EN-15910 | 100% |
| MLTX-02-005-EN-15640 |  | Shop DWG Approval for Elevations | 30d | 2026-03-15 A | 2026-03-29 A | MLTX-02-005-EN-12490, MLTX-02-005-EN-15650 | 100% |
| MLTX-02-005-EN-15650 |  | Shop DWG Approval for Sections | 30d | 2026-03-15 A | 2026-03-29 A | MLTX-02-005-EN-12500, MLTX-02-005-EN-16210 | 100% |
| MLTX-02-005-EN-15660 |  | Shop DWG Approval for Ceiling Plan | 30d | 2026-03-15 A | 2026-03-29 A | MLTX-02-005-EN-12510, MLTX-02-005-EN-15650 | 100% |
| MLTX-02-005-EN-15670 |  | Shop DWG Approval for Finishes Plan | 30d | 2026-03-15 A | 2026-03-29 A | MLTX-02-005-EN-12520, MLTX-02-005-EN-15650 | 100% |
| MLTX-02-005-EN-15680 |  | Shop DWG Approval for Toilet Details | 30d | 2026-03-15 A | 2026-03-29 A | MLTX-02-005-EN-12530, MLTX-02-005-EN-15650 | 100% |
| MLTX-02-005-EN-15690 |  | Shop DWG Approval for Doors/Windows Schedule | 30d | 2026-03-15 A | 2026-03-29 A | MLTX-02-005-EN-12540, MLTX-02-005-EN-15650 | 100% |
|  | 1 | **STRUCTURE WORKS** |  | 2026-03-24 | 2026-04-04 |  |  |
| MLTX-02-005-EN-15700 |  | Shop DWG Approval for Foundation Plan | 15d | 2026-03-24 A | 2026-04-04 A | MLTX-02-005-EN-12550, MLTX-02-005-EN-15650 | 100% |
| MLTX-02-005-EN-15710 |  | Shop DWG Approval for Ground Floor Framing Plan | 21d | 2026-03-24 A | 2026-04-04 A | MLTX-02-005-EN-12560 | 100% |
| MLTX-02-005-EN-15720 |  | Shop DWG Approval for Sections/Details | 21d | 2026-03-24 A | 2026-04-04 A | MLTX-02-005-EN-12570 | 100% |
|  | 3 | **MECHANCAL WORKS** |  | 2026-03-18 | 2026-07-11 |  |  |
| MLTX-02-005-EN-15770 |  | Shop DWG Approval for Water Supply Layout | 21d | 2026-03-18 A | 2026-06-03 A | MLTX-02-005-EN-12620, MLTX-02-005-EN-15930 | 100% |
| MLTX-02-005-EN-15780 |  | Shop DWG Approval for Water Supply Details | 21d | 2026-03-18 A | 2026-06-03 A | MLTX-02-005-EN-12630, MLTX-02-005-EN-15930 | 100% |
| MLTX-02-005-EN-15790 |  | Shop DWG Approval for Drainage Layout | 21d | 2026-03-18 A | 2026-06-03 A | MLTX-02-005-EN-12640, MLTX-02-005-EN-15930, MLTX-02-005-EN-16140, MLTX-02-005-EN-16130, MLTX-02-005-EN-15810, MLTX-02-005-EN-15850 | 100% |
| MLTX-02-005-EN-15800 |  | Shop DWG Approval for Drainage Details | 21d | 2026-03-18 A | 2026-06-03 A | MLTX-02-005-EN-12650, MLTX-02-005-EN-15930 | 100% |
| MLTX-02-005-EN-15730 |  | Shop DWG Approval for HVAC Plan | 21d | 2026-07-11 A | 2026-07-11 A | MLTX-02-005-EN-12580, MLTX-02-005-EN-15930 | 100% |
| MLTX-02-005-EN-15740 |  | Shop DWG Approval for Exhaust Air Plan | 21d | 2026-07-11 A | 2026-07-11 A | MLTX-02-005-EN-12590, MLTX-02-005-EN-15930, MLTX-02-005-EN-16180, MLTX-02-005-EN-15600, MLTX-02-005-EN-12640 | 100% |
| MLTX-02-005-EN-15750 |  | Shop DWG Approval for HVAC Equipment Schedule | 21d | 2026-07-11 A | 2026-07-11 A | MLTX-02-005-EN-12600, MLTX-02-005-EN-15930 | 100% |
| MLTX-02-005-EN-15760 |  | Shop DWG Approval for Fire Fighting Layout | 21d | 2026-07-11 A | 2026-07-11 A | MLTX-02-005-EN-12610 | 100% |
| MLTX-02-005-EN-16320 |  | Shop DWG Approval for Duct Routing Layout | 21d | 2026-07-11 A | 2026-07-11 A | MLTX-02-005-EN-13190, MLTX-02-005-EN-15930 | 100% |
| MLTX-02-005-EN-16330 |  | Shop DWG Approval for Diffusers Layout | 21d | 2026-07-11 A | 2026-07-11 A | MLTX-02-005-EN-13200, MLTX-02-005-EN-15930 | 100% |
|  | 4 | **ELECTRICAL WORKS** |  | 2026-03-18 | 2026-07-28 |  |  |
| MLTX-02-005-EN-15830 |  | Shop DWG Approval for Power Single Line Diagram | 21d | 2026-03-18 A | 2026-05-07 A | MLTX-02-005-EN-12680, MLTX-02-005-EN-12840 | 100% |
| MLTX-02-005-EN-15840 |  | Shop DWG Approval for Panel Board Schedules | 21d | 2026-03-18 A | 2026-05-07 A | MLTX-02-005-EN-12690, MLTX-02-005-EN-12660 | 100% |
| MLTX-02-005-EN-15870 |  | Shop DWG Approval for Cable Tray Installation Details | 21d | 2026-03-18 A | 2026-05-07 A | MLTX-02-005-EN-12720, MLTX-02-005-EN-12840 | 100% |
| MLTX-02-005-EN-15880 |  | Shop DWG Approval for Manhole & Ductbank Details | 21d | 2026-03-18 A | 2026-05-07 A | MLTX-02-005-EN-12730 | 100% |
| MLTX-02-005-EN-15810 |  | Shop DWG Approval for Lighting Layout | 21d | 2026-03-24 A | 2026-04-04 A | MLTX-02-005-EN-12660, MLTX-02-005-EN-12680 | 100% |
| MLTX-02-005-EN-15820 |  | Shop DWG Approval for Power Layout | 21d | 2026-03-24 A | 2026-04-04 A | MLTX-02-005-EN-12670, MLTX-02-005-EN-12660 | 100% |
| MLTX-02-005-EN-15850 |  | Shop DWG Approval for Lighting Installation Details | 21d | 2026-03-24 A | 2026-04-04 A | MLTX-02-005-EN-12700, MLTX-02-005-EN-12660 | 100% |
| MLTX-02-005-EN-15860 |  | Shop DWG Approval for Power Installation Details | 21d | 2026-03-24 A | 2026-04-04 A | MLTX-02-005-EN-12710, MLTX-02-005-EN-12660 | 100% |
| MLTX-02-005-EN-15890 |  | Shop DWG Approval for Grounding Details | 21d | 2026-03-24 A | 2026-04-04 A | MLTX-02-005-EN-12740 | 100% |
| MLTX-02-005-EN-15900 |  | Shop DWG Approval for Lightning Protection Details | 21d | 2026-03-24 A | 2026-04-04 A | MLTX-02-005-EN-12750, MLTX-02-005-EN-12840 | 100% |
| MLTX-02-005-EN-15910 |  | Shop DWG Approval for Fire Alarm Installation Details | 21d | 2026-03-24 A | 2026-04-04 A | MLTX-02-005-EN-12760 | 100% |
| MLTX-02-005-EN-15930 |  | Shop DWG Approval for Grounding Layout | 21d | 2026-03-24 A | 2026-04-04 A | MLTX-02-005-EN-12780, MLTX-02-005-EN-12820 | 100% |
| MLTX-02-005-EN-15940 |  | Shop DWG Approval for Lightning Protection System Layout | 21d | 2026-03-24 A | 2026-04-04 A | MLTX-02-005-EN-12790 | 100% |
| MLTX-02-005-EN-15950 |  | Shop DWG Approval for Fire Alarm Layout | 21d | 2026-03-24 A | 2026-04-04 A | MLTX-02-005-EN-12800 | 100% |
| MLTX-02-005-EN-15960 |  | Shop DWG Approval for Fire Alarm Riser Diagram | 21d | 2026-03-24 A | 2026-04-04 A | MLTX-02-005-EN-12810 | 100% |
| MLTX-02-005-EN-15970 |  | Shop DWG Approval for CCTV Layout | 30d | 2026-03-24 A | 2026-04-04 A | MLTX-02-005-EN-12820, MLTX-02-005-EN-12830 | 100% |
| MLTX-02-005-EN-15980 |  | Shop DWG Approval for CCTV Riser Diagram | 30d | 2026-03-24 A | 2026-04-04 A | MLTX-02-005-EN-12830, MLTX-02-005-EN-13010 | 100% |
| MLTX-02-005-EN-15990 |  | Shop DWG Approval for Telephone & Data Layout | 21d | 2026-03-24 A | 2026-04-04 A | MLTX-02-005-EN-12840, MLTX-02-005-EN-12850 | 100% |
| MLTX-02-005-EN-16000 |  | Shop DWG Approval for Telephone & Data Riser Diagram | 21d | 2026-03-24 A | 2026-04-04 A | MLTX-02-005-EN-12850, MLTX-02-005-EN-13010 | 100% |
| MLTX-02-005-EN-15920 |  | Shop DWG Approval for CCTV Details | 30d | 2026-07-28 A | 2026-07-28 A | MLTX-02-005-EN-12770, MLTX-02-005-EN-12820 | 100% |
|  | ELE | **SHOP DRAWINGS APPROVAL FOR PLAYGROUND WORKS** |  | 2026-03-14 | 2026-11-08 |  |  |
|  | 3 | **ARCHITECTURE WORKS** |  | 2026-03-14 | 2026-05-19 |  |  |

| ID | WBS | Task | Duration | Start | Finish | Predecessors | Complete |
| --- | --- | --- | --- | --- | --- | --- | --- |
| MLTX-02-005-EN-16170 |  | Shop DWG Approval for Playground Plan/Layout | 15d | 2026-03-14 A | 2026-05-19 A | MLTX-02-005-EN-13050 | 100% |
| MLTX-02-005-EN-16180 |  | Shop DWG Approval for Furniture & Marking | 30d | 2026-03-14 A | 2026-05-19 A | MLTX-02-005-EN-13060 | 100% |
| MLTX-02-005-EN-16190 |  | Shop DWG Approval for Sections | 15d | 2026-03-14 A | 2026-05-19 A | MLTX-02-005-EN-13070 | 100% |
| MLTX-02-005-EN-16200 |  | Shop DWG Approval for Interlock Pattern Plan | 21d | 2026-03-14 A | 2026-05-19 A | MLTX-02-005-EN-13080 | 100% |
| MLTX-02-005-EN-16210 |  | Shop DWG Approval for Doors/Windows Schedule | 21d | 2026-03-14 A | 2026-05-19 A | MLTX-02-005-EN-13090 | 100% |
| MLTX-02-005-EN-16250 |  | Shop DWG Approval for Dome Internal Layout | 21d | 2026-03-14 A | 2026-05-19 A | MLTX-02-005-EN-13120, MLTX-02-005-EN-16210 | 100% |
|  | 4 | **STRUCTURE WORKS** |  | 2026-07-16 | 2026-07-16 |  |  |
| MLTX-02-005-EN-16220 |  | Shop DWG Approval for Air Dome System | 21d | 2026-07-16 A | 2026-07-16 A | MLTX-02-005-EN-13100, MLTX-02-005-EN-16200 | 100% |
| MLTX-02-005-EN-16230 |  | Shop DWG Approval for Foundation of Air Dome | 21d | 2026-07-16 A | 2026-07-16 A | MLTX-02-005-EN-13110, MLTX-02-005-EN-16200 | 100% |
| MLTX-02-005-EN-16240 |  | Shop DWG Approval for Foundation of Air Dome | 21d | 2026-07-16 A | 2026-07-16 A | MLTX-02-005-EN-16230 SS, MLTX-02-005-EN-16200 | 100% |
| MLTX-02-005-EN-16260 |  | Shop DWG Approval for Anchor Bolt Layout of Air Dome | 21d | 2026-07-16 A | 2026-07-16 A | MLTX-02-005-EN-13130, MLTX-02-005-EN-16200 | 100% |
|  | 5 | **AIR DOME SYSTEM** |  | 2026-10-24 | 2026-10-24 |  |  |
| MLTX-02-005-EN-16270 |  | Shop DWG Approval for Air Dome Structural Layout | 15d | 2026-10-24 A | 2026-10-24 A | MLTX-02-005-EN-13140, MLTX-02-005-EN-15530, MLTX-02-005-EN-16020 | 100% |
| MLTX-02-005-EN-16280 |  | Shop DWG Approval for Membrane Panel Layout | 15d | 2026-10-24 A | 2026-10-24 A | MLTX-02-005-EN-16270, MLTX-02-005-EN-13150, MLTX-02-005-EN-16010 | 100% |
| MLTX-02-005-EN-16290 |  | Shop DWG Approval for Cable Tension Layout | 15d | 2026-10-24 A | 2026-10-24 A | MLTX-02-005-EN-13160, MLTX-02-005-EN-16280 SS, MLTX-02-005-EN-16280 FF | 100% |
| MLTX-02-005-EN-16300 |  | Shop DWG Approval for Airlock Door Details | 15d | 2026-10-24 A | 2026-10-24 A | MLTX-02-005-EN-16290, MLTX-02-005-EN-13170 | 100% |
| MLTX-02-005-EN-16310 |  | Shop DWG Approval for Emergency Exit Details | 15d | 2026-10-24 A | 2026-10-24 A | MLTX-02-005-EN-16300, MLTX-02-005-EN-13180, MLTX-02-005-EN-16350, MLTX-02-005-EN-16360 | 100% |
|  | 6 | **SPORTS EQUIPMENT** |  | 2026-07-20 | 2026-10-24 |  |  |
| MLTX-02-005-EN-16360 |  | Shop DWG Approval for Padel Court Structure | 21d | 2026-07-20 A | 2026-07-20 A | MLTX-02-005-EN-13230 | 100% |
| MLTX-02-005-EN-16350 |  | Shop DWG Approval for Basketball Court Marking | 21d | 2026-08-25 A | 2026-08-25 A | MLTX-02-005-EN-13220 | 100% |
| MLTX-02-005-EN-16340 |  | Shop DWG Approval for Football Turf Installation | 30d | 2026-10-24 A | 2026-10-24 A | MLTX-02-005-EN-13210, MLTX-02-005-EN-16250, MLTX-02-005-EN-16070 | 100% |
|  | 1 | **MECHANCAL WORKS** |  | 2026-10-24 | 2026-10-24 |  |  |
| MLTX-02-005-EN-16150 |  | Shop DWG Approval for HVAC Plan | 25d | 2026-10-24 A | 2026-10-24 A | MLTX-02-005-EN-13030 | 100% |
| MLTX-02-005-EN-16160 |  | Shop DWG Approval for Exhaust Air Plan | 15d | 2026-10-24 A | 2026-10-24 A | MLTX-02-005-EN-13040, MLTX-02-005-EN-16150 | 100% |
|  | 2 | **ELECTRICAL WORKS** |  | 2026-03-19 | 2026-11-08 |  |  |
| MLTX-02-005-EN-16070 |  | Shop DWG Approval for Lighting Layout | 21d | 2026-03-19 A | 2026-05-18 A | MLTX-02-005-EN-13140 | 100% |
| MLTX-02-005-EN-16120 |  | Shop DWG Approval for CCTV Details | 21d | 2026-08-25 A | 2026-08-25 A | MLTX-02-005-EN-12980 | 100% |
| MLTX-02-005-EN-16130 |  | Shop DWG Approval for CCTV Layout | 21d | 2026-08-25 A | 2026-08-25 A | MLTX-02-005-EN-13010 | 100% |
| MLTX-02-005-EN-16140 |  | Shop DWG Approval for CCTV Riser Diagram | 21d | 2026-08-25 A | 2026-08-25 A | MLTX-02-005-EN-13020 | 100% |
| MLTX-02-005-EN-16090 |  | Shop DWG Approval for Power Single Line Diagram | 25d | 2026-10-24 A | 2026-10-24 A | MLTX-02-005-EN-12940 | 100% |
| MLTX-02-005-EN-16100 |  | Shop DWG Approval for Panel Board Schedules | 25d | 2026-10-24 A | 2026-10-24 A | MLTX-02-005-EN-12950 | 100% |
| MLTX-02-005-EN-16080 |  | Shop DWG Approval for Power Layout | 25d | 2026-11-08 A | 2026-11-08 A | MLTX-02-005-EN-12930, MLTX-02-005-EN-16340 | 100% |
| MLTX-02-005-EN-16110 |  | Shop DWG Approval for Power Installation Details | 15d | 2026-11-08 A | 2026-11-08 A | MLTX-02-005-EN-12960, MLTX-02-005-EN-16160, MLTX-02-005-EN-16120 | 100% |
|  | EAR | **SHOP DRAWINGS APPROVAL FOR LANDSCAPE WORKS** |  | 2026-03-14 | 2026-07-30 |  |  |
|  | 3 | **ARCHITECTURE WORKS** |  | 2026-03-14 | 2026-05-06 |  |  |
| MLTX-02-005-EN-16010 |  | Shop DWG Approval for Landscape Layout | 21d | 2026-03-14 A | 2026-04-14 A | MLTX-02-005-EN-12860, MLTX-02-005-EN-16040, MLTX-02-005-EN-15580 | 100% |
| MLTX-02-005-EN-16020 |  | Shop DWG Approval for Hardscape Plan | 21d | 2026-03-14 A | 2026-04-14 A | MLTX-02-005-EN-12870 | 100% |
| MLTX-02-005-EN-16040 |  | Shop DWG Approval for Landscape Details | 21d | 2026-03-14 A | 2026-04-14 A | MLTX-02-005-EN-12890 | 100% |
| MLTX-02-005-EN-16030 |  | Shop DWG Approval for Planting Plan | 15d | 2026-03-19 A | 2026-05-06 A | MLTX-02-005-EN-12880, MLTX-02-005-EN-16020 | 100% |
|  | 1 | **MECHANCAL WORKS** |  | 2026-07-30 | 2026-07-30 |  |  |
| MLTX-02-005-EN-16050 |  | Shop DWG Approval for Irrigation Details | 21d | 2026-07-30 A | 2026-07-30 A | MLTX-02-005-EN-12900 | 100% |
| MLTX-02-005-EN-16060 |  | Shop DWG Approval for Irrigation Layout | 21d | 2026-07-30 A | 2026-07-30 A | MLTX-02-005-EN-12910 | 100% |
|  | 2 | **ELECTRICAL WORKS** |  | 2026-07-30 | 2026-07-30 |  |  |
| MLTX-02-005-EN-15590 |  | Shop DWG Approval for Lighting General Arrangement | 30d | 2026-07-30 A | 2026-07-30 A | MLTX-02-005-EN-12160, MLTX-02-005-EN-13010 | 100% |
| MLTX-02-005-EN-15600 |  | Shop DWG Approval for Lighting Network Layout | 30d | 2026-07-30 A | 2026-07-30 A | MLTX-02-005-EN-12170 | 100% |
| MLTX-02-005-EN-15610 |  | Shop DWG Approval for Lighting Details | 30d | 2026-07-30 A | 2026-07-30 A | MLTX-02-005-EN-12180 | 100% |
| MLTX-02-005-EN-15620 |  | Shop DWG Approval for Lighting Single Line Diagram | 30d | 2026-07-30 A | 2026-07-30 A | MLTX-02-005-EN-12190 | 100% |
|  | MTS | **METHOD STATEMENTS** |  | 2026-03-08 | 2026-09-12 |  |  |
|  | 1 | **METHOD STATEMENT SUBMITTAL** |  | 2026-03-08 | 2026-06-04 |  |  |
|  | 4 | **CIVIL WORKS** |  | 2026-03-09 | 2026-03-14 |  |  |
| MLTX-02-005-EN-12200 |  | Preparation & Submission of Method Statement for Earthwork | 15d | 2026-03-09 A | 2026-03-14 A | MLTX-02-005-MB-2010 | 100% |
| MLTX-02-005-EN-12210 |  | Preparation & Submission of Method Statement for Concrete Works | 21d | 2026-03-09 A | 2026-03-14 A | MLTX-02-005-MB-2010, MLTX-02-005-EN-12220 | 100% |
| MLTX-02-005-EN-12220 |  | Preparation & Submission of Method Statement for Waterproofing | 21d | 2026-03-09 A | 2026-03-14 A | MLTX-02-005-MB-2010 | 100% |
|  | 1 | **ARCHITECTURE WORKS** |  | 2026-03-08 | 2026-06-02 |  |  |
| MLTX-02-005-EN-12260 |  | Preparation & Submission of Method Statement for Masonary Works | 21d | 2026-03-08 A | 2026-05-17 A | MLTX-02-005-MB-2010, MLTX-02-005-EN-12210 | 100% |
| MLTX-02-005-EN-12270 |  | Preparation & Submission of Method Statement for Tilling Works | 21d | 2026-03-08 A | 2026-05-25 A | MLTX-02-005-MB-2010 | 100% |
| MLTX-02-005-EN-12280 |  | Preparation & Submission of Method Statement for Seats/Benches Works | 21d | 2026-03-08 A | 2026-06-02 A | MLTX-02-005-MB-2010, MLTX-02-005-EN-12270 | 100% |
| MLTX-02-005-EN-12290 |  | Preparation & Submission of Method Statement for Doors/Windows Works | 21d | 2026-03-08 A | 2026-06-02 A | MLTX-02-005-MB-2010, MLTX-02-005-EN-12420 | 100% |
| MLTX-02-005-EN-12300 |  | Preparation & Submission of Method Statement for Interlock/Curbstone Works | 21d | 2026-03-08 A | 2026-05-25 A | MLTX-02-005-MB-2010, MLTX-02-005-EN-12340 | 100% |
| MLTX-02-005-EN-12310 |  | Preparation & Submission of Method Statement for Parking Works | 21d | 2026-03-08 A | 2026-05-25 A | MLTX-02-005-MB-2010, MLTX-02-005-EN-12250 | 100% |
| MLTX-02-005-EN-12320 |  | Preparation & Submission of Method Statement for Soft Scape Works | 21d | 2026-03-08 A | 2026-06-02 A | MLTX-02-005-MB-2010, MLTX-02-005-EN-15480, MLTX-02-005-EN-15320 | 100% |
| MLTX-02-005-EN-12330 |  | Preparation & Submission of Method Statement for Fence Works | 30d | 2026-03-08 A | 2026-06-02 A | MLTX-02-005-MB-2010 | 100% |
| MLTX-02-005-EN-12340 |  | Preparation & Submission of Method Statement for Air Dome Works | 30d | 2026-03-08 A | 2026-06-02 A | MLTX-02-005-MB-2010, MLTX-02-005-EN-12430 | 100% |
| MLTX-02-005-EN-12350 |  | Preparation & Submission of Method Statement for Metal Works | 21d | 2026-03-08 A | 2026-06-02 A | MLTX-02-005-MB-2010, MLTX-02-005-EN-15480 | 100% |
| MLTX-02-005-EN-12360 |  | Preparation & Submission of Method Statement for Partitions Works | 21d | 2026-03-08 A | 2026-06-02 A | MLTX-02-005-MB-2010, MLTX-02-005-EN-15480 | 100% |
| MLTX-02-005-EN-12370 |  | Preparation & Submission of Method Statement for Gypsum Board Works | 21d | 2026-03-08 A | 2026-06-02 A | MLTX-02-005-MB-2010 | 100% |
| MLTX-02-005-EN-12250 |  | Preparation & Submission of Method Statement for Plastering Works | 15d | 2026-03-09 A | 2026-03-14 A | MLTX-02-005-MB-2010, MLTX-02-005-EN-12320 | 100% |
|  | 2 | **MECHANICAL WORKS** |  | 2026-03-14 | 2026-06-04 |  |  |
| MLTX-02-005-EN-12380 |  | Preparation & Submission of Method Statement for Sewage/Drainage System | 21d | 2026-03-14 A | 2026-05-04 A | MLTX-02-005-EN-12200, MLTX-02-005-EN-12440 | 100% |
| MLTX-02-005-EN-12390 |  | Preparation & Submission of Method Statement for Water Supply System | 21d | 2026-03-14 A | 2026-05-04 A | MLTX-02-005-EN-12210, MLTX-02-005-EN-12970 | 100% |

| ID | WBS | Task | Duration | Start | Finish | Predecessors | Complete |
| --- | --- | --- | --- | --- | --- | --- | --- |
| MLTX-02-005-EN-12400 |  | Preparation & Submission of Method Statement for Fire Fighting System | 21d | 2026-03-14 A | 2026-06-04 A | MLTX-02-005-EN-12220, MLTX-02-005-EN-15340 | 100% |
| MLTX-02-005-EN-12410 |  | Preparation & Submission of Method Statement for Irrigation System | 15d | 2026-03-14 A | 2026-06-04 A | MLTX-02-005-EN-12250, MLTX-02-005-EN-15340 | 100% |
| MLTX-02-005-EN-12420 |  | Preparation & Submission of Method Statement for HVAC System | 21d | 2026-03-14 A | 2026-06-04 A | MLTX-02-005-EN-12260, MLTX-02-005-EN-12280 | 100% |
|  | 5 | **ELECTRICAL WORKS** |  | 2026-03-14 | 2026-05-11 |  |  |
| MLTX-02-005-EN-12230 |  | Preparation & Submission of Method Statement for Electrical Conduits/Pulling Works | 21d | 2026-03-14 A | 2026-05-11 A | MLTX-02-005-EN-12300, MLTX-02-005-EN-12440 | 100% |
| MLTX-02-005-EN-12240 |  | Preparation & Submission of Method Statement for Lighting Poles Installation | 21d | 2026-03-14 A | 2026-05-11 A | MLTX-02-005-EN-12320, MLTX-02-005-EN-12360 | 100% |
| MLTX-02-005-EN-12430 |  | Preparation & Submission of Method Statement for Telecommunication & Data System | 30d | 2026-03-14 A | 2026-05-11 A | MLTX-02-005-EN-12330 | 100% |
| MLTX-02-005-EN-12440 |  | Preparation & Submission of Method Statement for CCTV System | 30d | 2026-03-14 A | 2026-05-11 A | MLTX-02-005-EN-12340, MLTX-02-005-EN-15480 | 100% |
| MLTX-02-005-EN-12450 |  | Preparation & Submission of Method Statement for Lighting Works | 21d | 2026-03-14 A | 2026-05-11 A | MLTX-02-005-EN-12350, MLTX-02-005-EN-12320 | 100% |
| MLTX-02-005-EN-12460 |  | Preparation & Submission of Method Statement for Earthing/Lightning Works | 21d | 2026-03-14 A | 2026-05-11 A | MLTX-02-005-EN-12360, MLTX-02-005-EN-16120 | 100% |
| MLTX-02-005-EN-12470 |  | Preparation & Submission of Method Statement for Panel Boards Works | 21d | 2026-03-14 A | 2026-05-11 A | MLTX-02-005-EN-12370 | 100% |
|  | 2 | **METHOD STATEMENT APPROVAL** |  | 2026-03-14 | 2026-09-12 |  |  |
|  | 4 | **CIVIL WORKS** |  | 2026-03-15 | 2026-03-29 |  |  |
| MLTX-02-005-EN-15260 |  | Approval of Method Statement for Earthwork | 15d | 2026-03-15 A | 2026-03-29 A | MLTX-02-005-EN-12200 | 100% |
| MLTX-02-005-EN-15270 |  | Approval of Method Statement for Concrete Works | 30d | 2026-03-15 A | 2026-03-29 A | MLTX-02-005-EN-12210, MLTX-02-005-EN-15280 | 100% |
| MLTX-02-005-EN-15280 |  | Approval of Method Statement for Waterproofing | 21d | 2026-03-15 A | 2026-03-29 A | MLTX-02-005-EN-12220 | 100% |
|  | 1 | **ARCHITECTURE WORKS** |  | 2026-03-14 | 2026-09-12 |  |  |
| MLTX-02-005-EN-15320 |  | Approval of Method Statement for Masonary Works | 21d | 2026-03-14 A | 2026-05-21 A | MLTX-02-005-EN-12260, MLTX-02-005-EN-15520 | 100% |
| MLTX-02-005-EN-15330 |  | Approval of Method Statement for Tilling Works | 21d | 2026-03-14 A | 2026-05-21 A | MLTX-02-005-EN-12270, MLTX-02-005-EN-16200, MLTX-02-005-EN-12380 | 100% |
| MLTX-02-005-EN-15310 |  | Approval of Method Statement for Plastering Works | 30d | 2026-03-15 A | 2026-03-29 A | MLTX-02-005-EN-12250, MLTX-02-005-EN-12240 | 100% |
| MLTX-02-005-EN-15370 |  | Approval of Method Statement for Parking Works | 21d | 2026-05-15 A | 2026-05-15 A | MLTX-02-005-EN-12310, MLTX-02-005-EN-15300 | 100% |
| MLTX-02-005-EN-15400 |  | Approval of Method Statement for Air Dome Works | 30d | 2026-07-12 A | 2026-07-12 A | MLTX-02-005-EN-12340, MLTX-02-005-EN-15300 | 100% |
| MLTX-02-005-EN-15390 |  | Approval of Method Statement for Fence Works | 30d | 2026-07-16 A | 2026-07-16 A | MLTX-02-005-EN-12330, MLTX-02-005-EN-15340 | 100% |
| MLTX-02-005-EN-15360 |  | Approval of Method Statement for Interlock/Curbstone Works | 21d | 2026-08-10 A | 2026-08-10 A | MLTX-02-005-EN-12300, MLTX-02-005-EN-12320 | 100% |
| MLTX-02-005-EN-15420 |  | Approval of Method Statement for Gypsum Board Works | 21d | 2026-08-20 A | 2026-08-20 A | MLTX-02-005-EN-12370, MLTX-02-005-EN-15340 | 100% |
| MLTX-02-005-EN-15340 |  | Approval of Method Statement for Seats/Benches Works | 21d | 2026-09-12 A | 2026-09-12 A | MLTX-02-005-EN-12280, MLTX-02-005-EN-15300, MLTX-02-005-EN-15440, MLTX-02-005-EN-15500 | 100% |
| MLTX-02-005-EN-15350 |  | Approval of Method Statement for Doors/Windows Works | 21d | 2026-09-12 A | 2026-09-12 A | MLTX-02-005-EN-12290, MLTX-02-005-EN-15400, MLTX-02-005-EN-15390 | 100% |
| MLTX-02-005-EN-15380 |  | Approval of Method Statement for Soft Scape Works | 21d | 2026-09-12 A | 2026-09-12 A | MLTX-02-005-EN-12320, MLTX-02-005-EN-15410, MLTX-02-005-EN-15400 | 100% |
| MLTX-02-005-EN-15410 |  | Approval of Method Statement for Partitions Works | 21d | 2026-09-12 A | 2026-09-12 A | MLTX-02-005-EN-12360, MLTX-02-005-EN-15740, MLTX-02-005-EN-15330, MLTX-02-005-EN-15800, MLTX-02-005-EN-15310 | 100% |
|  | 2 | **MECHANICAL WORKS** |  | 2026-06-24 | 2026-08-26 |  |  |
| MLTX-02-005-EN-15430 |  | Approval of Method Statement for Sewage/Drainage System | 21d | 2026-06-24 A | 2026-06-24 A | MLTX-02-005-EN-12380, MLTX-02-005-EN-15300 | 100% |
| MLTX-02-005-EN-15440 |  | Approval of Method Statement for Water Supply System | 21d | 2026-07-12 A | 2026-07-18 A | MLTX-02-005-EN-12390, MLTX-02-005-EN-12160 | 100% |
| MLTX-02-005-EN-15470 |  | Approval of Method Statement for HVAC System | 21d | 2026-08-18 A | 2026-08-18 A | MLTX-02-005-EN-12420, MLTX-02-005-EN-15340 | 100% |
| MLTX-02-005-EN-15460 |  | Approval of Method Statement for Irrigation System | 15d | 2026-08-25 A | 2026-08-25 A | MLTX-02-005-EN-12410, MLTX-02-005-EN-15400 | 100% |
| MLTX-02-005-EN-15450 |  | Approval of Method Statement for Fire Fighting System | 21d | 2026-08-26 A | 2026-08-26 A | MLTX-02-005-EN-12400, MLTX-02-005-EN-15380, MLTX-02-005-EN-15470, MLTX-02-005-EN-15420, MLTX-02-005-EN-12290 | 100% |
|  | 5 | **ELECTRICAL WORKS** |  | 2026-07-14 | 2026-08-26 |  |  |
| MLTX-02-005-EN-15290 |  | Approval of Method Statement for Electrical Conduits/Pulling Works | 21d | 2026-07-14 A | 2026-07-14 A | MLTX-02-005-EN-12230, MLTX-02-005-EN-12240 | 100% |
| MLTX-02-005-EN-15500 |  | Approval of Method Statement for Lighting Works | 21d | 2026-07-14 A | 2026-07-14 A | MLTX-02-005-EN-12450, MLTX-02-005-EN-12240 | 100% |
| MLTX-02-005-EN-15510 |  | Approval of Method Statement for Earthing/Lightning Works | 21d | 2026-07-14 A | 2026-07-14 A | MLTX-02-005-EN-12460, MLTX-02-005-EN-12390 | 100% |
| MLTX-02-005-EN-15520 |  | Approval of Method Statement for Panel Boards Works | 21d | 2026-07-14 A | 2026-07-14 A | MLTX-02-005-EN-12470 | 100% |
| MLTX-02-005-EN-15480 |  | Approval of Method Statement for Telecommunication & Data System | 30d | 2026-07-28 A | 2026-07-28 A | MLTX-02-005-EN-12430 | 100% |
| MLTX-02-005-EN-15490 |  | Approval of Method Statement for CCTV System | 30d | 2026-07-28 A | 2026-07-28 A | MLTX-02-005-EN-12440, MLTX-02-005-EN-12240 | 100% |
| MLTX-02-005-EN-15300 |  | Approval of Method Statement for Lighting Poles Installation | 21d | 2026-08-26 A | 2026-08-26 A | MLTX-02-005-EN-12240, MLTX-02-005-EN-12460 | 100% |
|  | PREQ | **PRE-QUALIFICATION & MATERIAL** |  | 2026-03-08 | 2026-09-12 |  |  |
|  | PRE | **PRE-QUALIFICATION** |  | 2026-03-08 | 2026-06-07 |  |  |
|  | TOI | **TOILET/SERVICE WORKS** |  | 2026-03-08 | 2026-06-07 |  |  |
|  | 1 | **STEEL REINFORCEMENT** |  | 2026-03-09 | 2026-03-19 |  |  |
| MLTX-02-005-EN-14260 |  | Pre-Qualification Submittal for Steel Reinforcement | 15d | 2026-03-09 A | 2026-03-11 A | MLTX-02-005-MB-2010 | 100% |
| MLTX-02-005-EN-14380 |  | Pre-Qualification Approval for Steel Reinforcement | 15d | 2026-03-12 A | 2026-03-19 A | MLTX-02-005-EN-14260 | 100% |
|  | 2 | **READY MIX CONCRETE** |  | 2026-03-09 | 2026-03-19 |  |  |
| MLTX-02-005-EN-14270 |  | Pre-Qualification Submittal for Ready Mixed Concrete | 15d | 2026-03-09 A | 2026-03-11 A | MLTX-02-005-MB-2010, MLTX-02-005-EN-14260 SS | 100% |
| MLTX-02-005-EN-14280 |  | Pre-Qualification Approval of Ready Mixed Concrete | 15d | 2026-03-12 A | 2026-03-19 A | MLTX-02-005-EN-14270 | 100% |
|  | 3 | **CONCRETE BLOCKS** |  | 2026-03-09 | 2026-03-19 |  |  |
| MLTX-02-005-EN-14480 |  | Pre-Qualification Submittal for Concrete Blocks | 15d | 2026-03-09 A | 2026-03-11 A | MLTX-02-005-EN-14270 SS, MLTX-02-005-MB-2010 | 100% |
| MLTX-02-005-EN-14490 |  | Pre-Qualification Approval for Concrete Blocks | 15d | 2026-03-12 A | 2026-03-19 A | MLTX-02-005-EN-14480, MLTX-02-005-EN-14280 | 100% |
|  | 4 | **WATER PROOFING** |  | 2026-03-09 | 2026-03-19 |  |  |
| MLTX-02-005-EN-14290 |  | Pre-Qualification Submittal for Water Proofing | 15d | 2026-03-09 A | 2026-03-11 A | MLTX-02-005-EN-14480 SS, MLTX-02-005-MB-2010 | 100% |
| MLTX-02-005-EN-14390 |  | Pre-Qualification Approval for Water Proofing | 21d | 2026-03-12 A | 2026-03-19 A | MLTX-02-005-EN-14290 | 100% |
|  | 6 | **FLOOR/WALL TILES** |  | 2026-03-08 | 2026-05-10 |  |  |
| MLTX-02-005-EN-14500 |  | Pre-Qualification Submittal for Tilling Materials | 15d | 2026-03-08 A | 2026-05-06 A | MLTX-02-005-EN-14290 SS, MLTX-02-005-MB-2010 | 100% |
| MLTX-02-005-EN-14510 |  | Pre-Qualification Approval for Tailling Material | 15d | 2026-03-11 A | 2026-05-10 A | MLTX-02-005-EN-14500, MLTX-02-005-EN-14280 | 100% |
|  | 7 | **SUSPENDED CEILING** |  | 2026-03-09 | 2026-03-19 |  |  |
| MLTX-02-005-EN-14520 |  | Pre-Qualification Submittal for Suspend Ceiling | 15d | 2026-03-09 A | 2026-03-11 A | MLTX-02-005-EN-14500 SS, MLTX-02-005-MB-2010 | 100% |
| MLTX-02-005-EN-14530 |  | Pre-Qualification Approval for Suspend Ceiling | 15d | 2026-03-12 A | 2026-03-19 A | MLTX-02-005-EN-14520, MLTX-02-005-EN-14640 | 100% |
|  | 8 | **DOORS/WINDOWS** |  | 2026-03-09 | 2026-03-19 |  |  |
| MLTX-02-005-EN-14540 |  | Pre-Qualification Submittal for Doors/Windows | 15d | 2026-03-09 A | 2026-03-11 A | MLTX-02-005-EN-14520 SS, MLTX-02-005-MB-2010 | 100% |
| MLTX-02-005-EN-14550 |  | Pre-Qualification Approval for Doors/Windows | 15d | 2026-03-12 A | 2026-03-19 A | MLTX-02-005-EN-14540, MLTX-02-005-EN-14730 | 100% |
|  | 9 | **FURNITURES** |  | 2026-03-08 | 2026-05-12 |  |  |
| MLTX-02-005-EN-14660 |  | Pre-Qualification Submittal for Furnitures | 15d | 2026-03-08 A | 2026-05-07 A | MLTX-02-005-EN-14540 SS, MLTX-02-005-MB-2010 | 100% |
| MLTX-02-005-EN-14670 |  | Pre-Qualification Approval for Furnitures | 15d | 2026-03-11 A | 2026-05-12 A | MLTX-02-005-EN-14660, MLTX-02-005-EN-14280 | 100% |

| ID | WBS | Task | Duration | Start | Finish | Predecessors | Complete |
| --- | --- | --- | --- | --- | --- | --- | --- |
|  | 10 | **SANITARY FIXTURES** |  | 2026-03-08 | 2026-05-10 |  |  |
| MLTX-02-005-EN-14560 |  | Pre-Qualification Submittal for Sanitary Fixtures | 15d | 2026-03-08 A | 2026-05-06 A | MLTX-02-005-MB-2010, MLTX-02-005-EN-14660 SS | 100% |
| MLTX-02-005-EN-14570 |  | Pre-Qualification Approval for Sanitary Fixtures | 15d | 2026-03-11 A | 2026-05-10 A | MLTX-02-005-EN-14560 | 100% |
|  | 11 | **WATER SUPPLY PIPES** |  | 2026-03-08 | 2026-06-07 |  |  |
| MLTX-02-005-EN-14580 |  | Pre-Qualification Submittal for Water Supply Pipes | 15d | 2026-03-08 A | 2026-05-25 A | MLTX-02-005-EN-14560 SS, MLTX-02-005-MB-2010 | 100% |
| MLTX-02-005-EN-14590 |  | Pre-Qualification Approval for Water Supply Pipes | 15d | 2026-03-11 A | 2026-06-07 A | MLTX-02-005-EN-14580, MLTX-02-005-EN-14730 | 100% |
|  | 12 | **SEWAGE/DRAINAGE PIPES** |  | 2026-03-08 | 2026-06-07 |  |  |
| MLTX-02-005-EN-14600 |  | Pre-Qualification Submittal for Sewage/Drainage Pipes | 15d | 2026-03-08 A | 2026-05-25 A | MLTX-02-005-EN-14580 SS | 100% |
| MLTX-02-005-EN-14610 |  | Pre-Qualification Approval for Sewage/Drainage Pipes | 15d | 2026-03-11 A | 2026-06-07 A | MLTX-02-005-EN-14600, MLTX-02-005-EN-13240 | 100% |
|  | 16 | **PACKAGE AC UNITS** |  | 2026-03-11 | 2026-06-07 |  |  |
| MLTX-02-005-EN-14690 |  | Pre-Qualification Submittal for Package AC Units | 15d | 2026-03-11 A | 2026-05-25 A | MLTX-02-005-EN-14260 | 100% |
| MLTX-02-005-EN-14700 |  | Pre-Qualification Approval for Package AC Units | 15d | 2026-03-15 A | 2026-06-07 A | MLTX-02-005-EN-14690 | 100% |
|  | 17 | **AIR DIFUSSERS/GRILLS** |  | 2026-03-11 | 2026-06-07 |  |  |
| MLTX-02-005-EN-14710 |  | Pre-Qualification Submittal for Air Diffusers/Grills | 15d | 2026-03-11 A | 2026-05-25 A | MLTX-02-005-EN-14270, MLTX-02-005-EN-14450 | 100% |
| MLTX-02-005-EN-14720 |  | Pre-Qualification Approval for Air Diffusers/Grills | 15d | 2026-03-15 A | 2026-06-07 A | MLTX-02-005-EN-14710, MLTX-02-005-EN-14640 | 100% |
|  | 18 | **GALVANIZED DUCTS** |  | 2026-03-11 | 2026-04-30 |  |  |
| MLTX-02-005-EN-14730 |  | Pre-Qualification Submittal for Galvanized Ducts | 15d | 2026-03-11 A | 2026-04-25 A | MLTX-02-005-EN-14480, MLTX-02-005-EN-14450 | 100% |
| MLTX-02-005-EN-14740 |  | Pre-Qualification Approval for Galvanized Ducts | 15d | 2026-03-15 A | 2026-04-30 A | MLTX-02-005-EN-14730, MLTX-02-005-EN-14300 | 100% |
|  | 19 | **EXHAUST FANS** |  | 2026-03-11 | 2026-06-07 |  |  |
| MLTX-02-005-EN-14750 |  | Pre-Qualification Submittal for Exhaust Fans | 15d | 2026-03-11 A | 2026-05-25 A | MLTX-02-005-EN-14290 | 100% |
| MLTX-02-005-EN-14760 |  | Pre-Qualification Approval for Exhaust Fans | 15d | 2026-03-15 A | 2026-06-07 A | MLTX-02-005-EN-14750 | 100% |
|  | 13 | **LIGHTING FIXTURES** |  | 2026-03-11 | 2026-06-07 |  |  |
| MLTX-02-005-EN-14620 |  | Pre-Qualification Submittal for Lighting Fixtures | 15d | 2026-03-11 A | 2026-05-25 A | MLTX-02-005-EN-14500, MLTX-02-005-EN-14390 | 100% |
| MLTX-02-005-EN-14630 |  | Pre-Qualification Approval for Lighting Fixtures | 15d | 2026-03-15 A | 2026-06-07 A | MLTX-02-005-EN-14620, MLTX-02-005-EN-14640 | 100% |
|  | 14 | **SWITCHES/SOCKETS** |  | 2026-03-11 | 2026-06-07 |  |  |
| MLTX-02-005-EN-14640 |  | Pre-Qualification Submittal for Switches/Sockets | 15d | 2026-03-11 A | 2026-05-25 A | MLTX-02-005-EN-14520, MLTX-02-005-EN-14450 | 100% |
| MLTX-02-005-EN-14650 |  | Pre-Qualification Approval for Switches/Sockets | 15d | 2026-03-15 A | 2026-06-07 A | MLTX-02-005-EN-14640, MLTX-02-005-EN-14730 | 100% |
|  | 15 | **EARTHING SYSTEM** |  | 2026-03-11 | 2026-05-11 |  |  |
| MLTX-02-005-EN-14440 |  | Pre-Qualification Submittal for Earthing System | 15d | 2026-03-11 A | 2026-05-09 A | MLTX-02-005-EN-14540 | 100% |
| MLTX-02-005-EN-14450 |  | Pre-Qualification Approval for Earthing System | 15d | 2026-03-15 A | 2026-05-11 A | MLTX-02-005-EN-14440 | 100% |
|  | 5 | **DISTRIBUTION PANNELS** |  | 2026-03-11 | 2026-06-07 |  |  |
| MLTX-02-005-EN-14460 |  | Pre-Qualification Submittal for Distribution Panels | 15d | 2026-03-11 A | 2026-05-25 A | MLTX-02-005-EN-14660, MLTX-02-005-EN-14610 | 100% |
| MLTX-02-005-EN-14470 |  | Pre-Qualification Approval for Distribution Panels | 15d | 2026-03-15 A | 2026-06-07 A | MLTX-02-005-EN-14460, MLTX-02-005-EN-13580 | 100% |
|  | PLG | **PLAYGROUND WORKS** |  | 2026-03-08 | 2026-06-07 |  |  |
|  | 5 | **PVC MEMBRANE** |  | 2026-03-08 | 2026-05-24 |  |  |
| MLTX-02-005-EN-14850 |  | Pre-Qualification Submittal for PVC Membrane | 15d | 2026-03-08 A | 2026-05-20 A | MLTX-02-005-EN-14600 SS | 100% |
| MLTX-02-005-EN-14860 |  | Pre-Qualification Approval for PVC Membrane | 15d | 2026-03-11 A | 2026-05-24 A | MLTX-02-005-EN-14850 | 100% |
|  | 6 | **STEEL TENSION CABLES** |  | 2026-03-08 | 2026-05-24 |  |  |
| MLTX-02-005-EN-14870 |  | Pre-Qualification Submittal for Steel Tension Cables | 15d | 2026-03-08 A | 2026-05-20 A | MLTX-02-005-EN-14850 SS | 100% |
| MLTX-02-005-EN-15170 |  | Pre-Qualification Approval for Steel Tension Cables | 15d | 2026-03-11 A | 2026-05-24 A | MLTX-02-005-EN-14870 | 100% |
|  | 7 | **EMERGENCY DOORS** |  | 2026-03-08 | 2026-05-24 |  |  |
| MLTX-02-005-EN-14880 |  | Pre-Qualification Submittal for Emergency Doors | 15d | 2026-03-08 A | 2026-05-20 A | MLTX-02-005-MB-2010 | 100% |
| MLTX-02-005-EN-15180 |  | Pre-Qualification Approval for Emergency Doors | 15d | 2026-03-11 A | 2026-05-24 A | MLTX-02-005-EN-14880 | 100% |
|  | 8 | **PRESSURE UNITS** |  | 2026-03-08 | 2026-05-24 |  |  |
| MLTX-02-005-EN-14890 |  | Pre-Qualification Submittal for Pressure Units | 15d | 2026-03-08 A | 2026-05-20 A | MLTX-02-005-MB-2010, MLTX-02-005-EN-14320 | 100% |
| MLTX-02-005-EN-15190 |  | Pre-Qualification Approval for Pressure Units | 15d | 2026-03-11 A | 2026-05-24 A | MLTX-02-005-EN-14890, MLTX-02-005-EN-14300 | 100% |
|  | 9 | **AIR LOCK DOORS** |  | 2026-03-08 | 2026-05-24 |  |  |
| MLTX-02-005-EN-14900 |  | Pre-Qualification Submittal for Lock Doors | 15d | 2026-03-08 A | 2026-05-20 A | MLTX-02-005-MB-2010 | 100% |
| MLTX-02-005-EN-15200 |  | Pre-Qualification Approval for Lock Doors | 15d | 2026-03-11 A | 2026-05-24 A | MLTX-02-005-EN-14900, MLTX-02-005-EN-14310 | 100% |
|  | 15 | **ARTIFICIAL TURF** |  | 2026-03-08 | 2026-05-10 |  |  |
| MLTX-02-005-EN-15050 |  | Pre-Qualification Submittal for Artificial TURF | 15d | 2026-03-08 A | 2026-05-06 A | MLTX-02-005-MB-2010 | 100% |
| MLTX-02-005-EN-15210 |  | Pre-Qualification Approval for Artificial TURF | 15d | 2026-03-11 A | 2026-05-10 A | MLTX-02-005-EN-15050 | 100% |
|  | 20 | **RUBBER GRANULES** |  | 2026-03-08 | 2026-05-11 |  |  |
| MLTX-02-005-EN-15060 |  | Pre-Qualification Submittal for Rubber Granules | 15d | 2026-03-08 A | 2026-05-06 A | MLTX-02-005-MB-2010 | 100% |
| MLTX-02-005-EN-15220 |  | Pre-Qualification Approval for Rubber Granules | 15d | 2026-03-11 A | 2026-05-11 A | MLTX-02-005-EN-15060 | 100% |
|  | 21 | **PADEL GLASS** |  | 2026-03-08 | 2026-05-11 |  |  |
| MLTX-02-005-EN-15070 |  | Pre-Qualification Submittal for Padel Glass | 15d | 2026-03-08 A | 2026-05-06 A | MLTX-02-005-MB-2010 | 100% |
| MLTX-02-005-EN-15230 |  | Pre-Qualification Approval for Padel Glass | 15d | 2026-03-11 A | 2026-05-11 A | MLTX-02-005-EN-15070 | 100% |
|  | 22 | **PADEL WIRE MESH/STEEL SETS** |  | 2026-03-08 | 2026-05-11 |  |  |
| MLTX-02-005-EN-15080 |  | Pre-Qualification Submittal for Wire Mesh/Steel Sets | 15d | 2026-03-08 A | 2026-05-06 A | MLTX-02-005-MB-2010 | 100% |
| MLTX-02-005-EN-15240 |  | Pre-Qualification Approval for Wire Mesh/Steel Sets | 15d | 2026-03-11 A | 2026-05-11 A | MLTX-02-005-EN-15080 | 100% |
|  | 1 | **AGGREGATE BASE COURSE** |  | 2026-03-08 | 2026-04-30 |  |  |
| MLTX-02-005-EN-14300 |  | Pre-Qualification Submittal for Aggregate Base Course | 15d | 2026-03-08 A | 2026-04-26 A | MLTX-02-005-MB-2010, MLTX-02-005-EN-16050 | 100% |
| MLTX-02-005-EN-14310 |  | Pre-Qualification Approval for Aggregate Base Course | 15d | 2026-03-11 A | 2026-04-30 A | MLTX-02-005-EN-14300 | 100% |
|  | 16 | **PACKAGE AC UNITS** |  | 2026-03-11 | 2026-06-07 |  |  |
| MLTX-02-005-EN-14770 |  | Pre-Qualification Submittal for Package AC Units | 15d | 2026-03-11 A | 2026-05-25 A | MLTX-02-005-EN-14890, MLTX-02-005-EN-14330 | 100% |
| MLTX-02-005-EN-14780 |  | Pre-Qualification Approval for Package AC Units | 15d | 2026-03-15 A | 2026-06-07 A | MLTX-02-005-EN-14770, MLTX-02-005-EN-14300 | 100% |
|  | 17 | **AIR DIFUSSERS/GRILLS** |  | 2026-03-11 | 2026-06-07 |  |  |
| MLTX-02-005-EN-14790 |  | Pre-Qualification Submittal for Air Difussers/Grills | 15d | 2026-03-11 A | 2026-05-25 A | MLTX-02-005-EN-14900, MLTX-02-005-EN-14300 | 100% |
| MLTX-02-005-EN-14800 |  | Pre-Qualification Approval for Air Difussers/Grills | 15d | 2026-03-15 A | 2026-06-07 A | MLTX-02-005-EN-14790, MLTX-02-005-EN-14310 | 100% |

| ID | WBS | Task | Duration | Start | Finish | Predecessors | Complete |
| --- | --- | --- | --- | --- | --- | --- | --- |
|  | 2 | **BITUMINOUS BASE & WEARING COURSE** |  | 2026-03-11 | 2026-04-30 |  |  |
| MLTX-02-005-EN-14320 |  | Pre-Qualification Submittal for Bituminous Base & Wearing Cource | 15d | 2026-03-11 A | 2026-04-26 A | MLTX-02-005-EN-14850 | 100% |
| MLTX-02-005-EN-14330 |  | Pre-Qualification Approval for the Site | 15d | 2026-03-15 A | 2026-04-30 A | MLTX-02-005-EN-14320 | 100% |
|  | 3 | **INTERLOCKING PAVING** |  | 2026-03-11 | 2026-05-04 |  |  |
| MLTX-02-005-EN-14340 |  | Pre-Qualification Submittal for Interlocking Block Pavers | 15d | 2026-03-11 A | 2026-04-30 A | MLTX-02-005-EN-14870, MLTX-02-005-EN-14330 | 100% |
| MLTX-02-005-EN-14400 |  | Pre-Qualification Approval for Interlocking Block Pavers | 15d | 2026-03-15 A | 2026-05-04 A | MLTX-02-005-EN-14340, MLTX-02-005-EN-14300 | 100% |
|  | 4 | **MARKING PAINT** |  | 2026-03-11 | 2026-05-09 |  |  |
| MLTX-02-005-EN-14680 |  | Pre-Qualification Submittal for Marking Paint | 15d | 2026-03-11 A | 2026-05-05 A | MLTX-02-005-EN-14880 | 100% |
| MLTX-02-005-EN-15250 |  | Pre-Qualification Approval for Marking Paint | 15d | 2026-03-15 A | 2026-05-09 A | MLTX-02-005-EN-14680 | 100% |
|  | 18 | **GALVANIZED DUCTS** |  | 2026-03-11 | 2026-04-30 |  |  |
| MLTX-02-005-EN-14810 |  | Pre-Qualification Submittal for Galvanized Duct | 15d | 2026-03-11 A | 2026-04-25 A | MLTX-02-005-EN-14790 SS, MLTX-02-005-EN-14300, MLTX-02-005-EN-14770 | 100% |
| MLTX-02-005-EN-14820 |  | Pre-Qualification Approval for Galvanized Duct | 15d | 2026-03-15 A | 2026-04-30 A | MLTX-02-005-EN-14810, MLTX-02-005-EN-14310 | 100% |
|  | 19 | **EXHAUST FANS** |  | 2026-03-11 | 2026-06-07 |  |  |
| MLTX-02-005-EN-14830 |  | Pre-Qualification Submittal for Exhaust Fans | 15d | 2026-03-11 A | 2026-05-25 A | MLTX-02-005-EN-15050 | 100% |
| MLTX-02-005-EN-14840 |  | Pre-Qualification Approval for Exhaust Fans | 15d | 2026-03-15 A | 2026-06-07 A | MLTX-02-005-EN-14830 | 100% |
|  | 10 | **DISTRIBUTION BOARDS** |  | 2026-03-11 | 2026-06-07 |  |  |
| MLTX-02-005-EN-14910 |  | Pre-Qualification Submittal for Distribution Boards | 15d | 2026-03-11 A | 2026-05-25 A | MLTX-02-005-EN-14900 | 100% |
| MLTX-02-005-EN-14920 |  | Pre-Qualification Approval for Distribution Boards | 15d | 2026-03-15 A | 2026-06-07 A | MLTX-02-005-EN-14910 | 100% |
|  | 11 | **POWER CABLES** |  | 2026-03-11 | 2026-05-11 |  |  |
| MLTX-02-005-EN-14930 |  | Pre-Qualification Submittal for Power Cables | 15d | 2026-03-11 A | 2026-05-09 A | MLTX-02-005-EN-15080 | 100% |
| MLTX-02-005-EN-14940 |  | Pre-Qualification Approval for Power Cables | 15d | 2026-03-15 A | 2026-05-11 A | MLTX-02-005-EN-14930 | 100% |
|  | 12 | **LIGHT FIXTURES** |  | 2026-03-11 | 2026-06-07 |  |  |
| MLTX-02-005-EN-14950 |  | Pre-Qualification Submittal for Light Fixtures | 15d | 2026-03-11 A | 2026-05-25 A | MLTX-02-005-EN-15060, MLTX-02-005-EN-14330 | 100% |
| MLTX-02-005-EN-14960 |  | Pre-Qualification Approval for Light Fixtures | 15d | 2026-03-15 A | 2026-06-07 A | MLTX-02-005-EN-14950, MLTX-02-005-EN-14300 | 100% |
|  | 13 | **CCTV MATERIALS** |  | 2026-03-11 | 2026-06-07 |  |  |
| MLTX-02-005-EN-14970 |  | Pre-Qualification Submittal for CCTV | 15d | 2026-03-11 A | 2026-05-25 A | MLTX-02-005-EN-15070, MLTX-02-005-EN-14330 | 100% |
| MLTX-02-005-EN-14980 |  | Pre-Qualification Approval for CCTV | 15d | 2026-03-15 A | 2026-06-07 A | MLTX-02-005-EN-14970, MLTX-02-005-EN-14300 | 100% |
|  | 14 | **POWER OUTLETS/SWITCHES** |  | 2026-03-11 | 2026-06-07 |  |  |
| MLTX-02-005-EN-14990 |  | Pre-Qualification Submittal for Power Outlets/Switches | 15d | 2026-03-11 A | 2026-05-25 A | MLTX-02-005-EN-14300 | 100% |
| MLTX-02-005-EN-15000 |  | Pre-Qualification Approval for Power Outlets/Switches | 15d | 2026-03-15 A | 2026-06-07 A | MLTX-02-005-EN-14990 | 100% |
|  | LSC | **LANDSCAPE WORKS** |  | 2026-03-11 | 2026-05-21 |  |  |
|  | 7 | **INTERLOCKING PAVING** |  | 2026-03-12 | 2026-03-24 |  |  |
| MLTX-02-005-EN-15030 |  | Pre-Qualification Submittal for Interlocking Block Pavers | 15d | 2026-03-12 A | 2026-03-15 A | MLTX-02-005-EN-14300 | 100% |
| MLTX-02-005-EN-15040 |  | Pre-Qualification Approval for Interlocking Block Pavers | 15d | 2026-03-16 A | 2026-03-24 A | MLTX-02-005-EN-15030 | 100% |
|  | 9 | **CURBSTONE** |  | 2026-03-12 | 2026-03-24 |  |  |
| MLTX-02-005-EN-15130 |  | Pre-Qualification Submittal for Curbstone | 15d | 2026-03-12 A | 2026-03-15 A | MLTX-02-005-EN-14300 | 100% |
| MLTX-02-005-EN-15140 |  | Pre-Qualification Approval for Curbstone | 15d | 2026-03-16 A | 2026-03-24 A | MLTX-02-005-EN-15130 | 100% |
|  | 1 | **PAVEMENT MARKING** |  | 2026-03-11 | 2026-05-09 |  |  |
| MLTX-02-005-EN-14350 |  | Pre-Qualification Submittal for Pavement Markings | 15d | 2026-03-11 A | 2026-05-05 A | MLTX-02-005-EN-14300, MLTX-02-005-EN-14620 | 100% |
| MLTX-02-005-EN-14410 |  | Pre-Qualification Approval for Pavement Markings | 15d | 2026-03-15 A | 2026-05-09 A | MLTX-02-005-EN-14350, MLTX-02-005-EN-15270 | 100% |
|  | 2 | **TRAFFIC SIGNS** |  | 2026-03-11 | 2026-05-09 |  |  |
| MLTX-02-005-EN-14360 |  | Pre-Qualification Submittal for Traffic Signs | 15d | 2026-03-11 A | 2026-05-05 A | MLTX-02-005-EN-14300 | 100% |
| MLTX-02-005-EN-14370 |  | Pre-Qualification Approval for Traffic Signs | 15d | 2026-03-15 A | 2026-05-09 A | MLTX-02-005-EN-14360 | 100% |
|  | 3 | **IRRIGATION PIPES/SPRINKLERS** |  | 2026-03-11 | 2026-05-21 |  |  |
| MLTX-02-005-EN-14420 |  | Pre-Qualification Submittal for Irrigation Pipes/Sprinkles | 15d | 2026-03-11 A | 2026-05-20 A | MLTX-02-005-EN-14300 | 100% |
| MLTX-02-005-EN-14430 |  | Pre-Qualification Approval for Irrigation Pipes/Sprinkles | 15d | 2026-03-15 A | 2026-05-21 A | MLTX-02-005-EN-14420 | 100% |
|  | 5 | **AGRICULTURE SOIL** |  | 2026-03-11 | 2026-05-21 |  |  |
| MLTX-02-005-EN-15090 |  | Pre-Qualification Submittal for Agriculture Soil | 15d | 2026-03-11 A | 2026-05-20 A | MLTX-02-005-EN-14300 | 100% |
| MLTX-02-005-EN-15100 |  | Pre-Qualification Approval for Agriculture Soil | 15d | 2026-03-15 A | 2026-05-21 A | MLTX-02-005-EN-15090 | 100% |
|  | 8 | **TRACK SURFACE** |  | 2026-03-11 | 2026-05-21 |  |  |
| MLTX-02-005-EN-15110 |  | Pre-Qualification Submittal for Track Surface | 15d | 2026-03-11 A | 2026-05-20 A | MLTX-02-005-EN-14300 | 100% |
| MLTX-02-005-EN-15120 |  | Pre-Qualification Approval for Track Surface | 15d | 2026-03-15 A | 2026-05-21 A | MLTX-02-005-EN-15110 | 100% |
|  | 10 | **GRASS/TREES** |  | 2026-03-11 | 2026-05-21 |  |  |
| MLTX-02-005-EN-15150 |  | Pre-Qualification Submittal for Grass/Trees | 15d | 2026-03-11 A | 2026-05-20 A | MLTX-02-005-EN-14300 | 100% |
| MLTX-02-005-EN-15160 |  | Pre-Qualification Approval for Grass/Trees | 15d | 2026-03-15 A | 2026-05-21 A | MLTX-02-005-EN-15150 | 100% |
|  | 6 | **CABLES** |  | 2026-03-11 | 2026-05-11 |  |  |
| MLTX-02-005-EN-15010 |  | Pre-Qualification Submittal for Cables | 15d | 2026-03-11 A | 2026-05-09 A | MLTX-02-005-EN-14300 | 100% |
| MLTX-02-005-EN-15020 |  | Pre-Qualification Approval for Cables | 15d | 2026-03-15 A | 2026-05-11 A | MLTX-02-005-EN-15010 | 100% |
|  | 4 | **LIGHT POLES** |  | 2026-03-11 | 2026-05-20 |  |  |
| MLTX-02-005-EN-14240 |  | Pre-Qualification Submittal for Lighting poles | 15d | 2026-03-11 A | 2026-05-17 A | MLTX-02-005-EN-14300, MLTX-02-005-EN-14340 | 100% |
| MLTX-02-005-EN-14250 |  | Pre-Qualification Approval for Lighting poles | 15d | 2026-03-15 A | 2026-05-20 A | MLTX-02-005-EN-14240 | 100% |
|  | MAT | **MATERIAL SUBMITTAL** |  | 2026-03-19 | 2026-09-12 |  |  |
|  | TOI | **TOILET/SERVICE WORKS** |  | 2026-03-19 | 2026-07-30 |  |  |
|  | 1 | **STEEL REINFORCEMENT** |  | 2026-03-19 | 2026-04-12 |  |  |
| MLTX-02-005-EN-13260 |  | Material Submittal for Steel Reinforcement | 15d | 2026-03-19 A | 2026-04-07 A | MLTX-02-005-EN-14380 | 100% |
| MLTX-02-005-EN-13370 |  | Material Approval for Steel Reinforcement | 15d | 2026-03-26 A | 2026-04-12 A | MLTX-02-005-EN-13260 | 100% |
|  | 2 | **READY MIX CONCRETE** |  | 2026-03-19 | 2026-04-12 |  |  |
| MLTX-02-005-EN-13270 |  | Material Submittal for Ready Mixed Concrete | 15d | 2026-03-19 A | 2026-04-07 A | MLTX-02-005-EN-14280 | 100% |
| MLTX-02-005-EN-13280 |  | Material Approval of Ready Mixed Concrete | 15d | 2026-03-26 A | 2026-04-12 A | MLTX-02-005-EN-13270 | 100% |
|  | 3 | **CONCRETE BLOCKS** |  | 2026-03-19 | 2026-05-11 |  |  |

| ID | WBS | Task | Duration | Start | Finish | Predecessors | Complete |
| --- | --- | --- | --- | --- | --- | --- | --- |
| MLTX-02-005-EN-13460 |  | Material Submittal for Concrete Blocks | 15d | 2026-03-19 A | 2026-05-06 A | MLTX-02-005-EN-14490, MLTX-02-005-EN-13260 | 100% |
| MLTX-02-005-EN-13470 |  | Material Approval for Concrete Blocks | 15d | 2026-03-26 A | 2026-05-11 A | MLTX-02-005-EN-13460, MLTX-02-005-EN-13280 | 100% |
|  | 6 | **FLOOR/WALL TILES** |  | 2026-03-19 | 2026-05-17 |  |  |
| MLTX-02-005-EN-13480 |  | Material Submittal for Tilling Materials | 15d | 2026-03-19 A | 2026-05-13 A | MLTX-02-005-EN-14510, MLTX-02-005-EN-13260 | 100% |
| MLTX-02-005-EN-13490 |  | Material Approval for Tilling Material | 15d | 2026-03-26 A | 2026-05-17 A | MLTX-02-005-EN-13480, MLTX-02-005-EN-13280 | 100% |
|  | 7 | **SUSPENDED CEILING** |  | 2026-03-19 | 2026-05-13 |  |  |
| MLTX-02-005-EN-13500 |  | Material Submittal for Suspend Ceiling | 15d | 2026-03-19 A | 2026-05-10 A | MLTX-02-005-EN-14530, MLTX-02-005-EN-13430, MLTX-02-005-EN-13490 | 100% |
| MLTX-02-005-EN-13510 |  | Material Approval for Suspend Ceiling | 15d | 2026-03-26 A | 2026-05-13 A | MLTX-02-005-EN-13500, MLTX-02-005-EN-13520 | 100% |
|  | 8 | **DOORS/WINDOWS** |  | 2026-03-19 | 2026-05-12 |  |  |
| MLTX-02-005-EN-13520 |  | Material Submittal for Doors/Windows | 15d | 2026-03-19 A | 2026-05-07 A | MLTX-02-005-EN-14550, MLTX-02-005-EN-13430 | 100% |
| MLTX-02-005-EN-13530 |  | Material Approval for Doors/Windows | 15d | 2026-03-26 A | 2026-05-12 A | MLTX-02-005-EN-13520, MLTX-02-005-EN-13710 | 100% |
|  | 9 | **FURNITURES** |  | 2026-03-19 | 2026-05-20 |  |  |
| MLTX-02-005-EN-13640 |  | Material Submittal for Furnitures | 15d | 2026-03-19 A | 2026-05-14 A | MLTX-02-005-EN-14670, MLTX-02-005-EN-13260 | 100% |
| MLTX-02-005-EN-13650 |  | Material Approval for Furnitures | 15d | 2026-03-26 A | 2026-05-20 A | MLTX-02-005-EN-13640, MLTX-02-005-EN-13280 | 100% |
|  | 10 | **SANITARY FIXTURES** |  | 2026-03-19 | 2026-05-19 |  |  |
| MLTX-02-005-EN-13540 |  | Material Submittal for Sanitary Fixtures | 15d | 2026-03-19 A | 2026-05-14 A | MLTX-02-005-EN-14570 | 100% |
| MLTX-02-005-EN-13550 |  | Material Approval for Sanitary Fixtures | 15d | 2026-03-26 A | 2026-05-19 A | MLTX-02-005-EN-13540 | 100% |
|  | 11 | **WATER SUPPLY PIPES** |  | 2026-03-19 | 2026-05-11 |  |  |
| MLTX-02-005-EN-13560 |  | Material Submittal for Water Supply Pipes | 15d | 2026-03-19 A | 2026-05-06 A | MLTX-02-005-EN-14590, MLTX-02-005-EN-13430 | 100% |
| MLTX-02-005-EN-13570 |  | Material Approval for Water Supply Pipes | 15d | 2026-03-26 A | 2026-05-11 A | MLTX-02-005-EN-13560, MLTX-02-005-EN-13520 | 100% |
|  | 12 | **SEWAGE/DRAINAGE PIPES** |  | 2026-03-19 | 2026-05-11 |  |  |
| MLTX-02-005-EN-13580 |  | Material Submittal for Sewage/Drainage Pipes | 15d | 2026-03-19 A | 2026-05-06 A | MLTX-02-005-EN-14610, MLTX-02-005-EN-13250 | 100% |
| MLTX-02-005-EN-13590 |  | Material Approval for Sewage/Drainage Pipes | 15d | 2026-03-26 A | 2026-05-11 A | MLTX-02-005-EN-13580, MLTX-02-005-EN-12770 | 100% |
|  | 16 | **PACKAGE AC UNITS** |  | 2026-07-07 | 2026-07-07 |  |  |
| MLTX-02-005-EN-13670 |  | Material Submittal for Package AC Units | 15d | 2026-07-07 A | 2026-07-07 A | MLTX-02-005-EN-14700 | 100% |
| MLTX-02-005-EN-13680 |  | Material Approval for Package AC Units | 15d | 2026-07-07 A | 2026-07-07 A | MLTX-02-005-EN-13670 | 100% |
|  | 17 | **AIR DIFUSSERS/GRILLS** |  | 2026-07-28 | 2026-07-30 |  |  |
| MLTX-02-005-EN-13690 |  | Material Submittal for Air Diffusers/Grills | 15d | 2026-07-28 A | 2026-07-28 A | MLTX-02-005-EN-14720, MLTX-02-005-EN-13430 | 100% |
| MLTX-02-005-EN-13700 |  | Material Approval for Air Diffusers/Grills | 15d | 2026-07-30 A | 2026-07-30 A | MLTX-02-005-EN-13690, MLTX-02-005-EN-13500 | 100% |
|  | 18 | **GALVANIZED DUCTS** |  | 2026-03-24 | 2026-04-30 |  |  |
| MLTX-02-005-EN-13710 |  | Material Submittal for Galvanized Ducts | 15d | 2026-03-24 A | 2026-04-25 A | MLTX-02-005-EN-14740, MLTX-02-005-EN-13430 | 100% |
| MLTX-02-005-EN-13720 |  | Material Approval for Galvanized Ducts | 15d | 2026-03-28 A | 2026-04-30 A | MLTX-02-005-EN-13710, MLTX-02-005-EN-13290 | 100% |
|  | 19 | **EXHAUST FANS** |  | 2026-07-28 | 2026-07-30 |  |  |
| MLTX-02-005-EN-13730 |  | Material Submittal for Exhaust Fans | 15d | 2026-07-28 A | 2026-07-28 A | MLTX-02-005-EN-14760 | 100% |
| MLTX-02-005-EN-13740 |  | Material Approval for Exhaust Fans | 15d | 2026-07-30 A | 2026-07-30 A | MLTX-02-005-EN-13730 | 100% |
|  | 13 | **LIGHTING FIXTURES** |  | 2026-07-07 | 2026-07-07 |  |  |
| MLTX-02-005-EN-13600 |  | Material Submittal for Lighting Fixtures | 15d | 2026-07-07 A | 2026-07-07 A | MLTX-02-005-EN-14630, MLTX-02-005-EN-13430 | 100% |
| MLTX-02-005-EN-13610 |  | Material Approval for Lighting Fixtures | 15d | 2026-07-07 A | 2026-07-07 A | MLTX-02-005-EN-13600, MLTX-02-005-EN-13500 | 100% |
|  | 14 | **SWITCHES/SOCKETS** |  | 2026-07-28 | 2026-07-30 |  |  |
| MLTX-02-005-EN-13620 |  | Material Submittal for Switches/Sockets | 15d | 2026-07-28 A | 2026-07-28 A | MLTX-02-005-EN-14650, MLTX-02-005-EN-13430 | 100% |
| MLTX-02-005-EN-13630 |  | Material Approval for Switches/Sockets | 15d | 2026-07-30 A | 2026-07-30 A | MLTX-02-005-EN-13620, MLTX-02-005-EN-13520 | 100% |
|  | 15 | **EARTHING SYSTEM** |  | 2026-03-24 | 2026-05-18 |  |  |
| MLTX-02-005-EN-13420 |  | Material Submittal for Earthing System | 15d | 2026-03-24 A | 2026-05-14 A | MLTX-02-005-EN-14450 | 100% |
| MLTX-02-005-EN-13430 |  | Material Approval for Earthing System | 15d | 2026-03-28 A | 2026-05-18 A | MLTX-02-005-EN-13420, MLTX-02-005-EN-13550 | 100% |
|  | 5 | **DISTRIBUTION PANNELS** |  | 2026-07-28 | 2026-07-30 |  |  |
| MLTX-02-005-EN-13440 |  | Material Submittal for Distribution Panels | 15d | 2026-07-28 A | 2026-07-28 A | MLTX-02-005-EN-14470, MLTX-02-005-EN-13590 | 100% |
| MLTX-02-005-EN-13450 |  | Material Approval for Distribution Panels | 15d | 2026-07-30 A | 2026-07-30 A | MLTX-02-005-EN-13440, MLTX-02-005-EN-15300, MLTX-02-005-EN-15970, MLTX-02-005-EN-15920 | 100% |
|  | PLG | **PLAYGROUND WORKS** |  | 2026-03-19 | 2026-09-12 |  |  |
|  | 5 | **PVC MEMBRANE** |  | 2026-08-26 | 2026-08-26 |  |  |
| MLTX-02-005-EN-13830 |  | Material Submittal for PVC Membrane | 15d | 2026-08-26 A | 2026-08-26 A | MLTX-02-005-EN-14860 | 100% |
| MLTX-02-005-EN-13840 |  | Material Approval for PVC Membrane | 15d | 2026-08-26 A | 2026-08-26 A | MLTX-02-005-EN-13830 | 100% |
|  | 6 | **STEEL TENSION CABLES** |  | 2026-08-26 | 2026-08-26 |  |  |
| MLTX-02-005-EN-13850 |  | Material Submittal for Steel Tension Cables | 15d | 2026-08-26 A | 2026-08-26 A | MLTX-02-005-EN-15170 | 100% |
| MLTX-02-005-EN-14150 |  | Material Approval for Steel Tension Cables | 15d | 2026-08-26 A | 2026-08-26 A | MLTX-02-005-EN-13850 | 100% |
|  | 7 | **EMERGENCY DOORS** |  | 2026-08-26 | 2026-09-12 |  |  |
| MLTX-02-005-EN-13860 |  | Material Submittal for Emergency Doors | 15d | 2026-08-26 A | 2026-08-26 A | MLTX-02-005-EN-15180 | 100% |
| MLTX-02-005-EN-14160 |  | Material Approval for Emergency Doors | 15d | 2026-09-12 A | 2026-09-12 A | MLTX-02-005-EN-13860 | 100% |
|  | 8 | **PRESSURE UNITS** |  | 2026-09-12 | 2026-09-12 |  |  |
| MLTX-02-005-EN-13870 |  | Material Submittal for Pressure Units | 15d | 2026-09-12 A | 2026-09-12 A | MLTX-02-005-EN-15190, MLTX-02-005-EN-13320 | 100% |
| MLTX-02-005-EN-14170 |  | Material Approval for Pressure Units | 15d | 2026-09-12 A | 2026-09-12 A | MLTX-02-005-EN-13870, MLTX-02-005-EN-13290 | 100% |
|  | 9 | **AIR LOCK DOORS** |  | 2026-08-26 | 2026-09-12 |  |  |
| MLTX-02-005-EN-13880 |  | Material Submittal for Lock Doors | 15d | 2026-08-26 A | 2026-08-26 A | MLTX-02-005-EN-15200, MLTX-02-005-EN-13290 | 100% |
| MLTX-02-005-EN-14180 |  | Material Approval for Lock Doors | 15d | 2026-09-12 A | 2026-09-12 A | MLTX-02-005-EN-13880, MLTX-02-005-EN-13300 | 100% |
|  | 15 | **ARTIFICIAL TURF** |  | 2026-03-19 | 2026-05-19 |  |  |
| MLTX-02-005-EN-14030 |  | Material Submittal for Artificial TURF | 15d | 2026-03-19 A | 2026-05-14 A | MLTX-02-005-EN-15210 | 100% |
| MLTX-02-005-EN-14190 |  | Material Approval for Artificial TURF | 15d | 2026-03-26 A | 2026-05-19 A | MLTX-02-005-EN-14030 | 100% |
|  | 20 | **RUBBER GRANULES** |  | 2026-03-19 | 2026-05-19 |  |  |
| MLTX-02-005-EN-14040 |  | Material Submittal for Rubber Granules | 15d | 2026-03-19 A | 2026-05-14 A | MLTX-02-005-EN-15220 | 100% |
| MLTX-02-005-EN-14200 |  | Material Approval for Rubber Granules | 15d | 2026-03-26 A | 2026-05-19 A | MLTX-02-005-EN-14040 | 100% |
|  | 21 | **PADEL GLASS** |  | 2026-03-19 | 2026-05-19 |  |  |

| ID | WBS | Task | Duration | Start | Finish | Predecessors | Complete |
| --- | --- | --- | --- | --- | --- | --- | --- |
| MLTX-02-005-EN-14050 |  | Material Submittal for Padel Glass | 15d | 2026-03-19 A | 2026-05-14 A | MLTX-02-005-EN-15230 | 100% |
| MLTX-02-005-EN-14210 |  | Material Approval for Padel Glass | 15d | 2026-03-26 A | 2026-05-19 A | MLTX-02-005-EN-14050 | 100% |
|  | 22 | **PADEL WIRE MESH/STEEL SETS** |  | 2026-03-19 | 2026-05-19 |  |  |
| MLTX-02-005-EN-14060 |  | Material Submittal for Wire Mesh/Steel Sets | 15d | 2026-03-19 A | 2026-05-14 A | MLTX-02-005-EN-15240 | 100% |
| MLTX-02-005-EN-14220 |  | Material Approval for Wire Mesh/Steel Sets | 15d | 2026-03-26 A | 2026-05-19 A | MLTX-02-005-EN-14060 | 100% |
|  | 1 | **AGGREGATE BASE COURSE** |  | 2026-03-19 | 2026-05-10 |  |  |
| MLTX-02-005-EN-13290 |  | Material Submittal for Aggregate Base Course | 15d | 2026-03-19 A | 2026-05-05 A | MLTX-02-005-EN-14310 | 100% |
| MLTX-02-005-EN-13300 |  | Material Approval for Aggregate Base Course | 15d | 2026-03-26 A | 2026-05-10 A | MLTX-02-005-EN-13290, MLTX-02-005-EN-13820, MLTX-02-005-EN-13920 | 100% |
|  | 16 | **PACKAGE AC UNITS** |  | 2026-07-07 | 2026-07-07 |  |  |
| MLTX-02-005-EN-13750 |  | Material Submittal for Package AC Units | 15d | 2026-07-07 A | 2026-07-07 A | MLTX-02-005-EN-14780, MLTX-02-005-EN-13320 | 100% |
| MLTX-02-005-EN-13760 |  | Material Approval for Package AC Units | 15d | 2026-07-07 A | 2026-07-07 A | MLTX-02-005-EN-13750, MLTX-02-005-EN-13290 | 100% |
|  | 17 | **AIR DIFUSSERS/GRILLS** |  | 2026-09-12 | 2026-09-12 |  |  |
| MLTX-02-005-EN-13770 |  | Material Submittal for Air Difussers/Grills | 15d | 2026-09-12 A | 2026-09-12 A | MLTX-02-005-EN-14800, MLTX-02-005-EN-13290 | 100% |
| MLTX-02-005-EN-13780 |  | Material Approval for Air Difussers/Grills | 15d | 2026-09-12 A | 2026-09-12 A | MLTX-02-005-EN-13770, MLTX-02-005-EN-13300 | 100% |
|  | 2 | **BITUMINOUS BASE & WEARING COURSE** |  | 2026-03-24 | 2026-05-10 |  |  |
| MLTX-02-005-EN-13310 |  | Material Submittal for Bituminous Base & Wearing Cource | 15d | 2026-03-24 A | 2026-05-05 A | MLTX-02-005-EN-14330 | 100% |
| MLTX-02-005-EN-13320 |  | Material Approval for the Site | 15d | 2026-03-28 A | 2026-05-10 A | MLTX-02-005-EN-13310 | 100% |
|  | 3 | **INTERLOCKING PAVING** |  | 2026-03-24 | 2026-05-13 |  |  |
| MLTX-02-005-EN-13330 |  | Material Submittal for Interlocking Block Pavers | 15d | 2026-03-24 A | 2026-05-07 A | MLTX-02-005-EN-14400, MLTX-02-005-EN-13320 | 100% |
| MLTX-02-005-EN-13380 |  | Material Approval for Interlocking Block Pavers | 15d | 2026-03-28 A | 2026-05-13 A | MLTX-02-005-EN-13330, MLTX-02-005-EN-13290 | 100% |
|  | 4 | **MARKING PAINT** |  | 2026-03-24 | 2026-05-18 |  |  |
| MLTX-02-005-EN-13660 |  | Material Submittal for Marking Paint | 15d | 2026-03-24 A | 2026-05-12 A | MLTX-02-005-EN-15250 | 100% |
| MLTX-02-005-EN-14230 |  | Material Approval for Marking Paint | 15d | 2026-03-28 A | 2026-05-18 A | MLTX-02-005-EN-13660 | 100% |
|  | 18 | **GALVANIZED DUCTS** |  | 2026-03-24 | 2026-05-10 |  |  |
| MLTX-02-005-EN-13790 |  | Material Submittal for Galvanized Duct | 15d | 2026-03-24 A | 2026-05-06 A | MLTX-02-005-EN-14820, MLTX-02-005-EN-13290 | 100% |
| MLTX-02-005-EN-13800 |  | Material Approval for Galvanized Duct | 15d | 2026-03-28 A | 2026-05-10 A | MLTX-02-005-EN-13790, MLTX-02-005-EN-13300 | 100% |
|  | 19 | **EXHAUST FANS** |  | 2026-09-12 | 2026-09-12 |  |  |
| MLTX-02-005-EN-13810 |  | Material Submittal for Exhaust Fans | 15d | 2026-09-12 A | 2026-09-12 A | MLTX-02-005-EN-14840 | 100% |
| MLTX-02-005-EN-13820 |  | Material Approval for Exhaust Fans | 15d | 2026-09-12 A | 2026-09-12 A | MLTX-02-005-EN-13810 | 100% |
|  | 10 | **DISTRIBUTION BOARDS** |  | 2026-08-26 | 2026-08-26 |  |  |
| MLTX-02-005-EN-13890 |  | Material Submittal for Distribution Boards | 15d | 2026-08-26 A | 2026-08-26 A | MLTX-02-005-EN-14920 | 100% |
| MLTX-02-005-EN-13900 |  | Material Approval for Distribution Boards | 15d | 2026-08-26 A | 2026-08-26 A | MLTX-02-005-EN-13890 | 100% |
|  | 11 | **POWER CABLES** |  | 2026-03-24 | 2026-05-19 |  |  |
| MLTX-02-005-EN-13910 |  | Material Submittal for Power Cables | 15d | 2026-03-24 A | 2026-05-14 A | MLTX-02-005-EN-14940 | 100% |
| MLTX-02-005-EN-13920 |  | Material Approval for Power Cables | 15d | 2026-03-28 A | 2026-05-19 A | MLTX-02-005-EN-13910 | 100% |
|  | 12 | **LIGHT FIXTURES** |  | 2026-07-07 | 2026-07-07 |  |  |
| MLTX-02-005-EN-13930 |  | Material Submittal for Light Fixtures | 15d | 2026-07-07 A | 2026-07-07 A | MLTX-02-005-EN-14960, MLTX-02-005-EN-13320 | 100% |
| MLTX-02-005-EN-13940 |  | Material Approval for Light Fixtures | 15d | 2026-07-07 A | 2026-07-07 A | MLTX-02-005-EN-13930, MLTX-02-005-EN-13290 | 100% |
|  | 13 | **CCTV MATERIALS** |  | 2026-08-26 | 2026-09-12 |  |  |
| MLTX-02-005-EN-13950 |  | Material Submittal for CCTV | 15d | 2026-08-26 A | 2026-08-26 A | MLTX-02-005-EN-14980, MLTX-02-005-EN-13320 | 100% |
| MLTX-02-005-EN-13960 |  | Material Approval for CCTV | 15d | 2026-09-12 A | 2026-09-12 A | MLTX-02-005-EN-13950, MLTX-02-005-EN-13290 | 100% |
|  | 14 | **POWER OUTLETS/SWITCHES** |  | 2026-09-12 | 2026-09-12 |  |  |
| MLTX-02-005-EN-13970 |  | Material Submittal for Power Outlets/Switches | 15d | 2026-09-12 A | 2026-09-12 A | MLTX-02-005-EN-15000 | 100% |
| MLTX-02-005-EN-13980 |  | Material Approval for Power Outlets/Switches | 15d | 2026-09-12 A | 2026-09-12 A | MLTX-02-005-EN-13970 | 100% |
|  | LSC | **LANDSCAPE WORKS** |  | 2026-03-24 | 2026-07-30 |  |  |
|  | 7 | **INTERLOCKING PAVING** |  | 2026-03-24 | 2026-05-13 |  |  |
| MLTX-02-005-EN-14010 |  | Material Submittal for Interlocking Block Pavers | 15d | 2026-03-24 A | 2026-05-07 A | MLTX-02-005-EN-15040 | 100% |
| MLTX-02-005-EN-14020 |  | Material Approval for Interlocking Block Pavers | 15d | 2026-03-28 A | 2026-05-13 A | MLTX-02-005-EN-14010 | 100% |
|  | 9 | **CURBSTONE** |  | 2026-03-24 | 2026-05-13 |  |  |
| MLTX-02-005-EN-14110 |  | Material Submittal for Curbstone | 15d | 2026-03-24 A | 2026-05-07 A | MLTX-02-005-EN-15140 | 100% |
| MLTX-02-005-EN-14120 |  | Material Approval for Curbstone | 15d | 2026-03-28 A | 2026-05-13 A | MLTX-02-005-EN-14110 | 100% |
|  | 1 | **PAVEMENT MARKING** |  | 2026-03-24 | 2026-05-18 |  |  |
| MLTX-02-005-EN-13340 |  | Material Submittal for Pavement Markings | 15d | 2026-03-24 A | 2026-05-12 A | MLTX-02-005-EN-14410 | 100% |
| MLTX-02-005-EN-13390 |  | Material Approval for Pavement Markings | 15d | 2026-03-28 A | 2026-05-18 A | MLTX-02-005-EN-13340 | 100% |
|  | 2 | **TRAFFIC SIGNS** |  | 2026-03-24 | 2026-05-18 |  |  |
| MLTX-02-005-EN-13350 |  | Material Submittal for Traffic Signs | 15d | 2026-03-24 A | 2026-05-12 A | MLTX-02-005-EN-14370 | 100% |
| MLTX-02-005-EN-13360 |  | Material Approval for Traffic Signs | 15d | 2026-03-28 A | 2026-05-18 A | MLTX-02-005-EN-13350 | 100% |
|  | 3 | **IRRIGATION PIPES/SPRINKLERS** |  | 2026-07-28 | 2026-07-30 |  |  |
| MLTX-02-005-EN-13400 |  | Material Submittal for Irrigation Pipes/Sprinkles | 15d | 2026-07-28 A | 2026-07-28 A | MLTX-02-005-EN-14430 | 100% |
| MLTX-02-005-EN-13410 |  | Material Approval for Irrigation Pipes/Sprinkles | 15d | 2026-07-30 A | 2026-07-30 A | MLTX-02-005-EN-13400 | 100% |
|  | 5 | **AGRICULTURE SOIL** |  | 2026-03-24 | 2026-05-21 |  |  |
| MLTX-02-005-EN-14070 |  | Material Submittal for Agriculture Soil | 15d | 2026-03-24 A | 2026-05-16 A | MLTX-02-005-EN-15100 | 100% |
| MLTX-02-005-EN-14080 |  | Material Approval for Agriculture Soil | 15d | 2026-03-28 A | 2026-05-21 A | MLTX-02-005-EN-14070 | 100% |
|  | 8 | **TRACK SURFACE** |  | 2026-07-28 | 2026-07-30 |  |  |
| MLTX-02-005-EN-14090 |  | Material Submittal for Track Surface | 15d | 2026-07-28 A | 2026-07-28 A | MLTX-02-005-EN-15120 | 100% |
| MLTX-02-005-EN-14100 |  | Material Approval for Track Surface | 15d | 2026-07-30 A | 2026-07-30 A | MLTX-02-005-EN-14090, MLTX-02-005-EN-13240 | 100% |
|  | 10 | **GRASS/TREES** |  | 2026-03-24 | 2026-05-21 |  |  |
| MLTX-02-005-EN-14130 |  | Material Submittal for Grass/Trees | 15d | 2026-03-24 A | 2026-05-16 A | MLTX-02-005-EN-15160 | 100% |
| MLTX-02-005-EN-14140 |  | Material Approval for Grass/Trees | 15d | 2026-03-28 A | 2026-05-21 A | MLTX-02-005-EN-14130 | 100% |
|  | 6 | **CABLES** |  | 2026-03-24 | 2026-05-19 |  |  |

| ID | WBS | Task | Duration | Start | Finish | Predecessors | Complete | Total float |
| --- | --- | --- | --- | --- | --- | --- | --- | --- |
| MLTX-02-005-EN-13990 |  | Material Submittal for Cables | 15d | 2026-03-24 A | 2026-05-14 A | MLTX-02-005-EN-15020 | 100% |  |
| MLTX-02-005-EN-14000 |  | Material Approval for Cables | 15d | 2026-03-28 A | 2026-05-19 A | MLTX-02-005-EN-13990 | 100% |  |
|  | 4 | **LIGHT POLES** |  | 2026-07-07 | 2026-07-07 |  |  |  |
| MLTX-02-005-EN-13240 |  | Material Submittal for Lighting poles | 15d | 2026-07-07 A | 2026-07-07 A | MLTX-02-005-EN-14250 | 100% |  |
| MLTX-02-005-EN-13250 |  | Material Approval for Lighting poles | 15d | 2026-07-07 A | 2026-07-07 A | MLTX-02-005-EN-13240 | 100% |  |
|  | CONST | **CONSTRUCTION PHASE** |  | 2026-04-04 | 2027-03-23 |  |  |  |
|  | SW | **SITE WORKS** |  | 2026-04-04 | 2027-03-23 |  |  |  |
|  | 1 | **EARTH WORKS** |  | 2026-04-04 | 2026-08-13 |  |  |  |
| MLTX-02-005-CN-13320 |  | Excavation (in all types of soil) including Compaction (Service/Toilet Building) | 9d | 2026-04-04 A | 2026-08-02 A | MLTX-02-005-EN-15260 | 100% |  |
| MLTX-02-005-CN-13310 |  | Excavation (in all types of soil) including Compaction (Playground Area) | 12d | 2026-04-06 A | 2026-04-12 A | MLTX-02-005-EN-16170, MLTX-02-005-CN-13320 SS, MLTX-02-005-EN-16190 | 100% |  |
| MLTX-02-005-CN-13330 |  | Excavation (in all types of soil) including Compaction (Landscape Area) | 7d | 2026-04-06 A | 2026-08-05 A | MLTX-02-005-EN-16020, MLTX-02-005-CN-13310, MLTX-02-005-EN-16040, MLTX-02-005-EN-16010, MLTX-02-005-EN-16030, MLTX-02-005-CN-13510 | 100% |  |
| MLTX-02-005-CN-13350 |  | Backfilling on Layers (Selected Soil) including Compaction (Service/Toilet Building) | 20d | 2026-04-06 A | 2026-04-08 A | MLTX-02-005-CN-13320 SS, MLTX-02-005-CN-13310 | 100% |  |
| MLTX-02-005-CN-13340 |  | Backfilling on Layers (Selected Soil) including Compaction (Playground Area) | 10d | 2026-04-13 A | 2026-04-30 A | MLTX-02-005-MS-1050, MLTX-02-005-CN-13310, MLTX-02-005-MS-1060 | 100% |  |
| MLTX-02-005-CN-13360 |  | Backfilling on Layers (Selected Soil) including Compaction (Landscape Area) | 8d | 2026-04-21 A | 2026-08-13 A | MLTX-02-005-CN-13330 SS, MLTX-02-005-CN-13320 SS, MLTX-02-005-CN-13310, MLTX-02-005-CN-13320 FF, MLTX-02-005-CN-13330 FF, MLTX-02-005-CN-13510 | 100% |  |
|  | 4 | **LANDSCAPE WORKS** |  | 2026-05-19 | 2027-03-23 |  |  |  |
|  | 4 | **PLAYGROUND AREA** |  | 2026-05-19 | 2027-03-04 |  |  |  |
|  | 6 | **FOOTBALL PLAYGROUND** |  | 2026-05-19 | 2027-02-20 |  |  |  |
| MLTX-02-005-CN-13510 |  | Preparation and Proofing for Subgrade (Football Playground) | 10d | 2026-05-19 A | 2026-05-31 A | MLTX-02-005-CN-13340 | 100% |  |
| MLTX-02-005-CN-13520 |  | Backfilling and Compaction of Base Layers (Football Playground) | 16d | 2026-06-01 A | 2026-06-18 A | MLTX-02-005-PR-11070, MLTX-02-005-CN-13510, MLTX-02-005-EN-13320 | 100% |  |
| MLTX-02-005-CN-14770 |  | Aggregate basecourse layer (Football Playground) | 21d | 2026-06-20 A | 2026-06-28 A | MLTX-02-005-CN-13520 | 100% |  |
| MLTX-02-005-CN-13530 |  | Finishing Asphalt & Concrete Surface (Football Playground) | 20d | 2026-11-08 A | 2026-11-09 A | MLTX-02-005-CN-13980 | 100% |  |
| MLTX-02-005-CN-13550 |  | Surface Marking and Painting (Football Playground) | 2d | 2027-02-11 | 2027-02-14 | MLTX-02-005-PR-11440, MLTX-02-005-CN-13530, MLTX-02-005-CN-13750, MLTX-02-005-PR-11960 |  | -44.1d |
| MLTX-02-005-CN-13540 |  | Install Sport Equipments - Goal / Nets - (Football Playground) | 5d | 2027-02-14 | 2027-02-20 | MLTX-02-005-CN-13530, MLTX-02-005-CN-13550, MLTX-02-005-EN-16340 |  | -44.1d |
|  | 7 | **PADEL PLAYGROUND** |  | 2026-05-19 | 2027-03-02 |  |  |  |
| MLTX-02-005-CN-13560 |  | Preparation and Proofing for Subgrade (Padel Playground) | 7d | 2026-05-19 A | 2026-05-31 A | MLTX-02-005-CN-13510 | 100% |  |
| MLTX-02-005-CN-13570 |  | Backfilling and Compaction of Base Layers (Padel Playground) | 16d | 2026-06-01 A | 2026-06-18 A | MLTX-02-005-CN-13560, MLTX-02-005-PR-11070, MLTX-02-005-EN-13320, MLTX-02-005-CN-13620 | 100% |  |
| MLTX-02-005-CN-14780 |  | Aggregate basecourse layer (Padel Playground) | 21d | 2026-06-20 A | 2026-06-28 A | MLTX-02-005-CN-14770, MLTX-02-005-CN-13570 | 100% |  |
| MLTX-02-005-CN-13580 |  | Finishing Asphalt & Concrete Surface (Padel Playground) | 21d | 2026-08-24 A | 2026-08-25 A | MLTX-02-005-CN-13630 | 100% |  |
| MLTX-02-005-CN-13590 |  | Install Sport Equipments - Goal / Nets - (Padel Playground) | 5d | 2027-02-24 | 2027-03-02 | MLTX-02-005-CN-13580, MLTX-02-005-EN-16360, MLTX-02-005-CN-13540 SS, MLTX-02-005-CN-13810, MLTX-02-005-CN-14790, MLTX-02-005-CN-14780 |  | -52.1d |
| MLTX-02-005-CN-13600 |  | Surface Marking and Painting (Padel Playground) | 5d | 2027-02-24 | 2027-03-02 | MLTX-02-005-CN-13590 SS, MLTX-02-005-PR-11440, MLTX-02-005-CN-13550, MLTX-02-005-CN-13530 |  | -52.1d |
|  | 8 | **BASKETBALL PLAYGROUND** |  | 2026-05-19 | 2027-03-04 |  |  |  |
| MLTX-02-005-CN-13610 |  | Preparation and Proofing for Subgrade (Basketball Playground) | 10d | 2026-05-19 A | 2026-05-31 A | MLTX-02-005-CN-13560, MLTX-02-005-CN-13860 | 100% |  |
| MLTX-02-005-CN-13620 |  | Backfilling and Compaction of Base Layers (Basketball Playground) | 11d | 2026-06-01 A | 2026-06-18 A | MLTX-02-005-PR-11070, MLTX-02-005-EN-14230, MLTX-02-005-EN-13320, MLTX-02-005-CN-13610, MLTX-02-005-PR-11230 | 100% |  |
| MLTX-02-005-CN-14790 |  | Aggregate basecourse layer (Basketball Playground) | 21d | 2026-06-20 A | 2026-06-28 A | MLTX-02-005-CN-14780 | 100% |  |
| MLTX-02-005-CN-13630 |  | Finishing Asphalt & Concrete Surface (Basketball Playground) | 21d | 2026-08-20 A | 2026-08-25 A | MLTX-02-005-CN-13620 | 100% |  |
| MLTX-02-005-CN-13640 |  | Install Sport Equipments - Goal / Nets - (Basketball Playground) | 2d | 2027-03-02 | 2027-03-04 | MLTX-02-005-CN-13630, MLTX-02-005-CN-13540, MLTX-02-005-CN-13590, MLTX-02-005-EN-16350, MLTX-02-005-CN-14790, MLTX-02-005-CN-14270 |  | -52.1d |
| MLTX-02-005-CN-13650 |  | Surface Marking and Painting (Basketball Playground) | 2d | 2027-03-02 | 2027-03-04 | MLTX-02-005-CN-13600, MLTX-02-005-CN-13640 SS, MLTX-02-005-PR-11440, MLTX-02-005-CN-13550 |  | -52.1d |
|  | 9 | **PADEL FENCE** |  | 2026-08-08 | 2027-02-20 |  |  |  |
| MLTX-02-005-CN-13660 |  | Excavation for Fence | 8d | 2026-08-08 A | 2026-08-08 A | MLTX-02-005-CN-13570, MLTX-02-005-CN-13620, MLTX-02-005-CN-13630, MLTX-02-005-CN-14790 | 100% |  |
| MLTX-02-005-CN-13670 |  | Concrete Foundation for Fence including Posts Fixation | 7d | 2026-08-15 A | 2026-08-23 A | MLTX-02-005-CN-13660 SS, MLTX-02-005-EN-15390, MLTX-02-005-CN-13660 FF, MLTX-02-005-CN-13630, MLTX-02-005-CN-14790 | 100% |  |
| MLTX-02-005-CN-13671 |  | Backfilling and Reinstatement for Concrete Foundation | 2d | 2026-10-13 A | 2026-10-13 A | MLTX-02-005-CN-13670 | 100% |  |
| MLTX-02-005-CN-13680 |  | Tempered Glass Fenc Installation and Fixation | 25d | 2026-12-26 | 2027-01-24 | MLTX-02-005-CN-13670 SS, MLTX-02-005-PR-11900, MLTX-02-005-CN-13670 FF, MLTX-02-005-CN-13630, MLTX-02-005-CN-14790 |  | -19.1d |
| MLTX-02-005-CN-13690 |  | Chain Link Fence Installation and Fixation | 25d | 2026-12-26 | 2027-01-24 | MLTX-02-005-CN-13680 SS, MLTX-02-005-CN-13680 FF, MLTX-02-005-PR-11920, MLTX-02-005-CN-13630, MLTX-02-005-CN-14790 |  | -19.1d |
| MLTX-02-005-CN-13700 |  | Install of Fence Gates | 5d | 2027-02-14 | 2027-02-20 | MLTX-02-005-CN-13690 FF, MLTX-02-005-CN-13690 SS, MLTX-02-005-CN-13550 |  | -42.1d |
|  | 1 | **CURBSTOEN/INTERLOCK** |  | 2026-08-10 | 2026-11-30 |  |  |  |
| MLTX-02-005-CN-13450 |  | Concrete Works Under Curbstone | 3d | 2026-08-10 A | 2026-08-10 A | MLTX-02-005-EN-15360, MLTX-02-005-EN-16200, MLTX-02-005-CN-13520 | 100% |  |
| MLTX-02-005-CN-13460 |  | Curbstone Installation | 4d | 2026-08-11 A | 2026-08-13 A | MLTX-02-005-PR-11980, MLTX-02-005-CN-13450 | 100% |  |
| MLTX-02-005-CN-13390 |  | Interlock Installation (Grey Scale) for LandScape (Including Finishing Works) | 6d | 2026-10-21 A | 2026-11-30 | MLTX-02-005-PR-11110, MLTX-02-005-PR-11840, MLTX-02-005-CN-13460 | 95% | 27.9d |
|  | 10 | **AIR DOME** |  | 2026-07-14 | 2027-02-24 |  |  |  |
|  | 1 | **CIVIL WORKS** |  | 2026-07-14 | 2027-02-11 |  |  |  |
| MLTX-02-005-CN-13710 |  | Excavation for Foundation (Air Dome) | 10d | 2026-07-14 A | 2026-08-02 A | MLTX-02-005-EN-16220, MLTX-02-005-CN-13620, MLTX-02-005-EN-16240, MLTX-02-005-CN-13570, MLTX-02-005-EN-16230, MLTX-02-005-EN-16260, MLTX-02-005-CN-13520, MLTX-02-005-CN-14770 | 100% |  |
| MLTX-02-005-CN-13720 |  | Concrete Works for Foundations including Anchor Bolts (Air Dome) | 15d | 2026-08-10 A | 2026-09-21 A | MLTX-02-005-CN-13710 | 100% |  |
| MLTX-02-005-CN-13730 |  | Cable System Installation (Air Dome) | 8d | 2026-09-21 A | 2026-09-21 A | MLTX-02-005-EN-13840 | 100% |  |
| MLTX-02-005-CN-13860 |  | Perimeter Clamping System Installation | 8d | 2026-09-21 A | 2026-09-28 A | MLTX-02-005-CN-13730 FF, MLTX-02-005-CN-13730 SS+10d | 100% |  |
| MLTX-02-005-CN-13740 |  | Install of Membrane Covering System (Air Dome) | 20d | 2027-01-19 | 2027-02-11 | MLTX-02-005-PR-11740, MLTX-02-005-CN-13860, MLTX-02-005-CN-11740, MLTX-02-005-CN-13720, MLTX-02-005-PR-12050, MLTX-02-005-EN-15400, MLTX-02-005-CN-14780, MLTX-02-005-CN-13420, MLTX-02-005-CN-14790 |  | -54.1d |
| MLTX-02-005-CN-13750 |  | Thermal Insulation Works (Air Dome) | 20d | 2027-01-19 | 2027-02-11 | MLTX-02-005-CN-13740 SS, MLTX-02-005-CN-11740, MLTX-02-005-CN-13740 FF |  | -54.1d |
|  | 3 | **MECHANICAL WORKS** |  | 2027-02-11 | 2027-02-17 |  |  |  |
| MLTX-02-005-CN-13780 |  | Air Ducts and Grills Installation (Air Dome) | 4d | 2027-02-11 | 2027-02-16 | MLTX-02-005-EN-16150, MLTX-02-005-PR-11560, MLTX-02-005-PR-12070, MLTX-02-005-PR-12080, MLTX-02-005-CN-13750, MLTX-02-005-PR-11580 |  | -54.1d |
| MLTX-02-005-CN-13790 |  | Air Units Installation (Air Dome) | 5d | 2027-02-11 | 2027-02-17 | MLTX-02-005-CN-13780 FF, MLTX-02-005-CN-13780 SS, MLTX-02-005-PR-11540 |  | -54.1d |
| MLTX-02-005-CN-13800 |  | Exhaust Fans and Ducts Installation (Air Dome) | 5d | 2027-02-11 | 2027-02-17 | MLTX-02-005-CN-13780 FF, MLTX-02-005-CN-13790 SS, MLTX-02-005-CN-13780 SS, MLTX-02-005-PR-11600, MLTX-02-005-CN-13790 FF |  | -52.1d |
|  | 4 | **ELECTRICAL WORKS** |  | 2027-02-11 | 2027-02-24 |  |  |  |
| MLTX-02-005-CN-13810 |  | Light Fixture Works (Air Dome) | 10d | 2027-02-11 | 2027-02-24 | MLTX-02-005-CN-13800 SS, MLTX-02-005-PR-11760, MLTX-02-005-PR-11740, MLTX-02-005-CN-13800 FF, MLTX-02-005-CN-13790 FF, MLTX-02-005-CN-13790 SS |  | -52.1d |
| MLTX-02-005-CN-13820 |  | Distribution Board and Electrical Works (Air Dome) | 7d | 2027-02-15 | 2027-02-24 | MLTX-02-005-EN-16070, MLTX-02-005-EN-16080, MLTX-02-005-PR-11800, MLTX-02-005-EN-16090, MLTX-02-005-EN-16100, MLTX-02-005-CN-13810 SS, MLTX-02-005-EN-16110, MLTX-02-005-EN-12920, MLTX-02-005-PR-11740, MLTX-02-005-PR-11720, MLTX-02-005-CN-13810 FF |  | -49.1d |
| MLTX-02-005-CN-13830 |  | External Electrical Connection Works (Air Dome) | 6d | 2027-02-16 | 2027-02-24 | MLTX-02-005-CN-13820 FF, MLTX-02-005-CN-13820 SS |  | -49.1d |
| MLTX-02-005-CN-13840 |  | Emergency Generator Installation (Air Dome) | 4d | 2027-02-18 | 2027-02-24 | MLTX-02-005-CN-13830 FF, MLTX-02-005-EN-13000, MLTX-02-005-EN-12990, MLTX-02-005-CN-13830 SS, MLTX-02-005-EN-12970 |  | -49.1d |
| MLTX-02-005-CN-13850 |  | Control System Installation (Air Dome) | 3d | 2027-02-20 | 2027-02-24 | MLTX-02-005-EN-16120, MLTX-02-005-EN-16130, MLTX-02-005-EN-16140, MLTX-02-005-CN-13840 SS, MLTX-02-005-PR-11780, MLTX-02-005-CN-13840 FF |  | -49.1d |
|  | 2 | **FINISHES WORKS** |  | 2027-02-15 | 2027-02-20 |  |  |  |
| MLTX-02-005-CN-13760 |  | Doors Installation Including Emergency, Entrance doors (Air Dome) | 2d | 2027-02-15 | 2027-02-17 | MLTX-02-005-PR-12060, MLTX-02-005-CN-13790 FF, MLTX-02-005-EN-16210 |  | -54.1d |
| MLTX-02-005-CN-13770 |  | Logo and Signs Installation (Air Dome) | 2d | 2027-02-17 | 2027-02-20 | MLTX-02-005-CN-13760 |  | -46.1d |
|  | 1 | **IRRIGATION NETWORK** |  | 2026-08-24 | 2027-03-01 |  |  |  |

| ID | WBS | Task | Duration | Start | Finish | Predecessors | Complete | Total float |
| --- | --- | --- | --- | --- | --- | --- | --- | --- |
| MLTX-02-005-CN-14620 |  | Installing of HDPE Pipes for Irrigation Network (Main Line) | 3d | 2026-08-24 A | 2026-09-14 A | MLTX-02-005-EN-16060, MLTX-02-005-CN-13460, MLTX-02-005-EN-16050 | 100% |  |
| MLTX-02-005-CN-14630 |  | Installing of HDPE Pipes for Irrigation Network (Branch Lines) | 3d | 2026-09-19 A | 2026-09-29 A | MLTX-02-005-CN-14620 | 100% |  |
| MLTX-02-005-CN-14640 |  | Installing of Valves and fittings for Irrigation Network | 3d | 2026-09-19 A | 2026-10-13 A | MLTX-02-005-CN-14630 | 100% |  |
| MLTX-02-005-CN-14650 |  | Installing of Bubblers and Spreyers | 2d | 2027-02-27 | 2027-03-01 | MLTX-02-005-PR-11180, MLTX-02-005-CN-14640, MLTX-02-005-CN-13880, MLTX-02-005-EN-15460, MLTX-02-005-CN-13410, MLTX-02-005-CN-14590 |  | -53.1d |
|  | 5 | **NATURAL GROUND** |  | 2026-10-20 | 2026-11-21 |  |  |  |
| MLTX-02-005-CN-13420 |  | Compacted Natural Ground Soil Installation Works for Landscape | 15d | 2026-10-20 A | 2026-11-14 A | MLTX-02-005-CN-14350, MLTX-02-005-PR-8870 | 100% |  |
| MLTX-02-005-CN-13410 |  | Tartan Floor Installation Works for Landscape (Including Finishing Works) | 15d | 2026-11-11 A | 2026-11-21 A | MLTX-02-005-CN-13420, MLTX-02-005-CN-13720 | 100% |  |
|  | 2 | **PLANTING** |  | 2026-10-24 | 2026-12-05 |  |  |  |
| MLTX-02-005-CN-13480 |  | Placement of Sweet/Agricultural Soil (Including Levelling and Grading) | 6d | 2026-10-24 A | 2026-11-30 | MLTX-02-005-PR-11940, MLTX-02-005-EN-15380 | 20% | 24.9d |
| MLTX-02-005-CN-13490 |  | Placement of Lawn Ground Cover (Rolling and Compaction) | 7d | 2026-11-01 A | 2026-12-01 | MLTX-02-005-CN-13500 SS | 20% | 27.9d |
| MLTX-02-005-CN-13500 |  | Placement and Fixation of Trees | 10d | 2026-11-01 A | 2026-12-05 | MLTX-02-005-PR-12000 SS, MLTX-02-005-CN-13480 SS | 20% | 24.9d |
|  | 3 | **WALKING/BIKE PATHS** |  | 2026-07-19 | 2026-09-16 |  |  |  |
| MLTX-02-005-CN-13430 |  | Bike Path Preparation and Installation Works | 10d | 2026-07-19 A | 2026-09-16 A | MLTX-02-005-PR-11070 | 100% |  |
| MLTX-02-005-CN-13440 |  | Walking Path Preparation and Installation Works | 10d | 2026-07-19 A | 2026-09-16 A | MLTX-02-005-CN-13430 SS, MLTX-02-005-CN-14780, MLTX-02-005-PR-9840 | 100% |  |
|  | 6 | **GENERAL/FURNITURE** |  | 2026-09-20 | 2027-03-23 |  |  |  |
| MLTX-02-005-CN-14350 |  | Preleminary Works for Site Light Poles Including Cable and Bases Works | 13d | 2026-09-20 A | 2026-09-30 A | MLTX-02-005-EN-15590, MLTX-02-005-EN-15620, MLTX-02-005-EN-15300, MLTX-02-005-EN-15610, MLTX-02-005-CN-13460, MLTX-02-005-PR-11820, MLTX-02-005-EN-16180, MLTX-02-005-EN-15600 | 100% |  |
| MLTX-02-005-CN-14360 |  | Installing of Site Light Poles | 20d | 2026-10-15 A | 2026-10-28 A | MLTX-02-005-CN-14350, MLTX-02-005-PR-12090 | 100% |  |
| MLTX-02-005-CN-13870 |  | Fixation and Installation of Steel Frame for Benches | 18d | 2026-12-22 | 2027-01-12 | MLTX-02-005-CN-13430, MLTX-02-005-EN-15340, MLTX-02-005-CN-14350, MLTX-02-005-CN-13580, MLTX-02-005-PR-9330 |  | -64.1d |
| MLTX-02-005-CN-13400 |  | Stamped Concrete Works for LandScape (Including Finishing Works) | 18d | 2027-01-12 | 2027-02-02 | MLTX-02-005-CN-13440, MLTX-02-005-CN-14350, MLTX-02-005-CN-13870 |  | -64.1d |
| MLTX-02-005-CN-13880 |  | Fixation and Installation of Benches | 20d | 2027-02-02 | 2027-02-27 | MLTX-02-005-CN-13870, MLTX-02-005-CN-14350, MLTX-02-005-CN-13400 |  | -64.1d |
| MLTX-02-005-CN-13890 |  | Fixation and Installation of Precast Concrete Seats (Rectangular) | 20d | 2027-02-02 | 2027-02-27 | MLTX-02-005-CN-13880 SS, MLTX-02-005-CN-13880 FF, MLTX-02-005-CN-14350 |  | -64.1d |
| MLTX-02-005-CN-13900 |  | Fixation and Installation of Precast Concrete Seats (Circular) | 20d | 2027-02-02 | 2027-02-27 | MLTX-02-005-CN-13890 SS, MLTX-02-005-CN-13890 FF, MLTX-02-005-CN-14350 |  | -64.1d |
| MLTX-02-005-CN-13470 |  | Traffic Signs Posts and Poles Installation | 15d | 2027-02-27 | 2027-03-20 | MLTX-02-005-PR-11160, MLTX-02-005-CN-13900, MLTX-02-005-CN-14360, MLTX-02-005-CN-13370, MLTX-02-005-CN-13760 |  | -61.1d |
| MLTX-02-005-CN-13910 |  | Fixation and Installation of Precast Concrete Trash Bins | 18d | 2027-02-27 | 2027-03-23 | MLTX-02-005-CN-13900, MLTX-02-005-CN-13370, MLTX-02-005-CN-14350 |  | -64.1d |
|  | 2 | **PARKING** |  | 2026-07-18 | 2026-09-19 |  |  |  |
| MLTX-02-005-CN-13380 |  | Site Preparation & Compaction Under Interlock for Parking Area | 4d | 2026-07-18 A | 2026-07-18 A | MLTX-02-005-EN-15370, MLTX-02-005-CN-13430, MLTX-02-005-PR-9840 | 100% |  |
| MLTX-02-005-CN-13370 |  | Interlock Installation (8 Cm) for Parking Area (Including Finishing Works) | 11d | 2026-09-10 A | 2026-09-19 A | MLTX-02-005-CN-13380 | 100% |  |
|  | TO | **TOILET/SERVICE BUILDING** |  | 2026-05-23 | 2027-02-27 |  |  |  |
|  | 13 | **STRUCTURE WORKS** |  | 2026-05-23 | 2026-08-02 |  |  |  |
|  | 2 | **CONCRETE WORKS** |  | 2026-05-25 | 2026-06-27 |  |  |  |
|  | 1 | **SUB-STRUCTURE** |  | 2026-05-25 | 2026-06-07 |  |  |  |
| MLTX-02-005-CN-13920 |  | Plain Concrete Under Footing | 4d | 2026-05-25 A | 2026-05-31 A | MLTX-02-005-CN-14000, MLTX-02-005-EN-13280, MLTX-02-005-EN-15710, MLTX-02-005-EN-15720, MLTX-02-005-EN-15270, MLTX-02-005-CN-13980, MLTX-02-005-EN-15700 | 100% |  |
| MLTX-02-005-CN-13950 |  | Reinforced Concrete Works for Slab on Grade Including Steel Fixing | 5d | 2026-06-03 A | 2026-06-07 A | MLTX-02-005-PR-11150, MLTX-02-005-CN-13920 | 100% |  |
|  | 2 | **SUPER-STRUCTURE** |  | 2026-06-20 | 2026-06-27 |  |  |  |
| MLTX-02-005-CN-13930 |  | AAC Panels Works for Walls | 7d | 2026-06-20 A | 2026-06-20 A | MLTX-02-005-CN-14030, MLTX-02-005-EN-15630, MLTX-02-005-EN-15690, MLTX-02-005-EN-15650, MLTX-02-005-EN-15660, MLTX-02-005-EN-15670, MLTX-02-005-EN-15680, MLTX-02-005-EN-15640 | 100% |  |
| MLTX-02-005-CN-13960 |  | AAC Panels Works for Slabs | 4d | 2026-06-21 A | 2026-06-24 A | MLTX-02-005-CN-13930 | 100% |  |
| MLTX-02-005-CN-13940 |  | Parpet Works and Lintels | 3d | 2026-06-25 A | 2026-06-27 A | MLTX-02-005-CN-13960, MLTX-02-005-CN-14520 | 100% |  |
|  | 1 | **UNDER GROUND SEPTIC TANK** |  | 2026-06-01 | 2026-07-06 |  |  |  |
| MLTX-02-005-CN-14510 |  | Plain Concrete Under Footing | 3d | 2026-06-01 A | 2026-06-06 A | MLTX-02-005-CN-13990, MLTX-02-005-CN-13970, MLTX-02-005-CN-13510 | 100% |  |
| MLTX-02-005-CN-14530 |  | Reinforced Concrete Works for Tank Foundation Including Shuttering and Steel Fixing | 8d | 2026-06-09 A | 2026-06-13 A | MLTX-02-005-CN-14510, MLTX-02-005-CN-13510, MLTX-02-005-CN-13560 | 100% |  |
| MLTX-02-005-CN-14540 |  | Reinforced Concrete Works for Tank Walls Including Steel Fixing | 10d | 2026-06-18 A | 2026-07-05 A | MLTX-02-005-CN-14530, MLTX-02-005-CN-13920 | 100% |  |
| MLTX-02-005-CN-14520 |  | Reinforced Concrete Works for Tank Slab Including Shuttering and Steel Fixing | 10d | 2026-07-06 A | 2026-07-06 A | MLTX-02-005-CN-14540, MLTX-02-005-CN-13920 | 100% |  |
|  | 3 | **THERMAL & MOISTER PROTECTION** |  | 2026-05-23 | 2026-08-02 |  |  |  |
|  | 1 | **ANTI TERMIT CONTROL** |  | 2026-05-23 | 2026-06-03 |  |  |  |
| MLTX-02-005-CN-14000 |  | Anti Termite Works Under Slab on Grade and Grade Beams | 1d | 2026-05-23 A | 2026-05-24 A | MLTX-02-005-CN-14530, MLTX-02-005-CN-13560 | 100% |  |
| MLTX-02-005-CN-13990 |  | Anti Termite Works Under Foundation | 1d | 2026-05-31 A | 2026-06-03 A | MLTX-02-005-CN-13360 SS, MLTX-02-005-CN-13350, MLTX-02-005-CN-13510 | 100% |  |
|  | 2 | **POLYETHYLENE SHEET** |  | 2026-05-24 | 2026-06-04 |  |  |  |
| MLTX-02-005-CN-13980 |  | Water Proofing Under Slab on Grade (Polythelen Sheet) | 1d | 2026-05-24 A | 2026-05-25 A | MLTX-02-005-CN-14000 SS, MLTX-02-005-EN-14390, MLTX-02-005-CN-13560 | 100% |  |
| MLTX-02-005-CN-13970 |  | Water Proofing Under Blinding Concrete (Polythelen Sheet) | 1d | 2026-05-31 A | 2026-06-04 A | MLTX-02-005-CN-13990 SS, MLTX-02-005-EN-15280, MLTX-02-005-EN-14390, MLTX-02-005-CN-13510 | 100% |  |
|  | 4 | **EPOXY** |  | 2026-07-11 | 2026-08-02 |  |  |  |
| MLTX-02-005-CN-14010 |  | Surface Preparation for Epoxy Coating | 3d | 2026-07-11 A | 2026-07-11 A | MLTX-02-005-CN-14520, MLTX-02-005-CN-13950 | 100% |  |
| MLTX-02-005-CN-14020 |  | Epoxy Coating for Walls and Slab of Tank | 5d | 2026-08-02 A | 2026-08-02 A | MLTX-02-005-CN-14010, MLTX-02-005-CN-13930 | 100% |  |
|  | 5 | **MASONARY WORK** |  | 2026-07-06 | 2026-07-08 |  |  |  |
| MLTX-02-005-CN-14030 |  | CMU Masonary Works Including all Accessories | 5d | 2026-07-06 A | 2026-07-08 A | MLTX-02-005-CN-13950, MLTX-02-005-PR-11240, MLTX-02-005-EN-15320 | 100% |  |
|  | 3 | **THERMAL & MOISTER PROTECTION** |  | 2026-08-25 | 2026-12-02 |  |  |  |
| MLTX-02-005-CN-14050 |  | Preparing Surface and Preliminary Works for Toilets Waterproofing | 2d | 2026-08-25 A | 2026-08-25 A | MLTX-02-005-CN-13940, MLTX-02-005-CN-14020 | 100% |  |
| MLTX-02-005-CN-14060 |  | Finalize Water Proofing Works for Toilets | 5d | 2026-08-25 A | 2026-08-29 A | MLTX-02-005-CN-14050 | 100% |  |
| MLTX-02-005-CN-14070 |  | Preparing Surface and Preliminary Works for Roofing and Wet Areas Insulation | 6d | 2026-09-05 A | 2026-09-05 A | MLTX-02-005-CN-14060 | 100% |  |
| MLTX-02-005-CN-14080 |  | Finalize Water Proofing Works for Roofing and Wet Areas | 8d | 2026-09-06 A | 2026-12-02 | MLTX-02-005-CN-14070 | 90% | 11.9d |
|  | 11 | **MECHANICAL WORK** |  | 2026-07-12 | 2026-12-16 |  |  |  |
|  | 4 | **HVAC SYSTEM** |  | 2026-07-12 | 2026-10-03 |  |  |  |
| MLTX-02-005-CN-14150 |  | Preliminary HVAC and Ventilation Works | 3d | 2026-07-12 A | 2026-07-12 A | MLTX-02-005-EN-15740, MLTX-02-005-EN-13720, MLTX-02-005-EN-15750, MLTX-02-005-EN-16320, MLTX-02-005-EN-13550, MLTX-02-005-EN-15330, MLTX-02-005-EN-15730, MLTX-02-005-EN-16330 | 100% |  |
| MLTX-02-005-CN-14170 |  | Exhaust, Air Ducts Installation with all Accessories | 6d | 2026-08-18 A | 2026-08-23 A | MLTX-02-005-CN-14450 | 100% |  |
| MLTX-02-005-CN-14160 |  | Install and Finish HVAC and Ventilation Works Including Split Air Units | 13d | 2026-10-03 A | 2026-10-03 A | MLTX-02-005-CN-14170 FF, MLTX-02-005-PR-11460 | 100% |  |
|  | 2 | **WATER SUPPLY SYSTEM** |  | 2026-07-19 | 2026-10-12 |  |  |  |
| MLTX-02-005-CN-14180 |  | Installing of PPR Pipes and Fittings for Water Network | 3d | 2026-07-19 A | 2026-07-22 A | MLTX-02-005-EN-15440, MLTX-02-005-EN-15770, MLTX-02-005-EN-15780, MLTX-02-005-PR-11340 | 100% |  |
| MLTX-02-005-CN-14600 |  | Installing of Valves and Fittings | 2d | 2026-09-05 A | 2026-09-05 A | MLTX-02-005-CN-14180 | 100% |  |
| MLTX-02-005-CN-14210 |  | Installing of GRP Tanks | 8d | 2026-09-06 A | 2026-09-14 A | MLTX-02-005-CN-14170, MLTX-02-005-EN-15340 | 100% |  |
| MLTX-02-005-CN-14690 |  | Installing of Water Heater | 4d | 2026-09-15 A | 2026-09-15 A | MLTX-02-005-CN-14120, MLTX-02-005-CN-14210 | 100% |  |
| MLTX-02-005-CN-14190 |  | Installing of HDPE Pipes and Valves for Water Supply Network | 6d | 2026-09-19 A | 2026-10-12 A | MLTX-02-005-PR-11300 | 100% |  |

| ID | WBS | Task | Duration | Start | Finish | Predecessors | Complete | Total float |
| --- | --- | --- | --- | --- | --- | --- | --- | --- |
| MLTX-02-005-CN-14200 |  | Installing of Booster Pump Units Including fittings and accessories | 20d | 2026-10-04 A | 2026-10-04 A | MLTX-02-005-CN-14660 | 100% |  |
|  | 1 | **SEWER/DRAINAGE SYSTEM** |  | 2026-07-20 | 2026-10-15 |  |  |  |
| MLTX-02-005-CN-14220 |  | Installing UPVC Pipes for Sewage Network | 2d | 2026-07-20 A | 2026-07-22 A | MLTX-02-005-EN-15430, MLTX-02-005-PR-11360, MLTX-02-005-EN-15800, MLTX-02-005-EN-15790, MLTX-02-005-CN-14260, MLTX-02-005-CN-14600, MLTX-02-005-CN-14690, MLTX-02-005-CN-14200, MLTX-02-005-CN-14700, MLTX-02-005-PR-9930 | 100% |  |
| MLTX-02-005-CN-14610 |  | Installing UPVC Pipes for External Connection for Sewage Network | 3d | 2026-09-26 A | 2026-09-26 A | MLTX-02-005-CN-14680, MLTX-02-005-CN-14370 | 100% |  |
| MLTX-02-005-CN-14680 |  | Installing Inspection Chamber for Sewage Network | 4d | 2026-09-26 A | 2026-09-26 A | MLTX-02-005-CN-14370 | 100% |  |
| MLTX-02-005-CN-14230 |  | Installing of Plumping Fixtures and Accessories | 4d | 2026-10-04 A | 2026-10-15 A | MLTX-02-005-CN-14500, MLTX-02-005-CN-14610, MLTX-02-005-CN-14150, MLTX-02-005-PR-8870 | 100% |  |
| MLTX-02-005-CN-14700 |  | Installing of Toilet Fixtures and Accessories Such as Closets and Basins | 24d | 2026-10-08 A | 2026-10-12 A | MLTX-02-005-CN-14070 | 100% |  |
|  | 3 | **FIRE PROTECTION** |  | 2026-12-02 | 2026-12-16 |  |  |  |
| MLTX-02-005-CN-14240 |  | Installing of Fire Fighting Extinguisher and accessories (PFE-1, PFE-2) | 12d | 2026-12-02 | 2026-12-16 | MLTX-02-005-CN-14710, MLTX-02-005-EN-15450, MLTX-02-005-EN-15760, MLTX-02-005-CN-14670, MLTX-02-005-CN-14160, MLTX-02-005-CN-14120, MLTX-02-005-CN-14480, MLTX-02-005-PR-11520, MLTX-02-005-PR-11500, MLTX-02-005-PR-11480, MLTX-02-005-EN-15470, MLTX-02-005-CN-14590, MLTX-02-005-CN-14570, MLTX-02-005-CN-14080 |  | 11.9d |
|  | 12 | **ELECTRICAL WORKS** |  | 2026-07-14 | 2026-12-20 |  |  |  |
|  | 1 | **ROUGH-IN WORKS** |  | 2026-07-14 | 2026-08-17 |  |  |  |
| MLTX-02-005-CN-14280 |  | Preleminary Works for Cable Works | 3d | 2026-07-14 A | 2026-07-14 A | MLTX-02-005-EN-15500, MLTX-02-005-EN-15880, MLTX-02-005-CN-13940, MLTX-02-005-EN-15850, MLTX-02-005-EN-15290, MLTX-02-005-EN-15810 | 100% |  |
| MLTX-02-005-CN-14290 |  | Preleminary Works for Sockets and Power Points | 2d | 2026-07-14 A | 2026-07-14 A | MLTX-02-005-CN-13940, MLTX-02-005-CN-14660 | 100% |  |
| MLTX-02-005-CN-14260 |  | Preleminary Works for Panel Boards | 2d | 2026-07-15 A | 2026-07-22 A | MLTX-02-005-EN-15820, MLTX-02-005-EN-15830, MLTX-02-005-EN-15860, MLTX-02-005-CN-13940, MLTX-02-005-EN-15520, MLTX-02-005-EN-15840, MLTX-02-005-EN-15870, MLTX-02-005-CN-14660 | 100% |  |
| MLTX-02-005-CN-14310 |  | Preleminary Works for Lightning Works | 2d | 2026-07-28 A | 2026-08-17 A | MLTX-02-005-EN-15510, MLTX-02-005-CN-13940, MLTX-02-005-EN-15940, MLTX-02-005-EN-15900, MLTX-02-005-CN-14660 | 100% |  |
| MLTX-02-005-CN-14330 |  | Preleminary Works for Data & Telecommunication System | 2d | 2026-07-28 A | 2026-08-17 A | MLTX-02-005-EN-15480, MLTX-02-005-EN-12830, MLTX-02-005-EN-16000, MLTX-02-005-EN-15990, MLTX-02-005-CN-13940, MLTX-02-005-CN-14660 | 100% |  |
| MLTX-02-005-CN-14370 |  | Preleminary Works for Security and Access Control System | 3d | 2026-07-28 A | 2026-08-17 A | MLTX-02-005-EN-15980, MLTX-02-005-EN-15970, MLTX-02-005-CN-13940, MLTX-02-005-EN-15920, MLTX-02-005-EN-15490, MLTX-02-005-CN-14660 | 100% |  |
| MLTX-02-005-CN-14660 |  | Preleminary Works for Earthing Works | 3d | 2026-07-28 A | 2026-08-17 A | MLTX-02-005-EN-15890, MLTX-02-005-CN-13940, MLTX-02-005-EN-12770, MLTX-02-005-EN-15510, MLTX-02-005-PR-11200, MLTX-02-005-EN-15930 | 100% |  |
|  | 2 | **FIXTURE WORKS** |  | 2026-11-01 | 2026-12-20 |  |  |  |
| MLTX-02-005-CN-14300 |  | Installing and Finalize Works of Sockets and Power Points | 13d | 2026-11-01 A | 2026-11-01 A | MLTX-02-005-CN-14290, MLTX-02-005-CN-14670, MLTX-02-005-PR-11400, MLTX-02-005-CN-14570 | 100% |  |
| MLTX-02-005-CN-14320 |  | Installing and Finalize Works of Lighting Works including Light Fixtures | 14d | 2026-11-02 A | 2026-11-03 A | MLTX-02-005-PR-11380, MLTX-02-005-CN-14280, MLTX-02-005-CN-14670, MLTX-02-005-CN-14570 | 100% |  |
| MLTX-02-005-CN-14270 |  | Installing and Finish Works of Panel Boards | 21d | 2026-11-03 A | 2026-12-17 | MLTX-02-005-PR-11220, MLTX-02-005-CN-14570, MLTX-02-005-CN-14260, MLTX-02-005-CN-14670, MLTX-02-005-PR-11940 | 40% | 10.9d |
| MLTX-02-005-CN-14400 |  | Installing and Finalize Works of Lightning Protection System | 15d | 2026-11-03 A | 2026-11-03 A | MLTX-02-005-CN-14570, MLTX-02-005-CN-14310, MLTX-02-005-CN-14710, MLTX-02-005-CN-14730, MLTX-02-005-PR-11280, MLTX-02-005-EN-15420 | 100% |  |
| MLTX-02-005-CN-14380 |  | Installing and Finalize Works of Security and Access Control System | 14d | 2026-11-18 A | 2026-11-18 A | MLTX-02-005-CN-14570, MLTX-02-005-CN-14370, MLTX-02-005-CN-13630, MLTX-02-005-CN-14790 | 100% |  |
| MLTX-02-005-CN-14250 |  | Installing of Fire automation and Fire Alarm System | 15d | 2026-11-23 | 2026-12-10 | MLTX-02-005-EN-15960, MLTX-02-005-EN-15910, MLTX-02-005-CN-14160, MLTX-02-005-EN-15950, MLTX-02-005-CN-14380, MLTX-02-005-CN-14120, MLTX-02-005-CN-14480, MLTX-02-005-PR-11520, MLTX-02-005-PR-11500, MLTX-02-005-PR-11480, MLTX-02-005-EN-15470, MLTX-02-005-CN-14590, MLTX-02-005-CN-14570 |  | 16.9d |
| MLTX-02-005-CN-14340 |  | Installing Data and Telecommunication System with all Accessories | 14d | 2026-11-23 | 2026-12-09 | MLTX-02-005-CN-14690, MLTX-02-005-CN-14670, MLTX-02-005-CN-14330, MLTX-02-005-CN-14380, MLTX-02-005-CN-14180, MLTX-02-005-CN-14460, MLTX-02-005-CN-14570, MLTX-02-005-CN-14590 |  | 17.9d |
| MLTX-02-005-CN-14390 |  | Installing and Finalize Works of Earthing Works | 23d | 2026-11-23 | 2026-12-20 | MLTX-02-005-CN-14570, MLTX-02-005-CN-14660, MLTX-02-005-CN-14590 |  | 8.9d |
|  | 7 | **DOORS/WINDOWS** |  | 2026-09-17 | 2026-10-26 |  |  |  |
| MLTX-02-005-CN-14090 |  | Preliminary Works For Doors | 13d | 2026-09-17 A | 2026-09-26 A | MLTX-02-005-CN-13940, MLTX-02-005-PR-11300, MLTX-02-005-CN-14310, MLTX-02-005-CN-14330, MLTX-02-005-CN-14260, MLTX-02-005-CN-14290 | 100% |  |
| MLTX-02-005-CN-14100 |  | Finalize Metal Doors for Toilets Building | 13d | 2026-09-29 A | 2026-09-29 A | MLTX-02-005-CN-14160 | 100% |  |
| MLTX-02-005-CN-14470 |  | Finalize Glazzed Curtain Wall Works | 14d | 2026-10-25 A | 2026-10-26 A | MLTX-02-005-CN-14570, MLTX-02-005-CN-14550 | 100% |  |
| MLTX-02-005-CN-14550 |  | Preliminary Works For Windows/Curtain Wall | 12d | 2026-10-25 A | 2026-10-25 A | MLTX-02-005-PR-11300, MLTX-02-005-CN-13940 | 100% |  |
|  | 4 | **METAL WORKS** |  | 2026-09-05 | 2027-01-07 |  |  |  |
| MLTX-02-005-CN-14420 |  | Installation of Galvanized Steel Roof Scupper | 4d | 2026-09-05 A | 2026-09-05 A | MLTX-02-005-CN-14670 | 100% |  |
| MLTX-02-005-CN-14040 |  | Installation of Galvanized Steel Ladder | 14d | 2026-10-21 A | 2026-10-22 A | MLTX-02-005-CN-14420 | 100% |  |
| MLTX-02-005-CN-14410 |  | Installation of DI Cover for Tank | 14d | 2026-12-22 | 2027-01-07 | MLTX-02-005-EN-12350, MLTX-02-005-CN-14040, MLTX-02-005-CN-14020, MLTX-02-005-PR-9330 |  | -7.1d |
|  | 6 | **FINISHING WORKS** |  | 2026-08-17 | 2026-11-04 |  |  |  |
|  | 1 | **FLOOR FINISHES** |  | 2026-09-01 | 2026-10-27 |  |  |  |
| MLTX-02-005-CN-14110 |  | Creamic Tiles Floor Finish Works | 4d | 2026-09-01 A | 2026-09-03 A | MLTX-02-005-CN-14180, MLTX-02-005-PR-11260, MLTX-02-005-CN-14120, MLTX-02-005-EN-15330, MLTX-02-005-CN-14090, MLTX-02-005-PR-9840 | 100% |  |
| MLTX-02-005-CN-14500 |  | Ceramic Skirting Tiles Finish Works | 2d | 2026-09-26 A | 2026-09-26 A | MLTX-02-005-PR-11300 | 100% |  |
| MLTX-02-005-CN-14480 |  | Granite Tiles Floor Finish Works | 4d | 2026-10-21 A | 2026-10-26 A | MLTX-02-005-CN-14110, MLTX-02-005-CN-14730, MLTX-02-005-CN-14440, MLTX-02-005-CN-14430, MLTX-02-005-CN-14100 | 100% |  |
| MLTX-02-005-CN-14490 |  | Epoxy Coat on Concrete Floor | 14d | 2026-10-27 A | 2026-10-27 A | MLTX-02-005-CN-14570, MLTX-02-005-CN-14670, MLTX-02-005-PR-11940 | 100% |  |
|  | 2 | **WALL FINISHES** |  | 2026-08-17 | 2026-11-04 |  |  |  |
| MLTX-02-005-CN-14120 |  | Preliminary Works for Wall Finish Works including Plastering (Internal) | 3d | 2026-08-17 A | 2026-08-19 A | MLTX-02-005-CN-14290, MLTX-02-005-CN-14370, MLTX-02-005-CN-14330, MLTX-02-005-CN-14280, MLTX-02-005-EN-15310, MLTX-02-005-CN-14660, MLTX-02-005-CN-14260, MLTX-02-005-CN-14310, MLTX-02-005-CN-14720, MLTX-02-005-CN-14420 | 100% |  |
| MLTX-02-005-CN-14430 |  | Preliminary Works for Wall Finish Works (External) | 4d | 2026-08-17 A | 2026-08-19 A | MLTX-02-005-CN-14260, MLTX-02-005-CN-14120, MLTX-02-005-PR-9840 | 100% |  |
| MLTX-02-005-CN-14450 |  | Ceramic Finish Works for Walls | 6d | 2026-08-20 A | 2026-08-23 A | MLTX-02-005-PR-11250 | 100% |  |
| MLTX-02-005-CN-14670 |  | Painting Finish Works for Internal Walls | 12d | 2026-09-19 A | 2026-09-26 A | MLTX-02-005-CN-14070 | 100% |  |
| MLTX-02-005-CN-14440 |  | Painting Finish Works for External Walls | 3d | 2026-09-21 A | 2026-09-26 A | MLTX-02-005-CN-14120 | 100% |  |
| MLTX-02-005-CN-14560 |  | Stone Cladding Finish Works for External Walls | 5d | 2026-09-29 A | 2026-09-29 A | MLTX-02-005-CN-14120 | 100% |  |
| MLTX-02-005-CN-14570 |  | Glass Partitions including all accessories and doors | 6d | 2026-10-25 A | 2026-10-25 A | MLTX-02-005-EN-15410 | 100% |  |
| MLTX-02-005-CN-14580 |  | Granite Capping for Parpet | 12d | 2026-10-25 A | 2026-10-25 A | MLTX-02-005-CN-14450 | 100% |  |
| MLTX-02-005-CN-14460 |  | Phenolic Partitions for Toilets | 11d | 2026-11-03 A | 2026-11-04 A | MLTX-02-005-CN-14500, MLTX-02-005-CN-14720, MLTX-02-005-CN-14560, MLTX-02-005-CN-13370, MLTX-02-005-CN-14440, MLTX-02-005-CN-14480, MLTX-02-005-CN-14150, MLTX-02-005-CN-14190, MLTX-02-005-EN-12420, MLTX-02-005-CN-14220, MLTX-02-005-CN-14430, MLTX-02-005-CN-14120 | 100% |  |
|  | 3 | **CELLING FINISHES** |  | 2026-09-15 | 2026-09-26 |  |  |  |
| MLTX-02-005-CN-14730 |  | Preliminary Works for Ceiling Painting Works | 3d | 2026-09-15 A | 2026-09-15 A | MLTX-02-005-CN-14120, MLTX-02-005-CN-14710 | 100% |  |
| MLTX-02-005-CN-14720 |  | Gypsum Board Suspended Ceiling Finish Works For Ceiling | 6d | 2026-09-16 A | 2026-09-16 A | MLTX-02-005-CN-14450 | 100% |  |
| MLTX-02-005-CN-14710 |  | Painting Finish Works for Ceiling | 15d | 2026-09-26 A | 2026-09-26 A | MLTX-02-005-CN-14070 | 100% |  |
|  | 8 | **SPECIALTIES WORK** |  | 2026-10-12 | 2027-02-27 |  |  |  |
| MLTX-02-005-CN-14130 |  | Sanitary Fixtures and Accessories Works | 4d | 2026-10-12 A | 2027-01-07 | MLTX-02-005-CN-14230 SS, MLTX-02-005-PR-11320, MLTX-02-005-CN-14410 FF, MLTX-02-005-PR-11270, MLTX-02-005-CN-14220, MLTX-02-005-CN-14480 FF | 80% | -7.1d |
| MLTX-02-005-CN-14590 |  | Installation of Phenolic Locker | 2d | 2026-11-07 A | 2026-11-07 A | MLTX-02-005-CN-14460 | 100% |  |
| MLTX-02-005-CN-14140 |  | Installation of MODON Logo on the entrance | 15d | 2027-02-08 | 2027-02-27 | MLTX-02-005-PR-11420, MLTX-02-005-CN-14670, MLTX-02-005-CN-14160, MLTX-02-005-PR-8930, MLTX-02-005-CN-14120, MLTX-02-005-CN-14480, MLTX-02-005-PR-11520, MLTX-02-005-PR-11500, MLTX-02-005-PR-11480, MLTX-02-005-EN-15470, MLTX-02-005-CN-14590, MLTX-02-005-CN-14570, MLTX-02-005-CN-14580 |  | -47.1d |
|  | PRO | **PROCUREMENT** |  | 2026-04-04 | 2027-01-18 |  |  |  |
|  | SLI | **SHORT LEAD ITEM** |  | 2026-04-04 | 2027-01-18 |  |  |  |
|  | TOI | **TOILET/SERVICE WORKS** |  | 2026-04-04 | 2026-11-09 |  |  |  |
|  | 1 | **STEEL REINFORCEMENT** |  | 2026-04-04 | 2026-05-19 |  |  |  |
| MLTX-02-005-PR-11050 |  | PO for Steel Reinforcement | 5d | 2026-04-04 A | 2026-05-18 A | MLTX-02-005-EN-13370 | 100% |  |
| MLTX-02-005-PR-11150 |  | Material Delivery of Steel Reinforcement | 5d | 2026-04-09 A | 2026-05-19 A | MLTX-02-005-PR-11050, MLTX-02-005-PR-11250 | 100% |  |
|  | 3 | **CONCRETE BLOCKS** |  | 2026-04-09 | 2026-07-07 |  |  |  |
| MLTX-02-005-PR-11230 |  | PO for Concrete Blocks | 5d | 2026-04-09 A | 2026-05-18 A | MLTX-02-005-EN-13470, MLTX-02-005-PR-11050, MLTX-02-005-EN-13280 | 100% |  |
| MLTX-02-005-PR-11240 |  | Material Delivery of Concrete Blocks | 8d | 2026-07-07 A | 2026-07-07 A | MLTX-02-005-PR-11230, MLTX-02-005-PR-11250 | 100% |  |
|  | 6 | **FLOOR/WALL TILES** |  | 2026-08-18 | 2026-08-18 |  |  |  |

| ID | WBS | Task | Duration | Start | Finish | Predecessors | Complete | Total float |
| --- | --- | --- | --- | --- | --- | --- | --- | --- |
| MLTX-02-005-PR-11250 |  | PO for Tilling Materials | 5d | 2026-08-18 A | 2026-08-18 A | MLTX-02-005-EN-13490, MLTX-02-005-PR-11230 | 100% |  |
| MLTX-02-005-PR-11260 |  | Material Delivery of Tailling Material | 13d | 2026-08-18 A | 2026-08-18 A | MLTX-02-005-PR-11250, MLTX-02-005-PR-11300 | 100% |  |
|  | 7 | **SUSPENDED CEILING** |  | 2026-08-18 | 2026-08-18 |  |  |  |
| MLTX-02-005-PR-11270 |  | PO for Suspend Ceiling | 5d | 2026-08-18 A | 2026-08-18 A | MLTX-02-005-PR-11250, MLTX-02-005-EN-13510 | 100% |  |
| MLTX-02-005-PR-11280 |  | Material Delivery of Suspend Ceiling | 13d | 2026-08-18 A | 2026-08-18 A | MLTX-02-005-PR-11270 | 100% |  |
|  | 8 | **DOORS/WINDOWS** |  | 2026-09-15 | 2026-09-15 |  |  |  |
| MLTX-02-005-PR-11290 |  | PO for Doors/Windows | 15d | 2026-09-15 A | 2026-09-15 A | MLTX-02-005-EN-13960, MLTX-02-005-EN-14120, MLTX-02-005-EN-13250, MLTX-02-005-PR-11250, MLTX-02-005-EN-13700, MLTX-02-005-EN-13940, MLTX-02-005-EN-14080, MLTX-02-005-EN-13570, MLTX-02-005-EN-13900, MLTX-02-005-EN-14170, MLTX-02-005-EN-14180, MLTX-02-005-EN-14100, MLTX-02-005-EN-13760, MLTX-02-005-EN-13510, MLTX-02-005-EN-13380, MLTX-02-005-EN-13800, MLTX-02-005-EN-14000, MLTX-02-005-EN-13410, MLTX-02-005-EN-13920, MLTX-02-005-EN-13360, MLTX-02-005-EN-13610, MLTX-02-005-EN-13530, MLTX-02-005-EN-13820, MLTX-02-005-EN-14140, MLTX-02-005-EN-13650, MLTX-02-005-EN-13630, MLTX-02-005-EN-13720, MLTX-02-005-EN-13780, MLTX-02-005-EN-14020, MLTX-02-005-EN-14160, MLTX-02-005-EN-13390, MLTX-02-005-EN-13980 | 100% |  |
| MLTX-02-005-PR-11300 |  | Material Delivery for Doors/Windows | 25d | 2026-09-15 A | 2026-09-15 A | MLTX-02-005-PR-11290 | 100% |  |
|  | 11 | **WATER SUPPLY PIPES** |  | 2026-07-07 | 2026-07-07 |  |  |  |
| MLTX-02-005-PR-11330 |  | PO for Water Supply Pipes | 5d | 2026-07-07 A | 2026-07-07 A | MLTX-02-005-EN-13720, MLTX-02-005-EN-13570, MLTX-02-005-PR-11300 | 100% |  |
| MLTX-02-005-PR-11340 |  | Material Delivery for Water Supply Pipes | 7d | 2026-07-07 A | 2026-07-07 A | MLTX-02-005-PR-11330, MLTX-02-005-PR-11300 | 100% |  |
|  | 12 | **SEWAGE/DRAINAGE PIPES** |  | 2026-06-02 | 2026-06-10 |  |  |  |
| MLTX-02-005-PR-11350 |  | PO for Sewage/Drainage Pipes | 5d | 2026-06-02 A | 2026-06-02 A | MLTX-02-005-EN-13590, MLTX-02-005-PR-11300 | 100% |  |
| MLTX-02-005-PR-11360 |  | Material Delivery for Sewage/Drainage Pipes | 7d | 2026-06-10 A | 2026-06-10 A | MLTX-02-005-PR-11350, MLTX-02-005-PR-11300, MLTX-02-005-PR-11310 | 100% |  |
|  | 10 | **SANITARY FIXTURES** |  | 2026-08-18 | 2026-08-18 |  |  |  |
| MLTX-02-005-PR-11310 |  | PO for Sanitary Fixtures | 5d | 2026-08-18 A | 2026-08-18 A | MLTX-02-005-PR-11350, MLTX-02-005-EN-13550, MLTX-02-005-PR-11300 | 100% |  |
| MLTX-02-005-PR-11320 |  | Material Delivery for Sanitary Fixtures | 13d | 2026-08-18 A | 2026-08-18 A | MLTX-02-005-PR-11310, MLTX-02-005-PR-11330 | 100% |  |
|  | 16 | **PACKAGE AC UNITS** |  | 2026-07-07 | 2026-07-07 |  |  |  |
| MLTX-02-005-PR-11450 |  | PO for Package AC Units | 5d | 2026-07-07 A | 2026-07-07 A | MLTX-02-005-EN-13680, MLTX-02-005-EN-13550 | 100% |  |
| MLTX-02-005-PR-11460 |  | Material Delivery for Package AC Units | 15d | 2026-07-07 A | 2026-07-07 A | MLTX-02-005-PR-11450 | 100% |  |
|  | 17 | **AIR DIFUSSERS/GRILLS** |  | 2026-08-18 | 2026-08-18 |  |  |  |
| MLTX-02-005-PR-11470 |  | PO for Air Diffusers/Grills | 5d | 2026-08-18 A | 2026-08-18 A | MLTX-02-005-EN-13700, MLTX-02-005-PR-11320 | 100% |  |
| MLTX-02-005-PR-11480 |  | Material Delivery for Air Diffusers/Grills | 15d | 2026-08-18 A | 2026-08-18 A | MLTX-02-005-PR-11470, MLTX-02-005-PR-11320 | 100% |  |
|  | 18 | **GALVANIZED DUCTS** |  | 2026-08-18 | 2026-08-18 |  |  |  |
| MLTX-02-005-PR-11490 |  | PO for Galvanized Ducts | 5d | 2026-08-18 A | 2026-08-18 A | MLTX-02-005-EN-13720, MLTX-02-005-PR-11270 | 100% |  |
| MLTX-02-005-PR-11500 |  | Material Delivery for Galvanized Ducts | 15d | 2026-08-18 A | 2026-08-18 A | MLTX-02-005-PR-11490, MLTX-02-005-PR-11270 | 100% |  |
|  | 19 | **EXHAUST FANS** |  | 2026-08-18 | 2026-08-18 |  |  |  |
| MLTX-02-005-PR-11510 |  | PO for Exhaust Fans | 5d | 2026-08-18 A | 2026-08-18 A | MLTX-02-005-EN-13740 | 100% |  |
| MLTX-02-005-PR-11520 |  | Material Delivery for Exhaust Fans | 10d | 2026-08-18 A | 2026-08-18 A | MLTX-02-005-PR-11510, MLTX-02-005-PR-11270 | 100% |  |
|  | 13 | **LIGHTING FIXTURES** |  | 2026-07-07 | 2026-11-03 |  |  |  |
| MLTX-02-005-PR-11370 |  | PO for Lighting Fixtures | 5d | 2026-07-07 A | 2026-07-07 A | MLTX-02-005-EN-13610, MLTX-02-005-EN-13550, MLTX-02-005-PR-11200 | 100% |  |
| MLTX-02-005-PR-11380 |  | Material Delivery for Lighting Fixtures | 10d | 2026-11-03 A | 2026-11-03 A | MLTX-02-005-PR-11510, MLTX-02-005-PR-11370 | 100% |  |
|  | 14 | **SWITCHES/SOCKETS** |  | 2026-10-31 | 2026-10-31 |  |  |  |
| MLTX-02-005-PR-11390 |  | PO for Switches/Sockets | 5d | 2026-10-31 A | 2026-10-31 A | MLTX-02-005-EN-13630, MLTX-02-005-PR-11370 | 100% |  |
| MLTX-02-005-PR-11400 |  | Material Delivery for Switches/Sockets | 7d | 2026-10-31 A | 2026-10-31 A | MLTX-02-005-PR-11390 | 100% |  |
|  | 15 | **EARTHING SYSTEM** |  | 2026-07-12 | 2026-07-12 |  |  |  |
| MLTX-02-005-PR-11190 |  | PO for Earthing System | 5d | 2026-07-12 A | 2026-07-12 A | MLTX-02-005-EN-13430 | 100% |  |
| MLTX-02-005-PR-11200 |  | Material Delivery for Earthing System | 15d | 2026-07-12 A | 2026-07-12 A | MLTX-02-005-PR-11190 | 100% |  |
|  | 5 | **DISTRIBUTION PANNELS** |  | 2026-11-03 | 2026-11-03 |  |  |  |
| MLTX-02-005-PR-11210 |  | PO for Distribution Panels | 15d | 2026-11-03 A | 2026-11-03 A | MLTX-02-005-EN-13450, MLTX-02-005-PR-11310 | 100% |  |
| MLTX-02-005-PR-11220 |  | Material Delivery for Distribution Panels | 25d | 2026-11-03 A | 2026-11-03 A | MLTX-02-005-PR-11210, MLTX-02-005-PR-11270 | 100% |  |
|  | 9 | **FURNITURES** |  | 2026-11-09 | 2026-11-09 |  |  |  |
| MLTX-02-005-PR-11410 |  | PO for Furnitures | 9d | 2026-11-09 A | 2026-11-09 A | MLTX-02-005-EN-13650, MLTX-02-005-PR-11510 | 100% |  |
| MLTX-02-005-PR-11420 |  | Material Delivery for Furnitures | 20d | 2026-11-09 A | 2026-11-09 A | MLTX-02-005-PR-11410 | 100% |  |
|  | PLG | **PLAYGROUND WORKS** |  | 2026-04-04 | 2027-01-18 |  |  |  |
|  | 5 | **PVC MEMBRANE** |  | 2026-04-04 | 2026-12-17 |  |  |  |
| MLTX-02-005-PR-11610 |  | PO for PVC Membrane | 10d | 2026-04-04 A | 2026-05-19 A | MLTX-02-005-EN-14860, MLTX-02-005-EN-12860 | 100% |  |
| MLTX-02-005-PR-11620 |  | Material Delivery for PVC Membrane | 21d | 2026-11-23 | 2026-12-17 | MLTX-02-005-EN-13840, MLTX-02-005-PR-11610 |  | -21.1d |
|  | 15 | **ARTIFICIAL TURF** |  | 2026-04-04 | 2026-12-31 |  |  |  |
| MLTX-02-005-PR-11850 |  | PO for Artificial TURF | 5d | 2026-04-04 A | 2026-05-19 A | MLTX-02-005-PR-11610, MLTX-02-005-EN-14190 | 100% |  |
| MLTX-02-005-PR-11860 |  | Material Delivery for Artificial TURF | 12d | 2026-12-17 | 2026-12-31 | MLTX-02-005-PR-11620, MLTX-02-005-PR-11850 |  | -21.1d |
|  | 20 | **RUBBER GRANULES** |  | 2026-04-04 | 2026-12-07 |  |  |  |
| MLTX-02-005-PR-11870 |  | PO for Rubber Granules | 5d | 2026-04-04 A | 2026-05-19 A | MLTX-02-005-EN-14200 | 100% |  |
| MLTX-02-005-PR-11880 |  | Material Delivery for Rubber Granules | 12d | 2026-11-23 | 2026-12-07 | MLTX-02-005-PR-11870 |  | -0.1d |
|  | 21 | **PADEL GLASS** |  | 2026-04-04 | 2026-12-26 |  |  |  |
| MLTX-02-005-PR-11890 |  | PO for Padel Glass | 5d | 2026-04-04 A | 2026-05-19 A | MLTX-02-005-EN-14210 | 100% |  |
| MLTX-02-005-PR-11900 |  | Material Delivery for Padel Glass | 28d | 2026-11-23 | 2026-12-26 | MLTX-02-005-PR-11890, MLTX-02-005-PR-11550 |  | -19.1d |
|  | 22 | **PADEL WIRE MESH/STEEL SETS** |  | 2026-04-09 | 2026-12-10 |  |  |  |
| MLTX-02-005-PR-11910 |  | PO for Wire Mesh/Steel Sets | 5d | 2026-04-09 A | 2026-05-19 A | MLTX-02-005-PR-11890, MLTX-02-005-EN-14220, MLTX-02-005-PR-11050 | 100% |  |
| MLTX-02-005-PR-11920 |  | Material Delivery for Wire Mesh/Steel Sets | 15d | 2026-11-23 | 2026-12-10 | MLTX-02-005-PR-11910 |  | -6.1d |
|  | 1 | **AGGREGATE BASE COURSE** |  | 2026-04-04 | 2026-07-07 |  |  |  |
| MLTX-02-005-PR-11060 |  | PO for Aggregate Base Course | 5d | 2026-04-04 A | 2026-05-14 A | MLTX-02-005-EN-13300 | 100% |  |
| MLTX-02-005-PR-11070 |  | Material Delivery for Aggregate Base Course | 7d | 2026-07-07 A | 2026-07-07 A | MLTX-02-005-PR-11060 | 100% |  |
|  | 16 | **PACKAGE AC UNITS** |  | 2026-07-07 | 2026-07-07 |  |  |  |
| MLTX-02-005-PR-11530 |  | PO for Package AC Units | 5d | 2026-07-07 A | 2026-07-07 A | MLTX-02-005-PR-11890, MLTX-02-005-PR-11450, MLTX-02-005-EN-13760, MLTX-02-005-PR-11870, MLTX-02-005-EN-14230, MLTX-02-005-PR-11850, MLTX-02-005-PR-11040 | 100% |  |
| MLTX-02-005-PR-11540 |  | Material Delivery for Package AC Units | 15d | 2026-07-07 A | 2026-07-07 A | MLTX-02-005-PR-11530, MLTX-02-005-PR-11040 | 100% |  |
|  | 17 | **AIR DIFUSSERS/GRILLS** |  | 2026-10-13 | 2026-10-13 |  |  |  |
| MLTX-02-005-PR-11550 |  | PO for Air Difussers/Grills | 15d | 2026-10-13 A | 2026-10-13 A | MLTX-02-005-EN-13780, MLTX-02-005-PR-11310, MLTX-02-005-PR-11450, MLTX-02-005-PR-11030 | 100% |  |
| MLTX-02-005-PR-11560 |  | Material Delivery for Air Difussers/Grills | 25d | 2026-10-13 A | 2026-10-13 A | MLTX-02-005-PR-11550, MLTX-02-005-PR-11040 | 100% |  |
|  | 2 | **BITUMINOUS BASE & WEARING COURSE** |  | 2026-11-09 | 2026-11-09 |  |  |  |

| ID | WBS | Task | Duration | Start | Finish | Predecessors | Complete | Total float |
| --- | --- | --- | --- | --- | --- | --- | --- | --- |
| MLTX-02-005-PR-11080 |  | PO for Bituminous Base & Wearing Course | 15d | 2026-11-09 A | 2026-11-09 A | MLTX-02-005-EN-13320, MLTX-02-005-PR-12010 | 100% |  |
| MLTX-02-005-PR-11090 |  | Material Delivery for the Site | 17d | 2026-11-09 A | 2026-11-09 A | MLTX-02-005-PR-11080 | 100% |  |
|  | 3 | **INTERLOCKING PAVING** |  | 2026-10-15 | 2026-10-15 |  |  |  |
| MLTX-02-005-PR-11100 |  | PO for Interlocking Block Pavers | 15d | 2026-10-15 A | 2026-10-15 A | MLTX-02-005-EN-13380 | 100% |  |
| MLTX-02-005-PR-11110 |  | Material Delivery for Interlocking Block Pavers | 17d | 2026-10-15 A | 2026-10-15 A | MLTX-02-005-PR-11100 | 100% |  |
|  | 4 | **MARKING PAINT** |  | 2026-11-23 | 2026-12-30 |  |  |  |
| MLTX-02-005-PR-11430 |  | PO for Marking Paint | 15d | 2026-11-23 | 2026-12-10 | MLTX-02-005-PR-11080, MLTX-02-005-EN-14230 |  | -20.1d |
| MLTX-02-005-PR-11440 |  | Material Delivery for Marking Paint | 17d | 2026-12-10 | 2026-12-30 | MLTX-02-005-PR-11430, MLTX-02-005-PR-12020 |  | -20.1d |
|  | 18 | **GALVANIZED DUCTS** |  | 2026-10-13 | 2026-10-13 |  |  |  |
| MLTX-02-005-PR-11570 |  | PO for Galvanized Duct | 15d | 2026-10-13 A | 2026-10-13 A | MLTX-02-005-EN-13800, MLTX-02-005-PR-11450, MLTX-02-005-PR-11550 | 100% |  |
| MLTX-02-005-PR-11580 |  | Material Delivery for Galvanized Duct | 25d | 2026-10-13 A | 2026-10-13 A | MLTX-02-005-PR-11570, MLTX-02-005-PR-11550 | 100% |  |
|  | 19 | **EXHAUST FANS** |  | 2026-10-13 | 2026-10-13 |  |  |  |
| MLTX-02-005-PR-11590 |  | PO for Exhaust Fans | 15d | 2026-10-13 A | 2026-10-13 A | MLTX-02-005-PR-11450, MLTX-02-005-EN-13820 | 100% |  |
| MLTX-02-005-PR-11600 |  | Material Delivery for Exhaust Fans | 25d | 2026-10-13 A | 2026-10-13 A | MLTX-02-005-PR-11590, MLTX-02-005-PR-11040 | 100% |  |
|  | 10 | **DISTRIBUTION BOARDS** |  | 2026-10-13 | 2026-10-13 |  |  |  |
| MLTX-02-005-PR-11710 |  | PO for Distribution Boards | 5d | 2026-10-13 A | 2026-10-13 A | MLTX-02-005-PR-11450, MLTX-02-005-EN-13900 | 100% |  |
| MLTX-02-005-PR-11720 |  | Material Delivery for Distribution Boards | 15d | 2026-10-13 A | 2026-10-13 A | MLTX-02-005-PR-11710, MLTX-02-005-PR-11530 | 100% |  |
|  | 11 | **POWER CABLES** |  | 2026-11-23 | 2026-12-10 |  |  |  |
| MLTX-02-005-PR-11730 |  | PO for Power Cables | 5d | 2026-11-23 | 2026-11-29 | MLTX-02-005-EN-13920, MLTX-02-005-PR-11710 |  | -20.1d |
| MLTX-02-005-PR-11740 |  | Material Delivery for Power Cables | 10d | 2026-11-29 | 2026-12-10 | MLTX-02-005-PR-11730, MLTX-02-005-PR-11200 |  | -20.1d |
|  | 12 | **LIGHT FIXTURES** |  | 2026-07-07 | 2026-12-22 |  |  |  |
| MLTX-02-005-PR-11750 |  | PO for Light Fixtures | 5d | 2026-07-07 A | 2026-07-07 A | MLTX-02-005-EN-13940, MLTX-02-005-EN-13920, MLTX-02-005-EN-13550 | 100% |  |
| MLTX-02-005-PR-11760 |  | Material Delivery for Light Fixtures | 20d | 2026-11-29 | 2026-12-22 | MLTX-02-005-PR-11730, MLTX-02-005-PR-11750, MLTX-02-005-PR-11520, MLTX-02-005-PR-11530 |  | -8.1d |
|  | 13 | **CCTV MATERIALS** |  | 2026-11-23 | 2027-01-18 |  |  |  |
| MLTX-02-005-PR-11770 |  | PO for CCTV | 5d | 2026-11-23 | 2026-11-29 | MLTX-02-005-PR-11750, MLTX-02-005-EN-13960, MLTX-02-005-PR-11070 |  | -13.1d |
| MLTX-02-005-PR-11780 |  | Material Delivery for CCTV | 15d | 2026-12-31 | 2027-01-18 | MLTX-02-005-PR-11600, MLTX-02-005-PR-11770, MLTX-02-005-PR-11880, MLTX-02-005-PR-11580, MLTX-02-005-PR-11900, MLTX-02-005-PR-11720, MLTX-02-005-PR-11860, MLTX-02-005-PR-11560, MLTX-02-005-PR-11540, MLTX-02-005-PR-11440, MLTX-02-005-PR-12090 |  | -21.1d |
|  | 14 | **POWER OUTLETS/SWITCHES** |  | 2026-11-29 | 2027-01-04 |  |  |  |
| MLTX-02-005-PR-11790 |  | PO for Power Outlets/Switches | 6d | 2026-11-29 | 2026-12-06 | MLTX-02-005-PR-11770, MLTX-02-005-EN-13980, MLTX-02-005-PR-11380, MLTX-02-005-PR-11460, MLTX-02-005-PR-11400 |  | -13.1d |
| MLTX-02-005-PR-11800 |  | Material Delivery for Power Outlets/Switches | 25d | 2026-12-06 | 2027-01-04 | MLTX-02-005-PR-11790, MLTX-02-005-PR-11530 |  | -13.1d |
|  | LSC | **LANDSCAPE WORKS** |  | 2026-05-16 | 2027-01-04 |  |  |  |
|  | 7 | **INTERLOCKING PAVING** |  | 2026-08-26 | 2026-08-26 |  |  |  |
| MLTX-02-005-PR-11830 |  | PO for Interlocking Block Pavers | 5d | 2026-08-26 A | 2026-08-26 A | MLTX-02-005-EN-14020 | 100% |  |
| MLTX-02-005-PR-11840 |  | Material Delivery for Interlocking Block Pavers | 12d | 2026-08-26 A | 2026-08-26 A | MLTX-02-005-PR-11830, MLTX-02-005-PR-11990 | 100% |  |
|  | 9 | **CURBSTONE** |  | 2026-07-14 | 2026-07-23 |  |  |  |
| MLTX-02-005-PR-11970 |  | PO for Curbstone | 5d | 2026-07-14 A | 2026-07-14 A | MLTX-02-005-EN-14120 | 100% |  |
| MLTX-02-005-PR-11980 |  | Material Delivery for Curbstone | 12d | 2026-07-23 A | 2026-07-23 A | MLTX-02-005-PR-11970 | 100% |  |
|  | 1 | **PAVEMENT MARKING** |  | 2026-12-06 | 2026-12-23 |  |  |  |
| MLTX-02-005-PR-11120 |  | PO for Pavement Markings | 5d | 2026-12-06 | 2026-12-12 | MLTX-02-005-EN-13390, MLTX-02-005-PR-11790 |  | -11.1d |
| MLTX-02-005-PR-11130 |  | Material Delivery for Pavement Markings | 10d | 2026-12-12 | 2026-12-23 | MLTX-02-005-PR-11120 |  | -11.1d |
|  | 2 | **TRAFFIC SIGNS** |  | 2026-10-13 | 2026-11-09 |  |  |  |
| MLTX-02-005-PR-11140 |  | PO for Traffic Signs | 15d | 2026-10-13 A | 2026-10-13 A | MLTX-02-005-EN-13360, MLTX-02-005-PR-11990, MLTX-02-005-PR-11040 | 100% |  |
| MLTX-02-005-PR-11160 |  | Material Delivery for Traffic Signs | 10d | 2026-11-09 A | 2026-11-09 A | MLTX-02-005-PR-11140, MLTX-02-005-PR-11500, MLTX-02-005-PR-11090 | 100% |  |
|  | 3 | **IRRIGATION PIPES/SPRINKLERS** |  | 2026-10-13 | 2026-11-09 |  |  |  |
| MLTX-02-005-PR-11170 |  | PO for Irrigation Pipes/Sprinkles | 5d | 2026-10-13 A | 2026-10-13 A | MLTX-02-005-EN-13410, MLTX-02-005-PR-11530 | 100% |  |
| MLTX-02-005-PR-11180 |  | Material Delivery for Irrigation Pipes/Sprinkles | 8d | 2026-11-08 A | 2026-11-09 A | MLTX-02-005-PR-11170, MLTX-02-005-PR-11420, MLTX-02-005-PR-11140 | 100% |  |
|  | 5 | **AGRICULTURE SOIL** |  | 2026-10-21 | 2026-10-21 |  |  |  |
| MLTX-02-005-PR-11930 |  | PO for Agriculture Soil | 15d | 2026-10-21 A | 2026-10-21 A | MLTX-02-005-PR-11950, MLTX-02-005-EN-14080 | 100% |  |
| MLTX-02-005-PR-11940 |  | Material Delivery for Agriculture Soil | 22d | 2026-10-21 A | 2026-10-21 A | MLTX-02-005-PR-11930, MLTX-02-005-PR-11530, MLTX-02-005-PR-11280, MLTX-02-005-PR-11480 | 100% |  |
|  | 8 | **TRACK SURFACE** |  | 2026-05-16 | 2027-01-04 |  |  |  |
| MLTX-02-005-PR-11950 |  | PO for Track Surface | 5d | 2026-05-16 A | 2026-05-20 A | MLTX-02-005-EN-13390, MLTX-02-005-EN-15180, MLTX-02-005-EN-15120 | 100% |  |
| MLTX-02-005-PR-11960 |  | Material Delivery for Track Surface | 10d | 2026-12-23 | 2027-01-04 | MLTX-02-005-EN-14100, MLTX-02-005-PR-11950, MLTX-02-005-PR-11120, MLTX-02-005-PR-11130, MLTX-02-005-PR-11530 |  | -11.1d |
|  | 10 | **GRASS/TREES** |  | 2026-05-17 | 2026-11-07 |  |  |  |
| MLTX-02-005-PR-11990 |  | PO for Grass/Trees | 5d | 2026-05-17 A | 2026-05-20 A | MLTX-02-005-PR-11950, MLTX-02-005-EN-14140 | 100% |  |
| MLTX-02-005-PR-12000 |  | Material Delivery for Grass/Trees | 15d | 2026-10-25 A | 2026-11-07 A | MLTX-02-005-PR-11990, MLTX-02-005-PR-11530 | 100% |  |
|  | 6 | **CABLES** |  | 2026-08-26 | 2026-09-15 |  |  |  |
| MLTX-02-005-PR-11810 |  | PO for Cables | 5d | 2026-08-26 A | 2026-08-26 A | MLTX-02-005-EN-14000 | 100% |  |
| MLTX-02-005-PR-11820 |  | Material Delivery for Cables | 15d | 2026-09-15 A | 2026-09-15 A | MLTX-02-005-PR-11810 | 100% |  |
|  | LLI | **LONG LEAD ITEM** |  | 2026-08-26 | 2026-12-19 |  |  |  |
|  | PLG | **PLAYGROUND WORKS** |  | 2026-10-13 | 2026-12-19 |  |  |  |
|  | 6 | **STEEL TENSION CABLES** |  | 2026-10-13 | 2026-12-19 |  |  |  |
| MLTX-02-005-PR-11630 |  | PO for Steel Tension Cables | 8d | 2026-10-13 A | 2026-10-13 A | MLTX-02-005-EN-14150, MLTX-02-005-PR-11610 | 100% |  |
| MLTX-02-005-PR-12010 |  | Material Fabrication for Steel Tension Cables | 10d | 2026-10-13 A | 2026-10-13 A | MLTX-02-005-PR-11630 | 100% |  |
| MLTX-02-005-PR-11640 |  | Material Delivery for Steel Tension Cables | 15d | 2026-11-23 | 2026-12-10 | MLTX-02-005-PR-12010, MLTX-02-005-PR-11820 |  | -27.1d |
| MLTX-02-005-PR-12050 |  | Staging time | 7d | 2026-12-10 | 2026-12-19 | MLTX-02-005-PR-11640, MLTX-02-005-PR-11690 |  | -27.1d |
|  | 7 | **EMERGENCY DOORS** |  | 2026-10-13 | 2026-12-14 |  |  |  |
| MLTX-02-005-PR-11650 |  | PO for Emergency Doors | 10d | 2026-10-13 A | 2026-10-13 A | MLTX-02-005-PR-12010, MLTX-02-005-EN-14160 | 100% |  |
| MLTX-02-005-PR-12020 |  | Material Fabrication for Emergency Doors | 20d | 2026-10-13 A | 2026-10-13 A | MLTX-02-005-PR-11650 | 100% |  |
| MLTX-02-005-PR-11660 |  | Material Delivery for Emergency Doors | 15d | 2026-11-23 | 2026-12-10 | MLTX-02-005-PR-12020, MLTX-02-005-PR-11040 |  | -5.1d |
| MLTX-02-005-PR-12060 |  | Staging time | 3d | 2026-12-10 | 2026-12-14 | MLTX-02-005-PR-11660, MLTX-02-005-PR-12090 |  | -0.1d |
|  | 8 | **PRESSURE UNITS** |  | 2026-10-13 | 2026-12-19 |  |  |  |

| ID | WBS | Task | Duration | Start | Finish | Predecessors | Complete | Total float |
| --- | --- | --- | --- | --- | --- | --- | --- | --- |
| MLTX-02-005-PR-11670 |  | PO for Pressure Units | 10d | 2026-10-13 A | 2026-10-13 A | MLTX-02-005-EN-14170, MLTX-02-005-PR-12010, MLTX-02-005-PR-11690 | 100% |  |
| MLTX-02-005-PR-12030 |  | Material Fabrication for Pressure Units | 10d | 2026-10-13 A | 2026-10-13 A | MLTX-02-005-PR-11670 | 100% |  |
| MLTX-02-005-PR-11680 |  | Material Delivery for Pressure Units | 10d | 2026-11-23 | 2026-12-05 | MLTX-02-005-PR-12030, MLTX-02-005-PR-12040 |  | -5.1d |
| MLTX-02-005-PR-12070 |  | Staging time | 10d | 2026-12-07 | 2026-12-19 | MLTX-02-005-PR-11680, MLTX-02-005-PR-11700 |  | -7.1d |
|  | 9 | **AIR LOCK DOORS** |  | 2026-10-13 | 2026-12-16 |  |  |  |
| MLTX-02-005-PR-11690 |  | PO for Lock Doors | 10d | 2026-10-13 A | 2026-10-13 A | MLTX-02-005-PR-12010, MLTX-02-005-EN-14180, MLTX-02-005-PR-11030 | 100% |  |
| MLTX-02-005-PR-12040 |  | Material Fabrication for Lock Doors | 15d | 2026-10-13 A | 2026-10-13 A | MLTX-02-005-PR-11690, MLTX-02-005-PR-11550 | 100% |  |
| MLTX-02-005-PR-11700 |  | Material Delivery for Lock Doors | 12d | 2026-11-23 | 2026-12-07 | MLTX-02-005-PR-12040, MLTX-02-005-PR-11040 |  | -7.1d |
| MLTX-02-005-PR-12080 |  | Staging time | 5d | 2026-12-10 | 2026-12-16 | MLTX-02-005-PR-11700, MLTX-02-005-PR-11660 |  | -5.1d |
|  | LSC | **LANDSCAPE WORKS** |  | 2026-08-26 | 2026-09-15 |  |  |  |
|  | 4 | **LIGHT POLES** |  | 2026-08-26 | 2026-09-15 |  |  |  |
| MLTX-02-005-PR-11020 |  | PO for Lighting poles | 10d | 2026-08-26 A | 2026-08-26 A | MLTX-02-005-EN-13250, MLTX-02-005-PR-11810 | 100% |  |
| MLTX-02-005-PR-11030 |  | Material Fabrication for Lighting poles | 30d | 2026-08-26 A | 2026-08-26 A | MLTX-02-005-PR-11840, MLTX-02-005-PR-11020 | 100% |  |
| MLTX-02-005-PR-11040 |  | Material Delivery for Lighting poles | 30d | 2026-09-15 A | 2026-09-15 A | MLTX-02-005-PR-11030 | 100% |  |
| MLTX-02-005-PR-12090 |  | Staging time | 15d | 2026-09-15 A | 2026-09-15 A | MLTX-02-005-PR-11040 | 100% |  |
|  | T & C | **TESTING & COMMISSIONING** |  | 2027-03-14 | 2027-03-23 |  |  |  |
| MLTX-02-005-TC-11920 |  | Testing and Commissioning for MEP Works for Playground Area | 5d | 2027-03-14 | 2027-03-20 | MLTX-02-005-CN-13770, MLTX-02-005-CN-14650, MLTX-02-005-CN-13850, MLTX-02-005-CN-13671, MLTX-02-005-CN-13650 FF, MLTX-02-005-CN-13390 FF, MLTX-02-005-CN-13700 FF, MLTX-02-005-CN-13640 FF, MLTX-02-005-CN-13470 FF |  | -61.1d |
| MLTX-02-005-TC-11940 |  | Testing and Commissioning for MEP Works for Landscape Works | 7d | 2027-03-15 | 2027-03-23 | MLTX-02-005-CN-13370, MLTX-02-005-CN-13671, MLTX-02-005-CN-13340 FF, MLTX-02-005-CN-13910 FF, MLTX-02-005-CN-13490 FF, MLTX-02-005-CN-13470 FF, MLTX-02-005-CN-13350 FF, MLTX-02-005-CN-13360 FF |  | -64.1d |
| MLTX-02-005-TC-11930 |  | Testing and Commissioning for MEP Works for Toilet/Service Building | 3d | 2027-03-16 | 2027-03-20 | MLTX-02-005-CN-14390, MLTX-02-005-CN-14700, MLTX-02-005-CN-14690, MLTX-02-005-CN-14590, MLTX-02-005-CN-14650, MLTX-02-005-CN-14380, MLTX-02-005-CN-14610, MLTX-02-005-CN-14160, MLTX-02-005-CN-14130, MLTX-02-005-CN-14340, MLTX-02-005-CN-14270, MLTX-02-005-CN-14320, MLTX-02-005-CN-13671, MLTX-02-005-CN-14400, MLTX-02-005-CN-14250, MLTX-02-005-CN-14200, MLTX-02-005-CN-14410, MLTX-02-005-CN-14300, MLTX-02-005-CN-14240, MLTX-02-005-CN-14100 FF, MLTX-02-005-CN-14470 FF, MLTX-02-005-CN-14490 FF, MLTX-02-005-CN-14140 FF, MLTX-02-005-CN-14420 FF, MLTX-02-005-CN-13470 FF, MLTX-02-005-CN-14220, MLTX-02-005-PR-11500, MLTX-02-005-PR-11480, MLTX-02-005-CN-14120, MLTX-02-005-CN-14480, MLTX-02-005-CN-14180, MLTX-02-005-CN-14460, MLTX-02-005-PR-11520, MLTX-02-005-EN-15470, MLTX-02-005-CN-14570, MLTX-02-005-CN-14430 |  | -61.1d |
|  | PRO C & DEM | **PROJECT CLOSEOUT & DEMOBILIZATION** |  | 2027-02-11 | 2027-03-29 |  |  |  |
|  | 1 | **As-Built DWGs** |  | 2027-02-11 | 2027-03-20 |  |  |  |
|  | 1 | **As-Built DWGs Submittals** |  | 2027-02-11 | 2027-03-03 |  |  |  |
| MLTX-02-005-CO-12020 |  | As-Built DWGs Submittal for Landscape Works | 4d | 2027-02-11 | 2027-02-16 | MLTX-02-005-TC-11910 SS, MLTX-02-005-CN-10360 |  | -43.1d |
| MLTX-02-005-CO-12000 |  | As-Built DWGs Submittal for Playground Area Works | 2d | 2027-02-24 | 2027-02-27 | MLTX-02-005-TC-11890 SS, MLTX-02-005-CN-10100 |  | -51.1d |
| MLTX-02-005-CO-12010 |  | As-Built DWGs Submittal for Toilet/Service Building Works | 2d | 2027-03-01 | 2027-03-03 | MLTX-02-005-TC-11900 SS, MLTX-02-005-TC-11870 SS, MLTX-02-005-CN-12480 |  | -55.1d |
|  | 2 | **As-Built DWGs Approvals** |  | 2027-02-16 | 2027-03-20 |  |  |  |
| MLTX-02-005-CO-12060 |  | As-Built DWGs Approval for Landscape Works | 3d | 2027-02-16 | 2027-02-20 | MLTX-02-005-CO-12020, MLTX-02-005-CN-11400 |  | -42.1d |
| MLTX-02-005-CO-12040 |  | As-Built DWGs Approval for Playground Area Works | 3d | 2027-02-27 | 2027-03-02 | MLTX-02-005-CO-12000, MLTX-02-005-MS-1100 |  | -50.1d |
| MLTX-02-005-CO-12050 |  | As-Built DWGs Approval for Toilet/Service Building Works | 3d | 2027-03-16 | 2027-03-20 | MLTX-02-005-CN-13770, MLTX-02-005-CO-12010, MLTX-02-005-CN-10140, MLTX-02-005-CO-12090 |  | -62.1d |
|  | 2 | **Demobilization** |  | 2027-03-15 | 2027-03-29 |  |  |  |
| MLTX-02-005-CO-12080 |  | Demobilization of Manpower | 1d | 2027-03-15 | 2027-03-16 | MLTX-02-005-CO-12020, MLTX-02-005-CO-12010, MLTX-02-005-CO-12000, MLTX-02-005-TC-11940 SS, MLTX-02-005-CN-10140 |  | -62.1d |
| MLTX-02-005-CO-12090 |  | Removal of Equipment from Site | 1d | 2027-03-15 | 2027-03-16 | MLTX-02-005-CO-12080 SS, MLTX-02-005-CO-12080 FF, MLTX-02-005-CN-10140 |  | -62.1d |
| MLTX-02-005-CO-12100 |  | Site Clean Up | 1d | 2027-03-27 | 2027-03-28 | MLTX-02-005-CO-12090, MLTX-02-005-CN-10620 |  | -69.1d |
| MLTX-02-005-CO-12110 |  | Restoration of Ground Surfaces | 1d | 2027-03-28 | 2027-03-29 | MLTX-02-005-CO-12060, MLTX-02-005-CO-12100, MLTX-02-005-CO-12040, MLTX-02-005-CO-12050, MLTX-02-005-TC-11890, MLTX-02-005-MS-1130 |  | -69.1d |

## Version 14 (data date 2026-11-23, saved 2026-11-22, file 2. MLTX-02-004-UPS-30-23-11-2026.xer)

Last finish 2027-03-29 → 2027-05-10 (+42d). Complete tasks 1896 → 1883.

Added:

| ID | Task | Duration | Start | Finish | Predecessors | Resources |
| --- | --- | --- | --- | --- | --- | --- |
| MLTX-02-004-MS-1180 | Completion of Jeddah Works | 0d | 2027-02-06 | 2027-02-06 | MLTX-02-004-TC-11940 FF, MLTX-02-004-CN-13550 FF, MLTX-02-004-CN-13910 FF |  |
| MLTX-02-004-MS-1160 | Completion of Asir Works | 0d | 2027-02-09 | 2027-02-09 | MLTX-02-004-TC-11880 FF, MLTX-02-004-PR-9640 FF, MLTX-02-004-CN-10660 FF, MLTX-02-004-CN-11800 FF, MLTX-02-004-EN-4460 FF, MLTX-02-004-CN-10610 FF |  |
| MLTX-02-004-MS-1170 | Completion of Jazan Works | 0d | 2027-05-10 | 2027-05-10 | MLTX-02-004-CN-12270 FF, MLTX-02-004-CN-12480 FF |  |
| 3 | **JEDDAH** |  | 2026-03-26 | 2027-04-21 |  |  |
| MLTX-02-004-CN-13360 | Backfilling on Layers (Rockfill) including Compaction (Landscape Area) | 43.8d | 2026-05-10 A | 2026-07-02 A | MLTX-02-004-CN-13330 | Labor [600 h]; Driver [300 h]; Loader [60 h]; Water Tanker [100 h]; Compactor [100 h]; Backfilling with selected fill material [7000] |
| MLTX-02-004-CN-13340 | Backfilling on Layers (Rockfill) including Compaction (Playground Area) | 43.5d | 2026-05-10 A | 2026-07-02 A | MLTX-02-004-MS-1050, MLTX-02-004-MS-1060, MLTX-02-004-CN-13310 | Labor [550 h]; Driver [300 h]; Loader [130 h]; Water Tanker [100 h]; Compactor [100 h]; Backfilling with selected fill material [8525.77] |
| MLTX-02-004-CN-13350 | Backfilling on Layers (Rockfill) including Compaction (Service/Toilet Building) | 39d | 2026-05-16 A | 2026-07-02 A | MLTX-02-004-CN-13320 | Labor [300 h]; Driver [140 h]; Loader [90 h]; Water Tanker [80 h]; Compactor [60 h]; Backfilling with selected fill material [1500] |
| MLTX-02-004-CN-13530 | Finishing and Surface Finish Works (Football Playground) | 15d | 2026-10-12 A | 2026-11-08 A | MLTX-02-004-PR-12090 | Labor [800 h]; Skilled Labor [150 h]; Driver [100 h]; Forklift [90 h]; Football playground [500] |
| MLTX-02-004-CN-13580 | Finishing and Surface Finish Works (Padel Playground) | 15d | 2026-10-20 A | 2026-11-08 A | MLTX-02-004-CN-13530 SS, MLTX-02-004-CN-13730 SS, MLTX-02-004-CN-13730 FF | Labor [720 h]; Skilled Labor [200 h]; Driver [90 h]; Forklift [270 h]; Padel playgound [50] |
| MLTX-02-004-CN-13630 | Finishing and Surface Finish Works (Basketball Playground) | 15d | 2026-10-20 A | 2026-11-05 A | MLTX-02-004-CN-13580 SS, MLTX-02-004-CN-13580 FF, MLTX-02-004-CN-13530 SS, MLTX-02-004-CN-13530 FF | Labor [740 h]; Skilled Labor [150 h]; Driver [100 h]; Forklift [90 h]; Basketball playground [266.67] |
| MLTX-02-004-CN-13710 | Excavation for Foundation & Playground Area (Air Dome) | 5d | 2026-07-11 A | 2026-08-12 A | MLTX-02-004-EN-15400, MLTX-02-004-CN-13620, MLTX-02-004-EN-16250, MLTX-02-004-EN-16220, MLTX-02-004-EN-16230, MLTX-02-004-EN-16240, MLTX-02-004-EN-16260, MLTX-02-004-EN-16270, MLTX-02-004-EN-16280, MLTX-02-004-EN-16290, MLTX-02-004-EN-16300, MLTX-02-004-EN-16310 | Labor [200 h]; Driver [80 h]; Excavator [80 h]; Water Tanker [70 h]; Compactor [80 h]; Design, supply, install, testing and commissioning of air dome [0.11] |
| 1 | **ASIR** |  | 2026-03-26 | 2027-02-23 |  |  |
| MLTX-02-004-CN-9980R | Backfilling on Layers (Selected Soil) including Compaction (Landscape Area) Remaining | 30.07d | 2026-07-04 A | 2026-08-12 A | MLTX-02-004-CN-9980 | Labor [300 h]; Driver [150 h]; Loader [30 h]; Water Tanker [50 h]; Compactor [50 h]; Backfilling with selected fill material [1062.27] |
| MLTX-02-004-CN-10030R | Backfilling and Compaction of Base Layers (Football Playground) Remaining | 30d | 2026-07-20 A | 2026-08-31 A | MLTX-02-004-CN-10030, MLTX-02-004-CN-10030 FF | Labor [103 h]; Skilled Labor [37 h]; Driver [51 h]; Loader [12 h]; Dump Truck [29 h]; Compactor [15 h]; Football playground [15] |
| MLTX-02-004-CN-10040 | Finishing and Surface Finish Works (Football Playground) | 30d | 2026-11-24 | 2026-12-28 | MLTX-02-004-CN-10340, MLTX-02-004-EN-4490, MLTX-02-004-CN-10030R, MLTX-02-004-CN-10030R FF | Labor [800 h]; Skilled Labor [150 h]; Driver [100 h]; Forklift [90 h]; Football playground [500] |
| MLTX-02-004-CN-10090R | Backfilling and Compaction of Base Layers (Padel Playground) Remaining | 30d | 2026-07-20 A | 2026-08-09 A | MLTX-02-004-CN-10030R, MLTX-02-004-CN-10090, MLTX-02-004-CN-10030R SS | Labor [73 h]; Skilled Labor [27 h]; Driver [37 h]; Loader [11 h]; Dump Truck [27 h]; Compactor [13 h]; Padel playgound [5] |
| MLTX-02-004-CN-10100 | Finishing and Surface Finish Works (Padel Playground) | 30d | 2026-09-15 A | 2026-09-16 A | MLTX-02-004-CN-10340 SS, MLTX-02-004-CN-10090R | Labor [720 h]; Skilled Labor [200 h]; Driver [90 h]; Forklift [270 h]; Padel playgound [50] |
| MLTX-02-004-CN-10180 | Backfilling and Compaction Subgrade (Basketball Playground) | 0.6d | 2026-05-23 A | 2026-05-23 A | MLTX-02-004-CN-10080 | Labor [550 h]; Skilled Labor [200 h]; Driver [280 h]; Forklift [90 h]; Basketball playground [53.33] |
| MLTX-02-004-CN-10190R | Backfilling and Compaction of Base Layers (Basketball Playground) Remaining | 30d | 2026-07-20 A | 2026-08-09 A | MLTX-02-004-CN-10190, MLTX-02-004-CN-10090R | Labor [48 h]; Skilled Labor [24 h]; Driver [36 h]; Loader [10 h]; Dump Truck [24 h]; Compactor [12 h]; Basketball playground [6] |
| MLTX-02-004-CN-10200 | Finishing and Surface Finish Works (Basketball Playground) | 30d | 2026-09-15 A | 2026-09-16 A | MLTX-02-004-CN-10340 SS, MLTX-02-004-CN-10190R | Labor [740 h]; Skilled Labor [150 h]; Driver [100 h]; Forklift [90 h]; Basketball playground [266.67] |
| MLTX-02-004-CN-10320 | Excavation for Foundation & Playground Area (Air Dome) | 11.5d | 2026-06-16 A | 2026-06-29 A | MLTX-02-004-EN-3480, MLTX-02-004-EN-3500, MLTX-02-004-EN-3510, MLTX-02-004-EN-3520, MLTX-02-004-EN-3530, MLTX-02-004-EN-3550, MLTX-02-004-EN-3560, MLTX-02-004-EN-3570, MLTX-02-004-EN-3580, MLTX-02-004-EN-3590, MLTX-02-004-CN-10180, MLTX-02-004-CN-10090 SS | Labor [200 h]; Driver [80 h]; Excavator [80 h]; Water Tanker [70 h]; Compactor [80 h]; Design, supply, install, testing and commissioning of air dome |
| 2 | **JAZAN** |  | 2026-03-26 | 2027-05-10 |  |  |
| MLTX-02-004-CN-11910R | Backfilling on Layers (Selected Soil) including Compaction (Playground Area) Remaining | 8d | 2026-07-05 A | 2026-08-22 A | MLTX-02-004-CN-11930, MLTX-02-004-CN-11910 | Labor [550 h]; Driver [300 h]; Loader [130 h]; Water Tanker [100 h]; Compactor [100 h]; Backfilling with selected fill material [1660] |
| MLTX-02-004-CN-12100 | Finishing and Surface Finish Works (Football Playground) | 30d | 2026-12-29 | 2027-02-01 | MLTX-02-004-CN-12090, MLTX-02-004-PR-10540, MLTX-02-004-PR-10980 | Labor [800 h]; Skilled Labor [150 h]; Driver [100 h]; Forklift [90 h]; Football playground [500] |
| MLTX-02-004-CN-12120 | Surface Marking and Painting (Football Playground) | 8d | 2027-02-03 | 2027-02-11 | MLTX-02-004-CN-12100, MLTX-02-004-CN-12370 | Skilled Labor [250 h]; Painter [240 h]; Football playground [50] |
| MLTX-02-004-CN-12150 | Finishing and Surface Finish Works (Padel Playground) | 30d | 2027-02-02 | 2027-03-09 | MLTX-02-004-CN-12140, MLTX-02-004-CN-12100 SS, MLTX-02-004-CN-12100, MLTX-02-004-PR-10800 | Labor [720 h]; Skilled Labor [200 h]; Driver [90 h]; Forklift [270 h]; Padel playgound [50] |
| MLTX-02-004-CN-12170 | Surface Marking and Painting (Padel Playground) | 8d | 2027-03-29 | 2027-04-06 | MLTX-02-004-CN-12160, MLTX-02-004-CN-12120 SS, MLTX-02-004-PR-10360 | Skilled Labor [500 h]; Painter [240 h]; Padel playgound [10] |
| MLTX-02-004-CN-12180 | Preparation and Proofing for Subgrade (Padel Playground) | 20d | 2026-10-01 A | 2026-10-19 A | MLTX-02-004-EN-12090, MLTX-02-004-EN-12080, MLTX-02-004-CN-12130 | Labor [550 h]; Skilled Labor [200 h]; Driver [280 h]; Forklift [90 h]; Basketball playground [53.33] |
| MLTX-02-004-CN-12200 | Finishing and Surface Finish Works (Basketball Playground) | 30d | 2026-12-27 | 2027-01-30 | MLTX-02-004-CN-12190, MLTX-02-004-CN-12300, MLTX-02-004-PR-10800 | Labor [740 h]; Skilled Labor [150 h]; Driver [100 h]; Forklift [90 h]; Basketball playground [266.67] |
| MLTX-02-004-CN-12220 | Surface Marking and Painting (Basketball Playground) | 8d | 2027-03-29 | 2027-04-06 | MLTX-02-004-CN-12210 SS, MLTX-02-004-CN-12120, MLTX-02-004-CN-12170 SS | Skilled Labor [250 h]; Painter [240 h]; Basketball playground [26.67] |
| MLTX-02-004-CN-12280 | Excavation for Foundation & Playground Area (Air Dome) | 5d | 2026-07-15 A | 2026-08-15 A | MLTX-02-004-EN-11130, MLTX-02-004-EN-11980, MLTX-02-004-EN-11950, MLTX-02-004-EN-11960, MLTX-02-004-EN-11970, MLTX-02-004-EN-11990, MLTX-02-004-EN-12000, MLTX-02-004-EN-12010, MLTX-02-004-EN-12020, MLTX-02-004-EN-12030, MLTX-02-004-EN-12040 | Labor [200 h]; Driver [80 h]; Excavator [80 h]; Water Tanker [70 h]; Compactor [80 h]; Design, supply, install, testing and commissioning of air dome [280312] |

Removed: MLTX-02-005-MS-1170 Completion of Hasa Oasis Works; MLTX-02-005-MS-1180 Completion of Dammam Works; MLTX-02-005-MS-1160 Completion of Arar Works; ARAR; MLTX-02-005-CN-10070 Aggregate base course layer (Football Playground); MLTX-02-005-CN-10040 Finishing Asphalt & Concrete Surface (Football Playground); MLTX-02-005-CN-10060 Surface Marking and Painting Finishing Work (Football Playground); MLTX-02-005-CN-10130 Aggregate base course layer (Padel Playground); MLTX-02-005-CN-10100 Finishing Asphalt & Concrete Surface (Padel Playground); MLTX-02-005-CN-10120 Surface Marking and Painting Finishing Work (Padel Playground); MLTX-02-005-CN-10230 Aggregate base course layer (Basketball Playground); MLTX-02-005-CN-10200 Finishing Asphalt & Concrete Surface (Basketball Playground); MLTX-02-005-CN-10220 Surface Marking and Painting Finishing Work (Basketball Playground); MLTX-02-005-CN-10320 Excavation for Foundation (Air Dome); MLTX-02-005-CN-10400 Perimeter Clamping System Installation; MLTX-02-005-CN-10540 Tartan Floor Installation Works for Landscape (Including Finishing Works); HASA OASIS; MLTX-02-005-CN-14740 Aggregate basecourse layer (Football Playground); MLTX-02-005-CN-12100 Finishing Asphalt & Concrete Surface (Football Playground); MLTX-02-005-CN-14750 Aggregate basecourse layer (Padel Playground); MLTX-02-005-CN-12150 Finishing Asphalt & Concrete Surface (Padel Playground); MLTX-02-005-CN-12180 Preparation and Proofing for Subgrade (Basketball Playground); MLTX-02-005-CN-14760 Aggregate basecourse layer (Basketball Playground); MLTX-02-005-CN-12200 Finishing Asphalt & Concrete Surface (Basketball Playground); MLTX-02-005-CN-12280 Excavation for Foundation (Air Dome); MLTX-02-005-CN-12430 Perimeter Clamping System Installation; MLTX-02-005-CN-11980 Tartan Floor Installation Works for Landscape (Including Finishing Works); MLTX-02-005-CN-12710 Installation of MODON Logo on the entrance; DAMMAM; MLTX-02-005-CN-14770 Aggregate basecourse layer (Football Playground); MLTX-02-005-CN-13530 Finishing Asphalt & Concrete Surface (Football Playground); MLTX-02-005-CN-14780 Aggregate basecourse layer (Padel Playground); MLTX-02-005-CN-13580 Finishing Asphalt & Concrete Surface (Padel Playground); MLTX-02-005-CN-13610 Preparation and Proofing for Subgrade (Basketball Playground); MLTX-02-005-CN-14790 Aggregate basecourse layer (Basketball Playground); MLTX-02-005-CN-13630 Finishing Asphalt & Concrete Surface (Basketball Playground); MLTX-02-005-CN-13710 Excavation for Foundation (Air Dome); MLTX-02-005-CN-13860 Perimeter Clamping System Installation; MLTX-02-005-CN-13410 Tartan Floor Installation Works for Landscape (Including Finishing Works); MLTX-02-005-CN-13470 Traffic Signs Posts and Poles Installation; PARKING; MLTX-02-005-CN-13380 Site Preparation & Compaction Under Interlock for Parking Area; MLTX-02-005-CN-13370 Interlock Installation (8 Cm) for Parking Area (Including Finishing Works); MLTX-02-005-CN-14260 Preleminary Works for Panel Boards; MLTX-02-005-CN-14270 Installing and Finish Works of Panel Boards; MLTX-02-005-CN-14410 Installation of DI Cover for Tank; MLTX-02-005-CN-14560 Stone Cladding Finish Works for External Walls; MLTX-02-005-CN-14140 Installation of MODON Logo on the entrance

Changed:

| ID | Task | Start | Finish | Duration | Complete | Total float | Predecessors |
| --- | --- | --- | --- | --- | --- | --- | --- |
| KEY | **KEY MILESTONES** | 2026-03-03 → 2026-03-26 (+23d) | 2027-03-29 → 2027-05-10 (+42d) |  |  |  |  |
| GEN | **GENERAL MILESTONES** | 2026-03-03 → 2026-03-26 (+23d) | 2027-03-29 → 2027-05-10 (+42d) |  |  |  |  |
| MLTX-02-004-MS-1010 | Project Commencement Date | 2026-03-03 A → 2026-03-26 A (+23d) | 2026-03-03 A → 2026-03-26 A (+23d) |  |  |  |  |
| MLTX-02-004-MS-1030 | Project Completion | 2027-03-29 → 2027-05-10 (+42d) | 2027-03-29 → 2027-05-10 (+42d) |  |  | -69.1d → -86d | Completion of Arar Works, MLTX-02-004-MS-1140, MLTX-02-004-MS-1150, Traffic Signs Posts and Poles Installation, MLTX-02-004-CN-13910, MLTX-02-004-CN-12480, Completion of Hasa Oasis Works, Completion of Dammam Works, MLTX-02-004-MS-1130, MLTX-02-004-CN-13470, MLTX-02-004-CN-12241, MLTX-02-004-CO-12110, MLTX-02-004-MS-1070, MLTX-02-004-CN-12040, MLTX-02-004-TC-11900 → MLTX-02-004-CN-12040 FF, MLTX-02-004-CN-12480 FF, MLTX-02-004-CN-13470 FF, MLTX-02-004-CN-13910 FF, MLTX-02-004-MS-1160 FF, MLTX-02-004-MS-1170 FF, MLTX-02-004-MS-1180 FF, MLTX-02-004-MS-1140 FF, MLTX-02-004-CO-12110 FF, MLTX-02-004-MS-1070 FF, MLTX-02-004-MS-1130 FF, MLTX-02-004-PR-9640 FF, MLTX-02-004-CN-10660 FF, MLTX-02-004-CN-11800 FF, MLTX-02-004-EN-4460 FF, MLTX-02-004-CN-10610 FF, MLTX-02-004-CN-10670 FF |
| OVER ALL | **CONTRACTUAL MILESTONE** | 2026-04-02 → 2026-04-29 (+27d) | 2027-03-27 → 2027-05-10 (+44d) |  |  |  |  |
| MLTX-02-004-MS-1060 | Baseline Programme Approval | 2026-04-04 A → 2026-04-29 A (+25d) | 2026-04-04 A → 2026-04-29 A (+25d) |  |  |  | MLTX-02-004-MB-1680, MLTX-02-004-MB-1920, MLTX-02-004-MB-2160 → MLTX-02-004-MB-2160 FF, MLTX-02-004-MB-1680 FF, MLTX-02-004-MB-1920 FF |
| MLTX-02-004-MS-1050 | Completion of Mobilization | 2026-04-02 A → 2026-06-02 A (+61d) | 2026-04-02 A → 2026-06-02 A (+61d) |  |  |  | MLTX-02-004-MB-1430, MLTX-02-004-MB-1980, MLTX-02-004-MB-2200, MLTX-02-004-MB-1960, MLTX-02-004-MB-1340, MLTX-02-004-MB-2090, MLTX-02-004-MB-1730, MLTX-02-004-MB-1700, MLTX-02-004-MB-1940, MLTX-02-004-MB-2190, MLTX-02-004-MB-1720, MLTX-02-004-MB-2050, MLTX-02-004-MB-1840, MLTX-02-004-MB-1990, MLTX-02-004-MB-1710, MLTX-02-004-MB-1810, MLTX-02-004-MB-1950, MLTX-02-004-MB-2170, MLTX-02-004-MB-1750, MLTX-02-004-MB-2210, MLTX-02-004-MB-1740, MLTX-02-004-MB-1440, MLTX-02-004-MB-1770, MLTX-02-004-MB-1410, MLTX-02-004-MB-1850, MLTX-02-004-MB-1380, MLTX-02-004-MB-1690, MLTX-02-004-MB-2180, MLTX-02-004-MB-2080, MLTX-02-004-MB-1420, MLTX-02-004-MB-1970, MLTX-02-004-MB-1930, MLTX-02-004-MB-2010, MLTX-02-004-MB-2100, MLTX-02-004-MB-2160, MLTX-02-004-MB-1320, MLTX-02-004-MB-1680, MLTX-02-004-MB-1860, MLTX-02-004-MB-1920 → MLTX-02-004-MB-1770 FF, MLTX-02-004-MB-1990 FF, MLTX-02-004-MB-1980 FF, MLTX-02-004-MB-2080 FF, MLTX-02-004-MB-2090 FF, MLTX-02-004-MB-2170 FF, MLTX-02-004-MB-2180 FF, MLTX-02-004-MB-2190 FF, MLTX-02-004-MB-2200 FF, MLTX-02-004-MB-2210 FF, MLTX-02-004-MB-2050 FF, MLTX-02-004-MB-2010 FF, MLTX-02-004-MB-1430 FF, MLTX-02-004-MB-1440 FF, MLTX-02-004-MB-1410 FF, MLTX-02-004-MB-1420 FF, MLTX-02-004-MB-1690 FF, MLTX-02-004-MB-1700 FF, MLTX-02-004-MB-1710 FF, MLTX-02-004-MB-1720 FF, MLTX-02-004-MB-1730 FF, MLTX-02-004-MB-1380 FF, MLTX-02-004-MB-1340 FF, MLTX-02-004-MB-1750 FF, MLTX-02-004-MB-1740 FF, MLTX-02-004-MB-1840 FF, MLTX-02-004-MB-1850 FF, MLTX-02-004-MB-1930 FF, MLTX-02-004-MB-1940 FF, MLTX-02-004-MB-1950 FF, MLTX-02-004-MB-1960 FF, MLTX-02-004-MB-1970 FF, MLTX-02-004-MB-1810 FF |
| MLTX-02-004-MS-1120 | Completion of Levelling Works | 2026-05-02 A → 2026-11-24 (+206d) | 2026-05-02 A → 2026-11-24 (+206d) |  | 100% → 0% | none → 54d | MLTX-02-004-CN-13310, MLTX-02-004-CN-11880, MLTX-02-004-CN-9930, MLTX-02-004-CN-9960, MLTX-02-004-CN-9970, MLTX-02-004-CN-9980, MLTX-02-004-CN-11910, MLTX-02-004-CN-11920, MLTX-02-004-CN-11930, MLTX-02-004-CN-14750, MLTX-02-004-CN-13860, MLTX-02-004-CN-14740 → MLTX-02-004-CN-13360 FF, MLTX-02-004-CN-9980 FF, MLTX-02-004-CN-13860 FF, MLTX-02-004-CN-14740 FF, MLTX-02-004-CN-14750 FF, MLTX-02-004-CN-9980R FF, MLTX-02-004-CN-11930 FF |
| MLTX-02-004-MS-1100 | Completion of Engineering | 2027-01-20 → 2026-12-05 (-46d) | 2027-01-20 → 2026-12-05 (-46d) |  |  | -19.1d → 44d | MLTX-02-004-EN-12070, MLTX-02-004-EN-12040, MLTX-02-004-EN-12150, MLTX-02-004-EN-4820, MLTX-02-004-EN-4360, MLTX-02-004-EN-4370, MLTX-02-004-EN-4380, MLTX-02-004-EN-4600, MLTX-02-004-EN-4620, MLTX-02-004-EN-4400, MLTX-02-004-EN-4410, MLTX-02-004-EN-4420, MLTX-02-004-EN-4430, MLTX-02-004-EN-4440, MLTX-02-004-EN-4450, MLTX-02-004-EN-4460, MLTX-02-004-EN-4470, MLTX-02-004-EN-4480, MLTX-02-004-EN-4490, MLTX-02-004-EN-4510, MLTX-02-004-EN-4520, MLTX-02-004-EN-4540, MLTX-02-004-EN-4550, MLTX-02-004-EN-4560, MLTX-02-004-EN-4570, MLTX-02-004-EN-4580, MLTX-02-004-EN-4630, MLTX-02-004-EN-4640, MLTX-02-004-EN-4660, MLTX-02-004-EN-4670, MLTX-02-004-EN-3970, MLTX-02-004-EN-3980, MLTX-02-004-EN-3950, MLTX-02-004-EN-3960, MLTX-02-004-EN-2980, MLTX-02-004-EN-2990, MLTX-02-004-EN-3000, MLTX-02-004-EN-3010, MLTX-02-004-EN-3020, MLTX-02-004-EN-3030, MLTX-02-004-EN-3040, MLTX-02-004-EN-3060, MLTX-02-004-EN-3070, MLTX-02-004-EN-3080, MLTX-02-004-EN-3100, MLTX-02-004-EN-3110, MLTX-02-004-EN-3120, MLTX-02-004-EN-3170, MLTX-02-004-EN-3180, MLTX-02-004-EN-3190, MLTX-02-004-EN-3130, MLTX-02-004-EN-3140, MLTX-02-004-EN-3210, MLTX-02-004-EN-3220, MLTX-02-004-EN-3250, MLTX-02-004-EN-3260, MLTX-02-004-EN-3290, MLTX-02-004-EN-3320, MLTX-02-004-EN-3300, MLTX-02-004-EN-3350, MLTX-02-004-EN-3380, MLTX-02-004-EN-3330, MLTX-02-004-EN-3310, MLTX-02-004-EN-3340, MLTX-02-004-EN-3360, MLTX-02-004-EN-3390, MLTX-02-004-EN-3370, MLTX-02-004-EN-3400, MLTX-02-004-EN-3810, MLTX-02-004-EN-3820, MLTX-02-004-EN-3830, MLTX-02-004-EN-3840, MLTX-02-004-EN-3880, MLTX-02-004-EN-3920, MLTX-02-004-EN-3680, MLTX-02-004-EN-3690, MLTX-02-004-EN-3730, MLTX-02-004-EN-3740, MLTX-02-004-EN-3700, MLTX-02-004-EN-3760, MLTX-02-004-EN-3770, MLTX-02-004-EN-3780, MLTX-02-004-EN-3650, MLTX-02-004-EN-3660, MLTX-02-004-EN-3440, MLTX-02-004-EN-3460, MLTX-02-004-EN-3500, MLTX-02-004-EN-3520, MLTX-02-004-EN-3480, MLTX-02-004-EN-3530, MLTX-02-004-EN-3550, MLTX-02-004-EN-3570, MLTX-02-004-EN-3580, MLTX-02-004-EN-3590, MLTX-02-004-EN-3150, MLTX-02-004-EN-3160, MLTX-02-004-EN-3610, MLTX-02-004-EN-3620, MLTX-02-004-EN-3630, MLTX-02-004-EN-8720, MLTX-02-004-EN-8980, MLTX-02-004-EN-9010, MLTX-02-004-EN-9030, MLTX-02-004-EN-9050, MLTX-02-004-EN-9090, MLTX-02-004-EN-9100, MLTX-02-004-EN-9110, MLTX-02-004-EN-9120, MLTX-02-004-EN-9140, MLTX-02-004-EN-9160, MLTX-02-004-EN-9180, MLTX-02-004-EN-9200, MLTX-02-004-EN-9220, MLTX-02-004-EN-9240, MLTX-02-004-EN-9260, MLTX-02-004-EN-9280, MLTX-02-004-EN-9300, MLTX-02-004-EN-9320, MLTX-02-004-EN-9340, MLTX-02-004-EN-9360, MLTX-02-004-EN-9380, MLTX-02-004-EN-9410, MLTX-02-004-EN-9430, MLTX-02-004-EN-9450, MLTX-02-004-EN-9470, MLTX-02-004-EN-9490, MLTX-02-004-EN-9510, MLTX-02-004-EN-9530, MLTX-02-004-EN-9550, MLTX-02-004-EN-9570, MLTX-02-004-EN-9630, MLTX-02-004-EN-9650, MLTX-02-004-EN-9670, MLTX-02-004-EN-9690, MLTX-02-004-EN-9710, MLTX-02-004-EN-9730, MLTX-02-004-EN-9750, MLTX-02-004-EN-9810, MLTX-02-004-EN-9830, MLTX-02-004-EN-9850, MLTX-02-004-EN-9870, MLTX-02-004-EN-9880, MLTX-02-004-EN-9890, MLTX-02-004-EN-9900, MLTX-02-004-EN-9910, MLTX-02-004-EN-9920, MLTX-02-004-EN-9930, MLTX-02-004-EN-9940, MLTX-02-004-EN-9950, MLTX-02-004-EN-9960, MLTX-02-004-EN-10120, MLTX-02-004-EN-10990, MLTX-02-004-EN-11000, MLTX-02-004-EN-11010, MLTX-02-004-EN-11020, MLTX-02-004-EN-11030, MLTX-02-004-EN-11040, MLTX-02-004-EN-11050, MLTX-02-004-EN-11060, MLTX-02-004-EN-11070, MLTX-02-004-EN-11080, MLTX-02-004-EN-11090, MLTX-02-004-EN-11100, MLTX-02-004-EN-11110, MLTX-02-004-EN-11120, MLTX-02-004-EN-11130, MLTX-02-004-EN-11140, MLTX-02-004-EN-11150, MLTX-02-004-EN-11160, MLTX-02-004-EN-11170, MLTX-02-004-EN-11180, MLTX-02-004-EN-11190, MLTX-02-004-EN-11200, MLTX-02-004-EN-11210, MLTX-02-004-EN-11220, MLTX-02-004-EN-11230, MLTX-02-004-EN-11240, MLTX-02-004-EN-11250, MLTX-02-004-EN-11320, MLTX-02-004-EN-11330, MLTX-02-004-EN-11340, MLTX-02-004-EN-11350, MLTX-02-004-EN-11360, MLTX-02-004-EN-11370, MLTX-02-004-EN-11380, MLTX-02-004-EN-11390, MLTX-02-004-EN-11400, MLTX-02-004-EN-11410, MLTX-02-004-EN-11420, MLTX-02-004-EN-11430, MLTX-02-004-EN-11440, MLTX-02-004-EN-11450, MLTX-02-004-EN-11460, MLTX-02-004-EN-11470, MLTX-02-004-EN-11480, MLTX-02-004-EN-11490, MLTX-02-004-EN-11500, MLTX-02-004-EN-11510, MLTX-02-004-EN-11520, MLTX-02-004-EN-11530, MLTX-02-004-EN-11540, MLTX-02-004-EN-11550, MLTX-02-004-EN-11560, MLTX-02-004-EN-11570, MLTX-02-004-EN-11580, MLTX-02-004-EN-11590, MLTX-02-004-EN-11600, MLTX-02-004-EN-11610, MLTX-02-004-EN-11620, MLTX-02-004-EN-11630, MLTX-02-004-EN-11640, MLTX-02-004-EN-11650, MLTX-02-004-EN-11660, MLTX-02-004-EN-11670, MLTX-02-004-EN-11680, MLTX-02-004-EN-11690, MLTX-02-004-EN-11700, MLTX-02-004-EN-11710, MLTX-02-004-EN-11720, MLTX-02-004-EN-11730, MLTX-02-004-EN-11740, MLTX-02-004-EN-11750, MLTX-02-004-EN-11760, MLTX-02-004-EN-11770, MLTX-02-004-EN-11780, MLTX-02-004-EN-11790, MLTX-02-004-EN-11800, MLTX-02-004-EN-11810, MLTX-02-004-EN-11820, MLTX-02-004-EN-11830, MLTX-02-004-EN-11840, MLTX-02-004-EN-11850, MLTX-02-004-EN-11860, MLTX-02-004-EN-11870, MLTX-02-004-EN-11880, MLTX-02-004-EN-11900, MLTX-02-004-EN-11910, MLTX-02-004-EN-11920, MLTX-02-004-EN-11930, MLTX-02-004-EN-11940, MLTX-02-004-EN-11950, MLTX-02-004-EN-11970, MLTX-02-004-EN-11990, MLTX-02-004-EN-12050, MLTX-02-004-EN-12060, MLTX-02-004-EN-12080, MLTX-02-004-EN-12090, MLTX-02-004-EN-15580, MLTX-02-004-EN-15630, MLTX-02-004-EN-15640, MLTX-02-004-EN-15650, MLTX-02-004-EN-15660, MLTX-02-004-EN-15670, MLTX-02-004-EN-15680, MLTX-02-004-EN-15690, MLTX-02-004-EN-15700, MLTX-02-004-EN-15710, MLTX-02-004-EN-15720, MLTX-02-004-EN-15730, MLTX-02-004-EN-15740, MLTX-02-004-EN-15750, MLTX-02-004-EN-15790, MLTX-02-004-EN-15800, MLTX-02-004-EN-16320, MLTX-02-004-EN-16330, MLTX-02-004-EN-15760, MLTX-02-004-EN-15770, MLTX-02-004-EN-15780, MLTX-02-004-EN-15810, MLTX-02-004-EN-15820, MLTX-02-004-EN-15830, MLTX-02-004-EN-15840, MLTX-02-004-EN-15850, MLTX-02-004-EN-15860, MLTX-02-004-EN-15870, MLTX-02-004-EN-15880, MLTX-02-004-EN-15890, MLTX-02-004-EN-15910, MLTX-02-004-EN-15950, MLTX-02-004-EN-15900, MLTX-02-004-EN-15940, MLTX-02-004-EN-15960, MLTX-02-004-EN-15990, MLTX-02-004-EN-15930, MLTX-02-004-EN-16000, MLTX-02-004-EN-16200, MLTX-02-004-EN-16220, MLTX-02-004-EN-16240, MLTX-02-004-EN-16260, MLTX-02-004-EN-16270, MLTX-02-004-EN-16340, MLTX-02-004-EN-16360, MLTX-02-004-EN-16110, MLTX-02-004-EN-16130, MLTX-02-004-EN-16140, MLTX-02-004-EN-16010, MLTX-02-004-EN-16020, MLTX-02-004-EN-16030, MLTX-02-004-EN-16040, MLTX-02-004-EN-16050, MLTX-02-004-EN-16060, MLTX-02-004-EN-15610, MLTX-02-004-EN-15620, MLTX-02-004-EN-15590, MLTX-02-004-EN-15600, MLTX-02-004-EN-15270, MLTX-02-004-EN-15280, MLTX-02-004-EN-15310, MLTX-02-004-EN-15320, MLTX-02-004-EN-15330, MLTX-02-004-EN-15340, MLTX-02-004-EN-15350, MLTX-02-004-EN-15360, MLTX-02-004-EN-15370, MLTX-02-004-EN-15380, MLTX-02-004-EN-15400, MLTX-02-004-EN-15410, MLTX-02-004-EN-15420, MLTX-02-004-EN-15430, MLTX-02-004-EN-15440, MLTX-02-004-EN-15450, MLTX-02-004-EN-15460, MLTX-02-004-EN-15470, MLTX-02-004-EN-15290, MLTX-02-004-EN-15300, MLTX-02-004-EN-15480, MLTX-02-004-EN-15490, MLTX-02-004-EN-15500, MLTX-02-004-EN-15510, MLTX-02-004-EN-15520, MLTX-02-004-EN-14390, MLTX-02-004-EN-13370, MLTX-02-004-EN-13280, MLTX-02-004-EN-13470, MLTX-02-004-EN-13490, MLTX-02-004-EN-13510, MLTX-02-004-EN-13530, MLTX-02-004-EN-13650, MLTX-02-004-EN-13550, MLTX-02-004-EN-13570, MLTX-02-004-EN-13590, MLTX-02-004-EN-13680, MLTX-02-004-EN-13700, MLTX-02-004-EN-13720, MLTX-02-004-EN-13740, MLTX-02-004-EN-13610, MLTX-02-004-EN-13630, MLTX-02-004-EN-13430, MLTX-02-004-EN-13450, MLTX-02-004-EN-13840, MLTX-02-004-EN-14150, MLTX-02-004-EN-14160, MLTX-02-004-EN-14170, MLTX-02-004-EN-14180, MLTX-02-004-EN-14190, MLTX-02-004-EN-14200, MLTX-02-004-EN-14210, MLTX-02-004-EN-14220, MLTX-02-004-EN-13300, MLTX-02-004-EN-13320, MLTX-02-004-EN-13380, MLTX-02-004-EN-14230, MLTX-02-004-EN-13760, MLTX-02-004-EN-13780, MLTX-02-004-EN-13800, MLTX-02-004-EN-13820, MLTX-02-004-EN-13900, MLTX-02-004-EN-13920, MLTX-02-004-EN-13940, MLTX-02-004-EN-13960, MLTX-02-004-EN-13980, MLTX-02-004-EN-14020, MLTX-02-004-EN-14120, MLTX-02-004-EN-13390, MLTX-02-004-EN-13360, MLTX-02-004-EN-13410, MLTX-02-004-EN-14080, MLTX-02-004-EN-14100, MLTX-02-004-EN-14140, MLTX-02-004-EN-14000, MLTX-02-004-EN-13250, MLTX-02-004-EN-2610, MLTX-02-004-EN-2640, MLTX-02-004-EN-7820, MLTX-02-004-EN-6330, MLTX-02-004-EN-7150, MLTX-02-004-EN-7180, MLTX-02-004-EN-7640, MLTX-02-004-EN-6300, MLTX-02-004-EN-7210, MLTX-02-004-EN-7610, MLTX-02-004-EN-7670, MLTX-02-004-EN-6810, MLTX-02-004-EN-6840, MLTX-02-004-EN-6360, MLTX-02-004-EN-6420, MLTX-02-004-EN-6450, MLTX-02-004-EN-6480, MLTX-02-004-EN-6540, MLTX-02-004-EN-6570, MLTX-02-004-EN-6600, MLTX-02-004-EN-6750, MLTX-02-004-EN-6780, MLTX-02-004-EN-6510, MLTX-02-004-EN-6630, MLTX-02-004-EN-6660, MLTX-02-004-EN-6690, MLTX-02-004-EN-6720, MLTX-02-004-EN-7270, MLTX-02-004-EN-7300, MLTX-02-004-EN-7330, MLTX-02-004-EN-7360, MLTX-02-004-EN-6880, MLTX-02-004-EN-7390, MLTX-02-004-EN-7420, MLTX-02-004-EN-7450, MLTX-02-004-EN-7480, MLTX-02-004-EN-7510, MLTX-02-004-EN-7790, MLTX-02-004-EN-7550, MLTX-02-004-EN-7700, MLTX-02-004-EN-7730, MLTX-02-004-EN-7580, MLTX-02-004-EN-7760, MLTX-02-004-EN-6910, MLTX-02-004-EN-6940, MLTX-02-004-EN-6970, MLTX-02-004-EN-7000, MLTX-02-004-EN-7030, MLTX-02-004-EN-7060, MLTX-02-004-EN-7090, MLTX-02-004-EN-7120, MLTX-02-004-EN-7240, MLTX-02-004-EN-3560, MLTX-02-004-EN-8730, MLTX-02-004-EN-8840, MLTX-02-004-EN-11960, MLTX-02-004-EN-13110, MLTX-02-004-EN-16230, MLTX-02-004-EN-2600, MLTX-02-004-EN-2450 → MLTX-02-004-EN-1840, MLTX-02-004-EN-2280, MLTX-02-004-EN-2670, MLTX-02-004-EN-3770, MLTX-02-004-EN-4510 FF, MLTX-02-004-EN-11710 FF, MLTX-02-004-EN-11870 FF, MLTX-02-004-EN-11790 FF, MLTX-02-004-EN-8170 FF, MLTX-02-004-EN-11140 FF, MLTX-02-004-EN-15980 FF, MLTX-02-004-EN-16140 FF, MLTX-02-004-EN-16060 FF, MLTX-02-004-EN-12440, MLTX-02-004-EN-15410, MLTX-02-004-EN-3760, MLTX-02-004-EN-16340 FF, MLTX-02-004-EN-2240, MLTX-02-004-EN-2650, MLTX-02-004-EN-3730 FF, MLTX-02-004-EN-11820, MLTX-02-004-EN-11830, MLTX-02-004-EN-11850, MLTX-02-004-EN-11860, MLTX-02-004-EN-11870, MLTX-02-004-EN-11650, MLTX-02-004-EN-11700, MLTX-02-004-EN-11710, MLTX-02-004-EN-11780, MLTX-02-004-EN-11790, MLTX-02-004-EN-11110, MLTX-02-004-EN-11120, MLTX-02-004-EN-11130, MLTX-02-004-EN-11140, MLTX-02-004-EN-15340, MLTX-02-004-EN-15380, MLTX-02-004-EN-15390, MLTX-02-004-EN-15400, MLTX-02-004-EN-15920 FF, MLTX-02-004-EN-15970 FF, MLTX-02-004-EN-16090 FF, MLTX-02-004-EN-16100 FF, MLTX-02-004-EN-16110 FF, MLTX-02-004-EN-16120 FF, MLTX-02-004-EN-16130 FF, MLTX-02-004-EN-16140, MLTX-02-004-EN-16050 FF, MLTX-02-004-EN-12350, MLTX-02-004-EN-12470, MLTX-02-004-EN-12430, MLTX-02-004-EN-15290, MLTX-02-004-EN-15300, MLTX-02-004-EN-15500 FF, MLTX-02-004-EN-15510 FF, MLTX-02-004-EN-15490, MLTX-02-004-EN-15520 FF, MLTX-02-004-EN-15480, MLTX-02-004-EN-14150, MLTX-02-004-EN-14160, MLTX-02-004-EN-14170 |
| MLTX-02-004-MS-1130 | Completion of Toilet Building | 2027-03-09 → 2026-12-24 (-75d) | 2027-03-09 → 2026-12-24 (-75d) |  |  | -56.1d → 27d | MLTX-02-004-CN-11170, MLTX-02-004-CN-11130, MLTX-02-004-CN-11120, MLTX-02-004-CN-14490, MLTX-02-004-CN-11790, MLTX-02-004-CN-12990, Installing and Finish Works of Panel Boards, MLTX-02-004-CN-12670, MLTX-02-004-CN-14420, MLTX-02-004-CN-14470, MLTX-02-004-CN-12820, MLTX-02-004-MS-1100, Installation of MODON Logo on the entrance, MLTX-02-004-CN-14250, MLTX-02-004-CN-13040, MLTX-02-004-CN-14140, MLTX-02-004-CN-13060, MLTX-02-004-CN-11220, Installation of MODON Logo on the entrance, MLTX-02-004-CN-14100, MLTX-02-004-CN-14590, MLTX-02-004-CN-14200, MLTX-02-004-CN-14240, MLTX-02-004-CN-11740, MLTX-02-004-CN-14340, MLTX-02-004-CN-14300, MLTX-02-004-CN-14390, MLTX-02-004-CN-14320, MLTX-02-004-CN-14400, MLTX-02-004-CN-14380, MLTX-02-004-CN-14700, MLTX-02-004-CN-11550, MLTX-02-004-CN-11620, MLTX-02-004-CN-11780, MLTX-02-004-CN-12840, MLTX-02-004-CN-11760, MLTX-02-004-CN-11750, MLTX-02-004-CN-11830, MLTX-02-004-CN-11770, MLTX-02-004-CN-11820, MLTX-02-004-CN-12980, MLTX-02-004-CN-11380, MLTX-02-004-CN-11870, MLTX-02-004-CN-12770, MLTX-02-004-CN-12810, MLTX-02-004-CN-12870, MLTX-02-004-CN-12890, MLTX-02-004-CN-12910, MLTX-02-004-CN-12950, MLTX-02-004-CN-12960, MLTX-02-004-CN-12970, Installation of DI Cover for Tank, MLTX-02-004-CN-13160, MLTX-02-004-CN-13270, MLTX-02-004-MS-1140, MLTX-02-004-CN-13000, MLTX-02-004-CN-12660, MLTX-02-004-CN-12780, MLTX-02-004-CN-14160, Aggregate basecourse layer (Football Playground), MLTX-02-004-CN-10190, MLTX-02-004-CN-11320, MLTX-02-004-PR-8130, MLTX-02-004-EN-4440, MLTX-02-004-CN-11100, MLTX-02-004-CN-11260, MLTX-02-004-CN-12690, MLTX-02-004-CN-13050, MLTX-02-004-EN-11080, MLTX-02-004-CN-13030, MLTX-02-004-PR-10440, MLTX-02-004-PR-10420, MLTX-02-004-PR-10400, MLTX-02-004-EN-11200, MLTX-02-004-CN-12750, MLTX-02-004-CN-13140 → MLTX-02-004-MS-1100, MLTX-02-004-CN-12670 FF, MLTX-02-004-CN-13040 FF, MLTX-02-004-CN-12990 FF, MLTX-02-004-CN-13060 FF, MLTX-02-004-CN-14140 FF, MLTX-02-004-CN-14100 FF, MLTX-02-004-CN-14470 FF, MLTX-02-004-CN-14420 FF, MLTX-02-004-CN-14490 FF, MLTX-02-004-CN-11780 FF, MLTX-02-004-CN-14250 FF, MLTX-02-004-CN-11120 FF, MLTX-02-004-CN-11130 FF, MLTX-02-004-PR-10340 FF, MLTX-02-004-CN-13240 FF, MLTX-02-004-CN-12820 FF, MLTX-02-004-PR-8170 FF, MLTX-02-004-CN-11840 FF, MLTX-02-004-CN-11170 FF, MLTX-02-004-CN-11220 FF |
| MLTX-02-004-MS-1150 | Completion of Natural Landscape Works | 2027-03-27 → 2027-01-23 (-63d) | 2027-03-27 → 2027-01-23 (-63d) |  |  | -67.1d → -16d | MLTX-02-004-CN-12060, MLTX-02-004-CN-13420, MLTX-02-004-CN-10580, MLTX-02-004-CN-12210, MLTX-02-004-CN-13770, MLTX-02-004-MS-1100, MLTX-02-004-CN-13490, MLTX-02-004-CN-13470, MLTX-02-004-CN-13910, MLTX-02-004-CN-14650, MLTX-02-004-CN-12040, MLTX-02-004-CN-10670, MLTX-02-004-CN-11460, Traffic Signs Posts and Poles Installation, MLTX-02-004-CN-12480, MLTX-02-004-MS-1130 → MLTX-02-004-CN-13490 FF, MLTX-02-004-CN-10550 FF, MLTX-02-004-CN-10580 FF, MLTX-02-004-CN-12060 FF |
| MLTX-02-004-MS-1070 | Completion of Testing & Commissioning | 2027-03-27 → 2027-03-16 (-11d) | 2027-03-27 → 2027-03-16 (-11d) |  |  | -67.1d → -39d | MLTX-02-004-TC-11860, MLTX-02-004-TC-11920, MLTX-02-004-TC-11930, MLTX-02-004-TC-11940, MLTX-02-004-TC-11870, MLTX-02-004-TC-11880, MLTX-02-004-TC-11890, MLTX-02-004-TC-11900, MLTX-02-004-TC-11910 → MLTX-02-004-TC-11910 FF, MLTX-02-004-TC-11860 FF |
| MLTX-02-004-MS-1140 | Completion of Playground Area | 2027-03-09 → 2027-05-01 (+53d) | 2027-03-09 → 2027-05-01 (+53d) |  |  | -56.1d → -78d | MLTX-02-004-CN-13650, MLTX-02-004-CN-13600, MLTX-02-004-CN-11960, MLTX-02-004-CN-10140, MLTX-02-004-CN-10210, Surface Marking and Painting Finishing Work (Basketball Playground), MLTX-02-004-CN-10120, MLTX-02-004-MS-1100, MLTX-02-004-CN-13390, MLTX-02-004-CN-12210, MLTX-02-004-CN-10280, MLTX-02-004-CN-12241, MLTX-02-004-CN-12270, MLTX-02-004-CN-10220, MLTX-02-004-PR-9600, MLTX-02-004-CN-13550 → MLTX-02-004-CN-12170 FF, MLTX-02-004-CN-11960 FF, MLTX-02-004-CN-13600 FF, MLTX-02-004-CN-13390 FF, MLTX-02-004-CN-10140 FF, MLTX-02-004-CN-10280, MLTX-02-004-CN-12270 FF, MLTX-02-004-CN-13700 FF |
| MOB | **MOBILIZATION** | 2026-03-04 → 2026-03-26 (+22d) | 2026-04-04 → 2026-06-10 (+67d) |  |  |  |  |
| SURV | **TOPOGRAPHIC SURVEY** | 2026-03-04 → 2026-03-26 (+22d) | 2026-03-08 → 2026-03-30 (+22d) |  |  |  |  |
| MLTX-02-004-MB-2100 | Site Survey Works | 2026-03-04 A → 2026-03-26 A (+22d) | 2026-03-08 A → 2026-03-30 A (+22d) |  |  |  | MLTX-02-004-MS-1010 → MLTX-02-004-MS-1010 SS |
| OFFICE | **SITE FACILITIES & OFFICES** | 2026-03-04 → 2026-03-26 (+22d) | 2026-04-02 → 2026-06-02 (+61d) |  |  |  |  |
| MLTX-02-004-MB-2010 | Site Layout Plan | 2026-03-04 A → 2026-03-26 A (+22d) | 2026-03-08 A → 2026-03-30 A (+22d) | 3d → 4d |  |  | MLTX-02-004-MS-1010 → MLTX-02-004-MS-1010 SS |
| MLTX-02-004-MB-2020 | Clear & Grub for Offices & Access Road | 2026-03-09 A → 2026-04-07 A (+29d) | 2026-03-11 A → 2026-04-12 A (+32d) | 3d → 5d |  |  | MLTX-02-004-MB-2010, MLTX-02-004-MB-2060 → MLTX-02-004-MB-2010 |
| MLTX-02-004-MB-2070 | Install Site Facilities | 2026-03-16 A → 2026-04-08 A (+23d) | 2026-03-28 A → 2026-05-11 A (+44d) | 4d → 28.72d |  |  | MLTX-02-004-MB-2040, MLTX-02-004-MB-1990 → MLTX-02-004-MB-2040 |
| MLTX-02-004-MB-2030 | Construct Site Access Roads | 2026-03-09 A → 2026-04-10 A (+32d) | 2026-03-12 A → 2026-04-12 A (+31d) | 3d → 2d |  |  |  |
| MLTX-02-004-MB-2090 | Construct Parking Sheds | 2026-03-24 A → 2026-04-12 A (+19d) | 2026-03-30 A → 2026-04-18 A (+19d) |  |  |  | MLTX-02-004-MB-2040, MLTX-02-004-MB-1990 → MLTX-02-004-MB-2040 |
| MLTX-02-004-MB-1990 | Equipment Mobalization | 2026-03-26 A → 2026-04-14 A (+19d) | 2026-04-02 A → 2026-04-15 A (+13d) | 5d → 1.4d |  |  |  |
| MLTX-02-004-MB-2040 | Construct Temporary Fence | 2026-03-12 A → 2026-04-14 A (+33d) | 2026-03-19 A → 2026-06-02 A (+75d) | 5d → 39.75d |  |  | MLTX-02-004-MB-2020, MLTX-02-004-MB-2060 → MLTX-02-004-MB-2020 |
| MLTX-02-004-MB-2050 | Construct Site Offices & Storage | 2026-03-14 A → 2026-04-15 A (+32d) | 2026-04-01 A → 2026-05-12 A (+41d) | 10d → 23.33d |  |  | MLTX-02-004-MB-2030, MLTX-02-004-MB-2020 → MLTX-02-004-MB-2030 |
| MLTX-02-004-MB-2080 | Electrical Works & Connections | 2026-03-24 A → 2026-04-15 A (+22d) | 2026-03-30 A → 2026-05-12 A (+43d) | 6d → 23.4d |  |  | MLTX-02-004-MB-2040, MLTX-02-004-MB-1990 → MLTX-02-004-MB-2040 |
| MLTX-02-004-MB-1980 | Manpower Mobalization | 2026-03-24 A → 2026-04-16 A (+23d) | 2026-04-02 A → 2026-05-23 A (+51d) | 3d → 31.5d |  |  | MLTX-02-004-MB-2070, MLTX-02-004-MB-2160 → MLTX-02-004-MB-2070 |
| MLTX-02-004-MB-2060 | Install Project Signs | 2026-03-14 A → 2026-04-26 A (+43d) | 2026-03-25 A → 2026-04-30 A (+36d) | 8d → 4.6d |  |  |  |
| PRELI | **PRELIMINARY SUBMITTALS** | 2026-03-09 → 2026-03-31 (+22d) | 2026-04-04 → 2026-06-10 (+67d) |  |  |  |  |
| P&S | **PREPARATIONS & SUBMITTAL BY CONTRACTORS** | 2026-03-09 → 2026-03-31 (+22d) | 2026-03-19 → 2026-04-30 (+42d) |  |  |  |  |
| MLTX-02-004-MB-2000 | Preparation and Submittal of Detailed Work Order Programme (Baseline) | 2026-03-09 A → 2026-03-31 A (+22d) | 2026-03-19 A → 2026-04-28 A (+40d) | 10d → 25d |  |  | MLTX-02-004-MB-2010, MLTX-02-004-MB-2110 → MLTX-02-004-MB-2010 |
| MLTX-02-004-MB-2110 | Preparation and Submittal of Project Execution Plan | 2026-03-09 A → 2026-03-31 A (+22d) | 2026-03-17 A → 2026-04-30 A (+44d) | 8d → 27d |  |  |  |
| MLTX-02-004-MB-2120 | Submission of Contractor Project Quality Plan | 2026-03-09 A → 2026-03-31 A (+22d) | 2026-03-17 A → 2026-04-11 A (+25d) | 8d → 10d |  |  | MLTX-02-004-MB-2010, MLTX-02-004-MB-2110 → MLTX-02-004-MB-2010 |
| MLTX-02-004-MB-2130 | Submission of Construction Safety & Environmental Management Plan | 2026-03-09 A → 2026-03-31 A (+22d) | 2026-03-17 A → 2026-04-11 A (+25d) | 8d → 10d |  |  | MLTX-02-004-MB-2010, MLTX-02-004-MB-2110 → MLTX-02-004-MB-2010 |
| MLTX-02-004-MB-2140 | Preparation and Submittal of Organization Chart | 2026-03-09 A → 2026-03-31 A (+22d) | 2026-03-17 A → 2026-04-08 A (+22d) |  |  |  | MLTX-02-004-MB-2010, MLTX-02-004-MB-2110 → MLTX-02-004-MB-2010 |
| MLTX-02-004-MB-2150 | Preparation and Submittal of Communication Plan | 2026-03-09 A → 2026-03-31 A (+22d) | 2026-03-17 A → 2026-04-08 A (+22d) |  |  |  | MLTX-02-004-MB-2010, MLTX-02-004-MB-2110 → MLTX-02-004-MB-2010 |
| APP | **APPROVALS BY EMPLOYERS** | 2026-03-18 → 2026-04-09 (+22d) | 2026-04-04 → 2026-06-10 (+67d) |  |  |  |  |
| MLTX-02-004-MB-2180 | Approval of Contractor Project Quality Plan | 2026-03-18 A → 2026-04-09 A (+22d) | 2026-04-01 A → 2026-04-30 A (+29d) | 10d → 19d |  |  | MLTX-02-004-MB-2120, MLTX-02-004-MB-2170 → MLTX-02-004-MB-2120 |
| MLTX-02-004-MB-2200 | Approval of Organization Chart | 2026-03-18 A → 2026-04-09 A (+22d) | 2026-04-01 A → 2026-04-20 A (+19d) |  |  |  | MLTX-02-004-MB-2140, MLTX-02-004-MB-2170 → MLTX-02-004-MB-2140 |
| MLTX-02-004-MB-2210 | Approval of Communication Plan | 2026-03-18 A → 2026-04-09 A (+22d) | 2026-04-01 A → 2026-04-20 A (+19d) |  |  |  | MLTX-02-004-MB-2150, MLTX-02-004-MB-2170 → MLTX-02-004-MB-2150 |
| MLTX-02-004-MB-2160 | Approval of Detailed Work Order Programme (Baseline) | 2026-03-24 A → 2026-04-29 A (+36d) | 2026-04-04 A → 2026-04-29 A (+25d) | 10d → 1d |  |  | MLTX-02-004-MB-2000, MLTX-02-004-MB-2170 → MLTX-02-004-MB-2000 |
| MLTX-02-004-MB-2170 | Approval of Project Execution Plan | 2026-03-18 A → 2026-05-13 A (+56d) | 2026-04-01 A → 2026-05-13 A (+42d) | 10d → 1d |  |  |  |
| MLTX-02-004-MB-2190 | Approval of Construction Safety & Environmental Management Plan | 2026-03-18 A → 2026-06-10 A (+84d) | 2026-04-01 A → 2026-06-10 A (+70d) | 10d → 1d |  |  | MLTX-02-004-MB-2130, MLTX-02-004-MB-2170 → MLTX-02-004-MB-2130 |
| ENGG | **ENGINEERING** | 2026-03-07 → 2026-03-31 (+24d) | 2026-11-08 → 2026-12-05 (+27d) |  |  |  |  |
| SD | **SHOP DRAWINGS** | 2026-03-07 → 2026-03-31 (+24d) | 2026-11-08 → 2026-08-26 (-74d) |  |  |  |  |
| SUB | **SHOP DRAWINGS SUBMISSION** | 2026-03-07 → 2026-03-31 (+24d) | 2026-11-08 → 2026-08-25 (-75d) |  |  |  |  |
| 2 | **SHOP DRAWING SUBMITTALS FOR EARTHING WORKS** | 2026-03-09 → 2026-03-31 (+22d) | 2026-03-14 → 2026-06-09 (+87d) |  |  |  |  |
| MLTX-02-004-EN-12100 | Shop DWG Submittal for Layout Plan | 2026-03-09 A → 2026-03-31 A (+22d) | 2026-03-14 A → 2026-04-22 A (+39d) | 15d → 20d |  |  |  |
| MLTX-02-004-EN-12110 | Shop DWG Submittal for Setting Out | 2026-03-09 A → 2026-03-31 A (+22d) | 2026-03-14 A → 2026-04-25 A (+42d) | 16d → 22d |  |  |  |
| MLTX-02-004-EN-12120 | Shop DWG Submittal for Grading Layout Plan | 2026-03-09 A → 2026-03-31 A (+22d) | 2026-03-14 A → 2026-04-26 A (+43d) | 15d → 23d |  |  | MLTX-02-004-MB-2100, MLTX-02-004-EN-15540 → MLTX-02-004-EN-15540 |
| MLTX-02-004-EN-12130 | Shop DWG Submittal for Curb Setting Out Points | 2026-03-09 A → 2026-05-21 A (+73d) | 2026-03-14 A → 2026-05-21 A (+68d) | 15d → 1d |  |  |  |
| MLTX-02-004-EN-12150 | Shop DWG Submittal for Standards Details | 2026-03-09 A → 2026-05-21 A (+73d) | 2026-03-14 A → 2026-05-21 A (+68d) | 15d → 1d |  |  |  |
| MLTX-02-004-EN-12140 | Shop DWG Submittal for Signing & Marking Layout Plan | 2026-03-09 A → 2026-06-09 A (+92d) | 2026-03-14 A → 2026-06-09 A (+87d) | 15d → 1d |  |  | MLTX-02-004-MB-2100, MLTX-02-004-EN-12100 → MLTX-02-004-MB-2100 |
| ROAD | **SHOP DRAWING SUBMITTALS FOR SERVICE/TOILET WORKS** | 2026-03-07 → 2026-03-31 (+24d) | 2026-07-30 → 2026-08-25 (+26d) |  |  |  |  |
| 2 | **ARCHITECTURE WORKS** | 2026-03-09 → 2026-03-31 (+22d) | 2026-03-14 → 2026-04-13 (+30d) |  |  |  |  |
| MLTX-02-004-EN-12480 | Shop DWG Submittal for Floor Plan | 2026-03-09 A → 2026-03-31 A (+22d) | 2026-03-14 A → 2026-04-13 A (+30d) | 15d → 12d |  |  | MLTX-02-004-EN-12110 SS, MLTX-02-004-EN-12100 SS, MLTX-02-004-EN-12130 → MLTX-02-004-EN-12100 SS, MLTX-02-004-EN-12110 SS |
| MLTX-02-004-EN-12490 | Shop DWG Submittal for Elevations | 2026-03-09 A → 2026-03-31 A (+22d) | 2026-03-14 A → 2026-04-13 A (+30d) | 15d → 12d |  |  | MLTX-02-004-EN-12480 SS, MLTX-02-004-EN-12100 → MLTX-02-004-EN-12480 SS |
| MLTX-02-004-EN-12500 | Shop DWG Submittal for Sections | 2026-03-09 A → 2026-03-31 A (+22d) | 2026-03-14 A → 2026-04-13 A (+30d) | 15d → 12d |  |  |  |
| MLTX-02-004-EN-12510 | Shop DWG Submittal for Ceiling Plan | 2026-03-09 A → 2026-03-31 A (+22d) | 2026-03-14 A → 2026-04-13 A (+30d) | 15d → 12d |  |  |  |
| MLTX-02-004-EN-12520 | Shop DWG Submittal for Finishes Plan | 2026-03-09 A → 2026-03-31 A (+22d) | 2026-03-14 A → 2026-04-13 A (+30d) | 15d → 12d |  |  | MLTX-02-004-EN-12510 SS → MLTX-02-004-EN-12510 SS, MLTX-02-004-EN-15570 |
| MLTX-02-004-EN-12530 | Shop DWG Submittal for Toilet Details | 2026-03-09 A → 2026-03-31 A (+22d) | 2026-03-14 A → 2026-04-13 A (+30d) | 15d → 12d |  |  |  |
| MLTX-02-004-EN-12540 | Shop DWG Submittal for Doors/Windows Schedule | 2026-03-09 A → 2026-03-31 A (+22d) | 2026-03-14 A → 2026-04-13 A (+30d) | 15d → 12d |  |  |  |
| 1 | **STRUCTURE WORKS** | 2026-03-15 → 2026-04-08 (+24d) | 2026-03-19 → 2026-04-18 (+30d) |  |  |  |  |
| MLTX-02-004-EN-12550 | Shop DWG Submittal for Foundation Plan | 2026-03-15 A → 2026-04-08 A (+24d) | 2026-03-19 A → 2026-04-18 A (+30d) | 15d → 9d |  |  | MLTX-02-004-EN-12540 → MLTX-02-004-EN-12540, MLTX-02-004-EN-15580 |
| MLTX-02-004-EN-12560 | Shop DWG Submittal for Ground Floor Framing Plan | 2026-03-15 A → 2026-04-08 A (+24d) | 2026-03-19 A → 2026-04-18 A (+30d) | 21d → 9d |  |  |  |
| MLTX-02-004-EN-12570 | Shop DWG Submittal for Sections/Details | 2026-03-15 A → 2026-04-08 A (+24d) | 2026-03-19 A → 2026-04-18 A (+30d) | 21d → 9d |  |  | MLTX-02-004-EN-12540, MLTX-02-004-EN-12660 → MLTX-02-004-EN-12540 |
| 3 | **MECHANCAL WORKS** | 2026-03-07 → 2026-04-08 (+32d) | 2026-05-07 → 2026-05-21 (+14d) |  |  |  |  |
| MLTX-02-004-EN-12580 | Shop DWG Submittal for HVAC Plan | 2026-03-15 A → 2026-04-08 A (+24d) | 2026-03-19 A → 2026-04-14 A (+26d) | 30d → 6d |  |  | MLTX-02-004-EN-12540, MLTX-02-004-EN-12660 → MLTX-02-004-EN-12540, MLTX-02-004-EN-15550 |
| MLTX-02-004-EN-12590 | Shop DWG Submittal for Exhaust Air Plan | 2026-03-15 A → 2026-04-08 A (+24d) | 2026-03-19 A → 2026-04-14 A (+26d) | 30d → 6d |  |  | MLTX-02-004-EN-12540, MLTX-02-004-EN-12660 → MLTX-02-004-EN-12540 |
| MLTX-02-004-EN-12600 | Shop DWG Submittal for HVAC Equipment Schedule | 2026-03-15 A → 2026-04-08 A (+24d) | 2026-03-19 A → 2026-04-14 A (+26d) | 30d → 6d |  |  | MLTX-02-004-EN-12540, MLTX-02-004-EN-12660 → MLTX-02-004-EN-12540 |

| ID | Task | Start | Finish | Duration | Predecessors |
| --- | --- | --- | --- | --- | --- |
| MLTX-02-004-EN-12610 | Shop DWG Submittal for Fire Fighting Layout | 2026-03-15 A → 2026-04-08 A (+24d) | 2026-03-19 A → 2026-04-14 A (+26d) | 30d → 6d | MLTX-02-004-EN-12540, MLTX-02-004-EN-12960 → MLTX-02-004-EN-12540 |
| MLTX-02-004-EN-12630 | Shop DWG Submittal for Water Supply Details | 2026-03-15 A → 2026-04-08 A (+24d) | 2026-03-19 A → 2026-04-14 A (+26d) | 30d → 6d | MLTX-02-004-EN-12540, MLTX-02-004-EN-12660 → MLTX-02-004-EN-12540 |
| MLTX-02-004-EN-12640 | Shop DWG Submittal for Drainage Layout | 2026-03-07 A → 2026-04-08 A (+32d) | 2026-05-07 A → 2026-04-14 A (-23d) | 30d → 6d |  |
| MLTX-02-004-EN-12620 | Shop DWG Submittal for Water Supply Layout | 2026-03-15 A → 2026-05-06 A (+52d) | 2026-03-19 A → 2026-05-06 A (+48d) | 30d → 1d | MLTX-02-004-EN-12540, MLTX-02-004-EN-12660 → MLTX-02-004-EN-12540 |
| MLTX-02-004-EN-13190 | Shop DWG Submittal for Dut Routing Layout | 2026-03-12 A → 2026-05-06 A (+55d) | 2026-05-04 A → 2026-05-06 A (+2d) | 30d → 1d | MLTX-02-004-EN-12540, MLTX-02-004-EN-12660 → MLTX-02-004-EN-12540 |
| MLTX-02-004-EN-12650 | Shop DWG Submittal for Drainage Details | 2026-03-12 A → 2026-05-21 A (+70d) | 2026-05-06 A → 2026-05-21 A (+15d) | 30d → 1d |  |
| MLTX-02-004-EN-13200 | Shop DWG Submittal for Diffusers Layout | 2026-03-12 A → 2026-05-21 A (+70d) | 2026-05-06 A → 2026-05-21 A (+15d) | 30d → 1d | MLTX-02-004-EN-12540, MLTX-02-004-EN-12780 → MLTX-02-004-EN-12540 |
| 4 | **ELECTRICAL WORKS** | 2026-03-12 → 2026-04-08 (+27d) | 2026-07-30 → 2026-08-25 (+26d) |  |  |
| MLTX-02-004-EN-12660 | Shop DWG Submittal for Lighting Layout | 2026-03-15 A → 2026-04-08 A (+24d) | 2026-03-19 A → 2026-04-14 A (+26d) | 30d → 6d | MLTX-02-004-EN-12540, MLTX-02-004-EN-15550 → MLTX-02-004-EN-12540 |
| MLTX-02-004-EN-12670 | Shop DWG Submittal for Power Layout | 2026-03-15 A → 2026-04-08 A (+24d) | 2026-03-19 A → 2026-04-14 A (+26d) | 30d → 6d | MLTX-02-004-EN-12540, MLTX-02-004-EN-12660 → MLTX-02-004-EN-12540 |
| MLTX-02-004-EN-12700 | Shop DWG Submittal for Lighting Installation Details | 2026-03-15 A → 2026-04-08 A (+24d) | 2026-03-19 A → 2026-04-14 A (+26d) | 30d → 6d | MLTX-02-004-EN-12710 SS, MLTX-02-004-EN-12660 → MLTX-02-004-EN-12710 SS |
| MLTX-02-004-EN-12710 | Shop DWG Submittal for Power Installation Details | 2026-03-15 A → 2026-04-08 A (+24d) | 2026-03-19 A → 2026-04-14 A (+26d) | 30d → 6d |  |
| MLTX-02-004-EN-12750 | Shop DWG Submittal for Lightning Protection Details | 2026-03-15 A → 2026-04-08 A (+24d) | 2026-03-19 A → 2026-04-14 A (+26d) | 30d → 6d |  |
| MLTX-02-004-EN-12760 | Shop DWG Submittal for Fire Alarm Installation Details | 2026-03-15 A → 2026-04-08 A (+24d) | 2026-03-19 A → 2026-04-20 A (+32d) | 30d → 11d |  |
| MLTX-02-004-EN-12790 | Shop DWG Submittal for Lightning Protection System Layout | 2026-03-15 A → 2026-04-08 A (+24d) | 2026-03-19 A → 2026-04-14 A (+26d) | 30d → 6d |  |
| MLTX-02-004-EN-12800 | Shop DWG Submittal for Fire Alarm Layout | 2026-03-15 A → 2026-04-08 A (+24d) | 2026-03-19 A → 2026-04-20 A (+32d) | 30d → 11d |  |
| MLTX-02-004-EN-12810 | Shop DWG Submittal for Fire Alarm Riser Diagram | 2026-03-15 A → 2026-04-08 A (+24d) | 2026-03-19 A → 2026-04-20 A (+32d) | 30d → 11d |  |
| MLTX-02-004-EN-12840 | Shop DWG Submittal for Telephone & Data Layout | 2026-03-15 A → 2026-04-08 A (+24d) | 2026-03-19 A → 2026-04-20 A (+32d) | 30d → 11d | MLTX-02-004-EN-12810 → MLTX-02-004-MS-1010 SS |
| MLTX-02-004-EN-12850 | Shop DWG Submittal for Telephone & Data Riser Diagram | 2026-03-15 A → 2026-04-08 A (+24d) | 2026-03-19 A → 2026-04-20 A (+32d) | 30d → 11d |  |
| MLTX-02-004-EN-12680 | Shop DWG Submittal for Power Single Line Diagram | 2026-03-12 A → 2026-05-06 A (+55d) | 2026-05-05 A → 2026-05-06 A (+1d) | 30d → 1d | MLTX-02-004-EN-12540, MLTX-02-004-EN-12660 → MLTX-02-004-EN-12540 |
| MLTX-02-004-EN-12690 | Shop DWG Submittal for Panel Board Schedules | 2026-03-12 A → 2026-05-06 A (+55d) | 2026-05-09 A → 2026-05-06 A (-3d) | 30d → 1d |  |
| MLTX-02-004-EN-12720 | Shop DWG Submittal for Cable Tray Installation Details | 2026-03-12 A → 2026-05-06 A (+55d) | 2026-05-05 A → 2026-05-06 A (+1d) | 30d → 1d | MLTX-02-004-EN-12710 SS → MLTX-02-004-EN-12710 SS, MLTX-02-004-EN-15560 |
| MLTX-02-004-EN-12730 | Shop DWG Submittal for Manhole & Ductbank Details | 2026-03-12 A → 2026-05-06 A (+55d) | 2026-05-07 A → 2026-05-06 A (-1d) | 30d → 1d |  |
| MLTX-02-004-EN-12740 | Shop DWG Submittal for Grounding Details | 2026-03-15 A → 2026-05-06 A (+52d) | 2026-03-19 A → 2026-05-06 A (+48d) | 30d → 1d |  |
| MLTX-02-004-EN-12780 | Shop DWG Submittal for Grounding Layout | 2026-03-15 A → 2026-05-06 A (+52d) | 2026-03-19 A → 2026-05-06 A (+48d) | 30d → 1d | MLTX-02-004-EN-12760 → MLTX-02-004-EN-15530 |
| MLTX-02-004-EN-12770 | Shop DWG Submittal for CCTV Details | 2026-07-30 A → 2026-08-25 A (+26d) | 2026-07-30 A → 2026-08-25 A (+26d) | 30d → 3d | MLTX-02-004-EN-12760 SS → MLTX-02-004-EN-12760 SS, MLTX-02-004-EN-12980 |
| MLTX-02-004-EN-12820 | Shop DWG Submittal for CCTV Layout | 2026-07-12 A → 2026-08-25 A (+44d) | 2026-07-12 A → 2026-08-25 A (+44d) | 30d → 5d |  |
| MLTX-02-004-EN-12830 | Shop DWG Submittal for CCTV Riser Diagram | 2026-07-12 A → 2026-08-25 A (+44d) | 2026-07-12 A → 2026-08-25 A (+44d) | 30d → 5d | MLTX-02-004-EN-12820 SS, MLTX-02-004-EN-12660 → MLTX-02-004-EN-12820 SS |
| ELE | **SHOP DRAWINGS SUBMITTALS FOR PLAYGROUND WORKS** | 2026-03-08 → 2026-03-31 (+23d) | 2026-11-08 → 2026-08-25 (-75d) |  |  |
| 3 | **ARCHITECTURE WORKS** | 2026-03-08 → 2026-03-31 (+23d) | 2026-05-25 → 2026-05-14 (-11d) |  |  |
| MLTX-02-004-EN-13050 | Shop DWG Submittal for Playground Plan/Layout | 2026-03-09 A → 2026-03-31 A (+22d) | 2026-03-14 A → 2026-04-18 A (+35d) | 15d → 16d |  |
| MLTX-02-004-EN-13070 | Shop DWG Submittal for Sections | 2026-03-09 A → 2026-03-31 A (+22d) | 2026-03-14 A → 2026-04-18 A (+35d) | 15d → 16d |  |
| MLTX-02-004-EN-13080 | Shop DWG Submittal for Interlock Pattern Plan | 2026-03-09 A → 2026-03-31 A (+22d) | 2026-03-14 A → 2026-04-07 A (+24d) | 30d → 7d |  |
| MLTX-02-004-EN-13060 | Shop DWG Submittal for Furniture & Marking | 2026-03-08 A → 2026-05-13 A (+66d) | 2026-05-12 A → 2026-05-14 A (+2d) | 15d → 2d |  |
| MLTX-02-004-EN-13090 | Shop DWG Submittal for Doors/Windows Schedule | 2026-03-09 A → 2026-05-13 A (+65d) | 2026-03-14 A → 2026-05-14 A (+61d) | 30d → 2d |  |
| MLTX-02-004-EN-13120 | Shop DWG Submittal for Dome Internal Layout | 2026-03-08 A → 2026-05-13 A (+66d) | 2026-05-25 A → 2026-05-14 A (-11d) | 30d → 2d |  |
| 4 | **STRUCTURE WORKS** | 2026-03-14 → 2026-05-13 (+60d) | 2026-07-14 → 2026-05-14 (-61d) |  |  |
| MLTX-02-004-EN-13100 | Shop DWG Submittal for Air Dome System | 2026-03-14 A → 2026-05-13 A (+60d) | 2026-05-07 A → 2026-05-14 A (+7d) | 30d → 2d | MLTX-02-004-EN-13120, MLTX-02-004-EN-15530, MLTX-02-004-EN-15560 → MLTX-02-004-EN-13120 |
| MLTX-02-004-EN-13110 | Shop DWG Submittal for Foundation of Air Dome | 2026-07-14 A → 2026-05-13 A (-62d) | 2026-07-14 A → 2026-05-14 A (-61d) | 30d → 2d | MLTX-02-004-EN-13100 SS, MLTX-02-004-EN-15570, MLTX-02-004-EN-12120 → MLTX-02-004-EN-13100 SS |
| MLTX-02-004-EN-13130 | Shop DWG Submittal for Anchor Bolt Layout of Air Dome | 2026-07-14 A → 2026-05-13 A (-62d) | 2026-07-14 A → 2026-05-14 A (-61d) | 30d → 2d | MLTX-02-004-EN-13110 SS, MLTX-02-004-EN-13100 → MLTX-02-004-EN-13110 SS |
| 5 | **AIR DOME SYSTEM** | 2026-03-14 → 2026-05-13 (+60d) | 2026-05-24 → 2026-05-14 (-10d) |  |  |
| MLTX-02-004-EN-13140 | Shop DWG Submittal for Air Dome Structural Layout | 2026-03-14 A → 2026-05-13 A (+60d) | 2026-05-07 A → 2026-05-14 A (+7d) | 30d → 2d | MLTX-02-004-EN-13100 → MLTX-02-004-EN-13130 SS |
| MLTX-02-004-EN-13150 | Shop DWG Submittal for Membrane Panel Layout | 2026-03-14 A → 2026-05-13 A (+60d) | 2026-05-24 A → 2026-05-14 A (-10d) | 30d → 2d |  |
| MLTX-02-004-EN-13160 | Shop DWG Submittal for Cable Tension Layout | 2026-03-14 A → 2026-05-13 A (+60d) | 2026-05-24 A → 2026-05-14 A (-10d) | 30d → 2d |  |
| MLTX-02-004-EN-13170 | Shop DWG Submittal for Airlock Door Details | 2026-03-14 A → 2026-05-13 A (+60d) | 2026-05-24 A → 2026-05-14 A (-10d) | 30d → 2d |  |
| MLTX-02-004-EN-13180 | Shop DWG Submittal for Emergency Exit Details | 2026-03-14 A → 2026-05-13 A (+60d) | 2026-05-24 A → 2026-05-14 A (-10d) | 30d → 2d |  |
| 6 | **SPORTS EQUIPMENT** | 2026-03-14 → 2026-05-13 (+60d) | 2026-05-25 → 2026-05-14 (-11d) |  |  |
| MLTX-02-004-EN-13210 | Shop DWG Submittal for Football Turf Installation | 2026-03-14 A → 2026-05-13 A (+60d) | 2026-05-25 A → 2026-05-14 A (-11d) | 30d → 2d |  |
| MLTX-02-004-EN-13220 | Shop DWG Submittal for Basketball Court Marking | 2026-03-14 A → 2026-05-13 A (+60d) | 2026-05-25 A → 2026-05-14 A (-11d) | 30d → 2d |  |
| MLTX-02-004-EN-13230 | Shop DWG Submittal for Padel Court Structure | 2026-03-14 A → 2026-05-13 A (+60d) | 2026-05-25 A → 2026-05-14 A (-11d) | 30d → 2d |  |
| 1 | **MECHANCAL WORKS** | 2026-03-14 → 2026-04-08 (+25d) | 2026-05-03 → 2026-04-30 (-3d) |  |  |
| MLTX-02-004-EN-13030 | Shop DWG Submittal for HVAC Plan | 2026-03-14 A → 2026-04-08 A (+25d) | 2026-05-03 A → 2026-04-30 A (-3d) | 30d → 20d |  |
| MLTX-02-004-EN-13040 | Shop DWG Submittal for Exhaust Air Plan | 2026-03-14 A → 2026-04-08 A (+25d) | 2026-05-03 A → 2026-04-30 A (-3d) | 30d → 20d |  |
| 2 | **ELECTRICAL WORKS** | 2026-03-14 → 2026-05-20 (+67d) | 2026-11-08 → 2026-08-25 (-75d) |  |  |
| MLTX-02-004-EN-12920 | Shop DWG Submittal for Lighting Layout | 2026-03-14 A → 2026-05-20 A (+67d) | 2026-04-19 A → 2026-05-20 A (+31d) | 30d → 1d |  |
| MLTX-02-004-EN-12970 | Shop DWG Submittal for Fire Alarm Installation Details | 2026-07-07 A → 2026-05-23 A (-45d) | 2026-07-07 A → 2026-05-23 A (-45d) | 30d → 1d |  |
| MLTX-02-004-EN-12990 | Shop DWG Submittal for Fire Alarm Layout | 2026-10-24 A → 2026-05-23 A (-154d) | 2026-10-24 A → 2026-05-23 A (-154d) | 15d → 1d | MLTX-02-004-EN-12970 SS, MLTX-02-004-EN-12970 FF, MLTX-02-004-EN-16220 → MLTX-02-004-EN-12970 SS |
| MLTX-02-004-EN-13000 | Shop DWG Submittal for Fire Alarm Riser Diagram | 2026-10-24 A → 2026-05-23 A (-154d) | 2026-10-24 A → 2026-05-23 A (-154d) | 15d → 1d | MLTX-02-004-EN-12990, MLTX-02-004-EN-12970 SS → MLTX-02-004-EN-12970 SS |
| MLTX-02-004-EN-12930 | Shop DWG Submittal for Power Layout | 2026-11-08 A → 2026-07-01 A (-130d) | 2026-11-08 A → 2026-07-01 A (-130d) | 27d → 1d | MLTX-02-004-EN-12980 SS, MLTX-02-004-EN-16220 → MLTX-02-004-MS-1010 SS |
| MLTX-02-004-EN-12940 | Shop DWG Submittal for Power Single Line Diagram | 2026-06-10 A → 2026-07-01 A (+21d) | 2026-06-10 A → 2026-07-01 A (+21d) | 30d → 1d | MLTX-02-004-EN-12980 SS → MLTX-02-004-MS-1010 SS |
| MLTX-02-004-EN-12950 | Shop DWG Submittal for Panel Board Schedules | 2026-06-10 A → 2026-07-01 A (+21d) | 2026-06-10 A → 2026-07-01 A (+21d) | 30d → 1d |  |
| MLTX-02-004-EN-12960 | Shop DWG Submittal for Power Installation Details | 2026-06-10 A → 2026-07-01 A (+21d) | 2026-06-10 A → 2026-07-01 A (+21d) | 30d → 1d | MLTX-02-004-EN-12950 SS, MLTX-02-004-EN-12190 → MLTX-02-004-EN-12950 SS |
| MLTX-02-004-EN-12980 | Shop DWG Submittal for CCTV Details | 2026-06-10 A → 2026-08-25 A (+76d) | 2026-06-10 A → 2026-08-25 A (+76d) | 30d → 4d |  |
| MLTX-02-004-EN-13010 | Shop DWG Submittal for CCTV Layout | 2026-08-20 A → 2026-08-25 A (+5d) | 2026-08-20 A → 2026-08-25 A (+5d) | 30d → 5d | MLTX-02-004-EN-12820 → MLTX-02-004-EN-13000 SS |
| MLTX-02-004-EN-13020 | Shop DWG Submittal for CCTV Riser Diagram | 2026-08-20 A → 2026-08-25 A (+5d) | 2026-08-20 A → 2026-08-25 A (+5d) | 30d → 5d |  |
| EAR | **SHOP DRAWINGS SUBMITTALS FOR LANDSCAPE WORKS** | 2026-03-08 → 2026-03-31 (+23d) | 2026-07-13 → 2026-06-17 (-26d) |  |  |
| 3 | **ARCHITECTURE WORKS** | 2026-03-09 → 2026-03-31 (+22d) | 2026-05-05 → 2026-05-18 (+13d) |  |  |
| MLTX-02-004-EN-12860 | Shop DWG Submittal for Landscape Layout | 2026-03-09 A → 2026-03-31 A (+22d) | 2026-03-14 A → 2026-04-22 A (+39d) | 21d → 20d | MLTX-02-004-MB-2100, MLTX-02-004-EN-12120 → MLTX-02-004-MB-2100 |
| MLTX-02-004-EN-12870 | Shop DWG Submittal for Hardscape Plan | 2026-03-09 A → 2026-05-13 A (+65d) | 2026-03-14 A → 2026-05-18 A (+65d) | 21d → 5d | MLTX-02-004-MB-2100, MLTX-02-004-EN-12120 → MLTX-02-004-MB-2100 |
| MLTX-02-004-EN-12880 | Shop DWG Submittal for Planting Plan | 2026-03-14 A → 2026-05-13 A (+60d) | 2026-05-05 A → 2026-05-18 A (+13d) | 15d → 5d | MLTX-02-004-EN-12890, MLTX-02-004-EN-12910 → MLTX-02-004-EN-12890 |

| ID | Task | Start | Finish | Duration | Predecessors | Other |
| --- | --- | --- | --- | --- | --- | --- |
| MLTX-02-004-EN-12890 | Shop DWG Submittal for Landscape Details | 2026-03-09 A → 2026-05-13 A (+65d) | 2026-03-14 A → 2026-05-18 A (+65d) | 15d → 5d | MLTX-02-004-MB-2100, MLTX-02-004-EN-12160 → MLTX-02-004-MB-2100 |  |
| 1 | **MECHANCAL WORKS** | 2026-03-08 → 2026-06-17 (+101d) | 2026-06-03 → 2026-06-17 (+14d) |  |  |  |
| MLTX-02-004-EN-12900 | Shop DWG Submittal for Irrigation Details | 2026-03-08 A → 2026-06-17 A (+101d) | 2026-06-03 A → 2026-06-17 A (+14d) | 30d → 1d |  |  |
| MLTX-02-004-EN-12910 | Shop DWG Submittal for Irrigation Layout | 2026-03-08 A → 2026-06-17 A (+101d) | 2026-06-03 A → 2026-06-17 A (+14d) | 30d → 1d | MLTX-02-004-MB-2100, MLTX-02-004-EN-12900 → MLTX-02-004-MB-2100 |  |
| 2 | **ELECTRICAL WORKS** | 2026-07-12 → 2026-05-23 (-50d) | 2026-07-13 → 2026-05-23 (-51d) |  |  |  |
| MLTX-02-004-EN-12160 | Shop DWG Submittal for Lighting General Arrangement | 2026-07-12 A → 2026-05-23 A (-50d) | 2026-07-12 A → 2026-05-23 A (-50d) | 30d → 1d |  |  |
| MLTX-02-004-EN-12170 | Shop DWG Submittal for Lighting Network Layout | 2026-07-12 A → 2026-05-23 A (-50d) | 2026-07-12 A → 2026-05-23 A (-50d) | 30d → 1d | MLTX-02-004-MB-2100, MLTX-02-004-EN-12780 → MLTX-02-004-MB-2100 |  |
| MLTX-02-004-EN-12180 | Shop DWG Submittal for Lighting Details | 2026-07-13 A → 2026-05-23 A (-51d) | 2026-07-13 A → 2026-05-23 A (-51d) | 30d → 1d | MLTX-02-004-MB-2100, MLTX-02-004-EN-12780 → MLTX-02-004-MB-2100 |  |
| MLTX-02-004-EN-12190 | Shop DWG Submittal for Lighting Single Line Diagram | 2026-07-13 A → 2026-05-23 A (-51d) | 2026-07-13 A → 2026-05-23 A (-51d) | 30d → 1d | MLTX-02-004-MB-2100, MLTX-02-004-EN-12780 → MLTX-02-004-MB-2100 |  |
| APP | **SHOP DRAWINGS APPROVALS** | 2026-03-14 → 2026-04-07 (+24d) | 2026-11-08 → 2026-08-26 (-74d) |  |  |  |
| 2 | **SHOP DRAWING APPROVAL FOR EARTHING WORKS** | 2026-03-15 → 2026-04-07 (+23d) | 2026-03-29 → 2026-06-24 (+87d) |  |  |  |
| MLTX-02-004-EN-15540 | Shop DWG Approval for Setting Out | 2026-03-15 A → 2026-04-07 A (+23d) | 2026-03-29 A → 2026-04-26 A (+28d) | 15d → 17d |  |  |
| MLTX-02-004-EN-15530 | Shop DWG Approval for Layout Plan | 2026-03-15 A → 2026-04-22 A (+38d) | 2026-03-29 A → 2026-04-26 A (+28d) | 15d → 4d |  |  |
| MLTX-02-004-EN-15550 | Shop DWG Approval for Grading Layout Plan | 2026-03-15 A → 2026-04-26 A (+42d) | 2026-03-29 A → 2026-04-26 A (+28d) | 16d → 1d |  |  |
| MLTX-02-004-EN-15560 | Shop DWG Approval for Curb Setting Out Points | 2026-03-15 A → 2026-05-21 A (+67d) | 2026-03-29 A → 2026-05-21 A (+53d) | 15d → 1d |  |  |
| MLTX-02-004-EN-15580 | Shop DWG Approval for Standards Details | 2026-03-15 A → 2026-05-21 A (+67d) | 2026-03-29 A → 2026-05-21 A (+53d) | 15d → 1d |  |  |
| MLTX-02-004-EN-15570 | Shop DWG Approval for Signing & Marking Layout Plan | 2026-03-15 A → 2026-06-24 A (+101d) | 2026-03-29 A → 2026-06-24 A (+87d) | 15d → 1d | MLTX-02-004-EN-12140, MLTX-02-004-EN-15530 → MLTX-02-004-EN-12140 |  |
| ROAD | **SHOP DRAWING APPROVAL FOR SERVICE/TOILET WORKS** | 2026-03-15 → 2026-04-14 (+30d) | 2026-07-30 → 2026-08-26 (+27d) |  |  |  |
| 2 | **ARCHITECTURE WORKS** | 2026-03-15 → 2026-04-14 (+30d) | 2026-03-29 → 2026-04-24 (+26d) |  |  |  |
| MLTX-02-004-EN-15640 | Shop DWG Approval for Elevations | 2026-03-15 A → 2026-04-14 A (+30d) | 2026-03-29 A → 2026-04-24 A (+26d) | 30d → 9d | MLTX-02-004-EN-12490, MLTX-02-004-EN-15710 → MLTX-02-004-EN-12490 |  |
| MLTX-02-004-EN-15650 | Shop DWG Approval for Sections | 2026-03-15 A → 2026-04-14 A (+30d) | 2026-03-29 A → 2026-04-24 A (+26d) | 30d → 9d |  |  |
| MLTX-02-004-EN-15660 | Shop DWG Approval for Ceiling Plan | 2026-03-15 A → 2026-04-14 A (+30d) | 2026-03-29 A → 2026-04-19 A (+21d) | 30d → 5d | MLTX-02-004-EN-12510, MLTX-02-004-EN-12920 → MLTX-02-004-EN-12510 |  |
| MLTX-02-004-EN-15630 | Shop DWG Approval for Floor Plan | 2026-03-15 A → 2026-04-14 A (+30d) | 2026-03-29 A → 2026-04-24 A (+26d) | 30d → 9d | MLTX-02-004-EN-12480, MLTX-02-004-EN-15710 → MLTX-02-004-EN-12480 |  |
| MLTX-02-004-EN-15670 | Shop DWG Approval for Finishes Plan | 2026-03-15 A → 2026-04-14 A (+30d) | 2026-03-29 A → 2026-04-24 A (+26d) | 30d → 9d | MLTX-02-004-EN-12520, MLTX-02-004-EN-15710 → MLTX-02-004-EN-12520 |  |
| MLTX-02-004-EN-15680 | Shop DWG Approval for Toilet Details | 2026-03-15 A → 2026-04-14 A (+30d) | 2026-03-29 A → 2026-04-24 A (+26d) | 30d → 9d | MLTX-02-004-EN-12530, MLTX-02-004-EN-15710 → MLTX-02-004-EN-12530 |  |
| MLTX-02-004-EN-15690 | Shop DWG Approval for Doors/Windows Schedule | 2026-03-15 A → 2026-04-14 A (+30d) | 2026-03-29 A → 2026-04-24 A (+26d) | 30d → 9d | MLTX-02-004-EN-12540, MLTX-02-004-EN-15710 → MLTX-02-004-EN-12540 |  |
| 1 | **STRUCTURE WORKS** | 2026-03-24 → 2026-04-18 (+25d) | 2026-04-04 → 2026-04-23 (+19d) |  |  |  |
| MLTX-02-004-EN-15700 | Shop DWG Approval for Foundation Plan | 2026-03-24 A → 2026-04-18 A (+25d) | 2026-04-04 A → 2026-04-23 A (+19d) | 4d → 6d | MLTX-02-004-EN-12550, MLTX-02-004-EN-15720 → MLTX-02-004-EN-12550 |  |
| MLTX-02-004-EN-15710 | Shop DWG Approval for Ground Floor Framing Plan | 2026-03-24 A → 2026-04-18 A (+25d) | 2026-04-04 A → 2026-04-23 A (+19d) | 21d → 6d |  |  |
| MLTX-02-004-EN-15720 | Shop DWG Approval for Sections/Details | 2026-03-24 A → 2026-04-18 A (+25d) | 2026-04-04 A → 2026-04-23 A (+19d) | 21d → 6d | MLTX-02-004-EN-12570, MLTX-02-004-EN-15670 → MLTX-02-004-EN-12570 |  |
| 3 | **MECHANCAL WORKS** | 2026-03-18 → 2026-05-06 (+49d) | 2026-05-10 → 2026-05-21 (+11d) |  |  |  |
| MLTX-02-004-EN-15730 | Shop DWG Approval for HVAC Plan | 2026-03-24 A → 2026-05-06 A (+43d) | 2026-04-04 A → 2026-05-06 A (+32d) | 30d → 1d | MLTX-02-004-EN-12580, MLTX-02-004-EN-15660 → MLTX-02-004-EN-12580 |  |
| MLTX-02-004-EN-15750 | Shop DWG Approval for HVAC Equipment Schedule | 2026-03-24 A → 2026-05-06 A (+43d) | 2026-04-04 A → 2026-05-06 A (+32d) | 30d → 1d | MLTX-02-004-EN-12600, MLTX-02-004-EN-15660 → MLTX-02-004-EN-12600 |  |
| MLTX-02-004-EN-15740 | Shop DWG Approval for Exhaust Air Plan | 2026-03-24 A → 2026-05-07 A (+44d) | 2026-04-04 A → 2026-05-07 A (+33d) | 30d → 1d | MLTX-02-004-EN-12590, MLTX-02-004-EN-15660 → MLTX-02-004-EN-12590 |  |
| MLTX-02-004-EN-15760 | Shop DWG Approval for Fire Fighting Layout | 2026-03-24 A → 2026-05-07 A (+44d) | 2026-04-04 A → 2026-05-07 A (+33d) | 30d → 1d |  |  |
| MLTX-02-004-EN-15770 | Shop DWG Approval for Water Supply Layout | 2026-03-24 A → 2026-05-07 A (+44d) | 2026-04-04 A → 2026-05-07 A (+33d) | 30d → 0d | MLTX-02-004-EN-12620, MLTX-02-004-EN-15660 → MLTX-02-004-EN-12620 | resources Draftsman [12.71 h]; Consultant Staff [3.39 h] → Draftsman; Consultant Staff |
| MLTX-02-004-EN-15780 | Shop DWG Approval for Water Supply Details | 2026-03-24 A → 2026-05-07 A (+44d) | 2026-04-04 A → 2026-05-07 A (+33d) | 30d → 1d | MLTX-02-004-EN-12630, MLTX-02-004-EN-15660 → MLTX-02-004-EN-12630 |  |
| MLTX-02-004-EN-15790 | Shop DWG Approval for Drainage Layout | 2026-03-18 A → 2026-05-07 A (+50d) | 2026-05-09 A → 2026-05-07 A (-2d) | 30d → 1d |  |  |
| MLTX-02-004-EN-16320 | Shop DWG Approval for Duct Routing Layout | 2026-03-18 A → 2026-05-07 A (+50d) | 2026-05-10 A → 2026-05-07 A (-3d) | 30d → 1d | MLTX-02-004-EN-13190, MLTX-02-004-EN-15660 → MLTX-02-004-EN-13190 |  |
| MLTX-02-004-EN-15800 | Shop DWG Approval for Drainage Details | 2026-03-18 A → 2026-05-21 A (+64d) | 2026-05-09 A → 2026-05-21 A (+12d) | 30d → 1d |  |  |
| MLTX-02-004-EN-16330 | Shop DWG Approval for Diffusers Layout | 2026-03-18 A → 2026-05-21 A (+64d) | 2026-05-10 A → 2026-05-21 A (+11d) | 30d → 1d | MLTX-02-004-EN-13200, MLTX-02-004-EN-15930 → MLTX-02-004-EN-13200 |  |
| 4 | **ELECTRICAL WORKS** | 2026-03-18 → 2026-04-15 (+28d) | 2026-07-30 → 2026-08-26 (+27d) |  |  |  |
| MLTX-02-004-EN-15810 | Shop DWG Approval for Lighting Layout | 2026-03-24 A → 2026-04-15 A (+22d) | 2026-04-04 A → 2026-04-26 A (+22d) | 30d → 10d |  |  |
| MLTX-02-004-EN-15820 | Shop DWG Approval for Power Layout | 2026-03-24 A → 2026-04-15 A (+22d) | 2026-04-04 A → 2026-04-26 A (+22d) | 30d → 10d | MLTX-02-004-EN-12670, MLTX-02-004-EN-15810 → MLTX-02-004-EN-12670 |  |
| MLTX-02-004-EN-15850 | Shop DWG Approval for Lighting Installation Details | 2026-03-24 A → 2026-04-15 A (+22d) | 2026-04-04 A → 2026-04-26 A (+22d) | 30d → 10d | MLTX-02-004-EN-12700, MLTX-02-004-EN-15810 → MLTX-02-004-EN-12700 |  |
| MLTX-02-004-EN-15860 | Shop DWG Approval for Power Installation Details | 2026-03-24 A → 2026-04-15 A (+22d) | 2026-04-04 A → 2026-04-26 A (+22d) | 30d → 10d | MLTX-02-004-EN-12710, MLTX-02-004-EN-15810 → MLTX-02-004-EN-12710 |  |
| MLTX-02-004-EN-15900 | Shop DWG Approval for Lightning Protection Details | 2026-03-24 A → 2026-04-15 A (+22d) | 2026-04-04 A → 2026-04-26 A (+22d) | 30d → 10d | MLTX-02-004-EN-12750, MLTX-02-004-EN-15810 → MLTX-02-004-EN-12750 |  |
| MLTX-02-004-EN-15940 | Shop DWG Approval for Lightning Protection System Layout | 2026-03-24 A → 2026-04-15 A (+22d) | 2026-04-04 A → 2026-04-26 A (+22d) | 30d → 10d | MLTX-02-004-EN-12790, MLTX-02-004-EN-15810 → MLTX-02-004-EN-12790 |  |
| MLTX-02-004-EN-16000 | Shop DWG Approval for Telephone & Data Riser Diagram | 2026-03-24 A → 2026-04-20 A (+27d) | 2026-04-04 A → 2026-04-27 A (+23d) | 30d → 7d |  |  |
| MLTX-02-004-EN-15910 | Shop DWG Approval for Fire Alarm Installation Details | 2026-03-24 A → 2026-04-21 A (+28d) | 2026-04-04 A → 2026-04-27 A (+23d) | 30d → 6d |  |  |
| MLTX-02-004-EN-15950 | Shop DWG Approval for Fire Alarm Layout | 2026-03-24 A → 2026-04-21 A (+28d) | 2026-04-04 A → 2026-04-27 A (+23d) | 30d → 6d |  |  |
| MLTX-02-004-EN-15960 | Shop DWG Approval for Fire Alarm Riser Diagram | 2026-03-24 A → 2026-04-21 A (+28d) | 2026-04-04 A → 2026-04-27 A (+23d) | 30d → 6d |  |  |
| MLTX-02-004-EN-15990 | Shop DWG Approval for Telephone & Data Layout | 2026-03-24 A → 2026-04-21 A (+28d) | 2026-04-04 A → 2026-04-27 A (+23d) | 30d → 6d |  |  |
| MLTX-02-004-EN-15830 | Shop DWG Approval for Power Single Line Diagram | 2026-03-18 A → 2026-05-23 A (+66d) | 2026-05-05 A → 2026-05-23 A (+18d) | 30d → 1d | MLTX-02-004-EN-12680, MLTX-02-004-EN-15810 → MLTX-02-004-EN-12680 |  |
| MLTX-02-004-EN-15840 | Shop DWG Approval for Panel Board Schedules | 2026-07-16 A → 2026-05-23 A (-54d) | 2026-07-16 A → 2026-05-23 A (-54d) | 30d → 1d | MLTX-02-004-EN-12690, MLTX-02-004-EN-15810 → MLTX-02-004-EN-12690 |  |
| MLTX-02-004-EN-15870 | Shop DWG Approval for Cable Tray Installation Details | 2026-03-18 A → 2026-05-23 A (+66d) | 2026-05-05 A → 2026-05-23 A (+18d) | 30d → 1d | MLTX-02-004-EN-12720, MLTX-02-004-EN-15810 → MLTX-02-004-EN-12720 |  |
| MLTX-02-004-EN-15880 | Shop DWG Approval for Manhole & Ductbank Details | 2026-03-18 A → 2026-05-23 A (+66d) | 2026-05-05 A → 2026-05-23 A (+18d) | 30d → 1d | MLTX-02-004-EN-12730, MLTX-02-004-EN-15810 → MLTX-02-004-EN-12730 |  |
| MLTX-02-004-EN-15890 | Shop DWG Approval for Grounding Details | 2026-03-24 A → 2026-05-23 A (+60d) | 2026-04-04 A → 2026-05-23 A (+49d) | 30d → 1d | MLTX-02-004-EN-12740, MLTX-02-004-EN-15810 → MLTX-02-004-EN-12740 |  |
| MLTX-02-004-EN-15930 | Shop DWG Approval for Grounding Layout | 2026-03-24 A → 2026-05-23 A (+60d) | 2026-04-04 A → 2026-05-23 A (+49d) | 30d → 1d |  |  |
| MLTX-02-004-EN-15920 | Shop DWG Approval for CCTV Details | 2026-07-30 A → 2026-08-26 A (+27d) | 2026-07-30 A → 2026-08-26 A (+27d) | 30d → 8d |  |  |
| MLTX-02-004-EN-15970 | Shop DWG Approval for CCTV Layout | 2026-07-30 A → 2026-08-26 A (+27d) | 2026-07-30 A → 2026-08-26 A (+27d) | 30d → 8d | MLTX-02-004-EN-15920, MLTX-02-004-EN-12820 → MLTX-02-004-EN-12820, MLTX-02-004-EN-12770 |  |
| MLTX-02-004-EN-15980 | Shop DWG Approval for CCTV Riser Diagram | 2026-07-30 A → 2026-08-26 A (+27d) | 2026-07-30 A → 2026-08-26 A (+27d) | 30d → 10d | MLTX-02-004-EN-12830, MLTX-02-004-EN-15970 → MLTX-02-004-EN-12830 |  |
| ELE | **SHOP DRAWINGS APPROVAL FOR PLAYGROUND WORKS** | 2026-03-14 → 2026-04-08 (+25d) | 2026-11-08 → 2026-08-26 (-74d) |  |  |  |
| 3 | **ARCHITECTURE WORKS** | 2026-03-14 → 2026-04-08 (+25d) | 2026-10-24 → 2026-06-13 (-133d) |  |  |  |
| MLTX-02-004-EN-16200 | Shop DWG Approval for Interlock Pattern Plan | 2026-03-15 A → 2026-04-08 A (+24d) | 2026-03-29 A → 2026-04-19 A (+21d) | 30d → 10d |  |  |
| MLTX-02-004-EN-16170 | Shop DWG Approval for Playground Plan/Layout | 2026-03-15 A → 2026-04-19 A (+35d) | 2026-03-29 A → 2026-04-24 A (+26d) | 15d → 5d | MLTX-02-004-EN-13050, MLTX-02-004-EN-15570 → MLTX-02-004-EN-13050 |  |
| MLTX-02-004-EN-16190 | Shop DWG Approval for Sections | 2026-03-15 A → 2026-04-19 A (+35d) | 2026-03-29 A → 2026-04-24 A (+26d) | 15d → 5d | MLTX-02-004-EN-13070, MLTX-02-004-EN-15650 → MLTX-02-004-EN-13070 |  |
| MLTX-02-004-EN-16180 | Shop DWG Approval for Furniture & Marking | 2026-03-14 A → 2026-06-13 A (+91d) | 2026-05-12 A → 2026-06-13 A (+32d) | 30d → 1d | MLTX-02-004-EN-13060, MLTX-02-004-EN-15590 → MLTX-02-004-EN-13060 |  |
| MLTX-02-004-EN-16210 | Shop DWG Approval for Doors/Windows Schedule | 2026-03-15 A → 2026-06-13 A (+90d) | 2026-03-29 A → 2026-06-13 A (+76d) | 30d → 1d |  |  |
| MLTX-02-004-EN-16250 | Shop DWG Approval for Dome Internal Layout | 2026-10-24 A → 2026-06-13 A (-133d) | 2026-10-24 A → 2026-06-13 A (-133d) | 26d → 1d | MLTX-02-004-EN-13120, MLTX-02-004-EN-16190, MLTX-02-004-EN-16180, MLTX-02-004-EN-16280 → MLTX-02-004-EN-13120 |  |

| ID | Task | Start | Finish | Duration | Predecessors |
| --- | --- | --- | --- | --- | --- |
| 4 | **STRUCTURE WORKS** | 2026-03-19 → 2026-06-24 (+97d) | 2026-07-16 → 2026-06-24 (-22d) |  |  |
| MLTX-02-004-EN-16220 | Shop DWG Approval for Air Dome System | 2026-03-19 A → 2026-06-24 A (+97d) | 2026-05-09 A → 2026-06-24 A (+46d) | 30d → 1d |  |
| MLTX-02-004-EN-16230 | Shop DWG Approval for Foundation of Air Dome | 2026-07-16 A → 2026-06-24 A (-22d) | 2026-07-16 A → 2026-06-24 A (-22d) | 30d → 1d | MLTX-02-004-EN-13110, MLTX-02-004-EN-16130 → MLTX-02-004-EN-13110 |
| MLTX-02-004-EN-16240 | Shop DWG Approval for Foundation of Air Dome | 2026-07-16 A → 2026-06-24 A (-22d) | 2026-07-16 A → 2026-06-24 A (-22d) | 30d → 1d | MLTX-02-004-EN-16230 SS, MLTX-02-004-EN-16130 → MLTX-02-004-EN-16230 SS |
| MLTX-02-004-EN-16260 | Shop DWG Approval for Anchor Bolt Layout of Air Dome | 2026-07-16 A → 2026-06-24 A (-22d) | 2026-07-16 A → 2026-06-24 A (-22d) | 30d → 1d | MLTX-02-004-EN-13130, MLTX-02-004-EN-16210, MLTX-02-004-EN-16130 → MLTX-02-004-EN-13130 |
| 5 | **AIR DOME SYSTEM** | 2026-03-19 → 2026-06-13 (+86d) | 2026-10-24 → 2026-06-13 (-133d) |  |  |
| MLTX-02-004-EN-16270 | Shop DWG Approval for Air Dome Structural Layout | 2026-03-19 A → 2026-06-13 A (+86d) | 2026-05-09 A → 2026-06-13 A (+35d) | 30d → 1d |  |
| MLTX-02-004-EN-16280 | Shop DWG Approval for Membrane Panel Layout | 2026-10-24 A → 2026-06-13 A (-133d) | 2026-10-24 A → 2026-06-13 A (-133d) | 15d → 1d | MLTX-02-004-EN-13150, MLTX-02-004-EN-13130 → MLTX-02-004-EN-13150 |
| MLTX-02-004-EN-16290 | Shop DWG Approval for Cable Tension Layout | 2026-10-24 A → 2026-06-13 A (-133d) | 2026-10-24 A → 2026-06-13 A (-133d) | 13d → 1d | MLTX-02-004-EN-13160, MLTX-02-004-EN-16280 FF, MLTX-02-004-EN-16280 SS → MLTX-02-004-EN-16280 SS, MLTX-02-004-EN-13160 |
| MLTX-02-004-EN-16300 | Shop DWG Approval for Airlock Door Details | 2026-10-24 A → 2026-06-13 A (-133d) | 2026-10-24 A → 2026-06-13 A (-133d) | 13d → 1d | MLTX-02-004-EN-16290, MLTX-02-004-EN-13170 → MLTX-02-004-EN-13170 |
| MLTX-02-004-EN-16310 | Shop DWG Approval for Emergency Exit Details | 2026-10-24 A → 2026-06-13 A (-133d) | 2026-10-24 A → 2026-06-13 A (-133d) | 13d → 1d | MLTX-02-004-EN-16300, MLTX-02-004-EN-13180 → MLTX-02-004-EN-13180 |
| 6 | **SPORTS EQUIPMENT** | 2026-07-20 → 2026-06-13 (-37d) | 2026-10-24 → 2026-06-13 (-133d) |  |  |
| MLTX-02-004-EN-16340 | Shop DWG Approval for Football Turf Installation | 2026-10-24 A → 2026-06-13 A (-133d) | 2026-10-24 A → 2026-06-13 A (-133d) | 13d → 1d | MLTX-02-004-EN-16250, MLTX-02-004-EN-16310, MLTX-02-004-EN-13210 → MLTX-02-004-EN-13210 |
| MLTX-02-004-EN-16350 | Shop DWG Approval for Basketball Court Marking | 2026-08-25 A → 2026-06-13 A (-73d) | 2026-08-25 A → 2026-06-13 A (-73d) | 30d → 1d | MLTX-02-004-EN-13220, MLTX-02-004-EN-16220 → MLTX-02-004-EN-13220 |
| MLTX-02-004-EN-16360 | Shop DWG Approval for Padel Court Structure | 2026-07-20 A → 2026-06-13 A (-37d) | 2026-07-20 A → 2026-06-13 A (-37d) | 30d → 1d | MLTX-02-004-EN-13230, MLTX-02-004-EN-16350, MLTX-02-004-EN-16160 → MLTX-02-004-EN-13230 |
| 1 | **MECHANCAL WORKS** | 2026-03-19 → 2026-05-06 (+48d) | 2026-05-04 → 2026-05-07 (+3d) |  |  |
| MLTX-02-004-EN-16150 | Shop DWG Approval for HVAC Plan | 2026-03-19 A → 2026-05-06 A (+48d) | 2026-05-04 A → 2026-05-06 A (+2d) | 30d → 1d |  |
| MLTX-02-004-EN-16160 | Shop DWG Approval for Exhaust Air Plan | 2026-03-19 A → 2026-05-07 A (+49d) | 2026-05-04 A → 2026-05-07 A (+3d) | 30d → 1d | MLTX-02-004-EN-13040, MLTX-02-004-EN-16150, MLTX-02-004-EN-15610, MLTX-02-004-EN-15600 → MLTX-02-004-EN-13040 |
| 2 | **ELECTRICAL WORKS** | 2026-06-13 → 2026-04-15 (-59d) | 2026-11-08 → 2026-08-26 (-74d) |  |  |
| MLTX-02-004-EN-16070 | Shop DWG Approval for Lighting Layout | 2026-10-24 A → 2026-04-15 A (-192d) | 2026-10-24 A → 2026-04-26 A (-181d) | 23d → 10d | MLTX-02-004-EN-12920, MLTX-02-004-EN-16140 → MLTX-02-004-EN-12920 |
| MLTX-02-004-EN-16080 | Shop DWG Approval for Power Layout | 2026-11-08 A → 2026-04-15 A (-207d) | 2026-11-08 A → 2026-04-26 A (-196d) | 13d → 10d | MLTX-02-004-EN-16070, MLTX-02-004-EN-12930, MLTX-02-004-EN-16160, MLTX-02-004-EN-13000 → MLTX-02-004-EN-12930 |
| MLTX-02-004-EN-16090 | Shop DWG Approval for Power Single Line Diagram | 2026-07-16 A → 2026-07-15 A (-1d) | 2026-07-16 A → 2026-07-15 A (-1d) | 30d → 6d | MLTX-02-004-EN-12940, MLTX-02-004-EN-16100 → MLTX-02-004-EN-12940 |
| MLTX-02-004-EN-16100 | Shop DWG Approval for Panel Board Schedules | 2026-06-13 A → 2026-07-15 A (+32d) | 2026-06-13 A → 2026-07-15 A (+32d) | 20d → 6d |  |
| MLTX-02-004-EN-16110 | Shop DWG Approval for Power Installation Details | 2026-11-08 A → 2026-07-15 A (-116d) | 2026-11-08 A → 2026-07-15 A (-116d) | 13d → 6d | MLTX-02-004-EN-16080, MLTX-02-004-EN-12960 → MLTX-02-004-EN-12960 |
| MLTX-02-004-EN-16120 | Shop DWG Approval for CCTV Details | 2026-08-25 A → 2026-08-26 A (+1d) | 2026-08-25 A → 2026-08-26 A (+1d) | 25d → 10d | MLTX-02-004-EN-12980, MLTX-02-004-EN-16100 → MLTX-02-004-EN-12980 |
| MLTX-02-004-EN-16130 | Shop DWG Approval for CCTV Layout | 2026-08-25 A → 2026-08-26 A (+1d) | 2026-08-25 A → 2026-08-26 A (+1d) | 3d → 10d | MLTX-02-004-EN-16120, MLTX-02-004-EN-13010 → MLTX-02-004-EN-13010 |
| MLTX-02-004-EN-16140 | Shop DWG Approval for CCTV Riser Diagram | 2026-08-25 A → 2026-08-26 A (+1d) | 2026-08-25 A → 2026-08-26 A (+1d) | 30d → 10d | MLTX-02-004-EN-13020, MLTX-02-004-EN-15980 FF, MLTX-02-004-EN-16210 → MLTX-02-004-EN-13020 |
| EAR | **SHOP DRAWINGS APPROVAL FOR LANDSCAPE WORKS** | 2026-03-15 → 2026-04-11 (+27d) | 2026-07-16 → 2026-07-18 (+2d) |  |  |
| 3 | **ARCHITECTURE WORKS** | 2026-03-15 → 2026-04-22 (+38d) | 2026-05-19 → 2026-05-14 (-5d) |  |  |
| MLTX-02-004-EN-16010 | Shop DWG Approval for Landscape Layout | 2026-03-15 A → 2026-04-22 A (+38d) | 2026-03-29 A → 2026-04-26 A (+28d) | 21d → 4d | MLTX-02-004-EN-12860, MLTX-02-004-EN-16170, MLTX-02-004-EN-15590 → MLTX-02-004-EN-12860 |
| MLTX-02-004-EN-16020 | Shop DWG Approval for Hardscape Plan | 2026-03-15 A → 2026-05-13 A (+59d) | 2026-03-29 A → 2026-05-14 A (+46d) | 21d → 2d | MLTX-02-004-EN-12870, MLTX-02-004-EN-15590 → MLTX-02-004-EN-12870 |
| MLTX-02-004-EN-16030 | Shop DWG Approval for Planting Plan | 2026-03-19 A → 2026-05-13 A (+55d) | 2026-05-19 A → 2026-05-14 A (-5d) | 15d → 2d | MLTX-02-004-EN-12880, MLTX-02-004-EN-15590 → MLTX-02-004-EN-12880 |
| MLTX-02-004-EN-16040 | Shop DWG Approval for Landscape Details | 2026-03-15 A → 2026-05-13 A (+59d) | 2026-03-29 A → 2026-05-14 A (+46d) | 21d → 2d | MLTX-02-004-EN-12890, MLTX-02-004-EN-15590 → MLTX-02-004-EN-12890 |
| 1 | **MECHANCAL WORKS** | 2026-07-07 → 2026-07-18 (+11d) | 2026-07-07 → 2026-07-18 (+11d) |  |  |
| MLTX-02-004-EN-16050 | Shop DWG Approval for Irrigation Details | 2026-07-07 A → 2026-07-18 A (+11d) | 2026-07-07 A → 2026-07-18 A (+11d) | 30d → 6d |  |
| MLTX-02-004-EN-16060 | Shop DWG Approval for Irrigation Layout | 2026-07-07 A → 2026-07-18 A (+11d) | 2026-07-07 A → 2026-07-18 A (+11d) | 30d → 6d | MLTX-02-004-EN-12910, MLTX-02-004-EN-16050 → MLTX-02-004-EN-12910 |
| 2 | **ELECTRICAL WORKS** | 2026-07-16 → 2026-04-11 (-96d) | 2026-07-16 → 2026-05-23 (-54d) |  |  |
| MLTX-02-004-EN-15590 | Shop DWG Approval for Lighting General Arrangement | 2026-07-16 A → 2026-04-11 A (-96d) | 2026-07-16 A → 2026-04-21 A (-86d) | 30d → 10d |  |
| MLTX-02-004-EN-15600 | Shop DWG Approval for Lighting Network Layout | 2026-07-16 A → 2026-04-11 A (-96d) | 2026-07-16 A → 2026-04-21 A (-86d) | 30d → 10d | MLTX-02-004-EN-12170, MLTX-02-004-EN-16120 → MLTX-02-004-EN-12170 |
| MLTX-02-004-EN-15610 | Shop DWG Approval for Lighting Details | 2026-07-16 A → 2026-04-11 A (-96d) | 2026-07-16 A → 2026-04-21 A (-86d) | 30d → 10d | MLTX-02-004-EN-12180, MLTX-02-004-EN-16120 → MLTX-02-004-EN-12180 |
| MLTX-02-004-EN-15620 | Shop DWG Approval for Lighting Single Line Diagram | 2026-07-16 A → 2026-05-23 A (-54d) | 2026-07-16 A → 2026-05-23 A (-54d) | 30d → 1d | MLTX-02-004-EN-16090, MLTX-02-004-EN-12190, MLTX-02-004-EN-16120 → MLTX-02-004-EN-12190 |
| MTS | **METHOD STATEMENTS** | 2026-03-07 → 2026-03-31 (+24d) | 2026-09-12 → 2026-12-05 (+84d) |  |  |
| 1 | **METHOD STATEMENT SUBMITTAL** | 2026-03-07 → 2026-03-31 (+24d) | 2026-06-04 → 2026-11-21 (+170d) |  |  |
| 4 | **CIVIL WORKS** | 2026-03-09 → 2026-03-31 (+22d) | 2026-03-14 → 2026-05-21 (+68d) |  |  |
| MLTX-02-004-EN-12200 | Preparation & Submission of Method Statement for Earthwork | 2026-03-09 A → 2026-03-31 A (+22d) | 2026-03-14 A → 2026-04-19 A (+36d) | 15d → 17d |  |
| MLTX-02-004-EN-12220 | Preparation & Submission of Method Statement for Waterproofing | 2026-03-09 A → 2026-03-31 A (+22d) | 2026-03-14 A → 2026-04-25 A (+42d) | 21d → 22d |  |
| MLTX-02-004-EN-12210 | Preparation & Submission of Method Statement for Concrete Works | 2026-03-09 A → 2026-05-21 A (+73d) | 2026-03-14 A → 2026-05-21 A (+68d) | 30d → 1d |  |
| 1 | **ARCHITECTURE WORKS** | 2026-03-07 → 2026-05-31 (+85d) | 2026-06-02 → 2026-11-21 (+172d) |  |  |
| MLTX-02-004-EN-12300 | Preparation & Submission of Method Statement for Interlock/Curbstone Works | 2026-03-07 A → 2026-05-31 A (+85d) | 2026-05-02 A → 2026-05-31 A (+29d) | 30d → 1d |  |
| MLTX-02-004-EN-12310 | Preparation & Submission of Method Statement for Parking Works | 2026-03-07 A → 2026-05-31 A (+85d) | 2026-05-24 A → 2026-05-31 A (+7d) | 30d → 1d | MLTX-02-004-MB-2010, MLTX-02-004-EN-12290 → MLTX-02-004-MB-2010 |
| MLTX-02-004-EN-12270 | Preparation & Submission of Method Statement for Tilling Works | 2026-03-07 A → 2026-06-06 A (+91d) | 2026-05-17 A → 2026-06-06 A (+20d) | 30d → 1d | MLTX-02-004-MB-2010, MLTX-02-004-EN-12320 → MLTX-02-004-MB-2010 |
| MLTX-02-004-EN-12290 | Preparation & Submission of Method Statement for Doors/Windows Works | 2026-03-07 A → 2026-06-06 A (+91d) | 2026-06-02 A → 2026-06-06 A (+4d) | 30d → 1d | MLTX-02-004-MB-2010, MLTX-02-004-EN-15280 → MLTX-02-004-MB-2010 |
| MLTX-02-004-EN-12370 | Preparation & Submission of Method Statement for Gypsum Board Works | 2026-03-07 A → 2026-06-14 A (+99d) | 2026-06-02 A → 2026-06-14 A (+12d) | 30d → 1d | MLTX-02-004-MB-2010, MLTX-02-004-EN-12400 → MLTX-02-004-MB-2010 |
| MLTX-02-004-EN-12250 | Preparation & Submission of Method Statement for Plastering Works | 2026-03-09 A → 2026-06-16 A (+99d) | 2026-03-14 A → 2026-06-16 A (+94d) | 15d → 1d | MLTX-02-004-MB-2010, MLTX-02-004-EN-12380 → MLTX-02-004-MB-2010 |
| MLTX-02-004-EN-12260 | Preparation & Submission of Method Statement for Masonary Works | 2026-03-07 A → 2026-06-16 A (+101d) | 2026-05-11 A → 2026-06-16 A (+36d) | 30d → 1d | MLTX-02-004-MB-2010, MLTX-02-004-EN-12250 → MLTX-02-004-MB-2010 |
| MLTX-02-004-EN-12280 | Preparation & Submission of Method Statement for Seats/Benches Works | 2026-03-07 A → 2026-06-18 A (+103d) | 2026-06-02 A → 2026-06-18 A (+16d) | 30d → 1d | MLTX-02-004-MB-2010, MLTX-02-004-EN-12320 → MLTX-02-004-MB-2010 |
| MLTX-02-004-EN-12320 | Preparation & Submission of Method Statement for Soft Scape Works | 2026-03-07 A → 2026-07-11 A (+126d) | 2026-06-02 A → 2026-07-11 A (+39d) | 30d → 5d | MLTX-02-004-MB-2010, MLTX-02-004-EN-12370 → MLTX-02-004-MB-2010 |
| MLTX-02-004-EN-12350 | Preparation & Submission of Method Statement for Metal Works | 2026-03-07 A → 2026-07-11 A (+126d) | 2026-06-02 A → 2026-07-11 A (+39d) | 30d → 6d | MLTX-02-004-MB-2010, MLTX-02-004-EN-12250 → MLTX-02-004-MB-2010 |
| MLTX-02-004-EN-12360 | Preparation & Submission of Method Statement for Partitions Works | 2026-03-07 A → 2026-07-15 A (+130d) | 2026-06-02 A → 2026-07-15 A (+43d) | 30d → 5d | MLTX-02-004-MB-2010, MLTX-02-004-EN-12230 → MLTX-02-004-MB-2010 |
| MLTX-02-004-EN-12340 | Preparation & Submission of Method Statement for Air Dome Works | 2026-03-07 A → 2026-08-19 A (+165d) | 2026-06-02 A → 2026-08-19 A (+78d) | 30d → 5d | MLTX-02-004-MB-2010, MLTX-02-004-EN-12230 → MLTX-02-004-MB-2010 |
| MLTX-02-004-EN-12330 | Preparation & Submission of Method Statement for Fence Works | 2026-03-07 A → 2026-11-19 A (+257d) | 2026-06-02 A → 2026-11-21 A (+172d) | 30d → 5d | MLTX-02-004-MB-2010, MLTX-02-004-EN-12230 → MLTX-02-004-MB-2010 |
| 2 | **MECHANICAL WORKS** | 2026-03-12 → 2026-04-07 (+26d) |  |  |  |
| MLTX-02-004-EN-12400 | Preparation & Submission of Method Statement for Fire Fighting System | 2026-03-12 A → 2026-04-07 A (+26d) | 2026-06-04 A → 2026-04-14 A (-51d) | 30d → 7d |  |
| MLTX-02-004-EN-12380 | Preparation & Submission of Method Statement for Sewage/Drainage System | 2026-03-12 A → 2026-05-31 A (+80d) | 2026-05-02 A → 2026-05-31 A (+29d) | 30d → 1d |  |
| MLTX-02-004-EN-12390 | Preparation & Submission of Method Statement for Water Supply System | 2026-03-12 A → 2026-06-04 A (+84d) | 2026-05-02 A → 2026-06-04 A (+33d) | 30d → 1d |  |
| MLTX-02-004-EN-12410 | Preparation & Submission of Method Statement for Irrigation System | 2026-03-12 A → 2026-06-04 A (+84d) |  | 15d → 1d | MLTX-02-004-EN-12250, MLTX-02-004-EN-12390 → MLTX-02-004-EN-12250 |
| MLTX-02-004-EN-12420 | Preparation & Submission of Method Statement for HVAC System | 2026-03-12 A → 2026-06-04 A (+84d) |  | 30d → 1d | MLTX-02-004-EN-12260, MLTX-02-004-EN-15280 → MLTX-02-004-EN-12260 |
| 5 | **ELECTRICAL WORKS** | 2026-03-12 → 2026-06-13 (+93d) | 2026-05-11 → 2026-07-22 (+72d) |  |  |
| MLTX-02-004-EN-12460 | Preparation & Submission of Method Statement for Earthing/Lightning Works | 2026-03-12 A → 2026-06-13 A (+93d) | 2026-05-06 A → 2026-06-13 A (+38d) | 30d → 1d | MLTX-02-004-EN-12360, MLTX-02-004-EN-15290 → MLTX-02-004-MS-1010 SS |
| MLTX-02-004-EN-12230 | Preparation & Submission of Method Statement for Electrical Conduits/Pulling Works | 2026-03-12 A → 2026-06-16 A (+96d) | 2026-05-11 A → 2026-06-16 A (+36d) | 30d → 1d |  |

| ID | Task | Start | Finish | Duration | Complete | Total float | Predecessors | Other |
| --- | --- | --- | --- | --- | --- | --- | --- | --- |
| MLTX-02-004-EN-12240 | Preparation & Submission of Method Statement for Lighting Poles Installation | 2026-03-12 A → 2026-06-17 A (+97d) | 2026-05-11 A → 2026-06-17 A (+37d) | 30d → 1d |  |  | MLTX-02-004-EN-12320, MLTX-02-004-EN-12430 → MLTX-02-004-MS-1010 SS |  |
| MLTX-02-004-EN-12450 | Preparation & Submission of Method Statement for Lighting Works | 2026-03-12 A → 2026-06-18 A (+98d) | 2026-05-11 A → 2026-06-18 A (+38d) | 30d → 1d |  |  | MLTX-02-004-EN-12350, MLTX-02-004-EN-12330 → MLTX-02-004-MS-1010 SS |  |
| MLTX-02-004-EN-12430 | Preparation & Submission of Method Statement for Telecommunication & Data System | 2026-03-12 A → 2026-07-15 A (+125d) | 2026-05-11 A → 2026-07-15 A (+65d) | 30d → 10d |  |  | MLTX-02-004-EN-12330, MLTX-02-004-EN-12360 → MLTX-02-004-EN-12230 |  |
| MLTX-02-004-EN-12470 | Preparation & Submission of Method Statement for Panel Boards Works | 2026-03-12 A → 2026-07-18 A (+128d) | 2026-05-11 A → 2026-07-18 A (+68d) | 30d → 9d |  |  | MLTX-02-004-EN-12370, MLTX-02-004-EN-12360 → MLTX-02-004-EN-12370 |  |
| MLTX-02-004-EN-12440 | Preparation & Submission of Method Statement for CCTV System | 2026-03-12 A → 2026-07-22 A (+132d) | 2026-05-11 A → 2026-07-22 A (+72d) | 30d → 10d |  |  | MLTX-02-004-EN-12340, MLTX-02-004-EN-12330, MLTX-02-004-EN-12360 → MLTX-02-004-EN-12340 |  |
| 2 | **METHOD STATEMENT APPROVAL** | 2026-03-12 → 2026-04-15 (+34d) | 2026-09-12 → 2026-12-05 (+84d) |  |  |  |  |  |
| 4 | **CIVIL WORKS** | 2026-03-12 → 2026-05-21 (+70d) | 2026-04-30 → 2026-05-31 (+31d) |  |  |  |  |  |
| MLTX-02-004-EN-15260 | Approval of Method Statement for Earthwork | 2026-03-12 A → 2026-05-21 A (+70d) | 2026-04-30 A → 2026-05-21 A (+21d) | 15d → 1d |  |  | MLTX-02-004-EN-12200, MLTX-02-004-EN-15280 → MLTX-02-004-EN-12200 |  |
| MLTX-02-004-EN-15270 | Approval of Method Statement for Concrete Works | 2026-03-12 A → 2026-05-31 A (+80d) | 2026-04-30 A → 2026-05-31 A (+31d) | 30d → 1d |  |  | MLTX-02-004-EN-12210, MLTX-02-004-EN-15260, MLTX-02-004-EN-12320 → MLTX-02-004-EN-12210 |  |
| MLTX-02-004-EN-15280 | Approval of Method Statement for Waterproofing | 2026-03-12 A → 2026-05-31 A (+80d) | 2026-04-30 A → 2026-05-31 A (+31d) | 21d → 1d |  |  | MLTX-02-004-EN-12220, MLTX-02-004-EN-15430 → MLTX-02-004-EN-12220 |  |
| 1 | **ARCHITECTURE WORKS** | 2026-03-12 → 2026-05-31 (+80d) | 2026-09-12 → 2026-12-05 (+84d) |  |  |  |  |  |
| MLTX-02-004-EN-15360 | Approval of Method Statement for Interlock/Curbstone Works | 2026-03-12 A → 2026-05-31 A (+80d) | 2026-05-05 A → 2026-05-31 A (+26d) | 30d → 1d |  |  | MLTX-02-004-EN-12300, MLTX-02-004-EN-15390 → MLTX-02-004-EN-12300 |  |
| MLTX-02-004-EN-15370 | Approval of Method Statement for Parking Works | 2026-05-20 A → 2026-05-31 A (+11d) | 2026-05-20 A → 2026-05-31 A (+11d) | 30d → 1d |  |  | MLTX-02-004-EN-12310, MLTX-02-004-EN-15380 → MLTX-02-004-EN-12310 |  |
| MLTX-02-004-EN-15330 | Approval of Method Statement for Tilling Works | 2026-03-12 A → 2026-06-06 A (+86d) | 2026-05-24 A → 2026-06-06 A (+13d) | 30d → 1d |  |  | MLTX-02-004-EN-12270, MLTX-02-004-EN-15390, MLTX-02-004-EN-12280 → MLTX-02-004-EN-12270 |  |
| MLTX-02-004-EN-15350 | Approval of Method Statement for Doors/Windows Works | 2026-09-12 A → 2026-06-06 A (-98d) | 2026-09-12 A → 2026-06-06 A (-98d) | 30d → 1d |  |  | MLTX-02-004-EN-12290, MLTX-02-004-EN-15660 → MLTX-02-004-EN-12290 |  |
| MLTX-02-004-EN-15310 | Approval of Method Statement for Plastering Works | 2026-03-12 A → 2026-06-18 A (+98d) | 2026-04-30 A → 2026-06-18 A (+49d) | 30d → 1d |  |  | MLTX-02-004-EN-12250, MLTX-02-004-EN-15390 → MLTX-02-004-EN-12250 |  |
| MLTX-02-004-EN-15320 | Approval of Method Statement for Masonary Works | 2026-03-12 A → 2026-06-18 A (+98d) | 2026-05-24 A → 2026-06-18 A (+25d) | 30d → 1d |  |  | MLTX-02-004-EN-12260, MLTX-02-004-EN-15290 → MLTX-02-004-EN-12260 |  |
| MLTX-02-004-EN-15420 | Approval of Method Statement for Gypsum Board Works | 2026-08-20 A → 2026-06-18 A (-63d) | 2026-08-20 A → 2026-06-18 A (-63d) | 30d → 1d |  |  | MLTX-02-004-EN-12370, MLTX-02-004-EN-15410 → MLTX-02-004-EN-12370 |  |
| MLTX-02-004-EN-15340 | Approval of Method Statement for Seats/Benches Works | 2026-09-12 A → 2026-07-11 A (-63d) | 2026-09-12 A → 2026-07-11 A (-63d) | 30d → 6d |  |  | MLTX-02-004-EN-12280, MLTX-02-004-EN-15310, MLTX-02-004-EN-15360 → MLTX-02-004-EN-12280 |  |
| MLTX-02-004-EN-15380 | Approval of Method Statement for Soft Scape Works | 2026-07-19 A → 2026-07-11 A (-8d) | 2026-07-19 A → 2026-07-11 A (-8d) | 30d → 10d |  |  | MLTX-02-004-EN-12320, MLTX-02-004-EN-15390 → MLTX-02-004-EN-12320 |  |
| MLTX-02-004-EN-15410 | Approval of Method Statement for Partitions Works | 2026-06-29 A → 2026-07-15 A (+16d) | 2026-06-29 A → 2026-07-15 A (+16d) | 30d → 10d |  |  | MLTX-02-004-EN-12360, MLTX-02-004-EN-15520 → MLTX-02-004-EN-12360 |  |
| MLTX-02-004-EN-15400 | Approval of Method Statement for Air Dome Works | 2026-09-12 A → 2026-08-27 A (-16d) | 2026-09-12 A → 2026-08-27 A (-16d) | 30d → 10d |  |  | MLTX-02-004-EN-12340, MLTX-02-004-EN-15380 → MLTX-02-004-EN-12340 |  |
| MLTX-02-004-EN-15390 | Approval of Method Statement for Fence Works | 2026-07-19 A → 2026-11-24 (+128d) | 2026-07-19 A → 2026-12-05 (+139d) | 20d → 10d | 100% → 0% | none → 44d | MLTX-02-004-EN-12330, MLTX-02-004-EN-14190 → MLTX-02-004-EN-12330 |  |
| 2 | **MECHANICAL WORKS** | 2026-06-14 → 2026-04-15 (-60d) | 2026-08-26 → 2026-06-11 (-76d) |  |  |  |  |  |
| MLTX-02-004-EN-15450 | Approval of Method Statement for Fire Fighting System | 2026-08-26 A → 2026-04-15 A (-133d) | 2026-08-26 A → 2026-04-26 A (-122d) | 30d → 10d |  |  |  | resources Consultant Staff [16.1 h] → Consultant Staff [26.1 h] |
| MLTX-02-004-EN-15430 | Approval of Method Statement for Sewage/Drainage System | 2026-06-14 A → 2026-06-11 A (-3d) | 2026-06-14 A → 2026-06-11 A (-3d) | 30d → 1d |  |  |  | resources Consultant Staff [16.1 h] → Consultant Staff [26.1 h] |
| MLTX-02-004-EN-15440 | Approval of Method Statement for Water Supply System | 2026-06-14 A → 2026-06-11 A (-3d) | 2026-06-14 A → 2026-06-11 A (-3d) | 30d → 1d |  |  | MLTX-02-004-EN-12390, MLTX-02-004-EN-15390 → MLTX-02-004-EN-12390 | resources Consultant Staff [16.1 h] → Consultant Staff [26.1 h] |
| MLTX-02-004-EN-15460 | Approval of Method Statement for Irrigation System | 2026-06-14 A → 2026-06-11 A (-3d) | 2026-06-14 A → 2026-06-11 A (-3d) | 15d → 1d |  |  | MLTX-02-004-EN-12410, MLTX-02-004-EN-15430 → MLTX-02-004-EN-12410 | resources Consultant Staff [16.1 h] → Consultant Staff [26.1 h] |
| MLTX-02-004-EN-15470 | Approval of Method Statement for HVAC System | 2026-07-14 A → 2026-06-11 A (-33d) | 2026-07-22 A → 2026-06-11 A (-41d) | 30d → 1d |  |  | MLTX-02-004-EN-12420, MLTX-02-004-EN-15390 → MLTX-02-004-EN-12420 | resources Consultant Staff [16.1 h] → Consultant Staff [26.1 h] |
| 5 | **ELECTRICAL WORKS** | 2026-06-06 → 2026-07-11 (+35d) | 2026-06-14 → 2026-07-22 (+38d) |  |  |  |  |  |
| MLTX-02-004-EN-15290 | Approval of Method Statement for Electrical Conduits/Pulling Works | 2026-06-06 A → 2026-07-11 A (+35d) | 2026-06-06 A → 2026-07-11 A (+35d) | 30d → 6d |  |  |  | resources Consultant Staff [16.1 h] → Consultant Staff [26.1 h] |
| MLTX-02-004-EN-15300 | Approval of Method Statement for Lighting Poles Installation | 2026-06-14 A → 2026-07-11 A (+27d) | 2026-06-14 A → 2026-07-11 A (+27d) | 30d → 10d |  |  | MLTX-02-004-EN-12240, MLTX-02-004-EN-15510 → MLTX-02-004-EN-12240 | resources Consultant Staff [16.1 h] → Consultant Staff [26.1 h] |
| MLTX-02-004-EN-15500 | Approval of Method Statement for Lighting Works | 2026-06-14 A → 2026-07-11 A (+27d) | 2026-06-14 A → 2026-07-11 A (+27d) | 30d → 10d |  |  | MLTX-02-004-EN-12450, MLTX-02-004-EN-15390 → MLTX-02-004-EN-12450 | resources Consultant Staff [16.1 h] → Consultant Staff [26.1 h] |
| MLTX-02-004-EN-15510 | Approval of Method Statement for Earthing/Lightning Works | 2026-06-14 A → 2026-07-11 A (+27d) | 2026-06-14 A → 2026-07-11 A (+27d) | 30d → 5d |  |  | MLTX-02-004-EN-12460, MLTX-02-004-EN-15630 → MLTX-02-004-EN-12460 | resources Consultant Staff [16.1 h] → Consultant Staff [36.1 h] |
| MLTX-02-004-EN-15480 | Approval of Method Statement for Telecommunication & Data System | 2026-06-14 A → 2026-07-15 A (+31d) | 2026-06-14 A → 2026-07-15 A (+31d) | 30d → 10d |  |  | MLTX-02-004-EN-12430, MLTX-02-004-EN-15390 → MLTX-02-004-MS-1010 | resources Consultant Staff [16.1 h] → Consultant Staff [26.1 h] |
| MLTX-02-004-EN-15520 | Approval of Method Statement for Panel Boards Works | 2026-06-14 A → 2026-07-18 A (+34d) | 2026-06-14 A → 2026-07-18 A (+34d) | 30d → 5d |  |  | MLTX-02-004-EN-16100, MLTX-02-004-EN-12470 → MLTX-02-004-EN-12470, MLTX-02-004-EN-13840, MLTX-02-004-EN-14200, MLTX-02-004-EN-14220 | resources Consultant Staff [16.1 h] → Consultant Staff [31.1 h] |
| MLTX-02-004-EN-15490 | Approval of Method Statement for CCTV System | 2026-06-14 A → 2026-07-22 A (+38d) | 2026-06-14 A → 2026-07-22 A (+38d) | 30d → 10d |  |  | MLTX-02-004-EN-12440, MLTX-02-004-EN-15390, MLTX-02-004-EN-12460 → MLTX-02-004-EN-15510 | resources Consultant Staff [16.1 h] → Consultant Staff [26.1 h] |
| PREQ | **PRE-QUALIFICATION & MATERIAL** | 2026-03-07 → 2026-03-31 (+24d) | 2026-09-12 → 2026-08-19 (-24d) |  |  |  |  |  |
| PRE | **PRE-QUALIFICATION** | 2026-03-07 → 2026-03-31 (+24d) | 2026-06-07 → 2026-05-21 (-17d) |  |  |  |  |  |
| TOI | **TOILET/SERVICE WORKS** | 2026-03-07 → 2026-03-31 (+24d) | 2026-06-07 → 2026-04-15 (-53d) |  |  |  |  |  |
| 1 | **STEEL REINFORCEMENT** | 2026-03-09 → 2026-03-31 (+22d) | 2026-03-19 → 2026-04-13 (+25d) |  |  |  |  |  |
| MLTX-02-004-EN-14260 | Pre-Qualification Submittal for Steel Reinforcement | 2026-03-09 A → 2026-03-31 A (+22d) | 2026-03-11 A → 2026-04-12 A (+32d) | 15d → 11d |  |  |  |  |
| MLTX-02-004-EN-14380 | Pre-Qualification Approval for Steel Reinforcement | 2026-03-12 A → 2026-04-12 A (+31d) | 2026-03-19 A → 2026-04-13 A (+25d) | 15d → 2d |  |  |  |  |
| 2 | **READY MIX CONCRETE** | 2026-03-09 → 2026-03-31 (+22d) | 2026-03-19 → 2026-04-12 (+24d) |  |  |  |  |  |
| MLTX-02-004-EN-14270 | Pre-Qualification Submittal for Ready Mixed Concrete | 2026-03-09 A → 2026-03-31 A (+22d) | 2026-03-11 A → 2026-04-11 A (+31d) | 15d → 10d |  |  |  |  |
| MLTX-02-004-EN-14280 | Pre-Qualification Approval of Ready Mixed Concrete | 2026-03-12 A → 2026-04-11 A (+30d) | 2026-03-19 A → 2026-04-12 A (+24d) | 15d → 2d |  |  |  |  |
| 3 | **CONCRETE BLOCKS** | 2026-03-09 → 2026-03-31 (+22d) | 2026-03-19 → 2026-04-12 (+24d) |  |  |  |  |  |
| MLTX-02-004-EN-14480 | Pre-Qualification Submittal for Concrete Blocks | 2026-03-09 A → 2026-03-31 A (+22d) | 2026-03-11 A → 2026-04-11 A (+31d) | 15d → 10d |  |  |  |  |
| MLTX-02-004-EN-14490 | Pre-Qualification Approval for Concrete Blocks | 2026-03-12 A → 2026-04-11 A (+30d) | 2026-03-19 A → 2026-04-12 A (+24d) | 15d → 2d |  |  | MLTX-02-004-EN-14480, MLTX-02-004-EN-14710 → MLTX-02-004-EN-14480 |  |
| 4 | **WATER PROOFING** | 2026-03-09 → 2026-03-31 (+22d) | 2026-03-19 → 2026-04-13 (+25d) |  |  |  |  |  |
| MLTX-02-004-EN-14290 | Pre-Qualification Submittal for Water Proofing | 2026-03-09 A → 2026-03-31 A (+22d) | 2026-03-11 A → 2026-04-11 A (+31d) | 15d → 10d |  |  |  |  |
| MLTX-02-004-EN-14390 | Pre-Qualification Approval for Water Proofing | 2026-03-12 A → 2026-04-11 A (+30d) | 2026-03-19 A → 2026-04-13 A (+25d) | 30d → 3d |  |  | MLTX-02-004-EN-14290, MLTX-02-004-EN-14890 → MLTX-02-004-EN-14290 |  |
| 6 | **FLOOR/WALL TILES** | 2026-03-07 → 2026-03-31 (+24d) | 2026-04-07 → 2026-04-12 (+5d) |  |  |  |  |  |
| MLTX-02-004-EN-14500 | Pre-Qualification Submittal for Tilling Materials | 2026-03-07 A → 2026-03-31 A (+24d) | 2026-03-29 A → 2026-04-11 A (+13d) | 15d → 10d |  |  |  |  |
| MLTX-02-004-EN-14510 | Pre-Qualification Approval for Tailling Material | 2026-03-10 A → 2026-04-07 A (+28d) | 2026-04-07 A → 2026-04-12 A (+5d) | 15d → 5d |  |  | MLTX-02-004-EN-14500, MLTX-02-004-EN-14710 → MLTX-02-004-EN-14500 |  |
| 7 | **SUSPENDED CEILING** | 2026-03-09 → 2026-03-31 (+22d) | 2026-03-19 → 2026-04-13 (+25d) |  |  |  |  |  |
| MLTX-02-004-EN-14520 | Pre-Qualification Submittal for Suspend Ceiling | 2026-03-09 A → 2026-03-31 A (+22d) | 2026-03-11 A → 2026-04-12 A (+32d) | 15d → 11d |  |  |  |  |
| MLTX-02-004-EN-14530 | Pre-Qualification Approval for Suspend Ceiling | 2026-03-12 A → 2026-04-12 A (+31d) | 2026-03-19 A → 2026-04-13 A (+25d) | 15d → 2d |  |  | MLTX-02-004-EN-14520, MLTX-02-004-EN-14710 → MLTX-02-004-EN-14520 |  |
| 8 | **DOORS/WINDOWS** | 2026-03-09 → 2026-03-31 (+22d) | 2026-03-19 → 2026-04-12 (+24d) |  |  |  |  |  |
| MLTX-02-004-EN-14540 | Pre-Qualification Submittal for Doors/Windows | 2026-03-09 A → 2026-03-31 A (+22d) | 2026-03-11 A → 2026-04-11 A (+31d) | 15d → 10d |  |  |  |  |
| MLTX-02-004-EN-14550 | Pre-Qualification Approval for Doors/Windows | 2026-03-12 A → 2026-04-11 A (+30d) | 2026-03-19 A → 2026-04-12 A (+24d) | 15d → 2d |  |  | MLTX-02-004-EN-14540, MLTX-02-004-EN-14710 → MLTX-02-004-EN-14540 |  |
| 9 | **FURNITURES** | 2026-03-07 → 2026-03-31 (+24d) | 2026-04-07 → 2026-04-12 (+5d) |  |  |  |  |  |
| MLTX-02-004-EN-14660 | Pre-Qualification Submittal for Furnitures | 2026-03-07 A → 2026-03-31 A (+24d) | 2026-04-04 A → 2026-04-11 A (+7d) | 15d → 10d |  |  |  |  |
| MLTX-02-004-EN-14670 | Pre-Qualification Approval for Furnitures | 2026-03-10 A → 2026-04-11 A (+32d) | 2026-04-07 A → 2026-04-12 A (+5d) | 15d → 2d |  |  | MLTX-02-004-EN-14660, MLTX-02-004-EN-14710 → MLTX-02-004-EN-14660 |  |
| 10 | **SANITARY FIXTURES** | 2026-03-07 → 2026-03-31 (+24d) | 2026-04-09 → 2026-04-12 (+3d) |  |  |  |  |  |
| MLTX-02-004-EN-14560 | Pre-Qualification Submittal for Sanitary Fixtures | 2026-03-07 A → 2026-03-31 A (+24d) | 2026-04-05 A → 2026-04-11 A (+6d) | 15d → 10d |  |  |  |  |
| MLTX-02-004-EN-14570 | Pre-Qualification Approval for Sanitary Fixtures | 2026-03-10 A → 2026-04-11 A (+32d) | 2026-04-09 A → 2026-04-12 A (+3d) | 15d → 2d |  |  | MLTX-02-004-EN-14560, MLTX-02-004-EN-14280 → MLTX-02-004-EN-14560 |  |
| 11 | **WATER SUPPLY PIPES** | 2026-03-07 → 2026-03-31 (+24d) | 2026-03-29 → 2026-04-12 (+14d) |  |  |  |  |  |
| MLTX-02-004-EN-14580 | Pre-Qualification Submittal for Water Supply Pipes | 2026-03-07 A → 2026-03-31 A (+24d) | 2026-03-23 A → 2026-04-11 A (+19d) | 15d → 10d |  |  |  |  |
| MLTX-02-004-EN-14590 | Pre-Qualification Approval for Water Supply Pipes | 2026-03-10 A → 2026-04-11 A (+32d) | 2026-03-29 A → 2026-04-12 A (+14d) | 15d → 2d |  |  | MLTX-02-004-EN-14580, MLTX-02-004-EN-14710 → MLTX-02-004-EN-14580 |  |

| ID | Task | Start | Finish | Duration | Predecessors |
| --- | --- | --- | --- | --- | --- |
| 12 | **SEWAGE/DRAINAGE PIPES** | 2026-03-07 → 2026-03-31 (+24d) | 2026-03-29 → 2026-04-12 (+14d) |  |  |
| MLTX-02-004-EN-14600 | Pre-Qualification Submittal for Sewage/Drainage Pipes | 2026-03-07 A → 2026-03-31 A (+24d) | 2026-03-23 A → 2026-04-11 A (+19d) | 15d → 10d |  |
| MLTX-02-004-EN-14610 | Pre-Qualification Approval for Sewage/Drainage Pipes | 2026-03-10 A → 2026-04-11 A (+32d) | 2026-03-29 A → 2026-04-12 A (+14d) | 15d → 2d |  |
| 16 | **PACKAGE AC UNITS** | 2026-03-10 → 2026-04-07 (+28d) | 2026-04-07 → 2026-04-15 (+8d) |  |  |
| MLTX-02-004-EN-14690 | Pre-Qualification Submittal for Package AC Units | 2026-03-10 A → 2026-04-07 A (+28d) | 2026-04-01 A → 2026-04-13 A (+12d) | 15d → 6d | MLTX-02-004-EN-14260, MLTX-02-004-EN-14570 → MLTX-02-004-EN-14260 |
| MLTX-02-004-EN-14700 | Pre-Qualification Approval for Package AC Units | 2026-03-14 A → 2026-04-11 A (+28d) | 2026-04-07 A → 2026-04-15 A (+8d) | 15d → 5d | MLTX-02-004-EN-14690, MLTX-02-004-EN-14870 → MLTX-02-004-EN-14690 |
| 17 | **AIR DIFUSSERS/GRILLS** | 2026-03-10 → 2026-04-07 (+28d) | 2026-06-07 → 2026-04-15 (-53d) |  |  |
| MLTX-02-004-EN-14710 | Pre-Qualification Submittal for Air Diffusers/Grills | 2026-03-10 A → 2026-04-07 A (+28d) | 2026-05-25 A → 2026-04-13 A (-42d) | 15d → 6d | MLTX-02-004-EN-14270, MLTX-02-004-EN-14890 → MLTX-02-004-EN-14270 |
| MLTX-02-004-EN-14720 | Pre-Qualification Approval for Air Diffusers/Grills | 2026-03-14 A → 2026-04-11 A (+28d) | 2026-06-07 A → 2026-04-15 A (-53d) | 15d → 5d | MLTX-02-004-EN-14710, MLTX-02-004-EN-14770 → MLTX-02-004-EN-14710 |
| 18 | **GALVANIZED DUCTS** | 2026-03-10 → 2026-04-07 (+28d) | 2026-04-30 → 2026-04-15 (-15d) |  |  |
| MLTX-02-004-EN-14730 | Pre-Qualification Submittal for Galvanized Ducts | 2026-03-10 A → 2026-04-07 A (+28d) | 2026-04-25 A → 2026-04-13 A (-12d) | 15d → 6d |  |
| MLTX-02-004-EN-14740 | Pre-Qualification Approval for Galvanized Ducts | 2026-03-14 A → 2026-04-11 A (+28d) | 2026-04-30 A → 2026-04-15 A (-15d) | 15d → 5d |  |
| 19 | **EXHAUST FANS** | 2026-03-10 → 2026-04-07 (+28d) | 2026-04-08 → 2026-04-15 (+7d) |  |  |
| MLTX-02-004-EN-14750 | Pre-Qualification Submittal for Exhaust Fans | 2026-03-10 A → 2026-04-07 A (+28d) | 2026-04-01 A → 2026-04-12 A (+11d) | 15d → 5d |  |
| MLTX-02-004-EN-14760 | Pre-Qualification Approval for Exhaust Fans | 2026-03-14 A → 2026-04-11 A (+28d) | 2026-04-08 A → 2026-04-15 A (+7d) | 15d → 5d |  |
| 13 | **LIGHTING FIXTURES** | 2026-03-10 → 2026-04-07 (+28d) | 2026-06-07 → 2026-04-15 (-53d) |  |  |
| MLTX-02-004-EN-14620 | Pre-Qualification Submittal for Lighting Fixtures | 2026-03-10 A → 2026-04-07 A (+28d) | 2026-05-25 A → 2026-04-09 A (-46d) | 15d → 3d |  |
| MLTX-02-004-EN-14630 | Pre-Qualification Approval for Lighting Fixtures | 2026-03-14 A → 2026-04-11 A (+28d) | 2026-06-07 A → 2026-04-15 A (-53d) | 15d → 5d |  |
| 14 | **SWITCHES/SOCKETS** | 2026-03-10 → 2026-04-07 (+28d) | 2026-06-07 → 2026-04-15 (-53d) |  |  |
| MLTX-02-004-EN-14640 | Pre-Qualification Submittal for Switches/Sockets | 2026-03-10 A → 2026-04-07 A (+28d) | 2026-05-25 A → 2026-04-09 A (-46d) | 15d → 3d | MLTX-02-004-EN-14520, MLTX-02-004-EN-14710 → MLTX-02-004-EN-14520 |
| MLTX-02-004-EN-14650 | Pre-Qualification Approval for Switches/Sockets | 2026-03-14 A → 2026-04-11 A (+28d) | 2026-06-07 A → 2026-04-15 A (-53d) | 15d → 5d | MLTX-02-004-EN-14640, MLTX-02-004-EN-14710 → MLTX-02-004-EN-14640 |
| 15 | **EARTHING SYSTEM** | 2026-03-10 → 2026-04-07 (+28d) | 2026-05-11 → 2026-04-15 (-26d) |  |  |
| MLTX-02-004-EN-14440 | Pre-Qualification Submittal for Earthing System | 2026-03-10 A → 2026-04-07 A (+28d) | 2026-05-09 A → 2026-04-09 A (-30d) | 15d → 3d | MLTX-02-004-EN-14540, MLTX-02-004-EN-14710 → MLTX-02-004-EN-14540 |
| MLTX-02-004-EN-14450 | Pre-Qualification Approval for Earthing System | 2026-03-14 A → 2026-04-11 A (+28d) | 2026-05-11 A → 2026-04-15 A (-26d) | 15d → 5d | MLTX-02-004-EN-14440, MLTX-02-004-EN-14390 → MLTX-02-004-EN-14440 |
| 5 | **DISTRIBUTION PANNELS** | 2026-03-10 → 2026-04-07 (+28d) | 2026-05-06 → 2026-04-15 (-21d) |  |  |
| MLTX-02-004-EN-14460 | Pre-Qualification Submittal for Distribution Panels | 2026-03-10 A → 2026-04-07 A (+28d) | 2026-04-30 A → 2026-04-09 A (-21d) | 15d → 3d | MLTX-02-004-EN-14660, MLTX-02-004-EN-14650 → MLTX-02-004-EN-14660 |
| MLTX-02-004-EN-14470 | Pre-Qualification Approval for Distribution Panels | 2026-03-14 A → 2026-04-11 A (+28d) | 2026-05-06 A → 2026-04-15 A (-21d) | 15d → 5d | MLTX-02-004-EN-14460, MLTX-02-004-EN-15250 → MLTX-02-004-EN-14460 |
| PLG | **PLAYGROUND WORKS** | 2026-03-07 → 2026-03-31 (+24d) | 2026-06-07 → 2026-04-15 (-53d) |  |  |
| 5 | **PVC MEMBRANE** | 2026-03-07 → 2026-03-31 (+24d) | 2026-05-24 → 2026-04-15 (-39d) |  |  |
| MLTX-02-004-EN-14850 | Pre-Qualification Submittal for PVC Membrane | 2026-03-07 A → 2026-03-31 A (+24d) | 2026-05-24 A → 2026-04-13 A (-41d) | 15d → 12d |  |
| MLTX-02-004-EN-14860 | Pre-Qualification Approval for PVC Membrane | 2026-03-10 A → 2026-04-13 A (+34d) | 2026-05-20 A → 2026-04-15 A (-35d) | 21d → 3d | MLTX-02-004-EN-14850, MLTX-02-004-EN-14800 → MLTX-02-004-EN-14850 |
| 6 | **STEEL TENSION CABLES** | 2026-03-07 → 2026-03-31 (+24d) | 2026-05-24 → 2026-04-15 (-39d) |  |  |
| MLTX-02-004-EN-14870 | Pre-Qualification Submittal for Steel Tension Cables | 2026-03-07 A → 2026-03-31 A (+24d) | 2026-05-20 A → 2026-04-13 A (-37d) | 15d → 12d | MLTX-02-004-EN-14850 SS, MLTX-02-004-EN-14330 → MLTX-02-004-EN-14850 SS |
| MLTX-02-004-EN-15170 | Pre-Qualification Approval for Steel Tension Cables | 2026-03-10 A → 2026-04-13 A (+34d) | 2026-05-24 A → 2026-04-15 A (-39d) | 15d → 3d | MLTX-02-004-EN-14870, MLTX-02-004-EN-14780 → MLTX-02-004-EN-14870 |
| 7 | **EMERGENCY DOORS** | 2026-03-07 → 2026-03-31 (+24d) | 2026-05-24 → 2026-04-15 (-39d) |  |  |
| MLTX-02-004-EN-14880 | Pre-Qualification Submittal for Emergency Doors | 2026-03-07 A → 2026-03-31 A (+24d) | 2026-05-20 A → 2026-04-13 A (-37d) | 15d → 12d | MLTX-02-004-MB-2010, MLTX-02-004-EN-13240 → MLTX-02-004-MB-2010 |
| MLTX-02-004-EN-15180 | Pre-Qualification Approval for Emergency Doors | 2026-03-10 A → 2026-04-13 A (+34d) | 2026-05-24 A → 2026-04-15 A (-39d) | 15d → 3d | MLTX-02-004-EN-14880, MLTX-02-004-EN-13300 → MLTX-02-004-EN-14880 |
| 8 | **PRESSURE UNITS** | 2026-03-07 → 2026-03-31 (+24d) | 2026-05-24 → 2026-04-15 (-39d) |  |  |
| MLTX-02-004-EN-14890 | Pre-Qualification Submittal for Pressure Units | 2026-03-07 A → 2026-03-31 A (+24d) | 2026-05-20 A → 2026-04-13 A (-37d) | 15d → 12d | MLTX-02-004-MB-2010, MLTX-02-004-EN-14330 → MLTX-02-004-MB-2010 |
| MLTX-02-004-EN-15190 | Pre-Qualification Approval for Pressure Units | 2026-03-10 A → 2026-04-13 A (+34d) | 2026-05-24 A → 2026-04-15 A (-39d) | 15d → 3d | MLTX-02-004-EN-14890, MLTX-02-004-EN-14770 → MLTX-02-004-EN-14890 |
| 9 | **AIR LOCK DOORS** | 2026-03-07 → 2026-03-31 (+24d) | 2026-05-24 → 2026-04-15 (-39d) |  |  |
| MLTX-02-004-EN-14900 | Pre-Qualification Submittal for Lock Doors | 2026-03-07 A → 2026-03-31 A (+24d) | 2026-05-20 A → 2026-04-13 A (-37d) | 15d → 12d | MLTX-02-004-MB-2010, MLTX-02-004-EN-14330 → MLTX-02-004-MB-2010 |
| MLTX-02-004-EN-15200 | Pre-Qualification Approval for Lock Doors | 2026-03-10 A → 2026-04-13 A (+34d) | 2026-05-24 A → 2026-04-15 A (-39d) | 15d → 3d | MLTX-02-004-EN-14900, MLTX-02-004-EN-14880 → MLTX-02-004-EN-14900 |
| 15 | **ARTIFICIAL TURF** | 2026-03-07 → 2026-03-31 (+24d) | 2026-04-09 → 2026-04-12 (+3d) |  |  |
| MLTX-02-004-EN-15050 | Pre-Qualification Submittal for Artificial TURF | 2026-03-07 A → 2026-03-31 A (+24d) | 2026-03-29 A → 2026-04-11 A (+13d) | 15d → 10d |  |
| MLTX-02-004-EN-15210 | Pre-Qualification Approval for Artificial TURF | 2026-03-10 A → 2026-04-11 A (+32d) | 2026-04-09 A → 2026-04-12 A (+3d) | 30d → 2d |  |
| 20 | **RUBBER GRANULES** | 2026-03-07 → 2026-03-31 (+24d) | 2026-05-10 → 2026-04-15 (-25d) |  |  |
| MLTX-02-004-EN-15060 | Pre-Qualification Submittal for Rubber Granules | 2026-03-07 A → 2026-03-31 A (+24d) | 2026-05-06 A → 2026-04-13 A (-23d) | 15d → 12d | MLTX-02-004-MB-2010, MLTX-02-004-EN-14330 → MLTX-02-004-MB-2010 |
| MLTX-02-004-EN-15220 | Pre-Qualification Approval for Rubber Granules | 2026-03-10 A → 2026-04-13 A (+34d) | 2026-05-10 A → 2026-04-15 A (-25d) | 21d → 3d | MLTX-02-004-EN-15060, MLTX-02-004-EN-14800 → MLTX-02-004-EN-15060 |
| 21 | **PADEL GLASS** | 2026-03-07 → 2026-03-31 (+24d) | 2026-05-10 → 2026-04-15 (-25d) |  |  |
| MLTX-02-004-EN-15070 | Pre-Qualification Submittal for Padel Glass | 2026-03-07 A → 2026-03-31 A (+24d) | 2026-05-06 A → 2026-04-13 A (-23d) | 15d → 12d | MLTX-02-004-MB-2010, MLTX-02-004-EN-14330 → MLTX-02-004-MB-2010 |
| MLTX-02-004-EN-15230 | Pre-Qualification Approval for Padel Glass | 2026-03-10 A → 2026-04-13 A (+34d) | 2026-05-10 A → 2026-04-15 A (-25d) | 15d → 3d | MLTX-02-004-EN-15070, MLTX-02-004-EN-14780 → MLTX-02-004-EN-15070 |
| 22 | **PADEL WIRE MESH/STEEL SETS** | 2026-03-07 → 2026-03-31 (+24d) | 2026-05-10 → 2026-04-15 (-25d) |  |  |
| MLTX-02-004-EN-15080 | Pre-Qualification Submittal for Wire Mesh/Steel Sets | 2026-03-07 A → 2026-03-31 A (+24d) | 2026-05-06 A → 2026-04-13 A (-23d) | 15d → 12d |  |
| MLTX-02-004-EN-15240 | Pre-Qualification Approval for Wire Mesh/Steel Sets | 2026-03-10 A → 2026-04-13 A (+34d) | 2026-05-10 A → 2026-04-15 A (-25d) | 15d → 3d | MLTX-02-004-EN-15080, MLTX-02-004-EN-14400 → MLTX-02-004-EN-15080 |
| 1 | **AGGREGATE BASE COURSE** | 2026-03-07 → 2026-03-31 (+24d) | 2026-04-26 → 2026-04-15 (-11d) |  |  |
| MLTX-02-004-EN-14300 | Pre-Qualification Submittal for Aggregate Base Course | 2026-03-07 A → 2026-03-31 A (+24d) | 2026-04-19 A → 2026-04-13 A (-6d) | 15d → 12d |  |
| MLTX-02-004-EN-14310 | Pre-Qualification Approval for Aggregate Base Course | 2026-03-10 A → 2026-04-13 A (+34d) | 2026-04-26 A → 2026-04-15 A (-11d) | 21d → 3d |  |
| 16 | **PACKAGE AC UNITS** | 2026-03-10 → 2026-04-04 (+25d) | 2026-04-07 → 2026-04-15 (+8d) |  |  |
| MLTX-02-004-EN-14770 | Pre-Qualification Submittal for Package AC Units | 2026-03-10 A → 2026-04-04 A (+25d) | 2026-04-01 A → 2026-04-13 A (+12d) | 15d → 9d | MLTX-02-004-EN-14890, MLTX-02-004-EN-14900 → MLTX-02-004-EN-14890 |
| MLTX-02-004-EN-14780 | Pre-Qualification Approval for Package AC Units | 2026-03-14 A → 2026-04-13 A (+30d) | 2026-04-07 A → 2026-04-15 A (+8d) | 15d → 3d | MLTX-02-004-EN-14770, MLTX-02-004-EN-14830 → MLTX-02-004-EN-14770 |
| 17 | **AIR DIFUSSERS/GRILLS** | 2026-03-10 → 2026-04-04 (+25d) | 2026-04-30 → 2026-04-15 (-15d) |  |  |
| MLTX-02-004-EN-14790 | Pre-Qualification Submittal for Air Difussers/Grills | 2026-03-10 A → 2026-04-04 A (+25d) | 2026-04-26 A → 2026-04-13 A (-13d) | 15d → 9d | MLTX-02-004-EN-14900, MLTX-02-004-EN-14880 → MLTX-02-004-EN-14900 |
| MLTX-02-004-EN-14800 | Pre-Qualification Approval for Air Difussers/Grills | 2026-03-14 A → 2026-04-13 A (+30d) | 2026-04-30 A → 2026-04-15 A (-15d) | 15d → 3d | MLTX-02-004-EN-14790, MLTX-02-004-EN-14880 → MLTX-02-004-EN-14790 |
| 2 | **BITUMINOUS BASE & WEARING COURSE** | 2026-03-10 → 2026-04-07 (+28d) | 2026-04-26 → 2026-04-14 (-12d) |  |  |
| MLTX-02-004-EN-14320 | Pre-Qualification Submittal for Bituminous Base & Wearing Cource | 2026-03-10 A → 2026-04-07 A (+28d) | 2026-04-19 A → 2026-04-12 A (-7d) | 15d → 5d |  |
| MLTX-02-004-EN-14330 | Pre-Qualification Approval for the Site | 2026-03-14 A → 2026-04-12 A (+29d) | 2026-04-26 A → 2026-04-14 A (-12d) | 15d → 3d |  |
| 3 | **INTERLOCKING PAVING** | 2026-03-12 → 2026-04-11 (+30d) | 2026-03-24 → 2026-04-12 (+19d) |  |  |
| MLTX-02-004-EN-14340 | Pre-Qualification Submittal for Interlocking Block Pavers | 2026-03-12 A → 2026-04-11 A (+30d) | 2026-03-15 A → 2026-04-11 A (+27d) | 15d → 1d | MLTX-02-004-EN-14870, MLTX-02-004-EN-14890 → MLTX-02-004-EN-14870 |
| MLTX-02-004-EN-14400 | Pre-Qualification Approval for Interlocking Block Pavers | 2026-03-16 A → 2026-04-11 A (+26d) | 2026-03-24 A → 2026-04-12 A (+19d) | 15d → 2d | MLTX-02-004-EN-14340, MLTX-02-004-EN-14770 → MLTX-02-004-EN-14340 |

| ID | Task | Start | Finish | Duration | Predecessors |
| --- | --- | --- | --- | --- | --- |
| 4 | **MARKING PAINT** | 2026-03-10 → 2026-04-04 (+25d) | 2026-05-09 → 2026-04-12 (-27d) |  |  |
| MLTX-02-004-EN-14680 | Pre-Qualification Submittal for Marking Paint | 2026-03-10 A → 2026-04-04 A (+25d) | 2026-05-05 A → 2026-04-12 A (-23d) | 15d → 8d | MLTX-02-004-EN-14880, MLTX-02-004-EN-15180 → MLTX-02-004-EN-14880 |
| MLTX-02-004-EN-15250 | Pre-Qualification Approval for Marking Paint | 2026-03-14 A → 2026-04-12 A (+29d) | 2026-05-09 A → 2026-04-12 A (-27d) | 15d → 1d | MLTX-02-004-EN-14680, MLTX-02-004-EN-14190 → MLTX-02-004-EN-14680 |
| 18 | **GALVANIZED DUCTS** | 2026-03-10 → 2026-04-04 (+25d) | 2026-04-30 → 2026-04-15 (-15d) |  |  |
| MLTX-02-004-EN-14810 | Pre-Qualification Submittal for Galvanized Duct | 2026-03-10 A → 2026-04-04 A (+25d) | 2026-04-26 A → 2026-04-13 A (-13d) | 15d → 9d | MLTX-02-004-EN-14790 SS, MLTX-02-004-EN-14880 → MLTX-02-004-EN-14790 SS |
| MLTX-02-004-EN-14820 | Pre-Qualification Approval for Galvanized Duct | 2026-03-14 A → 2026-04-13 A (+30d) | 2026-04-30 A → 2026-04-15 A (-15d) | 15d → 3d | MLTX-02-004-EN-14810, MLTX-02-004-EN-14880 → MLTX-02-004-EN-14810 |
| 19 | **EXHAUST FANS** | 2026-03-10 → 2026-04-04 (+25d) | 2026-04-08 → 2026-04-15 (+7d) |  |  |
| MLTX-02-004-EN-14830 | Pre-Qualification Submittal for Exhaust Fans | 2026-03-10 A → 2026-04-04 A (+25d) | 2026-04-01 A → 2026-04-13 A (+12d) | 15d → 9d | MLTX-02-004-EN-15050, MLTX-02-004-EN-14900 → MLTX-02-004-EN-15050 |
| MLTX-02-004-EN-14840 | Pre-Qualification Approval for Exhaust Fans | 2026-03-14 A → 2026-04-13 A (+30d) | 2026-04-08 A → 2026-04-15 A (+7d) | 15d → 3d | MLTX-02-004-EN-14830, MLTX-02-004-EN-14880 → MLTX-02-004-EN-14830 |
| 10 | **DISTRIBUTION BOARDS** | 2026-03-10 → 2026-04-04 (+25d) | 2026-06-07 → 2026-04-15 (-53d) |  |  |
| MLTX-02-004-EN-14910 | Pre-Qualification Submittal for Distribution Boards | 2026-03-10 A → 2026-04-04 A (+25d) | 2026-05-25 A → 2026-04-13 A (-42d) | 15d → 9d | MLTX-02-004-EN-14900, MLTX-02-004-EN-14880 → MLTX-02-004-EN-14900 |
| MLTX-02-004-EN-14920 | Pre-Qualification Approval for Distribution Boards | 2026-03-14 A → 2026-04-13 A (+30d) | 2026-06-07 A → 2026-04-15 A (-53d) | 15d → 3d | MLTX-02-004-EN-14910, MLTX-02-004-EN-14880 → MLTX-02-004-EN-14910 |
| 11 | **POWER CABLES** | 2026-03-10 → 2026-04-04 (+25d) | 2026-05-11 → 2026-04-15 (-26d) |  |  |
| MLTX-02-004-EN-14930 | Pre-Qualification Submittal for Power Cables | 2026-03-10 A → 2026-04-04 A (+25d) | 2026-05-09 A → 2026-04-13 A (-26d) | 15d → 9d |  |
| MLTX-02-004-EN-14940 | Pre-Qualification Approval for Power Cables | 2026-03-14 A → 2026-04-13 A (+30d) | 2026-05-11 A → 2026-04-15 A (-26d) | 15d → 3d |  |
| 12 | **LIGHT FIXTURES** | 2026-03-10 → 2026-04-04 (+25d) | 2026-06-07 → 2026-04-15 (-53d) |  |  |
| MLTX-02-004-EN-14950 | Pre-Qualification Submittal for Light Fixtures | 2026-03-10 A → 2026-04-04 A (+25d) | 2026-05-25 A → 2026-04-13 A (-42d) | 15d → 9d | MLTX-02-004-EN-15060, MLTX-02-004-EN-14900 → MLTX-02-004-EN-15060 |
| MLTX-02-004-EN-14960 | Pre-Qualification Approval for Light Fixtures | 2026-03-14 A → 2026-04-13 A (+30d) | 2026-06-07 A → 2026-04-15 A (-53d) | 15d → 3d | MLTX-02-004-EN-14950, MLTX-02-004-EN-14880 → MLTX-02-004-EN-14950 |
| 13 | **CCTV MATERIALS** | 2026-03-10 → 2026-04-04 (+25d) | 2026-06-07 → 2026-04-15 (-53d) |  |  |
| MLTX-02-004-EN-14970 | Pre-Qualification Submittal for CCTV | 2026-03-10 A → 2026-04-04 A (+25d) | 2026-05-25 A → 2026-04-13 A (-42d) | 15d → 9d | MLTX-02-004-EN-15070, MLTX-02-004-EN-14890 → MLTX-02-004-EN-15070 |
| MLTX-02-004-EN-14980 | Pre-Qualification Approval for CCTV | 2026-03-14 A → 2026-04-13 A (+30d) | 2026-06-07 A → 2026-04-15 A (-53d) | 15d → 3d | MLTX-02-004-EN-14970, MLTX-02-004-EN-14770 → MLTX-02-004-EN-14970 |
| 14 | **POWER OUTLETS/SWITCHES** | 2026-03-10 → 2026-04-04 (+25d) | 2026-06-07 → 2026-04-15 (-53d) |  |  |
| MLTX-02-004-EN-14990 | Pre-Qualification Submittal for Power Outlets/Switches | 2026-03-10 A → 2026-04-04 A (+25d) | 2026-05-25 A → 2026-04-13 A (-42d) | 15d → 9d | MLTX-02-004-EN-14300, MLTX-02-004-EN-14320 → MLTX-02-004-EN-14300 |
| MLTX-02-004-EN-15000 | Pre-Qualification Approval for Power Outlets/Switches | 2026-03-14 A → 2026-04-13 A (+30d) | 2026-06-07 A → 2026-04-15 A (-53d) | 15d → 3d | MLTX-02-004-EN-14990, MLTX-02-004-EN-14330 → MLTX-02-004-EN-14990 |
| LSC | **LANDSCAPE WORKS** | 2026-03-10 → 2026-04-04 (+25d) | 2026-05-11 → 2026-05-21 (+10d) |  |  |
| 7 | **INTERLOCKING PAVING** | 2026-03-12 → 2026-04-04 (+23d) | 2026-03-24 → 2026-04-12 (+19d) |  |  |
| MLTX-02-004-EN-15030 | Pre-Qualification Submittal for Interlocking Block Pavers | 2026-03-12 A → 2026-04-04 A (+23d) | 2026-03-15 A → 2026-04-11 A (+27d) | 15d → 7d | MLTX-02-004-EN-14300, MLTX-02-004-EN-14240 → MLTX-02-004-EN-14300 |
| MLTX-02-004-EN-15040 | Pre-Qualification Approval for Interlocking Block Pavers | 2026-03-16 A → 2026-04-11 A (+26d) | 2026-03-24 A → 2026-04-12 A (+19d) | 15d → 2d | MLTX-02-004-EN-15030, MLTX-02-004-EN-14250 → MLTX-02-004-EN-15030 |
| 9 | **CURBSTONE** | 2026-03-12 → 2026-04-04 (+23d) | 2026-03-24 → 2026-04-12 (+19d) |  |  |
| MLTX-02-004-EN-15130 | Pre-Qualification Submittal for Curbstone | 2026-03-12 A → 2026-04-04 A (+23d) | 2026-03-15 A → 2026-04-11 A (+27d) | 15d → 7d |  |
| MLTX-02-004-EN-15140 | Pre-Qualification Approval for Curbstone | 2026-03-16 A → 2026-04-11 A (+26d) | 2026-03-24 A → 2026-04-12 A (+19d) | 15d → 2d |  |
| 1 | **PAVEMENT MARKING** | 2026-03-10 → 2026-04-04 (+25d) | 2026-05-09 → 2026-04-12 (-27d) |  |  |
| MLTX-02-004-EN-14350 | Pre-Qualification Submittal for Pavement Markings | 2026-03-10 A → 2026-04-04 A (+25d) | 2026-05-05 A → 2026-04-06 A (-29d) | 15d → 3d | MLTX-02-004-EN-14300, MLTX-02-004-EN-14240 → MLTX-02-004-EN-14300 |
| MLTX-02-004-EN-14410 | Pre-Qualification Approval for Pavement Markings | 2026-03-14 A → 2026-04-07 A (+24d) | 2026-05-09 A → 2026-04-12 A (-27d) | 15d → 5d | MLTX-02-004-EN-14350, MLTX-02-004-EN-14250 → MLTX-02-004-EN-14350 |
| 2 | **TRAFFIC SIGNS** | 2026-03-10 → 2026-05-06 (+57d) | 2026-05-09 → 2026-05-21 (+12d) |  |  |
| MLTX-02-004-EN-14360 | Pre-Qualification Submittal for Traffic Signs | 2026-03-10 A → 2026-05-06 A (+57d) | 2026-05-05 A → 2026-05-06 A (+1d) | 15d → 1d | MLTX-02-004-EN-14300, MLTX-02-004-EN-14250 → MLTX-02-004-EN-14300 |
| MLTX-02-004-EN-14370 | Pre-Qualification Approval for Traffic Signs | 2026-03-14 A → 2026-05-21 A (+68d) | 2026-05-09 A → 2026-05-21 A (+12d) | 15d → 1d | MLTX-02-004-EN-14360, MLTX-02-004-EN-15120 → MLTX-02-004-EN-14360 |
| 3 | **IRRIGATION PIPES/SPRINKLERS** | 2026-03-10 → 2026-04-04 (+25d) | 2026-05-05 → 2026-05-21 (+16d) |  |  |
| MLTX-02-004-EN-14420 | Pre-Qualification Submittal for Irrigation Pipes/Sprinkles | 2026-03-10 A → 2026-04-04 A (+25d) | 2026-04-14 A → 2026-04-26 A (+12d) | 15d → 20d |  |
| MLTX-02-004-EN-14430 | Pre-Qualification Approval for Irrigation Pipes/Sprinkles | 2026-03-14 A → 2026-05-21 A (+68d) | 2026-05-05 A → 2026-05-21 A (+16d) | 15d → 1d |  |
| 5 | **AGRICULTURE SOIL** | 2026-03-10 → 2026-04-04 (+25d) | 2026-05-05 → 2026-05-21 (+16d) |  |  |
| MLTX-02-004-EN-15090 | Pre-Qualification Submittal for Agriculture Soil | 2026-03-10 A → 2026-04-04 A (+25d) | 2026-04-14 A → 2026-04-26 A (+12d) | 15d → 20d | MLTX-02-004-EN-14300, MLTX-02-004-EN-14360 → MLTX-02-004-EN-14300 |
| MLTX-02-004-EN-15100 | Pre-Qualification Approval for Agriculture Soil | 2026-03-14 A → 2026-05-21 A (+68d) | 2026-05-05 A → 2026-05-21 A (+16d) | 15d → 1d | MLTX-02-004-EN-15090, MLTX-02-004-EN-14370 → MLTX-02-004-EN-15090 |
| 8 | **TRACK SURFACE** | 2026-03-10 → 2026-04-04 (+25d) | 2026-05-05 → 2026-04-12 (-23d) |  |  |
| MLTX-02-004-EN-15110 | Pre-Qualification Submittal for Track Surface | 2026-03-10 A → 2026-04-04 A (+25d) | 2026-04-19 A → 2026-04-06 A (-13d) | 15d → 3d | MLTX-02-004-EN-14300, MLTX-02-004-EN-14240 → MLTX-02-004-EN-14300 |
| MLTX-02-004-EN-15120 | Pre-Qualification Approval for Track Surface | 2026-03-14 A → 2026-04-07 A (+24d) | 2026-05-05 A → 2026-04-12 A (-23d) | 15d → 5d | MLTX-02-004-EN-15110, MLTX-02-004-EN-14250 → MLTX-02-004-EN-15110 |
| 10 | **GRASS/TREES** | 2026-03-10 → 2026-04-04 (+25d) | 2026-05-05 → 2026-04-19 (-16d) |  |  |
| MLTX-02-004-EN-15150 | Pre-Qualification Submittal for Grass/Trees | 2026-03-10 A → 2026-04-04 A (+25d) |  | 15d → 10d | MLTX-02-004-EN-14300, MLTX-02-004-EN-14250 → MLTX-02-004-EN-14300 |
| MLTX-02-004-EN-15160 | Pre-Qualification Approval for Grass/Trees | 2026-03-14 A → 2026-04-14 A (+31d) | 2026-05-05 A → 2026-04-19 A (-16d) | 15d → 5d | MLTX-02-004-EN-15150, MLTX-02-004-EN-14690 → MLTX-02-004-EN-15150 |
| 6 | **CABLES** | 2026-03-10 → 2026-05-06 (+57d) | 2026-05-11 → 2026-05-07 (-4d) |  |  |
| MLTX-02-004-EN-15010 | Pre-Qualification Submittal for Cables | 2026-03-10 A → 2026-05-06 A (+57d) | 2026-05-09 A → 2026-05-06 A (-3d) | 15d → 1d | MLTX-02-004-EN-14300, MLTX-02-004-EN-14360 → MLTX-02-004-EN-14300 |
| MLTX-02-004-EN-15020 | Pre-Qualification Approval for Cables | 2026-03-14 A → 2026-05-07 A (+54d) | 2026-05-11 A → 2026-05-07 A (-4d) | 15d → 1d | MLTX-02-004-EN-15010, MLTX-02-004-EN-14370 → MLTX-02-004-EN-15010 |
| 4 | **LIGHT POLES** | 2026-03-10 → 2026-05-06 (+57d) | 2026-04-30 → 2026-05-07 (+7d) |  |  |
| MLTX-02-004-EN-14240 | Pre-Qualification Submittal for Lighting poles | 2026-03-10 A → 2026-05-06 A (+57d) | 2026-04-26 A → 2026-05-06 A (+10d) | 15d → 1d |  |
| MLTX-02-004-EN-14250 | Pre-Qualification Approval for Lighting poles | 2026-03-14 A → 2026-05-07 A (+54d) | 2026-04-30 A → 2026-05-07 A (+7d) | 15d → 1d |  |
| MAT | **MATERIAL SUBMITTAL** | 2026-03-19 → 2026-04-11 (+23d) | 2026-09-12 → 2026-08-19 (-24d) |  |  |
| TOI | **TOILET/SERVICE WORKS** | 2026-03-18 → 2026-04-11 (+24d) | 2026-07-11 → 2026-07-22 (+11d) |  |  |
| 1 | **STEEL REINFORCEMENT** | 2026-03-18 → 2026-04-11 (+24d) |  |  |  |
| MLTX-02-004-EN-13260 | Material Submittal for Steel Reinforcement | 2026-03-18 A → 2026-04-11 A (+24d) | 2026-04-07 A → 2026-04-11 A (+4d) | 15d → 1d |  |
| MLTX-02-004-EN-13370 | Material Approval for Steel Reinforcement | 2026-03-25 A → 2026-04-11 A (+17d) |  | 15d → 2d | MLTX-02-004-EN-13260, MLTX-02-004-EN-13460 → MLTX-02-004-EN-13260 |
| 2 | **READY MIX CONCRETE** | 2026-03-18 → 2026-04-14 (+27d) | 2026-04-12 → 2026-04-15 (+3d) |  |  |
| MLTX-02-004-EN-13270 | Material Submittal for Ready Mixed Concrete | 2026-03-18 A → 2026-04-14 A (+27d) | 2026-04-07 A → 2026-04-14 A (+7d) | 15d → 1d |  |
| MLTX-02-004-EN-13280 | Material Approval of Ready Mixed Concrete | 2026-03-25 A → 2026-04-14 A (+20d) | 2026-04-12 A → 2026-04-15 A (+3d) | 15d → 2d |  |
| 3 | **CONCRETE BLOCKS** | 2026-03-18 → 2026-04-13 (+26d) | 2026-05-11 → 2026-04-15 (-26d) |  |  |
| MLTX-02-004-EN-13460 | Material Submittal for Concrete Blocks | 2026-03-18 A → 2026-04-13 A (+26d) | 2026-05-06 A → 2026-04-14 A (-22d) | 15d → 2d | MLTX-02-004-EN-14490, MLTX-02-004-EN-13320 → MLTX-02-004-EN-14490 |
| MLTX-02-004-EN-13470 | Material Approval for Concrete Blocks | 2026-03-25 A → 2026-04-13 A (+19d) | 2026-05-11 A → 2026-04-15 A (-26d) | 15d → 3d | MLTX-02-004-EN-13460, MLTX-02-004-EN-13480 → MLTX-02-004-EN-13460 |
| 6 | **FLOOR/WALL TILES** | 2026-03-18 → 2026-04-15 (+28d) | 2026-05-17 → 2026-07-22 (+66d) |  |  |
| MLTX-02-004-EN-13480 | Material Submittal for Tilling Materials | 2026-03-18 A → 2026-04-15 A (+28d) | 2026-05-13 A → 2026-04-18 A (-25d) | 15d → 3d | MLTX-02-004-EN-14510, MLTX-02-004-EN-13320 → MLTX-02-004-EN-14510 |
| MLTX-02-004-EN-13490 | Material Approval for Tilling Material | 2026-03-25 A → 2026-07-22 A (+119d) | 2026-05-17 A → 2026-07-22 A (+66d) | 15d → 6d | MLTX-02-004-EN-13480, MLTX-02-004-EN-13560 → MLTX-02-004-EN-13480 |
| 7 | **SUSPENDED CEILING** | 2026-03-18 → 2026-04-15 (+28d) | 2026-04-19 → 2026-04-20 (+1d) |  |  |

| ID | Task | Start | Finish | Duration | Predecessors |
| --- | --- | --- | --- | --- | --- |
| MLTX-02-004-EN-13500 | Material Submittal for Suspend Ceiling | 2026-03-18 A → 2026-04-15 A (+28d) | 2026-04-15 A → 2026-04-18 A (+3d) | 15d → 3d | MLTX-02-004-EN-14530, MLTX-02-004-EN-13560 → MLTX-02-004-EN-14530 |
| MLTX-02-004-EN-13510 | Material Approval for Suspend Ceiling | 2026-03-25 A → 2026-04-19 A (+25d) | 2026-04-19 A → 2026-04-20 A (+1d) | 15d → 2d | MLTX-02-004-EN-13500, MLTX-02-004-EN-13560 → MLTX-02-004-EN-13500 |
| 8 | **DOORS/WINDOWS** | 2026-03-18 → 2026-05-06 (+49d) | 2026-05-06 → 2026-05-21 (+15d) |  |  |
| MLTX-02-004-EN-13520 | Material Submittal for Doors/Windows | 2026-03-18 A → 2026-05-06 A (+49d) |  | 15d → 1d | MLTX-02-004-EN-14550, MLTX-02-004-EN-14190 → MLTX-02-004-EN-14550 |
| MLTX-02-004-EN-13530 | Material Approval for Doors/Windows | 2026-03-25 A → 2026-05-21 A (+57d) | 2026-04-12 A → 2026-05-21 A (+39d) | 15d → 1d | MLTX-02-004-EN-13520, MLTX-02-004-EN-13620 → MLTX-02-004-EN-13520 |
| 9 | **FURNITURES** | 2026-03-18 → 2026-05-06 (+49d) | 2026-04-07 → 2026-05-07 (+30d) |  |  |
| MLTX-02-004-EN-13640 | Material Submittal for Furnitures | 2026-03-18 A → 2026-05-06 A (+49d) | 2026-04-02 A → 2026-05-06 A (+34d) | 15d → 1d | MLTX-02-004-EN-14670, MLTX-02-004-EN-13560 → MLTX-02-004-EN-14670 |
| MLTX-02-004-EN-13650 | Material Approval for Furnitures | 2026-03-25 A → 2026-05-07 A (+43d) | 2026-04-07 A → 2026-05-07 A (+30d) | 15d → 1d | MLTX-02-004-EN-13640, MLTX-02-004-EN-13560 → MLTX-02-004-EN-13640 |
| 10 | **SANITARY FIXTURES** | 2026-03-18 → 2026-04-15 (+28d) | 2026-04-16 → 2026-04-30 (+14d) |  |  |
| MLTX-02-004-EN-13540 | Material Submittal for Sanitary Fixtures | 2026-03-18 A → 2026-04-15 A (+28d) | 2026-04-13 A → 2026-04-21 A (+8d) | 15d → 6d | MLTX-02-004-EN-14570, MLTX-02-004-EN-13260 → MLTX-02-004-EN-14570 |
| MLTX-02-004-EN-13550 | Material Approval for Sanitary Fixtures | 2026-03-25 A → 2026-04-19 A (+25d) | 2026-04-16 A → 2026-04-30 A (+14d) | 15d → 11d | MLTX-02-004-EN-13540, MLTX-02-004-EN-13280 → MLTX-02-004-EN-13540 |
| 11 | **WATER SUPPLY PIPES** | 2026-03-18 → 2026-04-15 (+28d) |  |  |  |
| MLTX-02-004-EN-13560 | Material Submittal for Water Supply Pipes | 2026-03-18 A → 2026-04-15 A (+28d) | 2026-04-04 A → 2026-04-15 A (+11d) | 15d → 1d | MLTX-02-004-EN-14590, MLTX-02-004-EN-13320 → MLTX-02-004-EN-14590 |
| MLTX-02-004-EN-13570 | Material Approval for Water Supply Pipes | 2026-03-25 A → 2026-04-15 A (+21d) |  | 15d → 2d | MLTX-02-004-EN-13560, MLTX-02-004-EN-13520 → MLTX-02-004-EN-13560 |
| 12 | **SEWAGE/DRAINAGE PIPES** | 2026-03-18 → 2026-04-15 (+28d) |  |  |  |
| MLTX-02-004-EN-13580 | Material Submittal for Sewage/Drainage Pipes | 2026-03-18 A → 2026-04-15 A (+28d) | 2026-04-04 A → 2026-04-15 A (+11d) | 15d → 1d |  |
| MLTX-02-004-EN-13590 | Material Approval for Sewage/Drainage Pipes | 2026-03-25 A → 2026-04-15 A (+21d) |  | 15d → 2d |  |
| 16 | **PACKAGE AC UNITS** | 2026-06-21 → 2026-05-06 (-46d) | 2026-07-02 → 2026-05-07 (-56d) |  |  |
| MLTX-02-004-EN-13670 | Material Submittal for Package AC Units | 2026-06-21 A → 2026-05-06 A (-46d) | 2026-06-21 A → 2026-05-06 A (-46d) | 15d → 1d | MLTX-02-004-EN-14700, MLTX-02-004-EN-13430 → MLTX-02-004-EN-14700 |
| MLTX-02-004-EN-13680 | Material Approval for Package AC Units | 2026-07-02 A → 2026-05-07 A (-56d) | 2026-07-02 A → 2026-05-07 A (-56d) | 15d → 1d | MLTX-02-004-EN-13670, MLTX-02-004-EN-13440 → MLTX-02-004-EN-13670 |
| 17 | **AIR DIFUSSERS/GRILLS** | 2026-06-11 → 2026-04-16 (-56d) | 2026-06-11 → 2026-05-07 (-35d) |  |  |
| MLTX-02-004-EN-13690 | Material Submittal for Air Diffusers/Grills | 2026-06-11 A → 2026-04-16 A (-56d) | 2026-06-11 A → 2026-04-22 A (-50d) | 15d → 6d | MLTX-02-004-EN-14720, MLTX-02-004-EN-14190 → MLTX-02-004-EN-14720 |
| MLTX-02-004-EN-13700 | Material Approval for Air Diffusers/Grills | 2026-06-11 A → 2026-05-07 A (-35d) | 2026-06-11 A → 2026-05-07 A (-35d) | 15d → 1d | MLTX-02-004-EN-13690, MLTX-02-004-EN-14190 → MLTX-02-004-EN-13690 |
| 18 | **GALVANIZED DUCTS** | 2026-03-19 → 2026-06-13 (+86d) | 2026-05-10 → 2026-06-18 (+39d) |  |  |
| MLTX-02-004-EN-13710 | Material Submittal for Galvanized Ducts | 2026-03-19 A → 2026-06-13 A (+86d) | 2026-05-06 A → 2026-06-13 A (+38d) | 15d → 1d |  |
| MLTX-02-004-EN-13720 | Material Approval for Galvanized Ducts | 2026-03-26 A → 2026-06-18 A (+84d) | 2026-05-10 A → 2026-06-18 A (+39d) | 15d → 1d |  |
| 19 | **EXHAUST FANS** | 2026-06-11 → 2026-04-16 (-56d) | 2026-06-11 → 2026-05-06 (-36d) |  |  |
| MLTX-02-004-EN-13730 | Material Submittal for Exhaust Fans | 2026-06-11 A → 2026-04-16 A (-56d) | 2026-06-11 A → 2026-04-18 A (-54d) | 15d → 2d |  |
| MLTX-02-004-EN-13740 | Material Approval for Exhaust Fans | 2026-06-11 A → 2026-05-06 A (-36d) | 2026-06-11 A → 2026-05-06 A (-36d) | 15d → 1d |  |
| 13 | **LIGHTING FIXTURES** | 2026-07-11 → 2026-04-16 (-86d) | 2026-07-11 → 2026-04-25 (-77d) |  |  |
| MLTX-02-004-EN-13600 | Material Submittal for Lighting Fixtures | 2026-07-11 A → 2026-04-16 A (-86d) | 2026-07-11 A → 2026-04-19 A (-83d) | 15d → 3d |  |
| MLTX-02-004-EN-13610 | Material Approval for Lighting Fixtures | 2026-07-11 A → 2026-04-20 A (-82d) | 2026-07-11 A → 2026-04-25 A (-77d) | 15d → 5d |  |
| 14 | **SWITCHES/SOCKETS** | 2026-06-25 → 2026-04-16 (-70d) | 2026-06-27 → 2026-04-25 (-63d) |  |  |
| MLTX-02-004-EN-13620 | Material Submittal for Switches/Sockets | 2026-06-25 A → 2026-04-16 A (-70d) | 2026-06-25 A → 2026-04-19 A (-67d) | 15d → 3d | MLTX-02-004-EN-14650, MLTX-02-004-EN-14190 → MLTX-02-004-EN-14650 |
| MLTX-02-004-EN-13630 | Material Approval for Switches/Sockets | 2026-06-27 A → 2026-04-20 A (-68d) | 2026-06-27 A → 2026-04-25 A (-63d) | 15d → 5d | MLTX-02-004-EN-13620, MLTX-02-004-EN-13690 → MLTX-02-004-EN-13620 |
| 15 | **EARTHING SYSTEM** | 2026-03-19 → 2026-05-06 (+48d) | 2026-05-19 → 2026-05-07 (-12d) |  |  |
| MLTX-02-004-EN-13420 | Material Submittal for Earthing System | 2026-03-19 A → 2026-05-06 A (+48d) | 2026-05-14 A → 2026-05-06 A (-8d) | 15d → 1d | MLTX-02-004-EN-14450, MLTX-02-004-EN-13560 → MLTX-02-004-EN-14450 |
| MLTX-02-004-EN-13430 | Material Approval for Earthing System | 2026-03-26 A → 2026-05-07 A (+42d) | 2026-05-19 A → 2026-05-07 A (-12d) | 15d → 1d | MLTX-02-004-EN-13420, MLTX-02-004-EN-13520 → MLTX-02-004-EN-13420 |
| 5 | **DISTRIBUTION PANNELS** | 2026-03-19 → 2026-04-16 (+28d) | 2026-06-18 → 2026-04-25 (-54d) |  |  |
| MLTX-02-004-EN-13440 | Material Submittal for Distribution Panels | 2026-03-19 A → 2026-04-16 A (+28d) | 2026-05-11 A → 2026-04-19 A (-22d) | 15d → 3d | MLTX-02-004-EN-14470, MLTX-02-004-EN-13530 → MLTX-02-004-EN-14470 |
| MLTX-02-004-EN-13450 | Material Approval for Distribution Panels | 2026-06-18 A → 2026-04-20 A (-59d) | 2026-06-18 A → 2026-04-25 A (-54d) | 15d → 5d | MLTX-02-004-EN-13440, MLTX-02-004-EN-14230 → MLTX-02-004-EN-13440 |
| PLG | **PLAYGROUND WORKS** | 2026-03-18 → 2026-04-12 (+25d) | 2026-09-12 → 2026-08-19 (-24d) |  |  |
| 5 | **PVC MEMBRANE** | 2026-08-26 → 2026-05-06 (-112d) | 2026-08-26 → 2026-07-27 (-30d) |  |  |
| MLTX-02-004-EN-13830 | Material Submittal for PVC Membrane | 2026-08-26 A → 2026-05-06 A (-112d) | 2026-08-26 A → 2026-05-06 A (-112d) | 21d → 1d | MLTX-02-004-EN-14860, MLTX-02-004-EN-13330 → MLTX-02-004-EN-14860 |
| MLTX-02-004-EN-13840 | Material Approval for PVC Membrane | 2026-08-26 A → 2026-07-27 A (-30d) | 2026-08-26 A → 2026-07-27 A (-30d) | 21d → 10d | MLTX-02-004-EN-13830, MLTX-02-004-EN-14040 → MLTX-02-004-EN-13830 |
| 6 | **STEEL TENSION CABLES** | 2026-08-26 → 2026-05-06 (-112d) | 2026-08-26 → 2026-08-02 (-24d) |  |  |
| MLTX-02-004-EN-13850 | Material Submittal for Steel Tension Cables | 2026-08-26 A → 2026-05-06 A (-112d) | 2026-08-26 A → 2026-05-06 A (-112d) | 15d → 1d | MLTX-02-004-EN-15170, MLTX-02-004-EN-14190 → MLTX-02-004-EN-15170 |
| MLTX-02-004-EN-14150 | Material Approval for Steel Tension Cables | 2026-08-26 A → 2026-08-01 A (-25d) | 2026-08-26 A → 2026-08-02 A (-24d) | 15d → 10d | MLTX-02-004-EN-13850, MLTX-02-004-EN-13750 → MLTX-02-004-EN-13850 |
| 7 | **EMERGENCY DOORS** | 2026-08-26 → 2026-05-06 (-112d) | 2026-09-12 → 2026-08-19 (-24d) |  |  |
| MLTX-02-004-EN-13860 | Material Submittal for Emergency Doors | 2026-08-26 A → 2026-05-06 A (-112d) | 2026-08-26 A → 2026-05-06 A (-112d) | 15d → 1d | MLTX-02-004-EN-15180, MLTX-02-004-EN-14190 → MLTX-02-004-EN-15180 |
| MLTX-02-004-EN-14160 | Material Approval for Emergency Doors | 2026-09-12 A → 2026-08-19 A (-24d) | 2026-09-12 A → 2026-08-19 A (-24d) | 15d → 10d | MLTX-02-004-EN-13860, MLTX-02-004-EN-12570 → MLTX-02-004-EN-13860 |
| 8 | **PRESSURE UNITS** | 2026-09-12 → 2026-05-06 (-129d) | 2026-09-12 → 2026-05-09 (-126d) |  |  |
| MLTX-02-004-EN-13870 | Material Submittal for Pressure Units | 2026-09-12 A → 2026-05-06 A (-129d) | 2026-09-12 A → 2026-05-06 A (-129d) | 15d → 1d | MLTX-02-004-EN-15190, MLTX-02-004-EN-14190 → MLTX-02-004-EN-15190 |
| MLTX-02-004-EN-14170 | Material Approval for Pressure Units | 2026-09-12 A → 2026-05-07 A (-128d) | 2026-09-12 A → 2026-05-09 A (-126d) | 15d → 10d | MLTX-02-004-EN-13870, MLTX-02-004-EN-14190 → MLTX-02-004-EN-13870 |
| 9 | **AIR LOCK DOORS** | 2026-08-26 → 2026-05-06 (-112d) | 2026-09-12 → 2026-05-21 (-114d) |  |  |
| MLTX-02-004-EN-13880 | Material Submittal for Lock Doors | 2026-08-26 A → 2026-05-06 A (-112d) | 2026-08-26 A → 2026-05-11 A (-107d) | 15d → 5d | MLTX-02-004-EN-15200, MLTX-02-004-EN-14190 → MLTX-02-004-EN-15200 |
| MLTX-02-004-EN-14180 | Material Approval for Lock Doors | 2026-09-12 A → 2026-05-21 A (-114d) | 2026-09-12 A → 2026-05-21 A (-114d) | 15d → 1d | MLTX-02-004-EN-13880, MLTX-02-004-EN-14190 → MLTX-02-004-EN-13880 |
| 15 | **ARTIFICIAL TURF** | 2026-03-18 → 2026-04-12 (+25d) | 2026-05-19 → 2026-04-30 (-19d) |  |  |
| MLTX-02-004-EN-14030 | Material Submittal for Artificial TURF | 2026-03-18 A → 2026-04-12 A (+25d) | 2026-05-14 A → 2026-04-28 A (-16d) | 30d → 15d |  |
| MLTX-02-004-EN-14190 | Material Approval for Artificial TURF | 2026-03-25 A → 2026-04-28 A (+34d) | 2026-05-19 A → 2026-04-30 A (-19d) | 30d → 3d |  |
| 20 | **RUBBER GRANULES** | 2026-03-18 → 2026-05-06 (+49d) | 2026-05-19 → 2026-07-22 (+64d) |  |  |
| MLTX-02-004-EN-14040 | Material Submittal for Rubber Granules | 2026-03-18 A → 2026-05-06 A (+49d) | 2026-05-14 A → 2026-05-06 A (-8d) | 21d → 1d | MLTX-02-004-EN-15220, MLTX-02-004-EN-13770 → MLTX-02-004-EN-15220 |
| MLTX-02-004-EN-14200 | Material Approval for Rubber Granules | 2026-03-25 A → 2026-07-22 A (+119d) | 2026-05-19 A → 2026-07-22 A (+64d) | 21d → 10d | MLTX-02-004-EN-14040, MLTX-02-004-EN-14230 → MLTX-02-004-EN-14040 |
| 21 | **PADEL GLASS** | 2026-03-18 → 2026-05-06 (+49d) | 2026-05-19 → 2026-05-21 (+2d) |  |  |
| MLTX-02-004-EN-14050 | Material Submittal for Padel Glass | 2026-03-18 A → 2026-05-06 A (+49d) | 2026-05-14 A → 2026-05-06 A (-8d) | 15d → 1d | MLTX-02-004-EN-15230, MLTX-02-004-EN-14190 → MLTX-02-004-EN-15230 |
| MLTX-02-004-EN-14210 | Material Approval for Padel Glass | 2026-03-25 A → 2026-05-21 A (+57d) | 2026-05-19 A → 2026-05-21 A (+2d) | 15d → 1d | MLTX-02-004-EN-14050, MLTX-02-004-EN-13750 → MLTX-02-004-EN-14050 |
| 22 | **PADEL WIRE MESH/STEEL SETS** | 2026-03-18 → 2026-05-25 (+68d) | 2026-05-19 → 2026-07-22 (+64d) |  |  |
| MLTX-02-004-EN-14060 | Material Submittal for Wire Mesh/Steel Sets | 2026-03-18 A → 2026-05-25 A (+68d) | 2026-05-14 A → 2026-05-25 A (+11d) | 15d → 1d | MLTX-02-004-EN-15240, MLTX-02-004-EN-14190 → MLTX-02-004-EN-15240 |
| MLTX-02-004-EN-14220 | Material Approval for Wire Mesh/Steel Sets | 2026-03-25 A → 2026-07-22 A (+119d) | 2026-05-19 A → 2026-07-22 A (+64d) | 15d → 10d | MLTX-02-004-EN-14060, MLTX-02-004-EN-13330 → MLTX-02-004-EN-14060 |
| 1 | **AGGREGATE BASE COURSE** | 2026-03-18 → 2026-05-21 (+64d) | 2026-05-03 → 2026-06-06 (+34d) |  |  |

| ID | Task | Start | Finish | Duration | Predecessors |
| --- | --- | --- | --- | --- | --- |
| MLTX-02-004-EN-13290 | Material Submittal for Aggregate Base Course | 2026-03-18 A → 2026-05-21 A (+64d) | 2026-04-30 A → 2026-05-21 A (+21d) | 21d → 1d |  |
| MLTX-02-004-EN-13300 | Material Approval for Aggregate Base Course | 2026-03-25 A → 2026-06-06 A (+73d) | 2026-05-03 A → 2026-06-06 A (+34d) | 21d → 1d |  |
| 16 | **PACKAGE AC UNITS** | 2026-07-11 → 2026-05-21 (-51d) | 2026-07-11 → 2026-05-21 (-51d) |  |  |
| MLTX-02-004-EN-13750 | Material Submittal for Package AC Units | 2026-07-11 A → 2026-05-21 A (-51d) | 2026-07-11 A → 2026-05-21 A (-51d) | 15d → 1d | MLTX-02-004-EN-14780, MLTX-02-004-EN-14190 → MLTX-02-004-EN-14780 |
| MLTX-02-004-EN-13760 | Material Approval for Package AC Units | 2026-07-11 A → 2026-05-21 A (-51d) | 2026-07-11 A → 2026-05-21 A (-51d) | 15d → 1d | MLTX-02-004-EN-13750, MLTX-02-004-EN-14190 → MLTX-02-004-EN-13750 |
| 17 | **AIR DIFUSSERS/GRILLS** | 2026-09-12 → 2026-04-13 (-152d) | 2026-09-12 → 2026-05-06 (-129d) |  |  |
| MLTX-02-004-EN-13770 | Material Submittal for Air Difussers/Grills | 2026-09-12 A → 2026-04-13 A (-152d) | 2026-09-12 A → 2026-04-22 A (-143d) | 15d → 9d | MLTX-02-004-EN-14800, MLTX-02-004-EN-14190 → MLTX-02-004-EN-14800 |
| MLTX-02-004-EN-13780 | Material Approval for Air Difussers/Grills | 2026-09-12 A → 2026-05-06 A (-129d) | 2026-09-12 A → 2026-05-06 A (-129d) | 15d → 1d | MLTX-02-004-EN-13770, MLTX-02-004-EN-14190 → MLTX-02-004-EN-13770 |
| 2 | **BITUMINOUS BASE & WEARING COURSE** | 2026-03-19 → 2026-04-16 (+28d) | 2026-05-04 → 2026-04-18 (-16d) |  |  |
| MLTX-02-004-EN-13310 | Material Submittal for Bituminous Base & Wearing Cource | 2026-03-19 A → 2026-04-16 A (+28d) | 2026-04-30 A → 2026-04-18 A (-12d) | 15d → 2d | MLTX-02-004-EN-14330, MLTX-02-004-EN-13290 → MLTX-02-004-EN-14330 |
| MLTX-02-004-EN-13320 | Material Approval for the Site | 2026-03-26 A → 2026-04-18 A (+23d) | 2026-05-04 A → 2026-04-18 A (-16d) | 15d → 1d | MLTX-02-004-EN-13310, MLTX-02-004-EN-13920 → MLTX-02-004-EN-13310 |
| 3 | **INTERLOCKING PAVING** | 2026-03-19 → 2026-05-21 (+63d) | 2026-05-10 → 2026-05-21 (+11d) |  |  |
| MLTX-02-004-EN-13330 | Material Submittal for Interlocking Block Pavers | 2026-03-19 A → 2026-05-21 A (+63d) | 2026-05-05 A → 2026-05-21 A (+16d) | 15d → 1d | MLTX-02-004-EN-14400, MLTX-02-004-EN-14190 → MLTX-02-004-EN-14400 |
| MLTX-02-004-EN-13380 | Material Approval for Interlocking Block Pavers | 2026-03-26 A → 2026-05-21 A (+56d) | 2026-05-10 A → 2026-05-21 A (+11d) | 15d → 1d | MLTX-02-004-EN-13330, MLTX-02-004-EN-14190 → MLTX-02-004-EN-13330 |
| 4 | **MARKING PAINT** | 2026-03-19 → 2026-04-13 (+25d) | 2026-05-18 → 2026-04-19 (-29d) |  |  |
| MLTX-02-004-EN-13660 | Material Submittal for Marking Paint | 2026-03-19 A → 2026-04-13 A (+25d) | 2026-05-13 A → 2026-04-18 A (-25d) | 15d → 5d | MLTX-02-004-EN-15250, MLTX-02-004-EN-13860 → MLTX-02-004-EN-15250 |
| MLTX-02-004-EN-14230 | Material Approval for Marking Paint | 2026-03-26 A → 2026-04-18 A (+23d) | 2026-05-18 A → 2026-04-19 A (-29d) | 15d → 2d | MLTX-02-004-EN-13660, MLTX-02-004-EN-14160 → MLTX-02-004-EN-13660 |
| 18 | **GALVANIZED DUCTS** | 2026-03-19 → 2026-06-13 (+86d) | 2026-05-10 → 2026-06-18 (+39d) |  |  |
| MLTX-02-004-EN-13790 | Material Submittal for Galvanized Duct | 2026-03-19 A → 2026-06-13 A (+86d) | 2026-05-06 A → 2026-06-13 A (+38d) | 15d → 1d | MLTX-02-004-EN-14820, MLTX-02-004-EN-14190 → MLTX-02-004-EN-14820 |
| MLTX-02-004-EN-13800 | Material Approval for Galvanized Duct | 2026-03-26 A → 2026-06-18 A (+84d) | 2026-05-10 A → 2026-06-18 A (+39d) | 15d → 1d | MLTX-02-004-EN-13790, MLTX-02-004-EN-14190 → MLTX-02-004-EN-13790 |
| 19 | **EXHAUST FANS** | 2026-06-11 → 2026-04-13 (-59d) | 2026-06-11 → 2026-05-06 (-36d) |  |  |
| MLTX-02-004-EN-13810 | Material Submittal for Exhaust Fans | 2026-06-11 A → 2026-04-13 A (-59d) | 2026-06-11 A → 2026-04-18 A (-54d) | 15d → 5d | MLTX-02-004-EN-14840, MLTX-02-004-EN-14190 → MLTX-02-004-EN-14840 |
| MLTX-02-004-EN-13820 | Material Approval for Exhaust Fans | 2026-06-11 A → 2026-05-06 A (-36d) | 2026-06-11 A → 2026-05-06 A (-36d) | 15d → 1d | MLTX-02-004-EN-13810, MLTX-02-004-EN-14190 → MLTX-02-004-EN-13810 |
| 10 | **DISTRIBUTION BOARDS** | 2026-06-15 → 2026-04-13 (-63d) | 2026-06-18 → 2026-04-22 (-57d) |  |  |
| MLTX-02-004-EN-13890 | Material Submittal for Distribution Boards | 2026-06-15 A → 2026-04-13 A (-63d) | 2026-06-15 A → 2026-04-15 A (-61d) | 15d → 3d | MLTX-02-004-EN-14920, MLTX-02-004-EN-14190 → MLTX-02-004-EN-14920 |
| MLTX-02-004-EN-13900 | Material Approval for Distribution Boards | 2026-06-18 A → 2026-04-16 A (-63d) | 2026-06-18 A → 2026-04-22 A (-57d) | 15d → 6d | MLTX-02-004-EN-13890, MLTX-02-004-EN-14190 → MLTX-02-004-EN-13890 |
| 11 | **POWER CABLES** | 2026-03-19 → 2026-04-13 (+25d) | 2026-05-19 → 2026-04-22 (-27d) |  |  |
| MLTX-02-004-EN-13910 | Material Submittal for Power Cables | 2026-03-19 A → 2026-04-13 A (+25d) | 2026-05-14 A → 2026-04-15 A (-29d) | 15d → 3d |  |
| MLTX-02-004-EN-13920 | Material Approval for Power Cables | 2026-03-26 A → 2026-04-16 A (+21d) | 2026-05-19 A → 2026-04-22 A (-27d) | 15d → 6d |  |
| 12 | **LIGHT FIXTURES** | 2026-07-11 → 2026-04-13 (-89d) | 2026-07-11 → 2026-04-22 (-80d) |  |  |
| MLTX-02-004-EN-13930 | Material Submittal for Light Fixtures | 2026-07-11 A → 2026-04-13 A (-89d) | 2026-07-11 A → 2026-04-15 A (-87d) | 15d → 3d | MLTX-02-004-EN-14960, MLTX-02-004-EN-14190 → MLTX-02-004-EN-14960 |
| MLTX-02-004-EN-13940 | Material Approval for Light Fixtures | 2026-07-11 A → 2026-04-16 A (-86d) | 2026-07-11 A → 2026-04-22 A (-80d) | 15d → 6d | MLTX-02-004-EN-13930, MLTX-02-004-EN-14190 → MLTX-02-004-EN-13930 |
| 13 | **CCTV MATERIALS** | 2026-08-26 → 2026-04-13 (-135d) | 2026-09-12 → 2026-04-22 (-143d) |  |  |
| MLTX-02-004-EN-13950 | Material Submittal for CCTV | 2026-08-26 A → 2026-04-13 A (-135d) | 2026-08-26 A → 2026-04-15 A (-133d) | 15d → 3d | MLTX-02-004-EN-14980, MLTX-02-004-EN-14190 → MLTX-02-004-EN-14980 |
| MLTX-02-004-EN-13960 | Material Approval for CCTV | 2026-09-12 A → 2026-04-16 A (-149d) | 2026-09-12 A → 2026-04-22 A (-143d) | 15d → 6d | MLTX-02-004-EN-13950, MLTX-02-004-EN-14190 → MLTX-02-004-EN-13950 |
| 14 | **POWER OUTLETS/SWITCHES** | 2026-06-25 → 2026-05-06 (-50d) | 2026-06-27 → 2026-05-07 (-51d) |  |  |
| MLTX-02-004-EN-13970 | Material Submittal for Power Outlets/Switches | 2026-06-25 A → 2026-05-06 A (-50d) | 2026-06-25 A → 2026-05-06 A (-50d) | 15d → 1d | MLTX-02-004-EN-15000, MLTX-02-004-EN-13290 → MLTX-02-004-EN-15000 |
| MLTX-02-004-EN-13980 | Material Approval for Power Outlets/Switches | 2026-06-27 A → 2026-05-07 A (-51d) | 2026-06-27 A → 2026-05-07 A (-51d) | 15d → 1d | MLTX-02-004-EN-13970, MLTX-02-004-EN-13310 → MLTX-02-004-EN-13970 |
| LSC | **LANDSCAPE WORKS** | 2026-03-19 → 2026-04-13 (+25d) | 2026-07-11 → 2026-06-06 (-35d) |  |  |
| 7 | **INTERLOCKING PAVING** | 2026-03-19 → 2026-04-13 (+25d) | 2026-05-10 → 2026-04-22 (-18d) |  |  |
| MLTX-02-004-EN-14010 | Material Submittal for Interlocking Block Pavers | 2026-03-19 A → 2026-04-13 A (+25d) | 2026-05-05 A → 2026-04-15 A (-20d) | 15d → 3d | MLTX-02-004-EN-15040, MLTX-02-004-EN-13240 → MLTX-02-004-EN-15040 |
| MLTX-02-004-EN-14020 | Material Approval for Interlocking Block Pavers | 2026-03-26 A → 2026-04-16 A (+21d) | 2026-05-10 A → 2026-04-22 A (-18d) | 15d → 6d | MLTX-02-004-EN-14010, MLTX-02-004-EN-13250 → MLTX-02-004-EN-14010 |
| 9 | **CURBSTONE** | 2026-03-19 → 2026-04-13 (+25d) | 2026-05-11 → 2026-04-22 (-19d) |  |  |
| MLTX-02-004-EN-14110 | Material Submittal for Curbstone | 2026-03-19 A → 2026-04-13 A (+25d) | 2026-05-05 A → 2026-04-15 A (-20d) | 15d → 3d |  |
| MLTX-02-004-EN-14120 | Material Approval for Curbstone | 2026-03-26 A → 2026-04-16 A (+21d) | 2026-05-11 A → 2026-04-22 A (-19d) | 15d → 6d |  |
| 1 | **PAVEMENT MARKING** | 2026-03-19 → 2026-04-13 (+25d) | 2026-05-18 → 2026-04-19 (-29d) |  |  |
| MLTX-02-004-EN-13340 | Material Submittal for Pavement Markings | 2026-03-19 A → 2026-04-13 A (+25d) | 2026-05-12 A → 2026-04-18 A (-24d) | 15d → 5d | MLTX-02-004-EN-14410, MLTX-02-004-EN-13240 → MLTX-02-004-EN-14410 |
| MLTX-02-004-EN-13390 | Material Approval for Pavement Markings | 2026-03-26 A → 2026-04-18 A (+23d) | 2026-05-18 A → 2026-04-19 A (-29d) | 15d → 2d | MLTX-02-004-EN-13340, MLTX-02-004-EN-13250 → MLTX-02-004-EN-13340 |
| 2 | **TRAFFIC SIGNS** | 2026-03-19 → 2026-05-06 (+48d) | 2026-05-18 → 2026-06-06 (+19d) |  |  |
| MLTX-02-004-EN-13350 | Material Submittal for Traffic Signs | 2026-03-19 A → 2026-05-06 A (+48d) | 2026-05-12 A → 2026-05-06 A (-6d) | 15d → 1d | MLTX-02-004-EN-14370, MLTX-02-004-EN-13250 → MLTX-02-004-EN-14370 |
| MLTX-02-004-EN-13360 | Material Approval for Traffic Signs | 2026-03-26 A → 2026-06-06 A (+72d) | 2026-05-18 A → 2026-06-06 A (+19d) | 15d → 1d | MLTX-02-004-EN-13350, MLTX-02-004-EN-14100 → MLTX-02-004-EN-13350 |
| 3 | **IRRIGATION PIPES/SPRINKLERS** | 2026-06-16 → 2026-04-13 (-64d) | 2026-06-18 → 2026-05-21 (-28d) |  |  |
| MLTX-02-004-EN-13400 | Material Submittal for Irrigation Pipes/Sprinkles | 2026-06-16 A → 2026-04-13 A (-64d) | 2026-06-16 A → 2026-04-18 A (-59d) | 15d → 5d |  |
| MLTX-02-004-EN-13410 | Material Approval for Irrigation Pipes/Sprinkles | 2026-06-18 A → 2026-05-21 A (-28d) | 2026-06-18 A → 2026-05-21 A (-28d) | 15d → 1d |  |
| 5 | **AGRICULTURE SOIL** | 2026-03-19 → 2026-05-06 (+48d) |  |  |  |
| MLTX-02-004-EN-14070 | Material Submittal for Agriculture Soil | 2026-03-19 A → 2026-05-06 A (+48d) | 2026-05-14 A → 2026-05-06 A (-8d) | 15d → 1d | MLTX-02-004-EN-15100, MLTX-02-004-EN-13350 → MLTX-02-004-EN-15100 |
| MLTX-02-004-EN-14080 | Material Approval for Agriculture Soil | 2026-03-26 A → 2026-05-21 A (+56d) |  | 15d → 1d | MLTX-02-004-EN-14070, MLTX-02-004-EN-13360 → MLTX-02-004-EN-14070 |
| 8 | **TRACK SURFACE** | 2026-03-19 → 2026-05-06 (+48d) | 2026-05-19 → 2026-05-21 (+2d) |  |  |
| MLTX-02-004-EN-14090 | Material Submittal for Track Surface | 2026-03-19 A → 2026-05-06 A (+48d) | 2026-05-14 A → 2026-05-06 A (-8d) | 15d → 1d | MLTX-02-004-EN-15120, MLTX-02-004-EN-13240 → MLTX-02-004-EN-15120 |
| MLTX-02-004-EN-14100 | Material Approval for Track Surface | 2026-03-26 A → 2026-05-21 A (+56d) | 2026-05-19 A → 2026-05-21 A (+2d) | 15d → 1d | MLTX-02-004-EN-14090, MLTX-02-004-EN-13250 → MLTX-02-004-EN-14090 |
| 10 | **GRASS/TREES** | 2026-03-19 → 2026-05-06 (+48d) |  |  |  |
| MLTX-02-004-EN-14130 | Material Submittal for Grass/Trees | 2026-03-19 A → 2026-05-06 A (+48d) | 2026-05-14 A → 2026-05-06 A (-8d) | 15d → 1d | MLTX-02-004-EN-15160, MLTX-02-004-EN-13250 → MLTX-02-004-EN-15160 |
| MLTX-02-004-EN-14140 | Material Approval for Grass/Trees | 2026-03-26 A → 2026-05-21 A (+56d) |  | 15d → 1d | MLTX-02-004-EN-14130, MLTX-02-004-EN-13320 → MLTX-02-004-EN-14130 |
| 6 | **CABLES** | 2026-03-19 → 2026-05-06 (+48d) | 2026-05-19 → 2026-05-07 (-12d) |  |  |
| MLTX-02-004-EN-13990 | Material Submittal for Cables | 2026-03-19 A → 2026-05-06 A (+48d) | 2026-05-14 A → 2026-05-07 A (-7d) | 15d → 2d | MLTX-02-004-EN-15020, MLTX-02-004-EN-13350 → MLTX-02-004-EN-15020 |
| MLTX-02-004-EN-14000 | Material Approval for Cables | 2026-03-26 A → 2026-05-07 A (+42d) | 2026-05-19 A → 2026-05-07 A (-12d) | 15d → 1d | MLTX-02-004-EN-13990, MLTX-02-004-EN-13360 → MLTX-02-004-EN-13990 |
| 4 | **LIGHT POLES** | 2026-07-11 → 2026-04-13 (-89d) | 2026-07-11 → 2026-05-07 (-65d) |  |  |
| MLTX-02-004-EN-13240 | Material Submittal for Lighting poles | 2026-07-11 A → 2026-04-13 A (-89d) | 2026-07-11 A → 2026-04-15 A (-87d) | 15d → 3d |  |
| MLTX-02-004-EN-13250 | Material Approval for Lighting poles | 2026-07-11 A → 2026-05-07 A (-65d) | 2026-07-11 A → 2026-05-07 A (-65d) | 15d → 1d |  |
| CONST | **CONSTRUCTION PHASE** | 2026-04-04 → 2026-04-25 (+21d) | 2027-03-27 → 2027-04-12 (+16d) |  |  |

| ID | Task | Start | Finish | Duration | Complete | Total float | Predecessors | Other |
| --- | --- | --- | --- | --- | --- | --- | --- | --- |
| SW | **SITE WORKS** | 2026-04-04 → 2026-04-25 (+21d) | 2027-03-27 → 2027-04-12 (+16d) |  |  |  |  |  |
| 1 | **EARTH WORKS** | 2026-04-04 → 2026-04-25 (+21d) | 2026-08-05 → 2026-08-08 (+3d) |  |  |  |  |  |
| MLTX-02-004-CN-13310 | Excavation (in all types of soil) including Compaction (Playground Area) | 2026-04-06 A → 2026-04-25 A (+19d) | 2026-04-12 A → 2026-05-11 A (+29d) | 12d → 14.5d |  |  | MLTX-02-004-CN-13320 SS → MLTX-02-004-EN-16170, MLTX-02-004-EN-16190, MLTX-02-004-CN-13320 | resources Labor [300 h]; Driver [380 h]; Excavator [180 h]; Loader [50 h]; Water Tanker [120 h]; Dump Truck [240 h]; Milling machine [60 h]; Excavation in any type of soil from existing level [1853.1] → Labor [300 h]; Driver [380 h]; Excavator [140 h]; Loader [50 h]; Water Tanker [80 h]; Dump Truck [200 h]; Milling machine [40 h]; Excavation in any type of soil from existing level [3344] |
| MLTX-02-004-CN-13330 | Excavation (in all types of soil) including Compaction (Landscape Area) | 2026-06-28 A → 2026-04-25 A (-64d) | 2026-08-05 A → 2026-05-10 A (-87d) | 7d → 13.2d |  |  | MLTX-02-004-EN-16040, MLTX-02-004-EN-16030, MLTX-02-004-CN-13310, MLTX-02-004-EN-16020, MLTX-02-004-EN-16010, MLTX-02-004-CN-13510 → MLTX-02-004-EN-16010, MLTX-02-004-EN-16020, MLTX-02-004-EN-16040, MLTX-02-004-EN-16030, MLTX-02-004-CN-13310 | resources Labor [400 h]; Driver [200 h]; Excavator [210 h]; Loader [150 h]; Water Tanker [150 h]; Dump Truck [280 h]; Milling machine [70 h]; Excavation in any type of soil from existing level [2779.65] → Labor [400 h]; Driver [200 h]; Excavator [140 h]; Loader [130 h]; Water Tanker [100 h]; Dump Truck [200 h]; Milling machine [40 h]; Excavation in any type of soil from existing level [2059.83] |
| MLTX-02-004-CN-13320 | Excavation (in all types of soil) including Compaction (Service/Toilet Building) | 2026-04-04 A → 2026-04-27 A (+23d) | 2026-08-02 A → 2026-05-14 A (-80d) | 14d → 15.14d |  |  | MLTX-02-004-EN-15580 → MLTX-02-004-EN-15260 | resources Labor [300 h]; Driver [80 h]; Excavator [60 h]; Loader [60 h]; Water Tanker [60 h]; Dump Truck [80 h]; Milling machine [20 h]; Excavation in any type of soil from existing level [205.9] → Labor [290 h]; Driver [80 h]; Excavator [60 h]; Loader [60 h]; Water Tanker [60 h]; Dump Truck [80 h]; Milling machine [20 h]; Excavation in any type of soil from existing level [170] |
| MLTX-02-004-CN-13860 | Backfilling on Layers (Selected Soil) including Compaction (Service/Toilet Building) | 2026-04-06 A → 2026-07-05 A (+90d) | 2026-04-08 A → 2026-07-19 A (+102d) | 20d → 8d |  |  | MLTX-02-004-CN-13320 SS, MLTX-02-004-CN-13320 FF, MLTX-02-004-CN-14750 → MLTX-02-004-CN-13350 | resources Labor [300 h]; Driver [140 h]; Loader [90 h]; Water Tanker [90 h]; Compactor [60 h]; Backfilling with selected fill material [205.32] → Backfilling with selected fill material [800] |
| MLTX-02-004-CN-14740 | Backfilling on Layers (Selected Soil) including Compaction (Landscape Area) | 2026-04-21 A → 2026-07-09 A (+79d) |  | 8d → 15d |  |  | MLTX-02-004-CN-13330 SS, MLTX-02-004-CN-13330 FF, MLTX-02-004-CN-13510 → MLTX-02-004-CN-13360, MLTX-02-004-CN-13860 | resources Labor [600 h]; Driver [300 h]; Loader [60 h]; Water Tanker [150 h]; Compactor [200 h]; Backfilling with selected fill material [2771.82] → Backfilling with selected fill material [3863] |
| MLTX-02-004-CN-14750 | Backfilling on Layers (Selected Soil) including Compaction (Playground Area) | 2026-04-13 A → 2026-07-18 A (+96d) | 2026-04-30 A → 2026-08-08 A (+100d) | 21d → 10d |  |  | MLTX-02-004-CN-13310 → MLTX-02-004-CN-13340, MLTX-02-004-CN-13860 | resources Labor [550 h]; Driver [300 h]; Loader [120 h]; Water Tanker [150 h]; Compactor [200 h]; Backfilling with selected fill material [1847.88] → Backfilling with selected fill material [2999.82] |
| 4 | **LANDSCAPE WORKS** | 2026-05-17 → 2026-07-11 (+55d) | 2027-03-27 → 2027-04-12 (+16d) |  |  |  |  |  |
| 4 | **PLAYGROUND AREA** | 2026-05-19 → 2026-08-22 (+95d) | 2027-02-23 → 2027-03-28 (+33d) |  |  |  |  |  |
| 6 | **FOOTBALL PLAYGROUND** | 2026-05-19 → 2026-08-22 (+95d) | 2027-02-17 → 2027-03-14 (+25d) |  |  |  |  |  |
| MLTX-02-004-CN-13510 | Preparation and Proofing for Subgrade (Football Playground) | 2026-05-19 A → 2026-08-22 A (+95d) | 2026-06-01 A → 2026-08-24 A (+84d) | 20d → 18d |  |  | MLTX-02-004-CN-14750 → MLTX-02-004-CN-13340 SS, MLTX-02-004-CN-13350 SS | resources Labor [500 h]; Skilled Labor [200 h]; Driver [300 h]; Forklift [270 h]; Football playground [250] → Labor [500 h]; Skilled Labor [200 h]; Driver [300 h]; Forklift [270 h]; Football playground [200] |
| MLTX-02-004-CN-13520 | Backfilling and Compaction of Base Layers (Football Playground) | 2026-06-01 A → 2026-08-29 A (+89d) | 2026-06-22 A → 2026-09-15 A (+85d) | 21d → 11d |  |  | MLTX-02-004-CN-13510 → MLTX-02-004-PR-11090, MLTX-02-004-PR-11070, MLTX-02-004-CN-13510, MLTX-02-004-CN-14750, MLTX-02-004-CN-14750 FF | resources Labor [700 h]; Skilled Labor [250 h]; Driver [350 h]; Loader [150 h]; Dump Truck [440 h]; Compactor [220 h]; Football playground [50] → Labor [700 h]; Skilled Labor [250 h]; Driver [350 h]; Loader [80 h]; Dump Truck [200 h]; Compactor [100 h]; Football playground [200] |
| MLTX-02-004-CN-13550 | Surface Marking and Painting (Football Playground) | 2027-01-19 → 2027-01-06 (-13d) | 2027-01-23 → 2027-01-17 (-6d) | 3d → 10d |  | -44.1d → -36d | MLTX-02-004-CN-10210 SS, MLTX-02-004-CN-10370 SS → MLTX-02-004-PR-11440, MLTX-02-004-PR-11420, MLTX-02-004-CN-13630 |  |
| MLTX-02-004-CN-13540 | Install Sport Equipments - Goal / Nets - (Football Playground) | 2027-02-11 → 2027-02-28 (+17d) | 2027-02-17 → 2027-03-14 (+25d) | 5d → 10d |  | -45.1d → -80d | Surface Marking and Painting Finishing Work (Football Playground) FF, MLTX-02-004-EN-16340, Surface Marking and Painting Finishing Work (Football Playground) SS, Finishing Asphalt & Concrete Surface (Football Playground) → MLTX-02-004-CN-13530, MLTX-02-004-CN-13800, MLTX-02-004-CN-13550 SS, MLTX-02-004-EN-13840, MLTX-02-004-EN-14150, MLTX-02-004-EN-14160, MLTX-02-004-EN-14170, MLTX-02-004-EN-14200, MLTX-02-004-EN-14220 | resources Labor [390 h]; Skilled Labor [150 h]; Driver [100 h]; Crane [140 h]; Football playground [100] → Labor [390 h]; Skilled Labor [150 h]; Driver [100 h]; Crane [140 h]; Football playground [250] |
| 7 | **PADEL PLAYGROUND** | 2026-05-19 → 2026-08-22 (+95d) | 2027-02-17 → 2027-03-14 (+25d) |  |  |  |  |  |
| MLTX-02-004-CN-13560 | Preparation and Proofing for Subgrade (Padel Playground) | 2026-05-19 A → 2026-08-22 A (+95d) | 2026-06-01 A → 2026-08-24 A (+84d) | 21d → 11d |  |  | MLTX-02-004-CN-13510 → MLTX-02-004-CN-14750, MLTX-02-004-CN-13510 | resources Labor [300 h]; Skilled Labor [150 h]; Driver [200 h]; Forklift [180 h]; Padel playgound [70] → Labor [300 h]; Skilled Labor [150 h]; Driver [200 h]; Forklift [90 h]; Padel playgound [70] |
| MLTX-02-004-CN-13570 | Backfilling and Compaction of Base Layers (Padel Playground) | 2026-06-01 A → 2026-08-29 A (+89d) | 2026-06-14 A → 2026-09-15 A (+93d) | 21d → 10d |  |  | MLTX-02-004-CN-13520, MLTX-02-004-PR-11070, MLTX-02-004-PR-11080, MLTX-02-004-CN-13560 → MLTX-02-004-CN-13520, MLTX-02-004-CN-13560, MLTX-02-004-CN-14740 | resources Labor [550 h]; Skilled Labor [200 h]; Driver [280 h]; Loader [150 h]; Dump Truck [360 h]; Compactor [180 h]; Padel playgound [10] → Labor [550 h]; Skilled Labor [200 h]; Driver [280 h]; Loader [80 h]; Dump Truck [200 h]; Compactor [100 h]; Padel playgound [40] |
| MLTX-02-004-CN-13590 | Install Sport Equipments - Goal / Nets - (Padel Playground) | 2027-02-11 → 2027-02-28 (+17d) | 2027-02-17 → 2027-03-14 (+25d) | 5d → 10d |  | -45.1d → -80d | MLTX-02-004-CN-13540 FF, Finishing Asphalt & Concrete Surface (Padel Playground), MLTX-02-004-CN-13540 SS, MLTX-02-004-EN-16360 → MLTX-02-004-EN-16360, MLTX-02-004-CN-13580, MLTX-02-004-CN-13540 SS | resources Labor [950 h]; Skilled Labor [440 h]; Driver [260 h]; Crane [160 h]; Padel playgound [50] → Labor [950 h]; Skilled Labor [440 h]; Driver [260 h]; Crane [160 h]; Padel playgound [30] |
| MLTX-02-004-CN-13600 | Surface Marking and Painting (Padel Playground) | 2027-02-09 → 2027-02-28 (+19d) | 2027-02-13 → 2027-03-14 (+29d) | 3d → 10d |  | -36.1d → -80d | MLTX-02-004-CN-13550 SS, MLTX-02-004-PR-9110, MLTX-02-004-CN-10110, Finishing Asphalt & Concrete Surface (Football Playground), MLTX-02-004-CN-10260 → MLTX-02-004-CN-13550 SS, MLTX-02-004-CN-13590 SS, MLTX-02-004-CN-13530 |  |
| 8 | **BASKETBALL PLAYGROUND** | 2026-05-19 → 2026-08-22 (+95d) | 2027-02-23 → 2027-03-28 (+33d) |  |  |  |  |  |
| MLTX-02-004-CN-13610 | Preparation and Proofing for Subgrade (Basketball Playground) | 2026-05-19 A → 2026-08-22 A (+95d) | 2026-06-01 A → 2026-08-24 A (+84d) | 20d → 10d |  |  |  | resources Labor [550 h]; Skilled Labor [200 h]; Driver [280 h]; Forklift [270 h]; Basketball playground [146.62] → Labor [550 h]; Skilled Labor [200 h]; Driver [280 h]; Forklift [90 h]; Basketball playground [53.33] |
| MLTX-02-004-CN-13620 | Backfilling and Compaction of Base Layers (Basketball Playground) | 2026-06-01 A → 2026-08-29 A (+89d) | 2026-06-14 A → 2026-09-15 A (+93d) | 21d → 10d |  |  | MLTX-02-004-CN-13610, MLTX-02-004-CN-13520 → MLTX-02-004-PR-11260, MLTX-02-004-CN-13570, MLTX-02-004-CN-13610 | resources Labor [400 h]; Skilled Labor [200 h]; Driver [300 h]; Loader [150 h]; Dump Truck [400 h]; Compactor [200 h]; Basketball playground [24.93] → Labor [400 h]; Skilled Labor [200 h]; Driver [300 h]; Loader [80 h]; Dump Truck [200 h]; Compactor [100 h]; Basketball playground [53.33] |
| MLTX-02-004-CN-13640 | Install Sport Equipments - Goal / Nets - (Basketball Playground) | 2027-02-11 → 2027-03-15 (+32d) | 2027-02-17 → 2027-03-25 (+36d) | 5d → 10d |  | -41.1d → -80d | MLTX-02-004-CN-13590 SS → MLTX-02-004-EN-16350, MLTX-02-004-CN-13630, MLTX-02-004-CN-13590, MLTX-02-004-CN-13540 | resources Labor [200 h]; Skilled Labor [90 h]; Driver [100 h]; Crane [140 h]; Basketball playground [127.5] → Labor [200 h]; Skilled Labor [90 h]; Driver [100 h]; Crane [140 h]; Basketball playground [133.33] |
| MLTX-02-004-CN-13650 | Surface Marking and Painting (Basketball Playground) | 2027-02-09 → 2027-03-15 (+34d) | 2027-02-13 → 2027-03-28 (+43d) | 3d → 12d |  | -36.1d → -80d | MLTX-02-004-PR-9110, MLTX-02-004-CN-10210 SS, MLTX-02-004-CN-13600 SS, MLTX-02-004-CN-13550 SS, Finishing Asphalt & Concrete Surface (Basketball Playground), MLTX-02-004-CN-13550 FF, MLTX-02-004-CN-10260, Aggregate basecourse layer (Basketball Playground), Aggregate basecourse layer (Football Playground), MLTX-02-004-CN-10190, MLTX-02-004-CN-10610 → MLTX-02-004-CN-13640 SS, MLTX-02-004-CN-13600, MLTX-02-004-CN-13550, MLTX-02-004-CN-13640 FF | resources Skilled Labor [250 h]; Painter [240 h]; Basketball playground [25.5] → Skilled Labor [250 h]; Painter [240 h]; Basketball playground [26.67] |
| 9 | **PADEL FENCE** | 2026-08-08 → 2026-09-15 (+38d) | 2027-01-09 → 2026-12-17 (-23d) |  |  |  |  |  |
| MLTX-02-004-CN-13660 | Excavation for Fence | 2026-08-08 A → 2026-09-15 A (+38d) | 2026-08-08 A → 2026-09-15 A (+38d) | 8d → 5d |  |  | Aggregate base course layer (Padel Playground) → MLTX-02-004-CN-13620 | resources Labor [250 h]; Driver [160 h]; Excavator [120 h]; Dump Truck [160 h]; Supply and install of padel playground fence [0.01] → Labor [250 h]; Driver [160 h]; Excavator [80 h]; Dump Truck [160 h]; Supply and install of padel playground fence [0.1] |
| MLTX-02-004-CN-13670 | Concrete Foundation for Fence including Posts Fixation | 2026-08-15 A → 2026-09-29 A (+45d) | 2026-08-19 A → 2026-09-29 A (+41d) | 7d → 4d |  |  | MLTX-02-004-CN-13660 SS, MLTX-02-004-CN-13660 FF → MLTX-02-004-CN-13660 SS | resources Skilled Labor [150 h]; Driver [100 h]; Steel Fixer [140 h]; Supply and install of padel playground fence [0.01] → Skilled Labor [150 h]; Driver [100 h]; Steel Fixer [140 h]; Supply and install of padel playground fence [0.2] |
| MLTX-02-004-CN-13671 | Backfilling and Reinstatement for Concrete Foundation | 2026-10-13 A → 2026-10-04 A (-9d) | 2026-10-13 A → 2026-10-06 A (-7d) | 17d → 2d |  |  | MLTX-02-004-CN-13670 → MLTX-02-004-CN-13670, MLTX-02-004-CN-13670 FF |  |
| MLTX-02-004-CN-13680 | Tempered Glass Fenc Installation and Fixation | 2026-11-23 → 2026-11-24 (+1d) | 2026-12-16 → 2026-12-05 (-11d) | 20d → 10d |  | -31.1d → 33d | MLTX-02-004-CN-13671 → MLTX-02-004-CN-13670 SS, MLTX-02-004-CN-13671, MLTX-02-004-CN-13660 | resources Skilled Labor [250 h]; Driver [180 h]; Crane [240 h]; Supply and install of padel playground fence [0.37] → Skilled Labor [250 h]; Driver [180 h]; Crane [240 h]; Supply and install of padel playground fence [0.4] |
| MLTX-02-004-CN-13690 | Chain Link Fence Installation and Fixation | 2026-12-16 → 2026-11-24 (-22d) | 2027-01-09 → 2026-12-05 (-35d) | 20d → 10d |  | -31.1d → 43d | MLTX-02-004-CN-13680, Finishing Asphalt & Concrete Surface (Basketball Playground) → MLTX-02-004-PR-11920, MLTX-02-004-CN-13680 SS | resources Labor [200 h]; Skilled Labor [150 h]; Driver [150 h]; Crane [200 h]; Supply and install of padel playground fence [0.19] → Labor [200 h]; Skilled Labor [150 h]; Driver [150 h]; Crane [200 h]; Supply and install of padel playground fence [0.2] |
| MLTX-02-004-CN-13700 | Install of Fence Gates | 2026-12-26 → 2026-12-06 (-20d) | 2027-01-09 → 2026-12-17 (-23d) | 12d → 11d |  | -7.1d → 33d |  | resources Labor; Skilled Labor; Driver; Crane; Supply and install of padel playground fence → Labor [380 h]; Skilled Labor [90 h]; Driver [100 h]; Crane [120 h]; Supply and install of padel playground fence [0.05] |
| 1 | **CURBSTOEN/INTERLOCK** | 2026-08-15 → 2026-09-20 (+36d) | 2026-11-22 → 2026-12-10 (+18d) |  |  |  |  |  |
| MLTX-02-004-CN-13450 | Concrete Works Under Curbstone | 2026-08-15 A → 2026-09-20 A (+36d) | 2026-08-15 A → 2026-09-22 A (+38d) | 7d → 8d |  |  | MLTX-02-004-EN-15360, MLTX-02-004-EN-16200, MLTX-02-004-CN-13660, MLTX-02-004-EN-4120 → MLTX-02-004-CN-13720, MLTX-02-004-EN-16200, MLTX-02-004-EN-15360 | resources Skilled Labor [200 h]; Kerb type K1A [151]; Kerb type K1B [15]; Kerb type K4 [908] → Skilled Labor [200 h]; Kerb type K1A [700]; Kerb type K1B [50]; Kerb type K4 [4728.4] |
| MLTX-02-004-CN-13460 | Curbstone Installation | 2026-08-19 A → 2026-09-20 A (+32d) | 2026-09-05 A → 2026-09-29 A (+24d) | 4d → 10d |  |  | MLTX-02-004-CN-13450, MLTX-02-004-PR-11980, Aggregate base course layer (Basketball Playground) → MLTX-02-004-CN-13450, MLTX-02-004-PR-11820 | resources Labor [940 h]; Skilled Labor [440 h]; Driver [340 h]; Forklift [240 h]; Kerb type K1A [352.33]; Kerb type K1B [35]; Kerb type K4 [2118.67] → Labor [940 h]; Skilled Labor [440 h]; Driver [340 h]; Forklift [240 h]; Kerb type K1A [1800]; Kerb type K1B [43.27]; Kerb type K4 [7500] |
| MLTX-02-004-CN-13390 | Interlock Installation (Grey Scale) for LandScape (Including Finishing Works) | 2026-11-04 A → 2026-11-24 (+20d) | 2026-11-22 A → 2026-12-10 (+18d) | 20d → 15d | 100% → 0% | none → 39d | MLTX-02-004-PR-11840, MLTX-02-004-CN-13460, MLTX-02-004-PR-11110 → MLTX-02-004-CN-13460 | resources Labor [1000 h]; Skilled Labor [440 h]; Driver [540 h]; Forklift [330 h]; Interlock tiles grey scale with black marble chips 600*300*60mm zero joint [1683.33] → Labor [1000 h]; Skilled Labor [440 h]; Driver [540 h]; Forklift [330 h]; Interlock tiles grey scale with black marble chips 600*300*60mm zero joint [1466.67] |
| 10 | **AIR DOME** | 2026-05-17 → 2026-07-11 (+55d) | 2027-03-01 → 2027-04-12 (+42d) |  |  |  |  |  |
| 1 | **CIVIL WORKS** | 2026-05-17 → 2026-07-11 (+55d) | 2027-02-11 → 2026-12-07 (-66d) |  |  |  |  |  |
| MLTX-02-004-CN-13720 | Concrete Works for Foundations including Anchor Bolts (Air Dome) |  | 2026-09-21 A → 2026-09-22 A (+1d) | 13d → 5d |  |  | MLTX-02-004-EN-16230, Excavation for Foundation (Air Dome), MLTX-02-004-EN-16240, MLTX-02-004-EN-16260 → MLTX-02-004-CN-13710, MLTX-02-004-CN-13710 SS | resources Skilled Labor [200 h]; Steel Fixer [180 h]; Design, supply, install, testing and commissioning of air dome [0.04] → Skilled Labor [200 h]; Steel Fixer [180 h]; Design, supply, install, testing and commissioning of air dome [0.03] |
| MLTX-02-004-CN-13730 | Cable System Installation (Air Dome) | 2026-09-21 A → 2026-09-24 A (+3d) | 2026-09-21 A → 2026-11-21 A (+61d) | 7d → 8d |  |  | Excavation for Foundation (Air Dome) → MLTX-02-004-PR-12050 FF, MLTX-02-004-CN-13720 | resources Labor [700 h]; Skilled Labor [250 h]; Driver [250 h]; Crane [300 h]; Design, supply, install, testing and commissioning of air dome → Labor [700 h]; Skilled Labor [250 h]; Driver [250 h]; Crane [300 h]; Design, supply, install, testing and commissioning of air dome [0.27] |
| MLTX-02-004-CN-13740 | Install of Membrane Covering System (Air Dome) | 2027-01-19 → 2026-11-24 (-56d) | 2027-02-11 → 2026-12-07 (-66d) | 20d → 12d |  | -47.1d → -47d | Perimeter Clamping System Installation, MLTX-02-004-CN-11740, MLTX-02-004-CN-13440 → MLTX-02-004-CN-13730 | resources Labor [500 h]; Skilled Labor [90 h]; Driver [100 h]; Crane [160 h]; Design, supply, install, testing and commissioning of air dome [0.17] → Labor [500 h]; Skilled Labor [90 h]; Driver [100 h]; Crane [160 h]; Design, supply, install, testing and commissioning of air dome [0.06] |
| MLTX-02-004-CN-13750 | Thermal Insulation Works (Air Dome) | 2027-01-19 → 2026-12-01 (-49d) | 2027-02-11 → 2026-12-07 (-66d) | 20d → 6d |  | -47.1d → -47d | MLTX-02-004-CN-13740 SS, MLTX-02-004-PR-11800, MLTX-02-004-CN-13740 FF, MLTX-02-004-CN-11740 → MLTX-02-004-PR-11280, MLTX-02-004-PR-11800, MLTX-02-004-CN-13740 SS, MLTX-02-004-CN-13740 FF | resources Labor [500 h]; Skilled Labor [240 h]; Driver [100 h]; Crane [160 h]; Design, supply, install, testing and commissioning of air dome [0.08] → Labor [500 h]; Skilled Labor [240 h]; Driver [100 h]; Crane [160 h]; Design, supply, install, testing and commissioning of air dome [0.06] |
| 3 | **MECHANICAL WORKS** | 2027-02-11 → 2027-01-16 (-26d) | 2027-02-24 → 2027-02-27 (+3d) |  |  |  |  |  |
| MLTX-02-004-CN-13780 | Air Ducts and Grills Installation (Air Dome) | 2027-02-11 → 2027-01-16 (-26d) | 2027-02-24 → 2027-01-30 (-25d) | 10d → 13d |  | -47.1d → -80d | MLTX-02-004-PR-12070, MLTX-02-004-CN-13750, MLTX-02-004-CN-14380 → MLTX-02-004-EN-16150, MLTX-02-004-EN-16160, MLTX-02-004-PR-11580, MLTX-02-004-PR-11560, MLTX-02-004-PR-12070, MLTX-02-004-CN-13750 | resources Labor [876.9 h]; Skilled Labor [353.8 h]; Crane [120 h]; Mechanical [269.2 h]; Design, supply, install, testing and commissioning of air dome [0.13] → Labor [876.9 h]; Skilled Labor [353.8 h]; Mechanical [269.2 h]; Crane [120 h]; Design, supply, install, testing and commissioning of air dome [0.11] |
| MLTX-02-004-CN-13790 | Air Units Installation (Air Dome) | 2027-02-11 → 2027-01-31 (-11d) | 2027-02-24 → 2027-02-14 (-10d) | 10d → 13d |  | -47.1d → -80d | MLTX-02-004-CN-13780 SS, MLTX-02-004-CN-13780 FF → MLTX-02-004-PR-11540, MLTX-02-004-CN-13780 | resources Labor [800 h]; Skilled Labor [440 h]; Driver [420 h]; Forklift [240 h]; Mechanical [160 h]; Design, supply, install, testing and commissioning of air dome [0.06] → Labor [800 h]; Skilled Labor [440 h]; Driver [420 h]; Mechanical [160 h]; Forklift [240 h]; Design, supply, install, testing and commissioning of air dome [0.06] |
| MLTX-02-004-CN-13800 | Exhaust Fans and Ducts Installation (Air Dome) | 2027-02-11 → 2027-02-15 (+4d) | 2027-02-24 → 2027-02-27 (+3d) |  |  | -47.1d → -80d | MLTX-02-004-CN-13790 SS, MLTX-02-004-CN-13780 FF, MLTX-02-004-CN-13780 SS, MLTX-02-004-CN-13790 FF → MLTX-02-004-PR-11600, MLTX-02-004-CN-13790 | resources Labor [700 h]; Skilled Labor [300 h]; Driver [370 h]; Forklift [210 h]; Mechanical [140 h]; Design, supply, install, testing and commissioning of air dome [0.03] → Labor [700 h]; Skilled Labor [300 h]; Driver [370 h]; Mechanical [140 h]; Forklift [210 h]; Design, supply, install, testing and commissioning of air dome [0.02] |
| 4 | **ELECTRICAL WORKS** | 2027-02-15 → 2026-10-15 (-123d) | 2027-02-28 → 2027-01-13 (-46d) |  |  |  |  |  |
| MLTX-02-004-CN-13810 | Light Fixture Works (Air Dome) | 2027-02-15 → 2026-10-15 A (-123d) | 2027-02-24 → 2026-10-27 A (-120d) | 7d → 15d | 0% → 100% | -47.1d → none | MLTX-02-004-CN-13790 FF, MLTX-02-004-EN-16110, MLTX-02-004-CN-13800 FF, MLTX-02-004-CN-13790 SS, MLTX-02-004-CN-13800 SS, MLTX-02-004-EN-16130 → MLTX-02-004-PR-11740, MLTX-02-004-PR-12080 FF, MLTX-02-004-CN-13780 FF, MLTX-02-004-PR-11760 FF |  |
| MLTX-02-004-CN-13820 | Distribution Board and Electrical Works (Air Dome) | 2027-02-17 → 2026-11-14 A (-95d) | 2027-02-24 → 2026-12-02 (-84d) | 5d → 15d | 0% → 50% | -47.1d → -8d | MLTX-02-004-CN-13810 SS, MLTX-02-004-CN-13810 FF → MLTX-02-004-EN-16070, MLTX-02-004-EN-16080, MLTX-02-004-EN-16090, MLTX-02-004-EN-16100, MLTX-02-004-EN-16110, MLTX-02-004-PR-11720, MLTX-02-004-CN-13810, MLTX-02-004-CN-13390 |  |
| MLTX-02-004-CN-13830 | External Electrical Connection Works (Air Dome) | 2027-02-17 → 2026-12-03 (-76d) | 2027-02-24 → 2026-12-20 (-66d) | 5d → 15d |  | -47.1d → -8d | MLTX-02-004-CN-13820 FF, MLTX-02-004-CN-13820 SS → MLTX-02-004-CN-13820 | resources Skilled Labor [350 h]; Electrician [200 h]; Design, supply, install, testing and commissioning of air dome [0.03] → Skilled Labor [350 h]; Electrician [200 h]; Design, supply, install, testing and commissioning of air dome [0.05] |
| MLTX-02-004-CN-13840 | Emergency Generator Installation (Air Dome) | 2027-02-20 → 2026-12-21 (-61d) | 2027-02-24 → 2027-01-02 (-53d) | 3d → 11d |  | -47.1d → -8d | MLTX-02-004-CN-13830 FF, MLTX-02-004-CN-13830 SS → MLTX-02-004-EN-12970, MLTX-02-004-EN-12990, MLTX-02-004-EN-13000, MLTX-02-004-CN-13830 | resources Skilled Labor [300 h]; Electrician [220 h]; Design, supply, install, testing and commissioning of air dome [0.09] → Skilled Labor [300 h]; Electrician [220 h]; Design, supply, install, testing and commissioning of air dome [0.11] |
| MLTX-02-004-CN-13850 | Control System Installation (Air Dome) | 2027-02-25 → 2027-01-03 (-53d) | 2027-02-28 → 2027-01-13 (-46d) | 2d → 10d |  | -50.1d → -8d | MLTX-02-004-PR-11740, MLTX-02-004-CN-13840 SS, MLTX-02-004-CN-13840 FF → MLTX-02-004-EN-16120, MLTX-02-004-EN-16130, MLTX-02-004-EN-16140, MLTX-02-004-CN-13840 | resources Skilled Labor [1000 h]; Electrician [500 h]; Design, supply, install, testing and commissioning of air dome → Skilled Labor [900 h]; Electrician [500 h]; Design, supply, install, testing and commissioning of air dome [0.09] |
| 2 | **FINISHES WORKS** | 2027-02-17 → 2026-12-03 (-76d) | 2027-03-01 → 2027-04-12 (+42d) |  |  |  |  |  |
| MLTX-02-004-CN-13760 | Doors Installation Including Emergency, Entrance doors (Air Dome) | 2027-02-17 → 2026-12-03 (-76d) | 2027-02-24 → 2026-12-20 (-66d) | 5d → 15d |  | -47.1d → 0d | MLTX-02-004-PR-12060, MLTX-02-004-PR-12080, MLTX-02-004-CN-13790 FF, MLTX-02-004-PR-11900 → MLTX-02-004-EN-16210, MLTX-02-004-CN-13820 |  |
| MLTX-02-004-CN-13770 | Logo and Signs Installation (Air Dome) | 2027-02-28 → 2027-03-29 (+29d) | 2027-03-01 → 2027-04-12 (+42d) | 1d → 13d |  | -50.1d → -80d | MLTX-02-004-CN-13850, MLTX-02-004-CN-13760 → MLTX-02-004-CN-13650, MLTX-02-004-CN-13760, MLTX-02-004-CN-13800 | resources Labor [1300 h]; Skilled Labor [900 h]; Driver [340 h]; Crane [120 h]; Design, supply, install, testing and commissioning of air dome [0.01] → Labor [1300 h]; Skilled Labor [900 h]; Driver [340 h]; Crane [120 h]; Design, supply, install, testing and commissioning of air dome [0.02] |
| 1 | **IRRIGATION NETWORK** | 2026-08-18 → 2026-08-22 (+4d) |  |  |  |  |  |  |
| MLTX-02-004-CN-14620 | Installing of HDPE Pipes for Irrigation Network (Main Line) | 2026-08-18 A → 2026-08-22 A (+4d) | 2026-09-02 A → 2026-08-31 A (-2d) | 4d → 12d |  |  | MLTX-02-004-EN-15460, MLTX-02-004-EN-16050, MLTX-02-004-EN-16060, MLTX-02-004-PR-11180 → MLTX-02-004-CN-13460, MLTX-02-004-EN-16050, MLTX-02-004-EN-16060, MLTX-02-004-EN-15460 | resources Labor [1000 h]; Driver [540 h]; Crane [220 h]; Mechanical [320 h]; Plumber [300 h]; HDPE Pipes pipe line O.D 90 mm PN 10, in depth 0 to 1.5 m [250] → Labor [1000 h]; Driver [540 h]; Mechanical [320 h]; Plumber [300 h]; Crane [220 h]; HDPE Pipes pipe line O.D 90 mm PN 10, in depth 0 to 1.5 m [376.67] |
| MLTX-02-004-CN-14630 | Installing of HDPE Pipes for Irrigation Network (Branch Lines) | 2026-09-03 A → 2026-08-31 A (-3d) | 2026-09-10 A → 2026-08-31 A (-10d) | 4d → 5d |  |  |  | resources Labor [800 h]; Driver [240 h]; Crane [140 h]; Mechanical [240 h]; Plumber [240 h]; HDPE Pipes pipe line O.D 50 mm PN 10, in depth 0 to 1.5 m [116.67]; HDPE Pipes pipe line O.D 32 mm PN 10, in depth 0 to 1.5 m [250]; HDPE Pipes pipe line O.D 25 mm PN 10, in depth 0 to 1.5 m [683.33] → Labor [800 h]; Driver [240 h]; Mechanical [240 h]; Plumber [240 h]; Crane [140 h]; HDPE Pipes pipe line O.D 50 mm PN 10, in depth 0 to 1.5 m [150]; HDPE Pipes pipe line O.D 32 mm PN 10, in depth 0 to 1.5 m [523.33]; HDPE Pipes pipe line O.D 25 mm PN 10, in depth 0 to 1.5 m [1333.33] |
| MLTX-02-004-CN-14640 | Installing of Valves and fittings for Irrigation Network | 2026-09-10 A → 2026-09-15 A (+5d) | 2026-10-13 A → 2026-11-09 A (+27d) | 4d → 3d |  |  | MLTX-02-004-CN-14630 → MLTX-02-004-CN-14390, MLTX-02-004-CN-14300, MLTX-02-004-CN-14160 FF, MLTX-02-004-CN-14380 FF, MLTX-02-004-CN-14400 FF, MLTX-02-004-CN-14240 FF, MLTX-02-004-CN-14320 FF, MLTX-02-004-CN-14340 FF, MLTX-02-004-CN-14630 | resources Labor [950 h]; Mechanical [160 h]; Plumber [260 h]; Gate valve 100 mm PN16 [0.67]; Gate valve 50 mm PN16 [3.67]; Gate valve 32 mm PN16 [4.67]; Flushing Bronze gate valve dia 1.5" inside PVC box [2]; Air release valve 1.5" inside PVC box [2] → Labor [950 h]; Mechanical [160 h]; Plumber [260 h]; Electrical Solenoid Valve ( 1") inside PVC box [5.33]; Gate valve 100 mm PN16 [1]; Gate valve 50 mm PN16 [5.33]; Gate valve 32 mm PN16 [8]; Flushing Bronze gate valve dia 1.5" inside PVC box [2.67]; Air release valve 1.5" inside PVC box [3.33] |
| MLTX-02-004-CN-14650 | Installing of Bubblers and Spreyers | 2026-12-10 → 2026-12-12 (+2d) |  |  |  | 4.9d → 11d | Tartan Floor Installation Works for Landscape (Including Finishing Works) FF, Tartan Floor Installation Works for Landscape (Including Finishing Works) SS, MLTX-02-004-PR-11940, MLTX-02-004-CN-14640, MLTX-02-004-CN-13440, Finishing Asphalt & Concrete Surface (Basketball Playground) → MLTX-02-004-PR-12000, MLTX-02-004-CN-13420 | resources Labor [1300 h]; Mechanical [240 h]; Plumber [240 h]; Pressure�compensating bubblers 110 Lit/Hr [5]; Pressure� bubblers 60 Lit/Hr [165]; Pop up sprayer 90?- 210?, Radius 3.0 mtr [200]; Pop up sprayer 360?,Radius 3.0 mtr. [310] → Labor [1300 h]; Mechanical [240 h]; Plumber [240 h]; Pressureâ€“compensating bubblers 110 Lit/Hr [6.67]; Pressureâ€“ bubblers 60 Lit/Hr [293.33]; Pop up sprayer 90?- 210?, Radius 3.0 mtr [400]; Pop up sprayer 360?,Radius 3.0 mtr. [550] |
| 5 | **NATURAL GROUND** | 2026-10-27 → 2026-11-24 (+28d) | 2026-11-30 → 2026-11-29 (-1d) |  |  |  |  |  |
| MLTX-02-004-CN-13420 | Compacted Natural Ground Soil Installation Works for Landscape | 2026-10-27 A → 2026-11-24 (+28d) | 2026-11-19 A → 2026-11-29 (+10d) | 6d → 5d | 100% → 0% | none → 21d | MLTX-02-004-CN-14350, MLTX-02-004-CN-14640, Finishing Asphalt & Concrete Surface (Basketball Playground), MLTX-02-004-PR-11820, MLTX-02-004-EN-15300 → MLTX-02-004-CN-14640, MLTX-02-004-CN-14350 | resources Labor [1800 h]; Skilled Labor [1900 h]; Driver [370 h]; Water Tanker [270 h]; Dump Truck [360 h]; Compactor [180 h]; Compacted Natural ground soil [3333.33] → Labor [1800 h]; Skilled Labor [1900 h]; Driver [370 h]; Water Tanker [270 h]; Dump Truck [360 h]; Compactor [180 h]; Compacted Natural ground soil [8000] |
| 2 | **PLANTING** | 2026-10-31 → 2026-10-12 (-19d) | 2026-11-29 → 2026-12-02 (+3d) |  |  |  |  |  |
| MLTX-02-004-CN-13490 | Placement of Lawn Ground Cover (Rolling and Compaction) | 2026-10-31 A → 2026-10-12 A (-19d) | 2026-11-28 → 2026-10-28 A (-31d) | 4d → 7d | 40% → 100% | 30.9d → none | MLTX-02-004-CN-13500 SS, MLTX-02-004-CN-14350, MLTX-02-004-CN-14720, MLTX-02-004-PR-11820, MLTX-02-004-EN-15300 → MLTX-02-004-CN-14630 | resources Labor [2500 h]; Skilled Labor [1550 h]; Driver [540 h]; Water Tanker [250 h]; Lawn [2076.67] → Labor [2500 h]; Skilled Labor [1550 h]; Driver [540 h]; Water Tanker [250 h]; Lawn [3266.67] |
| MLTX-02-004-CN-13480 | Placement of Sweet/Agricultural Soil (Including Levelling and Grading) | 2026-10-31 A → 2026-10-29 A (-2d) | 2026-11-18 A → 2026-11-25 (+7d) | 6d → 5d | 100% → 80% | none → 35.5d | MLTX-02-004-PR-11940 FF, MLTX-02-004-EN-15380 → MLTX-02-004-EN-15380, MLTX-02-004-CN-14650 | resources Labor [1850 h]; Driver [380 h]; Dump Truck [500 h]; Bobcat [280 h]; Cassia Glauca [25.5]; Plumeria Alba [25.5]; Neem [1.5]; Lawn [890] → Labor [1850 h]; Driver [380 h]; Dump Truck [500 h]; Bobcat [280 h]; Cassia Glauca [88]; Plumeria Alba [44]; Neem [4]; Lawn [2800] |
| MLTX-02-004-CN-13500 | Placement and Fixation of Trees | 2026-10-31 A → 2026-11-25 (+25d) | 2026-11-29 → 2026-12-02 (+3d) | 5d → 6d | 40% → 0% | 29.9d → 35.5d | MLTX-02-004-CN-13480 SS → MLTX-02-004-CN-13480 | resources Labor [2250 h]; Skilled Labor [1500 h]; Driver [500 h]; Water Tanker [250 h]; Cassia Glauca [59.5]; Plumeria Alba [59.5]; Neem [3.5] → Labor [2250 h]; Skilled Labor [1500 h]; Driver [500 h]; Water Tanker [250 h]; Cassia Glauca [206]; Plumeria Alba [103]; Neem [4] |
| 3 | **WALKING/BIKE PATHS** | 2026-06-11 → 2026-08-16 (+66d) | 2026-12-10 → 2026-12-02 (-8d) |  |  |  |  |  |
| MLTX-02-004-CN-13430 | Bike Path Preparation and Installation Works | 2026-06-11 A → 2026-08-16 A (+66d) | 2026-12-10 → 2026-12-02 (-8d) | 12d → 8d |  | -22.1d → 16d | MLTX-02-004-PR-11960 FF, MLTX-02-004-CN-13310, MLTX-02-004-CN-13480 FF, MLTX-02-004-PR-10230, MLTX-02-004-PR-8970 FF → MLTX-02-004-CN-13671, MLTX-02-004-PR-11960 FF, MLTX-02-004-CN-13490 FF | resources Skilled Labor [850 h]; Driver [460 h]; Bobcat [180 h]; Bike path [836.44] → Skilled Labor [850 h]; Driver [460 h]; Bobcat [180 h]; Bike path [1665] |
| MLTX-02-004-CN-13440 | Walking Path Preparation and Installation Works | 2026-06-11 A → 2026-08-16 A (+66d) | 2026-12-10 → 2026-10-29 A (-42d) | 12d → 8d | 60% → 100% | -13.1d → none | MLTX-02-004-CN-13430 SS, MLTX-02-004-PR-11960 FF, MLTX-02-004-CN-13480 FF, MLTX-02-004-CN-13730, Perimeter Clamping System Installation → MLTX-02-004-CN-13430 SS | resources Skilled Labor [850 h]; Driver [460 h]; Bobcat [180 h]; Walking path [803.1] → Skilled Labor [850 h]; Driver [460 h]; Bobcat [180 h]; Walking path [1575] |
| 6 | **GENERAL/FURNITURE** | 2026-10-03 → 2026-09-19 (-14d) | 2027-03-27 → 2027-02-06 (-49d) |  |  |  |  |  |

| ID | Task | Start | Finish | Duration | Complete | Total float | Predecessors | Other |
| --- | --- | --- | --- | --- | --- | --- | --- | --- |
| MLTX-02-004-CN-14350 | Preleminary Works for Site Light Poles Including Cable and Bases Works | 2026-10-03 A → 2026-09-19 A (-14d) | 2026-10-15 A → 2026-10-01 A (-14d) | 7d → 12d |  |  | MLTX-02-004-EN-15590, MLTX-02-004-EN-15620, MLTX-02-004-EN-15610, MLTX-02-004-CN-13460, MLTX-02-004-EN-15600 → MLTX-02-004-CN-13460, MLTX-02-004-EN-16180, MLTX-02-004-EN-15590, MLTX-02-004-EN-15600, MLTX-02-004-EN-15610, MLTX-02-004-EN-15620, MLTX-02-004-EN-15300 | resources Labor [950 h]; Driver [340 h]; Electrician [460 h]; Forklift [240 h]; Supply, install, testing, and commissioning of ground mounted decorated landscape LED lighting with 6.0m height pole [12] → Labor [950 h]; Driver [340 h]; Electrician [460 h]; Forklift [240 h]; Supply, install, testing, and commissioning of ground mounted decorated landscape LED lighting with 6.0m height pole [32.2] |
| MLTX-02-004-CN-14360 | Installing of Site Light Poles | 2026-10-18 A → 2026-10-04 A (-14d) | 2026-11-03 A → 2027-01-31 (+89d) | 13d → 12d | 100% → 92% | none → -16d | MLTX-02-004-PR-12090, MLTX-02-004-CN-14350, MLTX-02-004-PR-11820, MLTX-02-004-EN-15300 → MLTX-02-004-CN-13490 FF, MLTX-02-004-CN-13400 FF, MLTX-02-004-PR-12090 | resources Skilled Labor [700 h]; Electrician [500 h]; Crane [140 h]; Supply, install, testing, and commissioning of ground mounted decorated landscape LED lighting with 6.0m height pole [28] → Skilled Labor [700 h]; Electrician [500 h]; Crane [140 h]; Supply, install, testing, and commissioning of ground mounted decorated landscape LED lighting with 6.0m height pole [75.14] |
| MLTX-02-004-CN-13870 | Fixation and Installation of Steel Frame for Benches | 2027-02-03 → 2026-12-03 (-62d) | 2027-02-11 → 2026-12-14 (-59d) | 7d → 10d |  | -69.1d → 16d | MLTX-02-004-EN-15340, MLTX-02-004-CN-13430, MLTX-02-004-CN-14350, MLTX-02-004-CN-14720, MLTX-02-004-PR-11820, MLTX-02-004-EN-15300, MLTX-02-004-PR-11130, MLTX-02-004-PR-12000 → MLTX-02-004-EN-15340, MLTX-02-004-CN-13430 |  |
| MLTX-02-004-CN-13880 | Fixation and Installation of Benches | 2027-02-11 → 2026-12-15 (-58d) | 2027-02-20 → 2026-12-24 (-58d) | 7d → 9d |  | -69.1d → 16d | MLTX-02-004-CN-13870, MLTX-02-004-CN-14350, MLTX-02-004-CN-14360, MLTX-02-004-PR-11820, MLTX-02-004-EN-15300 → MLTX-02-004-CN-13870 |  |
| MLTX-02-004-CN-13890 | Fixation and Installation of Precast Concrete Seats (Rectangular) | 2027-02-11 → 2026-12-15 (-58d) | 2027-02-20 → 2026-12-24 (-58d) | 7d → 9d |  | -69.1d → 16d | MLTX-02-004-CN-13880 FF, MLTX-02-004-CN-13880 SS, MLTX-02-004-CN-14350, MLTX-02-004-CN-14360, MLTX-02-004-PR-11820, MLTX-02-004-EN-15300, MLTX-02-004-PR-11090 → MLTX-02-004-CN-13880 SS, MLTX-02-004-CN-13880 FF | resources Skilled Labor [700 h]; Driver [420 h]; Crane [160 h]; Supply and install recycled precast concrete rectangular seats [28] → Skilled Labor [700 h]; Driver [420 h]; Crane [160 h]; Supply and install recycled precast concrete rectangular seats [37.33] |
| MLTX-02-004-CN-13900 | Fixation and Installation of Precast Concrete Seats (Circular) | 2027-02-11 → 2026-12-15 (-58d) | 2027-02-20 → 2026-12-24 (-58d) | 7d → 9d |  | -69.1d → 16d | MLTX-02-004-CN-13890 SS, MLTX-02-004-CN-13890 FF, MLTX-02-004-CN-14350, MLTX-02-004-CN-14360, MLTX-02-004-PR-11820, MLTX-02-004-EN-15300 → MLTX-02-004-CN-13890 SS, MLTX-02-004-CN-13890 FF | resources Skilled Labor [700 h]; Driver [420 h]; Crane [160 h]; Supply and install recycled precast concrete circular seats [24] → Skilled Labor [700 h]; Driver [420 h]; Crane [160 h]; Supply and install recycled precast concrete circular seats [32] |
| MLTX-02-004-CN-13910 | Fixation and Installation of Precast Concrete Trash Bins | 2027-02-20 → 2026-12-26 (-56d) | 2027-03-06 → 2027-01-06 (-59d) |  |  | -69.1d → 16d | MLTX-02-004-CN-13370, MLTX-02-004-CN-13900, MLTX-02-004-CN-14350, Tartan Floor Installation Works for Landscape (Including Finishing Works), MLTX-02-004-PR-11820, MLTX-02-004-EN-15300 → MLTX-02-004-CN-13500, MLTX-02-004-CN-13900, MLTX-02-004-CN-13370 | resources Skilled Labor [400 h]; Driver [320 h]; Crane [160 h]; Supply and install recycled precast concrete trash bins [8.33] → Skilled Labor [400 h]; Driver [320 h]; Crane [160 h]; Supply and install recycled precast concrete trash bins [10] |
| MLTX-02-004-CN-13400 | Stamped Concrete Works for LandScape (Including Finishing Works) | 2026-11-23 A → 2027-01-24 (+62d) | 2026-11-29 → 2027-01-31 (+63d) | 5d → 7d | 10% → 0% | 12.9d → -16d | MLTX-02-004-CN-14350, MLTX-02-004-PR-11820, MLTX-02-004-EN-15300 → MLTX-02-004-MS-1150, MLTX-02-004-CN-13440 | resources Skilled Labor [850 h]; Steel Fixer [320 h]; Stamped concrete floor [600] → Skilled Labor [850 h]; Steel Fixer [320 h]; Stamped concrete floor [120] |
| MLTX-02-004-CN-13470 | Traffic Signs Posts and Poles Installation | 2027-03-06 → 2027-02-01 (-33d) | 2027-03-27 → 2027-02-06 (-49d) | 15d → 5d |  | -69.1d → -16d | MLTX-02-004-CN-13900, MLTX-02-004-CN-13370, MLTX-02-004-CN-14360, MLTX-02-004-PR-11160, MLTX-02-004-CN-13910, MLTX-02-004-PR-12050, MLTX-02-004-CN-13400 → MLTX-02-004-CN-13900, MLTX-02-004-CN-14360, MLTX-02-004-CN-13370 |  |
| 2 | **PARKING** | 2026-05-16 → 2026-08-11 (+87d) | 2026-10-12 → 2026-12-02 (+51d) |  |  |  |  |  |
| MLTX-02-004-CN-13380 | Site Preparation & Compaction Under Interlock for Parking Area | 2026-05-16 A → 2026-08-11 A (+87d) | 2026-07-22 A → 2026-10-18 A (+88d) | 3d → 4d |  |  | MLTX-02-004-EN-15370, MLTX-02-004-CN-13720 → MLTX-02-004-EN-15370 |  |
| MLTX-02-004-CN-13370 | Interlock Installation (8 Cm) for Parking Area (Including Finishing Works) | 2026-10-03 A → 2026-11-24 (+52d) | 2026-10-12 A → 2026-12-02 (+51d) | 20d → 8d | 100% → 0% | none → 35d | MLTX-02-004-CN-13380, MLTX-02-004-CN-13730, MLTX-02-004-CN-13720, MLTX-02-004-EN-15400 → MLTX-02-004-CN-13450, MLTX-02-004-CN-13380 | resources Labor [2000 h]; Skilled Labor [700 h]; Driver [400 h]; Forklift [300 h]; Supply and install interlock tiles for parking 8cm [466.67] → Labor [2000 h]; Skilled Labor [700 h]; Driver [400 h]; Forklift [300 h]; Supply and install interlock tiles for parking 8cm [466.66] |
| TO | **TOILET/SERVICE BUILDING** | 2026-05-21 → 2026-07-19 (+59d) | 2027-02-15 → 2026-12-05 (-72d) |  |  |  |  |  |
| 13 | **STRUCTURE WORKS** | 2026-05-21 → 2026-07-19 (+59d) | 2026-08-02 → 2026-08-11 (+9d) |  |  |  |  |  |
| 2 | **CONCRETE WORKS** | 2026-06-20 → 2026-07-19 (+29d) | 2026-07-12 → 2026-08-03 (+22d) |  |  |  |  |  |
| 1 | **SUB-STRUCTURE** | 2026-06-20 → 2026-07-19 (+29d) | 2026-06-25 → 2026-07-25 (+30d) |  |  |  |  |  |
| MLTX-02-004-CN-13920 | Plain Concrete Under Footing | 2026-06-20 A → 2026-07-19 A (+29d) | 2026-06-21 A → 2026-07-19 A (+28d) | 4d → 3d |  |  | MLTX-02-004-EN-13280, MLTX-02-004-EN-15720, MLTX-02-004-CN-14000, MLTX-02-004-EN-15710, MLTX-02-004-EN-15270, MLTX-02-004-EN-15700, MLTX-02-004-CN-13980, MLTX-02-004-CN-13940 → MLTX-02-004-EN-15700, MLTX-02-004-EN-15710, MLTX-02-004-EN-15720, MLTX-02-004-EN-15270, MLTX-02-004-EN-13280, MLTX-02-004-CN-14000, MLTX-02-004-CN-13980 |  |
| MLTX-02-004-CN-13950 | Reinforced Concrete Works for Slab on Grade Including Steel Fixing | 2026-06-22 A → 2026-07-20 A (+28d) | 2026-06-25 A → 2026-07-25 A (+30d) |  |  |  | MLTX-02-004-PR-11150, MLTX-02-004-CN-13920, MLTX-02-004-CN-14050 → MLTX-02-004-PR-11150, MLTX-02-004-CN-13920 |  |
| 2 | **SUPER-STRUCTURE** | 2026-07-07 → 2026-07-30 (+23d) | 2026-07-12 → 2026-08-03 (+22d) |  |  |  |  |  |
| MLTX-02-004-CN-13930 | AAC Panels Works for Walls | 2026-07-07 A → 2026-07-30 A (+23d) | 2026-07-08 A → 2026-08-01 A (+24d) | 7d → 18d |  |  | MLTX-02-004-EN-15670, MLTX-02-004-EN-15650, MLTX-02-004-EN-15320, MLTX-02-004-EN-15640, MLTX-02-004-EN-15690, MLTX-02-004-EN-15680, MLTX-02-004-EN-15660, MLTX-02-004-EN-15630 → MLTX-02-004-EN-15630, MLTX-02-004-EN-15640, MLTX-02-004-EN-15650, MLTX-02-004-EN-15660, MLTX-02-004-EN-15670, MLTX-02-004-EN-15680, MLTX-02-004-EN-15690, MLTX-02-004-CN-14030, MLTX-02-004-CN-14030 SS | resources Labor [500 h]; Skilled Labor [200 h]; Driver [280 h]; Crane [160 h]; The autoclaved aerated panel for slabs, external and internal walls and parapet [150] → Labor [500 h]; Skilled Labor [200 h]; Driver [280 h]; Crane [100 h]; The autoclaved aerated panel for slabs, external and internal walls and parapet [150] |
| MLTX-02-004-CN-13940 | Parpet Works and Lintels | 2026-07-11 A → 2026-08-01 A (+21d) | 2026-07-12 A → 2026-08-02 A (+21d) | 4d → 8d |  |  |  | resources Labor [200 h]; Skilled Labor [60 h]; Driver [100 h]; Crane [60 h]; The autoclaved aerated panel for slabs, external and internal walls and parapet [50] → Labor [200 h]; Skilled Labor [60 h]; Driver [100 h]; Crane [50 h]; The autoclaved aerated panel for slabs, external and internal walls and parapet [50] |
| MLTX-02-004-CN-13960 | AAC Panels Works for Slabs | 2026-07-09 A → 2026-08-02 A (+24d) | 2026-07-11 A → 2026-08-03 A (+23d) | 3d → 15d |  |  |  |  |
| 1 | **UNDER GROUND SEPTIC TANK** | 2026-05-31 → 2026-07-23 (+53d) | 2026-06-24 → 2026-07-27 (+33d) |  |  |  |  |  |
| MLTX-02-004-CN-14510 | Plain Concrete Under Footing | 2026-05-31 A → 2026-07-23 A (+53d) | 2026-06-01 A → 2026-07-23 A (+52d) |  |  |  | MLTX-02-004-CN-13970, MLTX-02-004-CN-13990, MLTX-02-004-CN-14620 → MLTX-02-004-CN-13970, MLTX-02-004-CN-13990 |  |
| MLTX-02-004-CN-14530 | Reinforced Concrete Works for Tank Foundation Including Shuttering and Steel Fixing | 2026-06-10 A → 2026-07-23 A (+43d) | 2026-06-13 A → 2026-07-23 A (+40d) |  |  |  | MLTX-02-004-CN-14510, MLTX-02-004-CN-14620 → MLTX-02-004-CN-14510 |  |
| MLTX-02-004-CN-14520 | Reinforced Concrete Works for Tank Slab Including Shuttering and Steel Fixing | 2026-06-20 A → 2026-07-27 A (+37d) | 2026-06-24 A → 2026-07-27 A (+33d) | 10d → 8d |  |  | MLTX-02-004-CN-14540, MLTX-02-004-CN-14220 → MLTX-02-004-CN-14540 | resources Labor [700 h]; Skilled Labor [250 h]; Steel Fixer [240 h]; Tank Slab [3] → Labor [700 h]; Skilled Labor [360 h]; Steel Fixer [240 h]; Tank Slab [3] |
| MLTX-02-004-CN-14540 | Reinforced Concrete Works for Tank Walls Including Steel Fixing | 2026-06-07 A → 2026-07-27 A (+50d) | 2026-06-11 A → 2026-07-27 A (+46d) | 11d → 6d |  |  | MLTX-02-004-CN-14530, MLTX-02-004-CN-14220 → MLTX-02-004-CN-14530 |  |
| 3 | **THERMAL & MOISTER PROTECTION** | 2026-05-21 → 2026-07-20 (+60d) | 2026-08-02 → 2026-08-11 (+9d) |  |  |  |  |  |
| 1 | **ANTI TERMIT CONTROL** | 2026-05-21 → 2026-07-20 (+60d) | 2026-05-25 → 2026-07-30 (+66d) |  |  |  |  |  |
| MLTX-02-004-CN-13990 | Anti Termite Works Under Foundation | 2026-05-24 A → 2026-07-20 A (+57d) | 2026-05-25 A → 2026-07-20 A (+56d) |  |  |  | MLTX-02-004-CN-14740 SS, MLTX-02-004-CN-13860, MLTX-02-004-CN-14620 → MLTX-02-004-CN-13860 |  |
| MLTX-02-004-CN-14000 | Anti Termite Works Under Slab on Grade and Grade Beams | 2026-05-21 A → 2026-07-30 A (+70d) | 2026-05-21 A → 2026-07-30 A (+70d) |  |  |  | MLTX-02-004-CN-14530, MLTX-02-004-CN-13940 → MLTX-02-004-CN-13860 |  |
| 2 | **POLYETHYLENE SHEET** | 2026-05-25 → 2026-07-20 (+56d) | 2026-06-21 → 2026-07-30 (+39d) |  |  |  |  |  |
| MLTX-02-004-CN-13970 | Water Proofing Under Blinding Concrete (Polythelen Sheet) | 2026-05-25 A → 2026-07-20 A (+56d) | 2026-05-31 A → 2026-07-20 A (+50d) |  |  |  | MLTX-02-004-EN-14390, MLTX-02-004-EN-15280, MLTX-02-004-CN-13990 SS, MLTX-02-004-CN-14620 → MLTX-02-004-EN-15280, MLTX-02-004-EN-14390, MLTX-02-004-CN-13990 SS |  |
| MLTX-02-004-CN-13980 | Water Proofing Under Slab on Grade (Polythelen Sheet) | 2026-06-21 A → 2026-07-30 A (+39d) | 2026-06-21 A → 2026-07-30 A (+39d) |  |  |  | MLTX-02-004-CN-14530, MLTX-02-004-EN-14390, MLTX-02-004-CN-14000 SS, MLTX-02-004-CN-13940 → MLTX-02-004-EN-14390, MLTX-02-004-CN-14000 SS |  |
| 4 | **EPOXY** | 2026-07-12 → 2026-08-09 (+28d) | 2026-08-02 → 2026-08-11 (+9d) |  |  |  |  |  |
| MLTX-02-004-CN-14010 | Surface Preparation for Epoxy Coating | 2026-07-12 A → 2026-08-09 A (+28d) | 2026-07-12 A → 2026-08-09 A (+28d) | 3d → 5d |  |  | MLTX-02-004-CN-14540, MLTX-02-004-CN-14520, MLTX-02-004-CN-13980 → MLTX-02-004-CN-14520 |  |
| MLTX-02-004-CN-14020 | Epoxy Coating for Walls and Slab of Tank | 2026-07-25 A → 2026-08-11 A (+17d) | 2026-08-02 A → 2026-08-11 A (+9d) | 5d → 8d |  |  | MLTX-02-004-CN-14010, MLTX-02-004-CN-13980 → MLTX-02-004-CN-14010 |  |
| 5 | **MASONARY WORK** | 2026-07-13 → 2026-08-10 (+28d) | 2026-07-14 → 2026-08-12 (+29d) |  |  |  |  |  |
| MLTX-02-004-CN-14030 | CMU Masonary Works Including all Accessories | 2026-07-13 A → 2026-08-10 A (+28d) | 2026-07-14 A → 2026-08-12 A (+29d) | 5d → 4d |  |  |  |  |
| 3 | **THERMAL & MOISTER PROTECTION** | 2026-09-26 → 2026-09-15 (-11d) | 2026-11-07 → 2026-10-11 (-27d) |  |  |  |  |  |
| MLTX-02-004-CN-14050 | Preparing Surface and Preliminary Works for Toilets Waterproofing | 2026-09-26 A → 2026-09-15 A (-11d) | 2026-09-26 A → 2026-09-15 A (-11d) | 2d → 4d |  |  |  |  |
| MLTX-02-004-CN-14060 | Finalize Water Proofing Works for Toilets | 2026-10-19 A → 2026-09-15 A (-34d) | 2026-10-19 A → 2026-09-28 A (-21d) | 6d → 5d |  |  |  |  |
| MLTX-02-004-CN-14070 | Preparing Surface and Preliminary Works for Roofing and Wet Areas Insulation | 2026-09-30 A → 2026-09-27 A (-3d) | 2026-09-30 A → 2026-09-27 A (-3d) |  |  |  | MLTX-02-004-CN-14050 → MLTX-02-004-CN-14060 |  |
| MLTX-02-004-CN-14080 | Finalize Water Proofing Works for Roofing and Wet Areas | 2026-10-03 A → 2026-09-28 A (-5d) | 2026-11-07 A → 2026-10-11 A (-27d) | 8d → 6d |  |  |  |  |
| 11 | **MECHANICAL WORK** | 2026-07-18 → 2026-08-15 (+28d) | 2026-12-01 → 2026-12-05 (+4d) |  |  |  |  |  |
| 4 | **HVAC SYSTEM** | 2026-07-19 → 2026-09-27 (+70d) | 2026-11-03 → 2026-11-08 (+5d) |  |  |  |  |  |
| MLTX-02-004-CN-14150 | Preliminary HVAC and Ventilation Works | 2026-07-19 A → 2026-09-27 A (+70d) | 2026-07-22 A → 2026-09-27 A (+67d) |  |  |  | MLTX-02-004-EN-15470, MLTX-02-004-EN-15750, MLTX-02-004-EN-15730, MLTX-02-004-EN-16330, MLTX-02-004-EN-15740, MLTX-02-004-EN-16320, MLTX-02-004-CN-14280 → MLTX-02-004-CN-14450, MLTX-02-004-EN-16320, MLTX-02-004-EN-16330, MLTX-02-004-EN-15730, MLTX-02-004-EN-15750, MLTX-02-004-EN-15740, MLTX-02-004-EN-15470 |  |
| MLTX-02-004-CN-14170 | Exhaust, Air Ducts Installation with all Accessories | 2026-09-12 A → 2026-09-27 A (+15d) | 2026-09-12 A → 2026-09-27 A (+15d) | 6d → 7d |  |  | MLTX-02-004-CN-14150, MLTX-02-004-PR-11520 → MLTX-02-004-CN-14080, MLTX-02-004-CN-14150 | resources Labor [200 h]; Skilled Labor [180 h]; Driver [60 h]; Crane [120 h]; Mechanical [120 h]; Supply, install, test and commission inline exhaust fans duct [1] → Labor [200 h]; Skilled Labor [180 h]; Driver [60 h]; Mechanical [120 h]; Crane [120 h]; Supply, install, test and commission inline exhaust fans duct [1] |
| MLTX-02-004-CN-14160 | Install and Finish HVAC and Ventilation Works Including Split Air Units | 2026-11-03 A → 2026-11-01 A (-2d) | 2026-11-03 A → 2026-11-08 A (+5d) | 3d → 6d |  |  | MLTX-02-004-CN-14170 FF, MLTX-02-004-CN-14570, MLTX-02-004-PR-11480, MLTX-02-004-PR-11460, MLTX-02-004-PR-11500 → MLTX-02-004-PR-11460, MLTX-02-004-CN-14570, MLTX-02-004-CN-14170 FF | resources Labor [150 h]; Skilled Labor [90 h]; Driver [60 h]; Crane [60 h]; Mechanical [60 h]; Supply and install split air conditioning unit (DX-MINI SPLIT UNIT) [1] → Labor [150 h]; Skilled Labor [90 h]; Driver [60 h]; Mechanical [60 h]; Crane [60 h]; Supply and install split air conditioning unit (DX-MINI SPLIT UNIT) [1] |
| 2 | **WATER SUPPLY SYSTEM** | 2026-07-28 → 2026-08-15 (+18d) | 2026-12-01 → 2026-12-05 (+4d) |  |  |  |  |  |
| MLTX-02-004-CN-14180 | Installing of PPR Pipes and Fittings for Water Network | 2026-07-28 A → 2026-08-15 A (+18d) | 2026-08-02 A → 2026-08-15 A (+13d) |  |  |  | MLTX-02-004-EN-15770, MLTX-02-004-CN-14220, MLTX-02-004-EN-15440, MLTX-02-004-EN-15780, MLTX-02-004-PR-11340, MLTX-02-004-CN-13950 → MLTX-02-004-EN-15770, MLTX-02-004-EN-15780, MLTX-02-004-EN-15440, MLTX-02-004-PR-11340, MLTX-02-004-CN-14220 |  |
| MLTX-02-004-CN-14190 | Installing of HDPE Pipes and Valves for Water Supply Network | 2026-09-29 A → 2026-10-05 A (+6d) | 2026-10-17 A → 2026-10-10 A (-7d) | 3d → 5d |  |  | MLTX-02-004-CN-14600, MLTX-02-004-CN-14150 → MLTX-02-004-CN-14180 | resources Labor [250 h]; Plumber [100 h]; SERVICE CONNECTIONS 50 mm ? [53.33] → Labor [250 h]; Plumber [100 h]; SERVICE CONNECTIONS 50 mm [80] |
| MLTX-02-004-CN-14690 | Installing of Water Heater | 2026-10-20 A → 2026-10-08 A (-12d) | 2026-10-20 A → 2026-10-11 A (-9d) |  |  |  | MLTX-02-004-CN-14600 → MLTX-02-004-CN-14190 |  |
| MLTX-02-004-CN-14600 | Installing of Valves and Fittings | 2026-09-05 A → 2026-11-01 A (+57d) | 2026-09-05 A → 2026-11-05 A (+61d) | 2d → 4d |  |  | MLTX-02-004-CN-14180, MLTX-02-004-CN-14150 → MLTX-02-004-CN-14180 | resources Labor [100 h]; Plumber [40 h]; SERVICE CONNECTIONS 50 mm ? [13.33] → Labor [100 h]; Plumber [40 h]; SERVICE CONNECTIONS 50 mm [20] |
| MLTX-02-004-CN-14210 | Installing of GRP Tanks | 2026-09-28 A → 2026-11-24 (+57d) | 2026-10-13 A → 2026-11-29 (+47d) | 8d → 5d | 100% → 0% | none → 44d | MLTX-02-004-CN-14600 → MLTX-02-004-CN-14190 | resources Skilled Labor [120 h]; Driver [100 h]; Crane [160 h]; Plumber [140 h]; Hot Press GRP Sectional Panel Water Tanks (4x3x3m) [0.33] → Skilled Labor [120 h]; Driver [100 h]; Plumber [140 h]; Crane [160 h]; Hot Press GRP Sectional Panel Water Tanks (4x3x3m) [0.67] |
| MLTX-02-004-CN-14200 | Installing of Booster Pump Units Including fittings and accessories | 2026-11-23 → 2026-11-30 (+7d) | 2026-12-01 → 2026-12-05 (+4d) | 7d → 5d |  | 15.9d → 44d | MLTX-02-004-CN-14170, MLTX-02-004-CN-14210, MLTX-02-004-CN-14160, MLTX-02-004-CN-14580, MLTX-02-004-CN-14570, MLTX-02-004-PR-11500, MLTX-02-004-CN-14300 → MLTX-02-004-CN-14210, MLTX-02-004-CN-14210 FF | resources Labor [200 h]; Plumber [80 h]; (2W+1S Pumps) - flow of each pump 5 L/S @ 30 Meters [0.33] → Labor [200 h]; Plumber [80 h]; (2W+1S Pumps) - flow of each pump 5 L/S @ 30 Meters [0.67] |
| 1 | **SEWER/DRAINAGE SYSTEM** | 2026-07-18 → 2026-08-15 (+28d) | 2026-11-29 → 2026-11-14 (-15d) |  |  |  |  |  |
| MLTX-02-004-CN-14220 | Installing UPVC Pipes for Sewage Network | 2026-07-18 A → 2026-08-15 A (+28d) | 2026-07-22 A → 2026-08-15 A (+24d) |  |  |  | MLTX-02-004-EN-15790, MLTX-02-004-EN-15800, MLTX-02-004-EN-15430, MLTX-02-004-PR-11360 → MLTX-02-004-EN-15790, MLTX-02-004-EN-15800, MLTX-02-004-EN-15430, MLTX-02-004-PR-11360, MLTX-02-004-CN-13940 |  |
| MLTX-02-004-CN-14610 | Installing UPVC Pipes for External Connection for Sewage Network | 2026-11-07 A → 2026-10-05 A (-33d) | 2026-11-07 A → 2026-10-11 A (-27d) |  |  |  | MLTX-02-004-CN-14150 → MLTX-02-004-CN-14220 | resources Skilled Labor [90 h]; Plumber [30 h]; Supply and install 150 mm uPVC pipes to external wastewater network [16.67] → Skilled Labor [90 h]; Plumber [30 h]; Supply and install 150 mm uPVC pipes to external wastewater network [100] |
| MLTX-02-004-CN-14700 | Installing of Toilet Fixtures and Accessories Such as Closets and Basins | 2026-11-03 A → 2026-11-01 A (-2d) | 2026-11-07 A → 2026-11-05 A (-2d) | 4d → 3d |  |  | MLTX-02-004-CN-14220 → MLTX-02-004-CN-14680, MLTX-02-004-CN-14200, MLTX-02-004-CN-14460 |  |
| MLTX-02-004-CN-14230 | Installing of Plumping Fixtures and Accessories | 2026-11-05 A → 2026-11-09 A (+4d) | 2026-11-07 A → 2026-11-13 A (+6d) | 2d → 4d |  |  | MLTX-02-004-CN-14610, MLTX-02-004-CN-14500, MLTX-02-004-CN-14170, MLTX-02-004-CN-14210 → MLTX-02-004-CN-14600, MLTX-02-004-CN-14610 |  |
| MLTX-02-004-CN-14680 | Installing Inspection Chamber for Sewage Network | 2026-10-22 A → 2026-11-09 A (+18d) | 2026-11-29 → 2026-11-14 A (-15d) |  | 90% → 100% | 18.9d → none | MLTX-02-004-CN-14220, MLTX-02-004-CN-14150 → MLTX-02-004-CN-14220 | resources Driver [80 h]; Crane [80 h]; Plumber [80 h]; Supply, installation, testing and commissioning of Inspection chamber [1] → Driver [80 h]; Plumber [80 h]; Crane [80 h]; Supply, installation, testing and commissioning of Inspection chamber [1] |
| 3 | **FIRE PROTECTION** | 2026-11-23 → 2026-11-24 (+1d) | 2026-11-25 → 2026-11-28 (+3d) |  |  |  |  |  |
| MLTX-02-004-CN-14240 | Installing of Fire Fighting Extinguisher and accessories (PFE-1, PFE-2) | 2026-11-23 → 2026-11-24 (+1d) | 2026-11-25 → 2026-11-28 (+3d) | 2d → 4d |  | 20.9d → 50d | MLTX-02-004-EN-15760, MLTX-02-004-CN-14670, MLTX-02-004-CN-14710, MLTX-02-004-EN-15450, MLTX-02-004-CN-14160, MLTX-02-004-CN-14080 → MLTX-02-004-EN-15760, MLTX-02-004-CN-14700, MLTX-02-004-EN-15450, MLTX-02-004-CN-14670, MLTX-02-004-CN-14710 |  |
| 12 | **ELECTRICAL WORKS** | 2026-07-19 → 2026-08-16 (+28d) | 2027-01-19 → 2026-12-01 (-49d) |  |  |  |  |  |
| 1 | **ROUGH-IN WORKS** | 2026-07-19 → 2026-08-16 (+28d) | 2026-08-09 → 2026-08-29 (+20d) |  |  |  |  |  |
| MLTX-02-004-CN-14280 | Preleminary Works for Cable Works | 2026-07-19 A → 2026-08-16 A (+28d) | 2026-07-22 A → 2026-08-29 A (+38d) | 2d → 9d |  |  | MLTX-02-004-EN-15850, MLTX-02-004-EN-15810, MLTX-02-004-EN-15880, MLTX-02-004-EN-15500, MLTX-02-004-EN-15290, MLTX-02-004-CN-13940, MLTX-02-004-CN-13930, MLTX-02-004-CN-11660 → MLTX-02-004-EN-15810, MLTX-02-004-EN-15850, MLTX-02-004-EN-15290, MLTX-02-004-EN-15500, MLTX-02-004-EN-15880, MLTX-02-004-CN-13940 | resources Labor [210 h]; Electrician [60 h]; Recessed mounted LED downlight luminaire 40 watt with reflector; IP44 ,230V , 4000k, 4200 LUMEN ,CRI > 80; Low glare [12]; LED flood light outdoor type 96 watt, 4000k, 12720 LUMEN [0.4]; Wall mounted emergency LED luminaire, 230V, 60 Hz., 3 hour back up time 1800 lumen,CRI>80, 2*18 watt, IP 65 [1.6]; LED Exit light fixture 4.5 watt with battery for 3 hours, and a visibility of 30 meters [0.4]; Wall mounted outdoor LED luminaire, 17 watt, 2000 lumens, with light emission from two sides [0.4]; Wall mounted outdoor LED luminaire, 13 watt, 1000 LUMEN, CR>80, for roof lighting [5] → Labor [210 h]; Electrician [60 h]; Recessed mounted LED downlight luminaire 40 watt with reflector; IP44 ,230V , 4000k, 4200 LUMEN ,CRI > 80; Low glare [12]; LED flood light outdoor type 96 watt, 4000k, 12720 LUMEN [0.4]; Wall mounted emergency LED luminaire, 230V, 60 Hz., 3 hour back up time 1800 lumen,CRI>80, 2*18 watt, IP 65 [1.6]; LED Exit light fixture 4.5 watt with battery for 3 hours, and a visibility of 30 meters [0.4]; Wall mounted outdoor LED luminaire, 17 watt, 2000 lumens, with light emission from two sides [0.4]; Wall mounted outdoor LED luminaire, 13 watt, 1000 LUMEN, CR>80, for roof lighting [2.4] |
| MLTX-02-004-CN-14290 | Preleminary Works for Sockets and Power Points | 2026-07-19 A → 2026-08-16 A (+28d) | 2026-07-20 A → 2026-08-29 A (+40d) | 2d → 9d |  |  | MLTX-02-004-CN-13930, MLTX-02-004-CN-13940, MLTX-02-004-CN-11660 → MLTX-02-004-CN-13940 | resources Labor [140 h]; Electrician [40 h]; 1 way, One Gang Switch [0.8]; 1 way, Two Gang Switch [3]; 1 way, One Gang Switch, weatherproof [0.4]; Exaust fan DP switch weatherproof [0.4]; Indoor AC DP switch weatherproof [0.4]; High level Single Receptacle outlet [3]; Duplex Receptacle outlet [6]; Hand Dryer switch weatherproof [0.4]; Water heater switch [0.4]; Outdoor Disconnect Switch for air conditioiner [0.9]; Outdoor Disconnect Switch for exhaust fans [0.4] → Labor [140 h]; Electrician [40 h]; 1 way, One Gang Switch [0.8]; 1 way, Two Gang Switch [1.6]; 1 way, One Gang Switch, weatherproof [0.4]; Exaust fan DP switch weatherproof [0.4]; Indoor AC DP switch weatherproof [0.4]; High level Single Receptacle outlet [1.6]; Duplex Receptacle outlet [2.8]; Hand Dryer switch weatherproof [0.4]; Water heater switch [0.4]; Outdoor Disconnect Switch for air conditioiner [0.4]; Outdoor Disconnect Switch for exhaust fans [0.4] |
| MLTX-02-004-CN-14310 | Preleminary Works for Lightning Works | 2026-07-19 A → 2026-08-16 A (+28d) | 2026-08-09 A → 2026-08-29 A (+20d) | 2d → 9d |  |  | MLTX-02-004-EN-15900, MLTX-02-004-CN-13940, MLTX-02-004-EN-15510, MLTX-02-004-CN-13930, MLTX-02-004-EN-15940, MLTX-02-004-CN-11660 → MLTX-02-004-EN-15900, MLTX-02-004-EN-15940, MLTX-02-004-EN-15510, MLTX-02-004-CN-13940 | resources Labor [140 h]; Electrician [40 h]; For Building [0.9] → Labor [140 h]; Electrician [40 h]; For Building [0.4] |
| MLTX-02-004-CN-14330 | Preleminary Works for Data & Telecommunication System | 2026-07-19 A → 2026-08-16 A (+28d) | 2026-08-09 A → 2026-08-29 A (+20d) | 2d → 9d |  |  | MLTX-02-004-CN-13940, MLTX-02-004-EN-12830, MLTX-02-004-EN-15990, MLTX-02-004-CN-13930, MLTX-02-004-EN-16000, MLTX-02-004-EN-15480 → MLTX-02-004-EN-15990, MLTX-02-004-EN-16000, MLTX-02-004-EN-15480, MLTX-02-004-CN-13940 | resources Labor [140 h]; Electrician [40 h]; Wall telephone outlet [1.2]; Wall mounted data outlet [1.2]; Telecom/IT rack complete with switch, router and patch Panel [0.9]; AV floor box outlet (1 HDMI) [0.4]; AV wall outlet (1 HDMI) [0.4] → Labor [140 h]; Electrician [40 h]; Wall telephone outlet [1.2]; Wall mounted data outlet [1.2]; Telecom/IT rack complete with switch, router and patch Panel [0.4]; AV floor box outlet (1 HDMI) [0.4]; AV wall outlet (1 HDMI) [0.4] |

| ID | Task | Start | Finish | Duration | Complete | Total float | Predecessors | Other |
| --- | --- | --- | --- | --- | --- | --- | --- | --- |
| MLTX-02-004-CN-14370 | Preleminary Works for Security and Access Control System | 2026-07-19 A → 2026-08-16 A (+28d) | 2026-08-09 A → 2026-08-29 A (+20d) | 2d → 9d |  |  | MLTX-02-004-CN-13940, MLTX-02-004-CN-13930, MLTX-02-004-EN-15490, MLTX-02-004-CN-11660 → MLTX-02-004-EN-15920, MLTX-02-004-EN-15970, MLTX-02-004-EN-15980, MLTX-02-004-EN-15490, MLTX-02-004-CN-13940 | resources Labor [210 h]; Electrician [60 h]; 1 CCTV cabinet (Rack) [0.9]; NVR [0.9]; 21" LED monitor [0.4]; Indoor dome type Camera IP-20 ,IK-10, POE type with infra red feature, minimum coverage 20 meters, ONVIF supported [5]; Outdoor fixed camera weahter proof IP-65, POE type [3]; Pull box for fiber optic cable pulling from provider [0.4] → Labor [210 h]; Electrician [60 h]; 1 CCTV cabinet (Rack) [0.4]; NVR [0.4]; 21" LED monitor [0.4]; Indoor dome type Camera IP-20 ,IK-10, POE type with infra red feature, minimum coverage 20 meters, ONVIF supported [2.4]; Outdoor fixed camera weahter proof IP-65, POE type [1.6]; Pull box for fiber optic cable pulling from provider [0.4] |
| MLTX-02-004-CN-14660 | Preleminary Works for Earthing Works | 2026-07-19 A → 2026-08-16 A (+28d) | 2026-08-09 A → 2026-08-29 A (+20d) | 2d → 9d |  |  | MLTX-02-004-EN-15930, MLTX-02-004-PR-11200, MLTX-02-004-CN-13930, MLTX-02-004-EN-15510, MLTX-02-004-CN-13940, MLTX-02-004-EN-15890, MLTX-02-004-CN-14030, MLTX-02-004-CN-11660 → MLTX-02-004-EN-15890, MLTX-02-004-EN-15930, MLTX-02-004-EN-15510, MLTX-02-004-PR-11200, MLTX-02-004-CN-13940 | resources Labor [210 h]; Electrician [60 h]; Distribution boards, panelboards, lighting installations and wiring accessories [0.9]; Telecom equipment [0.9]; KWHM [1.5] → Labor [210 h]; Electrician [60 h]; Distribution boards, panelboards, lighting installations and wiring accessories [0.4]; Telecom equipment [0.4]; KWHM [0.8] |
| 2 | **FIXTURE WORKS** | 2026-11-17 → 2026-10-05 (-43d) | 2027-01-19 → 2026-12-01 (-49d) |  |  |  |  |  |
| MLTX-02-004-CN-14300 | Installing and Finalize Works of Sockets and Power Points | 2026-11-18 A → 2026-10-05 A (-44d) | 2026-11-19 A → 2026-10-10 A (-40d) |  |  |  | MLTX-02-004-CN-14670, MLTX-02-004-PR-11400, MLTX-02-004-CN-14290 → MLTX-02-004-CN-14660 | resources Labor [60 h]; Electrician [60 h]; 1 way, One Gang Switch [1.2]; 1 way, Two Gang Switch [1]; 1 way, One Gang Switch, weatherproof [0.6]; Exaust fan DP switch weatherproof [0.6]; Indoor AC DP switch weatherproof [0.6]; High level Single Receptacle outlet [1]; Duplex Receptacle outlet [1]; Hand Dryer switch weatherproof [0.6]; Water heater switch [0.6]; Outdoor Disconnect Switch for air conditioiner [0.1]; Outdoor Disconnect Switch for exhaust fans [0.6] → Labor [60 h]; Electrician [60 h]; 1 way, One Gang Switch [1.2]; 1 way, Two Gang Switch [2.4]; 1 way, One Gang Switch, weatherproof [0.6]; Exaust fan DP switch weatherproof [0.6]; Indoor AC DP switch weatherproof [0.6]; High level Single Receptacle outlet [2.4]; Duplex Receptacle outlet [4.2]; Hand Dryer switch weatherproof [0.6]; Water heater switch [0.6]; Outdoor Disconnect Switch for air conditioiner [0.6]; Outdoor Disconnect Switch for exhaust fans [0.6] |
| MLTX-02-004-CN-14390 | Installing and Finalize Works of Earthing Works | 2026-11-18 A → 2026-10-05 A (-44d) | 2026-11-19 A → 2026-10-11 A (-39d) | 3d → 6d |  |  | MLTX-02-004-CN-14570, MLTX-02-004-CN-14660 → MLTX-02-004-CN-14300 | resources Labor [60 h]; Electrician [60 h]; Distribution boards, panelboards, lighting installations and wiring accessories [0.1]; Telecom equipment [0.1]; KWHM [0.5] → Labor [60 h]; Electrician [60 h]; Distribution boards, panelboards, lighting installations and wiring accessories [0.6]; Telecom equipment [0.6]; KWHM [1.2] |
| MLTX-02-004-CN-14320 | Installing and Finalize Works of Lighting Works including Light Fixtures | 2026-11-17 A → 2026-11-01 A (-16d) | 2026-11-18 A → 2026-11-05 A (-13d) |  |  |  | MLTX-02-004-CN-14280, MLTX-02-004-PR-11380, MLTX-02-004-CN-14670 → MLTX-02-004-PR-11220, MLTX-02-004-PR-11380, MLTX-02-004-CN-14670 | resources Labor [80 h]; Electrician [80 h]; Recessed mounted LED downlight luminaire 40 watt with reflector; IP44 ,230V , 4000k, 4200 LUMEN ,CRI > 80; Low glare [18]; LED flood light outdoor type 96 watt, 4000k, 12720 LUMEN [0.6]; Wall mounted emergency LED luminaire, 230V, 60 Hz., 3 hour back up time 1800 lumen,CRI>80, 2*18 watt, IP 65 [2.4]; LED Exit light fixture 4.5 watt with battery for 3 hours, and a visibility of 30 meters [0.6]; Wall mounted outdoor LED luminaire, 17 watt, 2000 lumens, with light emission from two sides [0.6]; Wall mounted outdoor LED luminaire, 13 watt, 1000 LUMEN, CR>80, for roof lighting [1] → Labor [80 h]; Electrician [80 h]; Recessed mounted LED downlight luminaire 40 watt with reflector; IP44 ,230V , 4000k, 4200 LUMEN ,CRI > 80; Low glare [18]; LED flood light outdoor type 96 watt, 4000k, 12720 LUMEN [0.6]; Wall mounted emergency LED luminaire, 230V, 60 Hz., 3 hour back up time 1800 lumen,CRI>80, 2*18 watt, IP 65 [2.4]; LED Exit light fixture 4.5 watt with battery for 3 hours, and a visibility of 30 meters [0.6]; Wall mounted outdoor LED luminaire, 17 watt, 2000 lumens, with light emission from two sides [0.6]; Wall mounted outdoor LED luminaire, 13 watt, 1000 LUMEN, CR>80, for roof lighting [3.6] |
| MLTX-02-004-CN-14400 | Installing and Finalize Works of Lightning Protection System | 2026-11-18 A → 2026-11-01 A (-17d) | 2026-11-18 A → 2026-11-05 A (-13d) |  |  |  | MLTX-02-004-CN-14310, MLTX-02-004-CN-14570 → MLTX-02-004-CN-14570 | resources Labor [100 h]; Electrician [100 h]; For Building [0.1] → Labor [100 h]; Electrician [100 h]; For Building [0.6] |
| MLTX-02-004-CN-14250 | Installing of Fire automation and Fire Alarm System | 2026-11-21 A → 2026-11-24 (+3d) | 2026-11-28 → 2026-12-01 (+3d) | 4d → 7d | 80% → 0% | 18.9d → 47d | MLTX-02-004-CN-14160, MLTX-02-004-EN-15910, MLTX-02-004-EN-15950, MLTX-02-004-EN-15960, MLTX-02-004-CN-14390 → MLTX-02-004-EN-15910, MLTX-02-004-EN-15950, MLTX-02-004-EN-15960, MLTX-02-004-CN-14160 |  |
| MLTX-02-004-CN-14340 | Installing Data and Telecommunication System with all Accessories | 2026-11-23 → 2026-11-24 (+1d) |  |  |  | 18.9d → 50d | MLTX-02-004-CN-14690, MLTX-02-004-CN-14330, MLTX-02-004-CN-14670, MLTX-02-004-CN-14390 → MLTX-02-004-CN-14670, MLTX-02-004-CN-14690 | resources Labor [80 h]; Electrician [80 h]; Wall telephone outlet [1.8]; Wall mounted data outlet [1.8]; Telecom/IT rack complete with switch, router and patch Panel [0.1]; AV floor box outlet (1 HDMI) [0.6]; AV wall outlet (1 HDMI) [0.6] → Labor [80 h]; Electrician [80 h]; Wall telephone outlet [1.8]; Wall mounted data outlet [1.8]; Telecom/IT rack complete with switch, router and patch Panel [0.6]; AV floor box outlet (1 HDMI) [0.6]; AV wall outlet (1 HDMI) [0.6] |
| MLTX-02-004-CN-14380 | Installing and Finalize Works of Security and Access Control System | 2026-11-18 A → 2026-11-24 (+6d) | 2026-11-18 A → 2026-11-30 (+12d) | 4d → 6d | 100% → 0% | none → 48d | MLTX-02-004-CN-14570, MLTX-02-004-CN-14370, MLTX-02-004-CN-14390 → MLTX-02-004-CN-14570 | resources Labor [80 h]; Electrician [80 h]; 1 CCTV cabinet (Rack) [0.1]; NVR [0.1]; 21" LED monitor [0.6]; Indoor dome type Camera IP-20 ,IK-10, POE type with infra red feature, minimum coverage 20 meters, ONVIF supported [1]; Outdoor fixed camera weahter proof IP-65, POE type [1]; Pull box for fiber optic cable pulling from provider [0.6] → Labor [80 h]; Electrician [80 h]; 1 CCTV cabinet (Rack) [0.6]; NVR [0.6]; 21" LED monitor [0.6]; Indoor dome type Camera IP-20 ,IK-10, POE type with infra red feature, minimum coverage 20 meters, ONVIF supported [3.6]; Outdoor fixed camera weahter proof IP-65, POE type [2.4]; Pull box for fiber optic cable pulling from provider [0.6] |
| 7 | **DOORS/WINDOWS** | 2026-10-20 → 2026-10-07 (-13d) | 2026-11-02 → 2026-11-28 (+26d) |  |  |  |  |  |
| MLTX-02-004-CN-14100 | Finalize Metal Doors for Toilets Building | 2026-10-20 A → 2026-10-07 A (-13d) | 2026-10-20 A → 2026-10-12 A (-8d) | 9d → 12d |  |  | MLTX-02-004-CN-14090 → MLTX-02-004-CN-14420, MLTX-02-004-CN-14420 FF | resources Labor [240 h]; Skilled Labor [90 h]; Metal Door D2 : [0.2] → Labor [240 h]; Skilled Labor [90 h]; Metal Door D2 : [0.6] |
| MLTX-02-004-CN-14090 | Preliminary Works For Doors | 2026-10-20 A → 2026-10-08 A (-12d) | 2026-10-20 A → 2026-10-10 A (-10d) |  |  |  |  | resources Labor [180 h]; Skilled Labor [60 h]; Metal Door D2 : [0.8] → Labor [180 h]; Skilled Labor [60 h]; Metal Door D2 : [0.4] |
| MLTX-02-004-CN-14550 | Preliminary Works For Windows/Curtain Wall | 2026-11-02 A → 2026-11-09 A (+7d) | 2026-11-02 A → 2026-11-10 A (+8d) |  |  |  | MLTX-02-004-CN-13940, MLTX-02-004-PR-11300, MLTX-02-004-CN-14370 → MLTX-02-004-PR-11300, MLTX-02-004-CN-13940 | resources Labor [120 h]; Skilled Labor [40 h]; Supply and install curtain wall with structural glass [0.9] → Labor [120 h]; Skilled Labor [40 h]; Supply and install curtain wall with structural glass [0.4] |
| MLTX-02-004-CN-14470 | Finalize Glazzed Curtain Wall Works | 2026-11-02 A → 2026-11-24 (+22d) | 2026-11-02 A → 2026-11-28 (+26d) | 7d → 4d | 100% → 0% | none → 50d | MLTX-02-004-CN-14550, MLTX-02-004-CN-14570 → MLTX-02-004-CN-14040, MLTX-02-004-CN-14570 | resources Labor [320 h]; Skilled Labor [120 h]; Supply and install curtain wall with structural glass [0.1] → Labor [320 h]; Skilled Labor [120 h]; Supply and install curtain wall with structural glass [0.6] |
| 4 | **METAL WORKS** |  | 2026-12-03 → 2026-09-27 (-67d) |  |  |  |  |  |
| MLTX-02-004-CN-14420 | Installation of Galvanized Steel Roof Scupper |  |  | 4d → 8d |  |  | MLTX-02-004-CN-14430 → MLTX-02-004-CN-11290, MLTX-02-004-CN-14040, MLTX-02-004-CN-14040 FF |  |
| MLTX-02-004-CN-14040 | Installation of Galvanized Steel Ladder | 2026-10-22 A → 2026-09-27 A (-25d) | 2026-10-22 A → 2026-09-27 A (-25d) | 10d → 8d |  |  | MLTX-02-004-CN-14420 → MLTX-02-004-CN-14660 |  |
| 6 | **FINISHING WORKS** | 2026-08-10 → 2026-08-29 (+19d) | 2026-12-01 → 2026-11-28 (-3d) |  |  |  |  |  |
| 1 | **FLOOR FINISHES** | 2026-10-17 → 2026-10-01 (-16d) |  |  |  |  |  |  |
| MLTX-02-004-CN-14110 | Creamic Tiles Floor Finish Works | 2026-10-17 A → 2026-10-01 A (-16d) | 2026-10-18 A → 2026-10-04 A (-14d) | 2d → 4d |  |  | MLTX-02-004-PR-11260, MLTX-02-004-CN-14120, MLTX-02-004-EN-15330, MLTX-02-004-CN-14180, MLTX-02-004-CN-14420 → MLTX-02-004-EN-15330, MLTX-02-004-PR-11260, MLTX-02-004-CN-14120, MLTX-02-004-CN-14180, MLTX-02-004-EN-12350 |  |
| MLTX-02-004-CN-14500 | Ceramic Skirting Tiles Finish Works | 2026-10-19 A → 2026-10-05 A (-14d) | 2026-10-19 A → 2026-10-07 A (-12d) | 4d → 2d |  |  | MLTX-02-004-CN-14450 → MLTX-02-004-CN-14110 |  |
| MLTX-02-004-CN-14490 | Epoxy Coat on Concrete Floor | 2026-11-18 A → 2026-10-07 A (-42d) | 2026-11-21 A → 2026-10-10 A (-42d) | 3d → 10d |  |  | MLTX-02-004-CN-14570, MLTX-02-004-CN-14380 → MLTX-02-004-CN-14040 |  |
| MLTX-02-004-CN-14480 | Granite Tiles Floor Finish Works | 2026-11-23 → 2026-11-24 (+1d) |  |  |  | 23.9d → 50d |  |  |
| 2 | **WALL FINISHES** | 2026-08-10 → 2026-08-29 (+19d) | 2026-12-01 → 2026-11-10 (-21d) |  |  |  |  |  |
| MLTX-02-004-CN-14120 | Preliminary Works for Wall Finish Works including Plastering (Internal) | 2026-08-10 A → 2026-08-29 A (+19d) | 2026-08-19 A → 2026-09-09 A (+21d) | 5d → 3d |  |  | MLTX-02-004-CN-14660, MLTX-02-004-CN-11660, MLTX-02-004-CN-14290, MLTX-02-004-CN-14280, MLTX-02-004-CN-14370, MLTX-02-004-CN-14310, MLTX-02-004-EN-15310, MLTX-02-004-CN-14330 → MLTX-02-004-CN-14060, MLTX-02-004-EN-15310, MLTX-02-004-CN-14280, MLTX-02-004-CN-14290, MLTX-02-004-CN-14310, MLTX-02-004-CN-14330, MLTX-02-004-CN-14370, MLTX-02-004-CN-14660, MLTX-02-004-EN-15820, MLTX-02-004-EN-15830, MLTX-02-004-EN-15840, MLTX-02-004-EN-15860, MLTX-02-004-EN-15870, MLTX-02-004-EN-15520 |  |
| MLTX-02-004-CN-14430 | Preliminary Works for Wall Finish Works (External) | 2026-08-15 A → 2026-09-09 A (+25d) | 2026-08-29 A → 2026-09-10 A (+12d) | 4d → 8d |  |  | MLTX-02-004-CN-14180, MLTX-02-004-CN-14030 → MLTX-02-004-CN-14120 |  |
| MLTX-02-004-CN-14450 | Ceramic Finish Works for Walls | 2026-09-20 A → 2026-09-28 A (+8d) | 2026-09-26 A → 2026-09-29 A (+3d) | 5d → 6d |  |  | MLTX-02-004-CN-14420 → MLTX-02-004-CN-14110 | resources Labor [200 h]; Driver [100 h]; Forklift [180 h]; Tile Fixer [120 h]; Wall Finishes Supply and install 300*300 mm ceramic [115] → Labor [200 h]; Driver [100 h]; Tile Fixer [120 h]; Forklift [180 h]; Wall Finishes Supply and install 300*300 mm ceramic [115] |
| MLTX-02-004-CN-14440 | Painting Finish Works for External Walls | 2026-10-20 A → 2026-10-11 A (-9d) | 2026-12-01 → 2026-10-13 A (-49d) | 7d → 3d | 90% → 100% | 20.9d → none | MLTX-02-004-CN-14430, MLTX-02-004-CN-14190, MLTX-02-004-CN-14120, MLTX-02-004-EN-4120 → MLTX-02-004-CN-14190, MLTX-02-004-CN-14430 | resources Labor [200 h]; Skilled Labor [60 h]; Wall Finishes Supply and install acrylic paint for external elevations [56]; Wall Finishes Supply and spray decorative paint ( profile ) for external elevations [0.67] → Labor [200 h]; Skilled Labor [60 h]; Wall Finishes Supply and install acrylic paint for external elevations [56]; Wall Finishes Supply and spray decorative paint ( profile ) for external elevations [0.33] |
| MLTX-02-004-CN-14670 | Painting Finish Works for Internal Walls | 2026-10-21 A → 2026-10-18 A (-3d) | 2026-10-25 A → 2026-10-26 A (+1d) |  |  |  | MLTX-02-004-CN-14450 → MLTX-02-004-CN-14440 |  |
| MLTX-02-004-CN-14460 | Phenolic Partitions for Toilets | 2026-11-14 A → 2026-11-01 A (-13d) | 2026-11-17 A → 2026-11-05 A (-12d) | 7d → 5d |  |  | MLTX-02-004-CN-14720, MLTX-02-004-CN-14500, MLTX-02-004-CN-11250 → MLTX-02-004-CN-14090, MLTX-02-004-CN-14480, MLTX-02-004-CN-14550, MLTX-02-004-CN-14500, MLTX-02-004-CN-14130, MLTX-02-004-CN-14720, MLTX-02-004-CN-14580, MLTX-02-004-CN-14440 | resources Labor [700 h]; Driver [340 h]; Forklift [330 h]; Tile Fixer [220 h]; Wall Finishes Supply and install solid phenolic toilets partition board [40] → Labor [700 h]; Driver [340 h]; Tile Fixer [220 h]; Forklift [330 h]; Wall Finishes Supply and install solid phenolic toilets partition board [40] |
| MLTX-02-004-CN-14570 | Glass Partitions including all accessories and doors | 2026-11-02 A → 2026-11-01 A (-1d) | 2026-11-02 A → 2026-11-05 A (+3d) | 7d → 5d |  |  | MLTX-02-004-EN-15410 → MLTX-02-004-EN-15410, MLTX-02-004-CN-14460 |  |
| MLTX-02-004-CN-14580 | Granite Capping for Parpet | 2026-10-25 A → 2026-11-02 A (+8d) | 2026-10-25 A → 2026-11-10 A (+16d) |  |  |  | MLTX-02-004-CN-14450 → MLTX-02-004-CN-14080 | resources Labor [160 h]; Driver [40 h]; Forklift [60 h]; Tile Fixer [40 h]; Wall Finishes Supply and install granite capping for parapet [38] → Labor [160 h]; Driver [40 h]; Tile Fixer [40 h]; Forklift [60 h]; Wall Finishes Supply and install granite capping for parapet [38] |
| 3 | **CELLING FINISHES** | 2026-10-19 → 2026-10-07 (-12d) | 2026-10-25 → 2026-11-05 (+11d) |  |  |  |  |  |
| MLTX-02-004-CN-14720 | Gypsum Board Suspended Ceiling Finish Works For Ceiling | 2026-10-19 A → 2026-10-07 A (-12d) | 2026-10-22 A → 2026-10-12 A (-10d) | 7d → 5d |  |  | MLTX-02-004-CN-14150, MLTX-02-004-CN-14450 → MLTX-02-004-CN-14150 | resources Labor [400 h]; Skilled Labor [120 h]; CEILING FINISHES Supply and install 12.5mm thk, moisture resistant gypsum board suspended ceiling; CEILING FINISHES Supply and install 12.5mm thk, gypsum board suspended ceiling → Labor [400 h]; Skilled Labor [120 h]; CEILING FINISHES Supply and install 12.5mm thk, moisture resistant gypsum board suspended ceiling [25.2]; CEILING FINISHES Supply and install 12.5mm thk, gypsum board suspended ceiling [7.8] |
| MLTX-02-004-CN-14710 | Painting Finish Works for Ceiling | 2026-10-25 A → 2026-11-01 A (+7d) | 2026-10-25 A → 2026-11-05 A (+11d) |  |  |  | MLTX-02-004-CN-14730, MLTX-02-004-CN-14720, MLTX-02-004-CN-14670 → MLTX-02-004-CN-14720, MLTX-02-004-CN-14730 | resources Labor [200 h]; Skilled Labor [60 h]; CEILING FINISHES Supply and install 2 coats of acrylic paint at under side slab → Labor [200 h]; Skilled Labor [60 h]; CEILING FINISHES Supply and install 2 coats of acrylic paint at under side slab [14] |
| MLTX-02-004-CN-14730 | Preliminary Works for Ceiling Painting Works | 2026-10-24 A → 2026-11-01 A (+8d) | 2026-10-25 A → 2026-11-05 A (+11d) | 15d → 10d |  |  |  | resources Labor [200 h]; Skilled Labor [90 h]; CEILING FINISHES Supply and install 12.5mm thk, moisture resistant gypsum board suspended ceiling; CEILING FINISHES Supply and install 12.5mm thk, gypsum board suspended ceiling → Labor [200 h]; Skilled Labor [90 h]; CEILING FINISHES Supply and install 12.5mm thk, moisture resistant gypsum board suspended ceiling [16.8]; CEILING FINISHES Supply and install 12.5mm thk, gypsum board suspended ceiling [5.2] |
| 8 | **SPECIALTIES WORK** | 2026-11-18 → 2026-11-05 (-13d) | 2027-02-15 → 2026-12-05 (-72d) |  |  |  |  |  |
| MLTX-02-004-CN-14130 | Sanitary Fixtures and Accessories Works | 2026-11-18 A → 2026-11-05 A (-13d) | 2026-11-29 → 2026-11-09 A (-20d) | 5d → 4d | 50% → 100% | 17.9d → none |  |  |
| MLTX-02-004-CN-14590 | Installation of Phenolic Locker | 2026-11-18 A → 2026-11-05 A (-13d) | 2026-11-18 A → 2026-11-09 A (-9d) | 3d → 2d |  |  |  |  |
| MLTX-02-004-CN-14140 | Installation of MODON Logo on the entrance | 2027-02-11 → 2026-11-24 (-79d) | 2027-02-15 → 2026-12-05 (-72d) | 3d → 10d |  | -41.1d → 19d | MLTX-02-004-CN-14670, MLTX-02-004-PR-11420, MLTX-02-004-CN-14040, MLTX-02-004-CN-14300, MLTX-02-004-CN-14440, MLTX-02-004-CN-11160, MLTX-02-004-CN-14480 → MLTX-02-004-CN-14670 |  |
| PRO | **PROCUREMENT** | 2026-04-02 → 2026-04-20 (+18d) | 2027-02-25 → 2027-01-14 (-42d) |  |  |  |  |  |
| SLI | **SHORT LEAD ITEM** | 2026-04-02 → 2026-04-20 (+18d) | 2027-02-25 → 2027-01-05 (-51d) |  |  |  |  |  |
| TOI | **TOILET/SERVICE WORKS** | 2026-04-02 → 2026-05-07 (+35d) | 2027-02-11 → 2026-12-16 (-57d) |  |  |  |  |  |
| 1 | **STEEL REINFORCEMENT** | 2026-04-02 → 2026-05-13 (+41d) | 2026-05-24 → 2026-07-18 (+55d) |  |  |  |  |  |
| MLTX-02-004-PR-11050 | PO for Steel Reinforcement | 2026-04-02 A → 2026-05-13 A (+41d) | 2026-05-10 A → 2026-05-14 A (+4d) | 5d → 2d |  |  | MLTX-02-004-EN-13370, MLTX-02-004-PR-11790 → MLTX-02-004-EN-13370 |  |
| MLTX-02-004-PR-11150 | Material Delivery of Steel Reinforcement | 2026-05-24 A → 2026-07-18 A (+55d) | 2026-05-24 A → 2026-07-18 A (+55d) |  |  |  | MLTX-02-004-PR-11050, MLTX-02-004-PR-11250 → MLTX-02-004-PR-11050 |  |
| 3 | **CONCRETE BLOCKS** | 2026-04-08 → 2026-05-07 (+29d) | 2026-07-07 → 2026-07-27 (+20d) |  |  |  |  |  |
| MLTX-02-004-PR-11230 | PO for Concrete Blocks | 2026-04-08 A → 2026-05-07 A (+29d) | 2026-05-10 A → 2026-05-07 A (-3d) | 5d → 1d |  |  |  |  |
| MLTX-02-004-PR-11240 | Material Delivery of Concrete Blocks | 2026-07-07 A → 2026-07-27 A (+20d) | 2026-07-07 A → 2026-07-27 A (+20d) |  |  |  | MLTX-02-004-PR-11230, MLTX-02-004-PR-11250 → MLTX-02-004-PR-11230 |  |
| 6 | **FLOOR/WALL TILES** | 2026-08-18 → 2026-07-22 (-27d) | 2026-08-20 → 2026-09-27 (+38d) |  |  |  |  |  |
| MLTX-02-004-PR-11250 | PO for Tilling Materials | 2026-08-18 A → 2026-07-22 A (-27d) | 2026-08-18 A → 2026-07-22 A (-27d) |  |  |  | MLTX-02-004-EN-13490, MLTX-02-004-PR-11230 → MLTX-02-004-PR-11230 |  |
| MLTX-02-004-PR-11260 | Material Delivery of Tailling Material | 2026-08-20 A → 2026-09-27 A (+38d) | 2026-08-20 A → 2026-09-27 A (+38d) |  |  |  | MLTX-02-004-PR-11250, MLTX-02-004-PR-11330 → MLTX-02-004-PR-11400, MLTX-02-004-PR-11250, MLTX-02-004-EN-13490, MLTX-02-004-PR-11280, MLTX-02-004-PR-11480, MLTX-02-004-PR-11500, MLTX-02-004-PR-11520 |  |
| 7 | **SUSPENDED CEILING** | 2026-07-26 → 2026-06-24 (-32d) | 2026-08-20 → 2026-07-22 (-29d) |  |  |  |  |  |
| MLTX-02-004-PR-11270 | PO for Suspend Ceiling | 2026-07-26 A → 2026-06-24 A (-32d) | 2026-07-26 A → 2026-06-24 A (-32d) | 5d → 1d |  |  | MLTX-02-004-EN-13510 → MLTX-02-004-PR-11100 |  |
| MLTX-02-004-PR-11280 | Material Delivery of Suspend Ceiling | 2026-08-20 A → 2026-07-22 A (-29d) | 2026-08-20 A → 2026-07-22 A (-29d) |  |  |  |  |  |
| 8 | **DOORS/WINDOWS** | 2026-09-15 → 2026-06-24 (-83d) | 2026-09-20 → 2026-10-05 (+15d) |  |  |  |  |  |
| MLTX-02-004-PR-11290 | PO for Doors/Windows | 2026-09-15 A → 2026-06-24 A (-83d) | 2026-09-15 A → 2026-06-24 A (-83d) | 5d → 1d |  |  | MLTX-02-004-EN-13800, MLTX-02-004-EN-13720, MLTX-02-004-EN-13820, MLTX-02-004-EN-13570, MLTX-02-004-EN-13530, MLTX-02-004-EN-13700, MLTX-02-004-EN-13630, MLTX-02-004-PR-11250, MLTX-02-004-EN-13390, MLTX-02-004-EN-13360, MLTX-02-004-EN-14000, MLTX-02-004-EN-13610, MLTX-02-004-EN-13250, MLTX-02-004-EN-13940, MLTX-02-004-EN-13960, MLTX-02-004-EN-13650, MLTX-02-004-EN-14080, MLTX-02-004-EN-14120, MLTX-02-004-EN-14100, MLTX-02-004-EN-13510, MLTX-02-004-EN-13920, MLTX-02-004-EN-14160, MLTX-02-004-EN-13900, MLTX-02-004-EN-13760, MLTX-02-004-EN-13780, MLTX-02-004-EN-14170, MLTX-02-004-EN-14180, MLTX-02-004-EN-13980, MLTX-02-004-EN-14140, MLTX-02-004-EN-13410, MLTX-02-004-EN-13380, MLTX-02-004-EN-14020 → MLTX-02-004-EN-13530, MLTX-02-004-EN-13510, MLTX-02-004-EN-13650, MLTX-02-004-EN-13570, MLTX-02-004-EN-13700, MLTX-02-004-EN-13720, MLTX-02-004-EN-13610, MLTX-02-004-EN-13630, MLTX-02-004-EN-14180, MLTX-02-004-EN-13380, MLTX-02-004-EN-13760, MLTX-02-004-EN-13780, MLTX-02-004-EN-13800, MLTX-02-004-EN-13820, MLTX-02-004-EN-13900, MLTX-02-004-EN-13920, MLTX-02-004-EN-13940, MLTX-02-004-EN-13960, MLTX-02-004-EN-13980, MLTX-02-004-EN-14020, MLTX-02-004-EN-14120, MLTX-02-004-EN-13390, MLTX-02-004-EN-13360, MLTX-02-004-EN-13410, MLTX-02-004-EN-14080, MLTX-02-004-EN-14100, MLTX-02-004-EN-14140, MLTX-02-004-EN-14000, MLTX-02-004-EN-13250 |  |
| MLTX-02-004-PR-11300 | Material Delivery for Doors/Windows | 2026-09-20 A → 2026-10-01 A (+11d) | 2026-09-20 A → 2026-10-05 A (+15d) |  |  |  |  |  |
| 11 | **WATER SUPPLY PIPES** | 2026-04-28 → 2026-06-13 (+46d) | 2026-07-07 → 2026-06-13 (-24d) |  |  |  |  |  |
| MLTX-02-004-PR-11330 | PO for Water Supply Pipes | 2026-04-28 A → 2026-06-13 A (+46d) | 2026-05-03 A → 2026-06-13 A (+41d) | 5d → 1d |  |  | MLTX-02-004-EN-13570, MLTX-02-004-EN-13720, MLTX-02-004-PR-11290 → MLTX-02-004-PR-11290 |  |
| MLTX-02-004-PR-11340 | Material Delivery for Water Supply Pipes | 2026-07-07 A → 2026-06-13 A (-24d) | 2026-07-07 A → 2026-06-13 A (-24d) | 7d → 1d |  |  | MLTX-02-004-PR-11330, MLTX-02-004-PR-11300 → MLTX-02-004-PR-11330 |  |
| 12 | **SEWAGE/DRAINAGE PIPES** | 2026-04-26 → 2026-06-13 (+48d) | 2026-07-07 → 2026-06-13 (-24d) |  |  |  |  |  |
| MLTX-02-004-PR-11350 | PO for Sewage/Drainage Pipes | 2026-04-26 A → 2026-06-13 A (+48d) | 2026-05-10 A → 2026-06-13 A (+34d) | 5d → 1d |  |  | MLTX-02-004-EN-13590, MLTX-02-004-EN-13720 → MLTX-02-004-EN-13590, MLTX-02-004-PR-11290 |  |
| MLTX-02-004-PR-11360 | Material Delivery for Sewage/Drainage Pipes | 2026-07-07 A → 2026-06-13 A (-24d) | 2026-07-07 A → 2026-06-13 A (-24d) | 7d → 1d |  |  | MLTX-02-004-PR-11350, MLTX-02-004-PR-11510 → MLTX-02-004-PR-11350 |  |
| 10 | **SANITARY FIXTURES** | 2026-07-28 → 2026-06-16 (-42d) | 2026-08-20 → 2026-08-05 (-15d) |  |  |  |  |  |
| MLTX-02-004-PR-11310 | PO for Sanitary Fixtures | 2026-07-28 A → 2026-06-16 A (-42d) | 2026-07-28 A → 2026-06-16 A (-42d) | 5d → 1d |  |  |  |  |
| MLTX-02-004-PR-11320 | Material Delivery for Sanitary Fixtures | 2026-08-20 A → 2026-08-03 A (-17d) | 2026-08-20 A → 2026-08-05 A (-15d) |  |  |  | MLTX-02-004-PR-11310, MLTX-02-004-PR-11300 → MLTX-02-004-PR-11310 |  |
| 16 | **PACKAGE AC UNITS** | 2026-07-07 → 2026-06-16 (-21d) | 2026-07-07 → 2026-07-15 (+8d) |  |  |  |  |  |
| MLTX-02-004-PR-11450 | PO for Package AC Units | 2026-07-07 A → 2026-06-16 A (-21d) | 2026-07-07 A → 2026-06-16 A (-21d) | 5d → 1d |  |  | MLTX-02-004-PR-11350, MLTX-02-004-EN-14700 → MLTX-02-004-EN-13680, MLTX-02-004-PR-11310 |  |

| ID | Task | Start | Finish | Duration | Complete | Total float | Predecessors |
| --- | --- | --- | --- | --- | --- | --- | --- |
| MLTX-02-004-PR-11460 | Material Delivery for Package AC Units | 2026-07-07 A → 2026-07-14 A (+7d) | 2026-07-07 A → 2026-07-15 A (+8d) |  |  |  |  |
| 17 | **AIR DIFUSSERS/GRILLS** | 2026-08-18 → 2026-09-27 (+40d) | 2026-08-20 → 2026-09-27 (+38d) |  |  |  |  |
| MLTX-02-004-PR-11470 | PO for Air Diffusers/Grills | 2026-08-18 A → 2026-09-27 A (+40d) | 2026-08-18 A → 2026-09-27 A (+40d) | 5d → 8d |  |  | MLTX-02-004-PR-11310, MLTX-02-004-EN-13700 → MLTX-02-004-PR-11310 |
| MLTX-02-004-PR-11480 | Material Delivery for Air Diffusers/Grills | 2026-08-20 A → 2026-09-27 A (+38d) | 2026-08-20 A → 2026-09-27 A (+38d) |  |  |  |  |
| 18 | **GALVANIZED DUCTS** | 2026-08-18 → 2026-09-27 (+40d) | 2026-08-20 → 2026-09-27 (+38d) |  |  |  |  |
| MLTX-02-004-PR-11490 | PO for Galvanized Ducts | 2026-08-18 A → 2026-09-27 A (+40d) | 2026-08-18 A → 2026-09-27 A (+40d) | 5d → 8d |  |  | MLTX-02-004-EN-13720, MLTX-02-004-PR-11470 → MLTX-02-004-PR-11310 |
| MLTX-02-004-PR-11500 | Material Delivery for Galvanized Ducts | 2026-08-20 A → 2026-09-27 A (+38d) | 2026-08-20 A → 2026-09-27 A (+38d) |  |  |  | MLTX-02-004-PR-11490, MLTX-02-004-PR-11470 → MLTX-02-004-PR-11490 |
| 19 | **EXHAUST FANS** | 2026-08-20 → 2026-06-18 (-63d) | 2026-08-20 → 2026-09-27 (+38d) |  |  |  |  |
| MLTX-02-004-PR-11510 | PO for Exhaust Fans | 2026-08-20 A → 2026-06-18 A (-63d) | 2026-08-20 A → 2026-06-18 A (-63d) | 5d → 1d |  |  |  |
| MLTX-02-004-PR-11520 | Material Delivery for Exhaust Fans | 2026-08-20 A → 2026-09-27 A (+38d) | 2026-08-20 A → 2026-09-27 A (+38d) |  |  |  | MLTX-02-004-PR-11510, MLTX-02-004-PR-11300 → MLTX-02-004-PR-11510 |
| 13 | **LIGHTING FIXTURES** | 2026-07-07 → 2026-07-01 (-6d) | 2026-11-08 → 2026-11-03 (-5d) |  |  |  |  |
| MLTX-02-004-PR-11370 | PO for Lighting Fixtures | 2026-07-07 A → 2026-07-01 A (-6d) | 2026-07-07 A → 2026-07-02 A (-5d) | 5d → 2d |  |  | MLTX-02-004-EN-13610, MLTX-02-004-PR-11350 → MLTX-02-004-PR-11510 |
| MLTX-02-004-PR-11380 | Material Delivery for Lighting Fixtures | 2026-11-08 A → 2026-11-02 A (-6d) | 2026-11-08 A → 2026-11-03 A (-5d) | 40d → 10d |  |  | MLTX-02-004-PR-11370, MLTX-02-004-PR-11510 → MLTX-02-004-PR-11370 |
| 14 | **SWITCHES/SOCKETS** | 2026-10-13 → 2026-06-24 (-111d) | 2026-11-17 → 2026-10-10 (-38d) |  |  |  |  |
| MLTX-02-004-PR-11390 | PO for Switches/Sockets | 2026-10-13 A → 2026-06-24 A (-111d) | 2026-10-13 A → 2026-06-24 A (-111d) | 15d → 1d |  |  | MLTX-02-004-PR-11370, MLTX-02-004-EN-13630, MLTX-02-004-PR-11520 → MLTX-02-004-PR-11370 |
| MLTX-02-004-PR-11400 | Material Delivery for Switches/Sockets | 2026-11-17 A → 2026-10-05 A (-43d) | 2026-11-17 A → 2026-10-10 A (-38d) | 27d → 7d |  |  | MLTX-02-004-PR-11390, MLTX-02-004-PR-11470 → MLTX-02-004-PR-11390 |
| 15 | **EARTHING SYSTEM** | 2026-07-12 → 2026-05-21 (-52d) | 2026-07-12 → 2026-05-21 (-52d) |  |  |  |  |
| MLTX-02-004-PR-11190 | PO for Earthing System | 2026-07-12 A → 2026-05-21 A (-52d) | 2026-07-12 A → 2026-05-21 A (-52d) | 5d → 1d |  |  |  |
| MLTX-02-004-PR-11200 | Material Delivery for Earthing System | 2026-07-12 A → 2026-05-21 A (-52d) | 2026-07-12 A → 2026-05-21 A (-52d) | 15d → 1d |  |  | MLTX-02-004-PR-11190, MLTX-02-004-PR-11290 → MLTX-02-004-PR-11090, MLTX-02-004-PR-11190 |
| 5 | **DISTRIBUTION PANNELS** | 2026-10-13 → 2026-11-01 (+19d) | 2027-01-13 → 2026-11-10 (-64d) |  |  |  |  |
| MLTX-02-004-PR-11210 | PO for Distribution Panels | 2026-10-13 A → 2026-11-01 A (+19d) | 2026-10-13 A → 2026-11-02 A (+20d) |  |  |  | MLTX-02-004-EN-13450, MLTX-02-004-PR-11520 → MLTX-02-004-EN-13450 |
| MLTX-02-004-PR-11220 | Material Delivery for Distribution Panels | 2026-12-27 → 2026-11-09 A (-48d) | 2027-01-13 → 2026-11-10 A (-64d) |  | 0% → 100% | -56.1d → none | MLTX-02-004-PR-11210, MLTX-02-004-PR-11410 → MLTX-02-004-PR-11210 |
| 9 | **FURNITURES** | 2026-11-23 → 2026-06-16 (-160d) | 2027-02-11 → 2026-12-16 (-57d) |  |  |  |  |
| MLTX-02-004-PR-11410 | PO for Furnitures | 2026-11-23 → 2026-06-16 A (-160d) | 2026-12-27 → 2026-06-16 A (-194d) | 29d → 1d | 0% → 100% | -56.1d → none | MLTX-02-004-PR-11510, MLTX-02-004-EN-13650, MLTX-02-004-PR-11330 → MLTX-02-004-PR-11510 |
| MLTX-02-004-PR-11420 | Material Delivery for Furnitures | 2026-12-27 → 2026-11-24 (-33d) | 2027-02-11 → 2026-12-16 (-57d) | 40d → 20d |  | -41.1d → -19d | MLTX-02-004-PR-11410, MLTX-02-004-PR-11550 → MLTX-02-004-PR-11410 |
| PLG | **PLAYGROUND WORKS** | 2026-04-02 → 2026-04-20 (+18d) | 2027-02-25 → 2027-01-05 (-51d) |  |  |  |  |
| 5 | **PVC MEMBRANE** | 2026-04-02 → 2026-06-16 (+75d) | 2027-01-04 → 2026-12-16 (-19d) |  |  |  |  |
| MLTX-02-004-PR-11610 | PO for PVC Membrane | 2026-04-02 A → 2026-06-16 A (+75d) | 2026-05-19 A → 2026-06-16 A (+28d) | 10d → 1d |  |  | MLTX-02-004-EN-14860, MLTX-02-004-PR-11750 → MLTX-02-004-MS-1010 SS |
| MLTX-02-004-PR-11620 | Material Delivery for PVC Membrane | 2026-12-10 → 2026-11-24 (-16d) | 2027-01-04 → 2026-12-16 (-19d) | 21d → 20d |  | -47.1d → -36d | MLTX-02-004-EN-13840, MLTX-02-004-PR-11610, MLTX-02-004-PR-11920 → MLTX-02-004-PR-11610 |
| 15 | **ARTIFICIAL TURF** | 2026-04-02 → 2026-06-16 (+75d) | 2027-01-18 → 2026-12-07 (-42d) |  |  |  |  |
| MLTX-02-004-PR-11850 | PO for Artificial TURF | 2026-04-02 A → 2026-06-16 A (+75d) | 2026-05-19 A → 2026-06-16 A (+28d) | 5d → 1d |  |  |  |
| MLTX-02-004-PR-11860 | Material Delivery for Artificial TURF | 2027-01-04 → 2026-11-24 (-41d) | 2027-01-18 → 2026-12-07 (-42d) |  |  | -47.1d → -28d | MLTX-02-004-PR-11620, MLTX-02-004-PR-11850, MLTX-02-004-PR-11440 → MLTX-02-004-PR-11850 |
| 20 | **RUBBER GRANULES** | 2026-04-02 → 2026-06-16 (+75d) | 2027-01-17 → 2026-12-07 (-41d) |  |  |  |  |
| MLTX-02-004-PR-11870 | PO for Rubber Granules | 2026-04-02 A → 2026-06-16 A (+75d) | 2026-05-19 A → 2026-06-16 A (+28d) | 5d → 1d |  |  | MLTX-02-004-EN-14200 → MLTX-02-004-MS-1010 SS |
| MLTX-02-004-PR-11880 | Material Delivery for Rubber Granules | 2026-12-10 → 2026-11-24 (-16d) | 2027-01-17 → 2026-12-07 (-41d) | 32d → 12d |  | -46.1d → -28d | MLTX-02-004-PR-11870, MLTX-02-004-PR-11430 → MLTX-02-004-PR-11870 |
| 21 | **PADEL GLASS** | 2026-04-02 → 2026-06-16 (+75d) | 2027-02-08 → 2026-12-14 (-56d) |  |  |  |  |
| MLTX-02-004-PR-11890 | PO for Padel Glass | 2026-04-02 A → 2026-06-16 A (+75d) | 2026-05-19 A → 2026-06-16 A (+28d) | 5d → 1d |  |  |  |
| MLTX-02-004-PR-11900 | Material Delivery for Padel Glass | 2027-01-18 → 2026-11-24 (-55d) | 2027-02-08 → 2026-12-14 (-56d) |  |  | -47.1d → -34d | MLTX-02-004-PR-11880, MLTX-02-004-PR-11860, MLTX-02-004-PR-11890, MLTX-02-004-PR-11100 → MLTX-02-004-PR-11890 |
| 22 | **PADEL WIRE MESH/STEEL SETS** | 2026-04-08 → 2026-06-16 (+69d) | 2026-12-10 → 2026-06-20 (-173d) |  |  |  |  |
| MLTX-02-004-PR-11910 | PO for Wire Mesh/Steel Sets | 2026-04-08 A → 2026-06-16 A (+69d) | 2026-05-19 A → 2026-06-16 A (+28d) | 5d → 1d |  |  | MLTX-02-004-PR-11890, MLTX-02-004-EN-14220 → MLTX-02-004-PR-11890 |
| MLTX-02-004-PR-11920 | Material Delivery for Wire Mesh/Steel Sets | 2026-11-23 → 2026-06-18 A (-158d) | 2026-12-10 → 2026-06-20 A (-173d) |  | 0% → 100% | -64.1d → none | MLTX-02-004-PR-11910, MLTX-02-004-PR-11290 → MLTX-02-004-PR-11910 |
| 1 | **AGGREGATE BASE COURSE** | 2026-07-07 → 2026-05-21 (-47d) | 2026-07-07 → 2026-05-21 (-47d) |  |  |  |  |
| MLTX-02-004-PR-11060 | PO for Aggregate Base Course | 2026-07-07 A → 2026-05-21 A (-47d) | 2026-07-07 A → 2026-05-21 A (-47d) | 5d → 1d |  |  |  |
| MLTX-02-004-PR-11070 | Material Delivery for Aggregate Base Course | 2026-07-07 A → 2026-05-21 A (-47d) | 2026-07-07 A → 2026-05-21 A (-47d) | 7d → 1d |  |  |  |
| 16 | **PACKAGE AC UNITS** | 2026-07-04 → 2026-06-16 (-18d) | 2026-07-10 → 2026-07-14 (+4d) |  |  |  |  |
| MLTX-02-004-PR-11530 | PO for Package AC Units | 2026-07-04 A → 2026-06-16 A (-18d) | 2026-07-04 A → 2026-06-16 A (-18d) | 5d → 1d |  |  | MLTX-02-004-EN-13760, MLTX-02-004-PR-11450, MLTX-02-004-PR-11750 → MLTX-02-004-PR-11450 |
| MLTX-02-004-PR-11540 | Material Delivery for Package AC Units | 2026-07-10 A → 2026-07-13 A (+3d) | 2026-07-10 A → 2026-07-14 A (+4d) |  |  |  | MLTX-02-004-PR-11530, MLTX-02-004-PR-11750 → MLTX-02-004-PR-11530 |
| 17 | **AIR DIFUSSERS/GRILLS** | 2026-12-10 → 2026-06-16 (-177d) | 2027-01-03 → 2026-08-10 (-146d) |  |  |  |  |
| MLTX-02-004-PR-11550 | PO for Air Difussers/Grills | 2026-12-10 → 2026-06-16 A (-177d) | 2026-12-16 → 2026-06-16 A (-183d) | 5d → 1d | 0% → 100% | -50.1d → none | MLTX-02-004-EN-13780, MLTX-02-004-EN-13680, MLTX-02-004-PR-11310, MLTX-02-004-PR-11450, MLTX-02-004-PR-11430 → MLTX-02-004-PR-11450 |
| MLTX-02-004-PR-11560 | Material Delivery for Air Difussers/Grills | 2026-12-16 → 2026-08-08 A (-130d) | 2027-01-03 → 2026-08-10 A (-146d) |  | 0% → 100% | -50.1d → none | MLTX-02-004-PR-11550, MLTX-02-004-PR-11430 → MLTX-02-004-PR-11550 |
| 2 | **BITUMINOUS BASE & WEARING COURSE** | 2026-04-02 → 2026-06-16 (+75d) | 2027-01-11 → 2026-07-02 (-193d) |  |  |  |  |
| MLTX-02-004-PR-11080 | PO for Bituminous Base & Wearing Course | 2026-04-02 A → 2026-06-16 A (+75d) | 2026-05-14 A → 2026-06-16 A (+33d) | 5d → 1d |  |  | MLTX-02-004-EN-13320, MLTX-02-004-PR-11070 → MLTX-02-004-EN-13320 |
| MLTX-02-004-PR-11090 | Material Delivery for the Site | 2026-12-10 → 2026-07-02 A (-161d) | 2027-01-11 → 2026-07-02 A (-193d) | 27d → 1d | 0% → 100% | -42.1d → none | MLTX-02-004-PR-11080, MLTX-02-004-PR-11430 → MLTX-02-004-PR-11080 |
| 3 | **INTERLOCKING PAVING** | 2026-09-15 → 2026-04-20 (-148d) | 2026-11-03 → 2026-05-07 (-180d) |  |  |  |  |
| MLTX-02-004-PR-11110 | Material Delivery for Interlocking Block Pavers | 2026-11-03 A → 2026-04-20 A (-197d) | 2026-11-03 A → 2026-04-20 A (-197d) | 17d → 8d |  |  | MLTX-02-004-PR-11100 → MLTX-02-004-PR-11090, MLTX-02-004-PR-11100 |
| MLTX-02-004-PR-11100 | PO for Interlocking Block Pavers | 2026-09-15 A → 2026-05-07 A (-131d) | 2026-09-15 A → 2026-05-07 A (-131d) | 15d → 1d |  |  | MLTX-02-004-EN-13380 → MLTX-02-004-PR-11390 |
| 4 | **MARKING PAINT** | 2026-11-23 → 2026-07-22 (-124d) | 2026-12-30 → 2027-01-05 (+6d) |  |  |  |  |
| MLTX-02-004-PR-11430 | PO for Marking Paint | 2026-11-23 → 2026-07-22 A (-124d) | 2026-12-10 → 2026-07-22 A (-141d) |  | 0% → 100% | -69.1d → none | MLTX-02-004-EN-14230, MLTX-02-004-PR-11080, MLTX-02-004-PR-11300 → MLTX-02-004-EN-14230, MLTX-02-004-PR-11080 |
| MLTX-02-004-PR-11440 | Material Delivery for Marking Paint | 2026-12-10 → 2026-12-17 (+7d) | 2026-12-30 → 2027-01-05 (+6d) |  |  | -69.1d → -36d | MLTX-02-004-PR-11430, MLTX-02-004-PR-11960 → MLTX-02-004-PR-11430, MLTX-02-004-PR-11620, MLTX-02-004-PR-11860, MLTX-02-004-PR-11880, MLTX-02-004-PR-11900, MLTX-02-004-PR-11920, MLTX-02-004-PR-11110, MLTX-02-004-PR-11540, MLTX-02-004-PR-11560, MLTX-02-004-PR-11580, MLTX-02-004-PR-11600, MLTX-02-004-PR-11740, MLTX-02-004-PR-11760, MLTX-02-004-PR-11780, MLTX-02-004-PR-11800 |
| 18 | **GALVANIZED DUCTS** | 2026-10-13 → 2026-06-16 (-119d) | 2026-10-13 → 2026-08-12 (-62d) |  |  |  |  |
| MLTX-02-004-PR-11570 | PO for Galvanized Duct | 2026-10-13 A → 2026-06-16 A (-119d) | 2026-10-13 A → 2026-06-16 A (-119d) | 5d → 1d |  |  | MLTX-02-004-EN-13800, MLTX-02-004-PR-11450 → MLTX-02-004-PR-11450 |
| MLTX-02-004-PR-11580 | Material Delivery for Galvanized Duct | 2026-10-13 A → 2026-08-08 A (-66d) | 2026-10-13 A → 2026-08-12 A (-62d) |  |  |  |  |
| 19 | **EXHAUST FANS** | 2026-10-13 → 2026-06-16 (-119d) | 2026-10-13 → 2026-08-18 (-56d) |  |  |  |  |
| MLTX-02-004-PR-11590 | PO for Exhaust Fans | 2026-10-13 A → 2026-06-16 A (-119d) | 2026-10-13 A → 2026-06-16 A (-119d) | 5d → 1d |  |  | MLTX-02-004-EN-13820, MLTX-02-004-PR-11450, MLTX-02-004-PR-11750 → MLTX-02-004-PR-11450 |
| MLTX-02-004-PR-11600 | Material Delivery for Exhaust Fans | 2026-10-13 A → 2026-08-17 A (-57d) | 2026-10-13 A → 2026-08-18 A (-56d) |  |  |  | MLTX-02-004-PR-11590, MLTX-02-004-PR-11750 → MLTX-02-004-PR-11590 |
| 10 | **DISTRIBUTION BOARDS** | 2026-12-10 → 2026-07-22 (-141d) | 2027-01-03 → 2026-11-10 (-54d) |  |  |  |  |
| MLTX-02-004-PR-11710 | PO for Distribution Boards | 2026-12-10 → 2026-07-22 A (-141d) | 2026-12-16 → 2026-07-22 A (-147d) |  | 0% → 100% | -64.1d → none | MLTX-02-004-EN-13900, MLTX-02-004-PR-11920, MLTX-02-004-PR-11450, MLTX-02-004-PR-11430 → MLTX-02-004-PR-11980, MLTX-02-004-PR-11450 |
| MLTX-02-004-PR-11720 | Material Delivery for Distribution Boards | 2026-12-16 → 2026-11-09 A (-37d) | 2027-01-03 → 2026-11-10 A (-54d) |  | 0% → 100% | -50.1d → none | MLTX-02-004-PR-11710, MLTX-02-004-PR-11430 → MLTX-02-004-PR-11710 |
| 11 | **POWER CABLES** | 2026-12-16 → 2026-06-16 (-183d) | 2027-02-25 → 2026-09-16 (-162d) |  |  |  |  |
| MLTX-02-004-PR-11730 | PO for Power Cables | 2026-12-16 → 2026-06-16 A (-183d) | 2026-12-22 → 2026-06-16 A (-189d) | 5d → 1d | 0% → 100% | -64.1d → none | MLTX-02-004-PR-11710, MLTX-02-004-EN-13920, MLTX-02-004-PR-11430 → MLTX-02-004-EN-13920 |

| ID | Task | Start | Finish | Duration | Complete | Total float | Predecessors | Other |
| --- | --- | --- | --- | --- | --- | --- | --- | --- |
| MLTX-02-004-PR-11740 | Material Delivery for Power Cables | 2027-01-20 → 2026-09-16 A (-126d) | 2027-02-25 → 2026-09-16 A (-162d) | 30d → 10d | 0% → 100% | -50.1d → none | MLTX-02-004-PR-11730, MLTX-02-004-PR-11780 → MLTX-02-004-PR-11730 |  |
| 12 | **LIGHT FIXTURES** | 2026-07-07 → 2026-06-16 (-21d) | 2027-01-03 → 2026-11-12 (-52d) |  |  |  |  |  |
| MLTX-02-004-PR-11750 | PO for Light Fixtures | 2026-07-07 A → 2026-06-16 A (-21d) | 2026-07-07 A → 2026-06-16 A (-21d) | 5d → 1d |  |  | MLTX-02-004-EN-13920, MLTX-02-004-EN-13940, MLTX-02-004-PR-11350, MLTX-02-004-PR-11300 → MLTX-02-004-EN-13940, MLTX-02-004-PR-11730 |  |
| MLTX-02-004-PR-11760 | Material Delivery for Light Fixtures | 2026-12-22 → 2026-11-11 A (-41d) | 2027-01-03 → 2026-11-12 A (-52d) | 10d → 16d | 0% → 100% | -50.1d → none | MLTX-02-004-PR-11730, MLTX-02-004-PR-11750, MLTX-02-004-PR-11520, MLTX-02-004-PR-11430 → MLTX-02-004-PR-11750 |  |
| 13 | **CCTV MATERIALS** | 2026-11-23 → 2026-11-14 (-9d) | 2027-01-20 → 2026-12-10 (-41d) |  |  |  |  |  |
| MLTX-02-004-PR-11770 | PO for CCTV | 2026-11-23 → 2026-11-14 A (-9d) | 2026-12-22 → 2026-11-15 A (-37d) | 25d → 6d | 0% → 100% | -40.1d → none | MLTX-02-004-PR-11750, MLTX-02-004-EN-13960, MLTX-02-004-EN-16140 → MLTX-02-004-EN-13960, MLTX-02-004-PR-11750 |  |
| MLTX-02-004-PR-11780 | Material Delivery for CCTV | 2027-01-03 → 2026-11-24 (-40d) | 2027-01-20 → 2026-12-10 (-41d) |  |  | -50.1d → -31d | MLTX-02-004-PR-11600, MLTX-02-004-PR-11760, MLTX-02-004-PR-11540, MLTX-02-004-PR-11770, MLTX-02-004-PR-11720, MLTX-02-004-PR-11560, MLTX-02-004-PR-11580 → MLTX-02-004-PR-11770 |  |
| 14 | **POWER OUTLETS/SWITCHES** | 2026-07-07 → 2026-10-25 (+110d) | 2026-12-28 → 2026-11-09 (-49d) |  |  |  |  |  |
| MLTX-02-004-PR-11790 | PO for Power Outlets/Switches | 2026-07-07 A → 2026-10-25 A (+110d) | 2026-07-07 A → 2026-10-26 A (+111d) |  |  |  | MLTX-02-004-PR-11460, MLTX-02-004-EN-13980 → MLTX-02-004-EN-13980 |  |
| MLTX-02-004-PR-11800 | Material Delivery for Power Outlets/Switches | 2026-11-23 → 2026-11-08 A (-15d) | 2026-12-28 → 2026-11-09 A (-49d) | 30d → 6d | 0% → 100% | -28.1d → none | MLTX-02-004-PR-11790 → MLTX-02-004-PR-11790, MLTX-02-004-PR-11130, MLTX-02-004-PR-11840, MLTX-02-004-PR-11980, MLTX-02-004-PR-11160, MLTX-02-004-PR-11180 |  |
| LSC | **LANDSCAPE WORKS** | 2026-05-16 → 2026-04-20 (-26d) | 2027-02-03 → 2026-12-10 (-55d) |  |  |  |  |  |
| 7 | **INTERLOCKING PAVING** | 2026-08-26 → 2026-04-20 (-128d) | 2026-08-26 → 2026-10-28 (+63d) |  |  |  |  |  |
| MLTX-02-004-PR-11840 | Material Delivery for Interlocking Block Pavers | 2026-08-26 A → 2026-04-20 A (-128d) | 2026-08-26 A → 2026-10-28 A (+63d) |  |  |  |  |  |
| MLTX-02-004-PR-11830 | PO for Interlocking Block Pavers | 2026-08-26 A → 2026-05-07 A (-111d) | 2026-08-26 A → 2026-05-07 A (-111d) | 5d → 1d |  |  | MLTX-02-004-EN-14020, MLTX-02-004-PR-11790 → MLTX-02-004-EN-14020 |  |
| 9 | **CURBSTONE** | 2026-07-28 → 2026-05-07 (-82d) | 2026-07-28 → 2026-09-14 (+48d) |  |  |  |  |  |
| MLTX-02-004-PR-11970 | PO for Curbstone | 2026-07-28 A → 2026-05-07 A (-82d) | 2026-07-28 A → 2026-05-07 A (-82d) | 5d → 1d |  |  |  |  |
| MLTX-02-004-PR-11980 | Material Delivery for Curbstone | 2026-07-28 A → 2026-09-14 A (+48d) | 2026-07-28 A → 2026-09-14 A (+48d) |  |  |  |  |  |
| 1 | **PAVEMENT MARKING** | 2026-11-23 → 2026-07-18 (-128d) | 2027-02-03 → 2026-12-05 (-60d) |  |  |  |  |  |
| MLTX-02-004-PR-11120 | PO for Pavement Markings | 2026-11-23 → 2026-07-18 A (-128d) | 2026-11-29 → 2026-07-18 A (-134d) |  | 0% → 100% | -69.1d → none | MLTX-02-004-PR-11790, MLTX-02-004-EN-13390 → MLTX-02-004-EN-13390 |  |
| MLTX-02-004-PR-11130 | Material Delivery for Pavement Markings | 2026-12-30 → 2026-11-24 (-36d) | 2027-02-03 → 2026-12-05 (-60d) | 30d → 10d |  | -69.1d → 44d | MLTX-02-004-PR-11120, MLTX-02-004-PR-11440 → MLTX-02-004-PR-11120 |  |
| 2 | **TRAFFIC SIGNS** | 2026-10-13 → 2026-07-22 (-83d) | 2026-11-08 → 2026-12-05 (+27d) |  |  |  |  |  |
| MLTX-02-004-PR-11140 | PO for Traffic Signs | 2026-10-13 A → 2026-07-22 A (-83d) | 2026-10-13 A → 2026-07-27 A (-78d) | 15d → 5d |  |  | MLTX-02-004-EN-13360, MLTX-02-004-PR-11990 → MLTX-02-004-EN-13360 |  |
| MLTX-02-004-PR-11160 | Material Delivery for Traffic Signs | 2026-11-08 A → 2026-11-24 (+16d) | 2026-11-08 A → 2026-12-05 (+27d) |  | 100% → 0% | none → 44d |  |  |
| 3 | **IRRIGATION PIPES/SPRINKLERS** | 2026-06-10 → 2026-07-18 (+38d) | 2026-07-02 → 2026-08-15 (+44d) |  |  |  |  |  |
| MLTX-02-004-PR-11170 | PO for Irrigation Pipes/Sprinkles | 2026-06-10 A → 2026-07-18 A (+38d) | 2026-06-10 A → 2026-07-18 A (+38d) |  |  |  |  |  |
| MLTX-02-004-PR-11180 | Material Delivery for Irrigation Pipes/Sprinkles | 2026-07-02 A → 2026-08-13 A (+42d) | 2026-07-02 A → 2026-08-15 A (+44d) |  |  |  |  |  |
| 5 | **AGRICULTURE SOIL** | 2026-10-13 → 2026-07-18 (-87d) | 2026-11-08 → 2026-11-02 (-6d) |  |  |  |  |  |
| MLTX-02-004-PR-11930 | PO for Agriculture Soil | 2026-10-13 A → 2026-07-18 A (-87d) | 2026-10-13 A → 2026-07-18 A (-87d) | 15d → 5d |  |  | MLTX-02-004-EN-14080, MLTX-02-004-PR-11990 → MLTX-02-004-EN-14080, MLTX-02-004-PR-11950 |  |
| MLTX-02-004-PR-11940 | Material Delivery for Agriculture Soil | 2026-11-08 A → 2026-11-01 A (-7d) | 2026-11-08 A → 2026-11-02 A (-6d) | 22d → 12d |  |  | MLTX-02-004-PR-11930, MLTX-02-004-PR-11140 → MLTX-02-004-PR-11930 |  |
| 8 | **TRACK SURFACE** | 2026-05-16 → 2026-06-24 (+39d) | 2026-12-10 → 2026-06-27 (-166d) |  |  |  |  |  |
| MLTX-02-004-PR-11950 | PO for Track Surface | 2026-05-16 A → 2026-06-24 A (+39d) | 2026-05-19 A → 2026-06-24 A (+36d) | 5d → 1d |  |  | MLTX-02-004-EN-14100, MLTX-02-004-EN-15180, MLTX-02-004-EN-13390, MLTX-02-004-PR-11980 → MLTX-02-004-EN-14100 |  |
| MLTX-02-004-PR-11960 | Material Delivery for Track Surface | 2026-11-29 → 2026-06-25 A (-157d) | 2026-12-10 → 2026-06-27 A (-166d) |  | 0% → 100% | -69.1d → none | MLTX-02-004-PR-11950, MLTX-02-004-PR-11120, MLTX-02-004-PR-11160 → MLTX-02-004-PR-11950 |  |
| 10 | **GRASS/TREES** | 2026-05-17 → 2026-07-18 (+62d) | 2026-12-22 → 2026-12-10 (-12d) |  |  |  |  |  |
| MLTX-02-004-PR-11990 | PO for Grass/Trees | 2026-05-17 A → 2026-07-18 A (+62d) | 2026-05-20 A → 2026-07-18 A (+59d) |  |  |  | MLTX-02-004-EN-14140, MLTX-02-004-PR-11950 → MLTX-02-004-EN-14140, MLTX-02-004-PR-11930 |  |
| MLTX-02-004-PR-12000 | Material Delivery for Grass/Trees | 2026-11-23 → 2026-11-24 (+1d) | 2026-12-22 → 2026-12-10 (-12d) | 25d → 15d |  | -32.1d → 11d | MLTX-02-004-PR-11930, MLTX-02-004-PR-11990, MLTX-02-004-PR-12090 → MLTX-02-004-PR-11990, MLTX-02-004-PR-11960, MLTX-02-004-PR-11940 |  |
| 6 | **CABLES** | 2026-09-15 → 2026-07-18 (-59d) | 2026-09-15 → 2026-09-17 (+2d) |  |  |  |  |  |
| MLTX-02-004-PR-11810 | PO for Cables | 2026-09-15 A → 2026-07-18 A (-59d) | 2026-09-15 A → 2026-07-18 A (-59d) |  |  |  | MLTX-02-004-EN-14000 → MLTX-02-004-EN-14000, MLTX-02-004-PR-11120 |  |
| MLTX-02-004-PR-11820 | Material Delivery for Cables | 2026-09-15 A → 2026-09-17 A (+2d) | 2026-09-15 A → 2026-09-17 A (+2d) |  |  |  |  |  |
| LLI | **LONG LEAD ITEM** | 2026-07-07 → 2026-06-16 (-21d) | 2027-02-07 → 2027-01-14 (-24d) |  |  |  |  |  |
| PLG | **PLAYGROUND WORKS** | 2026-10-13 → 2026-06-16 (-119d) | 2027-02-07 → 2027-01-14 (-24d) |  |  |  |  |  |
| 6 | **STEEL TENSION CABLES** | 2026-10-13 → 2026-06-16 (-119d) | 2026-12-24 → 2026-06-23 (-184d) |  |  |  |  |  |
| MLTX-02-004-PR-11630 | PO for Steel Tension Cables | 2026-10-13 A → 2026-06-16 A (-119d) | 2026-10-13 A → 2026-06-16 A (-119d) | 7d → 1d |  |  | MLTX-02-004-EN-14150 → MLTX-02-004-EN-15460 | resources Purchaser [230 h] → Purchaser [300 h] |
| MLTX-02-004-PR-12010 | Material Fabrication for Steel Tension Cables | 2026-10-13 A → 2026-06-17 A (-118d) | 2026-10-13 A → 2026-06-18 A (-117d) | 15d → 10d |  |  | MLTX-02-004-PR-11630, MLTX-02-004-PR-11030 → MLTX-02-004-PR-11630 | resources Purchaser [229.1 h] → Purchaser [300 h] |
| MLTX-02-004-PR-12050 | Staging time | 2026-12-10 → 2026-06-20 A (-173d) | 2026-12-24 → 2026-06-21 A (-186d) | 12d → 7d | 0% → 100% | -9.1d → none | MLTX-02-004-PR-11640, MLTX-02-004-PR-11650 → MLTX-02-004-PR-11640, MLTX-02-004-PR-11820, MLTX-02-004-PR-12000 | resources Purchaser [200 h] → Purchaser [290 h] |
| MLTX-02-004-PR-11640 | Material Delivery for Steel Tension Cables | 2026-11-23 → 2026-06-22 A (-154d) | 2026-12-10 → 2026-06-23 A (-170d) |  | 0% → 100% | -9.1d → none | MLTX-02-004-PR-12010, MLTX-02-004-PR-11670 → MLTX-02-004-PR-12010 | resources Purchaser [200 h] → Purchaser [294.3 h] |
| 7 | **EMERGENCY DOORS** | 2026-10-13 → 2026-06-16 (-119d) | 2027-02-07 → 2027-01-09 (-29d) |  |  |  |  |  |
| MLTX-02-004-PR-11650 | PO for Emergency Doors | 2026-10-13 A → 2026-06-16 A (-119d) | 2026-10-13 A → 2026-06-16 A (-119d) | 20d → 1d |  |  | MLTX-02-004-EN-14160, MLTX-02-004-PR-11030 → MLTX-02-004-MS-1010 SS |  |
| MLTX-02-004-PR-12020 | Material Fabrication for Emergency Doors | 2026-10-13 A → 2026-11-24 (+42d) | 2026-10-13 A → 2026-12-10 (+58d) | 20d → 15d | 100% → 0% | none → -80d | MLTX-02-004-PR-11650, MLTX-02-004-PR-11040 → MLTX-02-004-PR-11650 |  |
| MLTX-02-004-PR-11660 | Material Delivery for Emergency Doors | 2026-11-23 → 2026-12-12 (+19d) | 2026-12-16 → 2027-01-03 (+18d) |  |  | -8.1d → -80d | MLTX-02-004-PR-12020, MLTX-02-004-PR-12090 → MLTX-02-004-PR-12020 |  |
| MLTX-02-004-PR-12060 | Staging time | 2027-01-20 → 2027-01-04 (-16d) | 2027-02-07 → 2027-01-09 (-29d) | 15d → 5d |  | -38.1d → -80d | MLTX-02-004-PR-11660, MLTX-02-004-PR-11780 → MLTX-02-004-PR-11660 |  |
| 8 | **PRESSURE UNITS** | 2026-10-13 → 2026-06-16 (-119d) | 2026-12-28 → 2027-01-14 (+17d) |  |  |  |  |  |
| MLTX-02-004-PR-11670 | PO for Pressure Units | 2026-10-13 A → 2026-06-16 A (-119d) | 2026-10-13 A → 2026-06-16 A (-119d) | 10d → 1d |  |  | MLTX-02-004-EN-14170, MLTX-02-004-PR-11030 → MLTX-02-004-MS-1010 SS |  |
| MLTX-02-004-PR-12030 | Material Fabrication for Pressure Units | 2026-10-13 A → 2026-11-24 (+42d) | 2026-10-13 A → 2026-12-10 (+58d) | 20d → 15d | 100% → 0% | none → -75d | MLTX-02-004-PR-11670, MLTX-02-004-PR-11650 → MLTX-02-004-PR-11670 |  |
| MLTX-02-004-PR-11680 | Material Delivery for Pressure Units | 2026-11-23 → 2026-12-12 (+19d) | 2026-12-22 → 2027-01-03 (+12d) | 25d → 20d |  | -8.1d → -75d | MLTX-02-004-PR-12030, MLTX-02-004-PR-11690 → MLTX-02-004-PR-12030 |  |
| MLTX-02-004-PR-12070 | Staging time | 2026-12-22 → 2027-01-10 (+19d) | 2026-12-28 → 2027-01-14 (+17d) |  |  | -8.1d → -80d | MLTX-02-004-PR-11680, MLTX-02-004-PR-11660 → MLTX-02-004-PR-11680, MLTX-02-004-PR-12060 |  |
| 9 | **AIR LOCK DOORS** | 2026-10-13 → 2026-06-16 (-119d) | 2027-01-20 → 2027-01-09 (-11d) |  |  |  |  |  |
| MLTX-02-004-PR-11690 | PO for Lock Doors | 2026-10-13 A → 2026-06-16 A (-119d) | 2026-10-13 A → 2026-06-16 A (-119d) | 10d → 1d |  |  | MLTX-02-004-EN-14180, MLTX-02-004-PR-11650 → MLTX-02-004-EN-14180 |  |
| MLTX-02-004-PR-12040 | Material Fabrication for Lock Doors | 2026-11-23 → 2026-11-24 (+1d) | 2026-12-16 → 2026-12-10 (-6d) | 20d → 15d |  | -23.1d → 14d | MLTX-02-004-PR-11690, MLTX-02-004-PR-11650 → MLTX-02-004-PR-11690 |  |
| MLTX-02-004-PR-11700 | Material Delivery for Lock Doors | 2026-12-16 → 2026-12-12 (-4d) | 2027-01-14 → 2027-01-03 (-11d) | 25d → 20d |  | -23.1d → 14d | MLTX-02-004-PR-12040, MLTX-02-004-PR-12020 → MLTX-02-004-PR-12040 |  |
| MLTX-02-004-PR-12080 | Staging time | 2027-01-14 → 2027-01-04 (-10d) | 2027-01-20 → 2027-01-09 (-11d) |  |  | -23.1d → 14d | MLTX-02-004-PR-11700, MLTX-02-004-PR-11660 → MLTX-02-004-PR-11700 |  |
| LSC | **LANDSCAPE WORKS** | 2026-07-07 → 2026-06-18 (-19d) | 2026-09-20 → 2026-09-28 (+8d) |  |  |  |  |  |
| 4 | **LIGHT POLES** | 2026-07-07 → 2026-06-18 (-19d) | 2026-09-20 → 2026-09-28 (+8d) |  |  |  |  |  |
| MLTX-02-004-PR-11020 | PO for Lighting poles | 2026-07-07 A → 2026-06-18 A (-19d) | 2026-07-07 A → 2026-06-18 A (-19d) | 10d → 1d |  |  | MLTX-02-004-EN-13250, MLTX-02-004-PR-11360 → MLTX-02-004-EN-13250 |  |
| MLTX-02-004-PR-11030 | Material Fabrication for Lighting poles | 2026-08-26 A → 2026-08-27 A (+1d) | 2026-08-26 A → 2026-08-27 A (+1d) | 30d → 25d |  |  | MLTX-02-004-PR-11840, MLTX-02-004-PR-11020 → MLTX-02-004-PR-11020 |  |
| MLTX-02-004-PR-11040 | Material Delivery for Lighting poles | 2026-09-20 A → 2026-09-28 A (+8d) | 2026-09-20 A → 2026-09-28 A (+8d) |  |  |  |  |  |
| MLTX-02-004-PR-12090 | Staging time | 2026-09-20 A → 2026-09-28 A (+8d) | 2026-09-20 A → 2026-09-28 A (+8d) | 15d → 5d |  |  |  |  |
| T & C | **TESTING & COMMISSIONING** | 2027-02-01 → 2026-12-15 (-48d) | 2027-03-27 → 2027-04-21 (+25d) |  |  |  |  |  |
| MLTX-02-004-TC-11930 | Testing and Commissioning for MEP Works for Toilet/Service Building | 2027-02-01 → 2026-12-15 (-48d) | 2027-02-15 → 2026-12-31 (-46d) | 12d → 15d |  | -37.1d → 11d | MLTX-02-004-CN-14250, MLTX-02-004-CN-14240, MLTX-02-004-CN-11740, MLTX-02-004-CN-14390, MLTX-02-004-CN-14400, MLTX-02-004-CN-14200, MLTX-02-004-CN-14700, MLTX-02-004-CN-14650, MLTX-02-004-CN-14590, MLTX-02-004-CN-14610, MLTX-02-004-CN-14320, MLTX-02-004-CN-14160, MLTX-02-004-CN-14300, MLTX-02-004-CN-14340, MLTX-02-004-CN-14690, MLTX-02-004-CN-14130, MLTX-02-004-CN-14380, MLTX-02-004-CN-14420 FF, MLTX-02-004-CN-14490 FF, MLTX-02-004-CN-14470 FF, MLTX-02-004-CN-14100 FF, MLTX-02-004-CN-14140 FF → MLTX-02-004-CN-14590, MLTX-02-004-CN-14650, MLTX-02-004-CN-14490, MLTX-02-004-CN-14140, MLTX-02-004-CN-14100, MLTX-02-004-CN-14140 FF | resources QA/QC Engineer [1400 h] → QA/QC Engineer [1420 h] |
| MLTX-02-004-TC-11940 | Testing and Commissioning for MEP Works for Landscape Works | 2027-03-21 → 2027-02-02 (-47d) | 2027-03-27 → 2027-02-06 (-49d) | 5d → 4d |  | -67.1d → -16d | Tartan Floor Installation Works for Landscape (Including Finishing Works), MLTX-02-004-CN-13490 FF, MLTX-02-004-CN-14750 FF, MLTX-02-004-CN-13860 FF, MLTX-02-004-CN-14650 FF, MLTX-02-004-CN-14740 FF, MLTX-02-004-CN-13470 FF, MLTX-02-004-CN-13910 FF, MLTX-02-004-CN-14100 FF → MLTX-02-004-CN-13370, MLTX-02-004-CN-13470 FF | resources QA/QC Engineer [1392.9 h] → QA/QC Engineer [1432.8 h] |
| MLTX-02-004-TC-11920 | Testing and Commissioning for MEP Works for Playground Area | 2027-03-01 → 2027-04-13 (+43d) | 2027-03-03 → 2027-04-21 (+49d) | 2d → 8d |  | -50.1d → -80d | Surface Marking and Painting Finishing Work (Basketball Playground), MLTX-02-004-CN-13770, MLTX-02-004-CN-13700, MLTX-02-004-CN-13390 FF, MLTX-02-004-CN-14100 FF → MLTX-02-004-CN-13770, MLTX-02-004-CN-14650, MLTX-02-004-CN-13850 | resources QA/QC Engineer [1400 h] → QA/QC Engineer [1420 h] |

| ID | Task | Start | Finish | Duration | Predecessors | Other |
| --- | --- | --- | --- | --- | --- | --- |
| MOB | **MOBILIZATION** | 2026-03-04 → 2026-03-26 (+22d) | 2026-04-04 → 2026-06-10 (+67d) |  |  |  |
| SURV | **TOPOGRAPHIC SURVEY** | 2026-03-04 → 2026-03-26 (+22d) | 2026-03-08 → 2026-03-30 (+22d) |  |  |  |
| MLTX-02-004-MB-1320 | Site Survey Works | 2026-03-04 A → 2026-03-26 A (+22d) | 2026-03-08 A → 2026-03-30 A (+22d) | 5d → 4d | MLTX-02-004-MS-1010 → MLTX-02-004-MS-1010 SS | resources QA/QC Engineer [60 h] → QA/QC Engineer [140 h] |
| OFFICE | **SITE FACILITIES & OFFICES** | 2026-03-04 → 2026-03-26 (+22d) | 2026-04-02 → 2026-05-23 (+51d) |  |  |  |
| MLTX-02-004-MB-1340 | Site Layout Plan | 2026-03-04 A → 2026-03-26 A (+22d) | 2026-03-08 A → 2026-03-30 A (+22d) |  | MLTX-02-004-MS-1010 → MLTX-02-004-MS-1010 SS |  |
| MLTX-02-004-MB-1350 | Clear & Grub for Offices & Access Road | 2026-03-09 A → 2026-03-31 A (+22d) | 2026-03-11 A → 2026-04-02 A (+22d) |  |  |  |
| MLTX-02-004-MB-1360 | Construct Site Access Roads | 2026-03-09 A → 2026-03-31 A (+22d) | 2026-03-12 A → 2026-04-04 A (+23d) |  | MLTX-02-004-MB-1340, MLTX-02-004-MB-1350 → MLTX-02-004-MB-1340 |  |
| MLTX-02-004-MB-1400 | Install Site Facilities | 2026-03-24 A → 2026-04-12 A (+19d) | 2026-03-28 A → 2026-05-09 A (+42d) | 4d → 23.55d |  |  |
| MLTX-02-004-MB-1410 | Electrical Works & Connections | 2026-03-24 A → 2026-04-12 A (+19d) | 2026-03-30 A → 2026-05-12 A (+43d) | 6d → 26.95d | MLTX-02-004-MB-1370, MLTX-02-004-MB-1420 → MLTX-02-004-MB-1370 |  |
| MLTX-02-004-MB-1420 | Construct Parking Sheds | 2026-03-24 A → 2026-04-12 A (+19d) | 2026-03-30 A → 2026-05-12 A (+43d) | 6d → 26.75d |  |  |
| MLTX-02-004-MB-1430 | Equipment Mobalization | 2026-03-26 A → 2026-04-14 A (+19d) | 2026-04-02 A → 2026-05-12 A (+40d) | 7d → 24.4d | MLTX-02-004-MB-1390, MLTX-02-004-MB-1400 → MLTX-02-004-MB-1390 | resources Labor [282.9 h] → Labor [282.8 h] |
| MLTX-02-004-MB-1370 | Construct Temporary Fence | 2026-03-12 A → 2026-04-15 A (+34d) | 2026-03-19 A → 2026-05-21 A (+63d) | 7d → 31.75d |  |  |
| MLTX-02-004-MB-1440 | Manpower Mobalization | 2026-03-29 A → 2026-04-16 A (+18d) | 2026-04-02 A → 2026-05-23 A (+51d) | 5d → 31.7d | MLTX-02-004-MB-1400, MLTX-02-004-MB-1420 → MLTX-02-004-MB-1400 |  |
| MLTX-02-004-MB-1380 | Construct Site Offices & Storage | 2026-03-14 A → 2026-04-20 A (+37d) | 2026-04-01 A → 2026-05-11 A (+40d) | 14d → 18.8d | MLTX-02-004-MB-1360, MLTX-02-004-MB-1370 → MLTX-02-004-MB-1360 |  |
| MLTX-02-004-MB-1390 | Install Project Signs | 2026-03-14 A → 2026-04-21 A (+38d) | 2026-03-25 A → 2026-04-23 A (+29d) | 8d → 3d | MLTX-02-004-MB-1360, MLTX-02-004-MB-1370 → MLTX-02-004-MB-1360 |  |
| PRELI | **PRELIMINARY SUBMITTALS** | 2026-03-09 → 2026-03-31 (+22d) | 2026-04-04 → 2026-06-10 (+67d) |  |  |  |
| P&S | **PREPARATIONS & SUBMITTAL BY CONTRACTORS** | 2026-03-09 → 2026-03-31 (+22d) | 2026-03-19 → 2026-04-30 (+42d) |  |  |  |
| MLTX-02-004-MB-1540 | Preparation and Submittal of Detailed Work Order Programme (Baseline) | 2026-03-09 A → 2026-03-31 A (+22d) | 2026-03-19 A → 2026-04-28 A (+40d) | 10d → 25d |  |  |
| MLTX-02-004-MB-1550 | Preparation and Submittal of Project Execution Plan | 2026-03-09 A → 2026-03-31 A (+22d) | 2026-03-17 A → 2026-04-30 A (+44d) | 8d → 27d | MLTX-02-004-MB-1340, MLTX-02-004-MB-1560 → MLTX-02-004-MB-1340 |  |
| MLTX-02-004-MB-1560 | Submission of Contractor Project Quality Plan | 2026-03-09 A → 2026-03-31 A (+22d) | 2026-03-17 A → 2026-04-11 A (+25d) | 8d → 10d |  |  |
| MLTX-02-004-MB-1570 | Submission of Construction Safety & Environmental Management Plan | 2026-03-09 A → 2026-03-31 A (+22d) | 2026-03-17 A → 2026-04-11 A (+25d) | 8d → 10d | MLTX-02-004-MB-1340, MLTX-02-004-MB-1560 → MLTX-02-004-MB-1340 |  |
| MLTX-02-004-MB-1580 | Preparation and Submittal of Organization Chart | 2026-03-09 A → 2026-03-31 A (+22d) | 2026-03-17 A → 2026-04-08 A (+22d) |  | MLTX-02-004-MB-1340, MLTX-02-004-MB-1560 → MLTX-02-004-MB-1340 |  |
| MLTX-02-004-MB-1590 | Preparation and Submittal of Communication Plan | 2026-03-09 A → 2026-03-31 A (+22d) | 2026-03-17 A → 2026-04-08 A (+22d) |  | MLTX-02-004-MB-1340, MLTX-02-004-MB-1560 → MLTX-02-004-MB-1340 |  |
| APP | **APPROVALS BY EMPLOYERS** | 2026-03-18 → 2026-04-09 (+22d) | 2026-04-04 → 2026-06-10 (+67d) |  |  |  |
| MLTX-02-004-MB-1700 | Approval of Contractor Project Quality Plan | 2026-03-18 A → 2026-04-09 A (+22d) | 2026-04-01 A → 2026-04-30 A (+29d) | 10d → 19d |  |  |
| MLTX-02-004-MB-1720 | Approval of Organization Chart | 2026-03-18 A → 2026-04-09 A (+22d) | 2026-04-01 A → 2026-04-29 A (+28d) | 10d → 18d | MLTX-02-004-MB-1580, MLTX-02-004-MB-1700 → MLTX-02-004-MB-1580 |  |
| MLTX-02-004-MB-1730 | Approval of Communication Plan | 2026-03-18 A → 2026-04-09 A (+22d) | 2026-04-01 A → 2026-04-20 A (+19d) |  | MLTX-02-004-MB-1590, MLTX-02-004-MB-1700 → MLTX-02-004-MB-1590 |  |
| MLTX-02-004-MB-1680 | Approval of Detailed Work Order Programme (Baseline) | 2026-03-24 A → 2026-04-29 A (+36d) | 2026-04-04 A → 2026-04-29 A (+25d) | 10d → 1d |  |  |
| MLTX-02-004-MB-1690 | Approval of Project Execution Plan | 2026-03-18 A → 2026-05-13 A (+56d) | 2026-04-01 A → 2026-05-13 A (+42d) | 10d → 1d | MLTX-02-004-MB-1550, MLTX-02-004-MB-1700 → MLTX-02-004-MB-1550 |  |
| MLTX-02-004-MB-1710 | Approval of Construction Safety & Environmental Management Plan | 2026-03-18 A → 2026-06-10 A (+84d) | 2026-04-01 A → 2026-06-10 A (+70d) | 10d → 1d | MLTX-02-004-MB-1570, MLTX-02-004-MB-1700 → MLTX-02-004-MB-1570 |  |
| ENGG | **ENGINEERING** | 2026-03-08 → 2026-03-31 (+23d) | 2027-01-20 → 2026-12-05 (-46d) |  |  |  |
| SD | **SHOP DRAWINGS** | 2026-03-09 → 2026-03-31 (+22d) | 2027-01-20 → 2026-08-26 (-147d) |  |  |  |
| SUB | **SHOP DRAWINGS SUBMISSION** | 2026-03-09 → 2026-03-31 (+22d) | 2026-12-22 → 2026-08-25 (-119d) |  |  |  |
| 2 | **SHOP DRAWING SUBMITTALS FOR EARTHING WORKS** | 2026-03-09 → 2026-03-31 (+22d) | 2026-03-14 → 2026-06-09 (+87d) |  |  |  |
| MLTX-02-004-EN-1790 | Shop DWG Submittal for Layout Plan | 2026-03-09 A → 2026-03-31 A (+22d) | 2026-03-14 A → 2026-04-18 A (+35d) | 15d → 16d |  |  |
| MLTX-02-004-EN-1800 | Shop DWG Submittal for Setting Out | 2026-03-09 A → 2026-03-31 A (+22d) | 2026-03-14 A → 2026-05-21 A (+68d) | 15d → 44.2d |  |  |
| MLTX-02-004-EN-1810 | Shop DWG Submittal for Grading Layout Plan | 2026-03-09 A → 2026-03-31 A (+22d) | 2026-03-14 A → 2026-04-28 A (+45d) | 15d → 25d | MLTX-02-004-MB-1320 → MLTX-02-004-EN-2910 |  |
| MLTX-02-004-EN-1820 | Shop DWG Submittal for Curb Setting Out Points | 2026-03-09 A → 2026-05-21 A (+73d) | 2026-03-14 A → 2026-05-21 A (+68d) | 15d → 1d | MLTX-02-004-MB-1320, MLTX-02-004-EN-2400 → MLTX-02-004-MB-1320 |  |
| MLTX-02-004-EN-1840 | Shop DWG Submittal for Standards Details | 2026-03-09 A → 2026-05-21 A (+73d) | 2026-03-14 A → 2026-05-21 A (+68d) | 15d → 1d | MLTX-02-004-MB-1320, MLTX-02-004-EN-1820 → MLTX-02-004-MB-1320 |  |
| MLTX-02-004-EN-1830 | Shop DWG Submittal for Signing & Marking Layout Plan | 2026-03-09 A → 2026-06-09 A (+92d) | 2026-03-14 A → 2026-06-09 A (+87d) | 15d → 1d | MLTX-02-004-MB-1320, MLTX-02-004-EN-1820 → MLTX-02-004-MB-1320 |  |
| ROAD | **SHOP DRAWING SUBMITTALS FOR SERVICE/TOILET WORKS** | 2026-03-09 → 2026-03-31 (+22d) | 2026-07-30 → 2026-08-25 (+26d) |  |  |  |
| 2 | **ARCHITECTURE WORKS** | 2026-03-09 → 2026-03-31 (+22d) | 2026-03-14 → 2026-04-13 (+30d) |  |  |  |
| MLTX-02-004-EN-1870 | Shop DWG Submittal for Floor Plan | 2026-03-09 A → 2026-03-31 A (+22d) | 2026-03-14 A → 2026-04-13 A (+30d) | 15d → 12d |  |  |
| MLTX-02-004-EN-1880 | Shop DWG Submittal for Elevations | 2026-03-09 A → 2026-03-31 A (+22d) | 2026-03-14 A → 2026-04-13 A (+30d) | 15d → 12d |  |  |
| MLTX-02-004-EN-1890 | Shop DWG Submittal for Sections | 2026-03-09 A → 2026-03-31 A (+22d) | 2026-03-14 A → 2026-04-13 A (+30d) | 15d → 12d |  |  |
| MLTX-02-004-EN-1900 | Shop DWG Submittal for Ceiling Plan | 2026-03-09 A → 2026-03-31 A (+22d) | 2026-03-14 A → 2026-04-13 A (+30d) | 15d → 12d |  |  |
| MLTX-02-004-EN-1910 | Shop DWG Submittal for Finishes Plan | 2026-03-09 A → 2026-03-31 A (+22d) | 2026-03-14 A → 2026-04-13 A (+30d) | 15d → 12d |  |  |
| MLTX-02-004-EN-1920 | Shop DWG Submittal for Toilet Details | 2026-03-09 A → 2026-03-31 A (+22d) | 2026-03-14 A → 2026-04-13 A (+30d) | 15d → 12d |  |  |
| MLTX-02-004-EN-1930 | Shop DWG Submittal for Doors/Windows Schedule | 2026-03-09 A → 2026-03-31 A (+22d) | 2026-03-14 A → 2026-04-13 A (+30d) | 15d → 12d |  |  |
| 1 | **STRUCTURE WORKS** | 2026-03-15 → 2026-04-08 (+24d) | 2026-03-19 → 2026-04-30 (+42d) |  |  |  |
| MLTX-02-004-EN-1950 | Shop DWG Submittal for Foundation Plan | 2026-03-15 A → 2026-04-08 A (+24d) | 2026-03-19 A → 2026-04-30 A (+42d) | 15d → 20d |  |  |
| MLTX-02-004-EN-1960 | Shop DWG Submittal for Ground Floor Framing Plan | 2026-03-15 A → 2026-04-08 A (+24d) | 2026-03-19 A → 2026-04-30 A (+42d) | 21d → 20d |  |  |
| MLTX-02-004-EN-1970 | Shop DWG Submittal for Sections/Details | 2026-03-15 A → 2026-04-08 A (+24d) | 2026-03-19 A → 2026-04-30 A (+42d) | 21d → 20d |  |  |
| 3 | **MECHANCAL WORKS** | 2026-03-15 → 2026-04-08 (+24d) | 2026-07-07 → 2026-05-21 (-47d) |  |  |  |
| MLTX-02-004-EN-1990 | Shop DWG Submittal for HVAC Plan | 2026-03-15 A → 2026-04-08 A (+24d) | 2026-03-19 A → 2026-04-15 A (+27d) | 21d → 7d | MLTX-02-004-EN-1930, MLTX-02-004-EN-2940 → MLTX-02-004-EN-1930 |  |
| MLTX-02-004-EN-2000 | Shop DWG Submittal for Exhaust Air Plan | 2026-03-15 A → 2026-04-08 A (+24d) | 2026-03-19 A → 2026-04-30 A (+42d) | 21d → 20d | MLTX-02-004-EN-1930, MLTX-02-004-EN-2070 → MLTX-02-004-EN-1930 |  |
| MLTX-02-004-EN-2010 | Shop DWG Submittal for HVAC Equipment Schedule | 2026-03-15 A → 2026-04-08 A (+24d) | 2026-03-19 A → 2026-04-15 A (+27d) | 21d → 7d | MLTX-02-004-EN-1930, MLTX-02-004-EN-2000 → MLTX-02-004-EN-1930 |  |
| MLTX-02-004-EN-2020 | Shop DWG Submittal for Drainage Layout | 2026-03-15 A → 2026-04-08 A (+24d) | 2026-06-02 A → 2026-05-21 A (-12d) | 21d → 38d | MLTX-02-004-EN-1930, MLTX-02-004-EN-2280 → MLTX-02-004-EN-1930 |  |
| MLTX-02-004-EN-2030 | Shop DWG Submittal for Drainage Details | 2026-03-15 A → 2026-04-08 A (+24d) | 2026-06-02 A → 2026-04-30 A (-33d) | 21d → 20d | MLTX-02-004-EN-1930, MLTX-02-004-EN-2910 → MLTX-02-004-EN-1930 |  |
| MLTX-02-004-EN-2050 | Shop DWG Submittal for Diffusers Layout | 2026-07-07 A → 2026-04-08 A (-90d) | 2026-07-07 A → 2026-04-14 A (-84d) | 21d → 6d | MLTX-02-004-EN-1930, MLTX-02-004-EN-2940 → MLTX-02-004-EN-1930 |  |
| MLTX-02-004-EN-2060 | Shop DWG Submittal for Fire Fighting Layout | 2026-03-15 A → 2026-04-08 A (+24d) | 2026-03-19 A → 2026-04-14 A (+26d) | 21d → 6d | MLTX-02-004-EN-1930, MLTX-02-004-EN-1990 → MLTX-02-004-EN-1930 |  |
| MLTX-02-004-EN-2080 | Shop DWG Submittal for Water Supply Details | 2026-03-15 A → 2026-04-08 A (+24d) | 2026-05-20 A → 2026-04-14 A (-36d) | 21d → 6d | MLTX-02-004-EN-1930, MLTX-02-004-EN-2910 → MLTX-02-004-EN-1930 |  |
| MLTX-02-004-EN-2070 | Shop DWG Submittal for Water Supply Layout | 2026-03-15 A → 2026-05-06 A (+52d) | 2026-05-20 A → 2026-05-06 A (-14d) | 21d → 1d | MLTX-02-004-EN-1930, MLTX-02-004-EN-2910 → MLTX-02-004-EN-1930 |  |
| MLTX-02-004-EN-2040 | Shop DWG Submittal for Dut Routing Layout | 2026-03-15 A → 2026-05-21 A (+67d) | 2026-03-19 A → 2026-05-21 A (+63d) | 21d → 1d | MLTX-02-004-EN-1930, MLTX-02-004-EN-2070 → MLTX-02-004-EN-1930 |  |
| 4 | **ELECTRICAL WORKS** | 2026-03-15 → 2026-04-08 (+24d) | 2026-07-30 → 2026-08-25 (+26d) |  |  |  |
| MLTX-02-004-EN-2100 | Shop DWG Submittal for Lighting Layout | 2026-03-15 A → 2026-04-08 A (+24d) | 2026-03-19 A → 2026-04-19 A (+31d) | 21d → 10d | MLTX-02-004-EN-1930, MLTX-02-004-EN-2910 → MLTX-02-004-EN-2920, MLTX-02-004-EN-1930 |  |
| MLTX-02-004-EN-2140 | Shop DWG Submittal for Lighting Installation Details | 2026-03-15 A → 2026-04-08 A (+24d) | 2026-03-19 A → 2026-04-20 A (+32d) | 21d → 11d | MLTX-02-004-EN-2150 SS, MLTX-02-004-EN-2910 → MLTX-02-004-EN-2150 SS |  |
| MLTX-02-004-EN-2190 | Shop DWG Submittal for Fire Alarm Installation Details | 2026-03-15 A → 2026-04-08 A (+24d) | 2026-03-19 A → 2026-04-20 A (+32d) | 15d → 11d |  |  |
| MLTX-02-004-EN-2200 | Shop DWG Submittal for Fire Alarm Layout | 2026-03-15 A → 2026-04-08 A (+24d) | 2026-03-19 A → 2026-04-20 A (+32d) | 15d → 11d |  |  |
| MLTX-02-004-EN-2210 | Shop DWG Submittal for Lightning Protection Details | 2026-03-15 A → 2026-04-08 A (+24d) | 2026-03-19 A → 2026-04-19 A (+31d) | 15d → 10d |  |  |

| ID | Task | Start | Finish | Duration | Complete | Total float | Predecessors |
| --- | --- | --- | --- | --- | --- | --- | --- |
| MLTX-02-004-EN-2220 | Shop DWG Submittal for Lightning Protection System Layout | 2026-03-15 A → 2026-04-08 A (+24d) | 2026-03-19 A → 2026-04-19 A (+31d) | 15d → 10d |  |  |  |
| MLTX-02-004-EN-2230 | Shop DWG Submittal for Fire Alarm Riser Diagram | 2026-03-15 A → 2026-04-08 A (+24d) | 2026-03-19 A → 2026-04-20 A (+32d) | 15d → 11d |  |  |  |
| MLTX-02-004-EN-2260 | Shop DWG Submittal for Telephone & Data Layout | 2026-03-15 A → 2026-04-08 A (+24d) | 2026-03-19 A → 2026-04-20 A (+32d) | 21d → 11d |  |  | MLTX-02-004-EN-2230 → MLTX-02-004-MS-1010 SS |
| MLTX-02-004-EN-2290 | Shop DWG Submittal for Telephone & Data Riser Diagram | 2026-03-15 A → 2026-04-08 A (+24d) | 2026-03-19 A → 2026-04-20 A (+32d) | 21d → 11d |  |  | MLTX-02-004-EN-1930, MLTX-02-004-EN-2260 SS, MLTX-02-004-EN-2910 → MLTX-02-004-EN-2260 SS, MLTX-02-004-EN-1930 |
| MLTX-02-004-EN-2110 | Shop DWG Submittal for Power Layout | 2026-03-15 A → 2026-05-06 A (+52d) | 2026-03-19 A → 2026-05-06 A (+48d) | 21d → 1d |  |  | MLTX-02-004-EN-1930, MLTX-02-004-EN-2280 → MLTX-02-004-EN-1930 |
| MLTX-02-004-EN-2120 | Shop DWG Submittal for Power Single Line Diagram | 2026-06-10 A → 2026-05-06 A (-35d) | 2026-06-10 A → 2026-05-06 A (-35d) | 21d → 1d |  |  | MLTX-02-004-EN-1930, MLTX-02-004-EN-2000 → MLTX-02-004-EN-1930 |
| MLTX-02-004-EN-2130 | Shop DWG Submittal for Panel Board Schedules | 2026-06-10 A → 2026-05-06 A (-35d) | 2026-06-10 A → 2026-05-06 A (-35d) | 15d → 1d |  |  | MLTX-02-004-EN-1930, MLTX-02-004-EN-2260 → MLTX-02-004-EN-1930 |
| MLTX-02-004-EN-2150 | Shop DWG Submittal for Power Installation Details | 2026-03-15 A → 2026-05-06 A (+52d) | 2026-03-19 A → 2026-05-06 A (+48d) | 15d → 1d |  |  | MLTX-02-004-EN-1930 → MLTX-02-004-EN-2130 SS |
| MLTX-02-004-EN-2160 | Shop DWG Submittal for Cable Tray Installation Details | 2026-03-15 A → 2026-05-06 A (+52d) | 2026-03-19 A → 2026-05-06 A (+48d) | 15d → 1d |  |  |  |
| MLTX-02-004-EN-2170 | Shop DWG Submittal for Manhole & Ductbank Details | 2026-03-15 A → 2026-05-06 A (+52d) | 2026-03-19 A → 2026-05-06 A (+48d) | 15d → 1d |  |  |  |
| MLTX-02-004-EN-2180 | Shop DWG Submittal for Grounding Details | 2026-03-15 A → 2026-05-06 A (+52d) | 2026-03-19 A → 2026-05-06 A (+48d) | 15d → 1d |  |  |  |
| MLTX-02-004-EN-2270 | Shop DWG Submittal for Grounding Layout | 2026-03-15 A → 2026-05-07 A (+53d) | 2026-03-19 A → 2026-05-07 A (+49d) | 15d → 1d |  |  | MLTX-02-004-EN-2190 → MLTX-02-004-MS-1010 SS |
| MLTX-02-004-EN-2240 | Shop DWG Submittal for CCTV Details | 2026-07-30 A → 2026-08-25 A (+26d) | 2026-07-30 A → 2026-08-25 A (+26d) | 15d → 6d |  |  | MLTX-02-004-EN-2190 SS, MLTX-02-004-EN-2280 → MLTX-02-004-EN-2190 |
| MLTX-02-004-EN-2250 | Shop DWG Submittal for CCTV Layout | 2026-03-15 A → 2026-08-25 A (+163d) | 2026-03-19 A → 2026-08-25 A (+159d) | 15d → 6d |  |  | MLTX-02-004-EN-2230 SS → MLTX-02-004-EN-2230 |
| MLTX-02-004-EN-2280 | Shop DWG Submittal for CCTV Riser Diagram | 2026-03-15 A → 2026-08-25 A (+163d) | 2026-03-19 A → 2026-08-25 A (+159d) | 15d → 6d |  |  | MLTX-02-004-EN-2250 SS → MLTX-02-004-EN-2250 |
| ELE | **SHOP DRAWINGS SUBMITTALS FOR PLAYGROUND WORKS** | 2026-03-09 → 2026-03-31 (+22d) | 2026-12-22 → 2026-08-25 (-119d) |  |  |  |  |
| 3 | **ARCHITECTURE WORKS** | 2026-03-09 → 2026-03-31 (+22d) | 2026-07-13 → 2026-05-14 (-60d) |  |  |  |  |
| MLTX-02-004-EN-2320 | Shop DWG Submittal for Playground Plan/Layout | 2026-03-09 A → 2026-03-31 A (+22d) | 2026-03-14 A → 2026-04-18 A (+35d) | 15d → 16d |  |  |  |
| MLTX-02-004-EN-2340 | Shop DWG Submittal for Sections | 2026-03-09 A → 2026-03-31 A (+22d) | 2026-03-14 A → 2026-04-18 A (+35d) | 15d → 16d |  |  |  |
| MLTX-02-004-EN-2330 | Shop DWG Submittal for Furniture & Marking | 2026-03-09 A → 2026-05-13 A (+65d) | 2026-04-28 A → 2026-05-14 A (+16d) | 15d → 2d |  |  |  |
| MLTX-02-004-EN-2350 | Shop DWG Submittal for Interlock Pattern Plan | 2026-03-09 A → 2026-05-13 A (+65d) | 2026-03-14 A → 2026-05-14 A (+61d) | 21d → 2d |  |  |  |
| MLTX-02-004-EN-2360 | Shop DWG Submittal for Doors/Windows Schedule | 2026-07-13 A → 2026-05-13 A (-61d) | 2026-07-13 A → 2026-05-14 A (-60d) | 21d → 2d |  |  | MLTX-02-004-EN-2340, MLTX-02-004-EN-2020 → MLTX-02-004-EN-2350 SS |
| MLTX-02-004-EN-2370 | Shop DWG Submittal for Dome Internal Layout | 2026-03-09 A → 2026-05-13 A (+65d) | 2026-05-20 A → 2026-05-14 A (-6d) | 21d → 2d |  |  | MLTX-02-004-EN-2350 → MLTX-02-004-EN-2360 SS |
| 4 | **STRUCTURE WORKS** | 2026-03-15 → 2026-05-13 (+59d) | 2026-07-14 → 2026-05-14 (-61d) |  |  |  |  |
| MLTX-02-004-EN-2390 | Shop DWG Submittal for Air Dome System | 2026-03-15 A → 2026-05-13 A (+59d) | 2026-05-10 A → 2026-05-14 A (+4d) | 21d → 2d |  |  | MLTX-02-004-EN-2370 → MLTX-02-004-EN-2900, MLTX-02-004-EN-2930, MLTX-02-004-EN-2370 |
| MLTX-02-004-EN-2400 | Shop DWG Submittal for Foundation of Air Dome | 2026-07-14 A → 2026-05-13 A (-62d) | 2026-07-14 A → 2026-05-14 A (-61d) | 21d → 2d |  |  | MLTX-02-004-EN-2390 SS, MLTX-02-004-EN-2440, MLTX-02-004-EN-2130 → MLTX-02-004-EN-2940, MLTX-02-004-EN-2390 SS |
| MLTX-02-004-EN-2420 | Shop DWG Submittal for Anchor Bolt Layout of Air Dome | 2026-07-14 A → 2026-05-13 A (-62d) | 2026-07-14 A → 2026-05-14 A (-61d) | 21d → 2d |  |  | MLTX-02-004-EN-2400 SS, MLTX-02-004-EN-2440 → MLTX-02-004-EN-2400 SS |
| 5 | **AIR DOME SYSTEM** | 2026-03-15 → 2026-05-13 (+59d) | 2026-05-25 → 2026-05-14 (-11d) |  |  |  |  |
| MLTX-02-004-EN-2440 | Shop DWG Submittal for Air Dome Structural Layout | 2026-03-15 A → 2026-05-13 A (+59d) | 2026-05-10 A → 2026-05-14 A (+4d) | 21d → 2d |  |  | MLTX-02-004-EN-2390 → MLTX-02-004-EN-2420 SS |
| MLTX-02-004-EN-2450 | Shop DWG Submittal for Membrane Panel Layout | 2026-03-15 A → 2026-05-13 A (+59d) | 2026-05-25 A → 2026-05-14 A (-11d) | 21d → 2d |  |  |  |
| MLTX-02-004-EN-2460 | Shop DWG Submittal for Cable Tension Layout | 2026-03-15 A → 2026-05-13 A (+59d) | 2026-05-25 A → 2026-05-14 A (-11d) | 21d → 2d |  |  |  |
| MLTX-02-004-EN-2470 | Shop DWG Submittal for Airlock Door Details | 2026-03-15 A → 2026-05-13 A (+59d) | 2026-05-25 A → 2026-05-14 A (-11d) | 21d → 2d |  |  |  |
| MLTX-02-004-EN-2480 | Shop DWG Submittal for Emergency Exit Details | 2026-03-15 A → 2026-05-13 A (+59d) | 2026-05-25 A → 2026-05-14 A (-11d) | 21d → 2d |  |  |  |
| 6 | **SPORTS EQUIPMENT** | 2026-06-29 → 2026-05-13 (-47d) | 2026-06-29 → 2026-05-14 (-46d) |  |  |  |  |
| MLTX-02-004-EN-2500 | Shop DWG Submittal for Football Turf Installation | 2026-06-29 A → 2026-05-13 A (-47d) | 2026-06-29 A → 2026-05-14 A (-46d) | 21d → 2d |  |  |  |
| MLTX-02-004-EN-2510 | Shop DWG Submittal for Basketball Court Marking | 2026-06-29 A → 2026-05-13 A (-47d) | 2026-06-29 A → 2026-05-14 A (-46d) | 21d → 2d |  |  |  |
| MLTX-02-004-EN-2520 | Shop DWG Submittal for Padel Court Structure | 2026-06-29 A → 2026-05-13 A (-47d) | 2026-06-29 A → 2026-05-14 A (-46d) | 21d → 2d |  |  | MLTX-02-004-EN-2510 SS, MLTX-02-004-EN-2940 → MLTX-02-004-EN-2510 SS |
| 1 | **MECHANCAL WORKS** | 2026-10-14 → 2026-04-08 (-189d) | 2026-10-14 → 2026-04-30 (-167d) |  |  |  |  |
| MLTX-02-004-EN-2540 | Shop DWG Submittal for HVAC Plan | 2026-10-14 A → 2026-04-08 A (-189d) | 2026-10-14 A → 2026-04-30 A (-167d) | 25d → 20d |  |  | MLTX-02-004-EN-2950, MLTX-02-004-EN-2520 SS → MLTX-02-004-EN-2520 SS |
| MLTX-02-004-EN-2550 | Shop DWG Submittal for Exhaust Air Plan | 2026-10-14 A → 2026-04-08 A (-189d) | 2026-10-14 A → 2026-04-30 A (-167d) | 25d → 20d |  |  | MLTX-02-004-EN-2540 SS, MLTX-02-004-EN-2360 → MLTX-02-004-EN-2540 SS |
| 2 | **ELECTRICAL WORKS** | 2026-08-20 → 2026-05-23 (-89d) | 2026-12-22 → 2026-08-25 (-119d) |  |  |  |  |
| MLTX-02-004-EN-2600 | Shop DWG Submittal for Fire Alarm Installation Details | 2026-10-14 A → 2026-05-23 A (-144d) | 2026-10-14 A → 2026-05-23 A (-144d) | 30d → 1d |  |  | MLTX-02-004-EN-2590 SS, MLTX-02-004-EN-2570 → MLTX-02-004-EN-2590 SS |
| MLTX-02-004-EN-2610 | Shop DWG Submittal for Fire Alarm Layout | 2026-10-24 A → 2026-05-23 A (-154d) | 2026-10-24 A → 2026-05-23 A (-154d) | 30d → 1d |  |  | MLTX-02-004-EN-2600 SS, MLTX-02-004-EN-2570 → MLTX-02-004-EN-2600, MLTX-02-004-EN-2600 SS |
| MLTX-02-004-EN-2640 | Shop DWG Submittal for Fire Alarm Riser Diagram | 2026-10-24 A → 2026-05-23 A (-154d) | 2026-10-24 A → 2026-05-23 A (-154d) | 30d → 1d |  |  | MLTX-02-004-EN-2600 SS, MLTX-02-004-EN-2570, MLTX-02-004-EN-2630 → MLTX-02-004-EN-2600, MLTX-02-004-EN-2600 SS |
| MLTX-02-004-EN-2570 | Shop DWG Submittal for Lighting Layout | 2026-10-14 A → 2026-05-25 A (-142d) | 2026-10-14 A → 2026-05-25 A (-142d) | 25d → 1d |  |  |  |
| MLTX-02-004-EN-2580 | Shop DWG Submittal for Power Layout | 2026-11-23 → 2026-07-01 A (-145d) | 2026-12-22 → 2026-07-01 A (-174d) | 25d → 1d | 0% → 100% | -42.1d → none | MLTX-02-004-EN-2650 SS → MLTX-02-004-MS-1010 SS |
| MLTX-02-004-EN-2590 | Shop DWG Submittal for Power Installation Details | 2026-10-14 A → 2026-07-01 A (-105d) | 2026-10-14 A → 2026-07-01 A (-105d) | 25d → 1d |  |  | MLTX-02-004-EN-2630 SS, MLTX-02-004-EN-2010 → MLTX-02-004-EN-2630 SS |
| MLTX-02-004-EN-2620 | Shop DWG Submittal for Power Single Line Diagram | 2026-10-14 A → 2026-07-01 A (-105d) | 2026-10-14 A → 2026-07-01 A (-105d) | 25d → 1d |  |  | MLTX-02-004-EN-2650 SS, MLTX-02-004-EN-2010 → MLTX-02-004-MS-1010 SS |
| MLTX-02-004-EN-2630 | Shop DWG Submittal for Panel Board Schedules | 2026-10-14 A → 2026-07-01 A (-105d) | 2026-10-14 A → 2026-07-01 A (-105d) | 25d → 1d |  |  | MLTX-02-004-EN-2620 SS, MLTX-02-004-EN-2010 → MLTX-02-004-EN-2620 SS |
| MLTX-02-004-EN-2650 | Shop DWG Submittal for CCTV Details | 2026-08-20 A → 2026-08-25 A (+5d) | 2026-08-20 A → 2026-08-25 A (+5d) | 21d → 6d |  |  | MLTX-02-004-EN-2250 → MLTX-02-004-EN-2570 |
| MLTX-02-004-EN-2660 | Shop DWG Submittal for CCTV Layout | 2026-08-20 A → 2026-08-25 A (+5d) | 2026-08-20 A → 2026-08-25 A (+5d) | 21d → 6d |  |  | MLTX-02-004-EN-2650, MLTX-02-004-EN-2010 → MLTX-02-004-EN-2640 |
| MLTX-02-004-EN-2670 | Shop DWG Submittal for CCTV Riser Diagram | 2026-08-20 A → 2026-08-25 A (+5d) | 2026-08-20 A → 2026-08-25 A (+5d) | 21d → 6d |  |  | MLTX-02-004-EN-2660 SS, MLTX-02-004-EN-2010 → MLTX-02-004-EN-2660 |
| EAR | **SHOP DRAWINGS SUBMITTALS FOR LANDSCAPE WORKS** | 2026-03-09 → 2026-03-31 (+22d) | 2026-07-29 → 2026-06-17 (-42d) |  |  |  |  |
| 3 | **ARCHITECTURE WORKS** | 2026-03-09 → 2026-03-31 (+22d) | 2026-03-19 → 2026-05-14 (+56d) |  |  |  |  |
| MLTX-02-004-EN-2700 | Shop DWG Submittal for Landscape Layout | 2026-03-09 A → 2026-03-31 A (+22d) | 2026-03-14 A → 2026-04-06 A (+23d) | 21d → 6d |  |  |  |
| MLTX-02-004-EN-2710 | Shop DWG Submittal for Hardscape Plan | 2026-03-09 A → 2026-05-13 A (+65d) | 2026-03-14 A → 2026-05-14 A (+61d) | 21d → 2d |  |  |  |
| MLTX-02-004-EN-2720 | Shop DWG Submittal for Planting Plan | 2026-03-15 A → 2026-05-13 A (+59d) | 2026-03-19 A → 2026-05-14 A (+56d) | 15d → 2d |  |  |  |
| MLTX-02-004-EN-2730 | Shop DWG Submittal for Landscape Details | 2026-03-09 A → 2026-05-13 A (+65d) | 2026-03-14 A → 2026-05-14 A (+61d) | 15d → 2d |  |  |  |
| 1 | **MECHANCAL WORKS** | 2026-07-06 → 2026-06-17 (-19d) | 2026-07-06 → 2026-06-17 (-19d) |  |  |  |  |
| MLTX-02-004-EN-2770 | Shop DWG Submittal for Irrigation Details | 2026-07-06 A → 2026-06-17 A (-19d) | 2026-07-06 A → 2026-06-17 A (-19d) | 30d → 1d |  |  | MLTX-02-004-MB-1320, MLTX-02-004-EN-2400 → MLTX-02-004-MB-1320 |
| MLTX-02-004-EN-2810 | Shop DWG Submittal for Irrigation Layout | 2026-07-06 A → 2026-06-17 A (-19d) | 2026-07-06 A → 2026-06-17 A (-19d) | 30d → 1d |  |  | MLTX-02-004-MB-1320, MLTX-02-004-EN-2400 → MLTX-02-004-MB-1320 |
| 2 | **ELECTRICAL WORKS** | 2026-07-29 → 2026-05-23 (-67d) | 2026-07-29 → 2026-05-23 (-67d) |  |  |  |  |
| MLTX-02-004-EN-2840 | Shop DWG Submittal for Lighting Details | 2026-07-29 A → 2026-05-23 A (-67d) | 2026-07-29 A → 2026-05-23 A (-67d) | 30d → 1d |  |  | MLTX-02-004-MB-1320, MLTX-02-004-EN-2400 → MLTX-02-004-MB-1320 |
| MLTX-02-004-EN-2850 | Shop DWG Submittal for Lighting Single Line Diagram | 2026-07-29 A → 2026-05-23 A (-67d) | 2026-07-29 A → 2026-05-23 A (-67d) | 30d → 1d |  |  | MLTX-02-004-MB-1320, MLTX-02-004-EN-2400 → MLTX-02-004-MB-1320 |
| MLTX-02-004-EN-2860 | Shop DWG Submittal for Lighting General Arrangement | 2026-07-29 A → 2026-05-23 A (-67d) | 2026-07-29 A → 2026-05-23 A (-67d) | 30d → 1d |  |  | MLTX-02-004-MB-1320, MLTX-02-004-EN-2400 → MLTX-02-004-MB-1320 |
| MLTX-02-004-EN-2870 | Shop DWG Submittal for Lighting Network Layout | 2026-07-29 A → 2026-05-23 A (-67d) | 2026-07-29 A → 2026-05-23 A (-67d) | 30d → 1d |  |  |  |
| APP | **SHOP DRAWINGS APPROVALS** | 2026-03-15 → 2026-04-07 (+23d) | 2027-01-20 → 2026-08-26 (-147d) |  |  |  |  |
| 2 | **SHOP DRAWING APPROVAL FOR EARTHING WORKS** | 2026-03-15 → 2026-04-07 (+23d) | 2026-03-29 → 2026-06-09 (+72d) |  |  |  |  |
| MLTX-02-004-EN-2920 | Shop DWG Approval for Grading Layout Plan | 2026-03-15 A → 2026-04-07 A (+23d) | 2026-03-29 A → 2026-04-29 A (+31d) | 15d → 20d |  |  | MLTX-02-004-EN-2910, MLTX-02-004-EN-1810 → MLTX-02-004-EN-1810 |
| MLTX-02-004-EN-2900 | Shop DWG Approval for Layout Plan | 2026-03-15 A → 2026-04-18 A (+34d) | 2026-03-29 A → 2026-04-24 A (+26d) | 15d → 6d |  |  | MLTX-02-004-EN-1790, MLTX-02-004-EN-3430 → MLTX-02-004-EN-1790 |

| ID | Task | Start | Finish | Duration | Predecessors | Other |
| --- | --- | --- | --- | --- | --- | --- |
| MLTX-02-004-EN-2930 | Shop DWG Approval for Curb Setting Out Points | 2026-03-15 A → 2026-05-21 A (+67d) | 2026-03-29 A → 2026-05-21 A (+53d) | 15d → 1d | MLTX-02-004-EN-2920, MLTX-02-004-EN-1820 → MLTX-02-004-EN-1820 |  |
| MLTX-02-004-EN-2950 | Shop DWG Approval for Standards Details | 2026-03-15 A → 2026-05-21 A (+67d) | 2026-03-29 A → 2026-05-21 A (+53d) | 15d → 1d | MLTX-02-004-EN-2940, MLTX-02-004-EN-1840 → MLTX-02-004-EN-1840 |  |
| MLTX-02-004-EN-2910 | Shop DWG Approval for Setting Out | 2026-03-15 A → 2026-05-21 A (+67d) | 2026-03-29 A → 2026-05-21 A (+53d) | 15d → 0d | MLTX-02-004-EN-1800, MLTX-02-004-EN-2900 → MLTX-02-004-EN-1800 | resources Draftsman [12.71 h]; Consultant Staff [3.39 h] → Draftsman; Consultant Staff |
| MLTX-02-004-EN-2940 | Shop DWG Approval for Signing & Marking Layout Plan | 2026-03-15 A → 2026-06-09 A (+86d) | 2026-03-29 A → 2026-06-09 A (+72d) | 15d → 1d | MLTX-02-004-EN-2930, MLTX-02-004-EN-1830 → MLTX-02-004-EN-1830 |  |
| ROAD | **SHOP DRAWING APPROVAL FOR SERVICE/TOILET WORKS** | 2026-03-15 → 2026-04-14 (+30d) | 2026-07-30 → 2026-08-12 (+13d) |  |  |  |
| 2 | **ARCHITECTURE WORKS** | 2026-03-15 → 2026-04-14 (+30d) | 2026-03-29 → 2026-04-24 (+26d) |  |  |  |
| MLTX-02-004-EN-2980 | Shop DWG Approval for Floor Plan | 2026-03-15 A → 2026-04-14 A (+30d) | 2026-03-29 A → 2026-04-24 A (+26d) | 30d → 9d |  |  |
| MLTX-02-004-EN-2990 | Shop DWG Approval for Elevations | 2026-03-15 A → 2026-04-14 A (+30d) | 2026-03-29 A → 2026-04-24 A (+26d) | 30d → 9d | MLTX-02-004-EN-1880, MLTX-02-004-EN-2980 → MLTX-02-004-EN-1880 |  |
| MLTX-02-004-EN-3000 | Shop DWG Approval for Sections | 2026-03-15 A → 2026-04-14 A (+30d) | 2026-03-29 A → 2026-04-24 A (+26d) | 30d → 9d | MLTX-02-004-EN-1890, MLTX-02-004-EN-3450 → MLTX-02-004-EN-1890 |  |
| MLTX-02-004-EN-3010 | Shop DWG Approval for Ceiling Plan | 2026-03-15 A → 2026-04-14 A (+30d) | 2026-03-29 A → 2026-04-24 A (+26d) | 30d → 9d | MLTX-02-004-EN-1900, MLTX-02-004-EN-2980 → MLTX-02-004-EN-2610, MLTX-02-004-EN-1900 |  |
| MLTX-02-004-EN-3020 | Shop DWG Approval for Finishes Plan | 2026-03-15 A → 2026-04-14 A (+30d) | 2026-03-29 A → 2026-04-24 A (+26d) | 30d → 9d | MLTX-02-004-EN-1910, MLTX-02-004-EN-2980 → MLTX-02-004-EN-1910 |  |
| MLTX-02-004-EN-3030 | Shop DWG Approval for Toilet Details | 2026-03-15 A → 2026-04-14 A (+30d) | 2026-03-29 A → 2026-04-24 A (+26d) | 30d → 9d | MLTX-02-004-EN-1920, MLTX-02-004-EN-2980 → MLTX-02-004-EN-1920 |  |
| MLTX-02-004-EN-3040 | Shop DWG Approval for Doors/Windows Schedule | 2026-03-15 A → 2026-04-14 A (+30d) | 2026-03-29 A → 2026-04-24 A (+26d) | 30d → 9d | MLTX-02-004-EN-1930, MLTX-02-004-EN-3470 → MLTX-02-004-EN-1930 |  |
| 1 | **STRUCTURE WORKS** | 2026-03-24 → 2026-05-13 (+50d) | 2026-04-04 → 2026-05-14 (+40d) |  |  |  |
| MLTX-02-004-EN-3060 | Shop DWG Approval for Foundation Plan | 2026-03-24 A → 2026-05-13 A (+50d) | 2026-04-04 A → 2026-05-14 A (+40d) | 15d → 2d | MLTX-02-004-EN-1950, MLTX-02-004-EN-2980 → MLTX-02-004-EN-1950 |  |
| MLTX-02-004-EN-3070 | Shop DWG Approval for Ground Floor Framing Plan | 2026-03-24 A → 2026-05-13 A (+50d) | 2026-04-04 A → 2026-05-14 A (+40d) | 21d → 2d | MLTX-02-004-EN-1960, MLTX-02-004-EN-3840 → MLTX-02-004-EN-1960 |  |
| MLTX-02-004-EN-3080 | Shop DWG Approval for Sections/Details | 2026-03-24 A → 2026-05-13 A (+50d) | 2026-04-04 A → 2026-05-14 A (+40d) | 21d → 2d |  |  |
| 3 | **MECHANCAL WORKS** | 2026-03-24 → 2026-05-07 (+44d) | 2026-07-30 → 2026-05-21 (-70d) |  |  |  |
| MLTX-02-004-EN-3100 | Shop DWG Approval for HVAC Plan | 2026-07-30 A → 2026-05-07 A (-84d) | 2026-07-30 A → 2026-05-07 A (-84d) | 21d → 1d |  |  |
| MLTX-02-004-EN-3110 | Shop DWG Approval for Exhaust Air Plan | 2026-03-24 A → 2026-05-07 A (+44d) | 2026-04-04 A → 2026-05-07 A (+33d) | 21d → 1d | MLTX-02-004-EN-2000, MLTX-02-004-EN-3180 → MLTX-02-004-EN-2000 |  |
| MLTX-02-004-EN-3120 | Shop DWG Approval for HVAC Equipment Schedule | 2026-07-30 A → 2026-05-07 A (-84d) | 2026-07-30 A → 2026-05-11 A (-80d) | 21d → 4d | MLTX-02-004-EN-2010, MLTX-02-004-EN-3110 → MLTX-02-004-EN-2010 |  |
| MLTX-02-004-EN-3130 | Shop DWG Approval for Drainage Layout | 2026-03-30 A → 2026-05-07 A (+38d) | 2026-06-04 A → 2026-05-07 A (-28d) | 21d → 1d | MLTX-02-004-EN-2020, MLTX-02-004-EN-2920 → MLTX-02-004-EN-2020 |  |
| MLTX-02-004-EN-3150 | Shop DWG Approval for Duct Routing Layout | 2026-03-24 A → 2026-05-07 A (+44d) | 2026-04-04 A → 2026-05-07 A (+33d) | 21d → 1d | MLTX-02-004-EN-2040, MLTX-02-004-EN-3180 → MLTX-02-004-EN-2040 |  |
| MLTX-02-004-EN-3170 | Shop DWG Approval for Fire Fighting Layout | 2026-03-24 A → 2026-05-07 A (+44d) | 2026-04-04 A → 2026-05-07 A (+33d) | 21d → 1d |  |  |
| MLTX-02-004-EN-3180 | Shop DWG Approval for Water Supply Layout | 2026-06-03 A → 2026-05-07 A (-27d) | 2026-06-03 A → 2026-05-07 A (-27d) | 21d → 1d | MLTX-02-004-EN-2070, MLTX-02-004-EN-2930 → MLTX-02-004-EN-2070 |  |
| MLTX-02-004-EN-3190 | Shop DWG Approval for Water Supply Details | 2026-06-03 A → 2026-05-07 A (-27d) | 2026-06-03 A → 2026-05-07 A (-27d) | 21d → 1d | MLTX-02-004-EN-2080, MLTX-02-004-EN-2930 → MLTX-02-004-EN-2080 |  |
| MLTX-02-004-EN-3140 | Shop DWG Approval for Drainage Details | 2026-03-30 A → 2026-05-21 A (+52d) | 2026-06-04 A → 2026-05-21 A (-14d) | 21d → 1d | MLTX-02-004-EN-2030, MLTX-02-004-EN-2920 → MLTX-02-004-EN-2030 |  |
| MLTX-02-004-EN-3160 | Shop DWG Approval for Diffusers Layout | 2026-07-30 A → 2026-05-21 A (-70d) | 2026-07-30 A → 2026-05-21 A (-70d) | 21d → 1d |  |  |
| 4 | **ELECTRICAL WORKS** | 2026-03-24 → 2026-04-15 (+22d) | 2026-07-30 → 2026-08-12 (+13d) |  |  |  |
| MLTX-02-004-EN-3210 | Shop DWG Approval for Lighting Layout | 2026-03-24 A → 2026-04-15 A (+22d) | 2026-04-04 A → 2026-04-26 A (+22d) | 21d → 10d | MLTX-02-004-EN-2100, MLTX-02-004-EN-2920 → MLTX-02-004-EN-2100 |  |
| MLTX-02-004-EN-3220 | Shop DWG Approval for Power Layout | 2026-03-24 A → 2026-04-15 A (+22d) | 2026-04-04 A → 2026-04-26 A (+22d) | 21d → 10d | MLTX-02-004-EN-2110, MLTX-02-004-EN-3240 → MLTX-02-004-EN-2110 |  |
| MLTX-02-004-EN-3250 | Shop DWG Approval for Lighting Installation Details | 2026-03-24 A → 2026-04-15 A (+22d) | 2026-04-04 A → 2026-04-26 A (+22d) | 21d → 10d | MLTX-02-004-EN-2140, MLTX-02-004-EN-2920 → MLTX-02-004-EN-2140 |  |
| MLTX-02-004-EN-3260 | Shop DWG Approval for Power Installation Details | 2026-03-24 A → 2026-04-15 A (+22d) | 2026-04-04 A → 2026-04-26 A (+22d) | 30d → 10d | MLTX-02-004-EN-2150, MLTX-02-004-EN-3620 → MLTX-02-004-EN-2150 |  |
| MLTX-02-004-EN-3320 | Shop DWG Approval for Lightning Protection Details | 2026-03-24 A → 2026-04-15 A (+22d) | 2026-04-04 A → 2026-04-26 A (+22d) | 30d → 10d | MLTX-02-004-EN-2210, MLTX-02-004-EN-3270 → MLTX-02-004-EN-2210 |  |
| MLTX-02-004-EN-3330 | Shop DWG Approval for Lightning Protection System Layout | 2026-03-24 A → 2026-04-15 A (+22d) | 2026-04-04 A → 2026-04-26 A (+22d) | 30d → 10d | MLTX-02-004-EN-2220, MLTX-02-004-EN-3270 → MLTX-02-004-EN-2220 |  |
| MLTX-02-004-EN-3300 | Shop DWG Approval for Fire Alarm Installation Details | 2026-03-24 A → 2026-04-21 A (+28d) | 2026-04-04 A → 2026-04-27 A (+23d) | 30d → 6d | MLTX-02-004-EN-2190, MLTX-02-004-EN-3110 → MLTX-02-004-EN-2190 |  |
| MLTX-02-004-EN-3310 | Shop DWG Approval for Fire Alarm Layout | 2026-03-24 A → 2026-04-21 A (+28d) | 2026-04-04 A → 2026-04-27 A (+23d) | 30d → 6d | MLTX-02-004-EN-2200, MLTX-02-004-EN-3110 → MLTX-02-004-EN-2200 |  |
| MLTX-02-004-EN-3340 | Shop DWG Approval for Fire Alarm Riser Diagram | 2026-03-24 A → 2026-04-21 A (+28d) | 2026-04-04 A → 2026-04-27 A (+23d) | 30d → 6d | MLTX-02-004-EN-2230, MLTX-02-004-EN-3110 → MLTX-02-004-EN-2230 |  |
| MLTX-02-004-EN-3370 | Shop DWG Approval for Telephone & Data Layout | 2026-03-24 A → 2026-04-21 A (+28d) | 2026-04-04 A → 2026-04-27 A (+23d) | 21d → 6d | MLTX-02-004-EN-2260, MLTX-02-004-EN-3000 → MLTX-02-004-EN-2260 |  |
| MLTX-02-004-EN-3400 | Shop DWG Approval for Telephone & Data Riser Diagram | 2026-07-30 A → 2026-04-21 A (-100d) | 2026-07-30 A → 2026-04-27 A (-94d) | 21d → 6d | MLTX-02-004-EN-2280, MLTX-02-004-EN-2290, MLTX-02-004-EN-3240, MLTX-02-004-EN-2920 → MLTX-02-004-EN-2290 |  |
| MLTX-02-004-EN-3230 | Shop DWG Approval for Power Single Line Diagram | 2026-07-30 A → 2026-05-23 A (-68d) | 2026-07-30 A → 2026-05-23 A (-68d) | 21d → 1d | MLTX-02-004-EN-2120, MLTX-02-004-EN-2950, MLTX-02-004-EN-3880, MLTX-02-004-EN-3920 → MLTX-02-004-EN-2120 |  |
| MLTX-02-004-EN-3240 | Shop DWG Approval for Panel Board Schedules | 2026-07-22 A → 2026-05-23 A (-60d) | 2026-07-22 A → 2026-05-23 A (-60d) | 30d → 1d | MLTX-02-004-EN-2130, MLTX-02-004-EN-2900 → MLTX-02-004-EN-2130 |  |
| MLTX-02-004-EN-3270 | Shop DWG Approval for Cable Tray Installation Details | 2026-07-30 A → 2026-05-23 A (-68d) | 2026-07-30 A → 2026-05-23 A (-68d) | 30d → 1d | MLTX-02-004-EN-2160, MLTX-02-004-EN-2130, MLTX-02-004-EN-3370 → MLTX-02-004-EN-2160 |  |
| MLTX-02-004-EN-3280 | Shop DWG Approval for Manhole & Ductbank Details | 2026-07-30 A → 2026-05-23 A (-68d) | 2026-07-30 A → 2026-05-23 A (-68d) | 30d → 1d | MLTX-02-004-EN-2170, MLTX-02-004-EN-3370 → MLTX-02-004-EN-2170 |  |
| MLTX-02-004-EN-3290 | Shop DWG Approval for Grounding Details | 2026-03-24 A → 2026-05-23 A (+60d) | 2026-04-04 A → 2026-05-23 A (+49d) | 30d → 1d | MLTX-02-004-EN-2180, MLTX-02-004-EN-3270 → MLTX-02-004-EN-2180 |  |
| MLTX-02-004-EN-3380 | Shop DWG Approval for Grounding Layout | 2026-03-24 A → 2026-05-23 A (+60d) | 2026-04-04 A → 2026-05-23 A (+49d) | 30d → 1d | MLTX-02-004-EN-2270, MLTX-02-004-EN-3270 → MLTX-02-004-EN-2270 |  |
| MLTX-02-004-EN-3350 | Shop DWG Approval for CCTV Details | 2026-07-30 A → 2026-08-12 A (+13d) | 2026-07-30 A → 2026-08-12 A (+13d) | 30d → 6d | MLTX-02-004-EN-2240, MLTX-02-004-EN-3280, MLTX-02-004-EN-3270, MLTX-02-004-EN-3240 → MLTX-02-004-EN-3380 |  |
| MLTX-02-004-EN-3360 | Shop DWG Approval for CCTV Layout | 2026-07-30 A → 2026-08-12 A (+13d) | 2026-07-30 A → 2026-08-12 A (+13d) | 30d → 6d | MLTX-02-004-EN-2250, MLTX-02-004-EN-3270 → MLTX-02-004-EN-3380 |  |
| MLTX-02-004-EN-3390 | Shop DWG Approval for CCTV Riser Diagram | 2026-07-30 A → 2026-08-12 A (+13d) | 2026-07-30 A → 2026-08-12 A (+13d) | 30d → 6d | MLTX-02-004-EN-3270, MLTX-02-004-EN-2280, MLTX-02-004-EN-3620 → MLTX-02-004-EN-3380 |  |
| ELE | **SHOP DRAWINGS APPROVAL FOR PLAYGROUND WORKS** | 2026-03-15 → 2026-04-15 (+31d) | 2027-01-20 → 2026-08-26 (-147d) |  |  |  |
| 3 | **ARCHITECTURE WORKS** | 2026-03-15 → 2026-04-19 (+35d) | 2026-05-24 → 2026-06-13 (+20d) |  |  |  |
| MLTX-02-004-EN-3430 | Shop DWG Approval for Playground Plan/Layout | 2026-03-15 A → 2026-04-19 A (+35d) | 2026-03-29 A → 2026-04-24 A (+26d) | 15d → 5d | MLTX-02-004-EN-2320, MLTX-02-004-EN-3980, MLTX-02-004-EN-3080, MLTX-02-004-EN-3070 → MLTX-02-004-EN-2320 |  |
| MLTX-02-004-EN-3450 | Shop DWG Approval for Sections | 2026-03-15 A → 2026-04-19 A (+35d) | 2026-03-29 A → 2026-04-24 A (+26d) | 20d → 5d |  |  |
| MLTX-02-004-EN-3440 | Shop DWG Approval for Furniture & Marking | 2026-03-15 A → 2026-06-13 A (+90d) | 2026-05-14 A → 2026-06-13 A (+30d) | 30d → 1d | MLTX-02-004-EN-2330, MLTX-02-004-EN-2930 → MLTX-02-004-EN-2330 |  |
| MLTX-02-004-EN-3460 | Shop DWG Approval for Interlock Pattern Plan | 2026-03-15 A → 2026-06-13 A (+90d) | 2026-03-29 A → 2026-06-13 A (+76d) | 30d → 1d | MLTX-02-004-EN-2350, MLTX-02-004-EN-3550 → MLTX-02-004-EN-2350 |  |
| MLTX-02-004-EN-3470 | Shop DWG Approval for Doors/Windows Schedule | 2026-03-15 A → 2026-06-13 A (+90d) | 2026-05-24 A → 2026-06-13 A (+20d) | 20d → 1d | MLTX-02-004-EN-2350 → MLTX-02-004-EN-2360 |  |
| MLTX-02-004-EN-3480 | Shop DWG Approval for Dome Internal Layout | 2026-03-15 A → 2026-06-13 A (+90d) | 2026-05-24 A → 2026-06-13 A (+20d) | 30d → 1d | MLTX-02-004-EN-2370, MLTX-02-004-EN-3430 → MLTX-02-004-EN-3450, MLTX-02-004-EN-3440, MLTX-02-004-EN-2370 |  |
| 4 | **STRUCTURE WORKS** | 2026-03-24 → 2026-06-24 (+92d) | 2026-07-16 → 2026-06-24 (-22d) |  |  |  |
| MLTX-02-004-EN-3500 | Shop DWG Approval for Air Dome System | 2026-03-24 A → 2026-06-24 A (+92d) | 2026-05-16 A → 2026-06-24 A (+39d) | 21d → 1d |  |  |
| MLTX-02-004-EN-3510 | Shop DWG Approval for Foundation of Air Dome | 2026-07-16 A → 2026-06-24 A (-22d) | 2026-07-16 A → 2026-06-24 A (-22d) | 21d → 1d | MLTX-02-004-EN-2400, MLTX-02-004-EN-3480 → MLTX-02-004-EN-2400 |  |
| MLTX-02-004-EN-3520 | Shop DWG Approval for Foundation of Air Dome | 2026-07-16 A → 2026-06-24 A (-22d) | 2026-07-16 A → 2026-06-24 A (-22d) | 21d → 1d | MLTX-02-004-EN-3510 SS, MLTX-02-004-EN-3480 → MLTX-02-004-EN-3510 SS |  |
| MLTX-02-004-EN-3530 | Shop DWG Approval for Anchor Bolt Layout of Air Dome | 2026-07-16 A → 2026-06-24 A (-22d) | 2026-07-16 A → 2026-06-24 A (-22d) | 21d → 1d | MLTX-02-004-EN-2420, MLTX-02-004-EN-3480 → MLTX-02-004-EN-3470, MLTX-02-004-EN-2420 |  |
| 5 | **AIR DOME SYSTEM** | 2026-03-24 → 2026-06-13 (+81d) | 2026-05-25 → 2026-06-13 (+19d) |  |  |  |
| MLTX-02-004-EN-3550 | Shop DWG Approval for Air Dome Structural Layout | 2026-03-24 A → 2026-06-13 A (+81d) | 2026-05-16 A → 2026-06-13 A (+28d) | 21d → 1d |  |  |
| MLTX-02-004-EN-3560 | Shop DWG Approval for Membrane Panel Layout | 2026-03-24 A → 2026-06-13 A (+81d) | 2026-05-25 A → 2026-06-13 A (+19d) | 21d → 1d |  |  |
| MLTX-02-004-EN-3570 | Shop DWG Approval for Cable Tension Layout | 2026-03-24 A → 2026-06-13 A (+81d) | 2026-05-25 A → 2026-06-13 A (+19d) | 21d → 1d |  |  |
| MLTX-02-004-EN-3580 | Shop DWG Approval for Airlock Door Details | 2026-03-24 A → 2026-06-13 A (+81d) | 2026-05-25 A → 2026-06-13 A (+19d) | 21d → 1d |  |  |
| MLTX-02-004-EN-3590 | Shop DWG Approval for Emergency Exit Details | 2026-03-24 A → 2026-06-13 A (+81d) | 2026-05-25 A → 2026-06-13 A (+19d) | 21d → 1d |  |  |
| 6 | **SPORTS EQUIPMENT** | 2026-07-20 → 2026-06-13 (-37d) | 2026-10-24 → 2026-06-13 (-133d) |  |  |  |
| MLTX-02-004-EN-3610 | Shop DWG Approval for Football Turf Installation | 2026-10-24 A → 2026-06-13 A (-133d) | 2026-10-24 A → 2026-06-13 A (-133d) | 21d → 1d | MLTX-02-004-EN-2500, MLTX-02-004-EN-3110 → MLTX-02-004-EN-2500 |  |

| ID | Task | Start | Finish | Duration | Complete | Total float | Predecessors | Other |
| --- | --- | --- | --- | --- | --- | --- | --- | --- |
| MLTX-02-004-EN-3620 | Shop DWG Approval for Basketball Court Marking | 2026-08-25 A → 2026-06-13 A (-73d) | 2026-08-25 A → 2026-06-13 A (-73d) | 30d → 1d |  |  |  |  |
| MLTX-02-004-EN-3630 | Shop DWG Approval for Padel Court Structure | 2026-07-20 A → 2026-06-13 A (-37d) | 2026-07-20 A → 2026-06-13 A (-37d) | 30d → 1d |  |  |  |  |
| 1 | **MECHANCAL WORKS** | 2026-10-24 → 2026-05-07 (-170d) | 2026-10-24 → 2026-05-07 (-170d) |  |  |  |  |  |
| MLTX-02-004-EN-3650 | Shop DWG Approval for HVAC Plan | 2026-10-24 A → 2026-05-07 A (-170d) | 2026-10-24 A → 2026-05-07 A (-170d) | 23d → 1d |  |  |  |  |
| MLTX-02-004-EN-3660 | Shop DWG Approval for Exhaust Air Plan | 2026-10-24 A → 2026-05-07 A (-170d) | 2026-10-24 A → 2026-05-07 A (-170d) | 23d → 1d |  |  | MLTX-02-004-EN-2550 → MLTX-02-004-EN-3650, MLTX-02-004-EN-2550 |  |
| 2 | **ELECTRICAL WORKS** | 2026-08-25 → 2026-04-15 (-132d) | 2027-01-20 → 2026-08-26 (-147d) |  |  |  |  |  |
| MLTX-02-004-EN-3680 | Shop DWG Approval for Lighting Layout | 2026-10-24 A → 2026-04-15 A (-192d) | 2026-10-24 A → 2026-04-26 A (-181d) | 25d → 10d |  |  |  |  |
| MLTX-02-004-EN-3690 | Shop DWG Approval for Power Layout | 2026-12-22 → 2026-04-15 A (-251d) | 2027-01-20 → 2026-04-26 A (-269d) | 25d → 10d | 0% → 100% | -42.1d → none | MLTX-02-004-EN-2580 → MLTX-02-004-EN-3660, MLTX-02-004-EN-2580 |  |
| MLTX-02-004-EN-3700 | Shop DWG Approval for Power Installation Details | 2026-11-23 → 2026-04-15 A (-222d) | 2026-12-22 → 2026-04-26 A (-240d) | 25d → 10d | 0% → 100% | -17.1d → none | MLTX-02-004-EN-2590, MLTX-02-004-EN-2570 → MLTX-02-004-EN-3690, MLTX-02-004-EN-2590 |  |
| MLTX-02-004-EN-3730 | Shop DWG Approval for Power Single Line Diagram | 2026-10-24 A → 2026-07-11 A (-105d) | 2026-10-24 A → 2026-07-11 A (-105d) | 25d → 6d |  |  | MLTX-02-004-EN-3230, MLTX-02-004-EN-2620, MLTX-02-004-EN-2570 → MLTX-02-004-EN-2620 |  |
| MLTX-02-004-EN-3740 | Shop DWG Approval for Panel Board Schedules | 2026-10-24 A → 2026-07-11 A (-105d) | 2026-10-24 A → 2026-07-11 A (-105d) | 25d → 6d |  |  | MLTX-02-004-EN-2630, MLTX-02-004-EN-2570 → MLTX-02-004-EN-2630 |  |
| MLTX-02-004-EN-3760 | Shop DWG Approval for CCTV Details | 2026-08-25 A → 2026-08-26 A (+1d) | 2026-08-25 A → 2026-08-26 A (+1d) | 21d → 6d |  |  | MLTX-02-004-EN-2650, MLTX-02-004-EN-3120 → MLTX-02-004-EN-3700 |  |
| MLTX-02-004-EN-3770 | Shop DWG Approval for CCTV Layout | 2026-08-25 A → 2026-08-26 A (+1d) | 2026-08-25 A → 2026-08-26 A (+1d) | 21d → 6d |  |  | MLTX-02-004-EN-2660, MLTX-02-004-EN-3120 → MLTX-02-004-EN-3530 |  |
| MLTX-02-004-EN-3780 | Shop DWG Approval for CCTV Riser Diagram | 2026-08-25 A → 2026-08-26 A (+1d) | 2026-08-25 A → 2026-08-26 A (+1d) | 21d → 6d |  |  | MLTX-02-004-EN-2670, MLTX-02-004-EN-3120 → MLTX-02-004-EN-3630 |  |
| EAR | **SHOP DRAWINGS APPROVAL FOR LANDSCAPE WORKS** | 2026-03-15 → 2026-04-11 (+27d) | 2026-07-30 → 2026-06-24 (-36d) |  |  |  |  |  |
| 3 | **ARCHITECTURE WORKS** | 2026-03-15 → 2026-04-19 (+35d) | 2026-05-19 → 2026-05-14 (-5d) |  |  |  |  |  |
| MLTX-02-004-EN-3810 | Shop DWG Approval for Landscape Layout | 2026-03-15 A → 2026-04-19 A (+35d) | 2026-03-29 A → 2026-04-24 A (+26d) | 21d → 5d |  |  | MLTX-02-004-EN-2700 → MLTX-02-004-EN-3430, MLTX-02-004-EN-2700 |  |
| MLTX-02-004-EN-3820 | Shop DWG Approval for Hardscape Plan | 2026-03-15 A → 2026-05-13 A (+59d) | 2026-03-29 A → 2026-05-14 A (+46d) | 21d → 2d |  |  |  |  |
| MLTX-02-004-EN-3830 | Shop DWG Approval for Planting Plan | 2026-03-24 A → 2026-05-13 A (+50d) | 2026-05-19 A → 2026-05-14 A (-5d) | 15d → 2d |  |  |  |  |
| MLTX-02-004-EN-3840 | Shop DWG Approval for Landscape Details | 2026-03-15 A → 2026-05-13 A (+59d) | 2026-03-29 A → 2026-05-14 A (+46d) | 21d → 2d |  |  |  |  |
| 1 | **MECHANCAL WORKS** | 2026-07-08 → 2026-06-24 (-14d) | 2026-07-08 → 2026-06-24 (-14d) |  |  |  |  |  |
| MLTX-02-004-EN-3880 | Shop DWG Approval for Irrigation Details | 2026-07-08 A → 2026-06-24 A (-14d) | 2026-07-08 A → 2026-06-24 A (-14d) | 30d → 1d |  |  | MLTX-02-004-EN-2770, MLTX-02-004-EN-2930 → MLTX-02-004-EN-2770 |  |
| MLTX-02-004-EN-3920 | Shop DWG Approval for Irrigation Layout | 2026-07-08 A → 2026-06-24 A (-14d) | 2026-07-08 A → 2026-06-24 A (-14d) | 30d → 1d |  |  | MLTX-02-004-EN-2810, MLTX-02-004-EN-2930 → MLTX-02-004-EN-2810 |  |
| 2 | **ELECTRICAL WORKS** | 2026-07-30 → 2026-04-11 (-110d) | 2026-07-30 → 2026-05-23 (-68d) |  |  |  |  |  |
| MLTX-02-004-EN-3950 | Shop DWG Approval for Lighting Details | 2026-07-30 A → 2026-04-11 A (-110d) | 2026-07-30 A → 2026-04-21 A (-100d) | 30d → 10d |  |  | MLTX-02-004-EN-2840, MLTX-02-004-EN-3510 → MLTX-02-004-EN-2840 |  |
| MLTX-02-004-EN-3970 | Shop DWG Approval for Lighting General Arrangement | 2026-07-30 A → 2026-04-11 A (-110d) | 2026-07-30 A → 2026-04-21 A (-100d) | 30d → 10d |  |  | MLTX-02-004-EN-2860, MLTX-02-004-EN-3510 → MLTX-02-004-EN-2860 |  |
| MLTX-02-004-EN-3980 | Shop DWG Approval for Lighting Network Layout | 2026-07-30 A → 2026-04-11 A (-110d) | 2026-07-30 A → 2026-04-21 A (-100d) | 30d → 10d |  |  |  |  |
| MLTX-02-004-EN-3960 | Shop DWG Approval for Lighting Single Line Diagram | 2026-07-30 A → 2026-05-23 A (-68d) | 2026-07-30 A → 2026-05-23 A (-68d) | 30d → 1d |  |  | MLTX-02-004-EN-2850, MLTX-02-004-EN-3510 → MLTX-02-004-EN-2850 |  |
| MTS | **METHOD STATEMENTS** | 2026-03-08 → 2026-03-31 (+23d) | 2026-09-12 → 2026-12-05 (+84d) |  |  |  |  |  |
| 1 | **METHOD STATEMENT SUBMITTAL** | 2026-03-08 → 2026-03-31 (+23d) | 2026-06-04 → 2026-11-21 (+170d) |  |  |  |  |  |
| 4 | **CIVIL WORKS** | 2026-03-09 → 2026-03-31 (+22d) | 2026-03-14 → 2026-05-21 (+68d) |  |  |  |  |  |
| MLTX-02-004-EN-4020 | Preparation & Submission of Method Statement for Earthwork | 2026-03-09 A → 2026-03-31 A (+22d) | 2026-03-14 A → 2026-04-19 A (+36d) | 15d → 17d |  |  |  |  |
| MLTX-02-004-EN-4040 | Preparation & Submission of Method Statement for Waterproofing | 2026-03-09 A → 2026-03-31 A (+22d) | 2026-03-14 A → 2026-04-25 A (+42d) | 21d → 22d |  |  |  |  |
| MLTX-02-004-EN-4030 | Preparation & Submission of Method Statement for Concrete Works | 2026-03-09 A → 2026-05-21 A (+73d) | 2026-03-14 A → 2026-05-21 A (+68d) | 21d → 1d |  |  | MLTX-02-004-MB-1340, MLTX-02-004-EN-4020 → MLTX-02-004-MB-1340 |  |
| 1 | **ARCHITECTURE WORKS** | 2026-03-08 → 2026-05-31 (+84d) | 2026-06-02 → 2026-11-21 (+172d) |  |  |  |  |  |
| MLTX-02-004-EN-4110 | Preparation & Submission of Method Statement for Interlock/Curbstone Works | 2026-03-08 A → 2026-05-31 A (+84d) | 2026-05-24 A → 2026-05-31 A (+7d) | 21d → 1d |  |  |  |  |
| MLTX-02-004-EN-4120 | Preparation & Submission of Method Statement for Parking Works | 2026-03-08 A → 2026-05-31 A (+84d) | 2026-05-24 A → 2026-05-31 A (+7d) | 30d → 1d |  |  | MLTX-02-004-MB-1340, MLTX-02-004-EN-3260 → MLTX-02-004-MB-1340 |  |
| MLTX-02-004-EN-4080 | Preparation & Submission of Method Statement for Tilling Works | 2026-03-08 A → 2026-06-06 A (+90d) | 2026-05-17 A → 2026-06-06 A (+20d) | 30d → 1d |  |  | MLTX-02-004-MB-1340, MLTX-02-004-EN-4150 → MLTX-02-004-MB-1340 |  |
| MLTX-02-004-EN-4100 | Preparation & Submission of Method Statement for Doors/Windows Works | 2026-03-08 A → 2026-06-06 A (+90d) | 2026-06-02 A → 2026-06-06 A (+4d) | 30d → 1d |  |  | MLTX-02-004-MB-1340, MLTX-02-004-EN-4330 → MLTX-02-004-MB-1340 |  |
| MLTX-02-004-EN-4180 | Preparation & Submission of Method Statement for Gypsum Board Works | 2026-03-08 A → 2026-06-13 A (+97d) | 2026-06-02 A → 2026-06-13 A (+11d) | 21d → 1d |  |  | MLTX-02-004-MB-1340, MLTX-02-004-EN-4150 → MLTX-02-004-MB-1340 |  |
| MLTX-02-004-EN-4060 | Preparation & Submission of Method Statement for Plastering Works | 2026-03-09 A → 2026-06-18 A (+101d) | 2026-03-14 A → 2026-06-18 A (+96d) | 15d → 1d |  |  | MLTX-02-004-MB-1340, MLTX-02-004-EN-2900 → MLTX-02-004-MB-1340 |  |
| MLTX-02-004-EN-4070 | Preparation & Submission of Method Statement for Masonary Works | 2026-03-08 A → 2026-06-18 A (+102d) | 2026-05-11 A → 2026-06-18 A (+38d) | 21d → 1d |  |  |  |  |
| MLTX-02-004-EN-4090 | Preparation & Submission of Method Statement for Seats/Benches Works | 2026-03-08 A → 2026-06-18 A (+102d) | 2026-06-02 A → 2026-06-18 A (+16d) | 30d → 1d |  |  | MLTX-02-004-MB-1340, MLTX-02-004-EN-4060 → MLTX-02-004-MB-1340 |  |
| MLTX-02-004-EN-4130 | Preparation & Submission of Method Statement for Soft Scape Works | 2026-03-08 A → 2026-07-11 A (+125d) | 2026-06-02 A → 2026-07-11 A (+39d) | 21d → 6d |  |  | MLTX-02-004-MB-1340, MLTX-02-004-EN-4060 → MLTX-02-004-MB-1340 |  |
| MLTX-02-004-EN-4160 | Preparation & Submission of Method Statement for Metal Works | 2026-03-08 A → 2026-07-11 A (+125d) | 2026-06-02 A → 2026-07-11 A (+39d) | 21d → 6d |  |  |  |  |
| MLTX-02-004-EN-4170 | Preparation & Submission of Method Statement for Partitions Works | 2026-03-08 A → 2026-07-15 A (+129d) | 2026-06-02 A → 2026-07-15 A (+43d) | 21d → 6d |  |  | MLTX-02-004-MB-1340, MLTX-02-004-EN-4070 → MLTX-02-004-MB-1340 |  |
| MLTX-02-004-EN-4150 | Preparation & Submission of Method Statement for Air Dome Works | 2026-03-08 A → 2026-08-17 A (+162d) | 2026-06-02 A → 2026-08-17 A (+76d) | 30d → 6d |  |  | MLTX-02-004-MB-1340, MLTX-02-004-EN-4260, MLTX-02-004-EN-4650 → MLTX-02-004-MB-1340 |  |
| MLTX-02-004-EN-4140 | Preparation & Submission of Method Statement for Fence Works | 2026-03-08 A → 2026-11-19 A (+256d) | 2026-06-02 A → 2026-11-21 A (+172d) | 30d → 6d |  |  |  |  |
| 2 | **MECHANICAL WORKS** | 2026-03-14 → 2026-04-07 (+24d) |  |  |  |  |  |  |
| MLTX-02-004-EN-4220 | Preparation & Submission of Method Statement for Fire Fighting System | 2026-03-14 A → 2026-04-07 A (+24d) | 2026-06-04 A → 2026-04-14 A (-51d) | 21d → 7d |  |  | MLTX-02-004-EN-4040, MLTX-02-004-EN-4120, MLTX-02-004-EN-4570 → MLTX-02-004-EN-4040 | resources QA/QC Engineer [16.1 h] → QA/QC Engineer [26.1 h] |
| MLTX-02-004-EN-4200 | Preparation & Submission of Method Statement for Sewage/Drainage System | 2026-03-14 A → 2026-05-31 A (+78d) | 2026-05-04 A → 2026-05-31 A (+27d) | 21d → 1d |  |  | MLTX-02-004-EN-4020, MLTX-02-004-EN-4060 → MLTX-02-004-EN-4020 | resources QA/QC Engineer [16.1 h] → QA/QC Engineer [26.1 h] |
| MLTX-02-004-EN-4210 | Preparation & Submission of Method Statement for Water Supply System | 2026-03-14 A → 2026-06-04 A (+82d) | 2026-05-04 A → 2026-06-04 A (+31d) | 21d → 1d |  |  | MLTX-02-004-EN-4030, MLTX-02-004-EN-4060 → MLTX-02-004-EN-4030 | resources QA/QC Engineer [16.1 h] → QA/QC Engineer [26.1 h] |
| MLTX-02-004-EN-4230 | Preparation & Submission of Method Statement for Irrigation System | 2026-03-14 A → 2026-06-04 A (+82d) |  | 15d → 1d |  |  | MLTX-02-004-EN-4060, MLTX-02-004-EN-4270 → MLTX-02-004-EN-4060 | resources QA/QC Engineer [16.1 h] → QA/QC Engineer [26.1 h] |
| MLTX-02-004-EN-4240 | Preparation & Submission of Method Statement for HVAC System | 2026-03-14 A → 2026-06-04 A (+82d) |  | 21d → 1d |  |  | MLTX-02-004-EN-4070, MLTX-02-004-EN-4200 → MLTX-02-004-EN-4070 | resources QA/QC Engineer [16.1 h] → QA/QC Engineer [26.1 h] |
| 5 | **ELECTRICAL WORKS** | 2026-03-14 → 2026-06-18 (+96d) | 2026-05-11 → 2026-08-11 (+92d) |  |  |  |  |  |
| MLTX-02-004-EN-4280 | Preparation & Submission of Method Statement for Lighting Works | 2026-03-14 A → 2026-06-18 A (+96d) | 2026-05-11 A → 2026-06-18 A (+38d) | 21d → 1d |  |  | MLTX-02-004-EN-4160 → MLTX-02-004-MS-1010 SS | resources QA/QC Engineer [16.1 h] → QA/QC Engineer [26.1 h] |
| MLTX-02-004-EN-4290 | Preparation & Submission of Method Statement for Earthing/Lightning Works | 2026-03-14 A → 2026-06-18 A (+96d) | 2026-05-11 A → 2026-06-18 A (+38d) | 21d → 1d |  |  | MLTX-02-004-EN-4170, MLTX-02-004-EN-4310 → MLTX-02-004-MS-1010 SS | resources QA/QC Engineer [16.1 h] → QA/QC Engineer [36.1 h] |
| MLTX-02-004-EN-4310 | Preparation & Submission of Method Statement for Electrical Conduits/Pulling Works | 2026-03-14 A → 2026-06-18 A (+96d) | 2026-05-11 A → 2026-06-18 A (+38d) | 21d → 1d |  |  |  | resources QA/QC Engineer [16.1 h] → QA/QC Engineer [26.1 h] |
| MLTX-02-004-EN-4330 | Preparation & Submission of Method Statement for Lighting Poles Installation | 2026-03-14 A → 2026-06-18 A (+96d) | 2026-05-11 A → 2026-06-18 A (+38d) | 21d → 1d |  |  | MLTX-02-004-EN-4130, MLTX-02-004-EN-4270 → MLTX-02-004-MS-1010 SS | resources QA/QC Engineer [16.1 h] → QA/QC Engineer [26.1 h] |
| MLTX-02-004-EN-4260 | Preparation & Submission of Method Statement for Telecommunication & Data System | 2026-03-14 A → 2026-07-15 A (+123d) | 2026-05-11 A → 2026-07-15 A (+65d) | 30d → 7d |  |  | MLTX-02-004-EN-4140 → MLTX-02-004-EN-4240 | resources QA/QC Engineer [16.1 h] → QA/QC Engineer [26.1 h] |
| MLTX-02-004-EN-4270 | Preparation & Submission of Method Statement for CCTV System | 2026-03-14 A → 2026-07-22 A (+130d) | 2026-05-11 A → 2026-07-22 A (+72d) | 30d → 7d |  |  | MLTX-02-004-EN-4150, MLTX-02-004-EN-4660 → MLTX-02-004-EN-3390, MLTX-02-004-EN-3350, MLTX-02-004-EN-4150, MLTX-02-004-EN-4300, MLTX-02-004-EN-3360, MLTX-02-004-EN-3760, MLTX-02-004-EN-3770, MLTX-02-004-EN-3780, MLTX-02-004-EN-4150 FF, MLTX-02-004-EN-3730, MLTX-02-004-EN-3740, MLTX-02-004-EN-4130, MLTX-02-004-EN-4160 | resources QA/QC Engineer [16.1 h] → QA/QC Engineer [26.1 h] |
| MLTX-02-004-EN-4300 | Preparation & Submission of Method Statement for Panel Boards Works | 2026-03-14 A → 2026-08-11 A (+150d) | 2026-05-11 A → 2026-08-11 A (+92d) | 21d → 6d |  |  | MLTX-02-004-EN-4180, MLTX-02-004-EN-4060 → MLTX-02-004-EN-4180 | resources QA/QC Engineer [16.1 h] → QA/QC Engineer [31.1 h] |
| 2 | **METHOD STATEMENT APPROVAL** | 2026-03-14 → 2026-04-15 (+32d) | 2026-09-12 → 2026-12-05 (+84d) |  |  |  |  |  |
| 4 | **CIVIL WORKS** | 2026-03-14 → 2026-05-31 (+78d) | 2026-04-30 → 2026-05-31 (+31d) |  |  |  |  |  |
| MLTX-02-004-EN-4360 | Approval of Method Statement for Earthwork | 2026-03-14 A → 2026-05-31 A (+78d) | 2026-04-30 A → 2026-05-31 A (+31d) | 15d → 1d |  |  |  |  |
| MLTX-02-004-EN-4370 | Approval of Method Statement for Concrete Works | 2026-03-14 A → 2026-05-31 A (+78d) | 2026-04-30 A → 2026-05-31 A (+31d) | 30d → 1d |  |  |  |  |
| MLTX-02-004-EN-4380 | Approval of Method Statement for Waterproofing | 2026-03-14 A → 2026-05-31 A (+78d) | 2026-04-30 A → 2026-05-31 A (+31d) | 21d → 1d |  |  |  |  |
| 1 | **ARCHITECTURE WORKS** | 2026-03-14 → 2026-05-31 (+78d) | 2026-09-12 → 2026-12-05 (+84d) |  |  |  |  |  |
| MLTX-02-004-EN-4450 | Approval of Method Statement for Interlock/Curbstone Works | 2026-08-15 A → 2026-05-31 A (-76d) | 2026-08-15 A → 2026-05-31 A (-76d) | 30d → 1d |  |  | MLTX-02-004-EN-4110, MLTX-02-004-EN-4490 → MLTX-02-004-EN-4110 |  |
| MLTX-02-004-EN-4460 | Approval of Method Statement for Parking Works | 2026-08-26 A → 2026-05-31 A (-87d) | 2026-08-26 A → 2026-05-31 A (-87d) | 30d → 1d |  |  | MLTX-02-004-EN-4120, MLTX-02-004-EN-3110 → MLTX-02-004-EN-4120 |  |

| ID | Task | Start | Finish | Duration | Complete | Total float | Predecessors |
| --- | --- | --- | --- | --- | --- | --- | --- |
| MLTX-02-004-EN-4420 | Approval of Method Statement for Tilling Works | 2026-03-14 A → 2026-06-06 A (+84d) | 2026-05-21 A → 2026-06-06 A (+16d) | 30d → 1d |  |  | MLTX-02-004-EN-4080, MLTX-02-004-EN-4490 → MLTX-02-004-EN-4080 |
| MLTX-02-004-EN-4440 | Approval of Method Statement for Doors/Windows Works | 2026-09-12 A → 2026-06-06 A (-98d) | 2026-09-12 A → 2026-06-06 A (-98d) | 30d → 1d |  |  | MLTX-02-004-EN-4100, MLTX-02-004-EN-4470, MLTX-02-004-EN-4460 → MLTX-02-004-EN-4100 |
| MLTX-02-004-EN-4400 | Approval of Method Statement for Plastering Works | 2026-03-14 A → 2026-06-16 A (+94d) | 2026-04-30 A → 2026-06-16 A (+47d) | 30d → 1d |  |  | MLTX-02-004-EN-4060, MLTX-02-004-EN-4490 → MLTX-02-004-EN-4060 |
| MLTX-02-004-EN-4410 | Approval of Method Statement for Masonary Works | 2026-03-14 A → 2026-06-16 A (+94d) | 2026-05-21 A → 2026-06-16 A (+26d) | 30d → 1d |  |  | MLTX-02-004-EN-4070, MLTX-02-004-EN-4380 → MLTX-02-004-EN-4070 |
| MLTX-02-004-EN-4520 | Approval of Method Statement for Gypsum Board Works | 2026-08-20 A → 2026-06-18 A (-63d) | 2026-08-20 A → 2026-06-18 A (-63d) | 30d → 1d |  |  | MLTX-02-004-EN-4180, MLTX-02-004-EN-4400 → MLTX-02-004-EN-4180 |
| MLTX-02-004-EN-4430 | Approval of Method Statement for Seats/Benches Works | 2026-09-12 A → 2026-07-11 A (-63d) | 2026-09-12 A → 2026-07-11 A (-63d) | 30d → 6d |  |  | MLTX-02-004-EN-4090, MLTX-02-004-EN-4400 → MLTX-02-004-EN-4090 |
| MLTX-02-004-EN-4470 | Approval of Method Statement for Soft Scape Works | 2026-09-12 A → 2026-07-11 A (-63d) | 2026-09-12 A → 2026-07-11 A (-63d) | 30d → 10d |  |  | MLTX-02-004-EN-4130, MLTX-02-004-EN-4400 → MLTX-02-004-EN-4130 |
| MLTX-02-004-EN-4490 | Approval of Method Statement for Air Dome Works | 2026-07-11 A → 2026-08-27 A (+47d) | 2026-07-22 A → 2026-08-27 A (+36d) | 30d → 10d |  |  | MLTX-02-004-EN-4150, MLTX-02-004-EN-4630 → MLTX-02-004-EN-4150 |
| MLTX-02-004-EN-4510 | Approval of Method Statement for Partitions Works | 2026-09-12 A → 2026-08-27 A (-16d) | 2026-09-12 A → 2026-08-27 A (-16d) | 30d → 10d |  |  | MLTX-02-004-EN-4170, MLTX-02-004-EN-4400 → MLTX-02-004-EN-4170, MLTX-02-004-EN-4430 |
| MLTX-02-004-EN-4480 | Approval of Method Statement for Fence Works | 2026-08-10 A → 2026-11-24 (+106d) | 2026-08-10 A → 2026-12-05 (+117d) | 30d → 10d | 100% → 0% | none → 23d | MLTX-02-004-EN-4140, MLTX-02-004-EN-4430, MLTX-02-004-EN-4520, MLTX-02-004-EN-4100, MLTX-02-004-EN-2670 → MLTX-02-004-EN-4140 |
| 2 | **MECHANICAL WORKS** | 2026-06-02 → 2026-04-15 (-48d) | 2026-08-26 → 2026-06-11 (-76d) |  |  |  |  |
| MLTX-02-004-EN-4560 | Approval of Method Statement for Fire Fighting System | 2026-08-26 A → 2026-04-15 A (-133d) | 2026-08-26 A → 2026-04-26 A (-122d) | 21d → 10d |  |  | MLTX-02-004-EN-4220, MLTX-02-004-EN-2660 → MLTX-02-004-EN-4220 |
| MLTX-02-004-EN-4540 | Approval of Method Statement for Sewage/Drainage System | 2026-06-09 A → 2026-06-11 A (+2d) | 2026-06-09 A → 2026-06-11 A (+2d) | 21d → 1d |  |  | MLTX-02-004-EN-4200, MLTX-02-004-EN-4490 → MLTX-02-004-EN-4200 |
| MLTX-02-004-EN-4550 | Approval of Method Statement for Water Supply System | 2026-06-02 A → 2026-06-11 A (+9d) | 2026-06-02 A → 2026-06-11 A (+9d) | 21d → 1d |  |  | MLTX-02-004-EN-4210, MLTX-02-004-EN-4230 → MLTX-02-004-EN-4210 |
| MLTX-02-004-EN-4570 | Approval of Method Statement for Irrigation System | 2026-06-28 A → 2026-06-11 A (-17d) | 2026-06-28 A → 2026-06-11 A (-17d) | 15d → 1d |  |  | MLTX-02-004-EN-4230, MLTX-02-004-EN-4400 → MLTX-02-004-EN-4230 |
| MLTX-02-004-EN-4580 | Approval of Method Statement for HVAC System | 2026-08-25 A → 2026-06-11 A (-75d) | 2026-08-25 A → 2026-06-11 A (-75d) | 21d → 1d |  |  | MLTX-02-004-EN-4240, MLTX-02-004-EN-4540 → MLTX-02-004-EN-4240 |
| 5 | **ELECTRICAL WORKS** | 2026-07-12 → 2026-06-16 (-26d) | 2026-08-26 → 2026-08-12 (-14d) |  |  |  |  |
| MLTX-02-004-EN-4600 | Approval of Method Statement for Electrical Conduits/Pulling Works | 2026-07-12 A → 2026-06-16 A (-26d) | 2026-07-16 A → 2026-06-16 A (-30d) | 21d → 1d |  |  | MLTX-02-004-EN-4310, MLTX-02-004-EN-4490 → MLTX-02-004-EN-4310 |
| MLTX-02-004-EN-4620 | Approval of Method Statement for Lighting Poles Installation | 2026-08-26 A → 2026-07-11 A (-46d) | 2026-08-26 A → 2026-07-11 A (-46d) | 21d → 10d |  |  | MLTX-02-004-EN-4330, MLTX-02-004-EN-4640, MLTX-02-004-EN-4600 → MLTX-02-004-EN-4330 |
| MLTX-02-004-EN-4650 | Approval of Method Statement for Lighting Works | 2026-08-10 A → 2026-07-11 A (-30d) | 2026-08-10 A → 2026-07-11 A (-30d) | 21d → 10d |  |  | MLTX-02-004-EN-4280 → MLTX-02-004-EN-3680, MLTX-02-004-EN-4280 |
| MLTX-02-004-EN-4660 | Approval of Method Statement for Earthing/Lightning Works | 2026-08-10 A → 2026-07-11 A (-30d) | 2026-08-10 A → 2026-07-11 A (-30d) | 21d → 10d |  |  | MLTX-02-004-EN-4650, MLTX-02-004-EN-4290 → MLTX-02-004-EN-4290 |
| MLTX-02-004-EN-4630 | Approval of Method Statement for Telecommunication & Data System | 2026-08-10 A → 2026-07-15 A (-26d) | 2026-08-10 A → 2026-07-15 A (-26d) | 30d → 10d |  |  | MLTX-02-004-EN-4260 → MLTX-02-004-EN-4490, MLTX-02-004-EN-4660, MLTX-02-004-EN-4260, MLTX-02-004-EN-4620 |
| MLTX-02-004-EN-4640 | Approval of Method Statement for CCTV System | 2026-08-10 A → 2026-07-22 A (-19d) | 2026-08-10 A → 2026-07-22 A (-19d) | 30d → 10d |  |  | MLTX-02-004-EN-4270, MLTX-02-004-EN-4490 → MLTX-02-004-EN-4660, MLTX-02-004-EN-4270, MLTX-02-004-EN-4470 |
| MLTX-02-004-EN-4670 | Approval of Method Statement for Panel Boards Works | 2026-07-12 A → 2026-08-12 A (+31d) | 2026-07-22 A → 2026-08-12 A (+21d) | 21d → 10d |  |  | MLTX-02-004-EN-4300, MLTX-02-004-EN-4490 → MLTX-02-004-EN-3740, MLTX-02-004-EN-4300 |
| PREQ | **PRE-QUALIFICATION & MATERIAL** | 2026-03-08 → 2026-03-31 (+23d) | 2026-09-12 → 2026-08-24 (-19d) |  |  |  |  |
| PRE | **PRE-QUALIFICATION** | 2026-03-08 → 2026-03-31 (+23d) | 2026-06-07 → 2026-05-21 (-17d) |  |  |  |  |
| TOI | **TOILET/SERVICE WORKS** | 2026-03-08 → 2026-03-31 (+23d) | 2026-06-07 → 2026-04-23 (-45d) |  |  |  |  |
| 1 | **STEEL REINFORCEMENT** | 2026-03-09 → 2026-03-31 (+22d) | 2026-03-19 → 2026-04-13 (+25d) |  |  |  |  |
| MLTX-02-004-EN-4720 | Pre-Qualification Submittal for Steel Reinforcement | 2026-03-09 A → 2026-03-31 A (+22d) | 2026-03-11 A → 2026-04-12 A (+32d) | 15d → 11d |  |  |  |
| MLTX-02-004-EN-4730 | Pre-Qualification Approval for Steel Reinforcement | 2026-03-12 A → 2026-04-12 A (+31d) | 2026-03-19 A → 2026-04-13 A (+25d) | 15d → 2d |  |  |  |
| 2 | **READY MIX CONCRETE** | 2026-03-09 → 2026-03-31 (+22d) | 2026-03-19 → 2026-04-23 (+35d) |  |  |  |  |
| MLTX-02-004-EN-4750 | Pre-Qualification Submittal for Ready Mixed Concrete | 2026-03-09 A → 2026-03-31 A (+22d) | 2026-03-11 A → 2026-04-12 A (+32d) | 15d → 11d |  |  |  |
| MLTX-02-004-EN-4760 | Pre-Qualification Approval of Ready Mixed Concrete | 2026-03-12 A → 2026-04-12 A (+31d) | 2026-03-19 A → 2026-04-23 A (+35d) | 15d → 11d |  |  |  |
| 3 | **CONCRETE BLOCKS** | 2026-03-09 → 2026-03-31 (+22d) | 2026-03-19 → 2026-04-23 (+35d) |  |  |  |  |
| MLTX-02-004-EN-4780 | Pre-Qualification Submittal for Concrete Blocks | 2026-03-09 A → 2026-03-31 A (+22d) | 2026-03-11 A → 2026-04-12 A (+32d) | 15d → 11d |  |  |  |
| MLTX-02-004-EN-4790 | Pre-Qualification Approval for Concrete Blocks | 2026-03-12 A → 2026-04-07 A (+26d) | 2026-03-19 A → 2026-04-23 A (+35d) |  |  |  |  |
| 4 | **WATER PROOFING** | 2026-03-09 → 2026-03-31 (+22d) | 2026-03-19 → 2026-04-13 (+25d) |  |  |  |  |
| MLTX-02-004-EN-4810 | Pre-Qualification Submittal for Water Proofing | 2026-03-09 A → 2026-03-31 A (+22d) | 2026-03-11 A → 2026-04-11 A (+31d) | 15d → 10d |  |  |  |
| MLTX-02-004-EN-4820 | Pre-Qualification Approval for Water Proofing | 2026-03-12 A → 2026-04-11 A (+30d) | 2026-03-19 A → 2026-04-13 A (+25d) | 21d → 3d |  |  | MLTX-02-004-EN-4810, MLTX-02-004-EN-4760 → MLTX-02-004-EN-4810 |
| 6 | **FLOOR/WALL TILES** | 2026-03-08 → 2026-03-31 (+23d) | 2026-05-10 → 2026-04-12 (-28d) |  |  |  |  |
| MLTX-02-004-EN-4840 | Pre-Qualification Submittal for Tilling Materials | 2026-03-08 A → 2026-03-31 A (+23d) | 2026-05-05 A → 2026-04-11 A (-24d) | 15d → 10d |  |  |  |
| MLTX-02-004-EN-4850 | Pre-Qualification Approval for Tailling Material | 2026-03-11 A → 2026-04-11 A (+31d) | 2026-05-10 A → 2026-04-12 A (-28d) | 15d → 2d |  |  | MLTX-02-004-EN-4840, MLTX-02-004-EN-5110 → MLTX-02-004-EN-4840 |
| 7 | **SUSPENDED CEILING** | 2026-03-09 → 2026-03-31 (+22d) | 2026-03-19 → 2026-04-13 (+25d) |  |  |  |  |
| MLTX-02-004-EN-4870 | Pre-Qualification Submittal for Suspend Ceiling | 2026-03-09 A → 2026-03-31 A (+22d) | 2026-03-11 A → 2026-04-12 A (+32d) | 15d → 11d |  |  |  |
| MLTX-02-004-EN-4880 | Pre-Qualification Approval for Suspend Ceiling | 2026-03-12 A → 2026-04-12 A (+31d) | 2026-03-19 A → 2026-04-13 A (+25d) | 15d → 2d |  |  | MLTX-02-004-EN-4870, MLTX-02-004-EN-4910 → MLTX-02-004-EN-4870 |
| 8 | **DOORS/WINDOWS** | 2026-03-09 → 2026-03-31 (+22d) | 2026-03-19 → 2026-04-12 (+24d) |  |  |  |  |
| MLTX-02-004-EN-4900 | Pre-Qualification Submittal for Doors/Windows | 2026-03-09 A → 2026-03-31 A (+22d) | 2026-03-11 A → 2026-04-11 A (+31d) | 15d → 10d |  |  |  |
| MLTX-02-004-EN-4910 | Pre-Qualification Approval for Doors/Windows | 2026-03-12 A → 2026-04-11 A (+30d) | 2026-03-19 A → 2026-04-12 A (+24d) | 15d → 2d |  |  | MLTX-02-004-EN-4900, MLTX-02-004-EN-6070 → MLTX-02-004-EN-4900 |
| 9 | **FURNITURES** | 2026-03-08 → 2026-03-31 (+23d) | 2026-05-10 → 2026-04-12 (-28d) |  |  |  |  |
| MLTX-02-004-EN-4930 | Pre-Qualification Submittal for Furnitures | 2026-03-08 A → 2026-03-31 A (+23d) | 2026-05-06 A → 2026-04-11 A (-25d) | 15d → 10d |  |  |  |
| MLTX-02-004-EN-4940 | Pre-Qualification Approval for Furnitures | 2026-03-11 A → 2026-04-11 A (+31d) | 2026-05-10 A → 2026-04-12 A (-28d) | 15d → 2d |  |  | MLTX-02-004-EN-4930, MLTX-02-004-EN-4760 → MLTX-02-004-EN-4930 |
| 10 | **SANITARY FIXTURES** | 2026-03-08 → 2026-03-31 (+23d) | 2026-05-10 → 2026-04-12 (-28d) |  |  |  |  |
| MLTX-02-004-EN-4960 | Pre-Qualification Submittal for Sanitary Fixtures | 2026-03-08 A → 2026-03-31 A (+23d) | 2026-05-06 A → 2026-04-11 A (-25d) | 15d → 10d |  |  |  |
| MLTX-02-004-EN-4970 | Pre-Qualification Approval for Sanitary Fixtures | 2026-03-11 A → 2026-04-11 A (+31d) | 2026-05-10 A → 2026-04-12 A (-28d) | 15d → 2d |  |  |  |
| 11 | **WATER SUPPLY PIPES** | 2026-03-09 → 2026-03-31 (+22d) | 2026-03-19 → 2026-04-12 (+24d) |  |  |  |  |
| MLTX-02-004-EN-4990 | Pre-Qualification Submittal for Water Supply Pipes | 2026-03-09 A → 2026-03-31 A (+22d) | 2026-03-11 A → 2026-04-11 A (+31d) | 15d → 10d |  |  |  |
| MLTX-02-004-EN-5000 | Pre-Qualification Approval for Water Supply Pipes | 2026-03-12 A → 2026-04-11 A (+30d) | 2026-03-19 A → 2026-04-12 A (+24d) | 15d → 2d |  |  | MLTX-02-004-EN-4990, MLTX-02-004-EN-5110 → MLTX-02-004-EN-4990 |
| 12 | **SEWAGE/DRAINAGE PIPES** | 2026-03-09 → 2026-03-31 (+22d) | 2026-03-19 → 2026-04-12 (+24d) |  |  |  |  |
| MLTX-02-004-EN-5020 | Pre-Qualification Submittal for Sewage/Drainage Pipes | 2026-03-09 A → 2026-03-31 A (+22d) | 2026-03-11 A → 2026-04-11 A (+31d) | 15d → 10d |  |  |  |
| MLTX-02-004-EN-5030 | Pre-Qualification Approval for Sewage/Drainage Pipes | 2026-03-12 A → 2026-04-11 A (+30d) | 2026-03-19 A → 2026-04-12 A (+24d) | 15d → 2d |  |  |  |
| 16 | **PACKAGE AC UNITS** | 2026-03-12 → 2026-04-07 (+26d) | 2026-03-24 → 2026-04-15 (+22d) |  |  |  |  |
| MLTX-02-004-EN-5050 | Pre-Qualification Submittal for Package AC Units | 2026-03-12 A → 2026-04-07 A (+26d) | 2026-03-15 A → 2026-04-13 A (+29d) | 15d → 6d |  |  |  |
| MLTX-02-004-EN-5060 | Pre-Qualification Approval for Package AC Units | 2026-03-16 A → 2026-04-11 A (+26d) | 2026-03-24 A → 2026-04-15 A (+22d) | 15d → 5d |  |  |  |
| 17 | **AIR DIFUSSERS/GRILLS** | 2026-03-12 → 2026-04-07 (+26d) | 2026-05-06 → 2026-04-15 (-21d) |  |  |  |  |
| MLTX-02-004-EN-5080 | Pre-Qualification Submittal for Air Diffusers/Grills | 2026-03-12 A → 2026-04-07 A (+26d) | 2026-05-06 A → 2026-04-13 A (-23d) | 15d → 6d |  |  | MLTX-02-004-EN-4750, MLTX-02-004-EN-5270 → MLTX-02-004-EN-4750 |
| MLTX-02-004-EN-5090 | Pre-Qualification Approval for Air Diffusers/Grills | 2026-03-16 A → 2026-04-11 A (+26d) | 2026-05-06 A → 2026-04-15 A (-21d) | 15d → 5d |  |  | MLTX-02-004-EN-5080, MLTX-02-004-EN-4910 → MLTX-02-004-EN-5080 |
| 18 | **GALVANIZED DUCTS** | 2026-03-11 → 2026-04-07 (+27d) | 2026-04-30 → 2026-04-15 (-15d) |  |  |  |  |
| MLTX-02-004-EN-5110 | Pre-Qualification Submittal for Galvanized Ducts | 2026-03-11 A → 2026-04-07 A (+27d) | 2026-04-25 A → 2026-04-13 A (-12d) | 15d → 6d |  |  | MLTX-02-004-EN-4780, MLTX-02-004-EN-6030 → MLTX-02-004-EN-4780 |
| MLTX-02-004-EN-5120 | Pre-Qualification Approval for Galvanized Ducts | 2026-03-15 A → 2026-04-11 A (+27d) | 2026-04-30 A → 2026-04-15 A (-15d) | 15d → 5d |  |  | MLTX-02-004-EN-5110, MLTX-02-004-EN-6150 → MLTX-02-004-EN-5110 |
| 19 | **EXHAUST FANS** | 2026-03-11 → 2026-04-07 (+27d) | 2026-06-07 → 2026-04-15 (-53d) |  |  |  |  |

| ID | Task | Start | Finish | Duration | Predecessors |
| --- | --- | --- | --- | --- | --- |
| MLTX-02-004-EN-5140 | Pre-Qualification Submittal for Exhaust Fans | 2026-03-11 A → 2026-04-07 A (+27d) | 2026-05-25 A → 2026-04-12 A (-43d) | 15d → 5d |  |
| MLTX-02-004-EN-5150 | Pre-Qualification Approval for Exhaust Fans | 2026-03-15 A → 2026-04-11 A (+27d) | 2026-06-07 A → 2026-04-15 A (-53d) | 15d → 5d |  |
| 13 | **LIGHTING FIXTURES** | 2026-03-11 → 2026-04-07 (+27d) | 2026-06-07 → 2026-04-15 (-53d) |  |  |
| MLTX-02-004-EN-5170 | Pre-Qualification Submittal for Lighting Fixtures | 2026-03-11 A → 2026-04-07 A (+27d) | 2026-05-25 A → 2026-04-09 A (-46d) | 15d → 3d |  |
| MLTX-02-004-EN-5180 | Pre-Qualification Approval for Lighting Fixtures | 2026-03-15 A → 2026-04-11 A (+27d) | 2026-06-07 A → 2026-04-15 A (-53d) | 15d → 5d |  |
| 14 | **SWITCHES/SOCKETS** | 2026-03-11 → 2026-04-07 (+27d) | 2026-06-07 → 2026-04-15 (-53d) |  |  |
| MLTX-02-004-EN-5200 | Pre-Qualification Submittal for Switches/Sockets | 2026-03-11 A → 2026-04-07 A (+27d) | 2026-05-25 A → 2026-04-09 A (-46d) | 15d → 3d |  |
| MLTX-02-004-EN-5210 | Pre-Qualification Approval for Switches/Sockets | 2026-03-15 A → 2026-04-11 A (+27d) | 2026-06-07 A → 2026-04-15 A (-53d) | 15d → 5d |  |
| 15 | **EARTHING SYSTEM** | 2026-03-11 → 2026-04-07 (+27d) | 2026-05-11 → 2026-04-15 (-26d) |  |  |
| MLTX-02-004-EN-5230 | Pre-Qualification Submittal for Earthing System | 2026-03-11 A → 2026-04-07 A (+27d) | 2026-05-09 A → 2026-04-09 A (-30d) | 15d → 3d | MLTX-02-004-EN-4900, MLTX-02-004-EN-5940 → MLTX-02-004-EN-4900 |
| MLTX-02-004-EN-5240 | Pre-Qualification Approval for Earthing System | 2026-03-15 A → 2026-04-11 A (+27d) | 2026-05-11 A → 2026-04-15 A (-26d) | 15d → 5d | MLTX-02-004-EN-5230, MLTX-02-004-EN-5110 → MLTX-02-004-EN-5230 |
| 5 | **DISTRIBUTION PANNELS** | 2026-03-11 → 2026-04-07 (+27d) | 2026-06-07 → 2026-04-15 (-53d) |  |  |
| MLTX-02-004-EN-5260 | Pre-Qualification Submittal for Distribution Panels | 2026-03-11 A → 2026-04-07 A (+27d) | 2026-05-25 A → 2026-04-09 A (-46d) | 15d → 3d | MLTX-02-004-EN-4930, MLTX-02-004-EN-5880 → MLTX-02-004-EN-4930 |
| MLTX-02-004-EN-5270 | Pre-Qualification Approval for Distribution Panels | 2026-03-15 A → 2026-04-11 A (+27d) | 2026-06-07 A → 2026-04-15 A (-53d) | 15d → 5d | MLTX-02-004-EN-5260, MLTX-02-004-EN-5230 → MLTX-02-004-EN-5260 |
| PLG | **PLAYGROUND WORKS** | 2026-03-08 → 2026-03-31 (+23d) | 2026-06-07 → 2026-04-23 (-45d) |  |  |
| 5 | **PVC MEMBRANE** | 2026-03-08 → 2026-03-31 (+23d) | 2026-05-24 → 2026-04-15 (-39d) |  |  |
| MLTX-02-004-EN-5300 | Pre-Qualification Submittal for PVC Membrane | 2026-03-08 A → 2026-03-31 A (+23d) | 2026-05-20 A → 2026-04-12 A (-38d) | 15d → 11d |  |
| MLTX-02-004-EN-5310 | Pre-Qualification Approval for PVC Membrane | 2026-03-11 A → 2026-04-12 A (+32d) | 2026-05-24 A → 2026-04-15 A (-39d) | 15d → 4d | MLTX-02-004-EN-5300, MLTX-02-004-EN-5580 → MLTX-02-004-EN-5300 |
| 6 | **STEEL TENSION CABLES** | 2026-03-08 → 2026-03-31 (+23d) | 2026-05-24 → 2026-04-15 (-39d) |  |  |
| MLTX-02-004-EN-5330 | Pre-Qualification Submittal for Steel Tension Cables | 2026-03-08 A → 2026-03-31 A (+23d) | 2026-05-20 A → 2026-04-13 A (-37d) | 15d → 12d | MLTX-02-004-EN-5300 SS, MLTX-02-004-EN-5580 → MLTX-02-004-EN-5300 SS |
| MLTX-02-004-EN-5340 | Pre-Qualification Approval for Steel Tension Cables | 2026-03-11 A → 2026-04-13 A (+33d) | 2026-05-24 A → 2026-04-15 A (-39d) | 15d → 3d | MLTX-02-004-EN-5330, MLTX-02-004-EN-5390 → MLTX-02-004-EN-5330 |
| 7 | **EMERGENCY DOORS** | 2026-03-08 → 2026-03-31 (+23d) | 2026-05-24 → 2026-04-15 (-39d) |  |  |
| MLTX-02-004-EN-5360 | Pre-Qualification Submittal for Emergency Doors | 2026-03-08 A → 2026-03-31 A (+23d) | 2026-05-20 A → 2026-04-13 A (-37d) | 15d → 12d | MLTX-02-004-MB-1340, MLTX-02-004-EN-5570 → MLTX-02-004-MB-1340 |
| MLTX-02-004-EN-5370 | Pre-Qualification Approval for Emergency Doors | 2026-03-11 A → 2026-04-13 A (+33d) | 2026-05-24 A → 2026-04-15 A (-39d) | 15d → 3d | MLTX-02-004-EN-5360, MLTX-02-004-EN-5600 → MLTX-02-004-EN-5360 |
| 8 | **PRESSURE UNITS** | 2026-03-08 → 2026-03-31 (+23d) | 2026-05-24 → 2026-04-15 (-39d) |  |  |
| MLTX-02-004-EN-5390 | Pre-Qualification Submittal for Pressure Units | 2026-03-08 A → 2026-03-31 A (+23d) | 2026-05-20 A → 2026-04-13 A (-37d) | 15d → 12d | MLTX-02-004-MB-1340, MLTX-02-004-EN-7150 → MLTX-02-004-MB-1340 |
| MLTX-02-004-EN-5400 | Pre-Qualification Approval for Pressure Units | 2026-03-11 A → 2026-04-13 A (+33d) | 2026-05-24 A → 2026-04-15 A (-39d) | 15d → 3d | MLTX-02-004-EN-5390, MLTX-02-004-EN-5430 → MLTX-02-004-EN-5390 |
| 9 | **AIR LOCK DOORS** | 2026-03-08 → 2026-03-31 (+23d) | 2026-05-24 → 2026-04-15 (-39d) |  |  |
| MLTX-02-004-EN-5420 | Pre-Qualification Submittal for Lock Doors | 2026-03-08 A → 2026-03-31 A (+23d) | 2026-05-20 A → 2026-04-13 A (-37d) | 15d → 12d | MLTX-02-004-MB-1340, MLTX-02-004-EN-5880 → MLTX-02-004-MB-1340 |
| MLTX-02-004-EN-5430 | Pre-Qualification Approval for Lock Doors | 2026-03-11 A → 2026-04-13 A (+33d) | 2026-05-24 A → 2026-04-15 A (-39d) | 15d → 3d | MLTX-02-004-EN-5420, MLTX-02-004-EN-7450 → MLTX-02-004-EN-5420 |
| 15 | **ARTIFICIAL TURF** | 2026-03-08 → 2026-03-31 (+23d) | 2026-05-10 → 2026-04-12 (-28d) |  |  |
| MLTX-02-004-EN-5450 | Pre-Qualification Submittal for Artificial TURF | 2026-03-08 A → 2026-03-31 A (+23d) | 2026-05-06 A → 2026-04-11 A (-25d) | 15d → 10d |  |
| MLTX-02-004-EN-5460 | Pre-Qualification Approval for Artificial TURF | 2026-03-11 A → 2026-04-11 A (+31d) | 2026-05-10 A → 2026-04-12 A (-28d) | 15d → 2d |  |
| 20 | **RUBBER GRANULES** | 2026-03-08 → 2026-03-31 (+23d) | 2026-05-10 → 2026-04-15 (-25d) |  |  |
| MLTX-02-004-EN-5480 | Pre-Qualification Submittal for Rubber Granules | 2026-03-08 A → 2026-03-31 A (+23d) | 2026-05-06 A → 2026-04-13 A (-23d) | 15d → 12d |  |
| MLTX-02-004-EN-5490 | Pre-Qualification Approval for Rubber Granules | 2026-03-11 A → 2026-04-13 A (+33d) | 2026-05-10 A → 2026-04-15 A (-25d) | 21d → 3d |  |
| 21 | **PADEL GLASS** | 2026-03-08 → 2026-03-31 (+23d) | 2026-05-10 → 2026-04-15 (-25d) |  |  |
| MLTX-02-004-EN-5510 | Pre-Qualification Submittal for Padel Glass | 2026-03-08 A → 2026-03-31 A (+23d) | 2026-05-06 A → 2026-04-13 A (-23d) | 15d → 12d | MLTX-02-004-MB-1340, MLTX-02-004-EN-5570 → MLTX-02-004-MB-1340 |
| MLTX-02-004-EN-5520 | Pre-Qualification Approval for Padel Glass | 2026-03-11 A → 2026-04-13 A (+33d) | 2026-05-10 A → 2026-04-15 A (-25d) | 15d → 3d | MLTX-02-004-EN-5510, MLTX-02-004-EN-5580 → MLTX-02-004-EN-5510 |
| 22 | **PADEL WIRE MESH/STEEL SETS** | 2026-03-08 → 2026-03-31 (+23d) | 2026-05-10 → 2026-04-15 (-25d) |  |  |
| MLTX-02-004-EN-5540 | Pre-Qualification Submittal for Wire Mesh/Steel Sets | 2026-03-08 A → 2026-03-31 A (+23d) | 2026-05-06 A → 2026-04-13 A (-23d) | 15d → 12d |  |
| MLTX-02-004-EN-5550 | Pre-Qualification Approval for Wire Mesh/Steel Sets | 2026-03-11 A → 2026-04-13 A (+33d) | 2026-05-10 A → 2026-04-15 A (-25d) | 15d → 3d | MLTX-02-004-EN-5540, MLTX-02-004-EN-5430 → MLTX-02-004-EN-5540 |
| 1 | **AGGREGATE BASE COURSE** | 2026-03-08 → 2026-03-31 (+23d) | 2026-04-30 → 2026-04-15 (-15d) |  |  |
| MLTX-02-004-EN-5570 | Pre-Qualification Submittal for Aggregate Base Course | 2026-03-08 A → 2026-03-31 A (+23d) | 2026-04-26 A → 2026-04-15 A (-11d) | 15d → 14d |  |
| MLTX-02-004-EN-5580 | Pre-Qualification Approval for Aggregate Base Course | 2026-03-11 A → 2026-04-15 A (+35d) | 2026-04-30 A → 2026-04-15 A (-15d) | 21d → 1d |  |
| 16 | **PACKAGE AC UNITS** | 2026-03-11 → 2026-04-04 (+24d) | 2026-06-07 → 2026-04-15 (-53d) |  |  |
| MLTX-02-004-EN-5690 | Pre-Qualification Submittal for Package AC Units | 2026-03-11 A → 2026-04-04 A (+24d) | 2026-05-25 A → 2026-04-13 A (-42d) | 15d → 9d | MLTX-02-004-EN-5390, MLTX-02-004-EN-5430 → MLTX-02-004-EN-5390 |
| MLTX-02-004-EN-5700 | Pre-Qualification Approval for Package AC Units | 2026-03-15 A → 2026-04-13 A (+29d) | 2026-06-07 A → 2026-04-15 A (-53d) | 15d → 3d | MLTX-02-004-EN-5690, MLTX-02-004-EN-5720 → MLTX-02-004-EN-5690 |
| 17 | **AIR DIFUSSERS/GRILLS** | 2026-03-11 → 2026-04-04 (+24d) | 2026-06-07 → 2026-04-15 (-53d) |  |  |
| MLTX-02-004-EN-5720 | Pre-Qualification Submittal for Air Difussers/Grills | 2026-03-11 A → 2026-04-04 A (+24d) | 2026-05-25 A → 2026-04-13 A (-42d) | 15d → 9d | MLTX-02-004-EN-5420, MLTX-02-004-EN-5430 → MLTX-02-004-EN-5420 |
| MLTX-02-004-EN-5730 | Pre-Qualification Approval for Air Difussers/Grills | 2026-03-15 A → 2026-04-13 A (+29d) | 2026-06-07 A → 2026-04-15 A (-53d) | 15d → 3d | MLTX-02-004-EN-5720, MLTX-02-004-EN-5430 → MLTX-02-004-EN-5720 |
| 2 | **BITUMINOUS BASE & WEARING COURSE** | 2026-03-11 → 2026-04-07 (+27d) | 2026-04-30 → 2026-04-14 (-16d) |  |  |
| MLTX-02-004-EN-5600 | Pre-Qualification Submittal for Bituminous Base & Wearing Cource | 2026-03-11 A → 2026-04-07 A (+27d) | 2026-04-26 A → 2026-04-12 A (-14d) | 15d → 5d |  |
| MLTX-02-004-EN-5610 | Pre-Qualification Approval for the Site | 2026-03-15 A → 2026-04-12 A (+28d) | 2026-04-30 A → 2026-04-14 A (-16d) | 15d → 3d |  |
| 3 | **INTERLOCKING PAVING** | 2026-03-11 → 2026-04-07 (+27d) | 2026-04-14 → 2026-04-23 (+9d) |  |  |
| MLTX-02-004-EN-5630 | Pre-Qualification Submittal for Interlocking Block Pavers | 2026-03-11 A → 2026-04-07 A (+27d) | 2026-04-11 A → 2026-04-12 A (+1d) | 15d → 5d | MLTX-02-004-EN-5330, MLTX-02-004-EN-5310 → MLTX-02-004-EN-5330 |
| MLTX-02-004-EN-5640 | Pre-Qualification Approval for Interlocking Block Pavers | 2026-03-15 A → 2026-04-12 A (+28d) | 2026-04-14 A → 2026-04-23 A (+9d) | 15d → 11d | MLTX-02-004-EN-5630, MLTX-02-004-EN-5940 → MLTX-02-004-EN-5630 |
| 4 | **MARKING PAINT** | 2026-03-11 → 2026-04-04 (+24d) | 2026-05-09 → 2026-04-12 (-27d) |  |  |
| MLTX-02-004-EN-5660 | Pre-Qualification Submittal for Marking Paint | 2026-03-11 A → 2026-04-04 A (+24d) | 2026-05-05 A → 2026-04-12 A (-23d) | 15d → 8d | MLTX-02-004-EN-5360, MLTX-02-004-EN-5600 → MLTX-02-004-EN-5360 |
| MLTX-02-004-EN-5670 | Pre-Qualification Approval for Marking Paint | 2026-03-15 A → 2026-04-07 A (+23d) | 2026-05-09 A → 2026-04-12 A (-27d) | 15d → 5d | MLTX-02-004-EN-5660, MLTX-02-004-EN-5580 → MLTX-02-004-EN-5660 |
| 18 | **GALVANIZED DUCTS** | 2026-03-11 → 2026-04-04 (+24d) | 2026-04-30 → 2026-04-15 (-15d) |  |  |
| MLTX-02-004-EN-5750 | Pre-Qualification Submittal for Galvanized Duct | 2026-03-11 A → 2026-04-04 A (+24d) | 2026-04-30 A → 2026-04-13 A (-17d) | 15d → 9d | MLTX-02-004-EN-5720 SS, MLTX-02-004-EN-5430 → MLTX-02-004-EN-5720 SS |
| MLTX-02-004-EN-5760 | Pre-Qualification Approval for Galvanized Duct | 2026-03-15 A → 2026-04-13 A (+29d) | 2026-04-25 A → 2026-04-15 A (-10d) | 15d → 3d | MLTX-02-004-EN-5750, MLTX-02-004-EN-5430 → MLTX-02-004-EN-5750 |
| 19 | **EXHAUST FANS** | 2026-03-11 → 2026-04-04 (+24d) | 2026-06-07 → 2026-04-15 (-53d) |  |  |
| MLTX-02-004-EN-5780 | Pre-Qualification Submittal for Exhaust Fans | 2026-03-11 A → 2026-04-04 A (+24d) | 2026-05-25 A → 2026-04-13 A (-42d) | 15d → 9d | MLTX-02-004-EN-5450, MLTX-02-004-EN-5390 → MLTX-02-004-EN-5450 |
| MLTX-02-004-EN-5790 | Pre-Qualification Approval for Exhaust Fans | 2026-03-15 A → 2026-04-13 A (+29d) | 2026-06-07 A → 2026-04-15 A (-53d) | 15d → 3d | MLTX-02-004-EN-5780, MLTX-02-004-EN-5430 → MLTX-02-004-EN-5780 |
| 10 | **DISTRIBUTION BOARDS** | 2026-03-11 → 2026-04-04 (+24d) | 2026-06-07 → 2026-04-15 (-53d) |  |  |
| MLTX-02-004-EN-5810 | Pre-Qualification Submittal for Distribution Boards | 2026-03-11 A → 2026-04-04 A (+24d) | 2026-05-25 A → 2026-04-13 A (-42d) | 15d → 9d | MLTX-02-004-EN-5420, MLTX-02-004-EN-5430 → MLTX-02-004-EN-5420 |
| MLTX-02-004-EN-5820 | Pre-Qualification Approval for Distribution Boards | 2026-03-15 A → 2026-04-13 A (+29d) | 2026-06-07 A → 2026-04-15 A (-53d) | 15d → 3d | MLTX-02-004-EN-5810, MLTX-02-004-EN-6990 → MLTX-02-004-EN-5810 |
| 11 | **POWER CABLES** | 2026-03-11 → 2026-04-04 (+24d) | 2026-05-11 → 2026-04-15 (-26d) |  |  |

| ID | Task | Start | Finish | Duration | Predecessors |
| --- | --- | --- | --- | --- | --- |
| MLTX-02-004-EN-5840 | Pre-Qualification Submittal for Power Cables | 2026-03-11 A → 2026-04-04 A (+24d) | 2026-05-09 A → 2026-04-13 A (-26d) | 15d → 9d |  |
| MLTX-02-004-EN-5850 | Pre-Qualification Approval for Power Cables | 2026-03-15 A → 2026-04-13 A (+29d) | 2026-05-11 A → 2026-04-15 A (-26d) | 15d → 3d |  |
| 12 | **LIGHT FIXTURES** | 2026-03-11 → 2026-04-04 (+24d) | 2026-06-07 → 2026-04-15 (-53d) |  |  |
| MLTX-02-004-EN-5870 | Pre-Qualification Submittal for Light Fixtures | 2026-03-11 A → 2026-04-04 A (+24d) | 2026-05-25 A → 2026-04-13 A (-42d) | 15d → 9d | MLTX-02-004-EN-5480, MLTX-02-004-EN-5600 → MLTX-02-004-EN-5480 |
| MLTX-02-004-EN-5880 | Pre-Qualification Approval for Light Fixtures | 2026-03-15 A → 2026-04-13 A (+29d) | 2026-06-07 A → 2026-04-15 A (-53d) | 15d → 3d | MLTX-02-004-EN-5870, MLTX-02-004-EN-5580 → MLTX-02-004-EN-5870 |
| 13 | **CCTV MATERIALS** | 2026-03-11 → 2026-04-04 (+24d) | 2026-06-07 → 2026-04-12 (-56d) |  |  |
| MLTX-02-004-EN-5900 | Pre-Qualification Submittal for CCTV | 2026-03-11 A → 2026-04-04 A (+24d) | 2026-05-25 A → 2026-04-06 A (-49d) | 15d → 3d | MLTX-02-004-EN-5510, MLTX-02-004-EN-5600 → MLTX-02-004-EN-5510 |
| MLTX-02-004-EN-5910 | Pre-Qualification Approval for CCTV | 2026-03-15 A → 2026-04-07 A (+23d) | 2026-06-07 A → 2026-04-12 A (-56d) | 15d → 5d | MLTX-02-004-EN-5900, MLTX-02-004-EN-5580 → MLTX-02-004-EN-5900 |
| 14 | **POWER OUTLETS/SWITCHES** | 2026-03-11 → 2026-04-04 (+24d) | 2026-06-07 → 2026-04-15 (-53d) |  |  |
| MLTX-02-004-EN-5930 | Pre-Qualification Submittal for Power Outlets/Switches | 2026-03-11 A → 2026-04-04 A (+24d) | 2026-05-25 A → 2026-04-13 A (-42d) | 15d → 9d | MLTX-02-004-EN-5570, MLTX-02-004-EN-5580 → MLTX-02-004-EN-5570 |
| MLTX-02-004-EN-5940 | Pre-Qualification Approval for Power Outlets/Switches | 2026-03-15 A → 2026-04-13 A (+29d) | 2026-06-07 A → 2026-04-15 A (-53d) | 15d → 3d | MLTX-02-004-EN-5930, MLTX-02-004-EN-5520 → MLTX-02-004-EN-5930 |
| LSC | **LANDSCAPE WORKS** | 2026-03-11 → 2026-04-04 (+24d) | 2026-05-18 → 2026-05-21 (+3d) |  |  |
| 7 | **INTERLOCKING PAVING** | 2026-03-12 → 2026-04-04 (+23d) | 2026-03-24 → 2026-04-23 (+30d) |  |  |
| MLTX-02-004-EN-5970 | Pre-Qualification Submittal for Interlocking Block Pavers | 2026-03-12 A → 2026-04-04 A (+23d) | 2026-03-15 A → 2026-04-12 A (+28d) | 15d → 8d |  |
| MLTX-02-004-EN-5980 | Pre-Qualification Approval for Interlocking Block Pavers | 2026-03-16 A → 2026-04-12 A (+27d) | 2026-03-24 A → 2026-04-23 A (+30d) | 15d → 11d |  |
| 9 | **CURBSTONE** | 2026-03-12 → 2026-04-04 (+23d) | 2026-03-24 → 2026-04-23 (+30d) |  |  |
| MLTX-02-004-EN-6000 | Pre-Qualification Submittal for Curbstone | 2026-03-12 A → 2026-04-04 A (+23d) | 2026-03-15 A → 2026-04-12 A (+28d) | 15d → 8d | MLTX-02-004-EN-5570, MLTX-02-004-EN-6030 → MLTX-02-004-EN-5570 |
| MLTX-02-004-EN-6010 | Pre-Qualification Approval for Curbstone | 2026-03-16 A → 2026-04-12 A (+27d) | 2026-03-24 A → 2026-04-23 A (+30d) | 15d → 11d | MLTX-02-004-EN-6000, MLTX-02-004-EN-6150 → MLTX-02-004-EN-6000 |
| 1 | **PAVEMENT MARKING** | 2026-03-11 → 2026-04-04 (+24d) | 2026-05-09 → 2026-04-12 (-27d) |  |  |
| MLTX-02-004-EN-6030 | Pre-Qualification Submittal for Pavement Markings | 2026-03-11 A → 2026-04-04 A (+24d) | 2026-05-05 A → 2026-04-06 A (-29d) | 15d → 3d | MLTX-02-004-EN-5570, MLTX-02-004-EN-5880 → MLTX-02-004-EN-5570 |
| MLTX-02-004-EN-6040 | Pre-Qualification Approval for Pavement Markings | 2026-03-15 A → 2026-04-07 A (+23d) | 2026-05-09 A → 2026-04-12 A (-27d) | 15d → 5d | MLTX-02-004-EN-6030, MLTX-02-004-EN-6180 → MLTX-02-004-EN-6030 |
| 2 | **TRAFFIC SIGNS** | 2026-03-11 → 2026-05-06 (+56d) | 2026-05-09 → 2026-05-21 (+12d) |  |  |
| MLTX-02-004-EN-6060 | Pre-Qualification Submittal for Traffic Signs | 2026-03-11 A → 2026-05-06 A (+56d) | 2026-05-05 A → 2026-05-06 A (+1d) | 15d → 1d | MLTX-02-004-EN-5570, MLTX-02-004-EN-6180 → MLTX-02-004-EN-5570 |
| MLTX-02-004-EN-6070 | Pre-Qualification Approval for Traffic Signs | 2026-03-15 A → 2026-05-21 A (+67d) | 2026-05-09 A → 2026-05-21 A (+12d) | 15d → 1d | MLTX-02-004-EN-6060, MLTX-02-004-EN-6150 → MLTX-02-004-EN-6060 |
| 3 | **IRRIGATION PIPES/SPRINKLERS** | 2026-03-11 → 2026-04-04 (+24d) | 2026-05-10 → 2026-05-21 (+11d) |  |  |
| MLTX-02-004-EN-6090 | Pre-Qualification Submittal for Irrigation Pipes/Sprinkles | 2026-03-11 A → 2026-04-04 A (+24d) | 2026-05-06 A → 2026-04-26 A (-10d) | 15d → 20d | MLTX-02-004-EN-5570, MLTX-02-004-EN-6120 → MLTX-02-004-EN-5570 |
| MLTX-02-004-EN-6100 | Pre-Qualification Approval for Irrigation Pipes/Sprinkles | 2026-03-15 A → 2026-05-21 A (+67d) | 2026-05-10 A → 2026-05-21 A (+11d) | 15d → 1d | MLTX-02-004-EN-6090, MLTX-02-004-EN-6130 → MLTX-02-004-EN-6090 |
| 5 | **AGRICULTURE SOIL** | 2026-03-11 → 2026-04-04 (+24d) | 2026-05-14 → 2026-05-21 (+7d) |  |  |
| MLTX-02-004-EN-6120 | Pre-Qualification Submittal for Agriculture Soil | 2026-03-11 A → 2026-04-04 A (+24d) | 2026-05-07 A → 2026-04-26 A (-11d) | 15d → 20d | MLTX-02-004-EN-5570, MLTX-02-004-EN-6150 → MLTX-02-004-EN-5570 |
| MLTX-02-004-EN-6130 | Pre-Qualification Approval for Agriculture Soil | 2026-03-15 A → 2026-05-21 A (+67d) | 2026-05-14 A → 2026-05-21 A (+7d) | 15d → 1d | MLTX-02-004-EN-6120, MLTX-02-004-EN-6160 → MLTX-02-004-EN-6120 |
| 8 | **TRACK SURFACE** | 2026-03-11 → 2026-04-04 (+24d) | 2026-05-13 → 2026-04-12 (-31d) |  |  |
| MLTX-02-004-EN-6150 | Pre-Qualification Submittal for Track Surface | 2026-03-11 A → 2026-04-04 A (+24d) | 2026-05-10 A → 2026-04-06 A (-34d) | 15d → 3d | MLTX-02-004-EN-5570, MLTX-02-004-EN-5420 → MLTX-02-004-EN-5570 |
| MLTX-02-004-EN-6160 | Pre-Qualification Approval for Track Surface | 2026-03-15 A → 2026-04-07 A (+23d) | 2026-05-13 A → 2026-04-12 A (-31d) | 15d → 5d | MLTX-02-004-EN-6150, MLTX-02-004-EN-5390 → MLTX-02-004-EN-6150 |
| 10 | **GRASS/TREES** | 2026-03-11 → 2026-04-04 (+24d) | 2026-05-18 → 2026-04-19 (-29d) |  |  |
| MLTX-02-004-EN-6180 | Pre-Qualification Submittal for Grass/Trees | 2026-03-11 A → 2026-04-04 A (+24d) | 2026-05-13 A → 2026-04-14 A (-29d) | 15d → 10d | MLTX-02-004-EN-5570, MLTX-02-004-EN-5940 → MLTX-02-004-EN-5570 |
| MLTX-02-004-EN-6190 | Pre-Qualification Approval for Grass/Trees | 2026-03-15 A → 2026-04-14 A (+30d) | 2026-05-18 A → 2026-04-19 A (-29d) | 15d → 5d | MLTX-02-004-EN-6180, MLTX-02-004-EN-6150 → MLTX-02-004-EN-6180 |
| 6 | **CABLES** | 2026-03-11 → 2026-05-06 (+56d) | 2026-05-11 → 2026-05-07 (-4d) |  |  |
| MLTX-02-004-EN-6210 | Pre-Qualification Submittal for Cables | 2026-03-11 A → 2026-05-06 A (+56d) | 2026-05-09 A → 2026-05-06 A (-3d) | 15d → 1d |  |
| MLTX-02-004-EN-6220 | Pre-Qualification Approval for Cables | 2026-03-15 A → 2026-05-07 A (+53d) | 2026-05-11 A → 2026-05-07 A (-4d) | 15d → 1d |  |
| 4 | **LIGHT POLES** | 2026-03-11 → 2026-05-06 (+56d) | 2026-05-04 → 2026-05-07 (+3d) |  |  |
| MLTX-02-004-EN-6240 | Pre-Qualification Submittal for Lighting poles | 2026-03-11 A → 2026-05-06 A (+56d) | 2026-04-30 A → 2026-05-06 A (+6d) | 15d → 1d |  |
| MLTX-02-004-EN-6250 | Pre-Qualification Approval for Lighting poles | 2026-03-15 A → 2026-05-07 A (+53d) | 2026-05-04 A → 2026-05-07 A (+3d) | 15d → 1d |  |
| MAT | **MATERIAL SUBMITTAL & APPROVAL** | 2026-03-18 → 2026-04-11 (+24d) | 2026-09-12 → 2026-08-24 (-19d) |  |  |
| TOI | **TOILET/SERVICE WORKS** | 2026-03-19 → 2026-04-11 (+23d) | 2026-07-30 → 2026-07-22 (-8d) |  |  |
| 1 | **STEEL REINFORCEMENT** | 2026-03-24 → 2026-04-11 (+18d) | 2026-04-04 → 2026-04-14 (+10d) |  |  |
| MLTX-02-004-EN-6290 | Material Submittal for Steel Reinforcement | 2026-03-24 A → 2026-04-11 A (+18d) | 2026-03-26 A → 2026-04-12 A (+17d) | 15d → 2d |  |
| MLTX-02-004-EN-6300 | Material Approval for Steel Reinforcement | 2026-03-28 A → 2026-04-12 A (+15d) | 2026-04-04 A → 2026-04-14 A (+10d) | 15d → 3d |  |
| 2 | **READY MIX CONCRETE** | 2026-03-24 → 2026-04-15 (+22d) | 2026-04-04 → 2026-04-26 (+22d) |  |  |
| MLTX-02-004-EN-6320 | Material Submittal for Ready Mixed Concrete | 2026-03-24 A → 2026-04-15 A (+22d) | 2026-03-26 A → 2026-04-18 A (+23d) | 15d → 3d |  |
| MLTX-02-004-EN-6330 | Material Approval of Ready Mixed Concrete | 2026-03-28 A → 2026-04-19 A (+22d) | 2026-04-04 A → 2026-04-26 A (+22d) | 15d → 7d |  |
| 3 | **CONCRETE BLOCKS** | 2026-03-24 → 2026-04-15 (+22d) | 2026-04-04 → 2026-04-26 (+22d) |  |  |
| MLTX-02-004-EN-6350 | Material Submittal for Concrete Blocks | 2026-03-24 A → 2026-04-15 A (+22d) | 2026-03-26 A → 2026-04-18 A (+23d) | 15d → 3d |  |
| MLTX-02-004-EN-6360 | Material Approval for Concrete Blocks | 2026-03-28 A → 2026-04-19 A (+22d) | 2026-04-04 A → 2026-04-26 A (+22d) | 15d → 7d |  |
| 6 | **FLOOR/WALL TILES** | 2026-03-19 → 2026-04-15 (+27d) | 2026-05-17 → 2026-07-22 (+66d) |  |  |
| MLTX-02-004-EN-6410 | Material Submittal for Tilling Materials | 2026-03-19 A → 2026-04-15 A (+27d) | 2026-05-12 A → 2026-04-18 A (-24d) | 15d → 3d | MLTX-02-004-EN-4850, MLTX-02-004-EN-7510 → MLTX-02-004-EN-4850 |
| MLTX-02-004-EN-6420 | Material Approval for Tilling Material | 2026-03-26 A → 2026-07-22 A (+118d) | 2026-05-17 A → 2026-07-22 A (+66d) | 15d → 7d | MLTX-02-004-EN-6410, MLTX-02-004-EN-6680 → MLTX-02-004-EN-6410 |
| 7 | **SUSPENDED CEILING** | 2026-03-24 → 2026-04-15 (+22d) | 2026-04-04 → 2026-04-20 (+16d) |  |  |
| MLTX-02-004-EN-6440 | Material Submittal for Suspend Ceiling | 2026-03-24 A → 2026-04-15 A (+22d) | 2026-03-26 A → 2026-04-18 A (+23d) | 15d → 3d | MLTX-02-004-EN-4880, MLTX-02-004-EN-6810 → MLTX-02-004-EN-4880 |
| MLTX-02-004-EN-6450 | Material Approval for Suspend Ceiling | 2026-03-28 A → 2026-04-19 A (+22d) | 2026-04-04 A → 2026-04-20 A (+16d) | 15d → 2d | MLTX-02-004-EN-6440, MLTX-02-004-EN-6830 → MLTX-02-004-EN-6440 |
| 8 | **DOORS/WINDOWS** | 2026-03-24 → 2026-05-06 (+43d) | 2026-04-04 → 2026-05-21 (+47d) |  |  |
| MLTX-02-004-EN-6470 | Material Submittal for Doors/Windows | 2026-03-24 A → 2026-05-06 A (+43d) | 2026-03-26 A → 2026-05-06 A (+41d) | 15d → 1d | MLTX-02-004-EN-4910, MLTX-02-004-EN-6810 → MLTX-02-004-EN-4910 |
| MLTX-02-004-EN-6480 | Material Approval for Doors/Windows | 2026-03-28 A → 2026-05-21 A (+54d) | 2026-04-04 A → 2026-05-21 A (+47d) | 15d → 1d | MLTX-02-004-EN-6470, MLTX-02-004-EN-6830 → MLTX-02-004-EN-6470 |
| 9 | **FURNITURES** | 2026-03-19 → 2026-05-06 (+48d) | 2026-05-17 → 2026-05-07 (-10d) |  |  |
| MLTX-02-004-EN-6500 | Material Submittal for Furnitures | 2026-03-19 A → 2026-05-06 A (+48d) | 2026-05-13 A → 2026-05-06 A (-7d) | 15d → 1d | MLTX-02-004-EN-4940, MLTX-02-004-EN-6290 → MLTX-02-004-EN-4940 |
| MLTX-02-004-EN-6510 | Material Approval for Furnitures | 2026-03-26 A → 2026-05-07 A (+42d) | 2026-05-17 A → 2026-05-07 A (-10d) | 15d → 1d | MLTX-02-004-EN-6500, MLTX-02-004-EN-6330 → MLTX-02-004-EN-6500 |
| 10 | **SANITARY FIXTURES** | 2026-03-19 → 2026-04-15 (+27d) | 2026-05-17 → 2026-04-30 (-17d) |  |  |
| MLTX-02-004-EN-6530 | Material Submittal for Sanitary Fixtures | 2026-03-19 A → 2026-04-15 A (+27d) | 2026-05-13 A → 2026-04-21 A (-22d) | 15d → 6d |  |
| MLTX-02-004-EN-6540 | Material Approval for Sanitary Fixtures | 2026-03-26 A → 2026-04-19 A (+24d) | 2026-05-17 A → 2026-04-30 A (-17d) | 15d → 11d |  |
| 11 | **WATER SUPPLY PIPES** | 2026-03-24 → 2026-04-15 (+22d) | 2026-04-04 → 2026-04-16 (+12d) |  |  |
| MLTX-02-004-EN-6560 | Material Submittal for Water Supply Pipes | 2026-03-24 A → 2026-04-15 A (+22d) | 2026-03-26 A → 2026-04-15 A (+20d) | 15d → 1d | MLTX-02-004-EN-5000, MLTX-02-004-EN-7510 → MLTX-02-004-EN-5000 |

| ID | Task | Start | Finish | Duration | Predecessors |
| --- | --- | --- | --- | --- | --- |
| MLTX-02-004-EN-6570 | Material Approval for Water Supply Pipes | 2026-03-28 A → 2026-04-15 A (+18d) | 2026-04-04 A → 2026-04-16 A (+12d) | 15d → 2d | MLTX-02-004-EN-6560, MLTX-02-004-EN-6800 → MLTX-02-004-EN-6560 |
| 12 | **SEWAGE/DRAINAGE PIPES** | 2026-06-08 → 2026-04-15 (-54d) | 2026-06-15 → 2026-04-16 (-60d) |  |  |
| MLTX-02-004-EN-6590 | Material Submittal for Sewage/Drainage Pipes | 2026-06-08 A → 2026-04-15 A (-54d) | 2026-06-08 A → 2026-04-15 A (-54d) | 15d → 1d |  |
| MLTX-02-004-EN-6600 | Material Approval for Sewage/Drainage Pipes | 2026-06-15 A → 2026-04-15 A (-61d) | 2026-06-15 A → 2026-04-16 A (-60d) | 15d → 2d |  |
| 16 | **PACKAGE AC UNITS** | 2026-07-07 → 2026-05-06 (-62d) | 2026-07-07 → 2026-05-07 (-61d) |  |  |
| MLTX-02-004-EN-6620 | Material Submittal for Package AC Units | 2026-07-07 A → 2026-05-06 A (-62d) | 2026-07-07 A → 2026-05-06 A (-62d) | 15d → 1d |  |
| MLTX-02-004-EN-6630 | Material Approval for Package AC Units | 2026-07-07 A → 2026-05-07 A (-61d) | 2026-07-07 A → 2026-05-07 A (-61d) | 15d → 1d |  |
| 17 | **AIR DIFUSSERS/GRILLS** | 2026-07-27 → 2026-04-16 (-102d) | 2026-07-30 → 2026-05-06 (-85d) |  |  |
| MLTX-02-004-EN-6650 | Material Submittal for Air Diffusers/Grills | 2026-07-27 A → 2026-04-16 A (-102d) | 2026-07-27 A → 2026-04-22 A (-96d) | 15d → 6d | MLTX-02-004-EN-5090, MLTX-02-004-EN-6810 → MLTX-02-004-EN-5090 |
| MLTX-02-004-EN-6660 | Material Approval for Air Diffusers/Grills | 2026-07-30 A → 2026-05-06 A (-85d) | 2026-07-30 A → 2026-05-06 A (-85d) | 15d → 1d | MLTX-02-004-EN-6650, MLTX-02-004-EN-6830 → MLTX-02-004-EN-6650 |
| 18 | **GALVANIZED DUCTS** | 2026-03-24 → 2026-06-13 (+81d) | 2026-04-30 → 2026-06-18 (+49d) |  |  |
| MLTX-02-004-EN-6680 | Material Submittal for Galvanized Ducts | 2026-03-24 A → 2026-06-13 A (+81d) | 2026-04-25 A → 2026-06-13 A (+49d) | 15d → 1d | MLTX-02-004-EN-5120, MLTX-02-004-EN-7510 → MLTX-02-004-EN-5120 |
| MLTX-02-004-EN-6690 | Material Approval for Galvanized Ducts | 2026-03-28 A → 2026-06-18 A (+82d) | 2026-04-30 A → 2026-06-18 A (+49d) | 15d → 1d | MLTX-02-004-EN-6680, MLTX-02-004-EN-7750 → MLTX-02-004-EN-6680 |
| 19 | **EXHAUST FANS** | 2026-07-27 → 2026-04-16 (-102d) | 2026-07-30 → 2026-05-06 (-85d) |  |  |
| MLTX-02-004-EN-6710 | Material Submittal for Exhaust Fans | 2026-07-27 A → 2026-04-16 A (-102d) | 2026-07-27 A → 2026-04-18 A (-100d) | 15d → 2d |  |
| MLTX-02-004-EN-6720 | Material Approval for Exhaust Fans | 2026-07-30 A → 2026-05-06 A (-85d) | 2026-07-30 A → 2026-05-06 A (-85d) | 15d → 1d |  |
| 13 | **LIGHTING FIXTURES** | 2026-07-07 → 2026-04-16 (-82d) | 2026-07-07 → 2026-04-25 (-73d) |  |  |
| MLTX-02-004-EN-6740 | Material Submittal for Lighting Fixtures | 2026-07-07 A → 2026-04-16 A (-82d) | 2026-07-07 A → 2026-04-19 A (-79d) | 15d → 3d |  |
| MLTX-02-004-EN-6750 | Material Approval for Lighting Fixtures | 2026-07-07 A → 2026-04-20 A (-78d) | 2026-07-07 A → 2026-04-25 A (-73d) | 15d → 5d |  |
| 14 | **SWITCHES/SOCKETS** | 2026-07-27 → 2026-04-16 (-102d) | 2026-07-30 → 2026-04-25 (-96d) |  |  |
| MLTX-02-004-EN-6770 | Material Submittal for Switches/Sockets | 2026-07-27 A → 2026-04-16 A (-102d) | 2026-07-27 A → 2026-04-19 A (-99d) | 15d → 3d |  |
| MLTX-02-004-EN-6780 | Material Approval for Switches/Sockets | 2026-07-30 A → 2026-04-20 A (-101d) | 2026-07-30 A → 2026-04-25 A (-96d) | 15d → 5d |  |
| 15 | **EARTHING SYSTEM** | 2026-03-24 → 2026-05-06 (+43d) | 2026-05-18 → 2026-05-07 (-11d) |  |  |
| MLTX-02-004-EN-6800 | Material Submittal for Earthing System | 2026-03-24 A → 2026-05-06 A (+43d) | 2026-05-14 A → 2026-05-06 A (-8d) | 15d → 1d | MLTX-02-004-EN-5240, MLTX-02-004-EN-7510 → MLTX-02-004-EN-5240 |
| MLTX-02-004-EN-6810 | Material Approval for Earthing System | 2026-03-28 A → 2026-05-07 A (+40d) | 2026-05-18 A → 2026-05-07 A (-11d) | 15d → 1d | MLTX-02-004-EN-6800, MLTX-02-004-EN-6410 → MLTX-02-004-EN-6800 |
| 5 | **DISTRIBUTION PANNELS** | 2026-07-27 → 2026-04-16 (-102d) | 2026-07-30 → 2026-04-25 (-96d) |  |  |
| MLTX-02-004-EN-6830 | Material Submittal for Distribution Panels | 2026-07-27 A → 2026-04-16 A (-102d) | 2026-07-27 A → 2026-04-19 A (-99d) | 15d → 3d | MLTX-02-004-EN-5270, MLTX-02-004-EN-6810 → MLTX-02-004-EN-5270 |
| MLTX-02-004-EN-6840 | Material Approval for Distribution Panels | 2026-07-30 A → 2026-04-20 A (-101d) | 2026-07-30 A → 2026-04-25 A (-96d) | 15d → 5d | MLTX-02-004-EN-6830, MLTX-02-004-EN-7290 → MLTX-02-004-EN-6830 |
| PLG | **PLAYGROUND WORKS** | 2026-03-19 → 2026-04-12 (+24d) | 2026-09-12 → 2026-08-24 (-19d) |  |  |
| 5 | **PVC MEMBRANE** | 2026-03-24 → 2026-04-15 (+22d) | 2026-04-04 → 2026-04-19 (+15d) |  |  |
| MLTX-02-004-EN-6870 | Material Submittal for PVC Membrane | 2026-03-24 A → 2026-04-15 A (+22d) | 2026-03-26 A → 2026-04-18 A (+23d) | 15d → 3d | MLTX-02-004-EN-5310, MLTX-02-004-EN-7140 → MLTX-02-004-EN-5310 |
| MLTX-02-004-EN-6880 | Material Approval for PVC Membrane | 2026-03-28 A → 2026-04-18 A (+21d) | 2026-04-04 A → 2026-04-19 A (+15d) | 15d → 8d | MLTX-02-004-EN-6870, MLTX-02-004-EN-7080 → MLTX-02-004-EN-6870 |
| 6 | **STEEL TENSION CABLES** | 2026-08-26 → 2026-05-06 (-112d) | 2026-08-26 → 2026-05-10 (-108d) |  |  |
| MLTX-02-004-EN-6900 | Material Submittal for Steel Tension Cables | 2026-08-26 A → 2026-05-06 A (-112d) | 2026-08-26 A → 2026-05-06 A (-112d) | 15d → 1d | MLTX-02-004-EN-5340, MLTX-02-004-EN-7510 → MLTX-02-004-EN-5340 |
| MLTX-02-004-EN-6910 | Material Approval for Steel Tension Cables | 2026-08-26 A → 2026-05-09 A (-109d) | 2026-08-26 A → 2026-05-10 A (-108d) | 15d → 9d | MLTX-02-004-EN-6900, MLTX-02-004-EN-7210 → MLTX-02-004-EN-6900, MLTX-02-004-EN-6880, MLTX-02-004-EN-7670 |
| 7 | **EMERGENCY DOORS** | 2026-08-26 → 2026-05-06 (-112d) | 2026-09-12 → 2026-05-16 (-119d) |  |  |
| MLTX-02-004-EN-6930 | Material Submittal for Emergency Doors | 2026-08-26 A → 2026-05-06 A (-112d) | 2026-08-26 A → 2026-05-06 A (-112d) | 15d → 1d | MLTX-02-004-EN-5370, MLTX-02-004-EN-7020 → MLTX-02-004-EN-5370 |
| MLTX-02-004-EN-6940 | Material Approval for Emergency Doors | 2026-09-12 A → 2026-05-14 A (-121d) | 2026-09-12 A → 2026-05-16 A (-119d) | 15d → 9d | MLTX-02-004-EN-6930, MLTX-02-004-EN-7140 → MLTX-02-004-EN-6930, MLTX-02-004-EN-6910 |
| 8 | **PRESSURE UNITS** | 2026-09-12 → 2026-05-06 (-129d) | 2026-09-12 → 2026-08-24 (-19d) |  |  |
| MLTX-02-004-EN-6960 | Material Submittal for Pressure Units | 2026-09-12 A → 2026-05-06 A (-129d) | 2026-09-12 A → 2026-05-06 A (-129d) | 15d → 1d | MLTX-02-004-EN-5400, MLTX-02-004-EN-6990 → MLTX-02-004-EN-5400 |
| MLTX-02-004-EN-6970 | Material Approval for Pressure Units | 2026-09-12 A → 2026-08-24 A (-19d) | 2026-09-12 A → 2026-08-24 A (-19d) | 15d → 9d | MLTX-02-004-EN-6960, MLTX-02-004-EN-7110 → MLTX-02-004-EN-6960 |
| 9 | **AIR LOCK DOORS** | 2026-08-26 → 2026-05-06 (-112d) | 2026-09-12 → 2026-05-16 (-119d) |  |  |
| MLTX-02-004-EN-6990 | Material Submittal for Lock Doors | 2026-08-26 A → 2026-05-06 A (-112d) | 2026-08-26 A → 2026-05-06 A (-112d) | 15d → 1d | MLTX-02-004-EN-5430, MLTX-02-004-EN-4060 → MLTX-02-004-EN-5430 |
| MLTX-02-004-EN-7000 | Material Approval for Lock Doors | 2026-09-12 A → 2026-05-14 A (-121d) | 2026-09-12 A → 2026-05-16 A (-119d) | 15d → 8d | MLTX-02-004-EN-6990, MLTX-02-004-EN-3620 → MLTX-02-004-EN-6990, MLTX-02-004-EN-6970, MLTX-02-004-PR-8090, MLTX-02-004-PR-8370, MLTX-02-004-PR-8410, MLTX-02-004-PR-8450, MLTX-02-004-PR-8610, MLTX-02-004-PR-8170, MLTX-02-004-PR-8850, MLTX-02-004-PR-8890, MLTX-02-004-PR-8930, MLTX-02-004-PR-9070, MLTX-02-004-PR-9110, MLTX-02-004-PR-9150, MLTX-02-004-PR-9190, MLTX-02-004-PR-9230, MLTX-02-004-PR-9270, MLTX-02-004-PR-9310, MLTX-02-004-PR-9350, MLTX-02-004-PR-9390, MLTX-02-004-PR-9470 |
| 15 | **ARTIFICIAL TURF** | 2026-03-19 → 2026-04-12 (+24d) | 2026-05-19 → 2026-04-30 (-19d) |  |  |
| MLTX-02-004-EN-7020 | Material Submittal for Artificial TURF | 2026-03-19 A → 2026-04-12 A (+24d) | 2026-05-14 A → 2026-04-28 A (-16d) |  |  |
| MLTX-02-004-EN-7030 | Material Approval for Artificial TURF | 2026-03-26 A → 2026-04-28 A (+33d) | 2026-05-19 A → 2026-04-30 A (-19d) | 15d → 3d | MLTX-02-004-EN-7020, MLTX-02-004-EN-7290 → MLTX-02-004-EN-7020 |
| 20 | **RUBBER GRANULES** | 2026-03-19 → 2026-05-06 (+48d) | 2026-05-19 → 2026-05-21 (+2d) |  |  |
| MLTX-02-004-EN-7050 | Material Submittal for Rubber Granules | 2026-03-19 A → 2026-05-06 A (+48d) | 2026-05-14 A → 2026-05-06 A (-8d) | 21d → 1d |  |
| MLTX-02-004-EN-7060 | Material Approval for Rubber Granules | 2026-03-26 A → 2026-05-21 A (+56d) | 2026-05-19 A → 2026-05-21 A (+2d) | 21d → 1d |  |
| 21 | **PADEL GLASS** | 2026-03-19 → 2026-05-06 (+48d) | 2026-05-19 → 2026-05-21 (+2d) |  |  |
| MLTX-02-004-EN-7080 | Material Submittal for Padel Glass | 2026-03-19 A → 2026-05-06 A (+48d) | 2026-05-14 A → 2026-05-06 A (-8d) | 15d → 1d | MLTX-02-004-EN-5520, MLTX-02-004-EN-7140 → MLTX-02-004-EN-5520 |
| MLTX-02-004-EN-7090 | Material Approval for Padel Glass | 2026-03-26 A → 2026-05-21 A (+56d) | 2026-05-19 A → 2026-05-21 A (+2d) | 15d → 1d | MLTX-02-004-EN-7080, MLTX-02-004-EN-7180 → MLTX-02-004-EN-7080 |
| 22 | **PADEL WIRE MESH/STEEL SETS** | 2026-03-19 → 2026-05-25 (+67d) | 2026-05-19 → 2026-05-27 (+8d) |  |  |
| MLTX-02-004-EN-7110 | Material Submittal for Wire Mesh/Steel Sets | 2026-03-19 A → 2026-05-25 A (+67d) | 2026-05-14 A → 2026-05-25 A (+11d) | 15d → 1d | MLTX-02-004-EN-5550, MLTX-02-004-EN-6990 → MLTX-02-004-EN-5550 |
| MLTX-02-004-EN-7120 | Material Approval for Wire Mesh/Steel Sets | 2026-03-26 A → 2026-05-26 A (+61d) | 2026-05-19 A → 2026-05-27 A (+8d) | 15d → 8d | MLTX-02-004-EN-7110, MLTX-02-004-EN-7000 → MLTX-02-004-EN-6940, MLTX-02-004-EN-7110, MLTX-02-004-EN-7000 |
| 1 | **AGGREGATE BASE COURSE** | 2026-03-19 → 2026-05-21 (+63d) | 2026-05-07 → 2026-06-18 (+42d) |  |  |
| MLTX-02-004-EN-7140 | Material Submittal for Aggregate Base Course | 2026-03-19 A → 2026-05-21 A (+63d) | 2026-05-04 A → 2026-05-21 A (+17d) | 21d → 1d |  |
| MLTX-02-004-EN-7150 | Material Approval for Aggregate Base Course | 2026-03-26 A → 2026-06-18 A (+84d) | 2026-05-07 A → 2026-06-18 A (+42d) | 21d → 1d |  |
| 16 | **PACKAGE AC UNITS** | 2026-07-07 → 2026-05-21 (-47d) | 2026-07-07 → 2026-05-21 (-47d) |  |  |
| MLTX-02-004-EN-7260 | Material Submittal for Package AC Units | 2026-07-07 A → 2026-05-21 A (-47d) | 2026-07-07 A → 2026-05-21 A (-47d) | 15d → 1d | MLTX-02-004-EN-5700, MLTX-02-004-EN-6960 → MLTX-02-004-EN-5700 |
| MLTX-02-004-EN-7270 | Material Approval for Package AC Units | 2026-07-07 A → 2026-05-21 A (-47d) | 2026-07-07 A → 2026-05-21 A (-47d) | 15d → 1d | MLTX-02-004-EN-7260, MLTX-02-004-EN-7290 → MLTX-02-004-EN-7260 |
| 17 | **AIR DIFUSSERS/GRILLS** | 2026-09-12 → 2026-04-13 (-152d) | 2026-09-12 → 2026-05-06 (-129d) |  |  |
| MLTX-02-004-EN-7290 | Material Submittal for Air Difussers/Grills | 2026-09-12 A → 2026-04-13 A (-152d) | 2026-09-12 A → 2026-04-22 A (-143d) | 15d → 9d | MLTX-02-004-EN-5730, MLTX-02-004-EN-6990 → MLTX-02-004-EN-5730 |
| MLTX-02-004-EN-7300 | Material Approval for Air Difussers/Grills | 2026-09-12 A → 2026-05-06 A (-129d) | 2026-09-12 A → 2026-05-06 A (-129d) | 15d → 1d | MLTX-02-004-EN-7290, MLTX-02-004-EN-7000 → MLTX-02-004-EN-7290 |
| 2 | **BITUMINOUS BASE & WEARING COURSE** | 2026-03-24 → 2026-04-16 (+23d) | 2026-05-07 → 2026-04-18 (-19d) |  |  |
| MLTX-02-004-EN-7170 | Material Submittal for Bituminous Base & Wearing Cource | 2026-03-24 A → 2026-04-16 A (+23d) | 2026-05-04 A → 2026-04-18 A (-16d) | 15d → 2d |  |
| MLTX-02-004-EN-7180 | Material Approval for the Site | 2026-03-28 A → 2026-04-18 A (+21d) | 2026-05-07 A → 2026-04-18 A (-19d) | 15d → 1d |  |
| 3 | **INTERLOCKING PAVING** | 2026-03-24 → 2026-05-21 (+58d) | 2026-05-07 → 2026-05-21 (+14d) |  |  |
| MLTX-02-004-EN-7200 | Material Submittal for Interlocking Block Pavers | 2026-03-24 A → 2026-05-21 A (+58d) | 2026-05-04 A → 2026-05-21 A (+17d) | 15d → 1d | MLTX-02-004-EN-5640, MLTX-02-004-EN-6880 → MLTX-02-004-EN-5640 |

| ID | Task | Start | Finish | Duration | Predecessors | Other |
| --- | --- | --- | --- | --- | --- | --- |
| MLTX-02-004-EN-7210 | Material Approval for Interlocking Block Pavers | 2026-03-28 A → 2026-05-21 A (+54d) | 2026-05-07 A → 2026-05-21 A (+14d) | 15d → 1d | MLTX-02-004-EN-7200, MLTX-02-004-EN-7510 → MLTX-02-004-EN-7200 |  |
| 4 | **MARKING PAINT** | 2026-03-24 → 2026-04-13 (+20d) | 2026-05-18 → 2026-04-19 (-29d) |  |  |  |
| MLTX-02-004-EN-7230 | Material Submittal for Marking Paint | 2026-03-24 A → 2026-04-13 A (+20d) | 2026-05-12 A → 2026-04-18 A (-24d) | 15d → 5d | MLTX-02-004-EN-5670, MLTX-02-004-EN-7140 → MLTX-02-004-EN-5670 |  |
| MLTX-02-004-EN-7240 | Material Approval for Marking Paint | 2026-03-28 A → 2026-04-18 A (+21d) | 2026-05-18 A → 2026-04-19 A (-29d) | 15d → 2d | MLTX-02-004-EN-7230, MLTX-02-004-EN-6870, MLTX-02-004-EN-6510 → MLTX-02-004-EN-7230 |  |
| 18 | **GALVANIZED DUCTS** | 2026-03-24 → 2026-06-13 (+81d) | 2026-05-10 → 2026-06-18 (+39d) |  |  |  |
| MLTX-02-004-EN-7320 | Material Submittal for Galvanized Duct | 2026-03-24 A → 2026-06-13 A (+81d) | 2026-05-05 A → 2026-06-13 A (+39d) | 15d → 1d | MLTX-02-004-EN-5760, MLTX-02-004-EN-6990 → MLTX-02-004-EN-5760 |  |
| MLTX-02-004-EN-7330 | Material Approval for Galvanized Duct | 2026-03-28 A → 2026-06-18 A (+82d) | 2026-05-10 A → 2026-06-18 A (+39d) | 15d → 1d | MLTX-02-004-EN-7320, MLTX-02-004-EN-7290 → MLTX-02-004-EN-7320 |  |
| 19 | **EXHAUST FANS** | 2026-09-12 → 2026-04-13 (-152d) | 2026-09-12 → 2026-05-06 (-129d) |  |  |  |
| MLTX-02-004-EN-7350 | Material Submittal for Exhaust Fans | 2026-09-12 A → 2026-04-13 A (-152d) | 2026-09-12 A → 2026-04-18 A (-147d) | 15d → 5d | MLTX-02-004-EN-5790, MLTX-02-004-EN-7210 → MLTX-02-004-EN-5790 |  |
| MLTX-02-004-EN-7360 | Material Approval for Exhaust Fans | 2026-09-12 A → 2026-05-06 A (-129d) | 2026-09-12 A → 2026-05-06 A (-129d) | 15d → 1d | MLTX-02-004-EN-7350, MLTX-02-004-EN-6960, MLTX-02-004-EN-6910 → MLTX-02-004-EN-7350 |  |
| 10 | **DISTRIBUTION BOARDS** | 2026-08-26 → 2026-04-13 (-135d) | 2026-08-26 → 2026-04-25 (-123d) |  |  |  |
| MLTX-02-004-EN-7380 | Material Submittal for Distribution Boards | 2026-08-26 A → 2026-04-13 A (-135d) | 2026-08-26 A → 2026-04-19 A (-129d) | 15d → 6d | MLTX-02-004-EN-5820, MLTX-02-004-EN-7000 → MLTX-02-004-EN-5820 |  |
| MLTX-02-004-EN-7390 | Material Approval for Distribution Boards | 2026-08-26 A → 2026-04-19 A (-129d) | 2026-08-26 A → 2026-04-25 A (-123d) | 15d → 6d | MLTX-02-004-EN-7380, MLTX-02-004-EN-3260 → MLTX-02-004-EN-7380 |  |
| 11 | **POWER CABLES** | 2026-03-24 → 2026-04-13 (+20d) | 2026-05-19 → 2026-04-20 (-29d) |  |  |  |
| MLTX-02-004-EN-7410 | Material Submittal for Power Cables | 2026-03-24 A → 2026-04-13 A (+20d) | 2026-05-14 A → 2026-04-18 A (-26d) | 15d → 5d |  |  |
| MLTX-02-004-EN-7420 | Material Approval for Power Cables | 2026-03-28 A → 2026-04-16 A (+19d) | 2026-05-19 A → 2026-04-20 A (-29d) | 15d → 4d |  |  |
| 12 | **LIGHT FIXTURES** | 2026-07-07 → 2026-04-13 (-85d) | 2026-07-07 → 2026-04-22 (-76d) |  |  |  |
| MLTX-02-004-EN-7440 | Material Submittal for Light Fixtures | 2026-07-07 A → 2026-04-13 A (-85d) | 2026-07-07 A → 2026-04-15 A (-83d) | 15d → 3d | MLTX-02-004-EN-5880, MLTX-02-004-EN-7140 → MLTX-02-004-EN-5880 |  |
| MLTX-02-004-EN-7450 | Material Approval for Light Fixtures | 2026-07-07 A → 2026-04-16 A (-82d) | 2026-07-07 A → 2026-04-22 A (-76d) | 15d → 6d | MLTX-02-004-EN-7440, MLTX-02-004-EN-7180 → MLTX-02-004-EN-7440 |  |
| 13 | **CCTV MATERIALS** | 2026-08-26 → 2026-04-13 (-135d) | 2026-09-12 → 2026-04-22 (-143d) |  |  |  |
| MLTX-02-004-EN-7470 | Material Submittal for CCTV | 2026-08-26 A → 2026-04-13 A (-135d) | 2026-08-26 A → 2026-04-15 A (-133d) | 15d → 3d | MLTX-02-004-EN-5910, MLTX-02-004-EN-7140 → MLTX-02-004-EN-5910 |  |
| MLTX-02-004-EN-7480 | Material Approval for CCTV | 2026-09-12 A → 2026-04-16 A (-149d) | 2026-09-12 A → 2026-04-22 A (-143d) | 15d → 6d | MLTX-02-004-EN-7470, MLTX-02-004-EN-7080 → MLTX-02-004-EN-7470 |  |
| 14 | **POWER OUTLETS/SWITCHES** | 2026-08-26 → 2026-05-06 (-112d) | 2026-08-26 → 2026-05-07 (-111d) |  |  |  |
| MLTX-02-004-EN-7500 | Material Submittal for Power Outlets/Switches | 2026-08-26 A → 2026-05-06 A (-112d) | 2026-08-26 A → 2026-05-06 A (-112d) | 15d → 1d | MLTX-02-004-EN-5940, MLTX-02-004-EN-7080 → MLTX-02-004-EN-5940 |  |
| MLTX-02-004-EN-7510 | Material Approval for Power Outlets/Switches | 2026-08-26 A → 2026-05-07 A (-111d) | 2026-08-26 A → 2026-05-07 A (-111d) | 15d → 1d | MLTX-02-004-EN-7500, MLTX-02-004-EN-7450 → MLTX-02-004-EN-7500 |  |
| LSC | **LANDSCAPE WORKS** | 2026-03-24 → 2026-04-13 (+20d) | 2026-09-12 → 2026-07-27 (-47d) |  |  |  |
| 7 | **INTERLOCKING PAVING** | 2026-03-25 → 2026-04-13 (+19d) | 2026-04-04 → 2026-04-22 (+18d) |  |  |  |
| MLTX-02-004-EN-7540 | Material Submittal for Interlocking Block Pavers | 2026-03-25 A → 2026-04-13 A (+19d) | 2026-03-28 A → 2026-04-15 A (+18d) | 15d → 3d |  |  |
| MLTX-02-004-EN-7550 | Material Approval for Interlocking Block Pavers | 2026-03-29 A → 2026-04-16 A (+18d) | 2026-04-04 A → 2026-04-22 A (+18d) | 15d → 6d |  |  |
| 9 | **CURBSTONE** | 2026-03-25 → 2026-04-13 (+19d) | 2026-04-04 → 2026-04-22 (+18d) |  |  |  |
| MLTX-02-004-EN-7570 | Material Submittal for Curbstone | 2026-03-25 A → 2026-04-13 A (+19d) | 2026-03-28 A → 2026-04-15 A (+18d) | 15d → 3d | MLTX-02-004-EN-6010, MLTX-02-004-EN-7600 → MLTX-02-004-EN-6010 |  |
| MLTX-02-004-EN-7580 | Material Approval for Curbstone | 2026-03-29 A → 2026-04-16 A (+18d) | 2026-04-04 A → 2026-04-22 A (+18d) | 15d → 6d | MLTX-02-004-EN-7570, MLTX-02-004-EN-7750 → MLTX-02-004-EN-7570 |  |
| 1 | **PAVEMENT MARKING** | 2026-03-24 → 2026-04-13 (+20d) | 2026-05-18 → 2026-04-19 (-29d) |  |  |  |
| MLTX-02-004-EN-7600 | Material Submittal for Pavement Markings | 2026-03-24 A → 2026-04-13 A (+20d) | 2026-05-12 A → 2026-04-18 A (-24d) | 15d → 5d | MLTX-02-004-EN-6040, MLTX-02-004-EN-7500 → MLTX-02-004-EN-6040 |  |
| MLTX-02-004-EN-7610 | Material Approval for Pavement Markings | 2026-03-28 A → 2026-04-18 A (+21d) | 2026-05-18 A → 2026-04-19 A (-29d) | 15d → 2d | MLTX-02-004-EN-7600, MLTX-02-004-EN-7510 → MLTX-02-004-EN-7600 |  |
| 2 | **TRAFFIC SIGNS** | 2026-03-24 → 2026-04-13 (+20d) | 2026-05-18 → 2026-04-22 (-26d) |  |  |  |
| MLTX-02-004-EN-7630 | Material Submittal for Traffic Signs | 2026-03-24 A → 2026-04-13 A (+20d) | 2026-05-12 A → 2026-04-15 A (-27d) | 15d → 3d | MLTX-02-004-EN-6070, MLTX-02-004-EN-7510 → MLTX-02-004-EN-6070 |  |
| MLTX-02-004-EN-7640 | Material Approval for Traffic Signs | 2026-03-28 A → 2026-04-16 A (+19d) | 2026-05-18 A → 2026-04-22 A (-26d) | 15d → 6d | MLTX-02-004-EN-7630, MLTX-02-004-EN-7750 → MLTX-02-004-EN-7630 |  |
| 3 | **IRRIGATION PIPES/SPRINKLERS** | 2026-09-12 → 2026-04-13 (-152d) | 2026-09-12 → 2026-07-27 (-47d) |  |  |  |
| MLTX-02-004-EN-7660 | Material Submittal for Irrigation Pipes/Sprinkles | 2026-09-12 A → 2026-04-13 A (-152d) | 2026-09-12 A → 2026-04-18 A (-147d) | 15d → 5d | MLTX-02-004-EN-6100, MLTX-02-004-EN-7690 → MLTX-02-004-EN-6100 |  |
| MLTX-02-004-EN-7670 | Material Approval for Irrigation Pipes/Sprinkles | 2026-09-12 A → 2026-07-27 A (-47d) | 2026-09-12 A → 2026-07-27 A (-47d) | 15d → 6d | MLTX-02-004-EN-7660, MLTX-02-004-EN-7700 → MLTX-02-004-EN-7660 |  |
| 5 | **AGRICULTURE SOIL** | 2026-03-24 → 2026-05-06 (+43d) |  |  |  |  |
| MLTX-02-004-EN-7690 | Material Submittal for Agriculture Soil | 2026-03-24 A → 2026-05-06 A (+43d) | 2026-05-16 A → 2026-05-06 A (-10d) | 15d → 1d | MLTX-02-004-EN-6130, MLTX-02-004-EN-7720 → MLTX-02-004-EN-6130 |  |
| MLTX-02-004-EN-7700 | Material Approval for Agriculture Soil | 2026-03-28 A → 2026-05-21 A (+54d) |  | 15d → 1d | MLTX-02-004-EN-7690, MLTX-02-004-EN-7720 → MLTX-02-004-EN-7690 |  |
| 8 | **TRACK SURFACE** | 2026-09-12 → 2026-05-06 (-129d) | 2026-09-12 → 2026-05-21 (-114d) |  |  |  |
| MLTX-02-004-EN-7720 | Material Submittal for Track Surface | 2026-09-12 A → 2026-05-06 A (-129d) | 2026-09-12 A → 2026-05-06 A (-129d) | 15d → 1d | MLTX-02-004-EN-6160, MLTX-02-004-EN-5430 → MLTX-02-004-EN-6160 |  |
| MLTX-02-004-EN-7730 | Material Approval for Track Surface | 2026-09-12 A → 2026-05-21 A (-114d) | 2026-09-12 A → 2026-05-21 A (-114d) | 15d → 1d | MLTX-02-004-EN-7720, MLTX-02-004-EN-6990 → MLTX-02-004-EN-7720 |  |
| 10 | **GRASS/TREES** | 2026-03-24 → 2026-05-06 (+43d) |  |  |  |  |
| MLTX-02-004-EN-7750 | Material Submittal for Grass/Trees | 2026-03-24 A → 2026-05-06 A (+43d) | 2026-05-16 A → 2026-05-06 A (-10d) | 15d → 1d | MLTX-02-004-EN-6190, MLTX-02-004-EN-7510 → MLTX-02-004-EN-6190 |  |
| MLTX-02-004-EN-7760 | Material Approval for Grass/Trees | 2026-03-28 A → 2026-05-21 A (+54d) |  | 15d → 1d | MLTX-02-004-EN-7750, MLTX-02-004-EN-7720 → MLTX-02-004-EN-7750 |  |
| 6 | **CABLES** | 2026-03-24 → 2026-04-13 (+20d) | 2026-05-19 → 2026-04-20 (-29d) |  |  |  |
| MLTX-02-004-EN-7780 | Material Submittal for Cables | 2026-03-24 A → 2026-04-13 A (+20d) | 2026-05-14 A → 2026-04-18 A (-26d) | 15d → 5d |  |  |
| MLTX-02-004-EN-7790 | Material Approval for Cables | 2026-03-28 A → 2026-04-16 A (+19d) | 2026-05-19 A → 2026-04-20 A (-29d) | 15d → 4d |  |  |
| 4 | **LIGHT POLES** | 2026-07-11 → 2026-04-13 (-89d) | 2026-07-11 → 2026-05-06 (-66d) |  |  |  |
| MLTX-02-004-EN-7810 | Material Submittal for Lighting poles | 2026-07-11 A → 2026-04-13 A (-89d) | 2026-07-11 A → 2026-04-20 A (-82d) | 15d → 7d |  |  |
| MLTX-02-004-EN-7820 | Material Approval for Lighting poles | 2026-07-11 A → 2026-04-16 A (-86d) | 2026-07-11 A → 2026-05-06 A (-66d) | 15d → 18d |  |  |
| CONST | **CONSTRUCTION PHASE** | 2026-04-04 → 2026-04-27 (+23d) | 2027-03-09 → 2027-02-20 (-17d) |  |  |  |
| SW | **SITE WORKS** | 2026-04-04 → 2026-04-27 (+23d) | 2027-03-09 → 2027-02-20 (-17d) |  |  |  |
| 1 | **EARTH WORKS** | 2026-04-04 → 2026-04-27 (+23d) | 2026-08-08 → 2026-08-12 (+4d) |  |  |  |
| MLTX-02-004-CN-9930 | Excavation (in all types of soil) including Compaction (Playground Area) | 2026-04-06 A → 2026-04-27 A (+21d) | 2026-04-12 A → 2026-05-11 A (+29d) | 21d → 12.75d | MLTX-02-004-EN-12150 → MLTX-02-004-CN-9940 | resources Labor [300 h]; Driver [380 h]; Excavator [180 h]; Loader [50 h]; Water Tanker [120 h]; Dump Truck [240 h]; Milling machine [60 h]; Excavation in any type of soil from existing level [1647.2] → Labor [300 h]; Driver [380 h]; Excavator [140 h]; Loader [50 h]; Water Tanker [80 h]; Dump Truck [200 h]; Milling machine [40 h]; Excavation in any type of soil from existing level [1600] |
| MLTX-02-004-CN-9950 | Excavation (in all types of soil) including Compaction (Landscape Area) | 2026-04-06 A → 2026-04-29 A (+23d) | 2026-08-05 A → 2026-05-19 A (-78d) | 12d → 17.35d |  | resources Labor [400 h]; Driver [200 h]; Excavator [210 h]; Loader [150 h]; Water Tanker [150 h]; Dump Truck [280 h]; Milling machine [70 h]; Excavation in any type of soil from existing level [1029.5] → Labor [400 h]; Driver [200 h]; Excavator [140 h]; Loader [130 h]; Water Tanker [100 h]; Dump Truck [200 h]; Milling machine [40 h]; Excavation in any type of soil from existing level [3303] |
| MLTX-02-004-CN-9940 | Excavation (in all types of soil) including Compaction (Service/Toilet Building) | 2026-04-04 A → 2026-05-06 A (+32d) | 2026-08-02 A → 2026-05-16 A (-78d) | 20d → 8.04d | MLTX-02-004-EN-4360 → MLTX-02-004-EN-2950 | resources Labor [300 h]; Driver [80 h]; Excavator [60 h]; Loader [60 h]; Water Tanker [60 h]; Dump Truck [80 h]; Milling machine [20 h]; Excavation in any type of soil from existing level [205.9] → Labor [300 h]; Driver [80 h]; Excavator [60 h]; Loader [60 h]; Water Tanker [60 h]; Dump Truck [80 h]; Milling machine [20 h]; Excavation in any type of soil from existing level [510] |
| MLTX-02-004-CN-9960 | Backfilling on Layers (Selected Soil) including Compaction (Playground Area) | 2026-04-13 A → 2026-05-17 A (+34d) | 2026-05-03 A → 2026-06-13 A (+41d) | 20d → 20.4d | MLTX-02-004-MS-1060, MLTX-02-004-CN-9930, MLTX-02-004-MS-1050 → MLTX-02-004-CN-9930 | resources Labor [550 h]; Driver [300 h]; Loader [120 h]; Water Tanker [150 h]; Compactor [200 h]; Backfilling with selected fill material [1642.56] → Labor [550 h]; Driver [300 h]; Loader [130 h]; Water Tanker [100 h]; Compactor [100 h]; Backfilling with selected fill material [1800] |
| MLTX-02-004-CN-9970 | Backfilling on Layers (Selected Soil) including Compaction (Service/Toilet Building) | 2026-04-06 A → 2026-05-17 A (+41d) | 2026-04-08 A → 2026-06-09 A (+62d) | 19d → 17.8d | MLTX-02-004-CN-9940 SS, MLTX-02-004-CN-9940 FF → MLTX-02-004-CN-9940 | resources Labor [300 h]; Driver [140 h]; Loader [90 h]; Water Tanker [90 h]; Compactor [60 h]; Backfilling with selected fill material [205.32] → Labor [300 h]; Driver [140 h]; Loader [90 h]; Water Tanker [80 h]; Compactor [60 h]; Backfilling with selected fill material [500] |
| MLTX-02-004-CN-9980 | Backfilling on Layers (Selected Soil) including Compaction (Landscape Area) | 2026-04-21 A → 2026-06-08 A (+48d) | 2026-08-08 A → 2026-07-04 A (-35d) | 8d → 23d | MLTX-02-004-CN-9950 SS, MLTX-02-004-CN-9950 FF → MLTX-02-004-CN-9950 | resources Labor [600 h]; Driver [300 h]; Loader [60 h]; Water Tanker [150 h]; Compactor [200 h]; Backfilling with selected fill material [1026.6] → Labor [300 h]; Driver [150 h]; Loader [30 h]; Water Tanker [50 h]; Compactor [50 h]; Backfilling with selected fill material [875] |
| 4 | **LANDSCAPE WORKS** | 2026-05-16 → 2026-05-23 (+7d) | 2027-03-09 → 2027-02-20 (-17d) |  |  |  |
| 4 | **PLAYGROUND AREA** | 2026-05-18 → 2026-05-23 (+5d) | 2027-03-09 → 2027-02-07 (-30d) |  |  |  |
| 6 | **FOOTBALL PLAYGROUND** | 2026-05-18 → 2026-05-23 (+5d) |  |  |  |  |
| MLTX-02-004-CN-10020 | Preparation and Proofing for Subgrade (Football Playground) | 2026-05-18 A → 2026-05-23 A (+5d) | 2026-05-31 A → 2026-05-24 A (-7d) | 20d → 1.2d |  | resources Labor [500 h]; Skilled Labor [200 h]; Driver [300 h]; Forklift [270 h]; Football playground [250] → Labor [500 h]; Skilled Labor [200 h]; Driver [300 h]; Forklift [270 h]; Football playground [100] |
| MLTX-02-004-CN-10030 | Backfilling and Compaction of Base Layers (Football Playground) | 2026-06-01 A → 2026-05-24 A (-8d) | 2026-06-23 A → 2026-07-04 A (+11d) | 21d → 32.4d |  | resources Labor [700 h]; Skilled Labor [250 h]; Driver [350 h]; Loader [150 h]; Dump Truck [440 h]; Compactor [220 h]; Football playground [50] → Labor [597 h]; Skilled Labor [213 h]; Driver [299 h]; Loader [68 h]; Dump Truck [171 h]; Compactor [85 h]; Football playground [85] |

| ID | Task | Start | Finish | Duration | Complete | Total float | Predecessors | Other |
| --- | --- | --- | --- | --- | --- | --- | --- | --- |
| MLTX-02-004-CN-10050 | Install Sport Equipments - Goal / Nets - (Football Playground) | 2026-12-26 → 2027-01-13 (+18d) | 2027-01-18 → 2027-01-23 (+5d) | 20d → 9d |  | -32.1d → -15d | MLTX-02-004-EN-3610, Aggregate basecourse layer (Padel Playground), MLTX-02-004-CN-10630, Aggregate basecourse layer (Football Playground), MLTX-02-004-CN-10190 → MLTX-02-004-EN-3610, MLTX-02-004-CN-10040, MLTX-02-004-CN-10430, MLTX-02-004-CN-10060 SS | resources Labor [390 h]; Skilled Labor [150 h]; Driver [100 h]; Crane [140 h]; Football playground [100] → Labor [390 h]; Skilled Labor [150 h]; Driver [100 h]; Crane [140 h]; Football playground [250] |
| MLTX-02-004-CN-10060 | Surface Marking and Painting (Football Playground) | 2027-02-11 → 2027-01-13 (-29d) | 2027-02-14 → 2027-01-21 (-24d) | 2d → 8d |  | -44.1d → -15d | MLTX-02-004-PR-10360, Finishing Asphalt & Concrete Surface (Football Playground), MLTX-02-004-CN-12320, MLTX-02-004-PR-10880 → MLTX-02-004-CN-10040, MLTX-02-004-CN-10430 |  |
| 7 | **PADEL PLAYGROUND** | 2026-05-18 → 2026-05-23 (+5d) | 2027-02-13 → 2027-01-24 (-20d) |  |  |  |  |  |
| MLTX-02-004-CN-10080 | Preparation and Proofing for Subgrade (Padel Playground) | 2026-05-18 A → 2026-05-23 A (+5d) | 2026-05-31 A → 2026-05-23 A (-8d) | 20d → 1d |  |  |  | resources Labor [300 h]; Skilled Labor [150 h]; Driver [200 h]; Forklift [180 h]; Padel playgound [70] → Labor [300 h]; Skilled Labor [150 h]; Driver [200 h]; Forklift [90 h]; Padel playgound [70] |
| MLTX-02-004-CN-10090 | Backfilling and Compaction of Base Layers (Padel Playground) | 2026-06-01 A → 2026-05-24 A (-8d) | 2026-06-23 A → 2026-07-04 A (+11d) | 21d → 32.4d |  |  | MLTX-02-004-CN-10030, MLTX-02-004-CN-10080, MLTX-02-004-PR-9000, MLTX-02-004-EN-7180 → MLTX-02-004-PR-9030, MLTX-02-004-PR-9000, MLTX-02-004-CN-10080 | resources Labor [550 h]; Skilled Labor [200 h]; Driver [280 h]; Loader [150 h]; Dump Truck [360 h]; Compactor [180 h]; Padel playgound [10] → Labor [477 h]; Skilled Labor [173 h]; Driver [243 h]; Loader [69 h]; Dump Truck [173 h]; Compactor [87 h]; Padel playgound [35] |
| MLTX-02-004-CN-10110 | Install Sport Equipments - Goal / Nets - (Padel Playground) | 2027-01-23 → 2027-01-13 (-10d) | 2027-02-09 → 2027-01-24 (-16d) | 15d → 10d |  | -36.1d → -15d | MLTX-02-004-EN-3630, Finishing Asphalt & Concrete Surface (Football Playground), Finishing Asphalt & Concrete Surface (Padel Playground), MLTX-02-004-CN-10050, MLTX-02-004-CN-13550 → MLTX-02-004-PR-8970, MLTX-02-004-CN-10100, MLTX-02-004-CN-10050 SS, MLTX-02-004-CN-10100 FF, MLTX-02-004-CN-10050 FF | resources Labor [950 h]; Skilled Labor [440 h]; Driver [260 h]; Crane [160 h]; Padel playgound [50] → Labor [950 h]; Skilled Labor [440 h]; Driver [260 h]; Crane [160 h]; Padel playgound [30] |
| MLTX-02-004-CN-10120 | Surface Marking and Painting (Padel Playground) | 2027-02-24 → 2027-01-16 (-39d) | 2027-03-02 → 2027-01-24 (-37d) | 5d → 8d |  | -52.1d → -15d | MLTX-02-004-CN-12160 SS, MLTX-02-004-PR-10360, MLTX-02-004-CN-10060, Finishing Asphalt & Concrete Surface (Football Playground) → MLTX-02-004-CN-10100, MLTX-02-004-CN-10110 SS, MLTX-02-004-CN-10110 FF |  |
| 8 | **BASKETBALL PLAYGROUND** | 2026-05-18 → 2026-05-23 (+5d) | 2027-02-13 → 2027-02-07 (-6d) |  |  |  |  |  |
| MLTX-02-004-CN-10190 | Backfilling and Compaction of Base Layers (Basketball Playground) | 2026-06-01 A → 2026-05-24 A (-8d) | 2026-06-23 A → 2026-07-04 A (+11d) | 21d → 32.4d |  |  | MLTX-02-004-PR-9000, MLTX-02-004-EN-7240, Preparation and Proofing for Subgrade (Basketball Playground), MLTX-02-004-CN-10030, MLTX-02-004-EN-7180, MLTX-02-004-PR-7950, MLTX-02-004-CN-10160 → MLTX-02-004-CN-10180 | resources Labor [400 h]; Skilled Labor [200 h]; Driver [300 h]; Loader [150 h]; Dump Truck [400 h]; Compactor [200 h]; Basketball playground [24.93] → Labor [352 h]; Skilled Labor [176 h]; Driver [264 h]; Loader [70 h]; Dump Truck [176 h]; Compactor [88 h]; Basketball playground [47] |
| MLTX-02-004-CN-10210 | Install Sport Equipments - Goal / Nets - (Basketball Playground) | 2026-12-26 → 2027-01-13 (+18d) | 2027-01-06 → 2027-01-30 (+24d) | 10d → 15d |  | -23.1d → -13d | MLTX-02-004-EN-3620, Aggregate basecourse layer (Padel Playground), MLTX-02-004-CN-10630, Aggregate basecourse layer (Football Playground), MLTX-02-004-CN-10190 → MLTX-02-004-CN-10110 SS, MLTX-02-004-CN-10200, MLTX-02-004-CN-10110 FF | resources Labor [200 h]; Skilled Labor [90 h]; Driver [100 h]; Crane [140 h]; Basketball playground [127.5] → Labor [200 h]; Skilled Labor [90 h]; Driver [100 h]; Crane [140 h]; Basketball playground [133.33] |
| MLTX-02-004-CN-10220 | Surface Marking and Painting (Basketball Playground) | 2027-03-02 → 2027-01-31 (-30d) | 2027-03-04 → 2027-02-07 (-25d) | 2d → 7d |  | -52.1d → -20d | MLTX-02-004-CN-10120, MLTX-02-004-CN-12210 SS, MLTX-02-004-PR-10360, MLTX-02-004-CN-10060 → MLTX-02-004-CN-10200, MLTX-02-004-CN-10120, MLTX-02-004-CN-10210 SS, MLTX-02-004-CN-12200, MLTX-02-004-CN-10060, MLTX-02-004-CN-10210 FF | resources Skilled Labor [250 h]; Painter [240 h]; Basketball playground [25.5] → Skilled Labor [250 h]; Painter [240 h]; Basketball playground [26.67] |
| 9 | **PADEL FENCE** | 2026-08-06 → 2026-08-16 (+10d) | 2027-03-09 → 2026-12-09 (-90d) |  |  |  |  |  |
| MLTX-02-004-CN-10240 | Excavation for Fence | 2026-08-06 A → 2026-08-16 A (+10d) | 2026-08-06 A → 2026-08-16 A (+10d) | 8d → 5d |  |  | MLTX-02-004-CN-10190, MLTX-02-004-EN-4480 → MLTX-02-004-CN-10190R | resources Labor [250 h]; Driver [160 h]; Excavator [120 h]; Dump Truck [160 h]; Supply and install of padel playground fence [0.01] → Labor [250 h]; Driver [160 h]; Excavator [80 h]; Dump Truck [160 h]; Supply and install of padel playground fence [0.1] |
| MLTX-02-004-CN-10250 | Concrete Foundation for Fence including Posts Fixation | 2026-08-15 A → 2026-08-25 A (+10d) | 2026-08-19 A → 2026-09-01 A (+13d) | 7d → 5d |  |  | MLTX-02-004-CN-10240 SS, MLTX-02-004-CN-10240 FF → MLTX-02-004-CN-10240 | resources Skilled Labor [150 h]; Driver [100 h]; Steel Fixer [140 h]; Supply and install of padel playground fence [0.01] → Skilled Labor [150 h]; Driver [100 h]; Steel Fixer [140 h]; Supply and install of padel playground fence [0.2] |
| MLTX-02-004-CN-10251 | Backfilling and Reinstatement for Concrete Foundation | 2026-10-13 A → 2026-10-08 A (-5d) | 2026-10-13 A → 2026-10-08 A (-5d) | 18d → 4d |  |  | MLTX-02-004-CN-10250 SS, MLTX-02-004-CN-10250 FF → MLTX-02-004-CN-10250 SS, MLTX-02-004-CN-10250 |  |
| MLTX-02-004-CN-10260 | Tempered Glass Fenc Installation and Fixation | 2027-01-23 → 2026-12-06 (-48d) | 2027-02-09 → 2026-12-07 (-64d) | 15d → 2d |  | -44.1d → 23d | MLTX-02-004-CN-10251 SS, MLTX-02-004-CN-10251 FF, MLTX-02-004-PR-8930, MLTX-02-004-CN-13550 → MLTX-02-004-EN-4480, MLTX-02-004-CN-10251 SS, MLTX-02-004-CN-10251, MLTX-02-004-CN-10251 FF, MLTX-02-004-CN-10240 | resources Skilled Labor [250 h]; Driver [180 h]; Crane [240 h]; Supply and install of padel playground fence [0.37] → Skilled Labor [250 h]; Driver [180 h]; Crane [240 h]; Supply and install of padel playground fence [0.4] |
| MLTX-02-004-CN-10270 | Chain Link Fence Installation and Fixation | 2027-01-23 → 2026-12-08 (-46d) | 2027-02-09 → 2026-12-09 (-62d) | 15d → 2d |  | -44.1d → 23d | MLTX-02-004-CN-10260 FF, MLTX-02-004-PR-8970, MLTX-02-004-CN-10260 SS, MLTX-02-004-CN-13550 → MLTX-02-004-CN-10260 FF, MLTX-02-004-CN-10260 | resources Labor [200 h]; Skilled Labor [150 h]; Driver [150 h]; Crane [200 h]; Supply and install of padel playground fence [0.19] → Labor [200 h]; Skilled Labor [150 h]; Driver [150 h]; Crane [200 h]; Supply and install of padel playground fence [0.2] |
| MLTX-02-004-CN-10280 | Install of Fence Gates | 2027-02-06 → 2026-12-08 (-60d) | 2027-03-09 → 2026-12-09 (-90d) | 26d → 2d |  | -56.1d → 23d | MLTX-02-004-CN-10270 FF, MLTX-02-004-CN-10260 SS, MLTX-02-004-CN-10270 SS, MLTX-02-004-CN-10380 → MLTX-02-004-CN-10270 SS, MLTX-02-004-CN-10260 SS |  |
| 1 | **CURBSTOEN/INTERLOCK** | 2026-08-12 → 2026-08-10 (-2d) | 2026-11-15 → 2026-12-16 (+31d) |  |  |  |  |  |
| MLTX-02-004-CN-10150 | Concrete Works Under Curbstone | 2026-08-12 A → 2026-08-10 A (-2d) | 2026-08-12 A → 2026-08-10 A (-2d) | 12d → 15d |  |  | MLTX-02-004-EN-3460, MLTX-02-004-CN-10330, MLTX-02-004-EN-4450, Aggregate basecourse layer (Basketball Playground) → MLTX-02-004-CN-10330, MLTX-02-004-CN-9980R, MLTX-02-004-EN-3460, MLTX-02-004-EN-4450, MLTX-02-004-CN-10330 SS, MLTX-02-004-CN-9980R SS | resources Skilled Labor [200 h]; Kerb type K1A [151]; Kerb type K1B [15]; Kerb type K4 [908] → Skilled Labor [200 h]; Kerb type K1A [100]; Kerb type K1B [5]; Kerb type K4 [300] |
| MLTX-02-004-CN-10160 | Curbstone Installation | 2026-08-12 A → 2026-08-11 A (-1d) | 2026-08-23 A → 2026-08-16 A (-7d) |  |  |  | MLTX-02-004-PR-9560, MLTX-02-004-CN-10150, Perimeter Clamping System Installation, MLTX-02-004-CN-11430, Finishing Asphalt & Concrete Surface (Basketball Playground) → MLTX-02-004-PR-9840, MLTX-02-004-CN-10150 | resources Labor [940 h]; Skilled Labor [440 h]; Driver [340 h]; Forklift [240 h]; Kerb type K1A [352.33]; Kerb type K1B [35]; Kerb type K4 [2118.67] → Labor [940 h]; Skilled Labor [440 h]; Driver [340 h]; Forklift [300 h]; Kerb type K1A [300]; Kerb type K1B [30]; Kerb type K4 [300] |
| MLTX-02-004-CN-10140 | Interlock Installation (Grey Scale) for LandScape (Including Finishing Works) | 2026-09-21 A → 2026-12-06 (+76d) | 2026-11-15 A → 2026-12-16 (+31d) | 3d → 10d | 100% → 0% | none → -32d | MLTX-02-004-CN-10160, MLTX-02-004-PR-9520, MLTX-02-004-PR-9070 → MLTX-02-004-PR-9520, MLTX-02-004-PR-9070, MLTX-02-004-PR-9600, MLTX-02-004-CN-10160 | resources Labor [1000 h]; Skilled Labor [440 h]; Driver [540 h]; Forklift [330 h]; Interlock tiles grey scale with black marble chips 600*300*60mm zero joint [1683.33] → Labor [1000 h]; Skilled Labor [440 h]; Driver [540 h]; Forklift [330 h]; Interlock tiles grey scale with black marble chips 600*300*60mm zero joint [1466.67] |
| 10 | **AIR DOME** | 2026-05-16 → 2026-06-16 (+31d) | 2027-02-24 → 2027-02-10 (-14d) |  |  |  |  |  |
| 1 | **CIVIL WORKS** | 2026-05-16 → 2026-06-16 (+31d) | 2027-02-11 → 2027-01-04 (-38d) |  |  |  |  |  |
| MLTX-02-004-CN-10330 | Concrete Works for Foundations including Anchor Bolts (Air Dome) | 2026-07-22 A → 2026-07-11 A (-11d) | 2026-09-21 A → 2026-09-22 A (+1d) | 15d → 26d |  |  | MLTX-02-004-EN-3530, MLTX-02-004-EN-4490, MLTX-02-004-EN-2420, MLTX-02-004-EN-3520, Excavation for Foundation (Air Dome), MLTX-02-004-EN-3510, MLTX-02-004-CN-11120 → MLTX-02-004-CN-10320 | resources Skilled Labor [200 h]; Steel Fixer [180 h]; Design, supply, install, testing and commissioning of air dome [0.04] → Skilled Labor [200 h]; Steel Fixer [180 h]; Design, supply, install, testing and commissioning of air dome [392438] |
| MLTX-02-004-CN-10340 | Cable System Installation (Air Dome) | 2026-09-21 A → 2026-09-24 A (+3d) | 2026-09-21 A → 2026-10-12 A (+21d) |  |  |  |  | resources Labor [700 h]; Skilled Labor [250 h]; Driver [250 h]; Crane [300 h]; Design, supply, install, testing and commissioning of air dome → Labor [700 h]; Skilled Labor [250 h]; Driver [250 h]; Crane [300 h]; Design, supply, install, testing and commissioning of air dome [0.27] |
| MLTX-02-004-CN-10370 | Thermal Insulation Works (Air Dome) | 2027-01-19 → 2026-10-21 A (-90d) | 2027-02-11 → 2027-01-04 (-38d) | 20d → 14d | 0% → 25% | -53.1d → -34d | MLTX-02-004-CN-10360 SS, MLTX-02-004-CN-10360 FF, MLTX-02-004-CN-11740 → MLTX-02-004-PR-8090, MLTX-02-004-CN-10360 FF, MLTX-02-004-PR-9470 FF | resources Labor [500 h]; Skilled Labor [240 h]; Driver [100 h]; Crane [160 h]; Design, supply, install, testing and commissioning of air dome [0.08] → Labor [500 h]; Skilled Labor [240 h]; Driver [100 h]; Crane [160 h]; Design, supply, install, testing and commissioning of air dome [0.06] |
| MLTX-02-004-CN-10360 | Install of Membrane Covering System (Air Dome) | 2027-01-19 → 2026-12-20 (-30d) | 2027-02-11 → 2027-01-04 (-38d) | 20d → 14d |  | -53.1d → -34d | MLTX-02-004-PR-8650, Perimeter Clamping System Installation, MLTX-02-004-CN-11740, MLTX-02-004-PR-9890, MLTX-02-004-CN-10520 → MLTX-02-004-PR-9890, MLTX-02-004-CN-10570, MLTX-02-004-CN-10140 | resources Labor [500 h]; Skilled Labor [90 h]; Driver [100 h]; Crane [160 h]; Design, supply, install, testing and commissioning of air dome [0.17] → Labor [500 h]; Skilled Labor [90 h]; Driver [100 h]; Crane [160 h]; Design, supply, install, testing and commissioning of air dome [0.06] |
| 3 | **MECHANICAL WORKS** | 2027-01-19 → 2027-01-05 (-14d) | 2027-02-06 → 2027-01-19 (-18d) |  |  |  |  |  |
| MLTX-02-004-CN-10410 | Air Ducts and Grills Installation (Air Dome) | 2027-01-19 → 2027-01-05 (-14d) | 2027-02-06 → 2027-01-16 (-21d) | 15d → 10d |  | -48.1d → -34d | MLTX-02-004-EN-3660, MLTX-02-004-EN-3650, MLTX-02-004-PR-9230, MLTX-02-004-PR-9190, MLTX-02-004-PR-9910, MLTX-02-004-CN-10370 SS → MLTX-02-004-CN-10370, MLTX-02-004-CN-10360 | resources Labor [876.9 h]; Skilled Labor [353.8 h]; Crane [120 h]; Mechanical [269.2 h]; Design, supply, install, testing and commissioning of air dome [0.13] → Labor [876.9 h]; Skilled Labor [353.8 h]; Mechanical [269.2 h]; Crane [120 h]; Design, supply, install, testing and commissioning of air dome [0.11] |
| MLTX-02-004-CN-10420 | Air Units Installation (Air Dome) | 2027-01-27 → 2027-01-05 (-22d) | 2027-02-06 → 2027-01-19 (-18d) | 8d → 13d |  | -48.1d → -34d | MLTX-02-004-PR-9150, MLTX-02-004-CN-10410 FF, MLTX-02-004-CN-10410 SS → MLTX-02-004-CN-10410 SS | resources Labor [800 h]; Skilled Labor [440 h]; Driver [420 h]; Forklift [240 h]; Mechanical [160 h]; Design, supply, install, testing and commissioning of air dome [0.06] → Labor [800 h]; Skilled Labor [440 h]; Driver [420 h]; Mechanical [160 h]; Forklift [240 h]; Design, supply, install, testing and commissioning of air dome [0.06] |
| MLTX-02-004-CN-10430 | Exhaust Fans and Ducts Installation (Air Dome) | 2027-01-27 → 2027-01-05 (-22d) | 2027-02-06 → 2027-01-12 (-25d) | 8d → 7d |  | -48.1d → -24d | MLTX-02-004-PR-9270, MLTX-02-004-CN-10420 SS, MLTX-02-004-CN-10420 FF, MLTX-02-004-CN-10410 SS, MLTX-02-004-CN-10410 FF → MLTX-02-004-CN-10420 SS, MLTX-02-004-CN-10410 SS | resources Labor [700 h]; Skilled Labor [300 h]; Driver [370 h]; Forklift [210 h]; Mechanical [140 h]; Design, supply, install, testing and commissioning of air dome [0.03] → Labor [700 h]; Skilled Labor [300 h]; Driver [370 h]; Mechanical [140 h]; Forklift [210 h]; Design, supply, install, testing and commissioning of air dome [0.02] |
| 4 | **ELECTRICAL WORKS** | 2027-02-07 → 2026-10-07 (-123d) | 2027-02-24 → 2027-02-10 (-14d) |  |  |  |  |  |
| MLTX-02-004-CN-10450 | Light Fixture Works (Air Dome) | 2027-02-07 → 2026-10-07 A (-123d) | 2027-02-16 → 2027-01-19 (-28d) | 8d → 4d | 0% → 95% | -57.1d → -30d | MLTX-02-004-CN-10420 FF, MLTX-02-004-CN-10420 SS, MLTX-02-004-CN-10430 SS, MLTX-02-004-CN-10430 FF, MLTX-02-004-PR-9390, MLTX-02-004-PR-9350 → MLTX-02-004-CN-10420 FF, MLTX-02-004-CN-10430 FF, MLTX-02-004-EN-3770 |  |
| MLTX-02-004-CN-10460 | Distribution Board and Electrical Works (Air Dome) | 2027-02-07 → 2027-01-20 (-18d) | 2027-02-16 → 2027-01-23 (-24d) | 8d → 3d |  | -57.1d → -30d | MLTX-02-004-EN-3700, MLTX-02-004-CN-10450 FF, MLTX-02-004-CN-10450 SS, MLTX-02-004-EN-3730, MLTX-02-004-EN-3740, MLTX-02-004-EN-3690, MLTX-02-004-PR-9470, MLTX-02-004-PR-9310, MLTX-02-004-EN-3680, MLTX-02-004-PR-9350 → MLTX-02-004-CN-10450 SS, MLTX-02-004-CN-10450 |  |
| MLTX-02-004-CN-10470 | External Electrical Connection Works (Air Dome) | 2027-02-07 → 2027-01-24 (-14d) | 2027-02-16 → 2027-01-27 (-20d) | 8d → 4d |  | -57.1d → -30d | MLTX-02-004-CN-10460 FF, MLTX-02-004-CN-10460 SS → MLTX-02-004-CN-10460 SS, MLTX-02-004-CN-10460 | resources Skilled Labor [350 h]; Electrician [200 h]; Design, supply, install, testing and commissioning of air dome [0.03] → Skilled Labor [350 h]; Electrician [200 h]; Design, supply, install, testing and commissioning of air dome [0.05] |
| MLTX-02-004-CN-10480 | Emergency Generator Installation (Air Dome) | 2027-02-07 → 2027-01-28 (-10d) | 2027-02-16 → 2027-02-01 (-15d) | 8d → 4d |  | -57.1d → -30d | MLTX-02-004-CN-10470 FF, MLTX-02-004-EN-2600, MLTX-02-004-CN-10470 SS, MLTX-02-004-EN-2640, MLTX-02-004-EN-2610 → MLTX-02-004-CN-10470 SS, MLTX-02-004-CN-10470 | resources Skilled Labor [300 h]; Electrician [220 h]; Design, supply, install, testing and commissioning of air dome [0.09] → Skilled Labor [300 h]; Electrician [220 h]; Design, supply, install, testing and commissioning of air dome [0.11] |
| MLTX-02-004-CN-10490 | Control System Installation (Air Dome) | 2027-02-14 → 2027-02-07 (-7d) | 2027-02-24 → 2027-02-10 (-14d) | 8d → 4d |  | -63.1d → -34d | MLTX-02-004-CN-10480 FF, MLTX-02-004-EN-3770, MLTX-02-004-EN-3760, MLTX-02-004-EN-3780, MLTX-02-004-PR-9430 → MLTX-02-004-CN-10480 SS, MLTX-02-004-CN-10390, MLTX-02-004-CN-10480 | resources Skilled Labor [1000 h]; Electrician [500 h]; Design, supply, install, testing and commissioning of air dome → Skilled Labor [1000 h]; Electrician [500 h]; Design, supply, install, testing and commissioning of air dome [0.09] |
| 2 | **FINISHES WORKS** | 2027-01-19 → 2027-01-20 (+1d) | 2027-02-24 → 2027-02-06 (-18d) |  |  |  |  |  |
| MLTX-02-004-CN-10380 | Doors Installation Including Emergency, Entrance doors (Air Dome) | 2027-01-19 → 2027-01-20 (+1d) | 2027-02-06 → 2027-01-26 (-11d) | 15d → 6d |  | -56.1d → -34d | MLTX-02-004-CN-11740, MLTX-02-004-PR-9920 → MLTX-02-004-CN-10420 |  |
| MLTX-02-004-CN-10390 | Logo and Signs Installation (Air Dome) | 2027-02-21 → 2027-01-27 (-25d) | 2027-02-24 → 2027-02-06 (-18d) | 2d → 9d |  | -63.1d → -34d | MLTX-02-004-CN-10380 FF, MLTX-02-004-CN-10490 FF, MLTX-02-004-CN-10490 SS → MLTX-02-004-CN-10380 | resources Labor [1300 h]; Skilled Labor [900 h]; Driver [340 h]; Crane [120 h]; Design, supply, install, testing and commissioning of air dome [0.01] → Labor [1300 h]; Skilled Labor [900 h]; Driver [340 h]; Crane [120 h]; Design, supply, install, testing and commissioning of air dome [0.02] |
| 1 | **IRRIGATION NETWORK** | 2026-07-18 → 2026-08-20 (+33d) | 2026-11-14 → 2026-12-19 (+35d) |  |  |  |  |  |
| MLTX-02-004-CN-11430 | Installing of HDPE Pipes for Irrigation Network (Main Line) | 2026-07-18 A → 2026-08-20 A (+33d) | 2026-07-20 A → 2026-08-29 A (+40d) | 15d → 4d |  |  | MLTX-02-004-CN-10330 → MLTX-02-004-EN-3880, MLTX-02-004-EN-3920, MLTX-02-004-EN-4570, MLTX-02-004-CN-10160 | resources Labor [1000 h]; Driver [540 h]; Crane [220 h]; Mechanical [320 h]; Plumber [300 h]; HDPE Pipes pipe line O.D 90 mm PN 10, in depth 0 to 1.5 m [250] → Labor [1000 h]; Driver [540 h]; Mechanical [320 h]; Plumber [300 h]; Crane [220 h]; HDPE Pipes pipe line O.D 90 mm PN 10, in depth 0 to 1.5 m [500] |
| MLTX-02-004-CN-11440 | Installing of HDPE Pipes for Irrigation Network (Branch Lines) | 2026-08-24 A → 2026-08-29 A (+5d) | 2026-09-01 A → 2026-08-31 A (-1d) | 15d → 4d |  |  | MLTX-02-004-CN-11430, MLTX-02-004-EN-3880, MLTX-02-004-EN-3920, MLTX-02-004-PR-9680, MLTX-02-004-EN-4570, MLTX-02-004-CN-10160 → MLTX-02-004-CN-11430 | resources Labor [800 h]; Driver [240 h]; Crane [140 h]; Mechanical [240 h]; Plumber [240 h]; HDPE Pipes pipe line O.D 50 mm PN 10, in depth 0 to 1.5 m [116.67]; HDPE Pipes pipe line O.D 32 mm PN 10, in depth 0 to 1.5 m [250]; HDPE Pipes pipe line O.D 25 mm PN 10, in depth 0 to 1.5 m [683.33] → Labor [800 h]; Driver [240 h]; Mechanical [240 h]; Plumber [240 h]; Crane [140 h]; HDPE Pipes pipe line O.D 50 mm PN 10, in depth 0 to 1.5 m [200]; HDPE Pipes pipe line O.D 32 mm PN 10, in depth 0 to 1.5 m [600]; HDPE Pipes pipe line O.D 25 mm PN 10, in depth 0 to 1.5 m [1500] |
| MLTX-02-004-CN-11450 | Installing of Valves and fittings for Irrigation Network | 2026-09-10 A → 2026-09-24 A (+14d) | 2026-10-13 A → 2026-12-08 (+56d) | 10d → 4d | 100% → 80% | none → -38d | MLTX-02-004-CN-11440 → MLTX-02-004-CN-11500 FF, MLTX-02-004-CN-11830 FF, MLTX-02-004-CN-11770 FF, MLTX-02-004-CN-11820 FF, MLTX-02-004-CN-11620 FF, MLTX-02-004-CN-11760 FF, MLTX-02-004-CN-11790 FF, MLTX-02-004-CN-11750 FF, MLTX-02-004-CN-11440 | resources Labor [950 h]; Mechanical [160 h]; Plumber [260 h]; Gate valve 100 mm PN16 [0.67]; Gate valve 50 mm PN16 [3.67]; Gate valve 32 mm PN16 [4.67]; Flushing Bronze gate valve dia 1.5" inside PVC box [2]; Air release valve 1.5" inside PVC box [2] → Labor [950 h]; Mechanical [160 h]; Plumber [260 h]; Electrical Solenoid Valve ( 1") inside PVC box [5.33]; Gate valve 100 mm PN16 [1]; Gate valve 50 mm PN16 [5.33]; Gate valve 32 mm PN16 [8]; Flushing Bronze gate valve dia 1.5" inside PVC box [2.67]; Air release valve 1.5" inside PVC box [3.33] |
| MLTX-02-004-CN-11460 | Installing of Bubblers and Spreyers | 2026-11-10 A → 2026-12-16 (+36d) | 2026-11-14 A → 2026-12-19 (+35d) |  | 100% → 0% | none → -38d | MLTX-02-004-CN-11450, MLTX-02-004-PR-9720, MLTX-02-004-CN-11100 → MLTX-02-004-PR-9800, MLTX-02-004-CN-10550, MLTX-02-004-PR-9720 | resources Labor [1300 h]; Mechanical [240 h]; Plumber [240 h]; Pressure�compensating bubblers 110 Lit/Hr [5]; Pressure� bubblers 60 Lit/Hr [165]; Pop up sprayer 90?- 210?, Radius 3.0 mtr [200]; Pop up sprayer 360?,Radius 3.0 mtr. [310] → Labor [1300 h]; Mechanical [240 h]; Plumber [240 h]; Pressureâ€“compensating bubblers 110 Lit/Hr [6.67]; Pressureâ€“ bubblers 60 Lit/Hr [293.33]; Pop up sprayer 90?- 210?, Radius 3.0 mtr [400]; Pop up sprayer 360?,Radius 3.0 mtr. [550] |
| 5 | **NATURAL GROUND** | 2026-10-13 → 2026-12-09 (+57d) | 2026-11-26 → 2026-12-15 (+19d) |  |  |  |  |  |
| MLTX-02-004-CN-10550 | Compacted Natural Ground Soil Installation Works for Landscape | 2026-10-13 A → 2026-12-09 (+57d) | 2026-11-03 A → 2026-12-15 (+42d) | 5d → 6d | 100% → 0% | none → -38d | MLTX-02-004-CN-11450, MLTX-02-004-CN-11710 → MLTX-02-004-CN-11450, MLTX-02-004-CN-11710, MLTX-02-004-CN-11740 | resources Labor [1800 h]; Skilled Labor [1900 h]; Driver [370 h]; Water Tanker [270 h]; Dump Truck [360 h]; Compactor [180 h]; Compacted Natural ground soil [3333.33] → Labor [1800 h]; Skilled Labor [1900 h]; Driver [370 h]; Water Tanker [270 h]; Dump Truck [360 h]; Compactor [180 h]; Compacted Natural ground soil [5490] |
| 2 | **PLANTING** | 2026-10-03 → 2026-10-13 (+10d) | 2026-11-26 → 2027-01-23 (+58d) |  |  |  |  |  |
| MLTX-02-004-CN-10570 | Placement of Sweet/Agricultural Soil (Including Levelling and Grading) | 2026-10-03 A → 2026-10-13 A (+10d) | 2026-11-11 A → 2026-12-19 (+38d) |  | 100% → 80% | none → -34d | MLTX-02-004-EN-4470, MLTX-02-004-PR-9720, MLTX-02-004-CN-11710 → MLTX-02-004-PR-9640 FF, MLTX-02-004-CN-11460 FF | resources Labor [1850 h]; Driver [380 h]; Dump Truck [500 h]; Bobcat [280 h]; Cassia Glauca [25.5]; Plumeria Alba [25.5]; Neem [1.5]; Lawn [890] → Labor [1850 h]; Driver [380 h]; Dump Truck [500 h]; Bobcat [280 h]; Cassia Glauca [44]; Plumeria Alba [44]; Neem [1.5]; Lawn [1400] |
| MLTX-02-004-CN-10590 | Placement and Fixation of Trees | 2026-10-14 A → 2027-01-17 (+95d) | 2026-11-21 A → 2027-01-19 (+59d) |  | 100% → 0% | none → -22d | MLTX-02-004-CN-10520 SS → MLTX-02-004-CN-10410 | resources Labor [2250 h]; Skilled Labor [1500 h]; Driver [500 h]; Water Tanker [250 h]; Cassia Glauca [59.5]; Plumeria Alba [59.5]; Neem [3.5] → Labor [2250 h]; Skilled Labor [1500 h]; Driver [500 h]; Water Tanker [250 h]; Cassia Glauca [93]; Plumeria Alba [93]; Neem [3.5] |
| MLTX-02-004-CN-10580 | Placement of Lawn Ground Cover (Rolling and Compaction) | 2026-10-14 A → 2027-01-20 (+98d) | 2026-11-26 → 2027-01-23 (+58d) |  | 50% → 0% | 31.9d → -22d | MLTX-02-004-CN-10590 SS, MLTX-02-004-CN-10520 SS → MLTX-02-004-CN-10590 | resources Labor [2500 h]; Skilled Labor [1550 h]; Driver [540 h]; Water Tanker [250 h]; Lawn [2076.67] → Labor [2500 h]; Skilled Labor [1550 h]; Driver [540 h]; Water Tanker [250 h]; Lawn [3266.67] |
| 3 | **WALKING/BIKE PATHS** | 2026-06-01 → 2026-08-11 (+71d) | 2026-11-23 → 2027-01-23 (+61d) |  |  |  |  |  |
| MLTX-02-004-CN-10510 | Bike Path Preparation and Installation Works | 2026-06-01 A → 2026-08-11 A (+71d) | 2026-11-23 → 2027-01-23 (+61d) | 8d → 12d | 80% → 70% | -33.1d → -22d | MLTX-02-004-CN-9930, MLTX-02-004-CN-10160 → MLTX-02-004-PR-9760 FF, MLTX-02-004-CN-10580 FF | resources Skilled Labor [850 h]; Driver [460 h]; Bobcat [180 h]; Bike path [836.44] → Skilled Labor [850 h]; Driver [460 h]; Bobcat [180 h]; Bike path [832.5] |
| MLTX-02-004-CN-10520 | Walking Path Preparation and Installation Works | 2026-06-10 A → 2026-08-11 A (+62d) | 2026-11-23 → 2026-11-18 A (-5d) | 8d → 12d | 80% → 100% | -4.1d → none | MLTX-02-004-CN-10510 SS, MLTX-02-004-CN-10160 → MLTX-02-004-CN-10510 FF, MLTX-02-004-CN-10510 SS | resources Skilled Labor [850 h]; Driver [460 h]; Bobcat [180 h]; Walking path [803.1] → Skilled Labor [850 h]; Driver [460 h]; Bobcat [180 h]; Walking path [787.5] |
| 6 | **GENERAL/FURNITURE** | 2026-09-03 → 2026-09-29 (+26d) | 2027-02-17 → 2027-02-20 (+3d) |  |  |  |  |  |
| MLTX-02-004-CN-11710 | Preleminary Works for Site Light Poles Including Cable and Bases Works | 2026-09-03 A → 2026-09-29 A (+26d) | 2026-09-07 A → 2026-10-01 A (+24d) | 8d → 12d |  |  | MLTX-02-004-PR-9840, MLTX-02-004-EN-3970, MLTX-02-004-CN-10160, MLTX-02-004-EN-3950, MLTX-02-004-EN-3980, MLTX-02-004-EN-3440, MLTX-02-004-EN-4620, MLTX-02-004-EN-3960 → MLTX-02-004-EN-3970, MLTX-02-004-EN-3980, MLTX-02-004-EN-3950, MLTX-02-004-EN-3960, MLTX-02-004-CN-10160 | resources Labor [950 h]; Driver [340 h]; Electrician [460 h]; Forklift [240 h]; Supply, install, testing, and commissioning of ground mounted decorated landscape LED lighting with 6.0m height pole [12] → Labor [950 h]; Driver [340 h]; Electrician [460 h]; Forklift [240 h]; Supply, install, testing, and commissioning of ground mounted decorated landscape LED lighting with 6.0m height pole [32.2] |
| MLTX-02-004-CN-11800 | Installing of Site Light Poles |  | 2026-10-26 A → 2027-02-02 (+99d) | 22d → 11d | 100% → 92% | none → -7d | MLTX-02-004-CN-11710, MLTX-02-004-PR-9930 → MLTX-02-004-CN-10580 FF, MLTX-02-004-CN-10610 FF, MLTX-02-004-PR-9930 | resources Skilled Labor [700 h]; Electrician [500 h]; Crane [140 h]; Supply, install, testing, and commissioning of ground mounted decorated landscape LED lighting with 6.0m height pole [28] → Skilled Labor [700 h]; Electrician [500 h]; Crane [140 h]; Supply, install, testing, and commissioning of ground mounted decorated landscape LED lighting with 6.0m height pole [75.13] |
| MLTX-02-004-CN-10610 | Stamped Concrete Works for LandScape (Including Finishing Works) | 2026-10-14 A → 2027-01-24 (+102d) | 2026-12-14 → 2027-02-02 (+50d) | 18d → 9d | 50% → 0% | 12.9d → -16d | MLTX-02-004-CN-10520 SS, MLTX-02-004-CN-11710 → MLTX-02-004-MS-1150, MLTX-02-004-CN-10520 | resources Skilled Labor [850 h]; Steel Fixer [320 h]; Stamped concrete floor [600] → Skilled Labor [850 h]; Steel Fixer [320 h]; Stamped concrete floor [179.78] |
| MLTX-02-004-CN-10630 | Fixation and Installation of Steel Frame for Benches | 2026-11-23 → 2027-01-24 (+62d) | 2026-12-26 → 2027-01-31 (+36d) | 28d → 7d |  | -33.1d → -22d | MLTX-02-004-CN-10510, MLTX-02-004-EN-4430, MLTX-02-004-CN-11710 → MLTX-02-004-CN-10510 |  |
| MLTX-02-004-CN-10640 | Fixation and Installation of Benches | 2026-12-26 → 2027-02-01 (+37d) | 2027-01-11 → 2027-02-08 (+28d) | 14d → 7d |  | -33.1d → -22d | MLTX-02-004-CN-10630, MLTX-02-004-CN-11710 → MLTX-02-004-CN-10630, MLTX-02-004-CN-10280 |  |
| MLTX-02-004-CN-10650 | Fixation and Installation of Precast Concrete Seats (Rectangular) | 2026-12-26 → 2027-02-01 (+37d) | 2027-01-11 → 2027-02-08 (+28d) | 14d → 7d |  | -19.1d → -22d | MLTX-02-004-CN-10640 SS, MLTX-02-004-CN-10640 FF, MLTX-02-004-CN-11710, MLTX-02-004-CN-11800 → MLTX-02-004-CN-10640 SS, MLTX-02-004-CN-11710 | resources Skilled Labor [700 h]; Driver [420 h]; Crane [160 h]; Supply and install recycled precast concrete rectangular seats [28] → Skilled Labor [700 h]; Driver [420 h]; Crane [160 h]; Supply and install recycled precast concrete rectangular seats [37.33] |
| MLTX-02-004-CN-10660 | Fixation and Installation of Precast Concrete Seats (Circular) | 2027-01-11 → 2027-02-01 (+21d) | 2027-01-27 → 2027-02-09 (+13d) | 14d → 8d |  | -33.1d → -22d | MLTX-02-004-CN-10650 FF, MLTX-02-004-CN-10650 SS, MLTX-02-004-CN-11710, MLTX-02-004-CN-10640 → MLTX-02-004-CN-10650 SS, MLTX-02-004-CN-10650 FF | resources Skilled Labor [700 h]; Driver [420 h]; Crane [160 h]; Supply and install recycled precast concrete circular seats [24] → Skilled Labor [700 h]; Driver [420 h]; Crane [160 h]; Supply and install recycled precast concrete circular seats [32] |
| MLTX-02-004-CN-10670 | Fixation and Installation of Precast Concrete Trash Bins | 2027-02-15 → 2027-02-10 (-5d) | 2027-02-17 → 2027-02-20 (+3d) | 2d → 9d |  | -46.1d → -22d | MLTX-02-004-CN-10660, MLTX-02-004-CN-11940, MLTX-02-004-PR-9760, MLTX-02-004-CN-11710, MLTX-02-004-CN-12040, MLTX-02-004-CN-10570, Tartan Floor Installation Works for Landscape (Including Finishing Works) → MLTX-02-004-CN-10220, MLTX-02-004-CN-10660, MLTX-02-004-EN-4460, MLTX-02-004-CN-10610, MLTX-02-004-CN-10270, MLTX-02-004-CN-10640 | resources Skilled Labor [400 h]; Driver [320 h]; Crane [160 h]; Supply and install recycled precast concrete trash bins [8.33] → Skilled Labor [400 h]; Driver [320 h]; Crane [160 h]; Supply and install recycled precast concrete trash bins [10] |
| TO | **TOILET/SERVICE BUILDING** | 2026-05-24 → 2026-06-06 (+13d) | 2027-02-18 → 2026-12-13 (-67d) |  |  |  |  |  |
| 13 | **STRUCTURE WORKS** | 2026-05-24 → 2026-06-06 (+13d) | 2026-08-10 → 2026-07-26 (-15d) |  |  |  |  |  |
| 2 | **CONCRETE WORKS** | 2026-05-25 → 2026-06-14 (+20d) | 2026-07-02 → 2026-07-26 (+24d) |  |  |  |  |  |
| 1 | **SUB-STRUCTURE** | 2026-05-25 → 2026-06-14 (+20d) | 2026-06-06 → 2026-06-23 (+17d) |  |  |  |  |  |
| MLTX-02-004-CN-10750 | Plain Concrete Under Footing | 2026-05-25 A → 2026-06-14 A (+20d) | 2026-05-31 A → 2026-06-16 A (+16d) | 2d → 2.2d |  |  | MLTX-02-004-EN-6330, MLTX-02-004-EN-4370, MLTX-02-004-EN-3070, MLTX-02-004-EN-3060, MLTX-02-004-CN-10960, MLTX-02-004-EN-3080 → MLTX-02-004-EN-3060, MLTX-02-004-EN-3070, MLTX-02-004-EN-3080, MLTX-02-004-EN-4370, MLTX-02-004-EN-6330, MLTX-02-004-CN-10960, MLTX-02-004-CN-10930 |  |
| MLTX-02-004-CN-10800 | Reinforced Concrete Works for Slab on Grade Including Steel Fixing | 2026-06-03 A → 2026-06-15 A (+12d) | 2026-06-06 A → 2026-06-23 A (+17d) | 5d → 7.2d |  |  |  |  |

| ID | Task | Start | Finish | Duration | Complete | Total float | Predecessors | Other |
| --- | --- | --- | --- | --- | --- | --- | --- | --- |
| 2 | **SUPER-STRUCTURE** | 2026-06-28 → 2026-07-22 (+24d) | 2026-07-02 → 2026-07-26 (+24d) |  |  |  |  |  |
| MLTX-02-004-CN-10820 | AAC Panels Works for Walls | 2026-06-28 A → 2026-07-22 A (+24d) | 2026-06-30 A → 2026-07-23 A (+23d) | 7d → 12d |  |  |  | resources Labor [500 h]; Skilled Labor [200 h]; Driver [280 h]; Crane [160 h]; The autoclaved aerated panel for slabs, external and internal walls and parapet [150] → Labor [500 h]; Skilled Labor [200 h]; Driver [280 h]; Crane [100 h]; The autoclaved aerated panel for slabs, external and internal walls and parapet [150] |
| MLTX-02-004-CN-10830 | AAC Panels Works for Slabs | 2026-07-01 A → 2026-07-23 A (+22d) | 2026-07-01 A → 2026-07-26 A (+25d) | 2d → 10d |  |  |  |  |
| MLTX-02-004-CN-10840 | Parpet Works and Lintels | 2026-07-02 A → 2026-07-26 A (+24d) | 2026-07-02 A → 2026-07-26 A (+24d) | 3d → 8d |  |  |  | resources Labor [200 h]; Skilled Labor [60 h]; Driver [100 h]; Crane [60 h]; The autoclaved aerated panel for slabs, external and internal walls and parapet [50] → Labor [200 h]; Skilled Labor [60 h]; Driver [100 h]; Crane [50 h]; The autoclaved aerated panel for slabs, external and internal walls and parapet [50] |
| 1 | **UNDER GROUND SEPTIC TANK** | 2026-06-04 → 2026-06-06 (+2d) | 2026-07-06 → 2026-06-27 (-9d) |  |  |  |  |  |
| MLTX-02-004-CN-10860 | Plain Concrete Under Footing | 2026-06-04 A → 2026-06-06 A (+2d) | 2026-06-06 A → 2026-06-10 A (+4d) | 3d → 4d |  |  | MLTX-02-004-CN-10950 → MLTX-02-004-CN-10950, MLTX-02-004-CN-10920, MLTX-02-004-CN-10950 FF |  |
| MLTX-02-004-CN-10870 | Reinforced Concrete Works for Tank Foundation Including Shuttering and Steel Fixing | 2026-06-18 A → 2026-06-10 A (-8d) |  | 7d → 8.6d |  |  |  |  |
| MLTX-02-004-CN-10880 | Reinforced Concrete Works for Tank Walls Including Steel Fixing | 2026-06-20 A → 2026-06-17 A (-3d) | 2026-06-29 A → 2026-06-21 A (-8d) | 10d → 3.8d |  |  |  |  |
| MLTX-02-004-CN-10890 | Reinforced Concrete Works for Tank Slab Including Shuttering and Steel Fixing | 2026-07-02 A → 2026-06-22 A (-10d) | 2026-07-06 A → 2026-06-27 A (-9d) | 8d → 4.6d |  |  |  |  |
| 3 | **THERMAL & MOISTER PROTECTION** | 2026-05-24 → 2026-06-06 (+13d) | 2026-08-10 → 2026-07-22 (-19d) |  |  |  |  |  |
| 1 | **ANTI TERMIT CONTROL** | 2026-05-24 → 2026-06-06 (+13d) | 2026-06-03 → 2026-06-29 (+26d) |  |  |  |  |  |
| MLTX-02-004-CN-10920 | Anti Termite Works Under Foundation | 2026-05-31 A → 2026-06-06 A (+6d) | 2026-06-03 A → 2026-06-14 A (+11d) | 1d → 7.34d |  |  |  |  |
| MLTX-02-004-CN-10930 | Anti Termite Works Under Slab on Grade and Grade Beams | 2026-05-24 A → 2026-06-23 A (+30d) | 2026-05-25 A → 2026-06-29 A (+35d) | 1d → 5.4d |  |  |  |  |
| 2 | **POLYETHYLENE SHEET** | 2026-05-25 → 2026-06-06 (+12d) | 2026-06-04 → 2026-06-29 (+25d) |  |  |  |  |  |
| MLTX-02-004-CN-10950 | Water Proofing Under Blinding Concrete (Polythelen Sheet) | 2026-06-01 A → 2026-06-06 A (+5d) | 2026-06-04 A → 2026-06-14 A (+10d) | 1d → 7.34d |  |  | MLTX-02-004-EN-4820, MLTX-02-004-CN-10920, MLTX-02-004-EN-4380 → MLTX-02-004-EN-4380, MLTX-02-004-EN-4820, MLTX-02-004-CN-10920 SS |  |
| MLTX-02-004-CN-10960 | Water Proofing Under Slab on Grade (Polythelen Sheet) | 2026-05-25 A → 2026-06-23 A (+29d) | 2026-05-31 A → 2026-06-29 A (+29d) | 1d → 5.8d |  |  | MLTX-02-004-EN-4820, MLTX-02-004-CN-10930 → MLTX-02-004-CN-10930 SS, MLTX-02-004-CN-10870 |  |
| 4 | **EPOXY** | 2026-07-11 → 2026-07-14 (+3d) | 2026-08-10 → 2026-07-22 (-19d) |  |  |  |  |  |
| MLTX-02-004-CN-11000 | Surface Preparation for Epoxy Coating | 2026-07-11 A → 2026-07-14 A (+3d) | 2026-07-11 A → 2026-07-21 A (+10d) | 3d → 5d |  |  | MLTX-02-004-CN-10890, MLTX-02-004-CN-10880 → MLTX-02-004-CN-10890 | resources Labor [200 h]; Skilled Labor [90 h]; Provide and lay epoxy 2 coating for inner surfaces for RC walls, RC footings and bottom of the roof [7.5] → Labor [200 h]; Skilled Labor [90 h]; Provide and lay epoxy 2 coating for inner surfaces for RC walls, RC footings and bottom of the roof [7.99] |
| MLTX-02-004-CN-11010 | Epoxy Coating for Walls and Slab of Tank | 2026-07-28 A → 2026-07-21 A (-7d) | 2026-08-10 A → 2026-07-22 A (-19d) | 5d → 7d |  |  |  |  |
| 5 | **MASONARY WORK** | 2026-07-06 → 2026-07-26 (+20d) | 2026-07-08 → 2026-07-28 (+20d) |  |  |  |  |  |
| MLTX-02-004-CN-11030 | CMU Masonary Works Including all Accessories | 2026-07-06 A → 2026-07-26 A (+20d) | 2026-07-08 A → 2026-07-28 A (+20d) |  |  |  |  |  |
| 3 | **THERMAL & MOISTER PROTECTION** | 2026-09-10 → 2026-09-26 (+16d) | 2026-12-14 → 2026-10-19 (-56d) |  |  |  |  |  |
| MLTX-02-004-CN-11060 | Preparing Surface and Preliminary Works for Roofing and Wet Areas Insulation | 2026-09-20 A → 2026-09-26 A (+6d) | 2026-09-20 A → 2026-09-26 A (+6d) | 16d → 5d |  |  | MLTX-02-004-CN-11070 → MLTX-02-004-CN-10840 |  |
| MLTX-02-004-CN-11080 | Finalize Water Proofing Works for Roofing and Wet Areas | 2026-09-20 A → 2026-09-27 A (+7d) | 2026-12-14 → 2026-10-17 A (-58d) | 18d → 8d | 90% → 100% | -11.1d → none |  |  |
| MLTX-02-004-CN-11070 | Finalize Water Proofing Works for Toilets | 2026-09-12 A → 2026-10-06 A (+24d) | 2026-09-12 A → 2026-10-10 A (+28d) | 5d → 6d |  |  | MLTX-02-004-CN-11050 → MLTX-02-004-CN-11060 |  |
| MLTX-02-004-CN-11050 | Preparing Surface and Preliminary Works for Toilets Waterproofing | 2026-09-10 A → 2026-10-15 A (+35d) | 2026-09-10 A → 2026-10-19 A (+39d) |  |  |  | MLTX-02-004-CN-10840, MLTX-02-004-CN-11010 → MLTX-02-004-CN-10840, MLTX-02-004-CN-11010, MLTX-02-004-CN-10330 |  |
| 11 | **MECHANICAL WORK** | 2026-07-12 → 2026-07-04 (-8d) | 2027-01-17 → 2026-12-13 (-35d) |  |  |  |  |  |
| 4 | **HVAC SYSTEM** | 2026-07-12 → 2026-08-10 (+29d) | 2026-10-08 → 2026-12-06 (+59d) |  |  |  |  |  |
| MLTX-02-004-CN-11480 | Preliminary HVAC and Ventilation Works | 2026-07-12 A → 2026-08-10 A (+29d) | 2026-07-12 A → 2026-08-10 A (+29d) |  |  |  | MLTX-02-004-EN-2010, MLTX-02-004-EN-2050, MLTX-02-004-EN-4580, MLTX-02-004-EN-1990, MLTX-02-004-EN-4240, MLTX-02-004-EN-3150, MLTX-02-004-EN-4420, MLTX-02-004-EN-6690, MLTX-02-004-EN-6540, MLTX-02-004-EN-3110, MLTX-02-004-CN-11540, MLTX-02-004-PR-11820 → MLTX-02-004-CN-11310, MLTX-02-004-EN-3150, MLTX-02-004-EN-3160, MLTX-02-004-EN-3100, MLTX-02-004-EN-3120, MLTX-02-004-EN-3110, MLTX-02-004-EN-4580 |  |
| MLTX-02-004-CN-11490 | Exhaust, Air Ducts Installation with all Accessories | 2026-08-25 A → 2026-11-03 A (+70d) | 2026-08-29 A → 2026-12-06 A (+99d) | 6d → 8d |  |  | MLTX-02-004-CN-11580 → MLTX-02-004-PR-8450, MLTX-02-004-CN-11480 | resources Labor [200 h]; Skilled Labor [180 h]; Driver [60 h]; Crane [120 h]; Mechanical [120 h]; Supply, install, test and commission inline exhaust fans duct [1] → Labor [200 h]; Skilled Labor [180 h]; Driver [60 h]; Mechanical [120 h]; Crane [120 h]; Supply, install, test and commission inline exhaust fans duct [1] |
| MLTX-02-004-CN-11500 | Install and Finish HVAC and Ventilation Works Including Split Air Units | 2026-10-08 A → 2026-11-11 A (+34d) | 2026-10-08 A → 2026-11-18 A (+41d) | 4d → 6d |  |  | MLTX-02-004-CN-11490 FF, MLTX-02-004-PR-8330, MLTX-02-004-CN-11860 → MLTX-02-004-PR-8330, MLTX-02-004-CN-11260, MLTX-02-004-CN-11490 FF | resources Labor [150 h]; Skilled Labor [90 h]; Driver [60 h]; Crane [60 h]; Mechanical [60 h]; Supply and install split air conditioning unit (DX-MINI SPLIT UNIT) [1] → Labor [150 h]; Skilled Labor [90 h]; Driver [60 h]; Mechanical [60 h]; Crane [60 h]; Supply and install split air conditioning unit (DX-MINI SPLIT UNIT) [1] |
| 2 | **WATER SUPPLY SYSTEM** | 2026-07-21 → 2026-07-04 (-17d) | 2026-10-08 → 2026-12-10 (+63d) |  |  |  |  |  |
| MLTX-02-004-CN-11540 | Installing of PPR Pipes and Fittings for Water Network | 2026-07-21 A → 2026-07-04 A (-17d) | 2026-07-21 A → 2026-08-09 A (+19d) | 6d → 3d |  |  |  |  |
| MLTX-02-004-CN-11860 | Installing of Water Heater | 2026-09-29 A → 2026-11-01 A (+33d) | 2026-09-29 A → 2026-11-05 A (+37d) | 3d → 4d |  |  | Aggregate basecourse layer (Padel Playground) → MLTX-02-004-CN-11320 |  |
| MLTX-02-004-CN-11520 | Installing of Valves and Fittings | 2026-09-05 A → 2026-11-05 A (+61d) | 2026-09-05 A → 2026-11-11 A (+67d) | 5d → 2d |  |  | MLTX-02-004-CN-11540, MLTX-02-004-CN-11690, MLTX-02-004-CN-11550 → MLTX-02-004-CN-11050, MLTX-02-004-CN-11540 | resources Labor [100 h]; Plumber [40 h]; SERVICE CONNECTIONS 50 mm ? [13.33] → Labor [100 h]; Plumber [40 h]; SERVICE CONNECTIONS 50 mm [20] |
| MLTX-02-004-CN-11530 | Installing of HDPE Pipes and Valves for Water Supply Network | 2026-09-19 A → 2026-11-09 A (+51d) | 2026-10-08 A → 2026-11-10 A (+33d) | 7d → 3d |  |  | MLTX-02-004-CN-11520, MLTX-02-004-CN-11280, MLTX-02-004-PR-11870 → MLTX-02-004-CN-11520 | resources Labor [250 h]; Plumber [100 h]; SERVICE CONNECTIONS 50 mm ? [53.33] → Labor [250 h]; Plumber [100 h]; SERVICE CONNECTIONS 50 mm [80] |
| MLTX-02-004-CN-11560 | Installing of GRP Tanks | 2026-09-06 A → 2026-11-24 (+79d) | 2026-09-14 A → 2026-12-02 (+79d) | 20d → 8d | 100% → 0% | none → 37d | MLTX-02-004-CN-11590 → MLTX-02-004-CN-11270 | resources Skilled Labor [120 h]; Driver [100 h]; Crane [160 h]; Plumber [140 h]; Hot Press GRP Sectional Panel Water Tanks (4x3x3m) [0.33] → Skilled Labor [120 h]; Driver [100 h]; Plumber [140 h]; Crane [160 h]; Hot Press GRP Sectional Panel Water Tanks (4x3x3m) [0.67] |
| MLTX-02-004-CN-11550 | Installing of Booster Pump Units Including fittings and accessories | 2026-10-04 A → 2026-12-03 (+60d) | 2026-10-04 A → 2026-12-10 (+67d) | 20d → 7d | 100% → 0% | none → 37d | MLTX-02-004-CN-11860 → MLTX-02-004-CN-11560, MLTX-02-004-CN-11490 | resources Labor [200 h]; Plumber [80 h]; (2W+1S Pumps) - flow of each pump 5 L/S @ 30 Meters [0.33] → Labor [200 h]; Plumber [80 h]; (2W+1S Pumps) - flow of each pump 5 L/S @ 30 Meters [0.67] |
| 1 | **SEWER/DRAINAGE SYSTEM** | 2026-07-21 → 2026-07-04 (-17d) | 2026-10-12 → 2026-12-13 (+62d) |  |  |  |  |  |
| MLTX-02-004-CN-11590 | Installing UPVC Pipes for Sewage Network | 2026-07-21 A → 2026-07-04 A (-17d) | 2026-07-22 A → 2026-08-09 A (+18d) |  |  |  | MLTX-02-004-EN-3140, MLTX-02-004-PR-8290, MLTX-02-004-EN-3130, MLTX-02-004-EN-4540 → MLTX-02-004-CN-11070, MLTX-02-004-EN-3130, MLTX-02-004-EN-3140, MLTX-02-004-EN-4540, MLTX-02-004-PR-8290 |  |
| MLTX-02-004-CN-11580 | Installing UPVC Pipes for External Connection for Sewage Network |  | 2026-10-08 A → 2026-10-10 A (+2d) | 8d → 4d |  |  | MLTX-02-004-CN-11850, MLTX-02-004-CN-11540, MLTX-02-004-CN-11870 → MLTX-02-004-CN-11540 | resources Skilled Labor [90 h]; Plumber [30 h]; Supply and install 150 mm uPVC pipes to external wastewater network [16.67] → Skilled Labor [90 h]; Plumber [30 h]; Supply and install 150 mm uPVC pipes to external wastewater network [90] |
| MLTX-02-004-CN-11870 | Installing of Toilet Fixtures and Accessories Such as Closets and Basins | 2026-10-08 A → 2026-11-09 A (+32d) | 2026-10-12 A → 2026-11-12 A (+31d) | 21d → 9d |  |  | MLTX-02-004-CN-11860 → MLTX-02-004-PR-8210, MLTX-02-004-CN-11320 |  |
| MLTX-02-004-CN-11850 | Installing Inspection Chamber for Sewage Network | 2026-10-03 A → 2026-11-24 (+52d) | 2026-10-03 A → 2026-12-03 (+61d) | 10d → 9d | 100% → 0% | none → 43d |  | resources Driver [80 h]; Crane [80 h]; Plumber [80 h]; Supply, installation, testing and commissioning of Inspection chamber [1] → Driver [80 h]; Plumber [80 h]; Crane [80 h]; Supply, installation, testing and commissioning of Inspection chamber [1] |
| MLTX-02-004-CN-11600 | Installing of Plumping Fixtures and Accessories | 2026-10-04 A → 2026-12-12 (+69d) | 2026-10-12 A → 2026-12-13 (+62d) | 5d → 2d | 100% → 0% | none → 37d | MLTX-02-004-CN-11580, MLTX-02-004-CN-11230, MLTX-02-004-CN-11170, MLTX-02-004-CN-11560 → MLTX-02-004-CN-11550, MLTX-02-004-CN-11230, MLTX-02-004-CN-11580 |  |
| 3 | **FIRE PROTECTION** | 2026-12-23 → 2026-11-24 (-29d) | 2027-01-17 → 2026-11-28 (-50d) |  |  |  |  |  |
| MLTX-02-004-CN-11620 | Installing of Fire Fighting Extinguisher and accessories (PFE-1, PFE-2) | 2026-12-23 → 2026-11-24 (-29d) | 2027-01-17 → 2026-11-28 (-50d) | 21d → 4d |  | -19.1d → -29d | MLTX-02-004-EN-3170, MLTX-02-004-CN-11350, MLTX-02-004-EN-4560, MLTX-02-004-CN-11840, MLTX-02-004-CN-11860, MLTX-02-004-EN-3760, MLTX-02-004-CN-11340, MLTX-02-004-PR-8090, MLTX-02-004-EN-4520, MLTX-02-004-CN-11260, MLTX-02-004-CN-12840, Aggregate basecourse layer (Football Playground), MLTX-02-004-CN-10190, MLTX-02-004-CN-11320, MLTX-02-004-PR-9890, MLTX-02-004-CN-10520, MLTX-02-004-CN-11080 → MLTX-02-004-CN-11870, MLTX-02-004-EN-3170, MLTX-02-004-EN-4560, MLTX-02-004-CN-11840, MLTX-02-004-CN-11350 |  |
| 12 | **ELECTRICAL WORKS** | 2026-07-14 → 2026-07-30 (+16d) | 2027-01-09 → 2026-12-08 (-32d) |  |  |  |  |  |
| 1 | **ROUGH-IN WORKS** | 2026-07-14 → 2026-07-30 (+16d) | 2026-08-17 → 2026-08-26 (+9d) |  |  |  |  |  |
| MLTX-02-004-CN-11680 | Preleminary Works for Sockets and Power Points | 2026-07-14 A → 2026-07-30 A (+16d) | 2026-08-09 A → 2026-07-30 A (-10d) | 2d → 10d |  |  | MLTX-02-004-CN-10840, MLTX-02-004-CN-10820, MLTX-02-004-CN-11690 → MLTX-02-004-CN-10840 | resources Labor [140 h]; Electrician [40 h]; 1 way, One Gang Switch [0.8]; 1 way, Two Gang Switch [3]; 1 way, One Gang Switch, weatherproof [0.4]; Exaust fan DP switch weatherproof [0.4]; Indoor AC DP switch weatherproof [0.4]; High level Single Receptacle outlet [3]; Duplex Receptacle outlet [6]; Hand Dryer switch weatherproof [0.4]; Water heater switch [0.4]; Outdoor Disconnect Switch for air conditioiner [0.9]; Outdoor Disconnect Switch for exhaust fans [0.4] → Labor [140 h]; Electrician [40 h]; 1 way, One Gang Switch [0.8]; 1 way, Two Gang Switch [1.6]; 1 way, One Gang Switch, weatherproof [0.4]; Exaust fan DP switch weatherproof [0.4]; Indoor AC DP switch weatherproof [0.4]; High level Single Receptacle outlet [1.6]; Duplex Receptacle outlet [2.8]; Hand Dryer switch weatherproof [0.4]; Water heater switch [0.4]; Outdoor Disconnect Switch for air conditioiner [0.4]; Outdoor Disconnect Switch for exhaust fans [0.4] |
| MLTX-02-004-CN-11650 | Preleminary Works for Earthing Works | 2026-08-09 A → 2026-08-11 A (+2d) | 2026-08-17 A → 2026-08-26 A (+9d) | 2d → 10d |  |  | MLTX-02-004-EN-2240, MLTX-02-004-CN-10820, MLTX-02-004-PR-8570, MLTX-02-004-CN-10840, MLTX-02-004-EN-4660, MLTX-02-004-EN-3380, MLTX-02-004-EN-3290, MLTX-02-004-CN-11690 → MLTX-02-004-EN-3290, MLTX-02-004-EN-3380, MLTX-02-004-EN-4660, MLTX-02-004-PR-8570, MLTX-02-004-CN-10840 | resources Labor [210 h]; Electrician [60 h]; Distribution boards, panelboards, lighting installations and wiring accessories [0.9]; Telecom equipment [0.9]; KWHM [1.5] → Labor [210 h]; Electrician [60 h]; Distribution boards, panelboards, lighting installations and wiring accessories [0.4]; Telecom equipment [0.4]; KWHM [0.8] |
| MLTX-02-004-CN-11660 | Preleminary Works for Panel Boards | 2026-07-19 A → 2026-08-11 A (+23d) | 2026-07-20 A → 2026-08-26 A (+37d) | 2d → 10d |  |  | MLTX-02-004-EN-15830, MLTX-02-004-EN-15520, MLTX-02-004-EN-15840, MLTX-02-004-EN-15870, MLTX-02-004-EN-15820, MLTX-02-004-CN-13940, MLTX-02-004-EN-15860, MLTX-02-004-CN-14070 → MLTX-02-004-EN-3220, MLTX-02-004-EN-3230, MLTX-02-004-EN-3240, MLTX-02-004-EN-3260, MLTX-02-004-EN-3270, MLTX-02-004-EN-4670, MLTX-02-004-CN-10840 | resources Labor [140 h]; Electrician [40 h]; Main Distribution Board including all related works to install power meter (power meter is excluded) [0.4]; Power Panel for pump room [0.13]; Power Panel for street lighting [0.4] → Labor [140 h]; Electrician [40 h]; Main Distribution Board including all related works to install power meter (power meter is excluded) [0.4]; Power Panel for pump room [0.4]; Power Panel for street lighting [0.4] |
| MLTX-02-004-CN-11670 | Preleminary Works for Cable Works | 2026-07-22 A → 2026-08-11 A (+20d) | 2026-08-09 A → 2026-08-26 A (+17d) | 2d → 10d |  |  | MLTX-02-004-EN-4600, MLTX-02-004-CN-10840, MLTX-02-004-EN-3210, MLTX-02-004-CN-10820, MLTX-02-004-EN-3250, MLTX-02-004-CN-11690 → MLTX-02-004-EN-3210, MLTX-02-004-EN-3250, MLTX-02-004-EN-4600, MLTX-02-004-EN-4650, MLTX-02-004-EN-3280, MLTX-02-004-CN-10840 | resources Labor [210 h]; Electrician [60 h]; Recessed mounted LED downlight luminaire 40 watt with reflector; IP44 ,230V , 4000k, 4200 LUMEN ,CRI > 80; Low glare [12]; LED flood light outdoor type 96 watt, 4000k, 12720 LUMEN [0.4]; Wall mounted emergency LED luminaire, 230V, 60 Hz., 3 hour back up time 1800 lumen,CRI>80, 2*18 watt, IP 65 [1.6]; LED Exit light fixture 4.5 watt with battery for 3 hours, and a visibility of 30 meters [0.4]; Wall mounted outdoor LED luminaire, 17 watt, 2000 lumens, with light emission from two sides [0.4]; Wall mounted outdoor LED luminaire, 13 watt, 1000 LUMEN, CR>80, for roof lighting [5] → Labor [210 h]; Electrician [60 h]; Recessed mounted LED downlight luminaire 40 watt with reflector; IP44 ,230V , 4000k, 4200 LUMEN ,CRI > 80; Low glare [12]; LED flood light outdoor type 96 watt, 4000k, 12720 LUMEN [0.4]; Wall mounted emergency LED luminaire, 230V, 60 Hz., 3 hour back up time 1800 lumen,CRI>80, 2*18 watt, IP 65 [1.6]; LED Exit light fixture 4.5 watt with battery for 3 hours, and a visibility of 30 meters [0.4]; Wall mounted outdoor LED luminaire, 17 watt, 2000 lumens, with light emission from two sides [0.4]; Wall mounted outdoor LED luminaire, 13 watt, 1000 LUMEN, CR>80, for roof lighting [2.4] |
| MLTX-02-004-CN-11690 | Preleminary Works for Lightning Works | 2026-08-09 A → 2026-08-11 A (+2d) | 2026-08-17 A → 2026-08-26 A (+9d) | 2d → 10d |  |  | MLTX-02-004-EN-3320, MLTX-02-004-CN-10840, MLTX-02-004-CN-10820, MLTX-02-004-EN-3330, MLTX-02-004-EN-4660 → MLTX-02-004-EN-3320, MLTX-02-004-EN-3330, MLTX-02-004-EN-4660, MLTX-02-004-CN-10840 | resources Labor [140 h]; Electrician [40 h]; For Building [0.9] → Labor [140 h]; Electrician [40 h]; For Building [0.4] |
| MLTX-02-004-CN-11700 | Preleminary Works for Data & Telecommunication System | 2026-08-09 A → 2026-08-11 A (+2d) | 2026-08-17 A → 2026-08-26 A (+9d) | 2d → 10d |  |  | MLTX-02-004-EN-4630, MLTX-02-004-CN-10840, MLTX-02-004-EN-3370, MLTX-02-004-EN-3400, MLTX-02-004-CN-10820, MLTX-02-004-CN-11690 → MLTX-02-004-EN-3370, MLTX-02-004-EN-3400, MLTX-02-004-EN-4630, MLTX-02-004-CN-10840 | resources Labor [140 h]; Electrician [40 h]; Wall telephone outlet [1.2]; Wall mounted data outlet [1.2]; Telecom/IT rack complete with switch, router and patch Panel [0.9]; AV floor box outlet (1 HDMI) [0.4]; AV wall outlet (1 HDMI) [0.4] → Labor [140 h]; Electrician [40 h]; Wall telephone outlet [1.2]; Wall mounted data outlet [1.2]; Telecom/IT rack complete with switch, router and patch Panel [0.4]; AV floor box outlet (1 HDMI) [0.4]; AV wall outlet (1 HDMI) [0.4] |
| MLTX-02-004-CN-11720 | Preleminary Works for Security and Access Control System | 2026-08-09 A → 2026-08-11 A (+2d) | 2026-08-17 A → 2026-08-26 A (+9d) | 2d → 10d |  |  | MLTX-02-004-EN-3390, MLTX-02-004-EN-3360, MLTX-02-004-CN-10820, MLTX-02-004-EN-4640, MLTX-02-004-CN-10840, MLTX-02-004-EN-3350, MLTX-02-004-CN-11690 → MLTX-02-004-EN-4640, MLTX-02-004-CN-10840 | resources Labor [210 h]; Electrician [60 h]; 1 CCTV cabinet (Rack) [0.9]; NVR [0.9]; 21" LED monitor [0.4]; Indoor dome type Camera IP-20 ,IK-10, POE type with infra red feature, minimum coverage 20 meters, ONVIF supported [5]; Outdoor fixed camera weahter proof IP-65, POE type [3]; Pull box for fiber optic cable pulling from provider [0.4] → Labor [210 h]; Electrician [60 h]; 1 CCTV cabinet (Rack) [0.4]; NVR [0.4]; 21" LED monitor [0.4]; Indoor dome type Camera IP-20 ,IK-10, POE type with infra red feature, minimum coverage 20 meters, ONVIF supported [2.4]; Outdoor fixed camera weahter proof IP-65, POE type [1.6]; Pull box for fiber optic cable pulling from provider [0.4] |
| 2 | **FIXTURE WORKS** | 2026-10-29 → 2026-11-01 (+3d) | 2027-01-09 → 2026-12-08 (-32d) |  |  |  |  |  |
| MLTX-02-004-CN-11740 | Installing and Finish Works of Panel Boards | 2027-01-13 → 2026-11-01 A (-73d) | 2027-01-19 → 2026-11-05 A (-75d) | 5d → 10d | 0% → 100% | -56.1d → none | MLTX-02-004-PR-11220, MLTX-02-004-CN-11660, MLTX-02-004-CN-14570, MLTX-02-004-CN-14060 → MLTX-02-004-CN-11260 | resources Labor [350 h]; Electrician [100 h]; Main Distribution Board including all related works to install power meter (power meter is excluded) [0.6]; Power Panel for pump room [0.2]; Power Panel for street lighting [0.6] → Labor [350 h]; Electrician [100 h]; Main Distribution Board including all related works to install power meter (power meter is excluded) [0.6]; Power Panel for pump room [0.6]; Power Panel for street lighting [0.6] |
| MLTX-02-004-CN-11760 | Installing and Finalize Works of Sockets and Power Points | 2026-10-29 A → 2026-11-01 A (+3d) | 2026-10-31 A → 2026-11-05 A (+5d) | 20d → 4d |  |  | MLTX-02-004-CN-11840, MLTX-02-004-PR-8530, MLTX-02-004-CN-11680, MLTX-02-004-EN-3760, MLTX-02-004-CN-11260 → MLTX-02-004-PR-8530, MLTX-02-004-CN-11840 | resources Labor [60 h]; Electrician [60 h]; 1 way, One Gang Switch [1.2]; 1 way, Two Gang Switch [1]; 1 way, One Gang Switch, weatherproof [0.6]; Exaust fan DP switch weatherproof [0.6]; Indoor AC DP switch weatherproof [0.6]; High level Single Receptacle outlet [1]; Duplex Receptacle outlet [1]; Hand Dryer switch weatherproof [0.6]; Water heater switch [0.6]; Outdoor Disconnect Switch for air conditioiner [0.1]; Outdoor Disconnect Switch for exhaust fans [0.6] → Labor [60 h]; Electrician [60 h]; 1 way, One Gang Switch [1.2]; 1 way, Two Gang Switch [2.4]; 1 way, One Gang Switch, weatherproof [0.6]; Exaust fan DP switch weatherproof [0.6]; Indoor AC DP switch weatherproof [0.6]; High level Single Receptacle outlet [2.4]; Duplex Receptacle outlet [4.2]; Hand Dryer switch weatherproof [0.6]; Water heater switch [0.6]; Outdoor Disconnect Switch for air conditioiner [0.6]; Outdoor Disconnect Switch for exhaust fans [0.6] |
| MLTX-02-004-CN-11770 | Installing and Finalize Works of Earthing Works | 2026-11-03 A → 2026-11-01 A (-2d) | 2026-11-03 A → 2026-11-05 A (+2d) | 20d → 6d |  |  | MLTX-02-004-CN-11260, MLTX-02-004-CN-11650 → MLTX-02-004-CN-11260 | resources Labor [60 h]; Electrician [60 h]; Distribution boards, panelboards, lighting installations and wiring accessories [0.1]; Telecom equipment [0.1]; KWHM [0.5] → Labor [60 h]; Electrician [60 h]; Distribution boards, panelboards, lighting installations and wiring accessories [0.6]; Telecom equipment [0.6]; KWHM [1.2] |
| MLTX-02-004-CN-11820 | Installing and Finalize Works of Lightning Protection System | 2026-11-01 A → 2026-11-02 A (+1d) | 2026-11-01 A → 2026-11-08 A (+7d) | 20d → 6d |  |  | MLTX-02-004-CN-11260, MLTX-02-004-CN-11690, MLTX-02-004-CN-11860, Aggregate basecourse layer (Football Playground), MLTX-02-004-CN-10190 → MLTX-02-004-CN-11260 | resources Labor [100 h]; Electrician [100 h]; For Building [0.1] → Labor [100 h]; Electrician [100 h]; For Building [0.6] |
| MLTX-02-004-CN-11790 | Installing and Finalize Works of Lighting Works including Light Fixtures | 2026-11-01 A → 2026-11-05 A (+4d) | 2026-11-01 A → 2026-11-08 A (+7d) | 21d → 4d |  |  | MLTX-02-004-PR-8490, MLTX-02-004-CN-11840, MLTX-02-004-CN-11670, MLTX-02-004-EN-3760, MLTX-02-004-CN-11260 → MLTX-02-004-PR-8490, MLTX-02-004-CN-11840 | resources Labor [80 h]; Electrician [80 h]; Recessed mounted LED downlight luminaire 40 watt with reflector; IP44 ,230V , 4000k, 4200 LUMEN ,CRI > 80; Low glare [18]; LED flood light outdoor type 96 watt, 4000k, 12720 LUMEN [0.6]; Wall mounted emergency LED luminaire, 230V, 60 Hz., 3 hour back up time 1800 lumen,CRI>80, 2*18 watt, IP 65 [2.4]; LED Exit light fixture 4.5 watt with battery for 3 hours, and a visibility of 30 meters [0.6]; Wall mounted outdoor LED luminaire, 17 watt, 2000 lumens, with light emission from two sides [0.6]; Wall mounted outdoor LED luminaire, 13 watt, 1000 LUMEN, CR>80, for roof lighting [1] → Labor [80 h]; Electrician [80 h]; Recessed mounted LED downlight luminaire 40 watt with reflector; IP44 ,230V , 4000k, 4200 LUMEN ,CRI > 80; Low glare [18]; LED flood light outdoor type 96 watt, 4000k, 12720 LUMEN [0.6]; Wall mounted emergency LED luminaire, 230V, 60 Hz., 3 hour back up time 1800 lumen,CRI>80, 2*18 watt, IP 65 [2.4]; LED Exit light fixture 4.5 watt with battery for 3 hours, and a visibility of 30 meters [0.6]; Wall mounted outdoor LED luminaire, 17 watt, 2000 lumens, with light emission from two sides [0.6]; Wall mounted outdoor LED luminaire, 13 watt, 1000 LUMEN, CR>80, for roof lighting [3.6] |
| MLTX-02-004-CN-11750 | Installing Data and Telecommunication System with all Accessories | 2026-12-16 → 2026-11-24 (-22d) | 2027-01-09 → 2026-11-28 (-42d) | 20d → 4d |  | -12.1d → -29d | MLTX-02-004-CN-11860, MLTX-02-004-CN-11840, MLTX-02-004-CN-11700, Aggregate basecourse layer (Padel Playground), MLTX-02-004-EN-3760, MLTX-02-004-CN-11260, MLTX-02-004-CN-12840, Aggregate basecourse layer (Football Playground), MLTX-02-004-CN-10190, MLTX-02-004-CN-11320 → MLTX-02-004-CN-11840, MLTX-02-004-CN-11860 | resources Labor [80 h]; Electrician [80 h]; Wall telephone outlet [1.8]; Wall mounted data outlet [1.8]; Telecom/IT rack complete with switch, router and patch Panel [0.1]; AV floor box outlet (1 HDMI) [0.6]; AV wall outlet (1 HDMI) [0.6] → Labor [80 h]; Electrician [80 h]; Wall telephone outlet [1.8]; Wall mounted data outlet [1.8]; Telecom/IT rack complete with switch, router and patch Panel [0.6]; AV floor box outlet (1 HDMI) [0.6]; AV wall outlet (1 HDMI) [0.6] |
| MLTX-02-004-CN-11780 | Installing of Fire automation and Fire Alarm System | 2026-11-21 A → 2026-11-24 (+3d) | 2026-12-14 → 2026-11-28 (-16d) | 18d → 4d | 80% → 0% | 9.9d → -20d | MLTX-02-004-EN-3340, MLTX-02-004-CN-11500, MLTX-02-004-EN-3300, MLTX-02-004-EN-3310, MLTX-02-004-CN-11860, MLTX-02-004-PR-8450, MLTX-02-004-EN-3100, MLTX-02-004-PR-8370, MLTX-02-004-EN-3160, MLTX-02-004-PR-8410, MLTX-02-004-EN-3120, MLTX-02-004-CN-11480, Aggregate basecourse layer (Football Playground), MLTX-02-004-CN-10190, MLTX-02-004-CN-11320, MLTX-02-004-CN-11260 → MLTX-02-004-EN-3300, MLTX-02-004-EN-3310, MLTX-02-004-EN-3340, MLTX-02-004-CN-11500 |  |
| MLTX-02-004-CN-11830 | Installing and Finalize Works of Security and Access Control System | 2026-11-18 A → 2026-12-02 (+14d) | 2026-11-18 A → 2026-12-08 (+20d) | 20d → 6d | 100% → 0% | none → -38d | MLTX-02-004-CN-11720, MLTX-02-004-CN-11260, MLTX-02-004-CN-11860, Aggregate basecourse layer (Football Playground), MLTX-02-004-CN-10190, MLTX-02-004-CN-11320 → MLTX-02-004-CN-11260 | resources Labor [80 h]; Electrician [80 h]; 1 CCTV cabinet (Rack) [0.1]; NVR [0.1]; 21" LED monitor [0.6]; Indoor dome type Camera IP-20 ,IK-10, POE type with infra red feature, minimum coverage 20 meters, ONVIF supported [1]; Outdoor fixed camera weahter proof IP-65, POE type [1]; Pull box for fiber optic cable pulling from provider [0.6] → Labor [80 h]; Electrician [80 h]; 1 CCTV cabinet (Rack) [0.6]; NVR [0.6]; 21" LED monitor [0.6]; Indoor dome type Camera IP-20 ,IK-10, POE type with infra red feature, minimum coverage 20 meters, ONVIF supported [3.6]; Outdoor fixed camera weahter proof IP-65, POE type [2.4]; Pull box for fiber optic cable pulling from provider [0.6] |
| 7 | **DOORS/WINDOWS** | 2026-09-28 → 2026-10-01 (+3d) | 2026-10-28 → 2026-12-06 (+39d) |  |  |  |  |  |
| MLTX-02-004-CN-11110 | Preliminary Works For Doors | 2026-09-28 A → 2026-10-01 A (+3d) | 2026-09-28 A → 2026-10-05 A (+7d) | 13d → 3d |  |  | MLTX-02-004-CN-10840 → MLTX-02-004-EN-4440, MLTX-02-004-PR-8130, MLTX-02-004-CN-10840 | resources Labor [180 h]; Skilled Labor [60 h]; Metal Door D2 : [0.8] → Labor [180 h]; Skilled Labor [60 h]; Metal Door D2 : [0.4] |
| MLTX-02-004-CN-11120 | Finalize Metal Doors for Toilets Building | 2026-09-29 A → 2026-10-07 A (+8d) | 2026-09-29 A → 2026-10-11 A (+12d) | 11d → 7d |  |  | MLTX-02-004-CN-11110 → MLTX-02-004-CN-11260, MLTX-02-004-CN-11170, MLTX-02-004-CN-11170 FF, MLTX-02-004-CN-11170 SS | resources Labor [240 h]; Skilled Labor [90 h]; Metal Door D2 : [0.2] → Labor [240 h]; Skilled Labor [90 h]; Metal Door D2 : [0.6] |
| MLTX-02-004-CN-11130 | Finalize Glazzed Curtain Wall Works | 2026-10-27 A → 2026-11-29 (+33d) | 2026-10-28 A → 2026-12-06 (+39d) | 11d → 7d | 100% → 0% | none → -5d | MLTX-02-004-CN-11100, MLTX-02-004-CN-11950 → MLTX-02-004-CN-11780, MLTX-02-004-CN-11220, MLTX-02-004-CN-11120 | resources Labor [320 h]; Skilled Labor [120 h]; Supply and install curtain wall with structural glass [0.1] → Labor [320 h]; Skilled Labor [120 h]; Supply and install curtain wall with structural glass [0.6] |
| MLTX-02-004-CN-11100 | Preliminary Works For Windows/Curtain Wall | 2026-10-24 A → 2026-12-05 (+42d) | 2026-10-27 A → 2026-12-06 (+40d) | 12d → 2d | 100% → 0% | none → 43d | MLTX-02-004-CN-10840, MLTX-02-004-PR-8130 → MLTX-02-004-PR-8130, MLTX-02-004-CN-11850 | resources Labor [120 h]; Skilled Labor [40 h]; Supply and install curtain wall with structural glass [0.9] → Labor [120 h]; Skilled Labor [40 h]; Supply and install curtain wall with structural glass [0.4] |
| 4 | **METAL WORKS** | 2026-09-06 → 2026-09-20 (+14d) | 2027-01-02 → 2026-10-05 (-89d) |  |  |  |  |  |

| ID | Task | Start | Finish | Duration | Complete | Total float | Predecessors | Other |
| --- | --- | --- | --- | --- | --- | --- | --- | --- |
| MLTX-02-004-CN-11170 | Installation of Galvanized Steel Roof Scupper | 2026-09-06 A → 2026-09-20 A (+14d) | 2026-09-06 A → 2026-09-20 A (+14d) | 4d → 12d |  |  | MLTX-02-004-CN-11290 → MLTX-02-004-CN-11150 |  |
| MLTX-02-004-CN-11150 | Installation of Galvanized Steel Ladder | 2026-10-18 A → 2026-09-21 A (-27d) | 2026-10-18 A → 2026-10-03 A (-15d) | 14d → 12d |  |  | MLTX-02-004-CN-11110 → MLTX-02-004-CN-11590 |  |
| MLTX-02-004-CN-11160 | Installation of DI Cover for Tank | 2026-11-29 → 2026-10-01 A (-59d) | 2026-12-03 → 2026-10-05 A (-59d) | 4d → 10d | 0% → 100% | 18.9d → none | MLTX-02-004-CN-14020, MLTX-02-004-EN-12350, MLTX-02-004-CN-14030, MLTX-02-004-CN-14680 → MLTX-02-004-CN-11150, MLTX-02-004-EN-4160 | resources Skilled Labor [120 h]; Driver [80 h]; Crane [80 h]; Supply and install heavy duty ductile iron steel cover [1] → Skilled Labor [120 h]; Driver [80 h]; Crane [50 h]; Supply and install heavy duty ductile iron steel cover [1] |
| 6 | **FINISHING WORKS** | 2026-08-17 → 2026-08-29 (+12d) | 2027-02-18 → 2026-12-01 (-79d) |  |  |  |  |  |
| 1 | **FLOOR FINISHES** | 2026-09-15 → 2026-10-28 (+43d) | 2027-02-18 → 2026-11-05 (-105d) |  |  |  |  |  |
| MLTX-02-004-CN-11220 | Epoxy Coat on Concrete Floor | 2027-01-23 → 2026-10-28 A (-87d) | 2027-02-18 → 2026-10-31 A (-110d) | 23d → 3d | 0% → 100% | -41.1d → none | MLTX-02-004-CN-11260, MLTX-02-004-CN-11860, MLTX-02-004-CN-13550, Aggregate basecourse layer (Football Playground), MLTX-02-004-CN-10190, MLTX-02-004-CN-11320 → MLTX-02-004-CN-11260 |  |
| MLTX-02-004-CN-11200 | Creamic Tiles Floor Finish Works | 2026-09-15 A → 2026-10-31 A (+46d) | 2026-09-16 A → 2026-11-05 A (+50d) |  |  |  | MLTX-02-004-CN-11280, MLTX-02-004-PR-8050, MLTX-02-004-CN-11540, MLTX-02-004-EN-4420 → MLTX-02-004-EN-4420, MLTX-02-004-PR-8050, MLTX-02-004-CN-11280, MLTX-02-004-CN-11540, MLTX-02-004-CN-11110, MLTX-02-004-CN-11100, MLTX-02-004-CN-11160 |  |
| MLTX-02-004-CN-11210 | Granite Tiles Floor Finish Works | 2026-10-25 A → 2026-11-01 A (+7d) | 2026-10-25 A → 2026-11-05 A (+11d) | 6d → 4d |  |  | MLTX-02-004-CN-11200, MLTX-02-004-CN-11310 → MLTX-02-004-CN-11200 |  |
| MLTX-02-004-CN-11230 | Ceramic Skirting Tiles Finish Works | 2026-10-04 A → 2026-11-01 A (+28d) | 2026-10-04 A → 2026-11-03 A (+30d) |  |  |  | MLTX-02-004-CN-11310, MLTX-02-004-CN-11350 → MLTX-02-004-CN-11210 |  |
| 2 | **WALL FINISHES** | 2026-08-17 → 2026-08-29 (+12d) | 2026-11-26 → 2026-12-01 (+5d) |  |  |  |  |  |
| MLTX-02-004-CN-11280 | Preliminary Works for Wall Finish Works including Plastering (Internal) | 2026-08-17 A → 2026-08-29 A (+12d) | 2026-08-19 A → 2026-09-09 A (+21d) | 3d → 5d |  |  | MLTX-02-004-CN-11650, MLTX-02-004-CN-11690, MLTX-02-004-EN-4400, MLTX-02-004-CN-11700, MLTX-02-004-CN-11670, MLTX-02-004-CN-11720, MLTX-02-004-CN-11680, MLTX-02-004-CN-12830 → MLTX-02-004-CN-11070, MLTX-02-004-EN-4400, MLTX-02-004-CN-11660, MLTX-02-004-CN-11670, MLTX-02-004-CN-11680, MLTX-02-004-CN-11690, MLTX-02-004-CN-11700, MLTX-02-004-CN-11720, MLTX-02-004-CN-11650 |  |
| MLTX-02-004-CN-11290 | Preliminary Works for Wall Finish Works (External) | 2026-08-19 A → 2026-09-10 A (+22d) | 2026-08-31 A → 2026-09-12 A (+12d) | 6d → 10d |  |  | MLTX-02-004-CN-11280, MLTX-02-004-CN-11310 → MLTX-02-004-CN-11280 |  |
| MLTX-02-004-CN-11310 | Ceramic Finish Works for Walls | 2026-09-01 A → 2026-09-12 A (+11d) | 2026-09-03 A → 2026-09-14 A (+11d) |  |  |  | MLTX-02-004-CN-11280 → MLTX-02-004-CN-11250 | resources Labor [200 h]; Driver [100 h]; Forklift [180 h]; Tile Fixer [120 h]; Wall Finishes Supply and install 300*300 mm ceramic [115] → Labor [200 h]; Driver [100 h]; Tile Fixer [120 h]; Forklift [180 h]; Wall Finishes Supply and install 300*300 mm ceramic [115] |
| MLTX-02-004-CN-11250 | Stone Cladding Finish Works for External Walls | 2026-10-13 A → 2026-09-19 A (-24d) | 2026-10-13 A → 2026-09-26 A (-17d) |  |  |  | MLTX-02-004-CN-14120 → MLTX-02-004-CN-11170 | resources Labor [300 h]; Driver [80 h]; Forklift [150 h]; Tile Fixer [100 h]; Wall Finishes Supply and install Riyadh stone cladding (300x600mm) [46.67] → Labor [300 h]; Driver [80 h]; Tile Fixer [100 h]; Forklift [150 h]; Wall Finishes Supply and install Riyadh stone cladding (300x600mm) [46.67] |
| MLTX-02-004-CN-11840 | Painting Finish Works for Internal Walls | 2026-09-29 A → 2026-10-20 A (+21d) | 2026-10-06 A → 2026-10-29 A (+23d) |  |  |  | MLTX-02-004-CN-11290 → MLTX-02-004-CN-11260 |  |
| MLTX-02-004-CN-11300 | Painting Finish Works for External Walls | 2026-09-27 A → 2026-11-01 A (+35d) | 2026-11-26 → 2026-11-05 A (-21d) | 3d → 7d | 90% → 100% | 13.9d → none | MLTX-02-004-CN-11530, MLTX-02-004-CN-11290, MLTX-02-004-CN-11310, MLTX-02-004-CN-11840, MLTX-02-004-CN-11340 → MLTX-02-004-CN-11530, MLTX-02-004-CN-11290 | resources Labor [200 h]; Skilled Labor [60 h]; Wall Finishes Supply and install acrylic paint for external elevations [56]; Wall Finishes Supply and spray decorative paint ( profile ) for external elevations [0.67] → Labor [200 h]; Skilled Labor [60 h]; Wall Finishes Supply and install acrylic paint for external elevations [56]; Wall Finishes Supply and spray decorative paint ( profile ) for external elevations [0.33] |
| MLTX-02-004-CN-11270 | Granite Capping for Parpet | 2026-10-25 A → 2026-11-02 A (+8d) | 2026-10-25 A → 2026-11-11 A (+17d) | 12d → 2d |  |  | MLTX-02-004-CN-11310 → MLTX-02-004-CN-11080 | resources Labor [160 h]; Driver [40 h]; Forklift [60 h]; Tile Fixer [40 h]; Wall Finishes Supply and install granite capping for parapet [38] → Labor [160 h]; Driver [40 h]; Tile Fixer [40 h]; Forklift [60 h]; Wall Finishes Supply and install granite capping for parapet [38] |
| MLTX-02-004-CN-11320 | Phenolic Partitions for Toilets | 2026-11-03 A → 2026-11-05 A (+2d) | 2026-11-07 A → 2026-11-14 A (+7d) |  |  |  | MLTX-02-004-CN-11360, MLTX-02-004-CN-11230, MLTX-02-004-CN-13130, MLTX-02-004-PR-8110, MLTX-02-004-CN-11600, MLTX-02-004-CN-11480, MLTX-02-004-CN-11500, MLTX-02-004-CN-11210, MLTX-02-004-CN-11270 → MLTX-02-004-CN-11250, MLTX-02-004-CN-11390, MLTX-02-004-CN-11360 | resources Labor [700 h]; Driver [340 h]; Forklift [330 h]; Tile Fixer [220 h]; Wall Finishes Supply and install solid phenolic toilets partition board [40] → Labor [700 h]; Driver [340 h]; Tile Fixer [220 h]; Forklift [330 h]; Wall Finishes Supply and install solid phenolic toilets partition board [40] |
| MLTX-02-004-CN-11260 | Glass Partitions including all accessories and doors | 2026-10-24 A → 2026-11-24 (+31d) | 2026-10-28 A → 2026-12-01 (+34d) | 5d → 7d | 100% → 0% | none → -38d | MLTX-02-004-EN-4510 → MLTX-02-004-EN-4510, MLTX-02-004-CN-11320 |  |
| 3 | **CELLING FINISHES** | 2026-09-28 → 2026-10-20 (+22d) | 2026-10-01 → 2026-11-05 (+35d) |  |  |  |  |  |
| MLTX-02-004-CN-11350 | Painting Finish Works for Ceiling | 2026-09-30 A → 2026-10-20 A (+20d) | 2026-10-01 A → 2026-10-29 A (+28d) | 13d → 3d |  |  | MLTX-02-004-CN-10340 → MLTX-02-004-CN-11360, MLTX-02-004-CN-11340 | resources Labor [200 h]; Skilled Labor [60 h]; CEILING FINISHES Supply and install 2 coats of acrylic paint at under side slab → Labor [200 h]; Skilled Labor [60 h]; CEILING FINISHES Supply and install 2 coats of acrylic paint at under side slab [14] |
| MLTX-02-004-CN-11360 | Gypsum Board Suspended Ceiling Finish Works For Ceiling | 2026-09-28 A → 2026-10-25 A (+27d) | 2026-09-29 A → 2026-10-26 A (+27d) | 5d → 7d |  |  | MLTX-02-004-CN-11310 → MLTX-02-004-CN-11480 | resources Labor [400 h]; Skilled Labor [120 h]; CEILING FINISHES Supply and install 12.5mm thk, moisture resistant gypsum board suspended ceiling; CEILING FINISHES Supply and install 12.5mm thk, gypsum board suspended ceiling → Labor [400 h]; Skilled Labor [120 h]; CEILING FINISHES Supply and install 12.5mm thk, moisture resistant gypsum board suspended ceiling [25.2]; CEILING FINISHES Supply and install 12.5mm thk, gypsum board suspended ceiling [7.8] |
| MLTX-02-004-CN-11340 | Preliminary Works for Ceiling Painting Works | 2026-09-28 A → 2026-11-01 A (+34d) | 2026-09-29 A → 2026-11-05 A (+37d) | 13d → 3d |  |  | MLTX-02-004-CN-11280 → MLTX-02-004-CN-11280, MLTX-02-004-EN-4520, MLTX-02-004-PR-8090 | resources Labor [200 h]; Skilled Labor [90 h]; CEILING FINISHES Supply and install 12.5mm thk, moisture resistant gypsum board suspended ceiling; CEILING FINISHES Supply and install 12.5mm thk, gypsum board suspended ceiling → Labor [200 h]; Skilled Labor [90 h]; CEILING FINISHES Supply and install 12.5mm thk, moisture resistant gypsum board suspended ceiling [16.8]; CEILING FINISHES Supply and install 12.5mm thk, gypsum board suspended ceiling [5.2] |
| 8 | **SPECIALTIES WORK** | 2026-10-04 → 2026-10-14 (+10d) | 2027-01-05 → 2026-11-18 (-48d) |  |  |  |  |  |
| MLTX-02-004-CN-11380 | Installation of Phenolic Locker | 2026-11-07 A → 2026-10-14 A (-24d) | 2026-11-07 A → 2026-10-22 A (-16d) | 12d → 3d |  |  | MLTX-02-004-CN-11320, MLTX-02-004-CN-11500, MLTX-02-004-PR-8450, MLTX-02-004-EN-3100, MLTX-02-004-PR-8370, MLTX-02-004-EN-3160, MLTX-02-004-PR-8410, MLTX-02-004-EN-3120, MLTX-02-004-CN-11480, Aggregate basecourse layer (Football Playground), MLTX-02-004-CN-10190, MLTX-02-004-CN-11260 → MLTX-02-004-CN-11320 |  |
| MLTX-02-004-CN-11390 | Sanitary Fixtures and Accessories Works | 2026-10-04 A → 2026-11-01 A (+28d) | 2026-11-26 → 2026-11-18 A (-8d) | 3d → 5d | 80% → 100% | 24.9d → none | MLTX-02-004-PR-8210, MLTX-02-004-CN-11310 → MLTX-02-004-CN-11600, MLTX-02-004-CN-11300 |  |
| PRO | **PROCUREMENT** | 2026-04-04 → 2026-05-07 (+33d) | 2027-02-14 → 2027-01-24 (-21d) |  |  |  |  |  |
| SLI | **SHORT LEAD ITEM** | 2026-04-04 → 2026-05-07 (+33d) | 2027-02-14 → 2026-12-16 (-60d) |  |  |  |  |  |
| TOI | **TOILET/SERVICE WORKS** | 2026-04-04 → 2026-05-07 (+33d) | 2026-11-09 → 2026-12-16 (+37d) |  |  |  |  |  |
| 1 | **STEEL REINFORCEMENT** | 2026-04-04 → 2026-05-13 (+39d) | 2026-07-07 → 2026-06-13 (-24d) |  |  |  |  |  |
| MLTX-02-004-PR-7880 | PO for Steel Reinforcement | 2026-04-04 A → 2026-05-13 A (+39d) | 2026-05-18 A → 2026-05-14 A (-4d) | 5d → 2d |  |  |  |  |
| MLTX-02-004-PR-7900 | Material Delivery of Steel Reinforcement | 2026-07-07 A → 2026-06-13 A (-24d) | 2026-07-07 A → 2026-06-13 A (-24d) | 5d → 1d |  |  |  |  |
| 3 | **CONCRETE BLOCKS** | 2026-04-09 → 2026-05-07 (+28d) | 2026-07-07 → 2026-07-27 (+20d) |  |  |  |  |  |
| MLTX-02-004-PR-7950 | PO for Concrete Blocks | 2026-04-09 A → 2026-05-07 A (+28d) | 2026-05-18 A → 2026-05-07 A (-11d) | 5d → 1d |  |  |  |  |
| MLTX-02-004-PR-7970 | Material Delivery of Concrete Blocks | 2026-07-07 A → 2026-07-27 A (+20d) | 2026-07-07 A → 2026-07-27 A (+20d) | 8d → 4d |  |  |  |  |
| 6 | **FLOOR/WALL TILES** | 2026-08-18 → 2026-07-22 (-27d) | 2026-08-20 → 2026-09-12 (+23d) |  |  |  |  |  |
| MLTX-02-004-PR-8030 | PO for Tilling Materials | 2026-08-18 A → 2026-07-22 A (-27d) | 2026-08-18 A → 2026-07-22 A (-27d) |  |  |  | MLTX-02-004-PR-7950, MLTX-02-004-EN-6420, MLTX-02-004-PR-9050 → MLTX-02-004-EN-6420, MLTX-02-004-PR-7950 |  |
| MLTX-02-004-PR-8050 | Material Delivery of Tailling Material | 2026-08-20 A → 2026-09-12 A (+23d) | 2026-08-20 A → 2026-09-12 A (+23d) |  |  |  | MLTX-02-004-PR-8030, MLTX-02-004-PR-9050 → MLTX-02-004-PR-8030 |  |
| 7 | **SUSPENDED CEILING** | 2026-07-28 → 2026-07-22 (-6d) | 2026-08-18 → 2026-10-10 (+53d) |  |  |  |  |  |
| MLTX-02-004-PR-8070 | PO for Suspend Ceiling | 2026-07-28 A → 2026-07-22 A (-6d) | 2026-07-28 A → 2026-07-22 A (-6d) |  |  |  | MLTX-02-004-EN-6450, MLTX-02-004-PR-8210 → MLTX-02-004-PR-8030, MLTX-02-004-PR-9050 |  |
| MLTX-02-004-PR-8090 | Material Delivery of Suspend Ceiling | 2026-08-18 A → 2026-10-10 A (+53d) | 2026-08-18 A → 2026-10-10 A (+53d) |  |  |  | MLTX-02-004-PR-8070, MLTX-02-004-PR-8210 → MLTX-02-004-PR-8070 |  |
| 8 | **DOORS/WINDOWS** | 2026-09-15 → 2026-06-24 (-83d) | 2026-09-20 → 2026-10-03 (+13d) |  |  |  |  |  |
| MLTX-02-004-PR-8110 | PO for Doors/Windows | 2026-09-15 A → 2026-06-24 A (-83d) | 2026-09-15 A → 2026-06-24 A (-83d) | 15d → 1d |  |  | MLTX-02-004-EN-6750, MLTX-02-004-EN-7610, MLTX-02-004-EN-7420, MLTX-02-004-EN-7270, MLTX-02-004-EN-7210, MLTX-02-004-EN-7360, MLTX-02-004-EN-6510, MLTX-02-004-EN-6450, MLTX-02-004-EN-7790, MLTX-02-004-EN-7640, MLTX-02-004-PR-8030, MLTX-02-004-EN-7820, MLTX-02-004-EN-7000, MLTX-02-004-EN-7670, MLTX-02-004-EN-7760, MLTX-02-004-EN-7300, MLTX-02-004-EN-7730, MLTX-02-004-EN-6780, MLTX-02-004-EN-6970, MLTX-02-004-EN-7700, MLTX-02-004-EN-7390, MLTX-02-004-EN-6690, MLTX-02-004-EN-6570, MLTX-02-004-EN-6940, MLTX-02-004-EN-6480, MLTX-02-004-EN-7580, MLTX-02-004-EN-7550, MLTX-02-004-EN-6660, MLTX-02-004-EN-7450, MLTX-02-004-EN-7330, MLTX-02-004-EN-7480, MLTX-02-004-EN-7510, MLTX-02-004-PR-9700 → MLTX-02-004-EN-6480, MLTX-02-004-EN-6450, MLTX-02-004-EN-6510, MLTX-02-004-EN-6570, MLTX-02-004-EN-6660, MLTX-02-004-EN-6690, MLTX-02-004-EN-6750, MLTX-02-004-EN-6780, MLTX-02-004-EN-7210, MLTX-02-004-EN-7270, MLTX-02-004-EN-7300, MLTX-02-004-EN-7330, MLTX-02-004-EN-7360, MLTX-02-004-EN-7390, MLTX-02-004-EN-7420, MLTX-02-004-EN-7450, MLTX-02-004-EN-7480, MLTX-02-004-EN-7510, MLTX-02-004-EN-7550, MLTX-02-004-EN-7580, MLTX-02-004-EN-7610, MLTX-02-004-EN-7640, MLTX-02-004-EN-7700, MLTX-02-004-EN-7730, MLTX-02-004-EN-7760, MLTX-02-004-EN-7790, MLTX-02-004-EN-7820 |  |
| MLTX-02-004-PR-8130 | Material Delivery for Doors/Windows | 2026-09-20 A → 2026-10-01 A (+11d) | 2026-09-20 A → 2026-10-03 A (+13d) | 25d → 15d |  |  | MLTX-02-004-PR-8110, MLTX-02-004-PR-9660 → MLTX-02-004-PR-8110 |  |
| 11 | **WATER SUPPLY PIPES** | 2026-07-07 → 2026-06-13 (-24d) | 2026-07-08 → 2026-06-13 (-25d) |  |  |  |  |  |
| MLTX-02-004-PR-8230 | PO for Water Supply Pipes | 2026-07-07 A → 2026-06-13 A (-24d) | 2026-07-07 A → 2026-06-13 A (-24d) | 5d → 1d |  |  | MLTX-02-004-EN-6570, MLTX-02-004-EN-6690, MLTX-02-004-PR-8030 → MLTX-02-004-PR-8110 |  |
| MLTX-02-004-PR-8250 | Material Delivery for Water Supply Pipes | 2026-07-08 A → 2026-06-13 A (-25d) | 2026-07-08 A → 2026-06-13 A (-25d) | 7d → 1d |  |  | MLTX-02-004-PR-8230, MLTX-02-004-PR-8030 → MLTX-02-004-PR-8230 |  |
| 12 | **SEWAGE/DRAINAGE PIPES** |  | 2026-06-20 → 2026-06-13 (-7d) |  |  |  |  |  |
| MLTX-02-004-PR-8270 | PO for Sewage/Drainage Pipes | 2026-06-20 A → 2026-06-13 A (-7d) | 2026-06-20 A → 2026-06-13 A (-7d) | 5d → 1d |  |  | MLTX-02-004-EN-6600 → MLTX-02-004-EN-6600, MLTX-02-004-PR-8110 |  |
| MLTX-02-004-PR-8290 | Material Delivery for Sewage/Drainage Pipes |  |  | 7d → 1d |  |  | MLTX-02-004-PR-8270, MLTX-02-004-PR-8550 → MLTX-02-004-PR-8270 |  |
| 10 | **SANITARY FIXTURES** | 2026-07-28 → 2026-06-16 (-42d) | 2026-07-28 → 2026-08-03 (+6d) |  |  |  |  |  |
| MLTX-02-004-PR-8190 | PO for Sanitary Fixtures | 2026-07-28 A → 2026-06-16 A (-42d) | 2026-07-28 A → 2026-06-16 A (-42d) | 5d → 1d |  |  |  |  |
| MLTX-02-004-PR-8210 | Material Delivery for Sanitary Fixtures | 2026-07-28 A → 2026-08-03 A (+6d) | 2026-07-28 A → 2026-08-03 A (+6d) |  |  |  | MLTX-02-004-PR-8190, MLTX-02-004-PR-8250 → MLTX-02-004-PR-8190 |  |
| 16 | **PACKAGE AC UNITS** | 2026-07-07 → 2026-06-16 (-21d) | 2026-07-07 → 2026-10-03 (+88d) |  |  |  |  |  |
| MLTX-02-004-PR-8310 | PO for Package AC Units | 2026-07-07 A → 2026-06-16 A (-21d) | 2026-07-07 A → 2026-06-16 A (-21d) | 5d → 1d |  |  | MLTX-02-004-EN-6630, MLTX-02-004-EN-6540 → MLTX-02-004-EN-6630, MLTX-02-004-PR-8190 |  |
| MLTX-02-004-PR-8330 | Material Delivery for Package AC Units | 2026-07-07 A → 2026-10-01 A (+86d) | 2026-07-07 A → 2026-10-03 A (+88d) |  |  |  |  |  |
| 17 | **AIR DIFUSSERS/GRILLS** | 2026-08-18 → 2026-06-16 (-63d) | 2026-08-20 → 2026-08-08 (-12d) |  |  |  |  |  |
| MLTX-02-004-PR-8350 | PO for Air Diffusers/Grills | 2026-08-18 A → 2026-06-16 A (-63d) | 2026-08-18 A → 2026-06-16 A (-63d) | 5d → 1d |  |  | MLTX-02-004-PR-8190, MLTX-02-004-EN-6660, MLTX-02-004-PR-8110 → MLTX-02-004-PR-8190 |  |
| MLTX-02-004-PR-8370 | Material Delivery for Air Diffusers/Grills | 2026-08-20 A → 2026-08-08 A (-12d) | 2026-08-20 A → 2026-08-08 A (-12d) |  |  |  | MLTX-02-004-PR-8350, MLTX-02-004-PR-8110 → MLTX-02-004-PR-8350 |  |
| 18 | **GALVANIZED DUCTS** | 2026-08-20 → 2026-06-16 (-65d) | 2026-08-20 → 2026-08-08 (-12d) |  |  |  |  |  |
| MLTX-02-004-PR-8390 | PO for Galvanized Ducts | 2026-08-20 A → 2026-06-16 A (-65d) | 2026-08-20 A → 2026-06-16 A (-65d) | 5d → 1d |  |  | MLTX-02-004-EN-6690, MLTX-02-004-PR-8190, MLTX-02-004-PR-8110 → MLTX-02-004-PR-8190 |  |
| MLTX-02-004-PR-8410 | Material Delivery for Galvanized Ducts | 2026-08-20 A → 2026-08-08 A (-12d) | 2026-08-20 A → 2026-08-08 A (-12d) |  |  |  | MLTX-02-004-PR-8390, MLTX-02-004-PR-8110 → MLTX-02-004-PR-8390 |  |
| 19 | **EXHAUST FANS** | 2026-08-18 → 2026-06-16 (-63d) | 2026-08-18 → 2026-08-17 (-1d) |  |  |  |  |  |
| MLTX-02-004-PR-8430 | PO for Exhaust Fans | 2026-08-18 A → 2026-06-16 A (-63d) | 2026-08-18 A → 2026-06-16 A (-63d) | 5d → 1d |  |  |  |  |
| MLTX-02-004-PR-8450 | Material Delivery for Exhaust Fans | 2026-08-18 A → 2026-08-17 A (-1d) | 2026-08-18 A → 2026-08-17 A (-1d) |  |  |  | MLTX-02-004-PR-8430, MLTX-02-004-PR-8110 → MLTX-02-004-PR-8430 |  |
| 13 | **LIGHTING FIXTURES** | 2026-07-07 → 2026-06-16 (-21d) | 2026-10-31 → 2026-11-12 (+12d) |  |  |  |  |  |
| MLTX-02-004-PR-8470 | PO for Lighting Fixtures | 2026-07-07 A → 2026-06-16 A (-21d) | 2026-07-07 A → 2026-06-16 A (-21d) | 5d → 1d |  |  | MLTX-02-004-EN-6540, MLTX-02-004-EN-6750 → MLTX-02-004-PR-8430 |  |
| MLTX-02-004-PR-8490 | Material Delivery for Lighting Fixtures | 2026-10-31 A → 2026-11-10 A (+10d) | 2026-10-31 A → 2026-11-12 A (+12d) | 20d → 10d |  |  | MLTX-02-004-PR-8430, MLTX-02-004-PR-8470 → MLTX-02-004-PR-8470 |  |
| 14 | **SWITCHES/SOCKETS** | 2026-10-28 → 2026-06-24 (-126d) | 2026-10-28 → 2026-11-09 (+12d) |  |  |  |  |  |
| MLTX-02-004-PR-8510 | PO for Switches/Sockets | 2026-10-28 A → 2026-06-24 A (-126d) | 2026-10-28 A → 2026-06-24 A (-126d) | 15d → 1d |  |  | MLTX-02-004-PR-8470, MLTX-02-004-EN-6780 → MLTX-02-004-PR-8470 |  |

| ID | Task | Start | Finish | Duration | Complete | Total float | Predecessors |
| --- | --- | --- | --- | --- | --- | --- | --- |
| MLTX-02-004-PR-8530 | Material Delivery for Switches/Sockets | 2026-10-28 A → 2026-11-08 A (+11d) | 2026-10-28 A → 2026-11-09 A (+12d) | 17d → 7d |  |  |  |
| 15 | **EARTHING SYSTEM** | 2026-08-10 → 2026-05-21 (-81d) | 2026-08-10 → 2026-05-21 (-81d) |  |  |  |  |
| MLTX-02-004-PR-8550 | PO for Earthing System | 2026-08-10 A → 2026-05-21 A (-81d) | 2026-08-10 A → 2026-05-21 A (-81d) | 5d → 1d |  |  |  |
| MLTX-02-004-PR-8570 | Material Delivery for Earthing System | 2026-08-10 A → 2026-05-21 A (-81d) | 2026-08-10 A → 2026-05-21 A (-81d) | 15d → 1d |  |  | MLTX-02-004-PR-8550 → MLTX-02-004-PR-9030, MLTX-02-004-PR-8550 |
| 5 | **DISTRIBUTION PANNELS** | 2026-11-03 → 2026-07-22 (-104d) | 2026-11-03 → 2026-12-10 (+37d) |  |  |  |  |
| MLTX-02-004-PR-8590 | PO for Distribution Panels | 2026-11-03 A → 2026-07-22 A (-104d) | 2026-11-03 A → 2026-07-22 A (-104d) |  |  |  | MLTX-02-004-EN-6840, MLTX-02-004-PR-8210 → MLTX-02-004-EN-6840 |
| MLTX-02-004-PR-8610 | Material Delivery for Distribution Panels | 2026-11-03 A → 2026-11-09 A (+6d) | 2026-11-03 A → 2026-12-10 A (+37d) |  |  |  | MLTX-02-004-PR-8590, MLTX-02-004-PR-8210 → MLTX-02-004-PR-8590 |
| 9 | **FURNITURES** | 2026-11-09 → 2026-06-16 (-146d) | 2026-11-09 → 2026-12-16 (+37d) |  |  |  |  |
| MLTX-02-004-PR-8150 | PO for Furnitures | 2026-11-09 A → 2026-06-16 A (-146d) | 2026-11-09 A → 2026-06-16 A (-146d) | 19d → 1d |  |  | MLTX-02-004-EN-6510, MLTX-02-004-PR-8430 → MLTX-02-004-PR-8430 |
| MLTX-02-004-PR-8170 | Material Delivery for Furnitures | 2026-11-09 A → 2026-11-24 (+15d) | 2026-11-09 A → 2026-12-16 (+37d) | 30d → 20d | 100% → 0% | none → 34d |  |
| PLG | **PLAYGROUND WORKS** | 2026-04-04 → 2026-05-07 (+33d) | 2027-02-14 → 2026-12-14 (-62d) |  |  |  |  |
| 5 | **PVC MEMBRANE** | 2026-04-04 → 2026-06-16 (+73d) | 2027-01-14 → 2026-11-28 (-47d) |  |  |  |  |
| MLTX-02-004-PR-8640 | PO for PVC Membrane | 2026-04-04 A → 2026-06-16 A (+73d) | 2026-05-19 A → 2026-06-16 A (+28d) | 4d → 1d |  |  | MLTX-02-004-EN-6880, MLTX-02-004-PR-8990 → MLTX-02-004-MS-1010 SS |
| MLTX-02-004-PR-8650 | Material Delivery for PVC Membrane | 2026-12-10 → 2026-11-24 (-16d) | 2027-01-14 → 2026-11-28 (-47d) | 30d → 4d |  | -49.1d → 38d | MLTX-02-004-PR-8640, MLTX-02-004-PR-9250 → MLTX-02-004-PR-8640 |
| 15 | **ARTIFICIAL TURF** | 2026-04-04 → 2026-06-16 (+73d) | 2026-12-28 → 2026-12-12 (-16d) |  |  |  |  |
| MLTX-02-004-PR-8830 | PO for Artificial TURF | 2026-04-04 A → 2026-06-16 A (+73d) | 2026-05-19 A → 2026-06-16 A (+28d) | 5d → 1d |  |  | MLTX-02-004-EN-7030, MLTX-02-004-PR-9070 → MLTX-02-004-EN-7030 |
| MLTX-02-004-PR-8850 | Material Delivery for Artificial TURF | 2026-11-23 → 2026-11-29 (+6d) | 2026-12-28 → 2026-12-12 (-16d) | 30d → 12d |  | -37.1d → 38d | MLTX-02-004-PR-8830, MLTX-02-004-PR-8950 → MLTX-02-004-PR-8650, MLTX-02-004-PR-8830 |
| 20 | **RUBBER GRANULES** | 2026-04-04 → 2026-06-16 (+73d) | 2026-12-28 → 2026-07-22 (-159d) |  |  |  |  |
| MLTX-02-004-PR-8870 | PO for Rubber Granules | 2026-04-04 A → 2026-06-16 A (+73d) | 2026-05-19 A → 2026-06-16 A (+28d) | 5d → 1d |  |  |  |
| MLTX-02-004-PR-8890 | Material Delivery for Rubber Granules | 2026-11-23 → 2026-07-22 A (-124d) | 2026-12-28 → 2026-07-22 A (-159d) | 30d → 12d | 0% → 100% | -42.1d → none | MLTX-02-004-PR-8870, MLTX-02-004-PR-9560 → MLTX-02-004-PR-8870 |
| 21 | **PADEL GLASS** | 2026-04-04 → 2026-06-16 (+73d) | 2026-12-28 → 2026-12-14 (-14d) |  |  |  |  |
| MLTX-02-004-PR-8910 | PO for Padel Glass | 2026-04-04 A → 2026-06-16 A (+73d) | 2026-05-19 A → 2026-06-16 A (+28d) | 5d → 1d |  |  | MLTX-02-004-EN-7090, MLTX-02-004-PR-8990 → MLTX-02-004-EN-7090 |
| MLTX-02-004-PR-8930 | Material Delivery for Padel Glass | 2026-11-23 → 2026-11-24 (+1d) | 2026-12-28 → 2026-12-14 (-14d) | 30d → 18d |  | -57.1d → 36d | MLTX-02-004-PR-8910, MLTX-02-004-PR-8950 → MLTX-02-004-PR-8910 |
| 22 | **PADEL WIRE MESH/STEEL SETS** | 2026-04-09 → 2026-06-16 (+68d) | 2026-12-10 → 2026-12-12 (+2d) |  |  |  |  |
| MLTX-02-004-PR-8950 | PO for Wire Mesh/Steel Sets | 2026-04-09 A → 2026-06-16 A (+68d) | 2026-05-19 A → 2026-06-16 A (+28d) | 5d → 1d |  |  | MLTX-02-004-PR-8910, MLTX-02-004-EN-7120, MLTX-02-004-PR-9070 → MLTX-02-004-PR-8910 |
| MLTX-02-004-PR-8970 | Material Delivery for Wire Mesh/Steel Sets | 2026-11-23 → 2026-11-24 (+1d) | 2026-12-10 → 2026-12-12 (+2d) | 15d → 16d |  | -47.1d → 12d | MLTX-02-004-PR-8950, MLTX-02-004-PR-9070 → MLTX-02-004-PR-8950 |
| 1 | **AGGREGATE BASE COURSE** | 2026-04-04 → 2026-05-21 (+47d) | 2026-07-07 → 2026-05-21 (-47d) |  |  |  |  |
| MLTX-02-004-PR-8990 | PO for Aggregate Base Course | 2026-04-04 A → 2026-05-21 A (+47d) | 2026-05-14 A → 2026-05-21 A (+7d) | 5d → 1d |  |  |  |
| MLTX-02-004-PR-9000 | Material Delivery for Aggregate Base Course | 2026-07-07 A → 2026-05-21 A (-47d) | 2026-07-07 A → 2026-05-21 A (-47d) | 7d → 1d |  |  |  |
| 16 | **PACKAGE AC UNITS** | 2026-07-07 → 2026-06-16 (-21d) | 2026-07-07 → 2026-06-18 (-19d) |  |  |  |  |
| MLTX-02-004-PR-9130 | PO for Package AC Units | 2026-07-07 A → 2026-06-16 A (-21d) | 2026-07-07 A → 2026-06-16 A (-21d) | 5d → 1d |  |  | MLTX-02-004-PR-8310, MLTX-02-004-PR-8830, MLTX-02-004-EN-7240, MLTX-02-004-PR-8910, MLTX-02-004-PR-8870, MLTX-02-004-EN-7270, MLTX-02-004-PR-9660 → MLTX-02-004-PR-8310 |
| MLTX-02-004-PR-9150 | Material Delivery for Package AC Units | 2026-07-07 A → 2026-06-17 A (-20d) | 2026-07-07 A → 2026-06-18 A (-19d) |  |  |  |  |
| 17 | **AIR DIFUSSERS/GRILLS** | 2026-11-23 → 2026-06-16 (-160d) | 2027-01-09 → 2026-08-08 (-154d) |  |  |  |  |
| MLTX-02-004-PR-9170 | PO for Air Difussers/Grills | 2026-11-23 → 2026-06-16 A (-160d) | 2026-12-10 → 2026-06-16 A (-177d) | 15d → 1d | 0% → 100% | -47.1d → none | MLTX-02-004-PR-8310, MLTX-02-004-EN-7300, MLTX-02-004-PR-8190, MLTX-02-004-PR-9070 → MLTX-02-004-PR-8310 |
| MLTX-02-004-PR-9190 | Material Delivery for Air Difussers/Grills | 2026-12-10 → 2026-08-08 A (-124d) | 2027-01-09 → 2026-08-08 A (-154d) | 25d → 15d | 0% → 100% | -47.1d → none | MLTX-02-004-PR-9170, MLTX-02-004-PR-9130 → MLTX-02-004-PR-9170 |
| 2 | **BITUMINOUS BASE & WEARING COURSE** | 2026-09-15 → 2026-06-16 (-91d) | 2026-09-21 → 2026-06-16 (-97d) |  |  |  |  |
| MLTX-02-004-PR-9020 | PO for Bituminous Base & Wearing Course | 2026-09-15 A → 2026-06-16 A (-91d) | 2026-09-15 A → 2026-06-16 A (-91d) | 15d → 1d |  |  |  |
| MLTX-02-004-PR-9030 | Material Delivery for the Site | 2026-09-21 A → 2026-06-16 A (-97d) | 2026-09-21 A → 2026-06-16 A (-97d) | 27d → 1d |  |  |  |
| 3 | **INTERLOCKING PAVING** | 2026-09-15 → 2026-05-07 (-131d) | 2026-09-15 → 2026-11-10 (+56d) |  |  |  |  |
| MLTX-02-004-PR-9050 | PO for Interlocking Block Pavers | 2026-09-15 A → 2026-05-07 A (-131d) | 2026-09-15 A → 2026-05-07 A (-131d) | 15d → 1d |  |  | MLTX-02-004-EN-7210 → MLTX-02-004-PR-8510 |
| MLTX-02-004-PR-9070 | Material Delivery for Interlocking Block Pavers | 2026-09-15 A → 2026-11-05 A (+51d) | 2026-09-15 A → 2026-11-10 A (+56d) | 17d → 7d |  |  |  |
| 4 | **MARKING PAINT** | 2026-11-23 → 2026-07-18 (-128d) | 2026-12-30 → 2026-12-01 (-29d) |  |  |  |  |
| MLTX-02-004-PR-9090 | PO for Marking Paint | 2026-11-23 → 2026-07-18 A (-128d) | 2026-12-10 → 2026-07-18 A (-145d) | 15d → 5d | 0% → 100% | -39.1d → none |  |
| MLTX-02-004-PR-9110 | Material Delivery for Marking Paint | 2026-12-10 → 2026-11-24 (-16d) | 2026-12-30 → 2026-12-01 (-29d) | 17d → 7d |  | -39.1d → 47d |  |
| 18 | **GALVANIZED DUCTS** | 2026-11-23 → 2026-06-16 (-160d) | 2027-01-09 → 2026-08-08 (-154d) |  |  |  |  |
| MLTX-02-004-PR-9210 | PO for Galvanized Duct | 2026-11-23 → 2026-06-16 A (-160d) | 2026-12-10 → 2026-06-16 A (-177d) | 15d → 1d | 0% → 100% | -47.1d → none | MLTX-02-004-EN-7330, MLTX-02-004-PR-8310, MLTX-02-004-PR-9070 → MLTX-02-004-PR-8310 |
| MLTX-02-004-PR-9230 | Material Delivery for Galvanized Duct | 2026-12-10 → 2026-08-08 A (-124d) | 2027-01-09 → 2026-08-08 A (-154d) | 25d → 15d | 0% → 100% | -47.1d → none | MLTX-02-004-PR-9210, MLTX-02-004-PR-9170 → MLTX-02-004-PR-9210 |
| 19 | **EXHAUST FANS** | 2026-11-23 → 2026-06-16 (-160d) | 2027-01-09 → 2026-08-17 (-145d) |  |  |  |  |
| MLTX-02-004-PR-9250 | PO for Exhaust Fans | 2026-11-23 → 2026-06-16 A (-160d) | 2026-12-10 → 2026-06-16 A (-177d) | 15d → 1d | 0% → 100% | -49.1d → none | MLTX-02-004-EN-7360, MLTX-02-004-PR-8310, MLTX-02-004-PR-9070 → MLTX-02-004-PR-8310 |
| MLTX-02-004-PR-9270 | Material Delivery for Exhaust Fans | 2026-12-10 → 2026-08-17 A (-115d) | 2027-01-09 → 2026-08-17 A (-145d) | 25d → 15d | 0% → 100% | -47.1d → none | MLTX-02-004-PR-9250, MLTX-02-004-PR-8970 → MLTX-02-004-PR-9250 |
| 10 | **DISTRIBUTION BOARDS** | 2026-12-10 → 2026-07-22 (-141d) | 2027-01-03 → 2026-11-09 (-55d) |  |  |  |  |
| MLTX-02-004-PR-9290 | PO for Distribution Boards | 2026-12-10 → 2026-07-22 A (-141d) | 2026-12-16 → 2026-07-22 A (-147d) |  | 0% → 100% | -47.1d → none | MLTX-02-004-EN-7390, MLTX-02-004-PR-8310, MLTX-02-004-PR-8970, MLTX-02-004-PR-9130 → MLTX-02-004-PR-8310 |
| MLTX-02-004-PR-9310 | Material Delivery for Distribution Boards | 2026-12-16 → 2026-11-08 A (-38d) | 2027-01-03 → 2026-11-09 A (-55d) |  | 0% → 100% | -42.1d → none | MLTX-02-004-PR-9290, MLTX-02-004-PR-9130 → MLTX-02-004-PR-9290 |
| 11 | **POWER CABLES** | 2026-12-28 → 2026-07-22 (-159d) | 2027-02-07 → 2026-09-14 (-146d) |  |  |  |  |
| MLTX-02-004-PR-9330 | PO for Power Cables | 2026-12-28 → 2026-07-22 A (-159d) | 2027-01-14 → 2026-07-22 A (-176d) | 15d → 5d | 0% → 100% | -57.1d → none | MLTX-02-004-EN-7420, MLTX-02-004-PR-9290, MLTX-02-004-PR-9130, MLTX-02-004-PR-8930, MLTX-02-004-PR-8090 → MLTX-02-004-PR-9290 |
| MLTX-02-004-PR-9350 | Material Delivery for Power Cables | 2027-01-14 → 2026-09-13 A (-123d) | 2027-02-07 → 2026-09-14 A (-146d) | 20d → 10d | 0% → 100% | -57.1d → none | MLTX-02-004-PR-9330, MLTX-02-004-PR-8890 → MLTX-02-004-PR-9330 |
| 12 | **LIGHT FIXTURES** | 2026-07-07 → 2026-06-16 (-21d) | 2027-02-07 → 2026-11-14 (-85d) |  |  |  |  |
| MLTX-02-004-PR-9370 | PO for Light Fixtures | 2026-07-07 A → 2026-06-16 A (-21d) | 2026-07-07 A → 2026-06-16 A (-21d) | 5d → 1d |  |  | MLTX-02-004-EN-7420, MLTX-02-004-EN-6540, MLTX-02-004-EN-7450, MLTX-02-004-PR-8990 → MLTX-02-004-EN-7450 |
| MLTX-02-004-PR-9390 | Material Delivery for Light Fixtures | 2027-01-14 → 2026-11-12 A (-63d) | 2027-02-07 → 2026-11-14 A (-85d) | 20d → 16d | 0% → 100% | -57.1d → none | MLTX-02-004-PR-9370, MLTX-02-004-PR-8450, MLTX-02-004-PR-9330, MLTX-02-004-PR-9800 → MLTX-02-004-PR-9370 |
| 13 | **CCTV MATERIALS** | 2026-11-23 → 2026-11-14 (-9d) | 2027-02-14 → 2026-12-10 (-66d) |  |  |  |  |
| MLTX-02-004-PR-9410 | PO for CCTV | 2026-11-23 → 2026-11-14 A (-9d) | 2026-12-10 → 2026-11-15 A (-25d) | 15d → 5d | 0% → 100% | -63.1d → none | MLTX-02-004-EN-7480, MLTX-02-004-PR-9370, MLTX-02-004-PR-8990 → MLTX-02-004-EN-3780, MLTX-02-004-EN-7480, MLTX-02-004-PR-9370 |
| MLTX-02-004-PR-9430 | Material Delivery for CCTV | 2027-01-27 → 2026-11-24 (-64d) | 2027-02-14 → 2026-12-10 (-66d) |  |  | -63.1d → 39d | MLTX-02-004-PR-9310, MLTX-02-004-PR-8890, MLTX-02-004-PR-9150, MLTX-02-004-PR-9410, MLTX-02-004-PR-8930, MLTX-02-004-PR-8850, MLTX-02-004-PR-9270, MLTX-02-004-PR-9190, MLTX-02-004-PR-9110, MLTX-02-004-PR-9230, MLTX-02-004-PR-9470 → MLTX-02-004-PR-9410, MLTX-02-004-PR-9310, MLTX-02-004-PR-9270, MLTX-02-004-PR-9230, MLTX-02-004-PR-9190, MLTX-02-004-PR-9150 |
| 14 | **POWER OUTLETS/SWITCHES** | 2026-12-10 → 2026-07-22 (-141d) | 2027-01-27 → 2026-11-10 (-78d) |  |  |  |  |
| MLTX-02-004-PR-9450 | PO for Power Outlets/Switches | 2026-12-10 → 2026-07-22 A (-141d) | 2026-12-29 → 2026-07-22 A (-160d) | 16d → 6d | 0% → 100% | -63.1d → none | MLTX-02-004-PR-9410, MLTX-02-004-PR-8330, MLTX-02-004-EN-7510, MLTX-02-004-PR-8530, MLTX-02-004-PR-8490 → MLTX-02-004-PR-9370 |
| MLTX-02-004-PR-9470 | Material Delivery for Power Outlets/Switches | 2026-12-29 → 2026-11-09 A (-50d) | 2027-01-27 → 2026-11-10 A (-78d) | 25d → 15d | 0% → 100% | -63.1d → none | MLTX-02-004-PR-9450, MLTX-02-004-PR-9680 → MLTX-02-004-PR-9450 |
| LSC | **LANDSCAPE WORKS** | 2026-05-16 → 2026-05-07 (-9d) | 2027-02-06 → 2026-12-10 (-58d) |  |  |  |  |
| 7 | **INTERLOCKING PAVING** | 2026-08-26 → 2026-05-07 (-111d) | 2026-08-26 → 2026-11-10 (+76d) |  |  |  |  |
| MLTX-02-004-PR-9500 | PO for Interlocking Block Pavers | 2026-08-26 A → 2026-05-07 A (-111d) | 2026-08-26 A → 2026-05-07 A (-111d) | 5d → 1d |  |  |  |
| MLTX-02-004-PR-9520 | Material Delivery for Interlocking Block Pavers | 2026-08-26 A → 2026-11-05 A (+71d) | 2026-08-26 A → 2026-11-10 A (+76d) |  |  |  | MLTX-02-004-PR-9500 → MLTX-02-004-PR-9500, MLTX-02-004-PR-9350, MLTX-02-004-PR-9430 |
| 9 | **CURBSTONE** | 2026-07-28 → 2026-05-07 (-82d) | 2026-07-28 → 2026-08-12 (+15d) |  |  |  |  |

| ID | Task | Start | Finish | Duration | Complete | Total float | Predecessors | Other |
| --- | --- | --- | --- | --- | --- | --- | --- | --- |
| MLTX-02-004-PR-9540 | PO for Curbstone | 2026-07-28 A → 2026-05-07 A (-82d) | 2026-07-28 A → 2026-05-07 A (-82d) | 5d → 1d |  |  |  |  |
| MLTX-02-004-PR-9560 | Material Delivery for Curbstone | 2026-07-28 A → 2026-08-12 A (+15d) | 2026-07-28 A → 2026-08-12 A (+15d) |  |  |  |  |  |
| 1 | **PAVEMENT MARKING** | 2026-12-29 → 2026-07-22 (-160d) | 2027-02-06 → 2026-12-05 (-63d) |  |  |  |  |  |
| MLTX-02-004-PR-9580 | PO for Pavement Markings | 2026-12-29 → 2026-07-22 A (-160d) | 2027-01-13 → 2026-07-22 A (-175d) | 13d → 5d | 0% → 100% | -48.1d → none | MLTX-02-004-EN-7610, MLTX-02-004-PR-9450 → MLTX-02-004-PR-9560, MLTX-02-004-PR-9450 |  |
| MLTX-02-004-PR-9600 | Material Delivery for Pavement Markings | 2027-01-13 → 2026-11-24 (-50d) | 2027-02-06 → 2026-12-05 (-63d) | 20d → 10d |  | -48.1d → -32d | MLTX-02-004-PR-9580, MLTX-02-004-PR-9680 → MLTX-02-004-PR-9580 |  |
| 2 | **TRAFFIC SIGNS** | 2026-10-13 → 2026-07-22 (-83d) | 2026-11-09 → 2026-12-03 (+24d) |  |  |  |  |  |
| MLTX-02-004-PR-9620 | PO for Traffic Signs | 2026-10-13 A → 2026-07-22 A (-83d) | 2026-10-13 A → 2026-07-27 A (-78d) | 15d → 5d |  |  | MLTX-02-004-PR-9780, MLTX-02-004-EN-7640 → MLTX-02-004-PR-9780 |  |
| MLTX-02-004-PR-9640 | Material Delivery for Traffic Signs | 2026-11-09 A → 2026-11-24 (+15d) | 2026-11-09 A → 2026-12-03 (+24d) | 5d → 9d | 100% → 0% | none → -21d | MLTX-02-004-PR-9620 → MLTX-02-004-PR-9620, MLTX-02-004-PR-9520 |  |
| 3 | **IRRIGATION PIPES/SPRINKLERS** | 2026-06-17 → 2026-07-18 (+31d) | 2026-07-21 → 2026-08-13 (+23d) |  |  |  |  |  |
| MLTX-02-004-PR-9660 | PO for Irrigation Pipes/Sprinkles | 2026-06-17 A → 2026-07-18 A (+31d) | 2026-06-17 A → 2026-07-18 A (+31d) |  |  |  | MLTX-02-004-PR-8230 → MLTX-02-004-EN-7670, MLTX-02-004-PR-9580 |  |
| MLTX-02-004-PR-9680 | Material Delivery for Irrigation Pipes/Sprinkles | 2026-07-21 A → 2026-08-13 A (+23d) | 2026-07-21 A → 2026-08-13 A (+23d) |  |  |  |  |  |
| 5 | **AGRICULTURE SOIL** | 2026-10-01 → 2026-08-08 (-54d) | 2026-10-03 → 2026-11-10 (+38d) |  |  |  |  |  |
| MLTX-02-004-PR-9700 | PO for Agriculture Soil | 2026-10-01 A → 2026-08-08 A (-54d) | 2026-10-01 A → 2026-08-08 A (-54d) | 15d → 5d |  |  | MLTX-02-004-EN-7700, MLTX-02-004-PR-9740 → MLTX-02-004-PR-9680 |  |
| MLTX-02-004-PR-9720 | Material Delivery for Agriculture Soil | 2026-10-03 A → 2026-11-05 A (+33d) | 2026-10-03 A → 2026-11-10 A (+38d) | 22d → 12d |  |  |  |  |
| 8 | **TRACK SURFACE** | 2026-05-16 → 2026-06-24 (+39d) | 2027-01-16 → 2026-12-05 (-42d) |  |  |  |  |  |
| MLTX-02-004-PR-9740 | PO for Track Surface | 2026-05-16 A → 2026-06-24 A (+39d) | 2026-05-19 A → 2026-06-25 A (+37d) |  |  |  | MLTX-02-004-EN-4230, MLTX-02-004-EN-6160, MLTX-02-004-EN-7610 → MLTX-02-004-PR-9600, MLTX-02-004-PR-9680, MLTX-02-004-PR-9900 |  |
| MLTX-02-004-PR-9760 | Material Delivery for Track Surface | 2027-01-13 → 2026-11-24 (-50d) | 2027-01-16 → 2026-12-05 (-42d) | 2d → 10d |  | -20.1d → 20d | MLTX-02-004-PR-9900, MLTX-02-004-PR-9580, MLTX-02-004-EN-7730, MLTX-02-004-PR-9740 → MLTX-02-004-PR-9740 |  |
| 10 | **GRASS/TREES** | 2026-05-17 → 2026-07-18 (+62d) | 2026-12-22 → 2026-12-10 (-12d) |  |  |  |  |  |
| MLTX-02-004-PR-9780 | PO for Grass/Trees | 2026-05-17 A → 2026-07-18 A (+62d) | 2026-05-20 A → 2026-07-19 A (+60d) |  |  |  | MLTX-02-004-PR-9740, MLTX-02-004-EN-7760 → MLTX-02-004-PR-9740 |  |
| MLTX-02-004-PR-9800 | Material Delivery for Grass/Trees | 2026-11-23 → 2026-11-24 (+1d) | 2026-12-22 → 2026-12-10 (-12d) | 25d → 15d |  | -37.1d → -34d | MLTX-02-004-PR-9700, MLTX-02-004-PR-9780, MLTX-02-004-PR-9620 → MLTX-02-004-PR-9780 |  |
| 6 | **CABLES** | 2026-08-26 → 2026-09-28 (+33d) | 2026-08-26 → 2026-09-28 (+33d) |  |  |  |  |  |
| MLTX-02-004-PR-9820 | PO for Cables | 2026-08-26 A → 2026-09-28 A (+33d) | 2026-08-26 A → 2026-09-28 A (+33d) |  |  |  | MLTX-02-004-EN-7790 → MLTX-02-004-PR-9580 |  |
| MLTX-02-004-PR-9840 | Material Delivery for Cables | 2026-08-26 A → 2026-09-28 A (+33d) | 2026-08-26 A → 2026-09-28 A (+33d) |  |  |  | MLTX-02-004-PR-9820, MLTX-02-004-PR-9740 → MLTX-02-004-PR-9820 |  |
| LLI | **LONG LEAD ITEM** | 2026-07-07 → 2026-06-16 (-21d) | 2026-12-29 → 2027-01-24 (+26d) |  |  |  |  |  |
| PLG | **PLAYGROUND WORKS** | 2026-10-13 → 2026-06-16 (-119d) | 2026-12-29 → 2027-01-24 (+26d) |  |  |  |  |  |
| 6 | **STEEL TENSION CABLES** | 2026-10-13 → 2026-06-16 (-119d) | 2026-12-23 → 2026-06-30 (-176d) |  |  |  |  |  |
| MLTX-02-004-PR-8670 | PO for Steel Tension Cables | 2026-10-13 A → 2026-06-16 A (-119d) | 2026-10-13 A → 2026-06-16 A (-119d) | 7d → 1d |  |  | MLTX-02-004-EN-6910, MLTX-02-004-PR-8790 → MLTX-02-004-EN-4570 | resources Purchaser [230 h] → Purchaser [300 h] |
| MLTX-02-004-PR-8680 | Material Fabrication for Steel Tension Cables | 2026-10-13 A → 2026-06-18 A (-117d) | 2026-10-13 A → 2026-06-20 A (-115d) | 10d → 20d |  |  | MLTX-02-004-PR-8670, MLTX-02-004-PR-8790 → MLTX-02-004-PR-8670, MLTX-02-004-PR-9450 | resources Purchaser [229.1 h] → Purchaser [300 h] |
| MLTX-02-004-PR-8690 | Material Delivery for Steel Tension Cables | 2026-11-23 → 2026-06-22 A (-154d) | 2026-12-12 → 2026-06-24 A (-171d) | 16d → 29d | 0% → 100% | -38.1d → none | MLTX-02-004-PR-8680, MLTX-02-004-PR-8750 → MLTX-02-004-EN-3620, MLTX-02-004-EN-12080, MLTX-02-004-EN-12090, MLTX-02-004-EN-16350, MLTX-02-004-EN-16360, MLTX-02-004-PR-8680, MLTX-02-004-EN-7120, MLTX-02-004-PR-9910, MLTX-02-004-PR-9900, MLTX-02-004-PR-9920 | resources Purchaser [200 h] → Purchaser [294.3 h] |
| MLTX-02-004-PR-9890 | Staging time | 2026-12-12 → 2026-06-25 A (-170d) | 2026-12-23 → 2026-06-30 A (-176d) | 10d → 7d | 0% → 100% | -38.1d → none | MLTX-02-004-PR-8690, MLTX-02-004-PR-8800 → MLTX-02-004-PR-10520, MLTX-02-004-PR-8690 | resources Purchaser [200 h] → Purchaser [290 h] |
| 7 | **EMERGENCY DOORS** | 2026-10-13 → 2026-06-16 (-119d) | 2026-12-28 → 2027-01-24 (+27d) |  |  |  |  |  |
| MLTX-02-004-PR-8710 | PO for Emergency Doors | 2026-10-13 A → 2026-06-16 A (-119d) | 2026-10-13 A → 2026-06-16 A (-119d) | 10d → 1d |  |  | MLTX-02-004-EN-6940, MLTX-02-004-PR-7880 → MLTX-02-004-MS-1010 SS |  |
| MLTX-02-004-PR-8720 | Material Fabrication for Emergency Doors | 2026-10-13 A → 2026-11-24 (+42d) | 2026-10-14 A → 2026-12-16 (+63d) |  | 100% → 0% | none → 1d | MLTX-02-004-PR-8710, MLTX-02-004-PR-9860 → MLTX-02-004-PR-8710 |  |
| MLTX-02-004-PR-8730 | Material Delivery for Emergency Doors | 2026-11-23 → 2026-12-17 (+24d) | 2026-12-22 → 2027-01-14 (+23d) |  |  | -6.1d → 1d | MLTX-02-004-PR-8720, MLTX-02-004-PR-8510 → MLTX-02-004-PR-8720 |  |
| MLTX-02-004-PR-9900 | Staging time | 2026-12-22 → 2027-01-16 (+25d) | 2026-12-28 → 2027-01-24 (+27d) | 5d → 8d |  | -6.1d → 1d | MLTX-02-004-PR-8730, MLTX-02-004-PR-9870 → MLTX-02-004-PR-8730 |  |
| 8 | **PRESSURE UNITS** | 2026-10-13 → 2026-06-16 (-119d) | 2026-12-28 → 2027-01-24 (+27d) |  |  |  |  |  |
| MLTX-02-004-PR-8750 | PO for Pressure Units | 2026-10-13 A → 2026-06-16 A (-119d) | 2026-10-13 A → 2026-06-16 A (-119d) | 10d → 1d |  |  | MLTX-02-004-EN-6970, MLTX-02-004-PR-8790 → MLTX-02-004-MS-1010 SS |  |
| MLTX-02-004-PR-8760 | Material Fabrication for Pressure Units | 2026-10-13 A → 2026-11-24 (+42d) | 2026-10-14 A → 2026-12-16 (+63d) |  | 100% → 0% | none → 1d | MLTX-02-004-PR-8750, MLTX-02-004-PR-9880 → MLTX-02-004-PR-8750 |  |
| MLTX-02-004-PR-8770 | Material Delivery for Pressure Units | 2026-11-23 → 2026-12-17 (+24d) | 2026-12-22 → 2027-01-14 (+23d) |  |  | -29.1d → 1d | MLTX-02-004-PR-8760, MLTX-02-004-PR-8800 → MLTX-02-004-PR-8760 |  |
| MLTX-02-004-PR-9910 | Staging time | 2026-12-22 → 2027-01-16 (+25d) | 2026-12-28 → 2027-01-24 (+27d) | 5d → 8d |  | -29.1d → 1d | MLTX-02-004-PR-8770, MLTX-02-004-PR-8810 → MLTX-02-004-PR-8770 |  |
| 9 | **AIR LOCK DOORS** | 2026-10-13 → 2026-06-16 (-119d) | 2026-12-29 → 2027-01-24 (+26d) |  |  |  |  |  |
| MLTX-02-004-PR-8790 | PO for Lock Doors | 2026-10-13 A → 2026-06-16 A (-119d) | 2026-10-13 A → 2026-06-16 A (-119d) | 10d → 1d |  |  | MLTX-02-004-EN-7000 → MLTX-02-004-MS-1010 SS |  |
| MLTX-02-004-PR-8800 | Material Fabrication for Lock Doors | 2026-10-13 A → 2026-11-24 (+42d) | 2026-10-13 A → 2026-12-16 (+64d) |  | 100% → 0% | none → 1d | MLTX-02-004-PR-8790, MLTX-02-004-PR-9880 → MLTX-02-004-PR-8790 |  |
| MLTX-02-004-PR-8810 | Material Delivery for Lock Doors | 2026-11-23 → 2026-12-17 (+24d) | 2026-12-22 → 2027-01-14 (+23d) |  |  | -37.1d → 1d | MLTX-02-004-PR-8800, MLTX-02-004-PR-9930 → MLTX-02-004-PR-8800 |  |
| MLTX-02-004-PR-9920 | Staging time | 2026-12-23 → 2027-01-16 (+24d) | 2026-12-29 → 2027-01-24 (+26d) | 5d → 8d |  | -38.1d → 1d | MLTX-02-004-PR-8810, MLTX-02-004-PR-9800, MLTX-02-004-PR-9890 → MLTX-02-004-PR-8810 |  |
| LSC | **LANDSCAPE WORKS** | 2026-07-07 → 2026-06-18 (-19d) | 2026-09-20 → 2026-09-29 (+9d) |  |  |  |  |  |
| 4 | **LIGHT POLES** | 2026-07-07 → 2026-06-18 (-19d) | 2026-09-20 → 2026-09-29 (+9d) |  |  |  |  |  |
| MLTX-02-004-PR-9860 | PO for Lighting poles | 2026-07-07 A → 2026-06-18 A (-19d) | 2026-07-07 A → 2026-06-18 A (-19d) | 10d → 1d |  |  | MLTX-02-004-EN-7820, MLTX-02-004-EN-7790 → MLTX-02-004-EN-7820 |  |
| MLTX-02-004-PR-9870 | Material Fabrication for Lighting poles | 2026-08-26 A → 2026-09-29 A (+34d) | 2026-08-26 A → 2026-09-29 A (+34d) |  |  |  | MLTX-02-004-PR-9860, MLTX-02-004-PR-9520, MLTX-02-004-PR-9820 → MLTX-02-004-PR-9860 |  |
| MLTX-02-004-PR-9880 | Material Delivery for Lighting poles | 2026-09-20 A → 2026-09-29 A (+9d) | 2026-09-20 A → 2026-09-29 A (+9d) | 30d → 25d |  |  |  |  |
| MLTX-02-004-PR-9930 | Staging time | 2026-09-20 A → 2026-09-29 A (+9d) | 2026-09-20 A → 2026-09-29 A (+9d) |  |  |  |  |  |
| T & C | **TESTING & COMMISSIONING** | 2027-02-11 → 2026-12-20 (-53d) | 2027-03-21 → 2027-02-23 (-26d) |  |  |  |  |  |
| MLTX-02-004-TC-11870 | Testing and Commissioning for MEP Works for Toilet/Service Building | 2027-03-01 → 2026-12-20 (-71d) | 2027-03-09 → 2027-01-13 (-55d) | 7d → 22d |  | -55.1d → -38d | MLTX-02-004-CN-10670, MLTX-02-004-CN-11390, MLTX-02-004-CN-11830, MLTX-02-004-CN-11380, MLTX-02-004-CN-11620, MLTX-02-004-CN-11770, MLTX-02-004-CN-12980, MLTX-02-004-CN-11500, MLTX-02-004-CN-11820, MLTX-02-004-CN-11870, MLTX-02-004-CN-11750, MLTX-02-004-CN-11580, MLTX-02-004-CN-11860, MLTX-02-004-CN-11460, MLTX-02-004-CN-11550, MLTX-02-004-CN-11780, MLTX-02-004-CN-12840, MLTX-02-004-CN-11790, MLTX-02-004-CN-11760, MLTX-02-004-CN-11170 FF, MLTX-02-004-CN-11130 FF, MLTX-02-004-CN-11120 FF, MLTX-02-004-CN-11220 FF, Installation of MODON Logo on the entrance FF, MLTX-02-004-CN-10280 FF, MLTX-02-004-CN-11600, MLTX-02-004-PR-8370, MLTX-02-004-PR-8410, MLTX-02-004-CN-11480, MLTX-02-004-CN-11560, MLTX-02-004-CN-11540, MLTX-02-004-PR-8450, MLTX-02-004-EN-3100, MLTX-02-004-EN-3160, MLTX-02-004-EN-3120, Aggregate basecourse layer (Football Playground), MLTX-02-004-CN-10190, MLTX-02-004-CN-11320, MLTX-02-004-CN-11260, MLTX-02-004-PR-8130, MLTX-02-004-EN-4440, MLTX-02-004-CN-11100 → MLTX-02-004-CN-11780, MLTX-02-004-CN-11220, MLTX-02-004-CN-11460 | resources QA/QC Engineer [1400 h] → QA/QC Engineer [1420 h] |
| MLTX-02-004-TC-11880 | Testing and Commissioning for MEP Works for Landscape Works | 2027-02-11 → 2027-01-14 (-28d) | 2027-03-09 → 2027-02-08 (-29d) | 21d → 22d |  | -55.1d → -38d | MLTX-02-004-CN-11940, MLTX-02-004-CN-9960 FF, MLTX-02-004-CN-9970 FF, MLTX-02-004-CN-9980 FF, MLTX-02-004-CN-12040 FF, MLTX-02-004-CN-10670 FF, MLTX-02-004-CN-11460 FF, MLTX-02-004-CN-10280 FF, MLTX-02-004-EN-3630 → MLTX-02-004-TC-11870, MLTX-02-004-CN-11130, MLTX-02-004-TC-11870 FF | resources QA/QC Engineer [1392.9 h] → QA/QC Engineer [1432.8 h] |
| MLTX-02-004-TC-11860 | Testing and Commissioning for MEP Works for Playground Area | 2027-02-24 → 2027-02-11 (-13d) | 2027-03-21 → 2027-02-23 (-26d) | 18d → 10d |  | -63.1d → -34d | MLTX-02-004-CN-11460, MLTX-02-004-CN-10390, MLTX-02-004-CN-10490, MLTX-02-004-CN-10360, MLTX-02-004-CN-10370, MLTX-02-004-CN-10140 FF, MLTX-02-004-CN-10280 FF, MLTX-02-004-CN-13600 FF, MLTX-02-004-CN-13650 FF, MLTX-02-004-CN-10210 FF, Finishing Asphalt & Concrete Surface (Padel Playground), MLTX-02-004-PR-9600, MLTX-02-004-CN-13550 → MLTX-02-004-CN-10490 | resources QA/QC Engineer [1400 h] → QA/QC Engineer [1420 h] |
| MOB | **MOBILIZATION** | 2026-03-04 → 2026-03-26 (+22d) | 2026-04-04 → 2026-06-10 (+67d) |  |  |  |  |  |
| SURV | **TOPOGRAPHIC SURVEY** | 2026-03-04 → 2026-03-26 (+22d) | 2026-03-08 → 2026-03-30 (+22d) |  |  |  |  |  |
| MLTX-02-004-MB-1860 | Site Survey Works | 2026-03-04 A → 2026-03-26 A (+22d) | 2026-03-08 A → 2026-03-30 A (+22d) | 5d → 4d |  |  | MLTX-02-004-MS-1010 → MLTX-02-004-MS-1010 SS |  |
| OFFICE | **SITE FACILITIES & OFFICES** | 2026-03-04 → 2026-03-26 (+22d) | 2026-04-02 → 2026-06-02 (+61d) |  |  |  |  |  |
| MLTX-02-004-MB-1770 | Site Layout Plan | 2026-03-04 A → 2026-03-26 A (+22d) | 2026-03-08 A → 2026-03-30 A (+22d) | 5d → 4d |  |  | MLTX-02-004-MS-1010 → MLTX-02-004-MS-1010 SS |  |
| MLTX-02-004-MB-1780 | Clear & Grub for Offices & Access Road | 2026-03-09 A → 2026-03-31 A (+22d) | 2026-03-11 A → 2026-04-02 A (+22d) |  |  |  |  |  |
| MLTX-02-004-MB-1790 | Construct Site Access Roads | 2026-03-09 A → 2026-03-31 A (+22d) | 2026-03-12 A → 2026-04-04 A (+23d) |  |  |  |  |  |
| MLTX-02-004-MB-1800 | Construct Temporary Fence | 2026-03-12 A → 2026-04-15 A (+34d) | 2026-03-19 A → 2026-06-02 A (+75d) | 7d → 38.75d |  |  |  |  |
| MLTX-02-004-MB-1740 | Manpower Mobalization | 2026-03-29 A → 2026-04-16 A (+18d) | 2026-04-02 A → 2026-05-23 A (+51d) | 5d → 31.5d |  |  |  |  |
| MLTX-02-004-MB-1820 | Install Project Signs | 2026-03-14 A → 2026-04-20 A (+37d) | 2026-03-25 A → 2026-05-10 A (+46d) | 8d → 18d |  |  |  |  |
| MLTX-02-004-MB-1750 | Equipment Mobalization | 2026-03-26 A → 2026-05-06 A (+41d) | 2026-04-02 A → 2026-05-07 A (+35d) | 7d → 2d |  |  |  |  |
| MLTX-02-004-MB-1810 | Construct Site Offices & Storage | 2026-03-14 A → 2026-05-06 A (+53d) | 2026-04-01 A → 2026-05-07 A (+36d) | 14d → 2d |  |  | MLTX-02-004-MB-1790, MLTX-02-004-MB-1800 → MLTX-02-004-MB-1790 |  |
| MLTX-02-004-MB-1830 | Install Site Facilities | 2026-03-24 A → 2026-05-06 A (+43d) | 2026-03-28 A → 2026-05-07 A (+40d) | 4d → 1d |  |  |  |  |
| MLTX-02-004-MB-1840 | Electrical Works & Connections | 2026-03-24 A → 2026-05-06 A (+43d) | 2026-03-30 A → 2026-05-07 A (+38d) | 6d → 1d |  |  | MLTX-02-004-MB-1800, MLTX-02-004-MB-1830 → MLTX-02-004-MB-1800 |  |
| MLTX-02-004-MB-1850 | Construct Parking Sheds | 2026-03-24 A → 2026-05-06 A (+43d) | 2026-03-30 A → 2026-05-07 A (+38d) | 6d → 1d |  |  | MLTX-02-004-MB-1800, MLTX-02-004-MB-1830 → MLTX-02-004-MB-1800 |  |

| ID | Task | Start | Finish | Duration | Predecessors |
| --- | --- | --- | --- | --- | --- |
| PRELI | **PRELIMINARY SUBMITTALS** | 2026-03-09 → 2026-03-31 (+22d) | 2026-04-04 → 2026-06-10 (+67d) |  |  |
| P&S | **PREPARATIONS & SUBMITTAL BY CONTRACTORS** | 2026-03-09 → 2026-03-31 (+22d) | 2026-03-19 → 2026-04-30 (+42d) |  |  |
| MLTX-02-004-MB-1760 | Preparation and Submittal of Detailed Work Order Programme (Baseline) | 2026-03-09 A → 2026-03-31 A (+22d) | 2026-03-19 A → 2026-04-28 A (+40d) | 10d → 25d |  |
| MLTX-02-004-MB-1870 | Preparation and Submittal of Project Execution Plan | 2026-03-09 A → 2026-03-31 A (+22d) | 2026-03-17 A → 2026-04-30 A (+44d) | 8d → 27d |  |
| MLTX-02-004-MB-1880 | Submission of Contractor Project Quality Plan | 2026-03-09 A → 2026-03-31 A (+22d) | 2026-03-17 A → 2026-04-11 A (+25d) | 8d → 10d | MLTX-02-004-MB-1770, MLTX-02-004-MB-1870 → MLTX-02-004-MB-1770 |
| MLTX-02-004-MB-1890 | Submission of Construction Safety & Environmental Management Plan | 2026-03-09 A → 2026-03-31 A (+22d) | 2026-03-17 A → 2026-04-11 A (+25d) | 8d → 10d | MLTX-02-004-MB-1770, MLTX-02-004-MB-1870 → MLTX-02-004-MB-1770 |
| MLTX-02-004-MB-1900 | Preparation and Submittal of Organization Chart | 2026-03-09 A → 2026-03-31 A (+22d) | 2026-03-17 A → 2026-04-08 A (+22d) |  | MLTX-02-004-MB-1770, MLTX-02-004-MB-1870 → MLTX-02-004-MB-1770 |
| MLTX-02-004-MB-1910 | Preparation and Submittal of Communication Plan | 2026-03-09 A → 2026-03-31 A (+22d) | 2026-03-17 A → 2026-04-08 A (+22d) |  | MLTX-02-004-MB-1770, MLTX-02-004-MB-1870 → MLTX-02-004-MB-1770 |
| APP | **APPROVALS BY EMPLOYERS** | 2026-03-18 → 2026-04-09 (+22d) | 2026-04-04 → 2026-06-10 (+67d) |  |  |
| MLTX-02-004-MB-1940 | Approval of Contractor Project Quality Plan | 2026-03-18 A → 2026-04-09 A (+22d) | 2026-04-01 A → 2026-04-30 A (+29d) | 10d → 19d | MLTX-02-004-MB-1880, MLTX-02-004-MB-1930 → MLTX-02-004-MB-1880 |
| MLTX-02-004-MB-1960 | Approval of Organization Chart | 2026-03-18 A → 2026-04-09 A (+22d) | 2026-04-01 A → 2026-04-20 A (+19d) |  | MLTX-02-004-MB-1900, MLTX-02-004-MB-1930 → MLTX-02-004-MB-1900 |
| MLTX-02-004-MB-1970 | Approval of Communication Plan | 2026-03-18 A → 2026-04-09 A (+22d) | 2026-04-01 A → 2026-04-20 A (+19d) |  | MLTX-02-004-MB-1910, MLTX-02-004-MB-1930 → MLTX-02-004-MB-1910 |
| MLTX-02-004-MB-1920 | Approval of Detailed Work Order Programme (Baseline) | 2026-03-24 A → 2026-04-29 A (+36d) | 2026-04-04 A → 2026-04-29 A (+25d) | 10d → 1d |  |
| MLTX-02-004-MB-1930 | Approval of Project Execution Plan | 2026-03-18 A → 2026-05-13 A (+56d) | 2026-04-01 A → 2026-05-13 A (+42d) | 10d → 1d |  |
| MLTX-02-004-MB-1950 | Approval of Construction Safety & Environmental Management Plan | 2026-03-18 A → 2026-06-10 A (+84d) | 2026-04-01 A → 2026-06-10 A (+70d) | 10d → 1d | MLTX-02-004-MB-1890, MLTX-02-004-MB-1930 → MLTX-02-004-MB-1890 |
| ENGG | **ENGINEERING** | 2026-03-08 → 2026-03-31 (+23d) | 2026-11-08 → 2026-12-05 (+27d) |  |  |
| SD | **SHOP DRAWINGS** | 2026-03-08 → 2026-03-31 (+23d) | 2026-11-08 → 2026-08-26 (-74d) |  |  |
| SUB | **SHOP DRAWINGS SUBMISSION** | 2026-03-08 → 2026-03-31 (+23d) | 2026-11-08 → 2026-08-25 (-75d) |  |  |
| 2 | **SHOP DRAWING SUBMITTALS FOR EARTHING WORKS** | 2026-03-09 → 2026-03-31 (+22d) | 2026-03-14 → 2026-06-21 (+99d) |  |  |
| MLTX-02-004-EN-7830 | Shop DWG Submittal for Layout Plan | 2026-03-09 A → 2026-03-31 A (+22d) | 2026-03-14 A → 2026-04-16 A (+33d) |  |  |
| MLTX-02-004-EN-7840 | Shop DWG Submittal for Setting Out | 2026-03-09 A → 2026-03-31 A (+22d) | 2026-03-14 A → 2026-04-25 A (+42d) | 15d → 21d |  |
| MLTX-02-004-EN-7850 | Shop DWG Submittal for Grading Layout Plan | 2026-03-09 A → 2026-03-31 A (+22d) | 2026-03-14 A → 2026-04-06 A (+23d) | 15d → 6d | MLTX-02-004-EN-11270, MLTX-02-004-MB-1860 → MLTX-02-004-MB-1860 |
| MLTX-02-004-EN-7880 | Shop DWG Submittal for Standards Details | 2026-03-09 A → 2026-05-21 A (+73d) | 2026-03-14 A → 2026-05-21 A (+68d) | 15d → 1d |  |
| MLTX-02-004-EN-7860 | Shop DWG Submittal for Curb Setting Out Points | 2026-03-09 A → 2026-05-23 A (+75d) | 2026-03-14 A → 2026-05-23 A (+70d) | 15d → 1d |  |
| MLTX-02-004-EN-7870 | Shop DWG Submittal for Signing & Marking Layout Plan | 2026-03-09 A → 2026-06-21 A (+104d) | 2026-03-14 A → 2026-06-21 A (+99d) | 15d → 1d |  |
| ROAD | **SHOP DRAWING SUBMITTALS FOR SERVICE/TOILET WORKS** | 2026-03-09 → 2026-03-31 (+22d) | 2026-07-08 → 2026-08-25 (+48d) |  |  |
| 2 | **ARCHITECTURE WORKS** | 2026-03-09 → 2026-03-31 (+22d) | 2026-03-14 → 2026-04-13 (+30d) |  |  |
| MLTX-02-004-EN-8210 | Shop DWG Submittal for Floor Plan | 2026-03-09 A → 2026-03-31 A (+22d) | 2026-03-14 A → 2026-04-13 A (+30d) | 15d → 12d | MLTX-02-004-EN-7840 SS, MLTX-02-004-EN-7830 SS, MLTX-02-004-EN-7860 → MLTX-02-004-EN-7830 SS, MLTX-02-004-EN-7840 SS |
| MLTX-02-004-EN-8220 | Shop DWG Submittal for Elevations | 2026-03-09 A → 2026-03-31 A (+22d) | 2026-03-14 A → 2026-04-13 A (+30d) | 15d → 12d | MLTX-02-004-EN-8210 SS, MLTX-02-004-EN-7830 → MLTX-02-004-EN-8210 SS |
| MLTX-02-004-EN-8230 | Shop DWG Submittal for Sections | 2026-03-09 A → 2026-03-31 A (+22d) | 2026-03-14 A → 2026-04-13 A (+30d) | 15d → 12d |  |
| MLTX-02-004-EN-8240 | Shop DWG Submittal for Ceiling Plan | 2026-03-09 A → 2026-03-31 A (+22d) | 2026-03-14 A → 2026-04-13 A (+30d) | 15d → 12d |  |
| MLTX-02-004-EN-8250 | Shop DWG Submittal for Finishes Plan | 2026-03-09 A → 2026-03-31 A (+22d) | 2026-03-14 A → 2026-04-13 A (+30d) | 15d → 12d | MLTX-02-004-EN-8240 SS, MLTX-02-004-EN-11300 → MLTX-02-004-EN-8240 SS |
| MLTX-02-004-EN-8260 | Shop DWG Submittal for Toilet Details | 2026-03-09 A → 2026-03-31 A (+22d) | 2026-03-14 A → 2026-04-13 A (+30d) | 15d → 12d |  |
| MLTX-02-004-EN-8270 | Shop DWG Submittal for Doors/Windows Schedule | 2026-03-09 A → 2026-03-31 A (+22d) | 2026-03-14 A → 2026-04-13 A (+30d) | 15d → 12d |  |
| 1 | **STRUCTURE WORKS** | 2026-03-15 → 2026-04-08 (+24d) | 2026-03-19 → 2026-04-30 (+42d) |  |  |
| MLTX-02-004-EN-8280 | Shop DWG Submittal for Foundation Plan | 2026-03-15 A → 2026-04-08 A (+24d) | 2026-03-19 A → 2026-04-30 A (+42d) | 15d → 20d | MLTX-02-004-EN-8270, MLTX-02-004-EN-11310 → MLTX-02-004-EN-8270 |
| MLTX-02-004-EN-8290 | Shop DWG Submittal for Ground Floor Framing Plan | 2026-03-15 A → 2026-04-08 A (+24d) | 2026-03-19 A → 2026-04-30 A (+42d) | 21d → 20d |  |
| MLTX-02-004-EN-8300 | Shop DWG Submittal for Sections/Details | 2026-03-15 A → 2026-04-08 A (+24d) | 2026-03-19 A → 2026-04-30 A (+42d) | 21d → 20d |  |
| 3 | **MECHANCAL WORKS** | 2026-03-12 → 2026-04-08 (+27d) | 2026-07-08 → 2026-05-21 (-48d) |  |  |
| MLTX-02-004-EN-8310 | Shop DWG Submittal for HVAC Plan | 2026-07-08 A → 2026-04-08 A (-91d) | 2026-07-08 A → 2026-04-14 A (-85d) | 21d → 6d | MLTX-02-004-EN-8270, MLTX-02-004-EN-11280, MLTX-02-004-EN-8500 → MLTX-02-004-EN-8270 |
| MLTX-02-004-EN-8320 | Shop DWG Submittal for Exhaust Air Plan | 2026-07-08 A → 2026-04-08 A (-91d) | 2026-07-08 A → 2026-04-14 A (-85d) | 21d → 6d | MLTX-02-004-EN-8270, MLTX-02-004-EN-8500, MLTX-02-004-EN-8730, MLTX-02-004-EN-7920, MLTX-02-004-EN-7910 → MLTX-02-004-EN-8270 |
| MLTX-02-004-EN-8330 | Shop DWG Submittal for HVAC Equipment Schedule | 2026-07-08 A → 2026-04-08 A (-91d) | 2026-07-08 A → 2026-04-14 A (-85d) | 21d → 6d | MLTX-02-004-EN-8270, MLTX-02-004-EN-8500 → MLTX-02-004-EN-8270 |
| MLTX-02-004-EN-8340 | Shop DWG Submittal for Fire Fighting Layout | 2026-07-08 A → 2026-04-08 A (-91d) | 2026-07-08 A → 2026-04-14 A (-85d) | 21d → 6d |  |
| MLTX-02-004-EN-8360 | Shop DWG Submittal for Water Supply Details | 2026-03-12 A → 2026-04-08 A (+27d) | 2026-05-31 A → 2026-04-14 A (-47d) | 21d → 6d | MLTX-02-004-EN-8270, MLTX-02-004-EN-8500 → MLTX-02-004-EN-8270 |
| MLTX-02-004-EN-8380 | Shop DWG Submittal for Drainage Details | 2026-03-12 A → 2026-04-08 A (+27d) | 2026-05-31 A → 2026-04-14 A (-47d) | 21d → 6d | MLTX-02-004-EN-8270, MLTX-02-004-EN-8500 → MLTX-02-004-EN-8270 |
| MLTX-02-004-EN-8920 | Shop DWG Submittal for Dut Routing Layout | 2026-07-08 A → 2026-04-08 A (-91d) | 2026-07-08 A → 2026-04-14 A (-85d) | 21d → 6d | MLTX-02-004-EN-8270, MLTX-02-004-EN-8500 → MLTX-02-004-EN-8270 |
| MLTX-02-004-EN-8350 | Shop DWG Submittal for Water Supply Layout | 2026-03-12 A → 2026-05-06 A (+55d) | 2026-05-31 A → 2026-05-06 A (-25d) | 21d → 1d | MLTX-02-004-EN-8270, MLTX-02-004-EN-8500 → MLTX-02-004-EN-8270 |
| MLTX-02-004-EN-8370 | Shop DWG Submittal for Drainage Layout | 2026-03-12 A → 2026-05-21 A (+70d) | 2026-05-31 A → 2026-05-21 A (-10d) | 21d → 1d | MLTX-02-004-EN-8270, MLTX-02-004-EN-8500 → MLTX-02-004-EN-8270 |
| MLTX-02-004-EN-8930 | Shop DWG Submittal for Diffusers Layout | 2026-07-08 A → 2026-05-21 A (-48d) | 2026-07-08 A → 2026-05-21 A (-48d) | 21d → 1d | MLTX-02-004-EN-8270, MLTX-02-004-EN-8500 → MLTX-02-004-EN-8270 |
| 4 | **ELECTRICAL WORKS** | 2026-03-12 → 2026-04-08 (+27d) | 2026-05-04 → 2026-08-25 (+113d) |  |  |
| MLTX-02-004-EN-8390 | Shop DWG Submittal for Lighting Layout | 2026-03-15 A → 2026-04-08 A (+24d) | 2026-03-19 A → 2026-04-19 A (+31d) | 21d → 10d | MLTX-02-004-EN-8270, MLTX-02-004-EN-8700 → MLTX-02-004-EN-8270 |
| MLTX-02-004-EN-8430 | Shop DWG Submittal for Lighting Installation Details | 2026-03-15 A → 2026-04-08 A (+24d) | 2026-03-19 A → 2026-04-19 A (+31d) | 21d → 10d | MLTX-02-004-EN-8440 SS, MLTX-02-004-EN-8700 → MLTX-02-004-EN-8440 SS |
| MLTX-02-004-EN-8440 | Shop DWG Submittal for Power Installation Details | 2026-03-15 A → 2026-04-08 A (+24d) | 2026-03-19 A → 2026-04-19 A (+31d) | 15d → 10d |  |
| MLTX-02-004-EN-8480 | Shop DWG Submittal for Lightning Protection Details | 2026-03-15 A → 2026-04-08 A (+24d) | 2026-03-19 A → 2026-04-19 A (+31d) | 15d → 10d |  |
| MLTX-02-004-EN-8490 | Shop DWG Submittal for Fire Alarm Installation Details | 2026-03-15 A → 2026-04-08 A (+24d) | 2026-03-19 A → 2026-04-20 A (+32d) | 15d → 11d |  |
| MLTX-02-004-EN-8520 | Shop DWG Submittal for Lightning Protection System Layout | 2026-03-15 A → 2026-04-08 A (+24d) | 2026-03-19 A → 2026-04-19 A (+31d) | 15d → 10d |  |
| MLTX-02-004-EN-8530 | Shop DWG Submittal for Fire Alarm Layout | 2026-03-15 A → 2026-04-08 A (+24d) | 2026-03-19 A → 2026-04-20 A (+32d) | 15d → 11d |  |
| MLTX-02-004-EN-8540 | Shop DWG Submittal for Fire Alarm Riser Diagram | 2026-03-15 A → 2026-04-08 A (+24d) | 2026-03-19 A → 2026-04-20 A (+32d) | 15d → 11d |  |
| MLTX-02-004-EN-8570 | Shop DWG Submittal for Telephone & Data Layout | 2026-03-15 A → 2026-04-08 A (+24d) | 2026-03-19 A → 2026-04-20 A (+32d) | 21d → 11d | MLTX-02-004-EN-8540, MLTX-02-004-EN-8700 → MLTX-02-004-MS-1010 SS |
| MLTX-02-004-EN-8580 | Shop DWG Submittal for Telephone & Data Riser Diagram | 2026-03-15 A → 2026-04-08 A (+24d) | 2026-03-19 A → 2026-04-20 A (+32d) | 21d → 11d | MLTX-02-004-EN-8570 SS, MLTX-02-004-EN-8270, MLTX-02-004-EN-8700 → MLTX-02-004-EN-8270, MLTX-02-004-EN-8570 SS |
| MLTX-02-004-EN-8400 | Shop DWG Submittal for Power Layout | 2026-03-15 A → 2026-05-06 A (+52d) | 2026-03-19 A → 2026-05-07 A (+49d) | 21d → 2d | MLTX-02-004-EN-8270, MLTX-02-004-EN-8700 → MLTX-02-004-EN-8270 |
| MLTX-02-004-EN-8410 | Shop DWG Submittal for Power Single Line Diagram | 2026-03-12 A → 2026-05-06 A (+55d) | 2026-05-04 A → 2026-05-07 A (+3d) | 21d → 2d | MLTX-02-004-EN-8270, MLTX-02-004-EN-8700 → MLTX-02-004-EN-8270 |
| MLTX-02-004-EN-8420 | Shop DWG Submittal for Panel Board Schedules | 2026-03-12 A → 2026-05-06 A (+55d) | 2026-05-04 A → 2026-05-07 A (+3d) | 15d → 2d |  |
| MLTX-02-004-EN-8450 | Shop DWG Submittal for Cable Tray Installation Details | 2026-03-12 A → 2026-05-06 A (+55d) | 2026-05-04 A → 2026-05-07 A (+3d) | 15d → 2d | MLTX-02-004-EN-11290, MLTX-02-004-EN-8440 SS → MLTX-02-004-EN-8440 SS |
| MLTX-02-004-EN-8460 | Shop DWG Submittal for Manhole & Ductbank Details | 2026-03-12 A → 2026-05-06 A (+55d) | 2026-05-04 A → 2026-05-07 A (+3d) | 15d → 2d |  |
| MLTX-02-004-EN-8470 | Shop DWG Submittal for Grounding Details | 2026-03-15 A → 2026-05-06 A (+52d) | 2026-03-19 A → 2026-05-07 A (+49d) | 15d → 2d |  |
| MLTX-02-004-EN-8510 | Shop DWG Submittal for Grounding Layout | 2026-03-15 A → 2026-05-06 A (+52d) | 2026-03-19 A → 2026-05-07 A (+49d) | 15d → 2d | MLTX-02-004-EN-8490, MLTX-02-004-EN-11260 → MLTX-02-004-MS-1010 SS |
| MLTX-02-004-EN-8500 | Shop DWG Submittal for CCTV Details | 2026-03-15 A → 2026-08-25 A (+163d) | 2026-03-19 A → 2026-08-25 A (+159d) | 15d → 5d | MLTX-02-004-EN-8490 SS, MLTX-02-004-EN-8700 → MLTX-02-004-EN-8490 |
| MLTX-02-004-EN-8550 | Shop DWG Submittal for CCTV Layout | 2026-03-15 A → 2026-08-25 A (+163d) | 2026-03-15 A → 2026-08-25 A (+163d) | 15d → 5d | MLTX-02-004-EN-8540 SS, MLTX-02-004-EN-8700 → MLTX-02-004-EN-8540 |
| MLTX-02-004-EN-8560 | Shop DWG Submittal for CCTV Riser Diagram | 2026-03-24 A → 2026-08-25 A (+154d) | 2026-04-04 A → 2026-08-25 A (+143d) | 15d → 5d | MLTX-02-004-EN-8550 SS, MLTX-02-004-EN-8700 → MLTX-02-004-MS-1010 SS |

| ID | Task | Start | Finish | Duration | Predecessors |
| --- | --- | --- | --- | --- | --- |
| ELE | **SHOP DRAWINGS SUBMITTALS FOR PLAYGROUND WORKS** | 2026-03-08 → 2026-03-31 (+23d) | 2026-11-08 → 2026-08-25 (-75d) |  |  |
| 3 | **ARCHITECTURE WORKS** | 2026-03-08 → 2026-03-31 (+23d) | 2026-05-24 → 2026-05-14 (-10d) |  |  |
| MLTX-02-004-EN-8780 | Shop DWG Submittal for Playground Plan/Layout | 2026-03-09 A → 2026-03-31 A (+22d) | 2026-03-14 A → 2026-04-18 A (+35d) | 15d → 16d |  |
| MLTX-02-004-EN-8800 | Shop DWG Submittal for Sections | 2026-03-09 A → 2026-03-31 A (+22d) | 2026-03-14 A → 2026-04-18 A (+35d) | 15d → 16d |  |
| MLTX-02-004-EN-8810 | Shop DWG Submittal for Interlock Pattern Plan | 2026-03-09 A → 2026-03-31 A (+22d) | 2026-03-14 A → 2026-04-07 A (+24d) | 21d → 7d |  |
| MLTX-02-004-EN-8790 | Shop DWG Submittal for Furniture & Marking | 2026-03-09 A → 2026-05-13 A (+65d) | 2026-03-14 A → 2026-05-14 A (+61d) | 15d → 2d |  |
| MLTX-02-004-EN-8820 | Shop DWG Submittal for Doors/Windows Schedule | 2026-03-08 A → 2026-05-13 A (+66d) | 2026-05-24 A → 2026-05-14 A (-10d) | 21d → 2d |  |
| MLTX-02-004-EN-8850 | Shop DWG Submittal for Dome Internal Layout | 2026-03-09 A → 2026-05-13 A (+65d) | 2026-03-14 A → 2026-05-14 A (+61d) | 21d → 2d |  |
| 4 | **STRUCTURE WORKS** | 2026-03-14 → 2026-05-13 (+60d) | 2026-06-02 → 2026-05-14 (-19d) |  |  |
| MLTX-02-004-EN-8830 | Shop DWG Submittal for Air Dome System | 2026-03-14 A → 2026-05-13 A (+60d) | 2026-05-10 A → 2026-05-14 A (+4d) | 21d → 2d |  |
| MLTX-02-004-EN-8840 | Shop DWG Submittal for Foundation of Air Dome | 2026-03-14 A → 2026-05-13 A (+60d) | 2026-06-02 A → 2026-05-14 A (-19d) | 21d → 2d |  |
| MLTX-02-004-EN-8860 | Shop DWG Submittal for Anchor Bolt Layout of Air Dome | 2026-03-14 A → 2026-05-13 A (+60d) | 2026-06-02 A → 2026-05-14 A (-19d) | 21d → 2d |  |
| 5 | **AIR DOME SYSTEM** | 2026-03-14 → 2026-05-13 (+60d) | 2026-10-13 → 2026-05-14 (-152d) |  |  |
| MLTX-02-004-EN-8870 | Shop DWG Submittal for Air Dome Structural Layout | 2026-03-14 A → 2026-05-13 A (+60d) | 2026-05-10 A → 2026-05-14 A (+4d) | 21d → 2d |  |
| MLTX-02-004-EN-8880 | Shop DWG Submittal for Membrane Panel Layout | 2026-06-21 A → 2026-05-13 A (-39d) | 2026-06-21 A → 2026-05-14 A (-38d) | 21d → 2d |  |
| MLTX-02-004-EN-8890 | Shop DWG Submittal for Cable Tension Layout | 2026-10-13 A → 2026-05-13 A (-153d) | 2026-10-13 A → 2026-05-14 A (-152d) | 15d → 2d | MLTX-02-004-EN-8880 SS, MLTX-02-004-EN-7900 → MLTX-02-004-EN-8880 SS |
| MLTX-02-004-EN-8900 | Shop DWG Submittal for Airlock Door Details | 2026-10-13 A → 2026-05-13 A (-153d) | 2026-10-13 A → 2026-05-14 A (-152d) | 25d → 2d | MLTX-02-004-EN-8890 SS, MLTX-02-004-EN-8870 → MLTX-02-004-EN-8890 SS |
| MLTX-02-004-EN-8910 | Shop DWG Submittal for Emergency Exit Details | 2026-10-13 A → 2026-05-13 A (-153d) | 2026-10-13 A → 2026-05-14 A (-152d) | 30d → 2d | MLTX-02-004-EN-8900 SS, MLTX-02-004-EN-8870 → MLTX-02-004-EN-8900 SS |
| 6 | **SPORTS EQUIPMENT** | 2026-06-29 → 2026-05-13 (-47d) | 2026-06-29 → 2026-05-14 (-46d) |  |  |
| MLTX-02-004-EN-8940 | Shop DWG Submittal for Football Turf Installation | 2026-06-29 A → 2026-05-13 A (-47d) | 2026-06-29 A → 2026-05-14 A (-46d) | 21d → 2d | MLTX-02-004-EN-8870, MLTX-02-004-EN-11790 → MLTX-02-004-EN-8910 SS |
| MLTX-02-004-EN-8950 | Shop DWG Submittal for Basketball Court Marking | 2026-06-29 A → 2026-05-13 A (-47d) | 2026-06-29 A → 2026-05-14 A (-46d) | 21d → 2d |  |
| MLTX-02-004-EN-8960 | Shop DWG Submittal for Padel Court Structure | 2026-06-29 A → 2026-05-13 A (-47d) | 2026-06-29 A → 2026-05-14 A (-46d) | 21d → 2d |  |
| 1 | **MECHANCAL WORKS** | 2026-10-14 → 2026-04-08 (-189d) | 2026-10-14 → 2026-04-30 (-167d) |  |  |
| MLTX-02-004-EN-8760 | Shop DWG Submittal for HVAC Plan | 2026-10-14 A → 2026-04-08 A (-189d) | 2026-10-14 A → 2026-04-30 A (-167d) | 15d → 20d | MLTX-02-004-EN-8960 SS → MLTX-02-004-EN-11310, MLTX-02-004-EN-8960 SS |
| MLTX-02-004-EN-8770 | Shop DWG Submittal for Exhaust Air Plan | 2026-10-14 A → 2026-04-08 A (-189d) | 2026-10-14 A → 2026-04-30 A (-167d) | 15d → 20d | MLTX-02-004-EN-8760 SS, MLTX-02-004-EN-8720 → MLTX-02-004-EN-8760 SS |
| 2 | **ELECTRICAL WORKS** | 2026-03-14 → 2026-05-23 (+70d) | 2026-11-08 → 2026-08-25 (-75d) |  |  |
| MLTX-02-004-EN-8700 | Shop DWG Submittal for Fire Alarm Installation Details | 2026-08-25 A → 2026-05-23 A (-94d) | 2026-08-25 A → 2026-05-23 A (-94d) | 21d → 1d | MLTX-02-004-EN-8650, MLTX-02-004-EN-11670, MLTX-02-004-EN-11690, MLTX-02-004-EN-11680, MLTX-02-004-EN-11490 → MLTX-02-004-MS-1010 SS |
| MLTX-02-004-EN-8720 | Shop DWG Submittal for Fire Alarm Layout | 2026-03-14 A → 2026-05-23 A (+70d) | 2026-05-04 A → 2026-05-23 A (+19d) | 21d → 1d | MLTX-02-004-EN-8870 → MLTX-02-004-EN-8700 SS |
| MLTX-02-004-EN-8730 | Shop DWG Submittal for Fire Alarm Riser Diagram | 2026-03-14 A → 2026-05-23 A (+70d) | 2026-05-04 A → 2026-05-23 A (+19d) | 21d → 1d | MLTX-02-004-EN-8870 → MLTX-02-004-EN-8700 SS |
| MLTX-02-004-EN-8650 | Shop DWG Submittal for Lighting Layout | 2026-08-25 A → 2026-05-25 A (-92d) | 2026-08-25 A → 2026-05-25 A (-92d) | 21d → 1d | MLTX-02-004-EN-8940 → MLTX-02-004-EN-8770 SS |
| MLTX-02-004-EN-8660 | Shop DWG Submittal for Power Layout | 2026-11-08 A → 2026-07-08 A (-123d) | 2026-11-08 A → 2026-07-08 A (-123d) | 25d → 5d | MLTX-02-004-EN-8710 SS → MLTX-02-004-MS-1010 |
| MLTX-02-004-EN-8670 | Shop DWG Submittal for Power Single Line Diagram | 2026-10-14 A → 2026-07-08 A (-98d) | 2026-10-14 A → 2026-07-08 A (-98d) | 25d → 5d | MLTX-02-004-EN-8710 SS → MLTX-02-004-MS-1010 SS |
| MLTX-02-004-EN-8680 | Shop DWG Submittal for Panel Board Schedules | 2026-10-14 A → 2026-07-08 A (-98d) | 2026-10-14 A → 2026-07-08 A (-98d) | 25d → 5d | MLTX-02-004-EN-8670 SS → MLTX-02-004-MS-1010 |
| MLTX-02-004-EN-8690 | Shop DWG Submittal for Power Installation Details | 2026-11-08 A → 2026-07-08 A (-123d) | 2026-11-08 A → 2026-07-08 A (-123d) | 30d → 5d | MLTX-02-004-EN-8680 SS → MLTX-02-004-MS-1010 |
| MLTX-02-004-EN-8710 | Shop DWG Submittal for CCTV Details |  |  | 21d → 5d | MLTX-02-004-EN-8650 SS → MLTX-02-004-MS-1010 |
| MLTX-02-004-EN-8740 | Shop DWG Submittal for CCTV Layout |  |  | 21d → 5d | MLTX-02-004-EN-8730 SS, MLTX-02-004-EN-8700 → MLTX-02-004-MS-1010 |
| MLTX-02-004-EN-8750 | Shop DWG Submittal for CCTV Riser Diagram |  |  | 21d → 5d | MLTX-02-004-EN-8740 SS → MLTX-02-004-MS-1010 |
| EAR | **SHOP DRAWINGS SUBMITTALS FOR LANDSCAPE WORKS** | 2026-03-08 → 2026-03-31 (+23d) | 2026-07-30 → 2026-07-18 (-12d) |  |  |
| 3 | **ARCHITECTURE WORKS** | 2026-03-09 → 2026-03-31 (+22d) | 2026-03-19 → 2026-05-14 (+56d) |  |  |
| MLTX-02-004-EN-8590 | Shop DWG Submittal for Landscape Layout | 2026-03-09 A → 2026-03-31 A (+22d) | 2026-03-14 A → 2026-04-16 A (+33d) | 21d → 15d | MLTX-02-004-MB-1860, MLTX-02-004-EN-8620 → MLTX-02-004-MB-1860 |
| MLTX-02-004-EN-8600 | Shop DWG Submittal for Hardscape Plan | 2026-03-09 A → 2026-05-13 A (+65d) | 2026-03-14 A → 2026-05-14 A (+61d) | 21d → 2d |  |
| MLTX-02-004-EN-8610 | Shop DWG Submittal for Planting Plan | 2026-03-15 A → 2026-05-13 A (+59d) | 2026-03-19 A → 2026-05-14 A (+56d) | 15d → 2d | MLTX-02-004-EN-8620, MLTX-02-004-EN-8590 → MLTX-02-004-EN-8620 |
| MLTX-02-004-EN-8620 | Shop DWG Submittal for Landscape Details | 2026-03-09 A → 2026-05-13 A (+65d) | 2026-03-14 A → 2026-05-14 A (+61d) | 15d → 2d |  |
| 1 | **MECHANCAL WORKS** | 2026-03-08 → 2026-07-18 (+132d) | 2026-06-04 → 2026-07-18 (+44d) |  |  |
| MLTX-02-004-EN-8630 | Shop DWG Submittal for Irrigation Details | 2026-03-08 A → 2026-07-18 A (+132d) | 2026-06-04 A → 2026-07-18 A (+44d) | 21d → 5d |  |
| MLTX-02-004-EN-8640 | Shop DWG Submittal for Irrigation Layout | 2026-03-08 A → 2026-07-18 A (+132d) | 2026-06-04 A → 2026-07-18 A (+44d) | 21d → 5d |  |
| 2 | **ELECTRICAL WORKS** | 2026-07-30 → 2026-05-23 (-68d) | 2026-07-30 → 2026-05-23 (-68d) |  |  |
| MLTX-02-004-EN-7890 | Shop DWG Submittal for Lighting General Arrangement | 2026-07-30 A → 2026-05-23 A (-68d) | 2026-07-30 A → 2026-05-23 A (-68d) | 30d → 1d |  |
| MLTX-02-004-EN-7900 | Shop DWG Submittal for Lighting Network Layout | 2026-07-30 A → 2026-05-23 A (-68d) | 2026-07-30 A → 2026-05-23 A (-68d) | 30d → 1d |  |
| MLTX-02-004-EN-7910 | Shop DWG Submittal for Lighting Details | 2026-07-30 A → 2026-05-23 A (-68d) | 2026-07-30 A → 2026-05-23 A (-68d) | 30d → 1d | MLTX-02-004-MB-1860, MLTX-02-004-EN-8650 → MLTX-02-004-MB-1860 |
| MLTX-02-004-EN-7920 | Shop DWG Submittal for Lighting Single Line Diagram | 2026-07-30 A → 2026-05-23 A (-68d) | 2026-07-30 A → 2026-05-23 A (-68d) | 30d → 1d | MLTX-02-004-MB-1860, MLTX-02-004-EN-8650 → MLTX-02-004-MB-1860 |
| APP | **SHOP DRAWINGS APPROVALS** | 2026-03-14 → 2026-04-07 (+24d) | 2026-11-08 → 2026-08-26 (-74d) |  |  |
| 2 | **SHOP DRAWING APPROVAL FOR EARTHING WORKS** | 2026-03-15 → 2026-04-07 (+23d) | 2026-03-29 → 2026-07-01 (+94d) |  |  |
| MLTX-02-004-EN-11270 | Shop DWG Approval for Setting Out | 2026-03-15 A → 2026-04-07 A (+23d) | 2026-03-29 A → 2026-04-26 A (+28d) | 10d → 17d | MLTX-02-004-EN-7840 → MLTX-02-004-EN-11260, MLTX-02-004-EN-7840 |
| MLTX-02-004-EN-11260 | Shop DWG Approval for Layout Plan | 2026-03-15 A → 2026-05-21 A (+67d) | 2026-03-29 A → 2026-05-21 A (+53d) | 21d → 1d | MLTX-02-004-EN-7830 → MLTX-02-004-EN-11900, MLTX-02-004-EN-7830 |
| MLTX-02-004-EN-11280 | Shop DWG Approval for Grading Layout Plan | 2026-03-15 A → 2026-05-21 A (+67d) | 2026-03-29 A → 2026-05-21 A (+53d) | 16d → 1d | MLTX-02-004-EN-7850 → MLTX-02-004-EN-11270, MLTX-02-004-EN-7850 |
| MLTX-02-004-EN-11310 | Shop DWG Approval for Standards Details | 2026-03-15 A → 2026-05-21 A (+67d) | 2026-03-29 A → 2026-05-21 A (+53d) | 15d → 1d | MLTX-02-004-EN-7880 → MLTX-02-004-EN-11300, MLTX-02-004-EN-7880 |
| MLTX-02-004-EN-11290 | Shop DWG Approval for Curb Setting Out Points | 2026-03-15 A → 2026-05-23 A (+69d) | 2026-03-29 A → 2026-05-23 A (+55d) | 21d → 1d | MLTX-02-004-EN-7860 → MLTX-02-004-EN-11280, MLTX-02-004-EN-7860 |
| MLTX-02-004-EN-11300 | Shop DWG Approval for Signing & Marking Layout Plan | 2026-03-15 A → 2026-07-01 A (+108d) | 2026-03-29 A → 2026-07-01 A (+94d) | 10d → 1d | MLTX-02-004-EN-7870 → MLTX-02-004-EN-11290, MLTX-02-004-EN-7870 |
| ROAD | **SHOP DRAWING APPROVAL FOR SERVICE/TOILET WORKS** | 2026-03-15 → 2026-04-14 (+30d) | 2026-07-28 → 2026-08-26 (+29d) |  |  |
| 2 | **ARCHITECTURE WORKS** | 2026-03-15 → 2026-04-14 (+30d) | 2026-03-29 → 2026-04-24 (+26d) |  |  |
| MLTX-02-004-EN-11360 | Shop DWG Approval for Floor Plan | 2026-03-15 A → 2026-04-14 A (+30d) | 2026-03-29 A → 2026-04-24 A (+26d) | 30d → 9d | MLTX-02-004-EN-8210, MLTX-02-004-EN-11610, MLTX-02-004-EN-11620, MLTX-02-004-EN-11640 → MLTX-02-004-EN-8210 |
| MLTX-02-004-EN-11370 | Shop DWG Approval for Elevations | 2026-03-15 A → 2026-04-14 A (+30d) | 2026-03-29 A → 2026-04-24 A (+26d) | 30d → 9d | MLTX-02-004-EN-8220, MLTX-02-004-EN-11380 → MLTX-02-004-EN-8220 |
| MLTX-02-004-EN-11380 | Shop DWG Approval for Sections | 2026-03-15 A → 2026-04-14 A (+30d) | 2026-03-29 A → 2026-04-24 A (+26d) | 30d → 9d | MLTX-02-004-EN-8230, MLTX-02-004-EN-11940 → MLTX-02-004-EN-11920, MLTX-02-004-EN-8230 |
| MLTX-02-004-EN-11390 | Shop DWG Approval for Ceiling Plan | 2026-03-15 A → 2026-04-14 A (+30d) | 2026-03-29 A → 2026-04-24 A (+26d) | 30d → 9d | MLTX-02-004-EN-8240, MLTX-02-004-EN-11380 → MLTX-02-004-EN-8240 |
| MLTX-02-004-EN-11400 | Shop DWG Approval for Finishes Plan | 2026-03-15 A → 2026-04-14 A (+30d) | 2026-03-29 A → 2026-04-24 A (+26d) | 30d → 9d | MLTX-02-004-EN-8250, MLTX-02-004-EN-11380 → MLTX-02-004-EN-8250 |
| MLTX-02-004-EN-11410 | Shop DWG Approval for Toilet Details | 2026-03-15 A → 2026-04-14 A (+30d) | 2026-03-29 A → 2026-04-24 A (+26d) | 30d → 9d | MLTX-02-004-EN-8260, MLTX-02-004-EN-11380 → MLTX-02-004-EN-8260 |
| MLTX-02-004-EN-11420 | Shop DWG Approval for Doors/Windows Schedule | 2026-03-15 A → 2026-04-14 A (+30d) | 2026-03-29 A → 2026-04-24 A (+26d) | 30d → 9d | MLTX-02-004-EN-8270, MLTX-02-004-EN-11380 → MLTX-02-004-EN-11940, MLTX-02-004-EN-8270 |
| 1 | **STRUCTURE WORKS** | 2026-03-24 → 2026-05-07 (+44d) | 2026-04-04 → 2026-05-07 (+33d) |  |  |
| MLTX-02-004-EN-11430 | Shop DWG Approval for Foundation Plan | 2026-03-24 A → 2026-05-07 A (+44d) | 2026-04-04 A → 2026-05-07 A (+33d) | 15d → 1d | MLTX-02-004-EN-8280, MLTX-02-004-EN-11380 → MLTX-02-004-EN-8280 |

| ID | Task | Start | Finish | Duration | Predecessors |
| --- | --- | --- | --- | --- | --- |
| MLTX-02-004-EN-11440 | Shop DWG Approval for Ground Floor Framing Plan | 2026-03-24 A → 2026-05-07 A (+44d) | 2026-04-04 A → 2026-05-07 A (+33d) | 21d → 1d |  |
| MLTX-02-004-EN-11450 | Shop DWG Approval for Sections/Details | 2026-03-24 A → 2026-05-07 A (+44d) | 2026-04-04 A → 2026-05-07 A (+33d) | 21d → 1d |  |
| 3 | **MECHANCAL WORKS** | 2026-03-18 → 2026-05-07 (+50d) | 2026-07-11 → 2026-05-21 (-51d) |  |  |
| MLTX-02-004-EN-11460 | Shop DWG Approval for HVAC Plan | 2026-07-11 A → 2026-05-07 A (-65d) | 2026-07-11 A → 2026-05-07 A (-65d) | 21d → 1d | MLTX-02-004-EN-8310, MLTX-02-004-EN-11660 → MLTX-02-004-EN-8310 |
| MLTX-02-004-EN-11470 | Shop DWG Approval for Exhaust Air Plan | 2026-07-11 A → 2026-05-07 A (-65d) | 2026-07-11 A → 2026-05-07 A (-65d) | 21d → 1d | MLTX-02-004-EN-8320, MLTX-02-004-EN-11660, MLTX-02-004-EN-11910, MLTX-02-004-EN-11330, MLTX-02-004-EN-8370 → MLTX-02-004-EN-8320 |
| MLTX-02-004-EN-11480 | Shop DWG Approval for HVAC Equipment Schedule | 2026-07-11 A → 2026-05-07 A (-65d) | 2026-07-11 A → 2026-05-11 A (-61d) | 21d → 4d | MLTX-02-004-EN-8330, MLTX-02-004-EN-11660 → MLTX-02-004-EN-8330 |
| MLTX-02-004-EN-11490 | Shop DWG Approval for Fire Fighting Layout | 2026-07-11 A → 2026-05-07 A (-65d) | 2026-07-11 A → 2026-05-07 A (-65d) | 21d → 1d |  |
| MLTX-02-004-EN-11500 | Shop DWG Approval for Water Supply Layout | 2026-03-18 A → 2026-05-07 A (+50d) | 2026-06-03 A → 2026-05-07 A (-27d) | 21d → 1d | MLTX-02-004-EN-8350, MLTX-02-004-EN-11660 → MLTX-02-004-EN-8350 |
| MLTX-02-004-EN-11510 | Shop DWG Approval for Water Supply Details | 2026-03-18 A → 2026-05-07 A (+50d) | 2026-06-03 A → 2026-05-07 A (-27d) | 21d → 1d | MLTX-02-004-EN-8360, MLTX-02-004-EN-11660 → MLTX-02-004-EN-8360 |
| MLTX-02-004-EN-11530 | Shop DWG Approval for Drainage Details | 2026-03-18 A → 2026-05-07 A (+50d) | 2026-06-03 A → 2026-05-07 A (-27d) | 21d → 1d | MLTX-02-004-EN-8380, MLTX-02-004-EN-11660 → MLTX-02-004-EN-8380 |
| MLTX-02-004-EN-12050 | Shop DWG Approval for Duct Routing Layout | 2026-07-11 A → 2026-05-07 A (-65d) | 2026-07-11 A → 2026-05-07 A (-65d) | 21d → 1d | MLTX-02-004-EN-8920, MLTX-02-004-EN-11660 → MLTX-02-004-EN-8920 |
| MLTX-02-004-EN-11520 | Shop DWG Approval for Drainage Layout | 2026-03-18 A → 2026-05-21 A (+64d) | 2026-06-03 A → 2026-05-21 A (-13d) | 21d → 1d | MLTX-02-004-EN-8370, MLTX-02-004-EN-11660, MLTX-02-004-EN-11870, MLTX-02-004-EN-11860, MLTX-02-004-EN-11540, MLTX-02-004-EN-11580 → MLTX-02-004-EN-8370 |
| MLTX-02-004-EN-12060 | Shop DWG Approval for Diffusers Layout | 2026-07-11 A → 2026-05-21 A (-51d) | 2026-07-11 A → 2026-05-21 A (-51d) | 21d → 1d | MLTX-02-004-EN-8930, MLTX-02-004-EN-11660 → MLTX-02-004-EN-8930 |
| 4 | **ELECTRICAL WORKS** | 2026-03-18 → 2026-04-15 (+28d) | 2026-07-28 → 2026-08-26 (+29d) |  |  |
| MLTX-02-004-EN-11540 | Shop DWG Approval for Lighting Layout | 2026-03-24 A → 2026-04-15 A (+22d) | 2026-04-04 A → 2026-04-26 A (+22d) | 21d → 10d | MLTX-02-004-EN-8390, MLTX-02-004-EN-8410 → MLTX-02-004-EN-8390 |
| MLTX-02-004-EN-11550 | Shop DWG Approval for Power Layout | 2026-03-24 A → 2026-04-15 A (+22d) | 2026-04-04 A → 2026-04-26 A (+22d) | 21d → 10d | MLTX-02-004-EN-8400, MLTX-02-004-EN-8390 → MLTX-02-004-EN-8400 |
| MLTX-02-004-EN-11580 | Shop DWG Approval for Lighting Installation Details | 2026-03-24 A → 2026-04-15 A (+22d) | 2026-04-04 A → 2026-04-26 A (+22d) | 21d → 10d | MLTX-02-004-EN-8430, MLTX-02-004-EN-8390 → MLTX-02-004-EN-8430 |
| MLTX-02-004-EN-11630 | Shop DWG Approval for Lightning Protection Details | 2026-03-24 A → 2026-04-15 A (+22d) | 2026-04-04 A → 2026-04-26 A (+22d) | 21d → 10d | MLTX-02-004-EN-8480, MLTX-02-004-EN-8570 → MLTX-02-004-EN-8480 |
| MLTX-02-004-EN-11670 | Shop DWG Approval for Lightning Protection System Layout | 2026-03-24 A → 2026-04-15 A (+22d) | 2026-04-04 A → 2026-04-26 A (+22d) | 21d → 10d |  |
| MLTX-02-004-EN-11640 | Shop DWG Approval for Fire Alarm Installation Details | 2026-03-24 A → 2026-04-21 A (+28d) | 2026-04-04 A → 2026-04-27 A (+23d) | 21d → 6d |  |
| MLTX-02-004-EN-11680 | Shop DWG Approval for Fire Alarm Layout | 2026-03-24 A → 2026-04-21 A (+28d) | 2026-04-04 A → 2026-04-27 A (+23d) | 21d → 6d |  |
| MLTX-02-004-EN-11690 | Shop DWG Approval for Fire Alarm Riser Diagram | 2026-03-24 A → 2026-04-21 A (+28d) | 2026-04-04 A → 2026-04-27 A (+23d) | 21d → 6d |  |
| MLTX-02-004-EN-11720 | Shop DWG Approval for Telephone & Data Layout | 2026-03-24 A → 2026-04-21 A (+28d) | 2026-04-04 A → 2026-04-27 A (+23d) | 21d → 6d | MLTX-02-004-EN-8570, MLTX-02-004-EN-8580 → MLTX-02-004-EN-8570 |
| MLTX-02-004-EN-11730 | Shop DWG Approval for Telephone & Data Riser Diagram | 2026-03-24 A → 2026-04-21 A (+28d) | 2026-04-04 A → 2026-04-27 A (+23d) | 21d → 6d | MLTX-02-004-EN-8580, MLTX-02-004-EN-8740 → MLTX-02-004-EN-8580 |
| MLTX-02-004-EN-11560 | Shop DWG Approval for Power Single Line Diagram | 2026-03-18 A → 2026-05-23 A (+66d) | 2026-05-07 A → 2026-05-23 A (+16d) | 21d → 1d | MLTX-02-004-EN-8410, MLTX-02-004-EN-8570 → MLTX-02-004-EN-8410 |
| MLTX-02-004-EN-11570 | Shop DWG Approval for Panel Board Schedules | 2026-03-18 A → 2026-05-23 A (+66d) | 2026-05-07 A → 2026-05-23 A (+16d) | 21d → 1d | MLTX-02-004-EN-8420, MLTX-02-004-EN-8390 → MLTX-02-004-EN-8420 |
| MLTX-02-004-EN-11590 | Shop DWG Approval for Power Installation Details | 2026-03-24 A → 2026-05-23 A (+60d) | 2026-04-04 A → 2026-05-23 A (+49d) | 21d → 1d | MLTX-02-004-EN-8440, MLTX-02-004-EN-8390 → MLTX-02-004-EN-8440 |
| MLTX-02-004-EN-11600 | Shop DWG Approval for Cable Tray Installation Details | 2026-03-18 A → 2026-05-23 A (+66d) | 2026-05-07 A → 2026-05-23 A (+16d) | 21d → 1d | MLTX-02-004-EN-8450, MLTX-02-004-EN-8570 → MLTX-02-004-EN-8450 |
| MLTX-02-004-EN-11610 | Shop DWG Approval for Manhole & Ductbank Details | 2026-03-18 A → 2026-05-23 A (+66d) | 2026-05-07 A → 2026-05-23 A (+16d) | 21d → 1d |  |
| MLTX-02-004-EN-11620 | Shop DWG Approval for Grounding Details | 2026-03-24 A → 2026-05-23 A (+60d) | 2026-04-04 A → 2026-05-23 A (+49d) | 21d → 1d |  |
| MLTX-02-004-EN-11660 | Shop DWG Approval for Grounding Layout | 2026-03-24 A → 2026-05-23 A (+60d) | 2026-04-04 A → 2026-05-23 A (+49d) | 21d → 1d | MLTX-02-004-EN-8510, MLTX-02-004-EN-8550 → MLTX-02-004-EN-8510 |
| MLTX-02-004-EN-11650 | Shop DWG Approval for CCTV Details | 2026-07-28 A → 2026-08-26 A (+29d) | 2026-07-28 A → 2026-08-26 A (+29d) | 30d → 10d | MLTX-02-004-EN-8500, MLTX-02-004-EN-8550 → MLTX-02-004-EN-8660, MLTX-02-004-EN-8670, MLTX-02-004-EN-8680, MLTX-02-004-EN-8690, MLTX-02-004-EN-8710, MLTX-02-004-EN-8740, MLTX-02-004-EN-8750, MLTX-02-004-EN-8500 |
| MLTX-02-004-EN-11700 | Shop DWG Approval for CCTV Layout | 2026-03-24 A → 2026-08-26 A (+155d) | 2026-04-04 A → 2026-08-26 A (+144d) | 30d → 10d | MLTX-02-004-EN-8550, MLTX-02-004-EN-8560 → MLTX-02-004-EN-8550 |
| MLTX-02-004-EN-11710 | Shop DWG Approval for CCTV Riser Diagram | 2026-03-24 A → 2026-08-26 A (+155d) | 2026-04-04 A → 2026-08-26 A (+144d) | 30d → 10d | MLTX-02-004-EN-8560, MLTX-02-004-EN-8740 → MLTX-02-004-EN-8560 |
| ELE | **SHOP DRAWINGS APPROVAL FOR PLAYGROUND WORKS** | 2026-03-14 → 2026-04-08 (+25d) | 2026-11-08 → 2026-08-26 (-74d) |  |  |
| 3 | **ARCHITECTURE WORKS** | 2026-03-14 → 2026-04-08 (+25d) | 2026-05-19 → 2026-06-18 (+30d) |  |  |
| MLTX-02-004-EN-11930 | Shop DWG Approval for Interlock Pattern Plan | 2026-03-14 A → 2026-04-08 A (+25d) | 2026-05-19 A → 2026-04-19 A (-30d) | 21d → 10d |  |
| MLTX-02-004-EN-11900 | Shop DWG Approval for Playground Plan/Layout | 2026-03-14 A → 2026-04-19 A (+36d) | 2026-05-19 A → 2026-04-24 A (-25d) | 15d → 5d |  |
| MLTX-02-004-EN-11920 | Shop DWG Approval for Sections | 2026-03-14 A → 2026-04-19 A (+36d) | 2026-05-19 A → 2026-04-24 A (-25d) | 15d → 5d |  |
| MLTX-02-004-EN-11940 | Shop DWG Approval for Doors/Windows Schedule | 2026-03-14 A → 2026-06-13 A (+91d) | 2026-05-19 A → 2026-06-13 A (+25d) | 21d → 1d |  |
| MLTX-02-004-EN-11980 | Shop DWG Approval for Dome Internal Layout | 2026-03-14 A → 2026-06-13 A (+91d) | 2026-05-19 A → 2026-06-13 A (+25d) | 21d → 1d | MLTX-02-004-EN-8850, MLTX-02-004-EN-11940 → MLTX-02-004-EN-8850 |
| MLTX-02-004-EN-11910 | Shop DWG Approval for Furniture & Marking | 2026-03-14 A → 2026-06-18 A (+96d) | 2026-05-19 A → 2026-06-18 A (+30d) | 30d → 1d |  |
| 4 | **STRUCTURE WORKS** | 2026-07-16 → 2026-06-24 (-22d) | 2026-07-16 → 2026-06-24 (-22d) |  |  |
| MLTX-02-004-EN-11950 | Shop DWG Approval for Air Dome System | 2026-07-16 A → 2026-06-24 A (-22d) | 2026-07-16 A → 2026-06-24 A (-22d) | 21d → 1d | MLTX-02-004-EN-8830, MLTX-02-004-EN-11930 → MLTX-02-004-EN-8830 |
| MLTX-02-004-EN-11960 | Shop DWG Approval for Foundation of Air Dome | 2026-07-16 A → 2026-06-24 A (-22d) | 2026-07-16 A → 2026-06-24 A (-22d) | 21d → 1d | MLTX-02-004-EN-8840, MLTX-02-004-EN-11930 → MLTX-02-004-EN-8840 |
| MLTX-02-004-EN-11970 | Shop DWG Approval for Foundation of Air Dome | 2026-07-16 A → 2026-06-24 A (-22d) | 2026-07-16 A → 2026-06-24 A (-22d) | 21d → 1d | MLTX-02-004-EN-11960 SS, MLTX-02-004-EN-11930 → MLTX-02-004-EN-11960 SS |
| MLTX-02-004-EN-11990 | Shop DWG Approval for Anchor Bolt Layout of Air Dome | 2026-07-16 A → 2026-06-24 A (-22d) | 2026-07-16 A → 2026-06-24 A (-22d) | 21d → 1d | MLTX-02-004-EN-8860, MLTX-02-004-EN-11930 → MLTX-02-004-EN-8860 |
| 5 | **AIR DOME SYSTEM** | 2026-10-24 → 2026-06-13 (-133d) | 2026-10-24 → 2026-06-13 (-133d) |  |  |
| MLTX-02-004-EN-12000 | Shop DWG Approval for Air Dome Structural Layout | 2026-10-24 A → 2026-06-13 A (-133d) | 2026-10-24 A → 2026-06-13 A (-133d) | 15d → 1d | MLTX-02-004-EN-8870, MLTX-02-004-EN-11260, MLTX-02-004-EN-11750 → MLTX-02-004-EN-8870 |
| MLTX-02-004-EN-12010 | Shop DWG Approval for Membrane Panel Layout | 2026-10-24 A → 2026-06-13 A (-133d) | 2026-10-24 A → 2026-06-13 A (-133d) | 15d → 1d | MLTX-02-004-EN-12000, MLTX-02-004-EN-8880, MLTX-02-004-EN-11740 → MLTX-02-004-EN-8880 |
| MLTX-02-004-EN-12020 | Shop DWG Approval for Cable Tension Layout | 2026-10-24 A → 2026-06-13 A (-133d) | 2026-10-24 A → 2026-06-13 A (-133d) | 15d → 1d | MLTX-02-004-EN-8890, MLTX-02-004-EN-12010 SS, MLTX-02-004-EN-12010 FF → MLTX-02-004-EN-12010 SS, MLTX-02-004-EN-8890 |
| MLTX-02-004-EN-12030 | Shop DWG Approval for Airlock Door Details | 2026-10-24 A → 2026-06-13 A (-133d) | 2026-10-24 A → 2026-06-13 A (-133d) | 15d → 1d | MLTX-02-004-EN-12020, MLTX-02-004-EN-8900 → MLTX-02-004-EN-8900 |
| MLTX-02-004-EN-12040 | Shop DWG Approval for Emergency Exit Details | 2026-10-24 A → 2026-06-13 A (-133d) | 2026-10-24 A → 2026-06-13 A (-133d) | 15d → 1d | MLTX-02-004-EN-12030, MLTX-02-004-EN-8910, MLTX-02-004-EN-12080, MLTX-02-004-EN-12090 → MLTX-02-004-EN-8910 |
| 6 | **SPORTS EQUIPMENT** | 2026-07-20 → 2026-06-18 (-32d) | 2026-10-24 → 2026-06-18 (-128d) |  |  |
| MLTX-02-004-EN-12070 | Shop DWG Approval for Football Turf Installation | 2026-10-24 A → 2026-06-18 A (-128d) | 2026-10-24 A → 2026-06-18 A (-128d) | 30d → 1d | MLTX-02-004-EN-8940, MLTX-02-004-EN-11980, MLTX-02-004-EN-11800 → MLTX-02-004-EN-8940 |
| MLTX-02-004-EN-12080 | Shop DWG Approval for Basketball Court Marking | 2026-08-25 A → 2026-06-18 A (-68d) | 2026-08-25 A → 2026-06-18 A (-68d) | 21d → 1d |  |
| MLTX-02-004-EN-12090 | Shop DWG Approval for Padel Court Structure | 2026-07-20 A → 2026-06-18 A (-32d) | 2026-07-20 A → 2026-06-18 A (-32d) | 21d → 1d |  |
| 1 | **MECHANCAL WORKS** | 2026-10-24 → 2026-05-07 (-170d) | 2026-10-24 → 2026-05-07 (-170d) |  |  |
| MLTX-02-004-EN-11880 | Shop DWG Approval for HVAC Plan | 2026-10-24 A → 2026-05-07 A (-170d) | 2026-10-24 A → 2026-05-07 A (-170d) | 25d → 1d |  |
| MLTX-02-004-EN-11890 | Shop DWG Approval for Exhaust Air Plan | 2026-10-24 A → 2026-05-07 A (-170d) | 2026-10-24 A → 2026-05-07 A (-170d) | 15d → 1d | MLTX-02-004-EN-8770, MLTX-02-004-EN-11880 → MLTX-02-004-EN-8770 |
| 2 | **ELECTRICAL WORKS** | 2026-03-19 → 2026-04-15 (+27d) | 2026-11-08 → 2026-08-26 (-74d) |  |  |
| MLTX-02-004-EN-11800 | Shop DWG Approval for Lighting Layout | 2026-03-19 A → 2026-04-15 A (+27d) | 2026-05-18 A → 2026-04-26 A (-22d) | 21d → 10d | MLTX-02-004-EN-8870 → MLTX-02-004-EN-8650 |
| MLTX-02-004-EN-11810 | Shop DWG Approval for Power Layout | 2026-11-08 A → 2026-04-15 A (-207d) | 2026-11-08 A → 2026-04-26 A (-196d) | 25d → 10d | MLTX-02-004-EN-8660, MLTX-02-004-EN-12070 → MLTX-02-004-MS-1010 SS |
| MLTX-02-004-EN-11840 | Shop DWG Approval for Power Installation Details | 2026-11-08 A → 2026-04-15 A (-207d) | 2026-11-08 A → 2026-04-26 A (-196d) | 15d → 10d | MLTX-02-004-EN-8690, MLTX-02-004-EN-11890, MLTX-02-004-EN-11850 → MLTX-02-004-MS-1010 SS |
| MLTX-02-004-EN-11820 | Shop DWG Approval for Power Single Line Diagram | 2026-10-24 A → 2026-07-08 A (-108d) | 2026-10-24 A → 2026-07-08 A (-108d) | 25d → 10d |  |
| MLTX-02-004-EN-11830 | Shop DWG Approval for Panel Board Schedules | 2026-10-24 A → 2026-07-08 A (-108d) | 2026-10-24 A → 2026-07-08 A (-108d) | 25d → 10d |  |
| MLTX-02-004-EN-11850 | Shop DWG Approval for CCTV Details | 2026-08-25 A → 2026-08-26 A (+1d) | 2026-08-25 A → 2026-08-26 A (+1d) | 21d → 10d |  |
| MLTX-02-004-EN-11860 | Shop DWG Approval for CCTV Layout | 2026-08-25 A → 2026-08-26 A (+1d) | 2026-08-25 A → 2026-08-26 A (+1d) | 21d → 10d |  |
| MLTX-02-004-EN-11870 | Shop DWG Approval for CCTV Riser Diagram | 2026-08-25 A → 2026-08-26 A (+1d) | 2026-08-25 A → 2026-08-26 A (+1d) | 21d → 10d |  |
| EAR | **SHOP DRAWINGS APPROVAL FOR LANDSCAPE WORKS** | 2026-03-14 → 2026-04-11 (+28d) | 2026-07-30 → 2026-07-18 (-12d) |  |  |

| ID | Task | Start | Finish | Duration | Complete | Total float | Predecessors | Other |
| --- | --- | --- | --- | --- | --- | --- | --- | --- |
| 3 | **ARCHITECTURE WORKS** | 2026-03-14 → 2026-04-17 (+34d) | 2026-05-06 → 2026-05-23 (+17d) |  |  |  |  |  |
| MLTX-02-004-EN-11740 | Shop DWG Approval for Landscape Layout | 2026-03-14 A → 2026-04-17 A (+34d) | 2026-04-14 A → 2026-04-24 A (+10d) | 21d → 6d |  |  | MLTX-02-004-EN-8590, MLTX-02-004-EN-11770, MLTX-02-004-EN-11310 → MLTX-02-004-EN-8590 |  |
| MLTX-02-004-EN-11750 | Shop DWG Approval for Hardscape Plan | 2026-03-14 A → 2026-05-23 A (+70d) | 2026-04-14 A → 2026-05-23 A (+39d) | 21d → 1d |  |  |  |  |
| MLTX-02-004-EN-11760 | Shop DWG Approval for Planting Plan | 2026-03-19 A → 2026-05-23 A (+65d) | 2026-05-06 A → 2026-05-23 A (+17d) | 15d → 1d |  |  | MLTX-02-004-EN-8610, MLTX-02-004-EN-11750 → MLTX-02-004-EN-8610 |  |
| MLTX-02-004-EN-11770 | Shop DWG Approval for Landscape Details | 2026-03-14 A → 2026-05-23 A (+70d) | 2026-04-14 A → 2026-05-23 A (+39d) | 21d → 1d |  |  |  |  |
| 1 | **MECHANCAL WORKS** | 2026-07-30 → 2026-07-18 (-12d) | 2026-07-30 → 2026-07-18 (-12d) |  |  |  |  |  |
| MLTX-02-004-EN-11780 | Shop DWG Approval for Irrigation Details | 2026-07-30 A → 2026-07-18 A (-12d) | 2026-07-30 A → 2026-07-18 A (-12d) | 21d → 10d |  |  |  |  |
| MLTX-02-004-EN-11790 | Shop DWG Approval for Irrigation Layout | 2026-07-30 A → 2026-07-18 A (-12d) | 2026-07-30 A → 2026-07-18 A (-12d) | 21d → 10d |  |  |  |  |
| 2 | **ELECTRICAL WORKS** | 2026-07-30 → 2026-04-11 (-110d) | 2026-07-30 → 2026-05-23 (-68d) |  |  |  |  |  |
| MLTX-02-004-EN-11320 | Shop DWG Approval for Lighting General Arrangement | 2026-07-30 A → 2026-04-11 A (-110d) | 2026-07-30 A → 2026-04-21 A (-100d) | 30d → 10d |  |  | MLTX-02-004-EN-7890, MLTX-02-004-EN-8740 → MLTX-02-004-EN-7890 |  |
| MLTX-02-004-EN-11330 | Shop DWG Approval for Lighting Network Layout | 2026-07-30 A → 2026-04-11 A (-110d) | 2026-07-30 A → 2026-04-21 A (-100d) | 30d → 10d |  |  |  |  |
| MLTX-02-004-EN-11340 | Shop DWG Approval for Lighting Details | 2026-07-30 A → 2026-04-11 A (-110d) | 2026-07-30 A → 2026-04-21 A (-100d) | 30d → 10d |  |  |  |  |
| MLTX-02-004-EN-11350 | Shop DWG Approval for Lighting Single Line Diagram | 2026-07-30 A → 2026-05-23 A (-68d) | 2026-07-30 A → 2026-05-23 A (-68d) | 30d → 1d |  |  |  |  |
| MTS | **METHOD STATEMENTS** | 2026-03-08 → 2026-03-31 (+23d) | 2026-09-12 → 2026-12-05 (+84d) |  |  |  |  |  |
| 1 | **METHOD STATEMENT SUBMITTAL** | 2026-03-08 → 2026-03-31 (+23d) | 2026-06-04 → 2026-11-21 (+170d) |  |  |  |  |  |
| 4 | **CIVIL WORKS** | 2026-03-09 → 2026-03-31 (+22d) | 2026-03-14 → 2026-05-21 (+68d) |  |  |  |  |  |
| MLTX-02-004-EN-7930 | Preparation & Submission of Method Statement for Earthwork | 2026-03-09 A → 2026-03-31 A (+22d) | 2026-03-14 A → 2026-04-19 A (+36d) | 15d → 17d |  |  |  |  |
| MLTX-02-004-EN-7950 | Preparation & Submission of Method Statement for Waterproofing | 2026-03-09 A → 2026-03-31 A (+22d) | 2026-03-14 A → 2026-04-25 A (+42d) | 21d → 22d |  |  |  |  |
| MLTX-02-004-EN-7940 | Preparation & Submission of Method Statement for Concrete Works | 2026-03-09 A → 2026-05-21 A (+73d) | 2026-03-14 A → 2026-05-21 A (+68d) | 21d → 1d |  |  | MLTX-02-004-MB-1770, MLTX-02-004-EN-7950 → MLTX-02-004-MB-1770 |  |
| 1 | **ARCHITECTURE WORKS** | 2026-03-08 → 2026-05-31 (+84d) | 2026-06-02 → 2026-11-21 (+172d) |  |  |  |  |  |
| MLTX-02-004-EN-8030 | Preparation & Submission of Method Statement for Interlock/Curbstone Works | 2026-03-08 A → 2026-05-31 A (+84d) | 2026-05-25 A → 2026-05-31 A (+6d) | 21d → 1d |  |  | MLTX-02-004-MB-1770, MLTX-02-004-EN-8070 → MLTX-02-004-MB-1770 |  |
| MLTX-02-004-EN-8040 | Preparation & Submission of Method Statement for Parking Works | 2026-03-08 A → 2026-05-31 A (+84d) | 2026-05-25 A → 2026-05-31 A (+6d) | 21d → 1d |  |  | MLTX-02-004-MB-1770, MLTX-02-004-EN-7980 → MLTX-02-004-MB-1770 |  |
| MLTX-02-004-EN-8000 | Preparation & Submission of Method Statement for Tilling Works | 2026-03-08 A → 2026-06-06 A (+90d) | 2026-05-25 A → 2026-06-06 A (+12d) | 21d → 1d |  |  |  |  |
| MLTX-02-004-EN-8020 | Preparation & Submission of Method Statement for Doors/Windows Works | 2026-03-08 A → 2026-06-06 A (+90d) | 2026-06-02 A → 2026-06-06 A (+4d) | 21d → 1d |  |  | MLTX-02-004-MB-1770, MLTX-02-004-EN-8150 → MLTX-02-004-MB-1770 |  |
| MLTX-02-004-EN-8100 | Preparation & Submission of Method Statement for Gypsum Board Works | 2026-03-08 A → 2026-06-13 A (+97d) | 2026-06-02 A → 2026-06-13 A (+11d) | 21d → 1d |  |  |  |  |
| MLTX-02-004-EN-7980 | Preparation & Submission of Method Statement for Plastering Works | 2026-03-09 A → 2026-06-16 A (+99d) | 2026-03-14 A → 2026-06-16 A (+94d) | 15d → 1d |  |  | MLTX-02-004-MB-1770, MLTX-02-004-EN-8050 → MLTX-02-004-MB-1770 |  |
| MLTX-02-004-EN-7990 | Preparation & Submission of Method Statement for Masonary Works | 2026-03-08 A → 2026-06-16 A (+100d) | 2026-05-17 A → 2026-06-16 A (+30d) | 21d → 1d |  |  | MLTX-02-004-MB-1770, MLTX-02-004-EN-7940 → MLTX-02-004-MB-1770 |  |
| MLTX-02-004-EN-8010 | Preparation & Submission of Method Statement for Seats/Benches Works | 2026-03-08 A → 2026-06-18 A (+102d) | 2026-06-02 A → 2026-06-18 A (+16d) | 21d → 1d |  |  | MLTX-02-004-MB-1770, MLTX-02-004-EN-8000 → MLTX-02-004-MB-1770 |  |
| MLTX-02-004-EN-8050 | Preparation & Submission of Method Statement for Soft Scape Works | 2026-03-08 A → 2026-07-11 A (+125d) | 2026-06-02 A → 2026-07-11 A (+39d) | 21d → 5d |  |  | MLTX-02-004-MB-1770, MLTX-02-004-EN-11210, MLTX-02-004-EN-11050 → MLTX-02-004-MB-1770 |  |
| MLTX-02-004-EN-8080 | Preparation & Submission of Method Statement for Metal Works | 2026-03-08 A → 2026-07-11 A (+125d) | 2026-06-02 A → 2026-07-11 A (+39d) | 21d → 6d |  |  | MLTX-02-004-MB-1770, MLTX-02-004-EN-11210 → MLTX-02-004-MB-1770 |  |
| MLTX-02-004-EN-8090 | Preparation & Submission of Method Statement for Partitions Works | 2026-03-08 A → 2026-07-15 A (+129d) | 2026-06-02 A → 2026-07-15 A (+43d) | 21d → 5d |  |  | MLTX-02-004-MB-1770, MLTX-02-004-EN-11210 → MLTX-02-004-MB-1770 |  |
| MLTX-02-004-EN-8070 | Preparation & Submission of Method Statement for Air Dome Works | 2026-03-08 A → 2026-08-17 A (+162d) | 2026-06-02 A → 2026-08-17 A (+76d) | 30d → 5d |  |  | MLTX-02-004-MB-1770, MLTX-02-004-EN-8160 → MLTX-02-004-MB-1770 |  |
| MLTX-02-004-EN-8060 | Preparation & Submission of Method Statement for Fence Works | 2026-03-08 A → 2026-11-19 A (+256d) | 2026-06-02 A → 2026-11-21 A (+172d) | 30d → 5d |  |  |  |  |
| 2 | **MECHANICAL WORKS** | 2026-03-14 → 2026-04-07 (+24d) |  |  |  |  |  |  |
| MLTX-02-004-EN-8130 | Preparation & Submission of Method Statement for Fire Fighting System | 2026-03-14 A → 2026-04-07 A (+24d) | 2026-06-04 A → 2026-04-14 A (-51d) | 21d → 6d |  |  | MLTX-02-004-EN-7950, MLTX-02-004-EN-11070 → MLTX-02-004-EN-7950 |  |
| MLTX-02-004-EN-8110 | Preparation & Submission of Method Statement for Sewage/Drainage System | 2026-03-14 A → 2026-05-31 A (+78d) | 2026-05-04 A → 2026-05-31 A (+27d) | 21d → 1d |  |  | MLTX-02-004-EN-7930, MLTX-02-004-EN-8170 → MLTX-02-004-EN-7930 |  |
| MLTX-02-004-EN-8120 | Preparation & Submission of Method Statement for Water Supply System | 2026-03-14 A → 2026-06-04 A (+82d) | 2026-05-04 A → 2026-06-04 A (+31d) | 21d → 1d |  |  | MLTX-02-004-EN-7940, MLTX-02-004-EN-8700 → MLTX-02-004-EN-7940 |  |
| MLTX-02-004-EN-8140 | Preparation & Submission of Method Statement for Irrigation System | 2026-03-14 A → 2026-06-04 A (+82d) |  | 15d → 0d |  |  | MLTX-02-004-EN-7980, MLTX-02-004-EN-11070 → MLTX-02-004-EN-7980 | resources QA/QC Engineer [16.1 h] → QA/QC Engineer |
| MLTX-02-004-EN-8150 | Preparation & Submission of Method Statement for HVAC System | 2026-03-14 A → 2026-06-04 A (+82d) |  | 21d → 0d |  |  | MLTX-02-004-EN-7990, MLTX-02-004-EN-8010 → MLTX-02-004-EN-7990 | resources QA/QC Engineer [16.1 h] → QA/QC Engineer |
| 5 | **ELECTRICAL WORKS** | 2026-03-14 → 2026-06-18 (+96d) | 2026-05-11 → 2026-08-12 (+93d) |  |  |  |  |  |
| MLTX-02-004-EN-7960 | Preparation & Submission of Method Statement for Electrical Conduits/Pulling Works | 2026-03-14 A → 2026-06-18 A (+96d) | 2026-05-11 A → 2026-06-18 A (+38d) | 21d → 1d |  |  | MLTX-02-004-EN-8030, MLTX-02-004-EN-8170 → MLTX-02-004-EN-8030 |  |
| MLTX-02-004-EN-7970 | Preparation & Submission of Method Statement for Lighting Poles Installation | 2026-03-14 A → 2026-06-18 A (+96d) | 2026-05-11 A → 2026-06-18 A (+38d) | 21d → 1d |  |  | MLTX-02-004-EN-8050, MLTX-02-004-EN-8090 → MLTX-02-004-MS-1010 SS |  |
| MLTX-02-004-EN-8180 | Preparation & Submission of Method Statement for Lighting Works | 2026-03-14 A → 2026-06-18 A (+96d) | 2026-05-11 A → 2026-06-18 A (+38d) | 21d → 1d |  |  | MLTX-02-004-EN-8080, MLTX-02-004-EN-8050 → MLTX-02-004-MS-1010 SS |  |
| MLTX-02-004-EN-8190 | Preparation & Submission of Method Statement for Earthing/Lightning Works | 2026-03-14 A → 2026-06-18 A (+96d) | 2026-05-11 A → 2026-06-18 A (+38d) | 21d → 1d |  |  | MLTX-02-004-EN-8090, MLTX-02-004-EN-11850 → MLTX-02-004-MS-1010 SS |  |
| MLTX-02-004-EN-8160 | Preparation & Submission of Method Statement for Telecommunication & Data System | 2026-03-14 A → 2026-07-15 A (+123d) | 2026-05-11 A → 2026-07-15 A (+65d) | 30d → 7d |  |  | MLTX-02-004-EN-8060 → MLTX-02-004-EN-7970 |  |
| MLTX-02-004-EN-8170 | Preparation & Submission of Method Statement for CCTV System | 2026-03-14 A → 2026-07-22 A (+130d) | 2026-05-11 A → 2026-07-22 A (+72d) | 30d → 7d |  |  | MLTX-02-004-EN-8070, MLTX-02-004-EN-11210 → MLTX-02-004-EN-8070 |  |
| MLTX-02-004-EN-8200 | Preparation & Submission of Method Statement for Panel Boards Works | 2026-03-14 A → 2026-08-12 A (+151d) | 2026-05-11 A → 2026-08-12 A (+93d) | 21d → 6d |  |  |  |  |
| 2 | **METHOD STATEMENT APPROVAL** | 2026-03-14 → 2026-04-15 (+32d) | 2026-09-12 → 2026-12-05 (+84d) |  |  |  |  |  |
| 4 | **CIVIL WORKS** | 2026-03-15 → 2026-05-31 (+77d) | 2026-03-29 → 2026-05-31 (+63d) |  |  |  |  |  |
| MLTX-02-004-EN-10990 | Approval of Method Statement for Earthwork | 2026-03-15 A → 2026-05-31 A (+77d) | 2026-03-29 A → 2026-05-31 A (+63d) | 15d → 1d |  |  |  |  |
| MLTX-02-004-EN-11000 | Approval of Method Statement for Concrete Works | 2026-03-15 A → 2026-05-31 A (+77d) | 2026-03-29 A → 2026-05-31 A (+63d) | 30d → 1d |  |  | MLTX-02-004-EN-7940, MLTX-02-004-EN-11010 → MLTX-02-004-EN-7940 |  |
| MLTX-02-004-EN-11010 | Approval of Method Statement for Waterproofing | 2026-03-15 A → 2026-05-31 A (+77d) | 2026-03-29 A → 2026-05-31 A (+63d) | 21d → 1d |  |  |  |  |
| 1 | **ARCHITECTURE WORKS** | 2026-03-14 → 2026-05-31 (+78d) | 2026-09-12 → 2026-12-05 (+84d) |  |  |  |  |  |
| MLTX-02-004-EN-11090 | Approval of Method Statement for Interlock/Curbstone Works | 2026-08-10 A → 2026-05-31 A (-71d) | 2026-08-10 A → 2026-05-31 A (-71d) | 21d → 1d |  |  | MLTX-02-004-EN-8030, MLTX-02-004-EN-8050 → MLTX-02-004-EN-8030 |  |
| MLTX-02-004-EN-11100 | Approval of Method Statement for Parking Works | 2026-05-15 A → 2026-05-31 A (+16d) | 2026-05-15 A → 2026-05-31 A (+16d) | 21d → 1d |  |  | MLTX-02-004-EN-8040, MLTX-02-004-EN-11030 → MLTX-02-004-EN-8040 |  |
| MLTX-02-004-EN-11060 | Approval of Method Statement for Tilling Works | 2026-03-14 A → 2026-06-06 A (+84d) | 2026-05-21 A → 2026-06-06 A (+16d) | 21d → 1d |  |  | MLTX-02-004-EN-8000, MLTX-02-004-EN-11930, MLTX-02-004-EN-8110 → MLTX-02-004-EN-8000 |  |
| MLTX-02-004-EN-11080 | Approval of Method Statement for Doors/Windows Works | 2026-09-12 A → 2026-06-06 A (-98d) | 2026-09-12 A → 2026-06-06 A (-98d) | 21d → 1d |  |  | MLTX-02-004-EN-8020, MLTX-02-004-EN-11130, MLTX-02-004-EN-11120 → MLTX-02-004-EN-8020 |  |
| MLTX-02-004-EN-11040 | Approval of Method Statement for Plastering Works | 2026-03-15 A → 2026-06-18 A (+95d) | 2026-03-29 A → 2026-06-18 A (+81d) | 30d → 1d |  |  | MLTX-02-004-EN-7980, MLTX-02-004-EN-7970 → MLTX-02-004-EN-7980 |  |
| MLTX-02-004-EN-11050 | Approval of Method Statement for Masonary Works | 2026-03-14 A → 2026-06-18 A (+96d) | 2026-05-21 A → 2026-06-18 A (+28d) | 21d → 1d |  |  | MLTX-02-004-EN-7990, MLTX-02-004-EN-11250 → MLTX-02-004-EN-7990 |  |
| MLTX-02-004-EN-11150 | Approval of Method Statement for Gypsum Board Works | 2026-08-20 A → 2026-06-18 A (-63d) | 2026-08-20 A → 2026-06-18 A (-63d) | 21d → 1d |  |  | MLTX-02-004-EN-8100, MLTX-02-004-EN-11070 → MLTX-02-004-EN-8100 |  |
| MLTX-02-004-EN-11070 | Approval of Method Statement for Seats/Benches Works | 2026-09-12 A → 2026-07-11 A (-63d) | 2026-09-12 A → 2026-07-11 A (-63d) | 21d → 5d |  |  | MLTX-02-004-EN-8010, MLTX-02-004-EN-11030, MLTX-02-004-EN-11170, MLTX-02-004-EN-11230 → MLTX-02-004-EN-8010 |  |
| MLTX-02-004-EN-11110 | Approval of Method Statement for Soft Scape Works | 2026-09-12 A → 2026-07-11 A (-63d) | 2026-09-12 A → 2026-07-11 A (-63d) | 21d → 10d |  |  | MLTX-02-004-EN-8050, MLTX-02-004-EN-11140, MLTX-02-004-EN-11130 → MLTX-02-004-EN-11070, MLTX-02-004-EN-8050 |  |
| MLTX-02-004-EN-11140 | Approval of Method Statement for Partitions Works | 2026-09-12 A → 2026-07-18 A (-56d) | 2026-09-12 A → 2026-07-18 A (-56d) | 21d → 10d |  |  | MLTX-02-004-EN-8090, MLTX-02-004-EN-11470, MLTX-02-004-EN-11060, MLTX-02-004-EN-11530, MLTX-02-004-EN-11040 → MLTX-02-004-EN-11020, MLTX-02-004-EN-8090 |  |
| MLTX-02-004-EN-11130 | Approval of Method Statement for Air Dome Works | 2026-07-12 A → 2026-08-27 A (+46d) | 2026-07-12 A → 2026-08-27 A (+46d) | 30d → 10d |  |  | MLTX-02-004-EN-8070, MLTX-02-004-EN-11030 → MLTX-02-004-EN-8070 |  |
| MLTX-02-004-EN-11120 | Approval of Method Statement for Fence Works | 2026-07-16 A → 2026-11-24 (+131d) | 2026-07-16 A → 2026-12-05 (+142d) | 30d → 10d | 100% → 0% | none → 44d | MLTX-02-004-EN-8060, MLTX-02-004-EN-11070 → MLTX-02-004-EN-8060 |  |
| 2 | **MECHANICAL WORKS** | 2026-06-24 → 2026-04-15 (-70d) | 2026-08-26 → 2026-06-11 (-76d) |  |  |  |  |  |
| MLTX-02-004-EN-11180 | Approval of Method Statement for Fire Fighting System | 2026-08-26 A → 2026-04-15 A (-133d) | 2026-08-26 A → 2026-04-26 A (-122d) | 21d → 10d |  |  | MLTX-02-004-EN-8130, MLTX-02-004-EN-11110, MLTX-02-004-EN-11200, MLTX-02-004-EN-11150, MLTX-02-004-EN-8020 → MLTX-02-004-EN-8130 | resources Consultant Staff [16.1 h] → Consultant Staff [26.1 h] |
| MLTX-02-004-EN-11160 | Approval of Method Statement for Sewage/Drainage System | 2026-06-24 A → 2026-06-11 A (-13d) | 2026-06-24 A → 2026-06-11 A (-13d) | 21d → 1d |  |  | MLTX-02-004-EN-8110, MLTX-02-004-EN-11030 → MLTX-02-004-EN-8110 | resources Consultant Staff [16.1 h] → Consultant Staff [26.1 h] |
| MLTX-02-004-EN-11170 | Approval of Method Statement for Water Supply System | 2026-07-12 A → 2026-06-11 A (-31d) | 2026-07-18 A → 2026-06-11 A (-37d) | 21d → 1d |  |  | MLTX-02-004-EN-8120, MLTX-02-004-EN-7890 → MLTX-02-004-EN-8120 | resources Consultant Staff [16.1 h] → Consultant Staff [26.1 h] |
| MLTX-02-004-EN-11190 | Approval of Method Statement for Irrigation System | 2026-08-25 A → 2026-06-11 A (-75d) | 2026-08-25 A → 2026-06-11 A (-75d) | 15d → 1d |  |  | MLTX-02-004-EN-8140, MLTX-02-004-EN-11130 → MLTX-02-004-EN-8140 | resources Consultant Staff [16.1 h] → Consultant Staff [26.1 h] |

| ID | Task | Start | Finish | Duration | Predecessors | Other |
| --- | --- | --- | --- | --- | --- | --- |
| MLTX-02-004-EN-11200 | Approval of Method Statement for HVAC System | 2026-08-18 A → 2026-06-11 A (-68d) | 2026-08-18 A → 2026-06-11 A (-68d) | 21d → 1d | MLTX-02-004-EN-8150, MLTX-02-004-EN-11070 → MLTX-02-004-EN-8150 | resources Consultant Staff [16.1 h] → Consultant Staff [26.1 h] |
| 5 | **ELECTRICAL WORKS** | 2026-07-14 → 2026-07-11 (-3d) | 2026-08-26 → 2026-08-15 (-11d) |  |  |  |
| MLTX-02-004-EN-11020 | Approval of Method Statement for Electrical Conduits/Pulling Works | 2026-07-14 A → 2026-07-11 A (-3d) | 2026-07-14 A → 2026-07-11 A (-3d) | 21d → 5d | MLTX-02-004-EN-7960, MLTX-02-004-EN-7970 → MLTX-02-004-EN-7960 | resources Consultant Staff [16.1 h] → Consultant Staff [26.1 h] |
| MLTX-02-004-EN-11030 | Approval of Method Statement for Lighting Poles Installation | 2026-08-26 A → 2026-07-11 A (-46d) | 2026-08-26 A → 2026-07-11 A (-46d) | 21d → 10d | MLTX-02-004-EN-7970, MLTX-02-004-EN-8190 → MLTX-02-004-EN-7970 | resources Consultant Staff [16.1 h] → Consultant Staff [26.1 h] |
| MLTX-02-004-EN-11230 | Approval of Method Statement for Lighting Works | 2026-07-14 A → 2026-07-11 A (-3d) | 2026-07-14 A → 2026-07-11 A (-3d) | 21d → 10d | MLTX-02-004-EN-8180, MLTX-02-004-EN-7970 → MLTX-02-004-EN-8180 | resources Consultant Staff [16.1 h] → Consultant Staff [26.1 h] |
| MLTX-02-004-EN-11240 | Approval of Method Statement for Earthing/Lightning Works | 2026-07-14 A → 2026-07-11 A (-3d) | 2026-07-14 A → 2026-07-11 A (-3d) | 21d → 10d | MLTX-02-004-EN-8190, MLTX-02-004-EN-8120 → MLTX-02-004-EN-8190 | resources Consultant Staff [16.1 h] → Consultant Staff [36.1 h] |
| MLTX-02-004-EN-11210 | Approval of Method Statement for Telecommunication & Data System | 2026-07-28 A → 2026-07-15 A (-13d) | 2026-07-28 A → 2026-07-15 A (-13d) | 30d → 10d | MLTX-02-004-EN-8160 → MLTX-02-004-EN-11650, MLTX-02-004-EN-11700, MLTX-02-004-EN-11710, MLTX-02-004-EN-11850, MLTX-02-004-EN-11860, MLTX-02-004-EN-11870, MLTX-02-004-EN-11650 FF, MLTX-02-004-EN-11700 FF, MLTX-02-004-EN-11710 FF, MLTX-02-004-EN-11850 FF, MLTX-02-004-EN-11860 FF, MLTX-02-004-EN-11870 FF, MLTX-02-004-EN-11820, MLTX-02-004-EN-11830, MLTX-02-004-EN-11780, MLTX-02-004-EN-11790, MLTX-02-004-EN-8670 FF, MLTX-02-004-EN-8630 FF, MLTX-02-004-EN-8640 FF, MLTX-02-004-EN-11820 FF, MLTX-02-004-EN-11830 FF, MLTX-02-004-EN-11780 FF, MLTX-02-004-EN-11790 FF, MLTX-02-004-EN-8160 | resources Consultant Staff [16.1 h] → Consultant Staff [26.1 h] |
| MLTX-02-004-EN-11220 | Approval of Method Statement for CCTV System | 2026-07-28 A → 2026-07-22 A (-6d) | 2026-07-28 A → 2026-07-22 A (-6d) | 30d → 10d | MLTX-02-004-EN-8170, MLTX-02-004-EN-7970 → MLTX-02-004-EN-8170 | resources Consultant Staff [16.1 h] → Consultant Staff [26.1 h] |
| MLTX-02-004-EN-11250 | Approval of Method Statement for Panel Boards Works | 2026-07-14 A → 2026-08-15 A (+32d) | 2026-07-14 A → 2026-08-15 A (+32d) | 21d → 10d |  | resources Consultant Staff [16.1 h] → Consultant Staff [31.1 h] |
| PREQ | **PRE-QUALIFICATION & MATERIAL** | 2026-03-08 → 2026-03-31 (+23d) | 2026-09-12 → 2026-08-24 (-19d) |  |  |  |
| PRE | **PRE-QUALIFICATION** | 2026-03-08 → 2026-03-31 (+23d) | 2026-06-07 → 2026-05-21 (-17d) |  |  |  |
| TOI | **TOILET/SERVICE WORKS** | 2026-03-08 → 2026-03-31 (+23d) | 2026-06-07 → 2026-04-20 (-48d) |  |  |  |
| 1 | **STEEL REINFORCEMENT** | 2026-03-09 → 2026-03-31 (+22d) | 2026-03-19 → 2026-04-13 (+25d) |  |  |  |
| MLTX-02-004-EN-9990 | Pre-Qualification Submittal for Steel Reinforcement | 2026-03-09 A → 2026-03-31 A (+22d) | 2026-03-11 A → 2026-04-12 A (+32d) | 15d → 11d |  |  |
| MLTX-02-004-EN-10110 | Pre-Qualification Approval for Steel Reinforcement | 2026-03-12 A → 2026-04-12 A (+31d) | 2026-03-19 A → 2026-04-13 A (+25d) | 15d → 2d |  |  |
| 2 | **READY MIX CONCRETE** | 2026-03-09 → 2026-03-31 (+22d) | 2026-03-19 → 2026-04-20 (+32d) |  |  |  |
| MLTX-02-004-EN-10000 | Pre-Qualification Submittal for Ready Mixed Concrete | 2026-03-09 A → 2026-03-31 A (+22d) | 2026-03-11 A → 2026-04-15 A (+35d) | 15d → 14d |  |  |
| MLTX-02-004-EN-10010 | Pre-Qualification Approval of Ready Mixed Concrete | 2026-03-12 A → 2026-04-15 A (+34d) | 2026-03-19 A → 2026-04-20 A (+32d) | 15d → 5d |  |  |
| 3 | **CONCRETE BLOCKS** | 2026-03-09 → 2026-03-31 (+22d) | 2026-03-19 → 2026-04-20 (+32d) |  |  |  |
| MLTX-02-004-EN-10210 | Pre-Qualification Submittal for Concrete Blocks | 2026-03-09 A → 2026-03-31 A (+22d) | 2026-03-11 A → 2026-04-15 A (+35d) | 15d → 14d |  |  |
| MLTX-02-004-EN-10220 | Pre-Qualification Approval for Concrete Blocks | 2026-03-12 A → 2026-04-15 A (+34d) | 2026-03-19 A → 2026-04-20 A (+32d) | 15d → 5d | MLTX-02-004-EN-10210, MLTX-02-004-EN-10010 → MLTX-02-004-EN-10210 |  |
| 4 | **WATER PROOFING** | 2026-03-09 → 2026-03-31 (+22d) | 2026-03-19 → 2026-04-13 (+25d) |  |  |  |
| MLTX-02-004-EN-10020 | Pre-Qualification Submittal for Water Proofing | 2026-03-09 A → 2026-03-31 A (+22d) | 2026-03-11 A → 2026-04-11 A (+31d) | 15d → 10d |  |  |
| MLTX-02-004-EN-10120 | Pre-Qualification Approval for Water Proofing | 2026-03-12 A → 2026-04-11 A (+30d) | 2026-03-19 A → 2026-04-13 A (+25d) | 21d → 3d |  |  |
| 6 | **FLOOR/WALL TILES** | 2026-03-08 → 2026-03-31 (+23d) | 2026-05-10 → 2026-04-12 (-28d) |  |  |  |
| MLTX-02-004-EN-10230 | Pre-Qualification Submittal for Tilling Materials | 2026-03-08 A → 2026-03-31 A (+23d) | 2026-05-06 A → 2026-04-11 A (-25d) | 15d → 10d |  |  |
| MLTX-02-004-EN-10240 | Pre-Qualification Approval for Tailling Material | 2026-03-11 A → 2026-04-11 A (+31d) | 2026-05-10 A → 2026-04-12 A (-28d) | 15d → 2d | MLTX-02-004-EN-10230, MLTX-02-004-EN-10010 → MLTX-02-004-EN-10230 |  |
| 7 | **SUSPENDED CEILING** | 2026-03-09 → 2026-03-31 (+22d) | 2026-03-19 → 2026-04-13 (+25d) |  |  |  |
| MLTX-02-004-EN-10250 | Pre-Qualification Submittal for Suspend Ceiling | 2026-03-09 A → 2026-03-31 A (+22d) | 2026-03-11 A → 2026-04-12 A (+32d) | 15d → 11d |  |  |
| MLTX-02-004-EN-10260 | Pre-Qualification Approval for Suspend Ceiling | 2026-03-12 A → 2026-04-12 A (+31d) | 2026-03-19 A → 2026-04-13 A (+25d) | 15d → 2d | MLTX-02-004-EN-10250, MLTX-02-004-EN-10370 → MLTX-02-004-EN-10250 |  |
| 8 | **DOORS/WINDOWS** | 2026-03-09 → 2026-03-31 (+22d) | 2026-03-19 → 2026-04-12 (+24d) |  |  |  |
| MLTX-02-004-EN-10270 | Pre-Qualification Submittal for Doors/Windows | 2026-03-09 A → 2026-03-31 A (+22d) | 2026-03-11 A → 2026-04-11 A (+31d) | 15d → 10d |  |  |
| MLTX-02-004-EN-10280 | Pre-Qualification Approval for Doors/Windows | 2026-03-12 A → 2026-04-11 A (+30d) | 2026-03-19 A → 2026-04-12 A (+24d) | 15d → 2d | MLTX-02-004-EN-10270, MLTX-02-004-EN-10460 → MLTX-02-004-EN-10270 |  |
| 9 | **FURNITURES** | 2026-03-08 → 2026-03-31 (+23d) | 2026-05-12 → 2026-04-12 (-30d) |  |  |  |
| MLTX-02-004-EN-10390 | Pre-Qualification Submittal for Furnitures | 2026-03-08 A → 2026-03-31 A (+23d) | 2026-05-07 A → 2026-04-11 A (-26d) | 15d → 10d |  |  |
| MLTX-02-004-EN-10400 | Pre-Qualification Approval for Furnitures | 2026-03-11 A → 2026-04-11 A (+31d) | 2026-05-12 A → 2026-04-12 A (-30d) | 15d → 2d | MLTX-02-004-EN-10390, MLTX-02-004-EN-10010 → MLTX-02-004-EN-10390 |  |
| 10 | **SANITARY FIXTURES** | 2026-03-08 → 2026-03-31 (+23d) | 2026-05-10 → 2026-04-12 (-28d) |  |  |  |
| MLTX-02-004-EN-10290 | Pre-Qualification Submittal for Sanitary Fixtures | 2026-03-08 A → 2026-03-31 A (+23d) | 2026-05-06 A → 2026-04-11 A (-25d) | 15d → 10d |  |  |
| MLTX-02-004-EN-10300 | Pre-Qualification Approval for Sanitary Fixtures | 2026-03-11 A → 2026-04-11 A (+31d) | 2026-05-10 A → 2026-04-12 A (-28d) | 15d → 2d |  |  |
| 11 | **WATER SUPPLY PIPES** | 2026-03-08 → 2026-03-31 (+23d) | 2026-06-07 → 2026-04-12 (-56d) |  |  |  |
| MLTX-02-004-EN-10310 | Pre-Qualification Submittal for Water Supply Pipes | 2026-03-08 A → 2026-03-31 A (+23d) | 2026-05-25 A → 2026-04-11 A (-44d) | 15d → 10d |  |  |
| MLTX-02-004-EN-10320 | Pre-Qualification Approval for Water Supply Pipes | 2026-03-11 A → 2026-04-11 A (+31d) | 2026-06-07 A → 2026-04-12 A (-56d) | 15d → 2d | MLTX-02-004-EN-10310, MLTX-02-004-EN-10460 → MLTX-02-004-EN-10310 |  |
| 12 | **SEWAGE/DRAINAGE PIPES** | 2026-03-08 → 2026-03-31 (+23d) | 2026-06-07 → 2026-04-12 (-56d) |  |  |  |
| MLTX-02-004-EN-10330 | Pre-Qualification Submittal for Sewage/Drainage Pipes | 2026-03-08 A → 2026-03-31 A (+23d) | 2026-05-25 A → 2026-04-11 A (-44d) | 15d → 10d |  |  |
| MLTX-02-004-EN-10340 | Pre-Qualification Approval for Sewage/Drainage Pipes | 2026-03-11 A → 2026-04-11 A (+31d) | 2026-06-07 A → 2026-04-12 A (-56d) | 15d → 2d | MLTX-02-004-EN-10330, MLTX-02-004-EN-8970 → MLTX-02-004-EN-10330 |  |
| 16 | **PACKAGE AC UNITS** | 2026-03-11 → 2026-04-07 (+27d) | 2026-06-07 → 2026-04-15 (-53d) |  |  |  |
| MLTX-02-004-EN-10420 | Pre-Qualification Submittal for Package AC Units | 2026-03-11 A → 2026-04-07 A (+27d) | 2026-05-25 A → 2026-04-13 A (-42d) | 15d → 6d |  |  |
| MLTX-02-004-EN-10430 | Pre-Qualification Approval for Package AC Units | 2026-03-15 A → 2026-04-11 A (+27d) | 2026-06-07 A → 2026-04-15 A (-53d) | 15d → 5d |  |  |
| 17 | **AIR DIFUSSERS/GRILLS** | 2026-03-11 → 2026-04-07 (+27d) | 2026-06-07 → 2026-04-15 (-53d) |  |  |  |
| MLTX-02-004-EN-10440 | Pre-Qualification Submittal for Air Diffusers/Grills | 2026-03-11 A → 2026-04-07 A (+27d) | 2026-05-25 A → 2026-04-13 A (-42d) | 15d → 6d | MLTX-02-004-EN-10000, MLTX-02-004-EN-10180 → MLTX-02-004-EN-10000 |  |
| MLTX-02-004-EN-10450 | Pre-Qualification Approval for Air Diffusers/Grills | 2026-03-15 A → 2026-04-11 A (+27d) | 2026-06-07 A → 2026-04-15 A (-53d) | 15d → 5d | MLTX-02-004-EN-10440, MLTX-02-004-EN-10370 → MLTX-02-004-EN-10440 |  |
| 18 | **GALVANIZED DUCTS** | 2026-03-11 → 2026-04-07 (+27d) | 2026-04-30 → 2026-04-15 (-15d) |  |  |  |
| MLTX-02-004-EN-10460 | Pre-Qualification Submittal for Galvanized Ducts | 2026-03-11 A → 2026-04-07 A (+27d) | 2026-04-25 A → 2026-04-13 A (-12d) | 15d → 6d | MLTX-02-004-EN-10210, MLTX-02-004-EN-10180 → MLTX-02-004-EN-10210 |  |
| MLTX-02-004-EN-10470 | Pre-Qualification Approval for Galvanized Ducts | 2026-03-15 A → 2026-04-11 A (+27d) | 2026-04-30 A → 2026-04-15 A (-15d) | 15d → 5d | MLTX-02-004-EN-10460, MLTX-02-004-EN-10030 → MLTX-02-004-EN-10460 |  |
| 19 | **EXHAUST FANS** | 2026-03-11 → 2026-04-07 (+27d) | 2026-06-07 → 2026-04-15 (-53d) |  |  |  |
| MLTX-02-004-EN-10480 | Pre-Qualification Submittal for Exhaust Fans | 2026-03-11 A → 2026-04-07 A (+27d) | 2026-05-25 A → 2026-04-12 A (-43d) | 15d → 5d |  |  |
| MLTX-02-004-EN-10490 | Pre-Qualification Approval for Exhaust Fans | 2026-03-15 A → 2026-04-11 A (+27d) | 2026-06-07 A → 2026-04-15 A (-53d) | 15d → 5d |  |  |
| 13 | **LIGHTING FIXTURES** | 2026-03-11 → 2026-04-07 (+27d) | 2026-06-07 → 2026-04-15 (-53d) |  |  |  |
| MLTX-02-004-EN-10350 | Pre-Qualification Submittal for Lighting Fixtures | 2026-03-11 A → 2026-04-07 A (+27d) | 2026-05-25 A → 2026-04-09 A (-46d) | 15d → 3d | MLTX-02-004-EN-10230, MLTX-02-004-EN-10120 → MLTX-02-004-EN-10230 |  |
| MLTX-02-004-EN-10360 | Pre-Qualification Approval for Lighting Fixtures | 2026-03-15 A → 2026-04-11 A (+27d) | 2026-06-07 A → 2026-04-15 A (-53d) | 15d → 5d | MLTX-02-004-EN-10350, MLTX-02-004-EN-10370 → MLTX-02-004-EN-10350 |  |
| 14 | **SWITCHES/SOCKETS** | 2026-03-11 → 2026-04-07 (+27d) | 2026-06-07 → 2026-04-15 (-53d) |  |  |  |
| MLTX-02-004-EN-10370 | Pre-Qualification Submittal for Switches/Sockets | 2026-03-11 A → 2026-04-07 A (+27d) | 2026-05-25 A → 2026-04-09 A (-46d) | 15d → 3d | MLTX-02-004-EN-10250, MLTX-02-004-EN-10180 → MLTX-02-004-EN-10250 |  |
| MLTX-02-004-EN-10380 | Pre-Qualification Approval for Switches/Sockets | 2026-03-15 A → 2026-04-11 A (+27d) | 2026-06-07 A → 2026-04-15 A (-53d) | 15d → 5d | MLTX-02-004-EN-10370, MLTX-02-004-EN-10460 → MLTX-02-004-EN-10370 |  |
| 15 | **EARTHING SYSTEM** | 2026-03-11 → 2026-04-07 (+27d) | 2026-05-11 → 2026-04-15 (-26d) |  |  |  |
| MLTX-02-004-EN-10170 | Pre-Qualification Submittal for Earthing System | 2026-03-11 A → 2026-04-07 A (+27d) | 2026-05-09 A → 2026-04-09 A (-30d) | 15d → 3d |  |  |
| MLTX-02-004-EN-10180 | Pre-Qualification Approval for Earthing System | 2026-03-15 A → 2026-04-11 A (+27d) | 2026-05-11 A → 2026-04-15 A (-26d) | 15d → 5d |  |  |
| 5 | **DISTRIBUTION PANNELS** | 2026-03-11 → 2026-04-07 (+27d) | 2026-06-07 → 2026-04-15 (-53d) |  |  |  |
| MLTX-02-004-EN-10190 | Pre-Qualification Submittal for Distribution Panels | 2026-03-11 A → 2026-04-07 A (+27d) | 2026-05-25 A → 2026-04-09 A (-46d) | 15d → 3d | MLTX-02-004-EN-10390, MLTX-02-004-EN-10340 → MLTX-02-004-EN-10390 |  |
| MLTX-02-004-EN-10200 | Pre-Qualification Approval for Distribution Panels | 2026-03-15 A → 2026-04-11 A (+27d) | 2026-06-07 A → 2026-04-15 A (-53d) | 15d → 5d | MLTX-02-004-EN-10190, MLTX-02-004-EN-9310 → MLTX-02-004-EN-10190 |  |
| PLG | **PLAYGROUND WORKS** | 2026-03-08 → 2026-03-31 (+23d) | 2026-06-07 → 2026-04-20 (-48d) |  |  |  |

| ID | Task | Start | Finish | Duration | Predecessors |
| --- | --- | --- | --- | --- | --- |
| 5 | **PVC MEMBRANE** | 2026-03-08 → 2026-03-31 (+23d) | 2026-05-24 → 2026-04-15 (-39d) |  |  |
| MLTX-02-004-EN-10580 | Pre-Qualification Submittal for PVC Membrane | 2026-03-08 A → 2026-03-31 A (+23d) | 2026-05-20 A → 2026-04-13 A (-37d) | 15d → 12d |  |
| MLTX-02-004-EN-10590 | Pre-Qualification Approval for PVC Membrane | 2026-03-11 A → 2026-04-13 A (+33d) | 2026-05-24 A → 2026-04-15 A (-39d) | 15d → 3d |  |
| 6 | **STEEL TENSION CABLES** | 2026-03-08 → 2026-03-31 (+23d) | 2026-05-24 → 2026-04-15 (-39d) |  |  |
| MLTX-02-004-EN-10600 | Pre-Qualification Submittal for Steel Tension Cables | 2026-03-08 A → 2026-03-31 A (+23d) | 2026-05-20 A → 2026-04-13 A (-37d) | 15d → 12d |  |
| MLTX-02-004-EN-10900 | Pre-Qualification Approval for Steel Tension Cables | 2026-03-11 A → 2026-04-13 A (+33d) | 2026-05-24 A → 2026-04-15 A (-39d) | 15d → 3d |  |
| 7 | **EMERGENCY DOORS** | 2026-03-08 → 2026-03-31 (+23d) | 2026-05-24 → 2026-04-15 (-39d) |  |  |
| MLTX-02-004-EN-10610 | Pre-Qualification Submittal for Emergency Doors | 2026-03-08 A → 2026-03-31 A (+23d) | 2026-05-20 A → 2026-04-13 A (-37d) | 15d → 12d |  |
| MLTX-02-004-EN-10910 | Pre-Qualification Approval for Emergency Doors | 2026-03-11 A → 2026-04-13 A (+33d) | 2026-05-24 A → 2026-04-15 A (-39d) | 15d → 3d |  |
| 8 | **PRESSURE UNITS** | 2026-03-08 → 2026-03-31 (+23d) | 2026-05-24 → 2026-04-15 (-39d) |  |  |
| MLTX-02-004-EN-10620 | Pre-Qualification Submittal for Pressure Units | 2026-03-08 A → 2026-03-31 A (+23d) | 2026-05-20 A → 2026-04-13 A (-37d) | 15d → 12d | MLTX-02-004-MB-1770, MLTX-02-004-EN-10050 → MLTX-02-004-MB-1770 |
| MLTX-02-004-EN-10920 | Pre-Qualification Approval for Pressure Units | 2026-03-11 A → 2026-04-13 A (+33d) | 2026-05-24 A → 2026-04-15 A (-39d) | 15d → 3d | MLTX-02-004-EN-10620, MLTX-02-004-EN-10030 → MLTX-02-004-EN-10620 |
| 9 | **AIR LOCK DOORS** | 2026-03-08 → 2026-03-31 (+23d) | 2026-05-24 → 2026-04-15 (-39d) |  |  |
| MLTX-02-004-EN-10630 | Pre-Qualification Submittal for Lock Doors | 2026-03-08 A → 2026-03-31 A (+23d) | 2026-05-20 A → 2026-04-13 A (-37d) | 15d → 12d |  |
| MLTX-02-004-EN-10930 | Pre-Qualification Approval for Lock Doors | 2026-03-11 A → 2026-04-13 A (+33d) | 2026-05-24 A → 2026-04-15 A (-39d) | 15d → 3d | MLTX-02-004-EN-10630, MLTX-02-004-EN-10040 → MLTX-02-004-EN-10630 |
| 15 | **ARTIFICIAL TURF** | 2026-03-08 → 2026-03-31 (+23d) | 2026-05-10 → 2026-04-12 (-28d) |  |  |
| MLTX-02-004-EN-10780 | Pre-Qualification Submittal for Artificial TURF | 2026-03-08 A → 2026-03-31 A (+23d) | 2026-05-06 A → 2026-04-11 A (-25d) | 15d → 10d |  |
| MLTX-02-004-EN-10940 | Pre-Qualification Approval for Artificial TURF | 2026-03-11 A → 2026-04-11 A (+31d) | 2026-05-10 A → 2026-04-12 A (-28d) | 15d → 2d |  |
| 20 | **RUBBER GRANULES** | 2026-03-08 → 2026-03-31 (+23d) | 2026-05-11 → 2026-04-15 (-26d) |  |  |
| MLTX-02-004-EN-10790 | Pre-Qualification Submittal for Rubber Granules | 2026-03-08 A → 2026-03-31 A (+23d) | 2026-05-06 A → 2026-04-13 A (-23d) | 15d → 12d |  |
| MLTX-02-004-EN-10950 | Pre-Qualification Approval for Rubber Granules | 2026-03-11 A → 2026-04-13 A (+33d) | 2026-05-11 A → 2026-04-15 A (-26d) | 15d → 3d |  |
| 21 | **PADEL GLASS** | 2026-03-08 → 2026-03-31 (+23d) | 2026-05-11 → 2026-04-15 (-26d) |  |  |
| MLTX-02-004-EN-10800 | Pre-Qualification Submittal for Padel Glass | 2026-03-08 A → 2026-03-31 A (+23d) | 2026-05-06 A → 2026-04-13 A (-23d) | 15d → 12d |  |
| MLTX-02-004-EN-10960 | Pre-Qualification Approval for Padel Glass | 2026-03-11 A → 2026-04-13 A (+33d) | 2026-05-11 A → 2026-04-15 A (-26d) | 15d → 3d |  |
| 22 | **PADEL WIRE MESH/STEEL SETS** | 2026-03-08 → 2026-03-31 (+23d) | 2026-05-11 → 2026-04-15 (-26d) |  |  |
| MLTX-02-004-EN-10810 | Pre-Qualification Submittal for Wire Mesh/Steel Sets | 2026-03-08 A → 2026-03-31 A (+23d) | 2026-05-06 A → 2026-04-13 A (-23d) | 15d → 12d |  |
| MLTX-02-004-EN-10970 | Pre-Qualification Approval for Wire Mesh/Steel Sets | 2026-03-11 A → 2026-04-13 A (+33d) | 2026-05-11 A → 2026-04-15 A (-26d) | 15d → 3d |  |
| 1 | **AGGREGATE BASE COURSE** | 2026-03-08 → 2026-03-31 (+23d) | 2026-04-30 → 2026-04-20 (-10d) |  |  |
| MLTX-02-004-EN-10030 | Pre-Qualification Submittal for Aggregate Base Course | 2026-03-08 A → 2026-03-31 A (+23d) | 2026-04-26 A → 2026-04-20 A (-6d) | 15d → 18d | MLTX-02-004-MB-1770, MLTX-02-004-EN-11780 → MLTX-02-004-MB-1770 |
| MLTX-02-004-EN-10040 | Pre-Qualification Approval for Aggregate Base Course | 2026-03-11 A → 2026-04-18 A (+38d) | 2026-04-30 A → 2026-04-20 A (-10d) | 15d → 3d |  |
| 16 | **PACKAGE AC UNITS** | 2026-03-11 → 2026-04-04 (+24d) | 2026-06-07 → 2026-04-15 (-53d) |  |  |
| MLTX-02-004-EN-10500 | Pre-Qualification Submittal for Package AC Units | 2026-03-11 A → 2026-04-04 A (+24d) | 2026-05-25 A → 2026-04-13 A (-42d) | 15d → 9d | MLTX-02-004-EN-10620, MLTX-02-004-EN-10060 → MLTX-02-004-EN-10620 |
| MLTX-02-004-EN-10510 | Pre-Qualification Approval for Package AC Units | 2026-03-15 A → 2026-04-13 A (+29d) | 2026-06-07 A → 2026-04-15 A (-53d) | 15d → 3d | MLTX-02-004-EN-10500, MLTX-02-004-EN-10030 → MLTX-02-004-EN-10500 |
| 17 | **AIR DIFUSSERS/GRILLS** | 2026-03-11 → 2026-04-04 (+24d) | 2026-06-07 → 2026-04-15 (-53d) |  |  |
| MLTX-02-004-EN-10520 | Pre-Qualification Submittal for Air Difussers/Grills | 2026-03-11 A → 2026-04-04 A (+24d) | 2026-05-25 A → 2026-04-13 A (-42d) | 15d → 9d | MLTX-02-004-EN-10630, MLTX-02-004-EN-10030 → MLTX-02-004-EN-10630 |
| MLTX-02-004-EN-10530 | Pre-Qualification Approval for Air Difussers/Grills | 2026-03-15 A → 2026-04-13 A (+29d) | 2026-06-07 A → 2026-04-15 A (-53d) | 15d → 3d | MLTX-02-004-EN-10520, MLTX-02-004-EN-10040 → MLTX-02-004-EN-10520 |
| 2 | **BITUMINOUS BASE & WEARING COURSE** | 2026-03-11 → 2026-04-07 (+27d) | 2026-04-30 → 2026-04-14 (-16d) |  |  |
| MLTX-02-004-EN-10050 | Pre-Qualification Submittal for Bituminous Base & Wearing Cource | 2026-03-11 A → 2026-04-07 A (+27d) | 2026-04-26 A → 2026-04-12 A (-14d) | 15d → 5d |  |
| MLTX-02-004-EN-10060 | Pre-Qualification Approval for the Site | 2026-03-15 A → 2026-04-12 A (+28d) | 2026-04-30 A → 2026-04-14 A (-16d) | 15d → 3d |  |
| 3 | **INTERLOCKING PAVING** | 2026-03-11 → 2026-04-07 (+27d) | 2026-05-04 → 2026-04-20 (-14d) |  |  |
| MLTX-02-004-EN-10070 | Pre-Qualification Submittal for Interlocking Block Pavers | 2026-03-11 A → 2026-04-07 A (+27d) | 2026-04-30 A → 2026-04-15 A (-15d) | 15d → 8d | MLTX-02-004-EN-10600, MLTX-02-004-EN-10060 → MLTX-02-004-EN-10600 |
| MLTX-02-004-EN-10130 | Pre-Qualification Approval for Interlocking Block Pavers | 2026-03-15 A → 2026-04-15 A (+31d) | 2026-05-04 A → 2026-04-20 A (-14d) | 15d → 5d | MLTX-02-004-EN-10070, MLTX-02-004-EN-10030 → MLTX-02-004-EN-10070 |
| 4 | **MARKING PAINT** | 2026-03-11 → 2026-04-04 (+24d) | 2026-05-09 → 2026-04-12 (-27d) |  |  |
| MLTX-02-004-EN-10410 | Pre-Qualification Submittal for Marking Paint | 2026-03-11 A → 2026-04-04 A (+24d) | 2026-05-05 A → 2026-04-12 A (-23d) | 15d → 8d |  |
| MLTX-02-004-EN-10980 | Pre-Qualification Approval for Marking Paint | 2026-03-15 A → 2026-04-12 A (+28d) | 2026-05-09 A → 2026-04-12 A (-27d) | 15d → 1d |  |
| 18 | **GALVANIZED DUCTS** | 2026-03-11 → 2026-04-04 (+24d) | 2026-04-30 → 2026-04-15 (-15d) |  |  |
| MLTX-02-004-EN-10540 | Pre-Qualification Submittal for Galvanized Duct | 2026-03-11 A → 2026-04-04 A (+24d) | 2026-04-25 A → 2026-04-13 A (-12d) | 15d → 9d | MLTX-02-004-EN-10520 SS, MLTX-02-004-EN-10030, MLTX-02-004-EN-10500 → MLTX-02-004-EN-10520 SS |
| MLTX-02-004-EN-10550 | Pre-Qualification Approval for Galvanized Duct | 2026-03-15 A → 2026-04-13 A (+29d) | 2026-04-30 A → 2026-04-15 A (-15d) | 15d → 3d | MLTX-02-004-EN-10540, MLTX-02-004-EN-10040 → MLTX-02-004-EN-10540 |
| 19 | **EXHAUST FANS** | 2026-03-11 → 2026-04-04 (+24d) | 2026-06-07 → 2026-04-15 (-53d) |  |  |
| MLTX-02-004-EN-10560 | Pre-Qualification Submittal for Exhaust Fans | 2026-03-11 A → 2026-04-04 A (+24d) | 2026-05-25 A → 2026-04-13 A (-42d) | 15d → 9d |  |
| MLTX-02-004-EN-10570 | Pre-Qualification Approval for Exhaust Fans | 2026-03-15 A → 2026-04-13 A (+29d) | 2026-06-07 A → 2026-04-15 A (-53d) | 15d → 3d |  |
| 10 | **DISTRIBUTION BOARDS** | 2026-03-11 → 2026-04-04 (+24d) | 2026-06-07 → 2026-04-15 (-53d) |  |  |
| MLTX-02-004-EN-10640 | Pre-Qualification Submittal for Distribution Boards | 2026-03-11 A → 2026-04-04 A (+24d) | 2026-05-25 A → 2026-04-13 A (-42d) | 15d → 9d |  |
| MLTX-02-004-EN-10650 | Pre-Qualification Approval for Distribution Boards | 2026-03-15 A → 2026-04-13 A (+29d) | 2026-06-07 A → 2026-04-15 A (-53d) | 15d → 3d |  |
| 11 | **POWER CABLES** | 2026-03-11 → 2026-04-04 (+24d) | 2026-05-11 → 2026-04-15 (-26d) |  |  |
| MLTX-02-004-EN-10660 | Pre-Qualification Submittal for Power Cables | 2026-03-11 A → 2026-04-04 A (+24d) | 2026-05-09 A → 2026-04-13 A (-26d) | 15d → 9d |  |
| MLTX-02-004-EN-10670 | Pre-Qualification Approval for Power Cables | 2026-03-15 A → 2026-04-13 A (+29d) | 2026-05-11 A → 2026-04-15 A (-26d) | 15d → 3d |  |
| 12 | **LIGHT FIXTURES** | 2026-03-11 → 2026-04-04 (+24d) | 2026-06-07 → 2026-04-15 (-53d) |  |  |
| MLTX-02-004-EN-10680 | Pre-Qualification Submittal for Light Fixtures | 2026-03-11 A → 2026-04-04 A (+24d) | 2026-05-25 A → 2026-04-13 A (-42d) | 15d → 9d | MLTX-02-004-EN-10790, MLTX-02-004-EN-10060 → MLTX-02-004-EN-10790 |
| MLTX-02-004-EN-10690 | Pre-Qualification Approval for Light Fixtures | 2026-03-15 A → 2026-04-13 A (+29d) | 2026-06-07 A → 2026-04-15 A (-53d) | 15d → 3d | MLTX-02-004-EN-10680, MLTX-02-004-EN-10030 → MLTX-02-004-EN-10680 |
| 13 | **CCTV MATERIALS** | 2026-03-11 → 2026-04-04 (+24d) | 2026-06-07 → 2026-04-15 (-53d) |  |  |
| MLTX-02-004-EN-10700 | Pre-Qualification Submittal for CCTV | 2026-03-11 A → 2026-04-04 A (+24d) | 2026-05-25 A → 2026-04-13 A (-42d) | 15d → 9d | MLTX-02-004-EN-10800, MLTX-02-004-EN-10060 → MLTX-02-004-EN-10800 |
| MLTX-02-004-EN-10710 | Pre-Qualification Approval for CCTV | 2026-03-15 A → 2026-04-13 A (+29d) | 2026-06-07 A → 2026-04-15 A (-53d) | 15d → 3d | MLTX-02-004-EN-10700, MLTX-02-004-EN-10030 → MLTX-02-004-EN-10700 |
| 14 | **POWER OUTLETS/SWITCHES** | 2026-03-11 → 2026-04-04 (+24d) | 2026-06-07 → 2026-04-15 (-53d) |  |  |
| MLTX-02-004-EN-10720 | Pre-Qualification Submittal for Power Outlets/Switches | 2026-03-11 A → 2026-04-04 A (+24d) | 2026-05-25 A → 2026-04-13 A (-42d) | 15d → 9d |  |
| MLTX-02-004-EN-10730 | Pre-Qualification Approval for Power Outlets/Switches | 2026-03-15 A → 2026-04-13 A (+29d) | 2026-06-07 A → 2026-04-15 A (-53d) | 15d → 3d |  |
| LSC | **LANDSCAPE WORKS** | 2026-03-11 → 2026-04-04 (+24d) |  |  |  |
| 7 | **INTERLOCKING PAVING** | 2026-03-12 → 2026-04-04 (+23d) | 2026-03-24 → 2026-04-20 (+27d) |  |  |
| MLTX-02-004-EN-10760 | Pre-Qualification Submittal for Interlocking Block Pavers | 2026-03-12 A → 2026-04-04 A (+23d) | 2026-03-15 A → 2026-04-15 A (+31d) | 15d → 11d |  |
| MLTX-02-004-EN-10770 | Pre-Qualification Approval for Interlocking Block Pavers | 2026-03-16 A → 2026-04-15 A (+30d) | 2026-03-24 A → 2026-04-20 A (+27d) | 15d → 5d |  |

| ID | Task | Start | Finish | Duration | Predecessors |
| --- | --- | --- | --- | --- | --- |
| 9 | **CURBSTONE** | 2026-03-12 → 2026-04-04 (+23d) | 2026-03-24 → 2026-04-20 (+27d) |  |  |
| MLTX-02-004-EN-10860 | Pre-Qualification Submittal for Curbstone | 2026-03-12 A → 2026-04-04 A (+23d) | 2026-03-15 A → 2026-04-15 A (+31d) | 15d → 11d |  |
| MLTX-02-004-EN-10870 | Pre-Qualification Approval for Curbstone | 2026-03-16 A → 2026-04-15 A (+30d) | 2026-03-24 A → 2026-04-20 A (+27d) | 15d → 5d |  |
| 1 | **PAVEMENT MARKING** | 2026-03-11 → 2026-04-04 (+24d) | 2026-05-09 → 2026-04-12 (-27d) |  |  |
| MLTX-02-004-EN-10080 | Pre-Qualification Submittal for Pavement Markings | 2026-03-11 A → 2026-04-04 A (+24d) | 2026-05-05 A → 2026-04-06 A (-29d) | 15d → 3d | MLTX-02-004-EN-10030, MLTX-02-004-EN-10350 → MLTX-02-004-EN-10030 |
| MLTX-02-004-EN-10140 | Pre-Qualification Approval for Pavement Markings | 2026-03-15 A → 2026-04-07 A (+23d) | 2026-05-09 A → 2026-04-12 A (-27d) | 15d → 5d | MLTX-02-004-EN-10080, MLTX-02-004-EN-11000 → MLTX-02-004-EN-10080 |
| 2 | **TRAFFIC SIGNS** | 2026-03-11 → 2026-05-06 (+56d) | 2026-05-09 → 2026-05-21 (+12d) |  |  |
| MLTX-02-004-EN-10090 | Pre-Qualification Submittal for Traffic Signs | 2026-03-11 A → 2026-05-06 A (+56d) | 2026-05-05 A → 2026-05-06 A (+1d) | 15d → 1d |  |
| MLTX-02-004-EN-10100 | Pre-Qualification Approval for Traffic Signs | 2026-03-15 A → 2026-05-21 A (+67d) | 2026-05-09 A → 2026-05-21 A (+12d) | 15d → 1d |  |
| 3 | **IRRIGATION PIPES/SPRINKLERS** | 2026-03-11 → 2026-04-04 (+24d) |  |  |  |
| MLTX-02-004-EN-10150 | Pre-Qualification Submittal for Irrigation Pipes/Sprinkles | 2026-03-11 A → 2026-04-04 A (+24d) | 2026-05-20 A → 2026-04-26 A (-24d) | 15d → 20d |  |
| MLTX-02-004-EN-10160 | Pre-Qualification Approval for Irrigation Pipes/Sprinkles | 2026-03-15 A → 2026-05-21 A (+67d) |  | 15d → 1d |  |
| 5 | **AGRICULTURE SOIL** | 2026-03-11 → 2026-04-04 (+24d) |  |  |  |
| MLTX-02-004-EN-10820 | Pre-Qualification Submittal for Agriculture Soil | 2026-03-11 A → 2026-04-04 A (+24d) | 2026-05-20 A → 2026-04-26 A (-24d) | 15d → 20d |  |
| MLTX-02-004-EN-10830 | Pre-Qualification Approval for Agriculture Soil | 2026-03-15 A → 2026-05-21 A (+67d) |  | 15d → 1d |  |
| 8 | **TRACK SURFACE** | 2026-03-11 → 2026-04-04 (+24d) | 2026-05-21 → 2026-04-12 (-39d) |  |  |
| MLTX-02-004-EN-10840 | Pre-Qualification Submittal for Track Surface | 2026-03-11 A → 2026-04-04 A (+24d) | 2026-05-20 A → 2026-04-06 A (-44d) | 15d → 3d |  |
| MLTX-02-004-EN-10850 | Pre-Qualification Approval for Track Surface | 2026-03-15 A → 2026-04-07 A (+23d) | 2026-05-21 A → 2026-04-12 A (-39d) | 15d → 5d |  |
| 10 | **GRASS/TREES** | 2026-03-11 → 2026-04-04 (+24d) | 2026-05-21 → 2026-04-19 (-32d) |  |  |
| MLTX-02-004-EN-10880 | Pre-Qualification Submittal for Grass/Trees | 2026-03-11 A → 2026-04-04 A (+24d) | 2026-05-20 A → 2026-04-14 A (-36d) | 15d → 10d |  |
| MLTX-02-004-EN-10890 | Pre-Qualification Approval for Grass/Trees | 2026-03-15 A → 2026-04-14 A (+30d) | 2026-05-21 A → 2026-04-19 A (-32d) | 15d → 5d |  |
| 6 | **CABLES** | 2026-03-11 → 2026-05-06 (+56d) | 2026-05-11 → 2026-05-07 (-4d) |  |  |
| MLTX-02-004-EN-10740 | Pre-Qualification Submittal for Cables | 2026-03-11 A → 2026-05-06 A (+56d) | 2026-05-09 A → 2026-05-06 A (-3d) | 15d → 1d |  |
| MLTX-02-004-EN-10750 | Pre-Qualification Approval for Cables | 2026-03-15 A → 2026-05-07 A (+53d) | 2026-05-11 A → 2026-05-07 A (-4d) | 15d → 1d |  |
| 4 | **LIGHT POLES** | 2026-03-11 → 2026-05-06 (+56d) | 2026-05-20 → 2026-05-07 (-13d) |  |  |
| MLTX-02-004-EN-9970 | Pre-Qualification Submittal for Lighting poles | 2026-03-11 A → 2026-05-06 A (+56d) | 2026-05-17 A → 2026-05-06 A (-11d) | 15d → 1d | MLTX-02-004-EN-10030, MLTX-02-004-EN-10070 → MLTX-02-004-EN-10030 |
| MLTX-02-004-EN-9980 | Pre-Qualification Approval for Lighting poles | 2026-03-15 A → 2026-05-07 A (+53d) | 2026-05-20 A → 2026-05-07 A (-13d) | 15d → 1d |  |
| MAT | **MATERIAL SUBMITTAL** | 2026-03-19 → 2026-04-07 (+19d) | 2026-09-12 → 2026-08-24 (-19d) |  |  |
| TOI | **TOILET/SERVICE WORKS** | 2026-03-19 → 2026-04-11 (+23d) | 2026-07-30 → 2026-07-22 (-8d) |  |  |
| 1 | **STEEL REINFORCEMENT** | 2026-03-19 → 2026-04-11 (+23d) |  |  |  |
| MLTX-02-004-EN-8990 | Material Submittal for Steel Reinforcement | 2026-03-19 A → 2026-04-11 A (+23d) | 2026-04-07 A → 2026-04-11 A (+4d) | 15d → 1d |  |
| MLTX-02-004-EN-9100 | Material Approval for Steel Reinforcement | 2026-03-26 A → 2026-04-11 A (+16d) |  | 15d → 2d |  |
| 2 | **READY MIX CONCRETE** | 2026-03-19 → 2026-04-15 (+27d) | 2026-04-12 → 2026-04-26 (+14d) |  |  |
| MLTX-02-004-EN-9000 | Material Submittal for Ready Mixed Concrete | 2026-03-19 A → 2026-04-15 A (+27d) | 2026-04-07 A → 2026-04-18 A (+11d) | 15d → 3d |  |
| MLTX-02-004-EN-9010 | Material Approval of Ready Mixed Concrete | 2026-03-26 A → 2026-04-19 A (+24d) | 2026-04-12 A → 2026-04-26 A (+14d) | 15d → 7d |  |
| 3 | **CONCRETE BLOCKS** | 2026-03-19 → 2026-04-15 (+27d) | 2026-05-11 → 2026-04-26 (-15d) |  |  |
| MLTX-02-004-EN-9190 | Material Submittal for Concrete Blocks | 2026-03-19 A → 2026-04-15 A (+27d) | 2026-05-06 A → 2026-04-18 A (-18d) | 15d → 3d | MLTX-02-004-EN-10220, MLTX-02-004-EN-8990 → MLTX-02-004-EN-10220 |
| MLTX-02-004-EN-9200 | Material Approval for Concrete Blocks | 2026-03-26 A → 2026-04-19 A (+24d) | 2026-05-11 A → 2026-04-26 A (-15d) | 15d → 7d | MLTX-02-004-EN-9190, MLTX-02-004-EN-9010 → MLTX-02-004-EN-9190 |
| 6 | **FLOOR/WALL TILES** | 2026-03-19 → 2026-04-15 (+27d) | 2026-05-17 → 2026-07-22 (+66d) |  |  |
| MLTX-02-004-EN-9210 | Material Submittal for Tilling Materials | 2026-03-19 A → 2026-04-15 A (+27d) | 2026-05-13 A → 2026-04-18 A (-25d) | 15d → 3d | MLTX-02-004-EN-10240, MLTX-02-004-EN-8990 → MLTX-02-004-EN-10240 |
| MLTX-02-004-EN-9220 | Material Approval for Tilling Material | 2026-03-26 A → 2026-07-22 A (+118d) | 2026-05-17 A → 2026-07-22 A (+66d) | 15d → 7d | MLTX-02-004-EN-9210, MLTX-02-004-EN-9010 → MLTX-02-004-EN-9210 |
| 7 | **SUSPENDED CEILING** | 2026-03-19 → 2026-04-15 (+27d) | 2026-05-13 → 2026-04-20 (-23d) |  |  |
| MLTX-02-004-EN-9230 | Material Submittal for Suspend Ceiling | 2026-03-19 A → 2026-04-15 A (+27d) | 2026-05-10 A → 2026-04-18 A (-22d) | 15d → 3d | MLTX-02-004-EN-10260, MLTX-02-004-EN-9160, MLTX-02-004-EN-9220 → MLTX-02-004-EN-10260 |
| MLTX-02-004-EN-9240 | Material Approval for Suspend Ceiling | 2026-03-26 A → 2026-04-19 A (+24d) | 2026-05-13 A → 2026-04-20 A (-23d) | 15d → 2d | MLTX-02-004-EN-9230, MLTX-02-004-EN-9250 → MLTX-02-004-EN-9230 |
| 8 | **DOORS/WINDOWS** | 2026-03-19 → 2026-05-06 (+48d) | 2026-05-12 → 2026-05-21 (+9d) |  |  |
| MLTX-02-004-EN-9250 | Material Submittal for Doors/Windows | 2026-03-19 A → 2026-05-06 A (+48d) | 2026-05-07 A → 2026-05-06 A (-1d) | 15d → 1d | MLTX-02-004-EN-10280, MLTX-02-004-EN-9160 → MLTX-02-004-EN-10280 |
| MLTX-02-004-EN-9260 | Material Approval for Doors/Windows | 2026-03-26 A → 2026-05-21 A (+56d) | 2026-05-12 A → 2026-05-21 A (+9d) | 15d → 1d | MLTX-02-004-EN-9250, MLTX-02-004-EN-9440 → MLTX-02-004-EN-9250 |
| 9 | **FURNITURES** | 2026-03-19 → 2026-05-06 (+48d) | 2026-05-20 → 2026-05-07 (-13d) |  |  |
| MLTX-02-004-EN-9370 | Material Submittal for Furnitures | 2026-03-19 A → 2026-05-06 A (+48d) | 2026-05-14 A → 2026-05-06 A (-8d) | 15d → 1d | MLTX-02-004-EN-10400, MLTX-02-004-EN-8990 → MLTX-02-004-EN-10400 |
| MLTX-02-004-EN-9380 | Material Approval for Furnitures | 2026-03-26 A → 2026-05-07 A (+42d) | 2026-05-20 A → 2026-05-07 A (-13d) | 15d → 1d | MLTX-02-004-EN-9370, MLTX-02-004-EN-9010 → MLTX-02-004-EN-9370 |
| 10 | **SANITARY FIXTURES** | 2026-03-19 → 2026-04-15 (+27d) | 2026-05-19 → 2026-04-30 (-19d) |  |  |
| MLTX-02-004-EN-9270 | Material Submittal for Sanitary Fixtures | 2026-03-19 A → 2026-04-15 A (+27d) | 2026-05-14 A → 2026-04-21 A (-23d) | 15d → 6d |  |
| MLTX-02-004-EN-9280 | Material Approval for Sanitary Fixtures | 2026-03-26 A → 2026-04-19 A (+24d) | 2026-05-19 A → 2026-04-30 A (-19d) | 15d → 11d |  |
| 11 | **WATER SUPPLY PIPES** | 2026-03-19 → 2026-04-15 (+27d) | 2026-05-11 → 2026-04-16 (-25d) |  |  |
| MLTX-02-004-EN-9290 | Material Submittal for Water Supply Pipes | 2026-03-19 A → 2026-04-15 A (+27d) | 2026-05-06 A → 2026-04-15 A (-21d) | 15d → 1d | MLTX-02-004-EN-10320, MLTX-02-004-EN-9160 → MLTX-02-004-EN-10320 |
| MLTX-02-004-EN-9300 | Material Approval for Water Supply Pipes | 2026-03-26 A → 2026-04-15 A (+20d) | 2026-05-11 A → 2026-04-16 A (-25d) | 15d → 2d | MLTX-02-004-EN-9290, MLTX-02-004-EN-9250 → MLTX-02-004-EN-9290 |
| 12 | **SEWAGE/DRAINAGE PIPES** | 2026-03-19 → 2026-04-15 (+27d) | 2026-05-11 → 2026-04-16 (-25d) |  |  |
| MLTX-02-004-EN-9310 | Material Submittal for Sewage/Drainage Pipes | 2026-03-19 A → 2026-04-15 A (+27d) | 2026-05-06 A → 2026-04-15 A (-21d) | 15d → 1d | MLTX-02-004-EN-10340, MLTX-02-004-EN-8980 → MLTX-02-004-EN-10340 |
| MLTX-02-004-EN-9320 | Material Approval for Sewage/Drainage Pipes | 2026-03-26 A → 2026-04-15 A (+20d) | 2026-05-11 A → 2026-04-16 A (-25d) | 15d → 2d | MLTX-02-004-EN-9310, MLTX-02-004-EN-8500 → MLTX-02-004-EN-9310 |
| 16 | **PACKAGE AC UNITS** | 2026-07-07 → 2026-05-06 (-62d) | 2026-07-07 → 2026-05-07 (-61d) |  |  |
| MLTX-02-004-EN-9400 | Material Submittal for Package AC Units | 2026-07-07 A → 2026-05-06 A (-62d) | 2026-07-07 A → 2026-05-06 A (-62d) | 15d → 1d |  |
| MLTX-02-004-EN-9410 | Material Approval for Package AC Units | 2026-07-07 A → 2026-05-07 A (-61d) | 2026-07-07 A → 2026-05-07 A (-61d) | 15d → 1d |  |
| 17 | **AIR DIFUSSERS/GRILLS** | 2026-07-28 → 2026-04-16 (-103d) | 2026-07-30 → 2026-05-06 (-85d) |  |  |
| MLTX-02-004-EN-9420 | Material Submittal for Air Diffusers/Grills | 2026-07-28 A → 2026-04-16 A (-103d) | 2026-07-28 A → 2026-04-22 A (-97d) | 15d → 6d | MLTX-02-004-EN-10450, MLTX-02-004-EN-9160 → MLTX-02-004-EN-10450 |
| MLTX-02-004-EN-9430 | Material Approval for Air Diffusers/Grills | 2026-07-30 A → 2026-05-06 A (-85d) | 2026-07-30 A → 2026-05-06 A (-85d) | 15d → 1d | MLTX-02-004-EN-9420, MLTX-02-004-EN-9230 → MLTX-02-004-EN-9420 |
| 18 | **GALVANIZED DUCTS** | 2026-03-24 → 2026-06-13 (+81d) | 2026-04-30 → 2026-06-17 (+48d) |  |  |
| MLTX-02-004-EN-9440 | Material Submittal for Galvanized Ducts | 2026-03-24 A → 2026-06-13 A (+81d) | 2026-04-25 A → 2026-06-13 A (+49d) | 15d → 1d | MLTX-02-004-EN-10470, MLTX-02-004-EN-9160 → MLTX-02-004-EN-10470 |
| MLTX-02-004-EN-9450 | Material Approval for Galvanized Ducts | 2026-03-28 A → 2026-06-17 A (+81d) | 2026-04-30 A → 2026-06-17 A (+48d) | 15d → 6d | MLTX-02-004-EN-9440, MLTX-02-004-EN-9020 → MLTX-02-004-EN-9440 |
| 19 | **EXHAUST FANS** | 2026-07-28 → 2026-04-16 (-103d) | 2026-07-30 → 2026-05-06 (-85d) |  |  |
| MLTX-02-004-EN-9460 | Material Submittal for Exhaust Fans | 2026-07-28 A → 2026-04-16 A (-103d) | 2026-07-28 A → 2026-04-18 A (-101d) | 15d → 2d |  |

| ID | Task | Start | Finish | Duration | Predecessors |
| --- | --- | --- | --- | --- | --- |
| MLTX-02-004-EN-9470 | Material Approval for Exhaust Fans | 2026-07-30 A → 2026-05-06 A (-85d) | 2026-07-30 A → 2026-05-06 A (-85d) | 15d → 1d |  |
| 13 | **LIGHTING FIXTURES** | 2026-07-07 → 2026-04-16 (-82d) | 2026-07-07 → 2026-04-25 (-73d) |  |  |
| MLTX-02-004-EN-9330 | Material Submittal for Lighting Fixtures | 2026-07-07 A → 2026-04-16 A (-82d) | 2026-07-07 A → 2026-04-19 A (-79d) | 15d → 3d | MLTX-02-004-EN-10360, MLTX-02-004-EN-9160 → MLTX-02-004-EN-10360 |
| MLTX-02-004-EN-9340 | Material Approval for Lighting Fixtures | 2026-07-07 A → 2026-04-20 A (-78d) | 2026-07-07 A → 2026-04-25 A (-73d) | 15d → 5d | MLTX-02-004-EN-9330, MLTX-02-004-EN-9230 → MLTX-02-004-EN-9330 |
| 14 | **SWITCHES/SOCKETS** | 2026-07-28 → 2026-04-16 (-103d) | 2026-07-30 → 2026-04-25 (-96d) |  |  |
| MLTX-02-004-EN-9350 | Material Submittal for Switches/Sockets | 2026-07-28 A → 2026-04-16 A (-103d) | 2026-07-28 A → 2026-04-19 A (-100d) | 15d → 3d | MLTX-02-004-EN-10380, MLTX-02-004-EN-9160 → MLTX-02-004-EN-10380 |
| MLTX-02-004-EN-9360 | Material Approval for Switches/Sockets | 2026-07-30 A → 2026-04-20 A (-101d) | 2026-07-30 A → 2026-04-25 A (-96d) | 15d → 5d | MLTX-02-004-EN-9350, MLTX-02-004-EN-9250 → MLTX-02-004-EN-9350 |
| 15 | **EARTHING SYSTEM** | 2026-03-24 → 2026-05-06 (+43d) | 2026-05-18 → 2026-05-07 (-11d) |  |  |
| MLTX-02-004-EN-9150 | Material Submittal for Earthing System | 2026-03-24 A → 2026-05-06 A (+43d) | 2026-05-14 A → 2026-05-06 A (-8d) | 15d → 1d |  |
| MLTX-02-004-EN-9160 | Material Approval for Earthing System | 2026-03-28 A → 2026-05-07 A (+40d) | 2026-05-18 A → 2026-05-07 A (-11d) | 15d → 1d | MLTX-02-004-EN-9150, MLTX-02-004-EN-9280 → MLTX-02-004-EN-9150 |
| 5 | **DISTRIBUTION PANNELS** | 2026-07-28 → 2026-04-16 (-103d) | 2026-07-30 → 2026-04-25 (-96d) |  |  |
| MLTX-02-004-EN-9170 | Material Submittal for Distribution Panels | 2026-07-28 A → 2026-04-16 A (-103d) | 2026-07-28 A → 2026-04-19 A (-100d) | 15d → 3d | MLTX-02-004-EN-10200, MLTX-02-004-EN-9320 → MLTX-02-004-EN-10200 |
| MLTX-02-004-EN-9180 | Material Approval for Distribution Panels | 2026-07-30 A → 2026-04-20 A (-101d) | 2026-07-30 A → 2026-04-25 A (-96d) | 15d → 5d | MLTX-02-004-EN-9170, MLTX-02-004-EN-11030, MLTX-02-004-EN-11700, MLTX-02-004-EN-11650 → MLTX-02-004-EN-9170 |
| PLG | **PLAYGROUND WORKS** | 2026-03-19 → 2026-04-12 (+24d) | 2026-09-12 → 2026-08-24 (-19d) |  |  |
| 5 | **PVC MEMBRANE** | 2026-08-26 → 2026-05-06 (-112d) | 2026-08-26 → 2026-05-25 (-93d) |  |  |
| MLTX-02-004-EN-9560 | Material Submittal for PVC Membrane | 2026-08-26 A → 2026-05-06 A (-112d) | 2026-08-26 A → 2026-05-06 A (-112d) | 15d → 1d |  |
| MLTX-02-004-EN-9570 | Material Approval for PVC Membrane | 2026-08-26 A → 2026-05-20 A (-98d) | 2026-08-26 A → 2026-05-25 A (-93d) | 15d → 7d |  |
| 6 | **STEEL TENSION CABLES** | 2026-08-26 → 2026-05-06 (-112d) | 2026-08-26 → 2026-05-10 (-108d) |  |  |
| MLTX-02-004-EN-9580 | Material Submittal for Steel Tension Cables | 2026-08-26 A → 2026-05-06 A (-112d) | 2026-08-26 A → 2026-05-06 A (-112d) | 15d → 1d |  |
| MLTX-02-004-EN-9880 | Material Approval for Steel Tension Cables | 2026-08-26 A → 2026-05-09 A (-109d) | 2026-08-26 A → 2026-05-10 A (-108d) | 15d → 7d |  |
| 7 | **EMERGENCY DOORS** | 2026-08-26 → 2026-05-06 (-112d) | 2026-09-12 → 2026-05-10 (-125d) |  |  |
| MLTX-02-004-EN-9590 | Material Submittal for Emergency Doors | 2026-08-26 A → 2026-05-06 A (-112d) | 2026-08-26 A → 2026-05-06 A (-112d) | 15d → 1d |  |
| MLTX-02-004-EN-9890 | Material Approval for Emergency Doors | 2026-09-12 A → 2026-05-09 A (-126d) | 2026-09-12 A → 2026-05-10 A (-125d) | 15d → 7d |  |
| 8 | **PRESSURE UNITS** | 2026-09-12 → 2026-05-06 (-129d) | 2026-09-12 → 2026-08-24 (-19d) |  |  |
| MLTX-02-004-EN-9600 | Material Submittal for Pressure Units | 2026-09-12 A → 2026-05-06 A (-129d) | 2026-09-12 A → 2026-05-06 A (-129d) | 15d → 1d | MLTX-02-004-EN-10920, MLTX-02-004-EN-9050 → MLTX-02-004-EN-10920 |
| MLTX-02-004-EN-9900 | Material Approval for Pressure Units | 2026-09-12 A → 2026-08-24 A (-19d) | 2026-09-12 A → 2026-08-24 A (-19d) | 15d → 7d | MLTX-02-004-EN-9600, MLTX-02-004-EN-9020 → MLTX-02-004-EN-9600 |
| 9 | **AIR LOCK DOORS** | 2026-08-26 → 2026-05-06 (-112d) | 2026-09-12 → 2026-05-11 (-124d) |  |  |
| MLTX-02-004-EN-9610 | Material Submittal for Lock Doors | 2026-08-26 A → 2026-05-06 A (-112d) | 2026-08-26 A → 2026-05-11 A (-107d) | 15d → 5d | MLTX-02-004-EN-10930, MLTX-02-004-EN-9020 → MLTX-02-004-EN-10930 |
| MLTX-02-004-EN-9910 | Material Approval for Lock Doors | 2026-09-12 A → 2026-05-09 A (-126d) | 2026-09-12 A → 2026-05-10 A (-125d) | 15d → 7d | MLTX-02-004-EN-9610, MLTX-02-004-EN-9030 → MLTX-02-004-EN-9610 |
| 15 | **ARTIFICIAL TURF** | 2026-03-19 → 2026-04-12 (+24d) | 2026-05-19 → 2026-04-30 (-19d) |  |  |
| MLTX-02-004-EN-9760 | Material Submittal for Artificial TURF | 2026-03-19 A → 2026-04-12 A (+24d) | 2026-05-14 A → 2026-04-28 A (-16d) |  |  |
| MLTX-02-004-EN-9920 | Material Approval for Artificial TURF | 2026-03-26 A → 2026-04-28 A (+33d) | 2026-05-19 A → 2026-04-30 A (-19d) | 15d → 3d |  |
| 20 | **RUBBER GRANULES** | 2026-03-19 → 2026-05-06 (+48d) | 2026-05-19 → 2026-05-21 (+2d) |  |  |
| MLTX-02-004-EN-9770 | Material Submittal for Rubber Granules | 2026-03-19 A → 2026-05-06 A (+48d) | 2026-05-14 A → 2026-05-06 A (-8d) | 15d → 1d |  |
| MLTX-02-004-EN-9930 | Material Approval for Rubber Granules | 2026-03-26 A → 2026-05-21 A (+56d) | 2026-05-19 A → 2026-05-21 A (+2d) | 15d → 1d |  |
| 21 | **PADEL GLASS** | 2026-03-19 → 2026-05-06 (+48d) | 2026-05-19 → 2026-05-21 (+2d) |  |  |
| MLTX-02-004-EN-9780 | Material Submittal for Padel Glass | 2026-03-19 A → 2026-05-06 A (+48d) | 2026-05-14 A → 2026-05-06 A (-8d) | 15d → 1d |  |
| MLTX-02-004-EN-9940 | Material Approval for Padel Glass | 2026-03-26 A → 2026-05-21 A (+56d) | 2026-05-19 A → 2026-05-21 A (+2d) | 15d → 1d |  |
| 22 | **PADEL WIRE MESH/STEEL SETS** | 2026-03-19 → 2026-05-25 (+67d) | 2026-05-19 → 2026-05-27 (+8d) |  |  |
| MLTX-02-004-EN-9790 | Material Submittal for Wire Mesh/Steel Sets | 2026-03-19 A → 2026-05-25 A (+67d) | 2026-05-14 A → 2026-05-25 A (+11d) | 15d → 1d |  |
| MLTX-02-004-EN-9950 | Material Approval for Wire Mesh/Steel Sets | 2026-03-26 A → 2026-05-26 A (+61d) | 2026-05-19 A → 2026-05-27 A (+8d) | 15d → 7d |  |
| 1 | **AGGREGATE BASE COURSE** | 2026-03-19 → 2026-05-21 (+63d) | 2026-05-10 → 2026-07-01 (+52d) |  |  |
| MLTX-02-004-EN-9020 | Material Submittal for Aggregate Base Course | 2026-03-19 A → 2026-05-21 A (+63d) | 2026-05-05 A → 2026-05-21 A (+16d) | 15d → 1d |  |
| MLTX-02-004-EN-9030 | Material Approval for Aggregate Base Course | 2026-03-26 A → 2026-07-01 A (+97d) | 2026-05-10 A → 2026-07-01 A (+52d) | 15d → 1d | MLTX-02-004-EN-9020, MLTX-02-004-EN-9550, MLTX-02-004-EN-9650 → MLTX-02-004-EN-9020 |
| 16 | **PACKAGE AC UNITS** | 2026-07-07 → 2026-05-21 (-47d) | 2026-07-07 → 2026-05-21 (-47d) |  |  |
| MLTX-02-004-EN-9480 | Material Submittal for Package AC Units | 2026-07-07 A → 2026-05-21 A (-47d) | 2026-07-07 A → 2026-05-21 A (-47d) | 15d → 1d | MLTX-02-004-EN-10510, MLTX-02-004-EN-9050 → MLTX-02-004-EN-10510 |
| MLTX-02-004-EN-9490 | Material Approval for Package AC Units | 2026-07-07 A → 2026-05-21 A (-47d) | 2026-07-07 A → 2026-05-21 A (-47d) | 15d → 1d | MLTX-02-004-EN-9480, MLTX-02-004-EN-9020 → MLTX-02-004-EN-9480 |
| 17 | **AIR DIFUSSERS/GRILLS** | 2026-09-12 → 2026-04-13 (-152d) | 2026-09-12 → 2026-05-06 (-129d) |  |  |
| MLTX-02-004-EN-9500 | Material Submittal for Air Difussers/Grills | 2026-09-12 A → 2026-04-13 A (-152d) | 2026-09-12 A → 2026-04-22 A (-143d) | 15d → 9d | MLTX-02-004-EN-10530, MLTX-02-004-EN-9020 → MLTX-02-004-EN-10530 |
| MLTX-02-004-EN-9510 | Material Approval for Air Difussers/Grills | 2026-09-12 A → 2026-05-06 A (-129d) | 2026-09-12 A → 2026-05-06 A (-129d) | 15d → 1d | MLTX-02-004-EN-9500, MLTX-02-004-EN-9030 → MLTX-02-004-EN-9500 |
| 2 | **BITUMINOUS BASE & WEARING COURSE** | 2026-03-24 → 2026-04-16 (+23d) | 2026-05-10 → 2026-04-18 (-22d) |  |  |
| MLTX-02-004-EN-9040 | Material Submittal for Bituminous Base & Wearing Cource | 2026-03-24 A → 2026-04-16 A (+23d) | 2026-05-05 A → 2026-04-18 A (-17d) | 15d → 2d |  |
| MLTX-02-004-EN-9050 | Material Approval for the Site | 2026-03-28 A → 2026-04-18 A (+21d) | 2026-05-10 A → 2026-04-18 A (-22d) | 15d → 1d |  |
| 3 | **INTERLOCKING PAVING** | 2026-03-24 → 2026-05-21 (+58d) | 2026-05-13 → 2026-05-21 (+8d) |  |  |
| MLTX-02-004-EN-9060 | Material Submittal for Interlocking Block Pavers | 2026-03-24 A → 2026-05-21 A (+58d) | 2026-05-07 A → 2026-05-21 A (+14d) | 15d → 1d | MLTX-02-004-EN-10130, MLTX-02-004-EN-9050 → MLTX-02-004-EN-10130 |
| MLTX-02-004-EN-9110 | Material Approval for Interlocking Block Pavers | 2026-03-28 A → 2026-05-21 A (+54d) | 2026-05-13 A → 2026-05-21 A (+8d) | 15d → 1d | MLTX-02-004-EN-9060, MLTX-02-004-EN-9020 → MLTX-02-004-EN-9060 |
| 4 | **MARKING PAINT** | 2026-03-24 → 2026-04-13 (+20d) | 2026-05-18 → 2026-04-19 (-29d) |  |  |
| MLTX-02-004-EN-9390 | Material Submittal for Marking Paint | 2026-03-24 A → 2026-04-13 A (+20d) | 2026-05-12 A → 2026-04-18 A (-24d) | 15d → 5d |  |
| MLTX-02-004-EN-9960 | Material Approval for Marking Paint | 2026-03-28 A → 2026-04-18 A (+21d) | 2026-05-18 A → 2026-04-19 A (-29d) | 15d → 2d |  |
| 18 | **GALVANIZED DUCTS** | 2026-03-24 → 2026-06-13 (+81d) | 2026-05-10 → 2026-08-08 (+90d) |  |  |
| MLTX-02-004-EN-9520 | Material Submittal for Galvanized Duct | 2026-03-24 A → 2026-06-13 A (+81d) | 2026-05-06 A → 2026-06-13 A (+38d) | 15d → 1d | MLTX-02-004-EN-10550, MLTX-02-004-EN-9020 → MLTX-02-004-EN-10550 |
| MLTX-02-004-EN-9530 | Material Approval for Galvanized Duct | 2026-03-28 A → 2026-08-08 A (+133d) | 2026-05-10 A → 2026-08-08 A (+90d) | 15d → 6d | MLTX-02-004-EN-9520, MLTX-02-004-EN-9030 → MLTX-02-004-EN-9520 |
| 19 | **EXHAUST FANS** | 2026-09-12 → 2026-04-13 (-152d) | 2026-09-12 → 2026-05-06 (-129d) |  |  |
| MLTX-02-004-EN-9540 | Material Submittal for Exhaust Fans | 2026-09-12 A → 2026-04-13 A (-152d) | 2026-09-12 A → 2026-04-18 A (-147d) | 15d → 5d |  |
| MLTX-02-004-EN-9550 | Material Approval for Exhaust Fans | 2026-09-12 A → 2026-05-06 A (-129d) | 2026-09-12 A → 2026-05-06 A (-129d) | 15d → 1d |  |
| 10 | **DISTRIBUTION BOARDS** | 2026-08-26 → 2026-04-13 (-135d) | 2026-08-26 → 2026-04-22 (-126d) |  |  |
| MLTX-02-004-EN-9620 | Material Submittal for Distribution Boards | 2026-08-26 A → 2026-04-13 A (-135d) | 2026-08-26 A → 2026-04-15 A (-133d) | 15d → 3d |  |
| MLTX-02-004-EN-9630 | Material Approval for Distribution Boards | 2026-08-26 A → 2026-04-16 A (-132d) | 2026-08-26 A → 2026-04-22 A (-126d) | 15d → 6d |  |
| 11 | **POWER CABLES** | 2026-03-24 → 2026-04-13 (+20d) | 2026-05-19 → 2026-04-22 (-27d) |  |  |
| MLTX-02-004-EN-9640 | Material Submittal for Power Cables | 2026-03-24 A → 2026-04-13 A (+20d) | 2026-05-14 A → 2026-04-15 A (-29d) | 15d → 3d |  |

| ID | Task | Start | Finish | Duration | Complete | Total float | Predecessors | Other |
| --- | --- | --- | --- | --- | --- | --- | --- | --- |
| MLTX-02-004-EN-9650 | Material Approval for Power Cables | 2026-03-28 A → 2026-04-16 A (+19d) | 2026-05-19 A → 2026-04-22 A (-27d) | 15d → 6d |  |  |  |  |
| 12 | **LIGHT FIXTURES** | 2026-07-07 → 2026-04-13 (-85d) | 2026-07-07 → 2026-04-22 (-76d) |  |  |  |  |  |
| MLTX-02-004-EN-9660 | Material Submittal for Light Fixtures | 2026-07-07 A → 2026-04-13 A (-85d) | 2026-07-07 A → 2026-04-15 A (-83d) | 15d → 3d |  |  | MLTX-02-004-EN-10690, MLTX-02-004-EN-9050 → MLTX-02-004-EN-10690 |  |
| MLTX-02-004-EN-9670 | Material Approval for Light Fixtures | 2026-07-07 A → 2026-04-16 A (-82d) | 2026-07-07 A → 2026-04-22 A (-76d) | 15d → 6d |  |  | MLTX-02-004-EN-9660, MLTX-02-004-EN-9020 → MLTX-02-004-EN-9660 |  |
| 13 | **CCTV MATERIALS** | 2026-08-26 → 2026-04-13 (-135d) | 2026-09-12 → 2026-04-22 (-143d) |  |  |  |  |  |
| MLTX-02-004-EN-9680 | Material Submittal for CCTV | 2026-08-26 A → 2026-04-13 A (-135d) | 2026-08-26 A → 2026-04-15 A (-133d) | 15d → 3d |  |  | MLTX-02-004-EN-10710, MLTX-02-004-EN-9050 → MLTX-02-004-EN-10710 |  |
| MLTX-02-004-EN-9690 | Material Approval for CCTV | 2026-09-12 A → 2026-04-16 A (-149d) | 2026-09-12 A → 2026-04-22 A (-143d) | 15d → 6d |  |  | MLTX-02-004-EN-9680, MLTX-02-004-EN-9020 → MLTX-02-004-EN-9680 |  |
| 14 | **POWER OUTLETS/SWITCHES** | 2026-09-12 → 2026-05-06 (-129d) | 2026-09-12 → 2026-05-07 (-128d) |  |  |  |  |  |
| MLTX-02-004-EN-9700 | Material Submittal for Power Outlets/Switches | 2026-09-12 A → 2026-05-06 A (-129d) | 2026-09-12 A → 2026-05-06 A (-129d) | 15d → 1d |  |  |  |  |
| MLTX-02-004-EN-9710 | Material Approval for Power Outlets/Switches | 2026-09-12 A → 2026-05-07 A (-128d) | 2026-09-12 A → 2026-05-07 A (-128d) | 15d → 1d |  |  |  |  |
| LSC | **LANDSCAPE WORKS** | 2026-03-24 → 2026-04-07 (+14d) | 2026-07-30 → 2026-07-27 (-3d) |  |  |  |  |  |
| 7 | **INTERLOCKING PAVING** | 2026-03-24 → 2026-05-21 (+58d) | 2026-05-13 → 2026-05-21 (+8d) |  |  |  |  |  |
| MLTX-02-004-EN-9740 | Material Submittal for Interlocking Block Pavers | 2026-03-24 A → 2026-05-21 A (+58d) | 2026-05-07 A → 2026-05-21 A (+14d) | 15d → 1d |  |  |  |  |
| MLTX-02-004-EN-9750 | Material Approval for Interlocking Block Pavers | 2026-03-28 A → 2026-05-21 A (+54d) | 2026-05-13 A → 2026-05-21 A (+8d) | 15d → 1d |  |  |  |  |
| 9 | **CURBSTONE** | 2026-03-24 → 2026-05-21 (+58d) | 2026-05-13 → 2026-05-21 (+8d) |  |  |  |  |  |
| MLTX-02-004-EN-9840 | Material Submittal for Curbstone | 2026-03-24 A → 2026-05-21 A (+58d) | 2026-05-07 A → 2026-05-21 A (+14d) | 15d → 1d |  |  |  |  |
| MLTX-02-004-EN-9850 | Material Approval for Curbstone | 2026-03-28 A → 2026-05-21 A (+54d) | 2026-05-13 A → 2026-05-21 A (+8d) | 15d → 1d |  |  |  |  |
| 1 | **PAVEMENT MARKING** | 2026-03-24 → 2026-04-13 (+20d) | 2026-05-18 → 2026-04-19 (-29d) |  |  |  |  |  |
| MLTX-02-004-EN-9070 | Material Submittal for Pavement Markings | 2026-03-24 A → 2026-04-13 A (+20d) | 2026-05-12 A → 2026-04-18 A (-24d) | 15d → 5d |  |  |  |  |
| MLTX-02-004-EN-9120 | Material Approval for Pavement Markings | 2026-03-28 A → 2026-04-18 A (+21d) | 2026-05-18 A → 2026-04-19 A (-29d) | 15d → 2d |  |  |  |  |
| 2 | **TRAFFIC SIGNS** | 2026-03-24 → 2026-05-06 (+43d) | 2026-05-18 → 2026-07-18 (+61d) |  |  |  |  |  |
| MLTX-02-004-EN-9080 | Material Submittal for Traffic Signs | 2026-03-24 A → 2026-05-06 A (+43d) | 2026-05-12 A → 2026-05-06 A (-6d) | 15d → 1d |  |  |  |  |
| MLTX-02-004-EN-9090 | Material Approval for Traffic Signs | 2026-03-28 A → 2026-07-18 A (+112d) | 2026-05-18 A → 2026-07-18 A (+61d) | 15d → 6d |  |  |  |  |
| 3 | **IRRIGATION PIPES/SPRINKLERS** | 2026-07-28 → 2026-04-13 (-106d) | 2026-07-30 → 2026-07-27 (-3d) |  |  |  |  |  |
| MLTX-02-004-EN-9130 | Material Submittal for Irrigation Pipes/Sprinkles | 2026-07-28 A → 2026-04-13 A (-106d) | 2026-07-28 A → 2026-04-18 A (-101d) | 15d → 5d |  |  |  |  |
| MLTX-02-004-EN-9140 | Material Approval for Irrigation Pipes/Sprinkles | 2026-07-30 A → 2026-07-27 A (-3d) | 2026-07-30 A → 2026-07-27 A (-3d) | 15d → 6d |  |  | MLTX-02-004-EN-9130 → MLTX-02-004-EN-9090, MLTX-02-004-EN-9090 FF, MLTX-02-004-EN-9130 |  |
| 5 | **AGRICULTURE SOIL** | 2026-03-24 → 2026-05-06 (+43d) |  |  |  |  |  |  |
| MLTX-02-004-EN-9800 | Material Submittal for Agriculture Soil | 2026-03-24 A → 2026-05-06 A (+43d) | 2026-05-16 A → 2026-05-06 A (-10d) | 15d → 1d |  |  |  |  |
| MLTX-02-004-EN-9810 | Material Approval for Agriculture Soil | 2026-03-28 A → 2026-05-21 A (+54d) |  | 15d → 1d |  |  |  |  |
| 8 | **TRACK SURFACE** | 2026-07-28 → 2026-05-06 (-83d) | 2026-07-30 → 2026-05-21 (-70d) |  |  |  |  |  |
| MLTX-02-004-EN-9820 | Material Submittal for Track Surface | 2026-07-28 A → 2026-05-06 A (-83d) | 2026-07-28 A → 2026-05-06 A (-83d) | 15d → 1d |  |  |  |  |
| MLTX-02-004-EN-9830 | Material Approval for Track Surface | 2026-07-30 A → 2026-05-21 A (-70d) | 2026-07-30 A → 2026-05-21 A (-70d) | 15d → 1d |  |  | MLTX-02-004-EN-9820, MLTX-02-004-EN-8970 → MLTX-02-004-EN-9820 |  |
| 10 | **GRASS/TREES** | 2026-03-24 → 2026-05-06 (+43d) |  |  |  |  |  |  |
| MLTX-02-004-EN-9860 | Material Submittal for Grass/Trees | 2026-03-24 A → 2026-05-06 A (+43d) | 2026-05-16 A → 2026-05-06 A (-10d) | 15d → 1d |  |  |  |  |
| MLTX-02-004-EN-9870 | Material Approval for Grass/Trees | 2026-03-28 A → 2026-05-21 A (+54d) |  | 15d → 1d |  |  |  |  |
| 6 | **CABLES** | 2026-03-24 → 2026-04-13 (+20d) | 2026-05-19 → 2026-04-22 (-27d) |  |  |  |  |  |
| MLTX-02-004-EN-9720 | Material Submittal for Cables | 2026-03-24 A → 2026-04-13 A (+20d) | 2026-05-14 A → 2026-04-15 A (-29d) | 15d → 3d |  |  |  |  |
| MLTX-02-004-EN-9730 | Material Approval for Cables | 2026-03-28 A → 2026-04-16 A (+19d) | 2026-05-19 A → 2026-04-22 A (-27d) | 15d → 6d |  |  |  |  |
| 4 | **LIGHT POLES** | 2026-07-07 → 2026-04-07 (-91d) | 2026-07-07 → 2026-04-15 (-83d) |  |  |  |  |  |
| MLTX-02-004-EN-8980 | Material Approval for Lighting poles | 2026-07-07 A → 2026-04-07 A (-91d) | 2026-07-07 A → 2026-04-07 A (-91d) | 15d → 1d |  |  |  |  |
| MLTX-02-004-EN-8970 | Material Submittal for Lighting poles | 2026-07-07 A → 2026-04-13 A (-85d) | 2026-07-07 A → 2026-04-15 A (-83d) | 15d → 3d |  |  |  |  |
| CONST | **CONSTRUCTION PHASE** | 2026-04-04 → 2026-05-02 (+28d) | 2027-03-23 → 2027-05-10 (+48d) |  |  |  |  |  |
| SW | **SITE WORKS** | 2026-04-04 → 2026-05-02 (+28d) | 2027-03-23 → 2027-05-10 (+48d) |  |  |  |  |  |
| 1 | **EARTH WORKS** | 2026-04-04 → 2026-05-02 (+28d) | 2026-08-13 → 2026-10-10 (+58d) |  |  |  |  |  |
| MLTX-02-004-CN-11880 | Excavation (in all types of soil) including Compaction (Playground Area) | 2026-04-06 A → 2026-05-02 A (+26d) | 2026-04-12 A → 2026-05-11 A (+29d) | 12d → 8.25d |  |  | MLTX-02-004-EN-11900, MLTX-02-004-CN-11890 SS, MLTX-02-004-EN-11920 → MLTX-02-004-EN-1840, MLTX-02-004-CN-11890 | resources Labor [300 h]; Driver [380 h]; Excavator [180 h]; Loader [50 h]; Water Tanker [120 h]; Dump Truck [240 h]; Milling machine [60 h]; Excavation in any type of soil from existing level [1441.3] → Labor [300 h]; Driver [380 h]; Excavator [140 h]; Loader [50 h]; Water Tanker [80 h]; Dump Truck [200 h]; Milling machine [40 h]; Excavation in any type of soil from existing level [1600] |
| MLTX-02-004-CN-11900 | Excavation (in all types of soil) including Compaction (Landscape Area) | 2026-04-06 A → 2026-05-06 A (+30d) | 2026-08-05 A → 2026-05-23 A (-74d) | 7d → 14.14d |  |  | MLTX-02-004-EN-11750, MLTX-02-004-CN-11880, MLTX-02-004-EN-11770, MLTX-02-004-EN-11740, MLTX-02-004-EN-11760, MLTX-02-004-CN-12080 → MLTX-02-004-CN-11880, MLTX-02-004-EN-11740, MLTX-02-004-EN-11750, MLTX-02-004-EN-11770, MLTX-02-004-EN-11760 | resources Labor [400 h]; Driver [200 h]; Excavator [210 h]; Loader [150 h]; Water Tanker [150 h]; Dump Truck [280 h]; Milling machine [70 h]; Excavation in any type of soil from existing level [926.55] → Labor [400 h]; Driver [200 h]; Excavator [140 h]; Loader [130 h]; Water Tanker [100 h]; Dump Truck [200 h]; Milling machine [40 h]; Excavation in any type of soil from existing level [3203] |
| MLTX-02-004-CN-11890 | Excavation (in all types of soil) including Compaction (Service/Toilet Building) | 2026-04-04 A → 2026-05-07 A (+33d) | 2026-08-02 A → 2026-05-21 A (-73d) | 9d → 12.03d |  |  |  | resources Labor [290 h]; Driver [80 h]; Excavator [60 h]; Loader [60 h]; Water Tanker [60 h]; Dump Truck [80 h]; Milling machine [20 h]; Excavation in any type of soil from existing level [205.9] → Labor [300 h]; Driver [80 h]; Excavator [60 h]; Loader [60 h]; Water Tanker [60 h]; Dump Truck [80 h]; Milling machine [20 h]; Excavation in any type of soil from existing level [510] |
| MLTX-02-004-CN-11910 | Backfilling on Layers (Selected Soil) including Compaction (Playground Area) | 2026-04-13 A → 2026-05-25 A (+42d) | 2026-04-30 A → 2026-07-04 A (+65d) | 10d → 32d |  |  |  | resources Labor [550 h]; Driver [300 h]; Loader [120 h]; Water Tanker [150 h]; Compactor [200 h]; Backfilling with selected fill material [1437.24] → Labor [550 h]; Driver [300 h]; Loader [130 h]; Water Tanker [100 h]; Compactor [100 h]; Backfilling with selected fill material [650] |
| MLTX-02-004-CN-11920 | Backfilling on Layers (Selected Soil) including Compaction (Service/Toilet Building) | 2026-04-06 A → 2026-05-25 A (+49d) | 2026-04-08 A → 2026-06-14 A (+67d) | 20d → 14.2d |  |  | MLTX-02-004-CN-11890 SS, MLTX-02-004-CN-11880 → MLTX-02-004-CN-11890 | resources Labor [300 h]; Driver [140 h]; Loader [90 h]; Water Tanker [90 h]; Compactor [60 h]; Backfilling with selected fill material [205.32] → Labor [300 h]; Driver [140 h]; Loader [90 h]; Water Tanker [80 h]; Compactor [60 h]; Backfilling with selected fill material [240] |
| MLTX-02-004-CN-11930 | Backfilling on Layers (Selected Soil) including Compaction (Landscape Area) | 2026-04-21 A → 2026-08-29 A (+130d) | 2026-08-13 A → 2026-10-10 A (+58d) | 8d → 9d |  |  | MLTX-02-004-CN-11900 SS, MLTX-02-004-CN-11890 SS, MLTX-02-004-CN-11880, MLTX-02-004-CN-11890 FF, MLTX-02-004-CN-11900 FF, MLTX-02-004-CN-12080 → MLTX-02-004-CN-11900 | resources Labor [600 h]; Driver [300 h]; Loader [60 h]; Water Tanker [150 h]; Compactor [200 h]; Backfilling with selected fill material [923.94] → Labor [600 h]; Driver [300 h]; Loader [60 h]; Water Tanker [100 h]; Compactor [100 h]; Backfilling with selected fill material [2550] |
| 4 | **LANDSCAPE WORKS** | 2026-05-19 → 2026-07-15 (+57d) | 2027-03-23 → 2027-05-10 (+48d) |  |  |  |  |  |
| 4 | **PLAYGROUND AREA** | 2026-05-19 → 2026-10-01 (+135d) | 2027-03-04 → 2027-05-01 (+58d) |  |  |  |  |  |
| 6 | **FOOTBALL PLAYGROUND** | 2026-05-19 → 2026-10-01 (+135d) | 2027-02-20 → 2027-02-11 (-9d) |  |  |  |  |  |
| MLTX-02-004-CN-12080 | Preparation and Proofing for Subgrade (Football Playground) | 2026-05-19 A → 2026-10-01 A (+135d) | 2026-05-31 A → 2026-10-19 A (+141d) | 10d → 17d |  |  | MLTX-02-004-CN-11910 → MLTX-02-004-CN-11910 SS, MLTX-02-004-CN-11930 | resources Labor [500 h]; Skilled Labor [200 h]; Driver [300 h]; Forklift [270 h]; Football playground [250] → Labor [500 h]; Skilled Labor [200 h]; Driver [300 h]; Forklift [270 h]; Football playground [200] |
| MLTX-02-004-CN-12090 | Backfilling and Compaction of Base Layers (Football Playground) | 2026-06-01 A → 2026-10-24 A (+145d) | 2026-06-18 A → 2026-11-04 A (+139d) | 16d → 25d |  |  | MLTX-02-004-PR-9990, MLTX-02-004-CN-12080, MLTX-02-004-EN-9050 → MLTX-02-004-CN-12080, MLTX-02-004-CN-11910R | resources Labor [700 h]; Skilled Labor [250 h]; Driver [350 h]; Loader [150 h]; Dump Truck [440 h]; Compactor [220 h]; Football playground [50] → Labor [700 h]; Skilled Labor [250 h]; Driver [350 h]; Loader [80 h]; Dump Truck [200 h]; Compactor [100 h]; Football playground [200] |
| MLTX-02-004-CN-12110 | Install Sport Equipments - Goal / Nets - (Football Playground) | 2027-02-14 → 2027-02-03 (-11d) | 2027-02-20 → 2027-02-11 (-9d) | 5d → 8d |  | -44.1d → -57d | Finishing Asphalt & Concrete Surface (Football Playground), MLTX-02-004-CN-10060, MLTX-02-004-EN-12070 → MLTX-02-004-CN-12100, MLTX-02-004-CN-12120 SS, MLTX-02-004-CN-12370, MLTX-02-004-EN-12070 | resources Labor [390 h]; Skilled Labor [150 h]; Driver [100 h]; Crane [140 h]; Football playground [100] → Labor [390 h]; Skilled Labor [150 h]; Driver [100 h]; Crane [140 h]; Football playground [250] |
| 7 | **PADEL PLAYGROUND** | 2026-05-19 → 2026-10-01 (+135d) | 2027-03-02 → 2027-04-06 (+35d) |  |  |  |  |  |
| MLTX-02-004-CN-12130 | Preparation and Proofing for Subgrade (Padel Playground) | 2026-05-19 A → 2026-10-01 A (+135d) | 2026-05-31 A → 2026-10-19 A (+141d) | 7d → 25d |  |  |  | resources Labor [300 h]; Skilled Labor [150 h]; Driver [200 h]; Forklift [180 h]; Padel playgound [70] → Labor [300 h]; Skilled Labor [150 h]; Driver [200 h]; Forklift [90 h]; Padel playgound [70] |
| MLTX-02-004-CN-12140 | Backfilling and Compaction of Base Layers (Padel Playground) | 2026-06-01 A → 2026-10-24 A (+145d) | 2026-06-18 A → 2026-12-16 (+181d) | 16d → 20d | 100% → 50% | none → -46d | MLTX-02-004-CN-12130, MLTX-02-004-PR-9990, MLTX-02-004-EN-9050, MLTX-02-004-CN-12190 → MLTX-02-004-CN-12130, MLTX-02-004-PR-10010, MLTX-02-004-PR-9990, MLTX-02-004-CN-12090 SS, MLTX-02-004-CN-12090 FF | resources Labor [550 h]; Skilled Labor [200 h]; Driver [280 h]; Loader [150 h]; Dump Truck [360 h]; Compactor [180 h]; Padel playgound [10] → Labor [550 h]; Skilled Labor [200 h]; Driver [280 h]; Loader [80 h]; Dump Truck [200 h]; Compactor [100 h]; Padel playgound [40] |
| MLTX-02-004-CN-12160 | Install Sport Equipments - Goal / Nets - (Padel Playground) | 2027-02-24 → 2027-03-14 (+18d) | 2027-03-02 → 2027-03-28 (+26d) | 5d → 13d |  | -52.1d → -86d | Finishing Asphalt & Concrete Surface (Padel Playground), MLTX-02-004-EN-12090, MLTX-02-004-CN-12110 SS, MLTX-02-004-CN-12380, Aggregate basecourse layer (Basketball Playground), Aggregate basecourse layer (Padel Playground) → MLTX-02-004-CN-12150, MLTX-02-004-CN-12110 SS, MLTX-02-004-EN-12090 | resources Labor [950 h]; Skilled Labor [440 h]; Driver [260 h]; Crane [160 h]; Padel playgound [50] → Labor [950 h]; Skilled Labor [440 h]; Driver [260 h]; Crane [160 h]; Padel playgound [30] |
| 8 | **BASKETBALL PLAYGROUND** | 2026-05-19 → 2026-10-01 (+135d) | 2027-03-04 → 2027-04-06 (+33d) |  |  |  |  |  |
| MLTX-02-004-CN-12190 | Backfilling and Compaction of Base Layers (Basketball Playground) | 2026-06-01 A → 2026-10-24 A (+145d) | 2026-06-18 A → 2026-11-11 A (+146d) | 11d → 30d |  |  | MLTX-02-004-PR-9990, MLTX-02-004-EN-9960, MLTX-02-004-EN-9050, Preparation and Proofing for Subgrade (Basketball Playground), MLTX-02-004-PR-10150 → MLTX-02-004-PR-10180, MLTX-02-004-CN-12180, MLTX-02-004-CN-12140 FF, MLTX-02-004-CN-12140 SS, MLTX-02-004-MS-1120 FF, MLTX-02-004-PR-10360 FF | resources Labor [400 h]; Skilled Labor [200 h]; Driver [300 h]; Loader [150 h]; Dump Truck [400 h]; Compactor [200 h]; Basketball playground [24.93] → Labor [400 h]; Skilled Labor [200 h]; Driver [300 h]; Loader [80 h]; Dump Truck [200 h]; Compactor [100 h]; Basketball playground [53.33] |
| MLTX-02-004-CN-12210 | Install Sport Equipments - Goal / Nets - (Basketball Playground) | 2027-03-02 → 2027-02-13 (-17d) | 2027-03-04 → 2027-02-24 (-8d) | 2d → 10d |  | -52.1d → -52d | Finishing Asphalt & Concrete Surface (Basketball Playground), MLTX-02-004-CN-12110, MLTX-02-004-CN-12160, MLTX-02-004-EN-12080, Aggregate basecourse layer (Basketball Playground), Installing and Finish Works of Panel Boards → MLTX-02-004-CN-12110, MLTX-02-004-CN-12200 | resources Labor [200 h]; Skilled Labor [90 h]; Driver [100 h]; Crane [140 h]; Basketball playground [127.5] → Labor [200 h]; Skilled Labor [90 h]; Driver [100 h]; Crane [140 h]; Basketball playground [133.33] |
| 9 | **PADEL FENCE** | 2026-08-08 → 2027-04-07 (+242d) | 2027-02-20 → 2027-05-01 (+70d) |  |  |  |  |  |
| MLTX-02-004-CN-12230 | Excavation for Fence | 2026-08-08 A → 2027-04-07 (+242d) | 2026-08-08 A → 2027-04-10 (+245d) | 8d → 3d | 100% → 0% | none → -86d | MLTX-02-004-CN-12140, MLTX-02-004-CN-12190, Finishing Asphalt & Concrete Surface (Basketball Playground), Aggregate basecourse layer (Basketball Playground) → MLTX-02-004-CN-12190, MLTX-02-004-CN-12170, MLTX-02-004-CN-12220 | resources Labor [250 h]; Driver [160 h]; Excavator [120 h]; Dump Truck [160 h]; Supply and install of padel playground fence [0.01] → Labor [250 h]; Driver [160 h]; Excavator [80 h]; Dump Truck [160 h]; Supply and install of padel playground fence [0.1] |
| MLTX-02-004-CN-12240 | Concrete Foundation for Fence including Posts Fixation | 2026-08-15 A → 2027-04-11 (+239d) | 2026-08-23 A → 2027-04-14 (+234d) | 7d → 4d | 100% → 0% | none → -86d | MLTX-02-004-CN-12230 SS, MLTX-02-004-EN-11120, MLTX-02-004-CN-12230 FF, Finishing Asphalt & Concrete Surface (Basketball Playground), Aggregate basecourse layer (Basketball Playground) → MLTX-02-004-CN-12230, MLTX-02-004-CN-12210 | resources Skilled Labor [150 h]; Driver [100 h]; Steel Fixer [140 h]; Supply and install of padel playground fence [0.01] → Skilled Labor [150 h]; Driver [100 h]; Steel Fixer [140 h]; Supply and install of padel playground fence [0.2] |
| MLTX-02-004-CN-12241 | Backfilling and Reinstatement for Concrete Foundation | 2026-10-13 A → 2027-04-15 (+184d) | 2026-10-13 A → 2027-04-19 (+188d) | 2d → 4d | 100% → 0% | none → -86d |  |  |
| MLTX-02-004-CN-12250 | Tempered Glass Fenc Installation and Fixation | 2026-12-26 → 2027-04-20 (+115d) | 2027-01-24 → 2027-04-25 (+91d) | 25d → 5d |  | -19.1d → -86d | MLTX-02-004-CN-12240 SS, MLTX-02-004-PR-10820, MLTX-02-004-CN-12240 FF, Finishing Asphalt & Concrete Surface (Basketball Playground), Aggregate basecourse layer (Basketball Playground) → MLTX-02-004-CN-12241 | resources Skilled Labor [250 h]; Driver [180 h]; Crane [240 h]; Supply and install of padel playground fence [0.37] → Skilled Labor [250 h]; Driver [180 h]; Crane [240 h]; Supply and install of padel playground fence [0.4] |
| MLTX-02-004-CN-12260 | Chain Link Fence Installation and Fixation | 2026-12-26 → 2027-04-20 (+115d) | 2027-01-24 → 2027-04-25 (+91d) | 25d → 5d |  | -19.1d → -86d | MLTX-02-004-CN-12250 SS, MLTX-02-004-CN-12250 FF, MLTX-02-004-PR-10840, Finishing Asphalt & Concrete Surface (Basketball Playground), Aggregate basecourse layer (Basketball Playground) → MLTX-02-004-CN-12250 SS, MLTX-02-004-CN-12240 | resources Labor [200 h]; Skilled Labor [150 h]; Driver [150 h]; Crane [200 h]; Supply and install of padel playground fence [0.19] → Labor [200 h]; Skilled Labor [150 h]; Driver [150 h]; Crane [200 h]; Supply and install of padel playground fence [0.2] |
| MLTX-02-004-CN-12270 | Install of Fence Gates | 2027-02-14 → 2027-04-26 (+71d) | 2027-02-20 → 2027-05-01 (+70d) |  |  | -42.1d → -86d | MLTX-02-004-CN-12260 FF, MLTX-02-004-CN-12260 SS, MLTX-02-004-CN-10060 → MLTX-02-004-CN-12260, MLTX-02-004-CN-12250 |  |

| ID | Task | Start | Finish | Duration | Complete | Total float | Predecessors | Other |
| --- | --- | --- | --- | --- | --- | --- | --- | --- |
| 1 | **CURBSTOEN/INTERLOCK** | 2026-08-10 → 2026-11-11 (+93d) | 2026-11-30 → 2026-12-30 (+30d) |  |  |  |  |  |
| MLTX-02-004-CN-12020 | Concrete Works Under Curbstone | 2026-08-10 A → 2026-11-11 A (+93d) | 2026-08-10 A → 2026-11-18 A (+100d) | 3d → 5d |  |  | MLTX-02-004-EN-11090, MLTX-02-004-EN-11930, MLTX-02-004-CN-12090 → MLTX-02-004-CN-12290, MLTX-02-004-EN-11930, MLTX-02-004-EN-11090 | resources Skilled Labor [200 h]; Kerb type K1A [151]; Kerb type K1B [15]; Kerb type K4 [908] → Skilled Labor [200 h]; Kerb type K1A [80]; Kerb type K1B [4]; Kerb type K4 [240] |
| MLTX-02-004-CN-12030 | Curbstone Installation | 2026-08-11 A → 2026-12-09 (+120d) | 2026-08-13 A → 2026-12-13 (+122d) |  | 100% → 0% | none → -46d | MLTX-02-004-PR-10900, MLTX-02-004-CN-12020 → MLTX-02-004-CN-12020, MLTX-02-004-CN-12770, MLTX-02-004-CN-13280, MLTX-02-004-CN-12300, MLTX-02-004-PR-10900 | resources Labor [940 h]; Skilled Labor [440 h]; Driver [340 h]; Forklift [240 h]; Kerb type K1A [352.33]; Kerb type K1B [35]; Kerb type K4 [2118.67] → Labor [940 h]; Skilled Labor [440 h]; Driver [340 h]; Forklift [240 h]; Kerb type K1A [240]; Kerb type K1B [4]; Kerb type K4 [900] |
| MLTX-02-004-CN-11960 | Interlock Installation (Grey Scale) for LandScape (Including Finishing Works) | 2026-10-21 A → 2026-12-14 (+54d) | 2026-11-30 → 2026-12-30 (+30d) | 6d → 15d | 95% → 0% | 27.9d → -46d | MLTX-02-004-PR-10030, MLTX-02-004-PR-10760, MLTX-02-004-CN-12030 → MLTX-02-004-CN-12030, MLTX-02-004-PR-10760, MLTX-02-004-PR-10030, MLTX-02-004-PR-10050 | resources Labor [1000 h]; Skilled Labor [440 h]; Driver [540 h]; Forklift [330 h]; Interlock tiles grey scale with black marble chips 600*300*60mm zero joint [1683.33] → Labor [1000 h]; Skilled Labor [440 h]; Driver [540 h]; Forklift [330 h]; Interlock tiles grey scale with black marble chips 600*300*60mm zero joint [1466.67] |
| 10 | **AIR DOME** | 2026-07-14 → 2026-07-15 (+1d) | 2027-02-24 → 2027-03-01 (+5d) |  |  |  |  |  |
| 1 | **CIVIL WORKS** | 2026-07-14 → 2026-07-15 (+1d) | 2027-02-11 → 2027-01-07 (-35d) |  |  |  |  |  |
| MLTX-02-004-CN-12290 | Concrete Works for Foundations including Anchor Bolts (Air Dome) | 2026-08-10 A → 2026-07-29 A (-12d) | 2026-09-21 A → 2026-09-22 A (+1d) | 15d → 4d |  |  | Excavation for Foundation (Air Dome) → MLTX-02-004-CN-12280, MLTX-02-004-CN-12280 SS | resources Skilled Labor [200 h]; Steel Fixer [180 h]; Design, supply, install, testing and commissioning of air dome [0.04] → Skilled Labor [200 h]; Steel Fixer [180 h]; Design, supply, install, testing and commissioning of air dome [392438] |
| MLTX-02-004-CN-12300 | Cable System Installation (Air Dome) | 2026-09-21 A → 2026-09-24 A (+3d) | 2026-09-21 A → 2026-10-26 A (+35d) | 8d → 3d |  |  | MLTX-02-004-EN-9570 → MLTX-02-004-CN-12290 | resources Labor [700 h]; Skilled Labor [250 h]; Driver [250 h]; Crane [300 h]; Design, supply, install, testing and commissioning of air dome → Labor [700 h]; Skilled Labor [250 h]; Driver [250 h]; Crane [300 h]; Design, supply, install, testing and commissioning of air dome [0.27] |
| MLTX-02-004-CN-12310 | Install of Membrane Covering System (Air Dome) | 2027-01-19 → 2026-12-31 (-19d) | 2027-02-11 → 2027-01-04 (-38d) | 20d → 4d |  | -54.1d → -46d | MLTX-02-004-PR-10660, Perimeter Clamping System Installation, MLTX-02-004-CN-11740, MLTX-02-004-CN-12290, MLTX-02-004-PR-10970, MLTX-02-004-EN-11130, Aggregate basecourse layer (Padel Playground), MLTX-02-004-CN-11990, Aggregate basecourse layer (Basketball Playground) → MLTX-02-004-CN-12050, MLTX-02-004-CN-11960 | resources Labor [500 h]; Skilled Labor [90 h]; Driver [100 h]; Crane [160 h]; Design, supply, install, testing and commissioning of air dome [0.17] → Labor [500 h]; Skilled Labor [90 h]; Driver [100 h]; Crane [160 h]; Design, supply, install, testing and commissioning of air dome [0.06] |
| MLTX-02-004-CN-12320 | Thermal Insulation Works (Air Dome) | 2027-01-19 → 2027-01-05 (-14d) | 2027-02-11 → 2027-01-07 (-35d) | 20d → 3d |  | -54.1d → -46d | MLTX-02-004-CN-12310 SS, MLTX-02-004-CN-11740, MLTX-02-004-CN-12310 FF → MLTX-02-004-PR-10720, MLTX-02-004-CN-12310 | resources Labor [500 h]; Skilled Labor [240 h]; Driver [100 h]; Crane [160 h]; Design, supply, install, testing and commissioning of air dome [0.08] → Labor [500 h]; Skilled Labor [240 h]; Driver [100 h]; Crane [160 h]; Design, supply, install, testing and commissioning of air dome [0.06] |
| 3 | **MECHANICAL WORKS** | 2027-02-11 → 2027-01-21 (-21d) | 2027-02-17 → 2027-02-04 (-13d) |  |  |  |  |  |
| MLTX-02-004-CN-12350 | Air Ducts and Grills Installation (Air Dome) | 2027-02-11 → 2027-01-21 (-21d) | 2027-02-16 → 2027-02-01 (-15d) | 4d → 10d |  | -54.1d → -57d | MLTX-02-004-EN-11880, MLTX-02-004-PR-10480, MLTX-02-004-PR-10990, MLTX-02-004-PR-11000, MLTX-02-004-CN-12320, MLTX-02-004-PR-10500 → MLTX-02-004-PR-10990, MLTX-02-004-CN-12320, MLTX-02-004-EN-11880, MLTX-02-004-EN-11890, MLTX-02-004-PR-10500 | resources Labor [876.9 h]; Skilled Labor [353.8 h]; Crane [120 h]; Mechanical [269.2 h]; Design, supply, install, testing and commissioning of air dome [0.13] → Labor [876.9 h]; Skilled Labor [353.8 h]; Mechanical [269.2 h]; Crane [120 h]; Design, supply, install, testing and commissioning of air dome [0.11] |
| MLTX-02-004-CN-12360 | Air Units Installation (Air Dome) | 2027-02-11 → 2027-01-21 (-21d) | 2027-02-17 → 2027-02-04 (-13d) | 5d → 13d |  | -54.1d → -57d | MLTX-02-004-CN-12350 FF, MLTX-02-004-CN-12350 SS, MLTX-02-004-PR-10460 → MLTX-02-004-CN-12350 SS, MLTX-02-004-PR-10460 | resources Labor [800 h]; Skilled Labor [440 h]; Driver [420 h]; Forklift [240 h]; Mechanical [160 h]; Design, supply, install, testing and commissioning of air dome [0.06] → Labor [800 h]; Skilled Labor [440 h]; Driver [420 h]; Mechanical [160 h]; Forklift [240 h]; Design, supply, install, testing and commissioning of air dome [0.06] |
| MLTX-02-004-CN-12370 | Exhaust Fans and Ducts Installation (Air Dome) | 2027-02-11 → 2027-01-21 (-21d) | 2027-02-17 → 2027-02-02 (-15d) | 5d → 11d |  | -52.1d → -57d | MLTX-02-004-CN-12350 FF, MLTX-02-004-CN-12360 SS, MLTX-02-004-CN-12350 SS, MLTX-02-004-PR-10520, MLTX-02-004-CN-12360 FF → MLTX-02-004-CN-12360 SS, MLTX-02-004-CN-12350 SS, MLTX-02-004-CN-12310, MLTX-02-004-PR-10520 | resources Labor [700 h]; Skilled Labor [300 h]; Driver [370 h]; Forklift [210 h]; Mechanical [140 h]; Design, supply, install, testing and commissioning of air dome [0.03] → Labor [700 h]; Skilled Labor [300 h]; Driver [370 h]; Mechanical [140 h]; Forklift [210 h]; Design, supply, install, testing and commissioning of air dome [0.02] |
| 4 | **ELECTRICAL WORKS** | 2027-02-11 → 2026-11-19 (-84d) | 2027-02-24 → 2027-03-01 (+5d) |  |  |  |  |  |
| MLTX-02-004-CN-12400 | External Electrical Connection Works (Air Dome) | 2027-02-16 → 2026-11-19 A (-89d) | 2027-02-24 → 2026-12-16 (-70d) | 6d → 20d | 0% → 10% | -49.1d → 6d | MLTX-02-004-CN-12390 FF, MLTX-02-004-CN-12390 SS → MLTX-02-004-CN-12390 SS, MLTX-02-004-CN-12370 | resources Skilled Labor [350 h]; Electrician [200 h]; Design, supply, install, testing and commissioning of air dome [0.03] → Skilled Labor [350 h]; Electrician [200 h]; Design, supply, install, testing and commissioning of air dome [0.05] |
| MLTX-02-004-CN-12410 | Emergency Generator Installation (Air Dome) | 2027-02-18 → 2027-02-03 (-15d) | 2027-02-24 → 2027-02-27 (+3d) | 4d → 20d |  | -49.1d → -55d | MLTX-02-004-CN-12400 FF, MLTX-02-004-EN-8730, MLTX-02-004-EN-8720, MLTX-02-004-CN-12400 SS, MLTX-02-004-EN-8700 → MLTX-02-004-CN-12400 SS, MLTX-02-004-CN-12370, MLTX-02-004-EN-8700, MLTX-02-004-EN-8720, MLTX-02-004-EN-8730 | resources Skilled Labor [300 h]; Electrician [220 h]; Design, supply, install, testing and commissioning of air dome [0.09] → Skilled Labor [300 h]; Electrician [220 h]; Design, supply, install, testing and commissioning of air dome [0.11] |
| MLTX-02-004-CN-12420 | Control System Installation (Air Dome) | 2027-02-20 → 2027-02-03 (-17d) | 2027-02-24 → 2027-03-01 (+5d) | 3d → 22d |  | -49.1d → -55d | MLTX-02-004-EN-11850, MLTX-02-004-EN-11860, MLTX-02-004-EN-11870, MLTX-02-004-CN-12410 SS, MLTX-02-004-PR-10700, MLTX-02-004-CN-12410 FF → MLTX-02-004-CN-12410 SS, MLTX-02-004-EN-11850, MLTX-02-004-EN-11860, MLTX-02-004-EN-11870, MLTX-02-004-PR-10700 | resources Skilled Labor [900 h]; Electrician [500 h]; Design, supply, install, testing and commissioning of air dome → Skilled Labor [1000 h]; Electrician [500 h]; Design, supply, install, testing and commissioning of air dome [0.09] |
| MLTX-02-004-CN-12380 | Light Fixture Works (Air Dome) | 2027-02-11 → 2027-02-06 (-5d) | 2027-02-24 → 2027-03-01 (+5d) | 10d → 20d |  | -52.1d → -44d | MLTX-02-004-CN-12370 SS, MLTX-02-004-PR-10680, MLTX-02-004-PR-10660, MLTX-02-004-CN-12370 FF, MLTX-02-004-CN-12360 FF, MLTX-02-004-CN-12360 SS → MLTX-02-004-PR-11000, MLTX-02-004-CN-12350, MLTX-02-004-CN-12360, MLTX-02-004-CN-12370 |  |
| MLTX-02-004-CN-12390 | Distribution Board and Electrical Works (Air Dome) | 2027-02-15 → 2027-02-06 (-9d) | 2027-02-24 → 2027-02-27 (+3d) | 7d → 18d |  | -49.1d → -44d | MLTX-02-004-EN-11800, MLTX-02-004-EN-11810, MLTX-02-004-PR-10720, MLTX-02-004-EN-11820, MLTX-02-004-EN-11830, MLTX-02-004-CN-12380 SS, MLTX-02-004-EN-11840, MLTX-02-004-EN-8650, MLTX-02-004-PR-10660, MLTX-02-004-PR-10640, MLTX-02-004-CN-12380 FF → MLTX-02-004-PR-10640, MLTX-02-004-CN-12380 SS, MLTX-02-004-CN-12320, MLTX-02-004-EN-11800, MLTX-02-004-EN-11810, MLTX-02-004-EN-11840 |  |
| 2 | **FINISHES WORKS** | 2027-02-15 → 2027-01-25 (-21d) | 2027-02-20 → 2027-02-23 (+3d) |  |  |  |  |  |
| MLTX-02-004-CN-12330 | Doors Installation Including Emergency, Entrance doors (Air Dome) | 2027-02-15 → 2027-01-25 (-21d) | 2027-02-17 → 2027-02-04 (-13d) | 2d → 10d |  | -54.1d → -50d | MLTX-02-004-PR-10980, MLTX-02-004-CN-12360 FF, MLTX-02-004-EN-11940 → MLTX-02-004-CN-12360 FF, MLTX-02-004-CN-12300 |  |
| MLTX-02-004-CN-12340 | Logo and Signs Installation (Air Dome) | 2027-02-17 → 2027-02-06 (-11d) | 2027-02-20 → 2027-02-23 (+3d) | 2d → 15d |  | -46.1d → -50d | MLTX-02-004-CN-12330 → MLTX-02-004-CN-12330, MLTX-02-004-CN-12370, MLTX-02-004-CN-12330 FF | resources Labor [1300 h]; Skilled Labor [900 h]; Driver [340 h]; Crane [120 h]; Design, supply, install, testing and commissioning of air dome [0.01] → Labor [1300 h]; Skilled Labor [900 h]; Driver [340 h]; Crane [120 h]; Design, supply, install, testing and commissioning of air dome [0.02] |
| 1 | **IRRIGATION NETWORK** | 2026-08-24 → 2026-10-10 (+47d) | 2027-03-01 → 2026-12-23 (-68d) |  |  |  |  |  |
| MLTX-02-004-CN-13190 | Installing of HDPE Pipes for Irrigation Network (Main Line) | 2026-08-24 A → 2026-10-10 A (+47d) | 2026-09-14 A → 2026-10-15 A (+31d) | 3d → 5d |  |  | MLTX-02-004-EN-11790, MLTX-02-004-CN-12030, MLTX-02-004-EN-11780 → MLTX-02-004-PR-10100 | resources Labor [1000 h]; Driver [540 h]; Crane [220 h]; Mechanical [320 h]; Plumber [300 h]; HDPE Pipes pipe line O.D 90 mm PN 10, in depth 0 to 1.5 m [250] → Labor [1000 h]; Driver [540 h]; Mechanical [320 h]; Plumber [300 h]; Crane [220 h]; HDPE Pipes pipe line O.D 90 mm PN 10, in depth 0 to 1.5 m [376.67] |
| MLTX-02-004-CN-13200 | Installing of HDPE Pipes for Irrigation Network (Branch Lines) | 2026-09-19 A → 2026-10-22 A (+33d) | 2026-09-29 A → 2026-10-25 A (+26d) | 3d → 5d |  |  |  | resources Labor [800 h]; Driver [240 h]; Crane [140 h]; Mechanical [240 h]; Plumber [240 h]; HDPE Pipes pipe line O.D 50 mm PN 10, in depth 0 to 1.5 m [116.67]; HDPE Pipes pipe line O.D 32 mm PN 10, in depth 0 to 1.5 m [250]; HDPE Pipes pipe line O.D 25 mm PN 10, in depth 0 to 1.5 m [683.33] → Labor [800 h]; Driver [240 h]; Mechanical [240 h]; Plumber [240 h]; Crane [140 h]; HDPE Pipes pipe line O.D 50 mm PN 10, in depth 0 to 1.5 m [150]; HDPE Pipes pipe line O.D 32 mm PN 10, in depth 0 to 1.5 m [523.33]; HDPE Pipes pipe line O.D 25 mm PN 10, in depth 0 to 1.5 m [1333.33] |
| MLTX-02-004-CN-13210 | Installing of Valves and fittings for Irrigation Network | 2026-09-19 A → 2026-12-10 (+82d) | 2026-10-13 A → 2026-12-14 (+62d) | 3d → 4d | 100% → 0% | none → -45d | MLTX-02-004-CN-13200 → MLTX-02-004-CN-13200, MLTX-02-004-CN-12730, MLTX-02-004-CN-12950, MLTX-02-004-CN-12960, MLTX-02-004-CN-12970, MLTX-02-004-CN-12810, MLTX-02-004-CN-12870, MLTX-02-004-CN-12890, MLTX-02-004-CN-12910 | resources Labor [950 h]; Mechanical [160 h]; Plumber [260 h]; Gate valve 100 mm PN16 [0.67]; Gate valve 50 mm PN16 [3.67]; Gate valve 32 mm PN16 [4.67]; Flushing Bronze gate valve dia 1.5" inside PVC box [2]; Air release valve 1.5" inside PVC box [2] → Labor [950 h]; Mechanical [160 h]; Plumber [260 h]; Electrical Solenoid Valve ( 1") inside PVC box [5.33]; Gate valve 100 mm PN16 [1]; Gate valve 50 mm PN16 [5.33]; Gate valve 32 mm PN16 [8]; Flushing Bronze gate valve dia 1.5" inside PVC box [2.67]; Air release valve 1.5" inside PVC box [3.33] |
| MLTX-02-004-CN-13220 | Installing of Bubblers and Spreyers | 2027-02-27 → 2026-12-21 (-68d) | 2027-03-01 → 2026-12-23 (-68d) | 2d → 3d |  | -53.1d → -45d | MLTX-02-004-PR-10100, MLTX-02-004-CN-13210, MLTX-02-004-CN-12450, MLTX-02-004-EN-11190, Tartan Floor Installation Works for Landscape (Including Finishing Works), MLTX-02-004-CN-13160 → MLTX-02-004-CN-11990 | resources Labor [1300 h]; Mechanical [240 h]; Plumber [240 h]; Pressure�compensating bubblers 110 Lit/Hr [5]; Pressure� bubblers 60 Lit/Hr [165]; Pop up sprayer 90?- 210?, Radius 3.0 mtr [200]; Pop up sprayer 360?,Radius 3.0 mtr. [310] → Labor [1300 h]; Mechanical [240 h]; Plumber [240 h]; Pressureâ€“compensating bubblers 110 Lit/Hr [6.67]; Pressureâ€“ bubblers 60 Lit/Hr [293.33]; Pop up sprayer 90?- 210?, Radius 3.0 mtr [400]; Pop up sprayer 360?,Radius 3.0 mtr. [550] |
| 5 | **NATURAL GROUND** | 2026-10-20 → 2026-12-15 (+56d) | 2026-11-21 → 2026-12-20 (+29d) |  |  |  |  |  |
| MLTX-02-004-CN-11990 | Compacted Natural Ground Soil Installation Works for Landscape | 2026-10-20 A → 2026-12-15 (+56d) | 2026-11-14 A → 2026-12-20 (+36d) | 15d → 5d | 100% → 0% | none → -45d | MLTX-02-004-CN-12920, MLTX-02-004-PR-11870 → MLTX-02-004-CN-13210, MLTX-02-004-CN-12920, MLTX-02-004-CN-12840 | resources Labor [1800 h]; Skilled Labor [1900 h]; Driver [370 h]; Water Tanker [270 h]; Dump Truck [360 h]; Compactor [180 h]; Compacted Natural ground soil [3333.33] → Labor [1800 h]; Skilled Labor [1900 h]; Driver [370 h]; Water Tanker [270 h]; Dump Truck [360 h]; Compactor [180 h]; Compacted Natural ground soil [5490] |
| 2 | **PLANTING** | 2026-10-24 → 2026-11-16 (+23d) | 2026-12-05 → 2027-02-04 (+61d) |  |  |  |  |  |
| MLTX-02-004-CN-12060 | Placement of Lawn Ground Cover (Rolling and Compaction) | 2026-11-01 A → 2026-11-16 A (+15d) | 2026-12-01 → 2026-11-26 (-5d) | 7d → 3d | 20% → 50% | 27.9d → 14d | MLTX-02-004-CN-12070 SS → MLTX-02-004-CN-12070 | resources Labor [2500 h]; Skilled Labor [1550 h]; Driver [540 h]; Water Tanker [250 h]; Lawn [2076.67] → Labor [2500 h]; Skilled Labor [1550 h]; Driver [540 h]; Water Tanker [250 h]; Lawn [3266.67] |
| MLTX-02-004-CN-12050 | Placement of Sweet/Agricultural Soil (Including Levelling and Grading) | 2026-10-24 A → 2026-12-24 (+61d) | 2026-11-30 → 2026-12-29 (+29d) | 6d → 5d | 20% → 0% | 24.9d → -45d | MLTX-02-004-PR-10860, MLTX-02-004-EN-11110 → MLTX-02-004-CN-13220 | resources Labor [1850 h]; Driver [380 h]; Dump Truck [500 h]; Bobcat [280 h]; Cassia Glauca [25.5]; Plumeria Alba [25.5]; Neem [1.5]; Lawn [890] → Labor [1850 h]; Driver [380 h]; Dump Truck [500 h]; Bobcat [280 h]; Cassia Glauca [44]; Plumeria Alba [44]; Neem [1.5]; Lawn [1400] |
| MLTX-02-004-CN-12070 | Placement and Fixation of Trees | 2026-11-01 A → 2027-02-02 (+93d) | 2026-12-05 → 2027-02-04 (+61d) | 10d → 3d | 20% → 0% | 24.9d → -9d | MLTX-02-004-PR-10920 SS, MLTX-02-004-CN-12050 SS → MLTX-02-004-CN-12350 | resources Labor [2250 h]; Skilled Labor [1500 h]; Driver [500 h]; Water Tanker [250 h]; Cassia Glauca [59.5]; Plumeria Alba [59.5]; Neem [3.5] → Labor [2250 h]; Skilled Labor [1500 h]; Driver [500 h]; Water Tanker [250 h]; Cassia Glauca [83]; Plumeria Alba [83]; Neem [3.5] |
| 3 | **WALKING/BIKE PATHS** | 2026-07-19 → 2026-08-19 (+31d) | 2026-09-16 → 2026-12-02 (+77d) |  |  |  |  |  |
| MLTX-02-004-CN-12000 | Bike Path Preparation and Installation Works | 2026-07-19 A → 2026-08-19 A (+31d) | 2026-09-16 A → 2026-12-02 (+77d) | 10d → 8d | 100% → 92% | none → 9d | MLTX-02-004-PR-9990 → MLTX-02-004-PR-10880 FF, MLTX-02-004-CN-12060 FF | resources Skilled Labor [850 h]; Driver [460 h]; Bobcat [180 h]; Bike path [627.13] → Skilled Labor [850 h]; Driver [460 h]; Bobcat [180 h]; Bike path [832.5] |
| MLTX-02-004-CN-12010 | Walking Path Preparation and Installation Works | 2026-07-19 A → 2026-08-19 A (+31d) | 2026-09-16 A → 2026-10-20 A (+34d) | 10d → 8d |  |  | MLTX-02-004-CN-12000 SS, Aggregate basecourse layer (Padel Playground), MLTX-02-004-PR-11820 → MLTX-02-004-CN-12000 SS | resources Skilled Labor [850 h]; Driver [460 h]; Bobcat [180 h]; Walking path [593.79] → Skilled Labor [850 h]; Driver [460 h]; Bobcat [180 h]; Walking path [787.5] |
| 6 | **GENERAL/FURNITURE** | 2026-09-20 → 2026-10-01 (+11d) | 2027-03-23 → 2027-05-10 (+48d) |  |  |  |  |  |
| MLTX-02-004-CN-12920 | Preleminary Works for Site Light Poles Including Cable and Bases Works | 2026-09-20 A → 2026-10-01 A (+11d) | 2026-09-30 A → 2026-12-09 (+70d) | 13d → 14d | 100% → 40% | none → -41d | MLTX-02-004-EN-11320, MLTX-02-004-EN-11350, MLTX-02-004-EN-11030, MLTX-02-004-EN-11340, MLTX-02-004-CN-12030, MLTX-02-004-PR-10740, MLTX-02-004-EN-11910, MLTX-02-004-EN-11330 → MLTX-02-004-CN-12030, MLTX-02-004-EN-11910, MLTX-02-004-EN-11320, MLTX-02-004-EN-11330, MLTX-02-004-EN-11340, MLTX-02-004-EN-11350, MLTX-02-004-PR-10740 | resources Labor [950 h]; Driver [340 h]; Electrician [460 h]; Forklift [240 h]; Supply, install, testing, and commissioning of ground mounted decorated landscape LED lighting with 6.0m height pole [12] → Labor [950 h]; Driver [340 h]; Electrician [460 h]; Forklift [240 h]; Supply, install, testing, and commissioning of ground mounted decorated landscape LED lighting with 6.0m height pole [18] |
| MLTX-02-004-CN-12930 | Installing of Site Light Poles | 2026-10-15 A → 2026-10-17 A (+2d) | 2026-10-28 A → 2026-12-16 (+49d) | 20d → 11d | 100% → 41% | none → 17d | MLTX-02-004-CN-12920, MLTX-02-004-PR-11010 → MLTX-02-004-CN-12060 FF, MLTX-02-004-CN-11970 FF, MLTX-02-004-CN-12400 FF, MLTX-02-004-PR-11010 FF | resources Skilled Labor [700 h]; Electrician [500 h]; Crane [140 h]; Supply, install, testing, and commissioning of ground mounted decorated landscape LED lighting with 6.0m height pole [28] → Skilled Labor [700 h]; Electrician [500 h]; Crane [140 h]; Supply, install, testing, and commissioning of ground mounted decorated landscape LED lighting with 6.0m height pole [75.55] |
| MLTX-02-004-CN-11970 | Stamped Concrete Works for LandScape (Including Finishing Works) | 2027-01-12 → 2026-11-24 (-49d) | 2027-02-02 → 2026-12-02 (-62d) | 18d → 8d |  | -64.1d → 29d | MLTX-02-004-CN-12010, MLTX-02-004-CN-12920, MLTX-02-004-CN-12440 → MLTX-02-004-CN-12010 | resources Skilled Labor [850 h]; Steel Fixer [320 h]; Stamped concrete floor [600] → Skilled Labor [850 h]; Steel Fixer [320 h]; Stamped concrete floor [60] |
| MLTX-02-004-CN-12440 | Fixation and Installation of Steel Frame for Benches | 2026-12-22 → 2026-12-03 (-19d) | 2027-01-12 → 2026-12-16 (-27d) | 18d → 12d |  | -64.1d → 9d | MLTX-02-004-CN-12000, MLTX-02-004-EN-11070, MLTX-02-004-CN-12920, Finishing Asphalt & Concrete Surface (Padel Playground), MLTX-02-004-PR-11730 → MLTX-02-004-CN-12000 |  |
| MLTX-02-004-CN-12450 | Fixation and Installation of Benches | 2027-02-02 → 2026-12-17 (-47d) | 2027-02-27 → 2026-12-26 (-63d) | 20d → 8d |  | -64.1d → 9d | MLTX-02-004-CN-12440, MLTX-02-004-CN-12920, MLTX-02-004-CN-11970 → MLTX-02-004-CN-12440, MLTX-02-004-CN-12010 |  |
| MLTX-02-004-CN-12460 | Fixation and Installation of Precast Concrete Seats (Rectangular) | 2027-02-02 → 2026-12-17 (-47d) | 2027-02-27 → 2026-12-26 (-63d) | 20d → 8d |  | -64.1d → 9d | MLTX-02-004-CN-12450 SS, MLTX-02-004-CN-12450 FF, MLTX-02-004-CN-12920 → MLTX-02-004-CN-12450 SS | resources Skilled Labor [700 h]; Driver [420 h]; Crane [160 h]; Supply and install recycled precast concrete rectangular seats [28] → Skilled Labor [700 h]; Driver [420 h]; Crane [160 h]; Supply and install recycled precast concrete rectangular seats [37.33] |
| MLTX-02-004-CN-12470 | Fixation and Installation of Precast Concrete Seats (Circular) | 2027-02-02 → 2026-12-17 (-47d) | 2027-02-27 → 2026-12-26 (-63d) | 20d → 8d |  | -64.1d → 9d | MLTX-02-004-CN-12460 SS, MLTX-02-004-CN-12460 FF, MLTX-02-004-CN-12920 → MLTX-02-004-CN-12460 SS, MLTX-02-004-CN-12460 FF | resources Skilled Labor [700 h]; Driver [420 h]; Crane [160 h]; Supply and install recycled precast concrete circular seats [24] → Skilled Labor [700 h]; Driver [420 h]; Crane [160 h]; Supply and install recycled precast concrete circular seats [32] |
| MLTX-02-004-CN-12040 | Traffic Signs Posts and Poles Installation | 2027-02-11 → 2027-02-28 (+17d) | 2027-02-15 → 2027-03-07 (+20d) | 3d → 7d |  | -46.1d → -44d | MLTX-02-004-CN-11940, MLTX-02-004-CN-10660, MLTX-02-004-CN-11800, MLTX-02-004-PR-9640, MLTX-02-004-CN-10360 → MLTX-02-004-CN-12470, MLTX-02-004-CN-11940, MLTX-02-004-CN-12930, MLTX-02-004-CN-12390, MLTX-02-004-CN-12410 |  |
| MLTX-02-004-CN-12480 | Fixation and Installation of Precast Concrete Trash Bins | 2027-02-27 → 2027-05-02 (+64d) | 2027-03-23 → 2027-05-10 (+48d) | 18d → 8d |  | -64.1d → -86d | MLTX-02-004-CN-12470, Interlock Installation (8 Cm) for Parking Area (Including Finishing Works), MLTX-02-004-CN-12920 → MLTX-02-004-CN-12470, MLTX-02-004-CN-11940, MLTX-02-004-CN-12270, MLTX-02-004-CN-12380, MLTX-02-004-CN-12450 | resources Skilled Labor [400 h]; Driver [320 h]; Crane [160 h]; Supply and install recycled precast concrete trash bins [8.33] → Skilled Labor [400 h]; Driver [320 h]; Crane [160 h]; Supply and install recycled precast concrete trash bins [10] |
| 2 | **PARKING** | 2026-05-14 → 2026-10-31 (+170d) | 2026-09-19 → 2026-12-01 (+73d) |  |  |  |  |  |
| MLTX-02-004-CN-11950 | Site Preparation & Compaction Under Interlock for Parking Area | 2026-05-14 A → 2026-10-31 A (+170d) | 2026-06-30 A → 2026-11-16 A (+139d) |  |  |  | MLTX-02-004-PR-9740, MLTX-02-004-EN-4120, MLTX-02-004-EN-4560 → MLTX-02-004-CN-11970, MLTX-02-004-EN-11100 | resources Labor [1000 h]; Driver [120 h]; Water Tanker [90 h]; Compactor [60 h]; Supply and install interlock tiles for parking 8cm [200] → Labor [1000 h]; Driver [120 h]; Water Tanker [90 h]; Compactor [60 h]; Supply and install interlock tiles for parking 8cm [200.01] |
| MLTX-02-004-CN-11940 | Interlock Installation (8 Cm) for Parking Area (Including Finishing Works) | 2026-09-10 A → 2026-11-24 (+75d) | 2026-09-19 A → 2026-12-01 (+73d) |  | 100% → 0% | none → 30d | MLTX-02-004-CN-11950, MLTX-02-004-EN-4460, MLTX-02-004-CN-10160 → MLTX-02-004-CN-11950 | resources Labor [2000 h]; Skilled Labor [700 h]; Driver [400 h]; Forklift [300 h]; Supply and install interlock tiles for parking 8cm [466.67] → Labor [2000 h]; Skilled Labor [700 h]; Driver [400 h]; Forklift [300 h]; Supply and install interlock tiles for parking 8cm [466.66] |
| TO | **TOILET/SERVICE BUILDING** | 2026-05-23 → 2026-06-14 (+22d) | 2027-02-27 → 2026-12-24 (-65d) |  |  |  |  |  |
| 13 | **STRUCTURE WORKS** | 2026-05-23 → 2026-06-14 (+22d) | 2026-08-02 → 2026-08-09 (+7d) |  |  |  |  |  |
| 2 | **CONCRETE WORKS** | 2026-05-25 → 2026-06-14 (+20d) | 2026-06-27 → 2026-07-23 (+26d) |  |  |  |  |  |
| 1 | **SUB-STRUCTURE** | 2026-05-25 → 2026-06-14 (+20d) | 2026-06-07 → 2026-07-02 (+25d) |  |  |  |  |  |
| MLTX-02-004-CN-12490 | Plain Concrete Under Footing | 2026-05-25 A → 2026-06-14 A (+20d) | 2026-05-31 A → 2026-06-15 A (+15d) | 4d → 1d |  |  | MLTX-02-004-CN-12570, MLTX-02-004-EN-9010, MLTX-02-004-EN-11440, MLTX-02-004-EN-11450, MLTX-02-004-EN-11000, MLTX-02-004-CN-12550, MLTX-02-004-EN-11430 → MLTX-02-004-CN-12550, MLTX-02-004-EN-11430, MLTX-02-004-EN-11440, MLTX-02-004-EN-11450, MLTX-02-004-EN-11000, MLTX-02-004-EN-9010 |  |
| MLTX-02-004-CN-12520 | Reinforced Concrete Works for Slab on Grade Including Steel Fixing | 2026-06-03 A → 2026-06-15 A (+12d) | 2026-06-07 A → 2026-07-02 A (+25d) | 5d → 15.6d |  |  |  |  |
| 2 | **SUPER-STRUCTURE** | 2026-06-20 → 2026-07-18 (+28d) | 2026-06-27 → 2026-07-23 (+26d) |  |  |  |  |  |
| MLTX-02-004-CN-12500 | AAC Panels Works for Walls | 2026-06-20 A → 2026-07-18 A (+28d) | 2026-06-20 A → 2026-07-21 A (+31d) | 7d → 11d |  |  |  | resources Labor [500 h]; Skilled Labor [200 h]; Driver [280 h]; Crane [160 h]; The autoclaved aerated panel for slabs, external and internal walls and parapet [150] → Labor [500 h]; Skilled Labor [200 h]; Driver [280 h]; Crane [100 h]; The autoclaved aerated panel for slabs, external and internal walls and parapet [150] |
| MLTX-02-004-CN-12530 | AAC Panels Works for Slabs | 2026-06-21 A → 2026-07-21 A (+30d) | 2026-06-24 A → 2026-07-22 A (+28d) | 4d → 10d |  |  |  |  |
| MLTX-02-004-CN-12510 | Parpet Works and Lintels | 2026-06-25 A → 2026-07-23 A (+28d) | 2026-06-27 A → 2026-07-23 A (+26d) | 3d → 8d |  |  |  | resources Labor [200 h]; Skilled Labor [60 h]; Driver [100 h]; Crane [60 h]; The autoclaved aerated panel for slabs, external and internal walls and parapet [50] → Labor [200 h]; Skilled Labor [60 h]; Driver [100 h]; Crane [50 h]; The autoclaved aerated panel for slabs, external and internal walls and parapet [50] |
| 1 | **UNDER GROUND SEPTIC TANK** | 2026-06-01 → 2026-06-15 (+14d) | 2026-07-06 → 2026-07-15 (+9d) |  |  |  |  |  |
| MLTX-02-004-CN-13080 | Plain Concrete Under Footing | 2026-06-01 A → 2026-06-15 A (+14d) | 2026-06-06 A → 2026-06-16 A (+10d) | 3d → 1d |  |  | MLTX-02-004-CN-12560, MLTX-02-004-CN-12540, MLTX-02-004-CN-12080 → MLTX-02-004-CN-12540 |  |
| MLTX-02-004-CN-13100 | Reinforced Concrete Works for Tank Foundation Including Shuttering and Steel Fixing | 2026-06-09 A → 2026-06-16 A (+7d) | 2026-06-13 A → 2026-07-01 A (+18d) | 8d → 13.3d |  |  | MLTX-02-004-CN-13080, MLTX-02-004-CN-12080, MLTX-02-004-CN-12130 → MLTX-02-004-CN-13080 |  |
| MLTX-02-004-CN-13110 | Reinforced Concrete Works for Tank Walls Including Steel Fixing | 2026-06-18 A → 2026-07-05 A (+17d) | 2026-07-05 A → 2026-07-07 A (+2d) | 10d → 16d |  |  | MLTX-02-004-CN-13100, MLTX-02-004-CN-12490 → MLTX-02-004-CN-13100 |  |
| MLTX-02-004-CN-13090 | Reinforced Concrete Works for Tank Slab Including Shuttering and Steel Fixing | 2026-07-06 A → 2026-07-11 A (+5d) | 2026-07-06 A → 2026-07-15 A (+9d) | 10d → 16d |  |  | MLTX-02-004-CN-13110, MLTX-02-004-CN-12490 → MLTX-02-004-CN-13110, MLTX-02-004-CN-13110 FF | resources Labor [700 h]; Skilled Labor [360 h]; Steel Fixer [240 h]; Tank Slab [3] → Labor [700 h]; Skilled Labor [250 h]; Steel Fixer [240 h]; Tank Slab [3] |
| 3 | **THERMAL & MOISTER PROTECTION** | 2026-05-23 → 2026-06-14 (+22d) | 2026-08-02 → 2026-08-09 (+7d) |  |  |  |  |  |
| 1 | **ANTI TERMIT CONTROL** | 2026-05-23 → 2026-06-14 (+22d) | 2026-06-03 → 2026-06-30 (+27d) |  |  |  |  |  |
| MLTX-02-004-CN-12560 | Anti Termite Works Under Foundation | 2026-05-31 A → 2026-06-14 A (+14d) | 2026-06-03 A → 2026-06-15 A (+12d) | 1d → 1.1d |  |  | MLTX-02-004-CN-11930 SS, MLTX-02-004-CN-11920, MLTX-02-004-CN-12080 → MLTX-02-004-CN-11920 |  |
| MLTX-02-004-CN-12570 | Anti Termite Works Under Slab on Grade and Grade Beams | 2026-05-23 A → 2026-06-27 A (+35d) | 2026-05-24 A → 2026-06-30 A (+37d) | 1d → 4d |  |  | MLTX-02-004-CN-13100, MLTX-02-004-CN-12130 → MLTX-02-004-CN-13100 |  |
| 2 | **POLYETHYLENE SHEET** | 2026-05-24 → 2026-06-14 (+21d) | 2026-06-04 → 2026-06-30 (+26d) |  |  |  |  |  |

| ID | Task | Start | Finish | Duration | Complete | Total float | Predecessors | Other |
| --- | --- | --- | --- | --- | --- | --- | --- | --- |
| MLTX-02-004-CN-12540 | Water Proofing Under Blinding Concrete (Polythelen Sheet) | 2026-05-31 A → 2026-06-14 A (+14d) | 2026-06-04 A → 2026-06-15 A (+11d) | 1d → 1.1d |  |  | MLTX-02-004-CN-12560 SS, MLTX-02-004-EN-11010, MLTX-02-004-EN-10120, MLTX-02-004-CN-12080 → MLTX-02-004-CN-12560, MLTX-02-004-EN-11010, MLTX-02-004-EN-10120 |  |
| MLTX-02-004-CN-12550 | Water Proofing Under Slab on Grade (Polythelen Sheet) | 2026-05-24 A → 2026-06-29 A (+36d) | 2026-05-25 A → 2026-06-30 A (+36d) | 1d → 2d |  |  | MLTX-02-004-CN-12570 SS, MLTX-02-004-EN-10120, MLTX-02-004-CN-12130 → MLTX-02-004-CN-12570 |  |
| 4 | **EPOXY** | 2026-07-11 → 2026-08-08 (+28d) | 2026-08-02 → 2026-08-09 (+7d) |  |  |  |  |  |
| MLTX-02-004-CN-12580 | Surface Preparation for Epoxy Coating | 2026-07-11 A → 2026-08-08 A (+28d) | 2026-07-11 A → 2026-08-08 A (+28d) |  |  |  | MLTX-02-004-CN-13090, MLTX-02-004-CN-12520 → MLTX-02-004-CN-13090 |  |
| MLTX-02-004-CN-12590 | Epoxy Coating for Walls and Slab of Tank | 2026-08-02 A → 2026-08-09 A (+7d) | 2026-08-02 A → 2026-08-09 A (+7d) |  |  |  | MLTX-02-004-CN-12580, MLTX-02-004-CN-12500 → MLTX-02-004-CN-12580 |  |
| 5 | **MASONARY WORK** | 2026-07-06 → 2026-07-26 (+20d) | 2026-07-08 → 2026-08-05 (+28d) |  |  |  |  |  |
| MLTX-02-004-CN-12600 | CMU Masonary Works Including all Accessories | 2026-07-06 A → 2026-07-26 A (+20d) | 2026-07-08 A → 2026-08-05 A (+28d) |  |  |  |  |  |
| 3 | **THERMAL & MOISTER PROTECTION** | 2026-08-25 → 2026-09-29 (+35d) | 2026-12-02 → 2026-10-20 (-43d) |  |  |  |  |  |
| MLTX-02-004-CN-12640 | Preparing Surface and Preliminary Works for Roofing and Wet Areas Insulation | 2026-09-05 A → 2026-09-29 A (+24d) | 2026-09-05 A → 2026-09-29 A (+24d) |  |  |  | MLTX-02-004-CN-12630 → MLTX-02-004-CN-12590 |  |
| MLTX-02-004-CN-12650 | Finalize Water Proofing Works for Roofing and Wet Areas | 2026-09-06 A → 2026-09-29 A (+23d) | 2026-12-02 → 2026-10-20 A (-43d) |  | 90% → 100% | 11.9d → none |  |  |
| MLTX-02-004-CN-12620 | Preparing Surface and Preliminary Works for Toilets Waterproofing | 2026-08-25 A → 2026-10-10 A (+46d) | 2026-08-25 A → 2026-10-15 A (+51d) |  |  |  |  |  |
| MLTX-02-004-CN-12630 | Finalize Water Proofing Works for Toilets | 2026-08-25 A → 2026-10-10 A (+46d) | 2026-08-29 A → 2026-10-15 A (+47d) |  |  |  |  |  |
| 11 | **MECHANICAL WORK** | 2026-07-12 → 2026-07-04 (-8d) | 2026-12-16 → 2026-12-09 (-7d) |  |  |  |  |  |
| 4 | **HVAC SYSTEM** | 2026-07-12 → 2026-10-06 (+86d) | 2026-10-03 → 2026-12-09 (+67d) |  |  |  |  |  |
| MLTX-02-004-CN-12720 | Preliminary HVAC and Ventilation Works | 2026-07-12 A → 2026-10-06 A (+86d) | 2026-07-12 A → 2026-10-08 A (+88d) | 3d → 4d |  |  | MLTX-02-004-EN-11470, MLTX-02-004-EN-9450, MLTX-02-004-EN-11480, MLTX-02-004-EN-12050, MLTX-02-004-EN-9280, MLTX-02-004-EN-11060, MLTX-02-004-EN-11460, MLTX-02-004-EN-12060 → MLTX-02-004-CN-13020, MLTX-02-004-EN-12050, MLTX-02-004-EN-12060, MLTX-02-004-EN-11460, MLTX-02-004-EN-11480, MLTX-02-004-EN-11470, MLTX-02-004-EN-11200 |  |
| MLTX-02-004-CN-12740 | Exhaust, Air Ducts Installation with all Accessories | 2026-08-18 A → 2026-10-10 A (+53d) | 2026-08-23 A → 2026-10-12 A (+50d) | 6d → 8d |  |  | MLTX-02-004-CN-13020 → MLTX-02-004-CN-12720 | resources Labor [200 h]; Skilled Labor [180 h]; Driver [60 h]; Crane [120 h]; Mechanical [120 h]; Supply, install, test and commission inline exhaust fans duct [1] → Labor [200 h]; Skilled Labor [180 h]; Driver [60 h]; Mechanical [120 h]; Crane [120 h]; Supply, install, test and commission inline exhaust fans duct [1] |
| MLTX-02-004-CN-12730 | Install and Finish HVAC and Ventilation Works Including Split Air Units | 2026-10-03 A → 2026-11-30 (+58d) | 2026-10-03 A → 2026-12-09 (+67d) | 13d → 9d | 100% → 0% | none → -45d | MLTX-02-004-CN-12740 FF, MLTX-02-004-PR-10380 → MLTX-02-004-PR-10400, MLTX-02-004-CN-13140, MLTX-02-004-CN-12740 FF | resources Labor [150 h]; Skilled Labor [90 h]; Driver [60 h]; Crane [60 h]; Mechanical [60 h]; Supply and install split air conditioning unit (DX-MINI SPLIT UNIT) [1] → Labor [150 h]; Skilled Labor [90 h]; Driver [60 h]; Mechanical [60 h]; Crane [60 h]; Supply and install split air conditioning unit (DX-MINI SPLIT UNIT) [1] |
| 2 | **WATER SUPPLY SYSTEM** | 2026-07-19 → 2026-08-04 (+16d) | 2026-10-12 → 2026-12-08 (+57d) |  |  |  |  |  |
| MLTX-02-004-CN-12750 | Installing of PPR Pipes and Fittings for Water Network | 2026-07-19 A → 2026-08-04 A (+16d) | 2026-07-22 A → 2026-08-08 A (+17d) |  |  |  | MLTX-02-004-EN-11170, MLTX-02-004-EN-11500, MLTX-02-004-EN-11510, MLTX-02-004-PR-10260 → MLTX-02-004-CN-12790, MLTX-02-004-EN-11500, MLTX-02-004-EN-11510, MLTX-02-004-EN-11170, MLTX-02-004-PR-10260 |  |
| MLTX-02-004-CN-12780 | Installing of GRP Tanks | 2026-09-06 A → 2026-09-15 A (+9d) | 2026-09-14 A → 2026-12-02 (+79d) |  | 100% → 60% | none → -46d | MLTX-02-004-CN-12740, MLTX-02-004-EN-11070 → MLTX-02-004-CN-13150 FF | resources Skilled Labor [120 h]; Driver [100 h]; Crane [160 h]; Plumber [140 h]; Hot Press GRP Sectional Panel Water Tanks (4x3x3m) [0.33] → Skilled Labor [120 h]; Driver [100 h]; Plumber [140 h]; Crane [160 h]; Hot Press GRP Sectional Panel Water Tanks (4x3x3m) [0.67] |
| MLTX-02-004-CN-12760 | Installing of HDPE Pipes and Valves for Water Supply Network | 2026-09-19 A → 2026-10-05 A (+16d) | 2026-10-12 A → 2026-10-10 A (-2d) | 6d → 3d |  |  | MLTX-02-004-PR-10220 → MLTX-02-004-CN-12720 | resources Labor [250 h]; Plumber [100 h]; SERVICE CONNECTIONS 50 mm ? [53.33] → Labor [250 h]; Plumber [100 h]; SERVICE CONNECTIONS 50 mm [80] |
| MLTX-02-004-CN-13170 | Installing of Valves and Fittings | 2026-09-05 A → 2026-11-01 A (+57d) | 2026-09-05 A → 2026-11-05 A (+61d) | 2d → 6d |  |  | MLTX-02-004-CN-12750 → MLTX-02-004-CN-12630, MLTX-02-004-CN-12750 | resources Labor [100 h]; Plumber [40 h]; SERVICE CONNECTIONS 50 mm ? [13.33] → Labor [100 h]; Plumber [40 h]; SERVICE CONNECTIONS 50 mm [20] |
| MLTX-02-004-CN-13260 | Installing of Water Heater | 2026-09-15 A → 2026-11-01 A (+47d) | 2026-09-15 A → 2026-11-05 A (+51d) | 4d → 7d |  |  | MLTX-02-004-CN-12690, MLTX-02-004-CN-12780 → MLTX-02-004-CN-13030 |  |
| MLTX-02-004-CN-12770 | Installing of Booster Pump Units Including fittings and accessories | 2026-10-04 A → 2026-12-03 (+60d) | 2026-10-04 A → 2026-12-08 (+65d) | 20d → 5d | 100% → 0% | none → -46d | MLTX-02-004-CN-13230 → MLTX-02-004-CN-12780, MLTX-02-004-CN-12740, MLTX-02-004-CN-13170 | resources Labor [200 h]; Plumber [80 h]; (2W+1S Pumps) - flow of each pump 5 L/S @ 30 Meters [0.33] → Labor [200 h]; Plumber [80 h]; (2W+1S Pumps) - flow of each pump 5 L/S @ 30 Meters [0.67] |
| 1 | **SEWER/DRAINAGE SYSTEM** | 2026-07-20 → 2026-07-04 (-16d) | 2026-10-15 → 2026-12-02 (+48d) |  |  |  |  |  |
| MLTX-02-004-CN-12790 | Installing UPVC Pipes for Sewage Network | 2026-07-20 A → 2026-07-04 A (-16d) | 2026-07-22 A → 2026-08-08 A (+17d) |  |  |  | MLTX-02-004-EN-11160, MLTX-02-004-PR-10280, MLTX-02-004-EN-11530, MLTX-02-004-EN-11520, Preleminary Works for Panel Boards, MLTX-02-004-CN-13170, MLTX-02-004-CN-13260, MLTX-02-004-CN-12770, MLTX-02-004-CN-13270, MLTX-02-004-PR-12090 → MLTX-02-004-EN-11520, MLTX-02-004-EN-11530, MLTX-02-004-EN-11160, MLTX-02-004-PR-10280 |  |
| MLTX-02-004-CN-13180 | Installing UPVC Pipes for External Connection for Sewage Network | 2026-09-26 A → 2026-11-01 A (+36d) | 2026-09-26 A → 2026-11-12 A (+47d) | 3d → 7d |  |  | MLTX-02-004-CN-13250, MLTX-02-004-CN-12940 → MLTX-02-004-CN-13250 | resources Skilled Labor [90 h]; Plumber [30 h]; Supply and install 150 mm uPVC pipes to external wastewater network [16.67] → Skilled Labor [90 h]; Plumber [30 h]; Supply and install 150 mm uPVC pipes to external wastewater network [100] |
| MLTX-02-004-CN-13270 | Installing of Toilet Fixtures and Accessories Such as Closets and Basins | 2026-10-08 A → 2026-11-03 A (+26d) | 2026-10-12 A → 2026-11-12 A (+31d) | 24d → 9d |  |  | MLTX-02-004-CN-12640 → MLTX-02-004-CN-13030 |  |
| MLTX-02-004-CN-12800 | Installing of Plumping Fixtures and Accessories | 2026-10-04 A → 2026-11-24 (+51d) | 2026-10-15 A → 2026-11-25 (+41d) | 4d → 2d | 100% → 0% | none → 49d | MLTX-02-004-CN-13070, MLTX-02-004-CN-13180, MLTX-02-004-CN-12720, MLTX-02-004-PR-11870 → MLTX-02-004-CN-13070, MLTX-02-004-CN-13180 |  |
| MLTX-02-004-CN-13250 | Installing Inspection Chamber for Sewage Network | 2026-09-26 A → 2026-11-24 (+59d) | 2026-09-26 A → 2026-12-02 (+67d) | 4d → 8d | 100% → 0% | none → 46d | MLTX-02-004-CN-12940 → MLTX-02-004-CN-12790 | resources Driver [80 h]; Crane [80 h]; Plumber [80 h]; Supply, installation, testing and commissioning of Inspection chamber [1] → Driver [80 h]; Plumber [80 h]; Crane [80 h]; Supply, installation, testing and commissioning of Inspection chamber [1] |
| 3 | **FIRE PROTECTION** | 2026-12-02 → 2026-11-24 (-8d) | 2026-12-16 → 2026-12-01 (-15d) |  |  |  |  |  |
| MLTX-02-004-CN-12810 | Installing of Fire Fighting Extinguisher and accessories (PFE-1, PFE-2) | 2026-12-02 → 2026-11-24 (-8d) | 2026-12-16 → 2026-12-01 (-15d) | 12d → 7d |  | 11.9d → -38d | MLTX-02-004-CN-13280, MLTX-02-004-EN-11180, MLTX-02-004-EN-11490, MLTX-02-004-CN-13240, MLTX-02-004-CN-12730, MLTX-02-004-CN-12690, MLTX-02-004-CN-13050, MLTX-02-004-PR-10440, MLTX-02-004-PR-10420, MLTX-02-004-PR-10400, MLTX-02-004-EN-11200, MLTX-02-004-CN-13160, MLTX-02-004-CN-13140, MLTX-02-004-CN-12650 → MLTX-02-004-CN-13240, MLTX-02-004-CN-13280, MLTX-02-004-EN-11490, MLTX-02-004-EN-11180 |  |
| 12 | **ELECTRICAL WORKS** | 2026-07-14 → 2026-08-11 (+28d) | 2026-12-20 → 2026-12-24 (+4d) |  |  |  |  |  |
| 1 | **ROUGH-IN WORKS** | 2026-07-14 → 2026-08-11 (+28d) | 2026-08-17 → 2026-08-26 (+9d) |  |  |  |  |  |
| MLTX-02-004-CN-12830 | Preleminary Works for Panel Boards | 2026-07-22 A → 2026-08-11 A (+20d) | 2026-08-09 A → 2026-08-26 A (+17d) | 2d → 9d |  |  | MLTX-02-004-EN-3220, MLTX-02-004-EN-3260, MLTX-02-004-EN-4670, MLTX-02-004-CN-10820, MLTX-02-004-CN-10840, MLTX-02-004-CN-11690 → MLTX-02-004-EN-11250, MLTX-02-004-CN-12510, MLTX-02-004-EN-11550, MLTX-02-004-EN-11560, MLTX-02-004-EN-11570, MLTX-02-004-EN-11590, MLTX-02-004-EN-11600 | resources Labor [140 h]; Electrician [40 h]; Main Distribution Board including all related works to install power meter (power meter is excluded) [0.4]; Power Panel for pump room [0.13]; Power Panel for street lighting [0.4] → Labor [140 h]; Electrician [40 h]; Main Distribution Board including all related works to install power meter (power meter is excluded) [0.4]; Power Panel for pump room [0.4]; Power Panel for street lighting [0.4] |
| MLTX-02-004-CN-12850 | Preleminary Works for Cable Works | 2026-07-14 A → 2026-08-11 A (+28d) | 2026-07-14 A → 2026-08-26 A (+43d) | 3d → 9d |  |  |  | resources Labor [210 h]; Electrician [60 h]; Recessed mounted LED downlight luminaire 40 watt with reflector; IP44 ,230V , 4000k, 4200 LUMEN ,CRI > 80; Low glare [12]; LED flood light outdoor type 96 watt, 4000k, 12720 LUMEN [0.4]; Wall mounted emergency LED luminaire, 230V, 60 Hz., 3 hour back up time 1800 lumen,CRI>80, 2*18 watt, IP 65 [1.6]; LED Exit light fixture 4.5 watt with battery for 3 hours, and a visibility of 30 meters [0.4]; Wall mounted outdoor LED luminaire, 17 watt, 2000 lumens, with light emission from two sides [0.4]; Wall mounted outdoor LED luminaire, 13 watt, 1000 LUMEN, CR>80, for roof lighting [5] → Labor [210 h]; Electrician [60 h]; Recessed mounted LED downlight luminaire 40 watt with reflector; IP44 ,230V , 4000k, 4200 LUMEN ,CRI > 80; Low glare [12]; LED flood light outdoor type 96 watt, 4000k, 12720 LUMEN [0.4]; Wall mounted emergency LED luminaire, 230V, 60 Hz., 3 hour back up time 1800 lumen,CRI>80, 2*18 watt, IP 65 [1.6]; LED Exit light fixture 4.5 watt with battery for 3 hours, and a visibility of 30 meters [0.4]; Wall mounted outdoor LED luminaire, 17 watt, 2000 lumens, with light emission from two sides [0.4]; Wall mounted outdoor LED luminaire, 13 watt, 1000 LUMEN, CR>80, for roof lighting [2.4] |
| MLTX-02-004-CN-12860 | Preleminary Works for Sockets and Power Points | 2026-07-14 A → 2026-08-11 A (+28d) | 2026-07-14 A → 2026-08-26 A (+43d) | 2d → 9d |  |  | MLTX-02-004-CN-12510, MLTX-02-004-CN-13230 → MLTX-02-004-CN-12510 | resources Labor [140 h]; Electrician [40 h]; 1 way, One Gang Switch [0.8]; 1 way, Two Gang Switch [3]; 1 way, One Gang Switch, weatherproof [0.4]; Exaust fan DP switch weatherproof [0.4]; Indoor AC DP switch weatherproof [0.4]; High level Single Receptacle outlet [3]; Duplex Receptacle outlet [6]; Hand Dryer switch weatherproof [0.4]; Water heater switch [0.4]; Outdoor Disconnect Switch for air conditioiner [0.9]; Outdoor Disconnect Switch for exhaust fans [0.4] → Labor [140 h]; Electrician [40 h]; 1 way, One Gang Switch [0.8]; 1 way, Two Gang Switch [1.6]; 1 way, One Gang Switch, weatherproof [0.4]; Exaust fan DP switch weatherproof [0.4]; Indoor AC DP switch weatherproof [0.4]; High level Single Receptacle outlet [1.6]; Duplex Receptacle outlet [2.8]; Hand Dryer switch weatherproof [0.4]; Water heater switch [0.4]; Outdoor Disconnect Switch for air conditioiner [0.4]; Outdoor Disconnect Switch for exhaust fans [0.4] |
| MLTX-02-004-CN-12880 | Preleminary Works for Lightning Works | 2026-07-28 A → 2026-08-11 A (+14d) | 2026-08-17 A → 2026-08-26 A (+9d) | 2d → 9d |  |  | MLTX-02-004-EN-11240, MLTX-02-004-CN-12510, MLTX-02-004-EN-11670, MLTX-02-004-EN-11630, MLTX-02-004-CN-13230 → MLTX-02-004-CN-12510, MLTX-02-004-EN-11630, MLTX-02-004-EN-11670, MLTX-02-004-EN-11240 | resources Labor [140 h]; Electrician [40 h]; For Building [0.9] → Labor [140 h]; Electrician [40 h]; For Building [0.4] |
| MLTX-02-004-CN-12900 | Preleminary Works for Data & Telecommunication System | 2026-07-28 A → 2026-08-11 A (+14d) | 2026-08-17 A → 2026-08-26 A (+9d) | 2d → 9d |  |  | MLTX-02-004-EN-11210, MLTX-02-004-EN-8560, MLTX-02-004-EN-11730, MLTX-02-004-EN-11720, MLTX-02-004-CN-12510, MLTX-02-004-CN-13230 → MLTX-02-004-CN-12510, MLTX-02-004-EN-11720, MLTX-02-004-EN-11730, MLTX-02-004-EN-11210 | resources Labor [140 h]; Electrician [40 h]; Wall telephone outlet [1.2]; Wall mounted data outlet [1.2]; Telecom/IT rack complete with switch, router and patch Panel [0.9]; AV floor box outlet (1 HDMI) [0.4]; AV wall outlet (1 HDMI) [0.4] → Labor [140 h]; Electrician [40 h]; Wall telephone outlet [1.2]; Wall mounted data outlet [1.2]; Telecom/IT rack complete with switch, router and patch Panel [0.4]; AV floor box outlet (1 HDMI) [0.4]; AV wall outlet (1 HDMI) [0.4] |
| MLTX-02-004-CN-12940 | Preleminary Works for Security and Access Control System | 2026-07-28 A → 2026-08-11 A (+14d) | 2026-08-17 A → 2026-08-26 A (+9d) | 3d → 9d |  |  | MLTX-02-004-EN-11710, MLTX-02-004-EN-11700, MLTX-02-004-CN-12510, MLTX-02-004-EN-11650, MLTX-02-004-EN-11220, MLTX-02-004-CN-13230 → MLTX-02-004-EN-11650, MLTX-02-004-EN-11700, MLTX-02-004-EN-11710, MLTX-02-004-CN-12510, MLTX-02-004-EN-11220 | resources Labor [210 h]; Electrician [60 h]; 1 CCTV cabinet (Rack) [0.9]; NVR [0.9]; 21" LED monitor [0.4]; Indoor dome type Camera IP-20 ,IK-10, POE type with infra red feature, minimum coverage 20 meters, ONVIF supported [5]; Outdoor fixed camera weahter proof IP-65, POE type [3]; Pull box for fiber optic cable pulling from provider [0.4] → Labor [210 h]; Electrician [60 h]; 1 CCTV cabinet (Rack) [0.4]; NVR [0.4]; 21" LED monitor [0.4]; Indoor dome type Camera IP-20 ,IK-10, POE type with infra red feature, minimum coverage 20 meters, ONVIF supported [2.4]; Outdoor fixed camera weahter proof IP-65, POE type [1.6]; Pull box for fiber optic cable pulling from provider [0.4] |
| MLTX-02-004-CN-13230 | Preleminary Works for Earthing Works | 2026-07-28 A → 2026-08-11 A (+14d) | 2026-08-17 A → 2026-08-26 A (+9d) | 3d → 9d |  |  | MLTX-02-004-EN-11620, MLTX-02-004-CN-12510, MLTX-02-004-EN-8500, MLTX-02-004-EN-11240, MLTX-02-004-PR-10120, MLTX-02-004-EN-11660 → MLTX-02-004-CN-12510, MLTX-02-004-EN-11620, MLTX-02-004-EN-11660, MLTX-02-004-EN-11240, MLTX-02-004-PR-10120 | resources Labor [210 h]; Electrician [60 h]; Distribution boards, panelboards, lighting installations and wiring accessories [0.9]; Telecom equipment [0.9]; KWHM [1.5] → Labor [210 h]; Electrician [60 h]; Distribution boards, panelboards, lighting installations and wiring accessories [0.4]; Telecom equipment [0.4]; KWHM [0.8] |
| 2 | **FIXTURE WORKS** | 2026-11-01 → 2026-10-06 (-26d) | 2026-12-20 → 2026-12-24 (+4d) |  |  |  |  |  |
| MLTX-02-004-CN-12960 | Installing and Finalize Works of Earthing Works | 2026-11-23 → 2026-10-06 A (-48d) | 2026-12-20 → 2026-10-10 A (-71d) | 23d → 9d | 0% → 100% | 8.9d → none | MLTX-02-004-CN-13140, MLTX-02-004-CN-13230, MLTX-02-004-CN-13160 → MLTX-02-004-CN-12870 | resources Labor [60 h]; Electrician [60 h]; Distribution boards, panelboards, lighting installations and wiring accessories [0.1]; Telecom equipment [0.1]; KWHM [0.5] → Labor [60 h]; Electrician [60 h]; Distribution boards, panelboards, lighting installations and wiring accessories [0.6]; Telecom equipment [0.6]; KWHM [1.2] |
| MLTX-02-004-CN-12870 | Installing and Finalize Works of Sockets and Power Points | 2026-11-01 A → 2026-10-08 A (-24d) | 2026-11-01 A → 2026-10-10 A (-22d) | 13d → 7d |  |  | MLTX-02-004-CN-12860, MLTX-02-004-CN-13240, MLTX-02-004-PR-10320, MLTX-02-004-CN-13140 → MLTX-02-004-PR-10320 | resources Labor [60 h]; Electrician [60 h]; 1 way, One Gang Switch [1.2]; 1 way, Two Gang Switch [1]; 1 way, One Gang Switch, weatherproof [0.6]; Exaust fan DP switch weatherproof [0.6]; Indoor AC DP switch weatherproof [0.6]; High level Single Receptacle outlet [1]; Duplex Receptacle outlet [1]; Hand Dryer switch weatherproof [0.6]; Water heater switch [0.6]; Outdoor Disconnect Switch for air conditioiner [0.1]; Outdoor Disconnect Switch for exhaust fans [0.6] → Labor [60 h]; Electrician [60 h]; 1 way, One Gang Switch [1.2]; 1 way, Two Gang Switch [2.4]; 1 way, One Gang Switch, weatherproof [0.6]; Exaust fan DP switch weatherproof [0.6]; Indoor AC DP switch weatherproof [0.6]; High level Single Receptacle outlet [2.4]; Duplex Receptacle outlet [4.2]; Hand Dryer switch weatherproof [0.6]; Water heater switch [0.6]; Outdoor Disconnect Switch for air conditioiner [0.6]; Outdoor Disconnect Switch for exhaust fans [0.6] |
| MLTX-02-004-CN-12890 | Installing and Finalize Works of Lighting Works including Light Fixtures | 2026-11-02 A → 2026-11-24 (+22d) | 2026-11-03 A → 2026-12-01 (+28d) | 14d → 7d | 100% → 0% | none → -38d | MLTX-02-004-PR-10300, MLTX-02-004-CN-12850, MLTX-02-004-CN-13240, MLTX-02-004-CN-13140 → MLTX-02-004-CN-13240, MLTX-02-004-PR-10300 | resources Labor [80 h]; Electrician [80 h]; Recessed mounted LED downlight luminaire 40 watt with reflector; IP44 ,230V , 4000k, 4200 LUMEN ,CRI > 80; Low glare [18]; LED flood light outdoor type 96 watt, 4000k, 12720 LUMEN [0.6]; Wall mounted emergency LED luminaire, 230V, 60 Hz., 3 hour back up time 1800 lumen,CRI>80, 2*18 watt, IP 65 [2.4]; LED Exit light fixture 4.5 watt with battery for 3 hours, and a visibility of 30 meters [0.6]; Wall mounted outdoor LED luminaire, 17 watt, 2000 lumens, with light emission from two sides [0.6]; Wall mounted outdoor LED luminaire, 13 watt, 1000 LUMEN, CR>80, for roof lighting [1] → Labor [80 h]; Electrician [80 h]; Recessed mounted LED downlight luminaire 40 watt with reflector; IP44 ,230V , 4000k, 4200 LUMEN ,CRI > 80; Low glare [18]; LED flood light outdoor type 96 watt, 4000k, 12720 LUMEN [0.6]; Wall mounted emergency LED luminaire, 230V, 60 Hz., 3 hour back up time 1800 lumen,CRI>80, 2*18 watt, IP 65 [2.4]; LED Exit light fixture 4.5 watt with battery for 3 hours, and a visibility of 30 meters [0.6]; Wall mounted outdoor LED luminaire, 17 watt, 2000 lumens, with light emission from two sides [0.6]; Wall mounted outdoor LED luminaire, 13 watt, 1000 LUMEN, CR>80, for roof lighting [3.6] |
| MLTX-02-004-CN-12910 | Installing Data and Telecommunication System with all Accessories | 2026-11-23 → 2026-11-24 (+1d) | 2026-12-09 → 2026-12-01 (-8d) | 14d → 7d |  | 17.9d → -38d | MLTX-02-004-CN-13260, MLTX-02-004-CN-13240, MLTX-02-004-CN-12900, MLTX-02-004-CN-12950, MLTX-02-004-CN-12750, MLTX-02-004-CN-13030, MLTX-02-004-CN-13140, MLTX-02-004-CN-13160 → MLTX-02-004-CN-13240, MLTX-02-004-CN-13260 | resources Labor [80 h]; Electrician [80 h]; Wall telephone outlet [1.8]; Wall mounted data outlet [1.8]; Telecom/IT rack complete with switch, router and patch Panel [0.1]; AV floor box outlet (1 HDMI) [0.6]; AV wall outlet (1 HDMI) [0.6] → Labor [80 h]; Electrician [80 h]; Wall telephone outlet [1.8]; Wall mounted data outlet [1.8]; Telecom/IT rack complete with switch, router and patch Panel [0.6]; AV floor box outlet (1 HDMI) [0.6]; AV wall outlet (1 HDMI) [0.6] |
| MLTX-02-004-CN-12840 | Installing and Finish Works of Panel Boards | 2026-11-03 A → 2026-11-30 (+27d) | 2026-12-16 → 2026-12-10 (-6d) | 20d → 10d | 40% → 0% | -13.1d → -42d | MLTX-02-004-PR-8610, MLTX-02-004-CN-11260, MLTX-02-004-CN-12830, MLTX-02-004-CN-10190 → MLTX-02-004-CN-13140 | resources Labor [350 h]; Electrician [100 h]; Main Distribution Board including all related works to install power meter (power meter is excluded) [0.6]; Power Panel for pump room [0.2]; Power Panel for street lighting [0.6] → Labor [350 h]; Electrician [100 h]; Main Distribution Board including all related works to install power meter (power meter is excluded) [0.6]; Power Panel for pump room [0.6]; Power Panel for street lighting [0.6] |
| MLTX-02-004-CN-12950 | Installing and Finalize Works of Security and Access Control System | 2026-11-18 A → 2026-11-30 (+12d) | 2026-11-18 A → 2026-12-09 (+21d) | 14d → 9d | 100% → 0% | none → -45d | MLTX-02-004-CN-13140, MLTX-02-004-CN-12940, Finishing Asphalt & Concrete Surface (Basketball Playground), Aggregate basecourse layer (Basketball Playground) → MLTX-02-004-CN-13140 | resources Labor [80 h]; Electrician [80 h]; 1 CCTV cabinet (Rack) [0.1]; NVR [0.1]; 21" LED monitor [0.6]; Indoor dome type Camera IP-20 ,IK-10, POE type with infra red feature, minimum coverage 20 meters, ONVIF supported [1]; Outdoor fixed camera weahter proof IP-65, POE type [1]; Pull box for fiber optic cable pulling from provider [0.6] → Labor [80 h]; Electrician [80 h]; 1 CCTV cabinet (Rack) [0.6]; NVR [0.6]; 21" LED monitor [0.6]; Indoor dome type Camera IP-20 ,IK-10, POE type with infra red feature, minimum coverage 20 meters, ONVIF supported [3.6]; Outdoor fixed camera weahter proof IP-65, POE type [2.4]; Pull box for fiber optic cable pulling from provider [0.6] |
| MLTX-02-004-CN-12970 | Installing and Finalize Works of Lightning Protection System | 2026-11-03 A → 2026-11-30 (+27d) | 2026-11-03 A → 2026-12-09 (+36d) | 15d → 9d | 100% → 0% | none → -45d | MLTX-02-004-CN-13140, MLTX-02-004-CN-12880, MLTX-02-004-CN-13280, MLTX-02-004-CN-13300, MLTX-02-004-PR-10200, MLTX-02-004-EN-11150 → MLTX-02-004-CN-13140 | resources Labor [100 h]; Electrician [100 h]; For Building [0.1] → Labor [100 h]; Electrician [100 h]; For Building [0.6] |
| MLTX-02-004-CN-12820 | Installing of Fire automation and Fire Alarm System | 2026-11-23 → 2026-12-20 (+27d) | 2026-12-10 → 2026-12-24 (+14d) | 15d → 5d |  | 16.9d → 27d | MLTX-02-004-EN-11690, MLTX-02-004-EN-11640, MLTX-02-004-CN-12730, MLTX-02-004-EN-11680, MLTX-02-004-CN-12950, MLTX-02-004-CN-12690, MLTX-02-004-CN-13050, MLTX-02-004-PR-10440, MLTX-02-004-PR-10420, MLTX-02-004-PR-10400, MLTX-02-004-EN-11200, MLTX-02-004-CN-13160, MLTX-02-004-CN-13140 → MLTX-02-004-CN-12730, MLTX-02-004-CN-13040, MLTX-02-004-EN-11640, MLTX-02-004-EN-11680, MLTX-02-004-EN-11690 |  |
| 7 | **DOORS/WINDOWS** | 2026-09-17 → 2026-10-18 (+31d) | 2026-10-26 → 2026-12-19 (+54d) |  |  |  |  |  |
| MLTX-02-004-CN-12660 | Preliminary Works For Doors | 2026-09-17 A → 2026-10-18 A (+31d) | 2026-09-26 A → 2026-10-20 A (+24d) | 13d → 10d |  |  | MLTX-02-004-CN-12510, MLTX-02-004-PR-10220, MLTX-02-004-CN-12880, MLTX-02-004-CN-12900, Preleminary Works for Panel Boards, MLTX-02-004-CN-12860 → MLTX-02-004-CN-12510, MLTX-02-004-EN-11080, MLTX-02-004-PR-10220 | resources Labor [180 h]; Skilled Labor [60 h]; Metal Door D2 : [0.8] → Labor [180 h]; Skilled Labor [60 h]; Metal Door D2 : [0.4] |
| MLTX-02-004-CN-12670 | Finalize Metal Doors for Toilets Building | 2026-09-29 A → 2026-10-20 A (+21d) | 2026-09-29 A → 2026-10-22 A (+23d) | 13d → 5d |  |  | MLTX-02-004-CN-12730 → MLTX-02-004-CN-12660 | resources Labor [240 h]; Skilled Labor [90 h]; Metal Door D2 : [0.2] → Labor [240 h]; Skilled Labor [90 h]; Metal Door D2 : [0.6] |
| MLTX-02-004-CN-13120 | Preliminary Works For Windows/Curtain Wall | 2026-10-25 A → 2026-11-24 (+30d) | 2026-10-25 A → 2026-12-07 (+43d) |  | 100% → 0% | none → 42d |  | resources Labor [120 h]; Skilled Labor [40 h]; Supply and install curtain wall with structural glass [0.9] → Labor [120 h]; Skilled Labor [40 h]; Supply and install curtain wall with structural glass [0.4] |
| MLTX-02-004-CN-13040 | Finalize Glazzed Curtain Wall Works | 2026-10-25 A → 2026-12-14 (+50d) | 2026-10-26 A → 2026-12-19 (+54d) | 14d → 5d | 100% → 0% | none → 27d | MLTX-02-004-CN-13140, MLTX-02-004-CN-13120 → MLTX-02-004-CN-13140, MLTX-02-004-CN-12990 | resources Labor [320 h]; Skilled Labor [120 h]; Supply and install curtain wall with structural glass [0.1] → Labor [320 h]; Skilled Labor [120 h]; Supply and install curtain wall with structural glass [0.6] |
| 4 | **METAL WORKS** | 2026-09-05 → 2026-11-24 (+80d) | 2027-01-07 → 2026-12-13 (-25d) |  |  |  |  |  |
| MLTX-02-004-CN-12980 | Installation of DI Cover for Tank | 2026-12-16 → 2026-11-24 (-22d) | 2027-01-02 → 2026-11-28 (-35d) | 14d → 4d |  | -6.1d → 50d | MLTX-02-004-CN-11150, MLTX-02-004-CN-11010, MLTX-02-004-EN-4160, MLTX-02-004-PR-11710 → MLTX-02-004-CN-12590, MLTX-02-004-EN-8080 | resources Skilled Labor [120 h]; Driver [80 h]; Crane [80 h]; Supply and install heavy duty ductile iron steel cover [1] → Skilled Labor [120 h]; Driver [80 h]; Crane [50 h]; Supply and install heavy duty ductile iron steel cover [1] |
| MLTX-02-004-CN-12610 | Installation of Galvanized Steel Ladder | 2026-10-21 A → 2026-11-26 (+36d) | 2026-10-22 A → 2026-12-01 (+40d) | 14d → 5d | 100% → 0% | none → 27d | MLTX-02-004-CN-12990 → MLTX-02-004-CN-13150 |  |
| MLTX-02-004-CN-12990 | Installation of Galvanized Steel Roof Scupper | 2026-09-05 A → 2026-12-02 (+88d) | 2026-09-05 A → 2026-12-13 (+99d) | 4d → 10d | 100% → 0% | none → 27d | MLTX-02-004-CN-13240 → MLTX-02-004-CN-12610 |  |
| 6 | **FINISHING WORKS** | 2026-08-17 → 2026-09-05 (+19d) | 2026-11-04 → 2026-11-29 (+25d) |  |  |  |  |  |
| 1 | **FLOOR FINISHES** | 2026-09-01 → 2026-10-08 (+37d) | 2026-10-27 → 2026-11-08 (+12d) |  |  |  |  |  |
| MLTX-02-004-CN-12680 | Creamic Tiles Floor Finish Works | 2026-09-01 A → 2026-10-08 A (+37d) | 2026-09-03 A → 2026-10-12 A (+39d) | 4d → 2d |  |  | MLTX-02-004-CN-12750, MLTX-02-004-PR-10180, MLTX-02-004-CN-12690, MLTX-02-004-EN-11060, MLTX-02-004-CN-12660, MLTX-02-004-PR-11820 → MLTX-02-004-CN-12690, MLTX-02-004-CN-12750, MLTX-02-004-EN-11060 |  |
| MLTX-02-004-CN-13060 | Epoxy Coat on Concrete Floor | 2026-10-27 A → 2026-11-01 A (+5d) | 2026-10-27 A → 2026-11-03 A (+7d) | 14d → 20d |  |  | MLTX-02-004-CN-13140, MLTX-02-004-CN-13240, MLTX-02-004-PR-10860 → MLTX-02-004-CN-12660, MLTX-02-004-CN-12980, MLTX-02-004-CN-13120, MLTX-02-004-CN-12670, MLTX-02-004-CN-12820, MLTX-02-004-CN-13270 |  |
| MLTX-02-004-CN-13070 | Ceramic Skirting Tiles Finish Works | 2026-09-26 A → 2026-11-01 A (+36d) | 2026-09-26 A → 2026-11-05 A (+40d) | 2d → 4d |  |  | MLTX-02-004-PR-10220 → MLTX-02-004-CN-13050 |  |
| MLTX-02-004-CN-13050 | Granite Tiles Floor Finish Works | 2026-10-21 A → 2026-11-03 A (+13d) | 2026-10-26 A → 2026-11-08 A (+13d) | 4d → 6d |  |  | MLTX-02-004-CN-12680, MLTX-02-004-CN-13300, MLTX-02-004-CN-13010, MLTX-02-004-CN-13000, MLTX-02-004-CN-12670 → MLTX-02-004-CN-12680 |  |
| 2 | **WALL FINISHES** | 2026-08-17 → 2026-09-05 (+19d) | 2026-11-04 → 2026-11-29 (+25d) |  |  |  |  |  |
| MLTX-02-004-CN-12690 | Preliminary Works for Wall Finish Works including Plastering (Internal) | 2026-08-17 A → 2026-09-05 A (+19d) | 2026-08-19 A → 2026-09-12 A (+24d) |  |  |  | MLTX-02-004-CN-12860, MLTX-02-004-CN-12940, MLTX-02-004-CN-12900, MLTX-02-004-CN-12850, MLTX-02-004-EN-11040, MLTX-02-004-CN-13230, Preleminary Works for Panel Boards, MLTX-02-004-CN-12880, MLTX-02-004-CN-13290, MLTX-02-004-CN-12990 → MLTX-02-004-CN-12830, MLTX-02-004-CN-12850, MLTX-02-004-CN-12860, MLTX-02-004-CN-12880, MLTX-02-004-CN-12900, MLTX-02-004-CN-12940, MLTX-02-004-CN-13230, MLTX-02-004-EN-11040 |  |
| MLTX-02-004-CN-13000 | Preliminary Works for Wall Finish Works (External) | 2026-08-17 A → 2026-09-20 A (+34d) | 2026-08-19 A → 2026-09-30 A (+42d) | 4d → 14d |  |  | Preleminary Works for Panel Boards, MLTX-02-004-CN-12690, MLTX-02-004-PR-11820 → MLTX-02-004-CN-12940 |  |
| MLTX-02-004-CN-13020 | Ceramic Finish Works for Walls | 2026-08-20 A → 2026-10-04 A (+45d) | 2026-08-23 A → 2026-10-06 A (+44d) | 6d → 5d |  |  | MLTX-02-004-PR-10170 → MLTX-02-004-CN-13000 | resources Labor [200 h]; Driver [100 h]; Forklift [180 h]; Tile Fixer [120 h]; Wall Finishes Supply and install 300*300 mm ceramic [115] → Labor [200 h]; Driver [100 h]; Tile Fixer [120 h]; Forklift [180 h]; Wall Finishes Supply and install 300*300 mm ceramic [115] |
| MLTX-02-004-CN-13130 | Stone Cladding Finish Works for External Walls | 2026-10-04 A → 2026-10-10 A (+6d) | 2026-10-04 A → 2026-10-15 A (+11d) |  |  |  | MLTX-02-004-CN-11310 → MLTX-02-004-CN-13020 | resources Labor [300 h]; Driver [80 h]; Forklift [150 h]; Tile Fixer [100 h]; Wall Finishes Supply and install Riyadh stone cladding (300x600mm) [46.67] → Labor [300 h]; Driver [80 h]; Tile Fixer [100 h]; Forklift [150 h]; Wall Finishes Supply and install Riyadh stone cladding (300x600mm) [46.67] |

| ID | Task | Start | Finish | Duration | Complete | Total float | Predecessors | Other |
| --- | --- | --- | --- | --- | --- | --- | --- | --- |
| MLTX-02-004-CN-13010 | Painting Finish Works for External Walls | 2026-09-21 A → 2026-11-01 A (+41d) | 2026-09-26 A → 2026-11-05 A (+40d) |  |  |  | MLTX-02-004-CN-12690 → MLTX-02-004-CN-12760, MLTX-02-004-CN-13000 | resources Labor [200 h]; Skilled Labor [60 h]; Wall Finishes Supply and install acrylic paint for external elevations [56]; Wall Finishes Supply and spray decorative paint ( profile ) for external elevations [0.67] → Labor [200 h]; Skilled Labor [60 h]; Wall Finishes Supply and install acrylic paint for external elevations [56]; Wall Finishes Supply and spray decorative paint ( profile ) for external elevations [0.33] |
| MLTX-02-004-CN-13030 | Phenolic Partitions for Toilets | 2026-11-03 A → 2026-11-01 A (-2d) | 2026-11-04 A → 2026-11-05 A (+1d) | 11d → 7d |  |  | MLTX-02-004-CN-13070, MLTX-02-004-CN-13290, Stone Cladding Finish Works for External Walls, Interlock Installation (8 Cm) for Parking Area (Including Finishing Works), MLTX-02-004-CN-13010, MLTX-02-004-CN-13050, MLTX-02-004-CN-12720, MLTX-02-004-CN-12760, MLTX-02-004-EN-8150, MLTX-02-004-CN-12790, MLTX-02-004-CN-13000, MLTX-02-004-CN-12690 → MLTX-02-004-CN-13130, MLTX-02-004-CN-12700, MLTX-02-004-CN-13290 | resources Labor [700 h]; Driver [340 h]; Forklift [330 h]; Tile Fixer [220 h]; Wall Finishes Supply and install solid phenolic toilets partition board [40] → Labor [700 h]; Driver [340 h]; Tile Fixer [220 h]; Forklift [330 h]; Wall Finishes Supply and install solid phenolic toilets partition board [40] |
| MLTX-02-004-CN-13240 | Painting Finish Works for Internal Walls | 2026-09-19 A → 2026-11-03 A (+45d) | 2026-09-26 A → 2026-11-08 A (+43d) | 12d → 2d |  |  | MLTX-02-004-CN-12640 → MLTX-02-004-CN-13140 |  |
| MLTX-02-004-CN-13140 | Glass Partitions including all accessories and doors | 2026-10-25 A → 2026-11-24 (+30d) | 2026-10-25 A → 2026-11-29 (+35d) | 6d → 5d | 100% → 0% | none → -45d | MLTX-02-004-EN-11140 → MLTX-02-004-CN-13030 |  |
| MLTX-02-004-CN-13150 | Granite Capping for Parpet | 2026-10-25 A → 2026-11-24 (+30d) | 2026-10-25 A → 2026-11-25 (+31d) | 12d → 2d | 100% → 0% | none → -40d | MLTX-02-004-CN-13020 → MLTX-02-004-CN-12650 | resources Labor [160 h]; Driver [40 h]; Forklift [60 h]; Tile Fixer [40 h]; Wall Finishes Supply and install granite capping for parapet [38] → Labor [160 h]; Driver [40 h]; Tile Fixer [40 h]; Forklift [60 h]; Wall Finishes Supply and install granite capping for parapet [38] |
| 3 | **CELLING FINISHES** | 2026-09-15 → 2026-10-19 (+34d) | 2026-09-26 → 2026-11-12 (+47d) |  |  |  |  |  |
| MLTX-02-004-CN-13290 | Gypsum Board Suspended Ceiling Finish Works For Ceiling | 2026-09-16 A → 2026-10-19 A (+33d) | 2026-09-16 A → 2026-10-21 A (+35d) | 6d → 4d |  |  | MLTX-02-004-CN-13020 → MLTX-02-004-CN-12720 | resources Labor [400 h]; Skilled Labor [120 h]; CEILING FINISHES Supply and install 12.5mm thk, moisture resistant gypsum board suspended ceiling; CEILING FINISHES Supply and install 12.5mm thk, gypsum board suspended ceiling → Labor [400 h]; Skilled Labor [120 h]; CEILING FINISHES Supply and install 12.5mm thk, moisture resistant gypsum board suspended ceiling [25.2]; CEILING FINISHES Supply and install 12.5mm thk, gypsum board suspended ceiling [7.8] |
| MLTX-02-004-CN-13300 | Preliminary Works for Ceiling Painting Works | 2026-09-15 A → 2026-11-05 A (+51d) | 2026-09-15 A → 2026-11-12 A (+58d) | 3d → 15d |  |  | MLTX-02-004-CN-12690, MLTX-02-004-CN-13280 → MLTX-02-004-EN-11150, MLTX-02-004-PR-10200, MLTX-02-004-CN-12690 | resources Labor [200 h]; Skilled Labor [90 h]; CEILING FINISHES Supply and install 12.5mm thk, moisture resistant gypsum board suspended ceiling; CEILING FINISHES Supply and install 12.5mm thk, gypsum board suspended ceiling → Labor [200 h]; Skilled Labor [90 h]; CEILING FINISHES Supply and install 12.5mm thk, moisture resistant gypsum board suspended ceiling [16.8]; CEILING FINISHES Supply and install 12.5mm thk, gypsum board suspended ceiling [5.2] |
| MLTX-02-004-CN-13280 | Painting Finish Works for Ceiling | 2026-09-26 A → 2026-11-07 A (+42d) | 2026-09-26 A → 2026-11-11 A (+46d) | 15d → 9d |  |  | MLTX-02-004-CN-12640 → MLTX-02-004-CN-13290, MLTX-02-004-CN-13300 | resources Labor [200 h]; Skilled Labor [60 h]; CEILING FINISHES Supply and install 2 coats of acrylic paint at under side slab → Labor [200 h]; Skilled Labor [60 h]; CEILING FINISHES Supply and install 2 coats of acrylic paint at under side slab [14] |
| 8 | **SPECIALTIES WORK** | 2026-10-12 → 2026-11-24 (+43d) | 2027-02-27 → 2026-11-29 (-90d) |  |  |  |  |  |
| MLTX-02-004-CN-13160 | Installation of Phenolic Locker | 2026-11-07 A → 2026-11-24 (+17d) | 2026-11-07 A → 2026-11-25 (+18d) |  | 100% → 0% | none → 42d | MLTX-02-004-CN-13030 → MLTX-02-004-CN-13010, MLTX-02-004-CN-13030 |  |
| MLTX-02-004-CN-12700 | Sanitary Fixtures and Accessories Works | 2026-10-12 A → 2026-11-26 (+45d) | 2027-01-07 → 2026-11-29 (-39d) | 4d → 3d | 80% → 0% | -7.1d → 49d | MLTX-02-004-CN-12800 SS, MLTX-02-004-PR-10240, Installation of DI Cover for Tank FF, MLTX-02-004-PR-10190, MLTX-02-004-CN-12790, MLTX-02-004-CN-13050 FF → MLTX-02-004-CN-12800, MLTX-02-004-PR-10240 |  |
| PRO | **PROCUREMENT** | 2026-04-04 → 2026-05-06 (+32d) | 2027-01-18 → 2027-02-02 (+15d) |  |  |  |  |  |
| SLI | **SHORT LEAD ITEM** | 2026-04-04 → 2026-05-06 (+32d) | 2027-01-18 → 2027-02-02 (+15d) |  |  |  |  |  |
| TOI | **TOILET/SERVICE WORKS** | 2026-04-04 → 2026-05-06 (+32d) | 2026-11-09 → 2026-12-16 (+37d) |  |  |  |  |  |
| 1 | **STEEL REINFORCEMENT** | 2026-04-04 → 2026-05-13 (+39d) | 2026-05-19 → 2026-05-31 (+12d) |  |  |  |  |  |
| MLTX-02-004-PR-9970 | PO for Steel Reinforcement | 2026-04-04 A → 2026-05-13 A (+39d) | 2026-05-18 A → 2026-05-14 A (-4d) | 5d → 2d |  |  |  |  |
| MLTX-02-004-PR-10070 | Material Delivery of Steel Reinforcement | 2026-04-09 A → 2026-05-31 A (+52d) | 2026-05-19 A → 2026-05-31 A (+12d) | 5d → 1d |  |  | MLTX-02-004-PR-9970, MLTX-02-004-PR-10170 → MLTX-02-004-PR-9970 |  |
| 3 | **CONCRETE BLOCKS** | 2026-04-09 → 2026-05-06 (+27d) | 2026-07-07 → 2026-07-27 (+20d) |  |  |  |  |  |
| MLTX-02-004-PR-10150 | PO for Concrete Blocks | 2026-04-09 A → 2026-05-06 A (+27d) | 2026-05-18 A → 2026-05-06 A (-12d) | 5d → 1d |  |  |  |  |
| MLTX-02-004-PR-10160 | Material Delivery of Concrete Blocks | 2026-07-07 A → 2026-07-27 A (+20d) | 2026-07-07 A → 2026-07-27 A (+20d) | 8d → 5d |  |  | MLTX-02-004-PR-10150, MLTX-02-004-PR-10170 → MLTX-02-004-PR-10150 |  |
| 6 | **FLOOR/WALL TILES** | 2026-08-18 → 2026-08-08 (-10d) | 2026-08-18 → 2026-08-12 (-6d) |  |  |  |  |  |
| MLTX-02-004-PR-10170 | PO for Tilling Materials | 2026-08-18 A → 2026-08-08 A (-10d) | 2026-08-18 A → 2026-08-08 A (-10d) |  |  |  | MLTX-02-004-EN-9220, MLTX-02-004-PR-10150 → MLTX-02-004-EN-9140, MLTX-02-004-EN-9220, MLTX-02-004-PR-10150 |  |
| MLTX-02-004-PR-10180 | Material Delivery of Tailling Material | 2026-08-18 A → 2026-08-12 A (-6d) | 2026-08-18 A → 2026-08-12 A (-6d) |  |  |  | MLTX-02-004-PR-10170, MLTX-02-004-PR-10220 → MLTX-02-004-EN-11650, MLTX-02-004-EN-11700, MLTX-02-004-EN-11710, MLTX-02-004-EN-11820, MLTX-02-004-EN-11830, MLTX-02-004-EN-11850, MLTX-02-004-EN-11860, MLTX-02-004-EN-11870, MLTX-02-004-EN-11780, MLTX-02-004-EN-11790, MLTX-02-004-EN-8080, MLTX-02-004-EN-8200, MLTX-02-004-EN-8160, MLTX-02-004-EN-8170, MLTX-02-004-EN-11110, MLTX-02-004-EN-11130, MLTX-02-004-EN-11140, MLTX-02-004-EN-11030, MLTX-02-004-EN-11230, MLTX-02-004-EN-11240, MLTX-02-004-PR-10170 |  |
| 7 | **SUSPENDED CEILING** | 2026-08-18 → 2026-08-08 (-10d) | 2026-08-18 → 2026-10-10 (+53d) |  |  |  |  |  |
| MLTX-02-004-PR-10190 | PO for Suspend Ceiling | 2026-08-18 A → 2026-08-08 A (-10d) | 2026-08-18 A → 2026-08-08 A (-10d) |  |  |  | MLTX-02-004-PR-10170, MLTX-02-004-EN-9240 → MLTX-02-004-PR-10020 |  |
| MLTX-02-004-PR-10200 | Material Delivery of Suspend Ceiling | 2026-08-18 A → 2026-10-10 A (+53d) | 2026-08-18 A → 2026-10-10 A (+53d) |  |  |  |  |  |
| 8 | **DOORS/WINDOWS** | 2026-09-15 → 2026-06-24 (-83d) | 2026-09-15 → 2026-10-10 (+25d) |  |  |  |  |  |
| MLTX-02-004-PR-10210 | PO for Doors/Windows | 2026-09-15 A → 2026-06-24 A (-83d) | 2026-09-15 A → 2026-06-24 A (-83d) | 15d → 1d |  |  | MLTX-02-004-EN-9690, MLTX-02-004-EN-9850, MLTX-02-004-EN-8980, MLTX-02-004-PR-10170, MLTX-02-004-EN-9430, MLTX-02-004-EN-9670, MLTX-02-004-EN-9810, MLTX-02-004-EN-9300, MLTX-02-004-EN-9630, MLTX-02-004-EN-9900, MLTX-02-004-EN-9910, MLTX-02-004-EN-9830, MLTX-02-004-EN-9490, MLTX-02-004-EN-9240, MLTX-02-004-EN-9110, MLTX-02-004-EN-9530, MLTX-02-004-EN-9730, MLTX-02-004-EN-9140, MLTX-02-004-EN-9650, MLTX-02-004-EN-9090, MLTX-02-004-EN-9340, MLTX-02-004-EN-9260, MLTX-02-004-EN-9550, MLTX-02-004-EN-9870, MLTX-02-004-EN-9380, MLTX-02-004-EN-9360, MLTX-02-004-EN-9450, MLTX-02-004-EN-9510, MLTX-02-004-EN-9750, MLTX-02-004-EN-9890, MLTX-02-004-EN-9120, MLTX-02-004-EN-9710 → MLTX-02-004-EN-9240, MLTX-02-004-EN-9380, MLTX-02-004-EN-9300, MLTX-02-004-EN-9430, MLTX-02-004-EN-9340, MLTX-02-004-EN-9360, MLTX-02-004-EN-9110, MLTX-02-004-EN-9490, MLTX-02-004-EN-9510, MLTX-02-004-EN-9550, MLTX-02-004-EN-9630, MLTX-02-004-EN-9650, MLTX-02-004-EN-9670, MLTX-02-004-EN-9690, MLTX-02-004-EN-9710, MLTX-02-004-EN-9750, MLTX-02-004-EN-9850, MLTX-02-004-EN-9120, MLTX-02-004-EN-9810, MLTX-02-004-EN-9830, MLTX-02-004-EN-9870, MLTX-02-004-EN-9730, MLTX-02-004-EN-8980, MLTX-02-004-EN-9260 |  |
| MLTX-02-004-PR-10220 | Material Delivery for Doors/Windows | 2026-09-15 A → 2026-10-10 A (+25d) | 2026-09-15 A → 2026-10-10 A (+25d) | 25d → 10d |  |  |  |  |
| 11 | **WATER SUPPLY PIPES** | 2026-07-07 → 2026-06-13 (-24d) | 2026-07-07 → 2026-06-13 (-24d) |  |  |  |  |  |
| MLTX-02-004-PR-10250 | PO for Water Supply Pipes | 2026-07-07 A → 2026-06-13 A (-24d) | 2026-07-07 A → 2026-06-13 A (-24d) | 5d → 1d |  |  | MLTX-02-004-EN-9450, MLTX-02-004-EN-9300, MLTX-02-004-PR-10220 → MLTX-02-004-PR-10210 |  |
| MLTX-02-004-PR-10260 | Material Delivery for Water Supply Pipes | 2026-07-07 A → 2026-06-13 A (-24d) | 2026-07-07 A → 2026-06-13 A (-24d) | 7d → 1d |  |  | MLTX-02-004-PR-10250, MLTX-02-004-PR-10220 → MLTX-02-004-PR-10250 |  |
| 12 | **SEWAGE/DRAINAGE PIPES** | 2026-06-02 → 2026-06-13 (+11d) | 2026-06-10 → 2026-06-13 (+3d) |  |  |  |  |  |
| MLTX-02-004-PR-10270 | PO for Sewage/Drainage Pipes | 2026-06-02 A → 2026-06-13 A (+11d) | 2026-06-02 A → 2026-06-13 A (+11d) | 5d → 1d |  |  | MLTX-02-004-EN-9320, MLTX-02-004-PR-10220 → MLTX-02-004-EN-9320, MLTX-02-004-PR-10210 |  |
| MLTX-02-004-PR-10280 | Material Delivery for Sewage/Drainage Pipes | 2026-06-10 A → 2026-06-13 A (+3d) | 2026-06-10 A → 2026-06-13 A (+3d) | 7d → 1d |  |  | MLTX-02-004-PR-10270, MLTX-02-004-PR-10220, MLTX-02-004-PR-10230 → MLTX-02-004-PR-10270 |  |
| 10 | **SANITARY FIXTURES** | 2026-08-18 → 2026-06-16 (-63d) | 2026-08-18 → 2026-08-03 (-15d) |  |  |  |  |  |
| MLTX-02-004-PR-10230 | PO for Sanitary Fixtures | 2026-08-18 A → 2026-06-16 A (-63d) | 2026-08-18 A → 2026-06-16 A (-63d) | 5d → 1d |  |  | MLTX-02-004-PR-10270, MLTX-02-004-EN-9280, MLTX-02-004-PR-10220 → MLTX-02-004-EN-9280, MLTX-02-004-PR-10270 |  |
| MLTX-02-004-PR-10240 | Material Delivery for Sanitary Fixtures | 2026-08-18 A → 2026-08-03 A (-15d) | 2026-08-18 A → 2026-08-03 A (-15d) | 13d → 12d |  |  | MLTX-02-004-PR-10230, MLTX-02-004-PR-10250 → MLTX-02-004-PR-10220, MLTX-02-004-PR-10230 |  |
| 16 | **PACKAGE AC UNITS** | 2026-07-07 → 2026-06-16 (-21d) | 2026-07-07 → 2026-11-03 (+119d) |  |  |  |  |  |
| MLTX-02-004-PR-10370 | PO for Package AC Units | 2026-07-07 A → 2026-06-16 A (-21d) | 2026-07-07 A → 2026-06-16 A (-21d) | 5d → 1d |  |  | MLTX-02-004-EN-9410, MLTX-02-004-EN-9280 → MLTX-02-004-EN-9410, MLTX-02-004-PR-10230 |  |
| MLTX-02-004-PR-10380 | Material Delivery for Package AC Units | 2026-07-07 A → 2026-11-01 A (+117d) | 2026-07-07 A → 2026-11-03 A (+119d) | 15d → 10d |  |  | MLTX-02-004-PR-10370 → MLTX-02-004-PR-10240, MLTX-02-004-PR-10370 |  |
| 17 | **AIR DIFUSSERS/GRILLS** | 2026-08-18 → 2026-06-16 (-63d) | 2026-08-18 → 2026-08-08 (-10d) |  |  |  |  |  |
| MLTX-02-004-PR-10390 | PO for Air Diffusers/Grills | 2026-08-18 A → 2026-06-16 A (-63d) | 2026-08-18 A → 2026-06-16 A (-63d) | 5d → 1d |  |  | MLTX-02-004-EN-9430, MLTX-02-004-PR-10240 → MLTX-02-004-PR-10230 |  |
| MLTX-02-004-PR-10400 | Material Delivery for Air Diffusers/Grills | 2026-08-18 A → 2026-08-08 A (-10d) | 2026-08-18 A → 2026-08-08 A (-10d) | 15d → 10d |  |  | MLTX-02-004-PR-10390, MLTX-02-004-PR-10240 → MLTX-02-004-PR-10390 |  |
| 18 | **GALVANIZED DUCTS** | 2026-08-18 → 2026-06-16 (-63d) | 2026-08-18 → 2026-08-08 (-10d) |  |  |  |  |  |
| MLTX-02-004-PR-10410 | PO for Galvanized Ducts | 2026-08-18 A → 2026-06-16 A (-63d) | 2026-08-18 A → 2026-06-16 A (-63d) | 5d → 1d |  |  | MLTX-02-004-EN-9450, MLTX-02-004-PR-10190 → MLTX-02-004-PR-10230 |  |
| MLTX-02-004-PR-10420 | Material Delivery for Galvanized Ducts | 2026-08-18 A → 2026-08-08 A (-10d) | 2026-08-18 A → 2026-08-08 A (-10d) | 15d → 13d |  |  | MLTX-02-004-PR-10410, MLTX-02-004-PR-10190 → MLTX-02-004-PR-10410 |  |
| 19 | **EXHAUST FANS** | 2026-08-18 → 2026-06-16 (-63d) | 2026-08-18 → 2026-08-17 (-1d) |  |  |  |  |  |
| MLTX-02-004-PR-10430 | PO for Exhaust Fans | 2026-08-18 A → 2026-06-16 A (-63d) | 2026-08-18 A → 2026-06-16 A (-63d) | 5d → 1d |  |  | MLTX-02-004-EN-9470 → MLTX-02-004-EN-9470, MLTX-02-004-PR-10230 |  |
| MLTX-02-004-PR-10440 | Material Delivery for Exhaust Fans | 2026-08-18 A → 2026-08-17 A (-1d) | 2026-08-18 A → 2026-08-17 A (-1d) | 10d → 15d |  |  | MLTX-02-004-PR-10430, MLTX-02-004-PR-10190 → MLTX-02-004-PR-10420, MLTX-02-004-PR-10430 |  |
| 13 | **LIGHTING FIXTURES** | 2026-07-07 → 2026-06-16 (-21d) | 2026-11-03 → 2026-11-12 (+9d) |  |  |  |  |  |
| MLTX-02-004-PR-10290 | PO for Lighting Fixtures | 2026-07-07 A → 2026-06-16 A (-21d) | 2026-07-07 A → 2026-06-16 A (-21d) | 5d → 1d |  |  | MLTX-02-004-EN-9340, MLTX-02-004-EN-9280, MLTX-02-004-PR-10120 → MLTX-02-004-PR-10430 |  |
| MLTX-02-004-PR-10300 | Material Delivery for Lighting Fixtures | 2026-11-03 A → 2026-11-11 A (+8d) | 2026-11-03 A → 2026-11-12 A (+9d) | 10d → 15d |  |  | MLTX-02-004-PR-10430, MLTX-02-004-PR-10290 → MLTX-02-004-PR-10440, MLTX-02-004-PR-10290 |  |
| 14 | **SWITCHES/SOCKETS** | 2026-10-31 → 2026-06-24 (-129d) | 2026-10-31 → 2026-10-10 (-21d) |  |  |  |  |  |
| MLTX-02-004-PR-10310 | PO for Switches/Sockets | 2026-10-31 A → 2026-06-24 A (-129d) | 2026-10-31 A → 2026-06-24 A (-129d) | 5d → 1d |  |  | MLTX-02-004-EN-9360, MLTX-02-004-PR-10290 → MLTX-02-004-PR-10290 |  |
| MLTX-02-004-PR-10320 | Material Delivery for Switches/Sockets | 2026-10-31 A → 2026-10-05 A (-26d) | 2026-10-31 A → 2026-10-10 A (-21d) |  |  |  |  |  |
| 15 | **EARTHING SYSTEM** | 2026-07-12 → 2026-05-21 (-52d) | 2026-07-12 → 2026-05-21 (-52d) |  |  |  |  |  |
| MLTX-02-004-PR-10110 | PO for Earthing System | 2026-07-12 A → 2026-05-21 A (-52d) | 2026-07-12 A → 2026-05-21 A (-52d) | 5d → 1d |  |  |  |  |
| MLTX-02-004-PR-10120 | Material Delivery for Earthing System | 2026-07-12 A → 2026-05-21 A (-52d) | 2026-07-12 A → 2026-05-21 A (-52d) | 15d → 1d |  |  | MLTX-02-004-PR-10110 → MLTX-02-004-PR-10010, MLTX-02-004-PR-10110 |  |
| 5 | **DISTRIBUTION PANNELS** | 2026-11-03 → 2026-07-22 (-104d) | 2026-11-03 → 2026-11-10 (+7d) |  |  |  |  |  |
| MLTX-02-004-PR-10130 | PO for Distribution Panels | 2026-11-03 A → 2026-07-22 A (-104d) | 2026-11-03 A → 2026-07-22 A (-104d) | 15d → 5d |  |  | MLTX-02-004-EN-9180, MLTX-02-004-PR-10230 → MLTX-02-004-EN-9180 |  |
| MLTX-02-004-PR-10140 | Material Delivery for Distribution Panels | 2026-11-03 A → 2026-11-09 A (+6d) | 2026-11-03 A → 2026-11-10 A (+7d) | 25d → 15d |  |  | MLTX-02-004-PR-10130, MLTX-02-004-PR-10190 → MLTX-02-004-PR-10130 FF, MLTX-02-004-PR-10130 |  |
| 9 | **FURNITURES** | 2026-11-09 → 2026-06-16 (-146d) | 2026-11-09 → 2026-12-16 (+37d) |  |  |  |  |  |
| MLTX-02-004-PR-10330 | PO for Furnitures | 2026-11-09 A → 2026-06-16 A (-146d) | 2026-11-09 A → 2026-06-16 A (-146d) | 9d → 1d |  |  | MLTX-02-004-EN-9380, MLTX-02-004-PR-10430 → MLTX-02-004-PR-10430 |  |
| MLTX-02-004-PR-10340 | Material Delivery for Furnitures | 2026-11-09 A → 2026-11-24 (+15d) | 2026-11-09 A → 2026-12-16 (+37d) |  | 100% → 0% | none → 34d | MLTX-02-004-PR-10330 → MLTX-02-004-PR-10320, MLTX-02-004-PR-10330 |  |
| PLG | **PLAYGROUND WORKS** | 2026-04-04 → 2026-05-07 (+33d) | 2027-01-18 → 2027-02-02 (+15d) |  |  |  |  |  |
| 5 | **PVC MEMBRANE** | 2026-04-04 → 2026-06-16 (+73d) | 2026-12-17 → 2026-11-28 (-19d) |  |  |  |  |  |
| MLTX-02-004-PR-10530 | PO for PVC Membrane | 2026-04-04 A → 2026-06-16 A (+73d) | 2026-05-19 A → 2026-06-16 A (+28d) | 10d → 1d |  |  | MLTX-02-004-EN-10590, MLTX-02-004-EN-8590 → MLTX-02-004-MS-1010 SS |  |
| MLTX-02-004-PR-10540 | Material Delivery for PVC Membrane | 2026-11-23 → 2026-11-24 (+1d) | 2026-12-17 → 2026-11-28 (-19d) | 21d → 4d |  | -21.1d → -60d | MLTX-02-004-EN-9570, MLTX-02-004-PR-10530 → MLTX-02-004-PR-10530 |  |

| ID | Task | Start | Finish | Duration | Complete | Total float | Predecessors |
| --- | --- | --- | --- | --- | --- | --- | --- |
| 15 | **ARTIFICIAL TURF** | 2026-04-04 → 2026-06-16 (+73d) | 2026-12-31 → 2026-12-12 (-19d) |  |  |  |  |
| MLTX-02-004-PR-10770 | PO for Artificial TURF | 2026-04-04 A → 2026-06-16 A (+73d) | 2026-05-19 A → 2026-06-16 A (+28d) | 5d → 1d |  |  | MLTX-02-004-PR-10530, MLTX-02-004-EN-9920 → MLTX-02-004-EN-9920 |
| MLTX-02-004-PR-10780 | Material Delivery for Artificial TURF | 2026-12-17 → 2026-11-29 (-18d) | 2026-12-31 → 2026-12-12 (-19d) |  |  | -21.1d → -54d |  |
| 20 | **RUBBER GRANULES** | 2026-04-04 → 2026-06-16 (+73d) | 2026-12-07 → 2026-12-26 (+19d) |  |  |  |  |
| MLTX-02-004-PR-10790 | PO for Rubber Granules | 2026-04-04 A → 2026-06-16 A (+73d) | 2026-05-19 A → 2026-06-16 A (+28d) | 5d → 1d |  |  |  |
| MLTX-02-004-PR-10800 | Material Delivery for Rubber Granules | 2026-11-23 → 2026-12-13 (+20d) | 2026-12-07 → 2026-12-26 (+19d) |  |  | -0.1d → -54d | MLTX-02-004-PR-10790 → MLTX-02-004-PR-10140, MLTX-02-004-PR-10780, MLTX-02-004-PR-10790 |
| 21 | **PADEL GLASS** | 2026-04-04 → 2026-06-16 (+73d) | 2026-12-26 → 2027-01-16 (+21d) |  |  |  |  |
| MLTX-02-004-PR-10810 | PO for Padel Glass | 2026-04-04 A → 2026-06-16 A (+73d) | 2026-05-19 A → 2026-06-16 A (+28d) | 5d → 1d |  |  |  |
| MLTX-02-004-PR-10820 | Material Delivery for Padel Glass | 2026-11-23 → 2026-12-27 (+34d) | 2026-12-26 → 2027-01-16 (+21d) | 28d → 18d |  | -19.1d → -7d | MLTX-02-004-PR-10810, MLTX-02-004-PR-10470 → MLTX-02-004-PR-10380, MLTX-02-004-PR-10800, MLTX-02-004-PR-10810 |
| 22 | **PADEL WIRE MESH/STEEL SETS** | 2026-04-09 → 2026-06-16 (+68d) | 2026-12-10 → 2027-02-02 (+54d) |  |  |  |  |
| MLTX-02-004-PR-10830 | PO for Wire Mesh/Steel Sets | 2026-04-09 A → 2026-06-16 A (+68d) | 2026-05-19 A → 2026-06-16 A (+28d) | 5d → 1d |  |  | MLTX-02-004-PR-10810, MLTX-02-004-EN-9950, MLTX-02-004-PR-9970 → MLTX-02-004-PR-10810 |
| MLTX-02-004-PR-10840 | Material Delivery for Wire Mesh/Steel Sets | 2026-11-23 → 2027-01-17 (+55d) | 2026-12-10 → 2027-02-02 (+54d) |  |  | -6.1d → -7d | MLTX-02-004-PR-10830 → MLTX-02-004-PR-10820, MLTX-02-004-PR-10830 |
| 1 | **AGGREGATE BASE COURSE** | 2026-04-04 → 2026-05-21 (+47d) | 2026-07-07 → 2026-05-21 (-47d) |  |  |  |  |
| MLTX-02-004-PR-9980 | PO for Aggregate Base Course | 2026-04-04 A → 2026-05-21 A (+47d) | 2026-05-14 A → 2026-05-21 A (+7d) | 5d → 1d |  |  |  |
| MLTX-02-004-PR-9990 | Material Delivery for Aggregate Base Course | 2026-07-07 A → 2026-05-21 A (-47d) | 2026-07-07 A → 2026-05-21 A (-47d) | 7d → 1d |  |  |  |
| 16 | **PACKAGE AC UNITS** | 2026-07-07 → 2026-06-16 (-21d) | 2026-07-07 → 2026-12-03 (+149d) |  |  |  |  |
| MLTX-02-004-PR-10450 | PO for Package AC Units | 2026-07-07 A → 2026-06-16 A (-21d) | 2026-07-07 A → 2026-06-16 A (-21d) | 5d → 1d |  |  | MLTX-02-004-PR-10810, MLTX-02-004-PR-10370, MLTX-02-004-EN-9490, MLTX-02-004-PR-10790, MLTX-02-004-EN-9960, MLTX-02-004-PR-10770, MLTX-02-004-PR-9960 → MLTX-02-004-PR-10370 |
| MLTX-02-004-PR-10460 | Material Delivery for Package AC Units | 2026-07-07 A → 2026-11-01 A (+117d) | 2026-07-07 A → 2026-12-03 A (+149d) |  |  |  | MLTX-02-004-PR-10450, MLTX-02-004-PR-9960 → MLTX-02-004-PR-10360, MLTX-02-004-PR-10450 |
| 17 | **AIR DIFUSSERS/GRILLS** | 2026-10-13 → 2026-06-16 (-119d) | 2026-10-13 → 2026-08-08 (-66d) |  |  |  |  |
| MLTX-02-004-PR-10470 | PO for Air Difussers/Grills | 2026-10-13 A → 2026-06-16 A (-119d) | 2026-10-13 A → 2026-06-16 A (-119d) | 15d → 1d |  |  | MLTX-02-004-EN-9510, MLTX-02-004-PR-10230, MLTX-02-004-PR-10370, MLTX-02-004-PR-9950 → MLTX-02-004-PR-10370 |
| MLTX-02-004-PR-10480 | Material Delivery for Air Difussers/Grills | 2026-10-13 A → 2026-08-08 A (-66d) | 2026-10-13 A → 2026-08-08 A (-66d) | 25d → 15d |  |  | MLTX-02-004-PR-10470, MLTX-02-004-PR-9960 → MLTX-02-004-PR-10470 |
| 2 | **BITUMINOUS BASE & WEARING COURSE** | 2026-11-09 → 2026-06-16 (-146d) | 2026-11-09 → 2026-06-23 (-139d) |  |  |  |  |
| MLTX-02-004-PR-10000 | PO for Bituminous Base & Wearing Course | 2026-11-09 A → 2026-06-16 A (-146d) | 2026-11-09 A → 2026-06-16 A (-146d) | 15d → 1d |  |  | MLTX-02-004-EN-9050, MLTX-02-004-PR-10930 → MLTX-02-004-EN-9050 |
| MLTX-02-004-PR-10010 | Material Delivery for the Site | 2026-11-09 A → 2026-06-23 A (-139d) | 2026-11-09 A → 2026-06-23 A (-139d) | 17d → 1d |  |  |  |
| 3 | **INTERLOCKING PAVING** | 2026-10-15 → 2026-05-07 (-161d) | 2026-10-15 → 2026-11-18 (+34d) |  |  |  |  |
| MLTX-02-004-PR-10020 | PO for Interlocking Block Pavers | 2026-10-15 A → 2026-05-07 A (-161d) | 2026-10-15 A → 2026-05-07 A (-161d) | 15d → 1d |  |  | MLTX-02-004-EN-9110 → MLTX-02-004-PR-10310 |
| MLTX-02-004-PR-10030 | Material Delivery for Interlocking Block Pavers | 2026-10-15 A → 2026-11-16 A (+32d) | 2026-10-15 A → 2026-11-18 A (+34d) | 17d → 7d |  |  | MLTX-02-004-PR-10020 → MLTX-02-004-PR-10840, MLTX-02-004-PR-10010, MLTX-02-004-PR-10020 |
| 4 | **MARKING PAINT** | 2026-11-23 → 2026-07-18 (-128d) | 2026-12-30 → 2026-12-01 (-29d) |  |  |  |  |
| MLTX-02-004-PR-10350 | PO for Marking Paint | 2026-11-23 → 2026-07-18 A (-128d) | 2026-12-10 → 2026-07-18 A (-145d) | 15d → 6d | 0% → 100% | -20.1d → none |  |
| MLTX-02-004-PR-10360 | Material Delivery for Marking Paint | 2026-12-10 → 2026-11-24 (-16d) | 2026-12-30 → 2026-12-01 (-29d) | 17d → 7d |  | -20.1d → 10d | MLTX-02-004-PR-10350, MLTX-02-004-PR-10940 → MLTX-02-004-PR-10350 |
| 18 | **GALVANIZED DUCTS** | 2026-10-13 → 2026-06-16 (-119d) | 2026-10-13 → 2026-08-08 (-66d) |  |  |  |  |
| MLTX-02-004-PR-10490 | PO for Galvanized Duct | 2026-10-13 A → 2026-06-16 A (-119d) | 2026-10-13 A → 2026-06-16 A (-119d) | 15d → 1d |  |  | MLTX-02-004-EN-9530, MLTX-02-004-PR-10370, MLTX-02-004-PR-10470 → MLTX-02-004-PR-10370 |
| MLTX-02-004-PR-10500 | Material Delivery for Galvanized Duct | 2026-10-13 A → 2026-08-08 A (-66d) | 2026-10-13 A → 2026-08-08 A (-66d) | 25d → 15d |  |  | MLTX-02-004-PR-10490, MLTX-02-004-PR-10470 → MLTX-02-004-PR-10480, MLTX-02-004-PR-10490 |
| 19 | **EXHAUST FANS** | 2026-10-13 → 2026-06-16 (-119d) | 2026-10-13 → 2026-08-17 (-57d) |  |  |  |  |
| MLTX-02-004-PR-10510 | PO for Exhaust Fans | 2026-10-13 A → 2026-06-16 A (-119d) | 2026-10-13 A → 2026-06-16 A (-119d) | 15d → 1d |  |  | MLTX-02-004-PR-10370, MLTX-02-004-EN-9550 → MLTX-02-004-PR-10370 |
| MLTX-02-004-PR-10520 | Material Delivery for Exhaust Fans | 2026-10-13 A → 2026-08-17 A (-57d) | 2026-10-13 A → 2026-08-17 A (-57d) | 25d → 15d |  |  | MLTX-02-004-PR-10510, MLTX-02-004-PR-9960 → MLTX-02-004-PR-10500, MLTX-02-004-PR-10510 |
| 10 | **DISTRIBUTION BOARDS** | 2026-10-13 → 2026-07-22 (-83d) | 2026-10-13 → 2026-11-10 (+28d) |  |  |  |  |
| MLTX-02-004-PR-10630 | PO for Distribution Boards | 2026-10-13 A → 2026-07-22 A (-83d) | 2026-10-13 A → 2026-07-22 A (-83d) |  |  |  | MLTX-02-004-PR-10370, MLTX-02-004-EN-9630 → MLTX-02-004-PR-10370 |
| MLTX-02-004-PR-10640 | Material Delivery for Distribution Boards | 2026-10-13 A → 2026-11-09 A (+27d) | 2026-10-13 A → 2026-11-10 A (+28d) |  |  |  | MLTX-02-004-PR-10630, MLTX-02-004-PR-10450 → MLTX-02-004-PR-10630 |
| 11 | **POWER CABLES** | 2026-11-23 → 2026-07-22 (-124d) | 2026-12-10 → 2026-09-15 (-86d) |  |  |  |  |
| MLTX-02-004-PR-10650 | PO for Power Cables | 2026-11-23 → 2026-07-22 A (-124d) | 2026-11-29 → 2026-07-22 A (-130d) |  | 0% → 100% | -20.1d → none | MLTX-02-004-EN-9650, MLTX-02-004-PR-10630 → MLTX-02-004-PR-10630 |
| MLTX-02-004-PR-10660 | Material Delivery for Power Cables | 2026-11-29 → 2026-09-14 A (-76d) | 2026-12-10 → 2026-09-15 A (-86d) |  | 0% → 100% | -20.1d → none | MLTX-02-004-PR-10650, MLTX-02-004-PR-10120 → MLTX-02-004-PR-10650 |
| 12 | **LIGHT FIXTURES** | 2026-07-07 → 2026-10-07 (+92d) | 2026-12-22 → 2026-11-12 (-40d) |  |  |  |  |
| MLTX-02-004-PR-10670 | PO for Light Fixtures | 2026-07-07 A → 2026-10-07 A (+92d) | 2026-07-07 A → 2026-10-08 A (+93d) |  |  |  | MLTX-02-004-EN-9670, MLTX-02-004-EN-9650, MLTX-02-004-EN-9280 → MLTX-02-004-PR-10440, MLTX-02-004-PR-10660 |
| MLTX-02-004-PR-10680 | Material Delivery for Light Fixtures | 2026-11-29 → 2026-11-11 A (-18d) | 2026-12-22 → 2026-11-12 A (-40d) | 20d → 16d | 0% → 100% | -8.1d → none | MLTX-02-004-PR-10650, MLTX-02-004-PR-10670, MLTX-02-004-PR-10440, MLTX-02-004-PR-10450 → MLTX-02-004-PR-10670 |
| 13 | **CCTV MATERIALS** | 2026-11-23 → 2026-11-14 (-9d) | 2027-01-18 → 2026-12-16 (-33d) |  |  |  |  |
| MLTX-02-004-PR-10690 | PO for CCTV | 2026-11-23 → 2026-11-14 A (-9d) | 2026-11-29 → 2026-11-15 A (-14d) | 5d → 10d | 0% → 100% | -13.1d → none | MLTX-02-004-PR-10670, MLTX-02-004-EN-9690, MLTX-02-004-PR-9990 → MLTX-02-004-PR-10680 |
| MLTX-02-004-PR-10700 | Material Delivery for CCTV | 2026-12-31 → 2026-11-24 (-37d) | 2027-01-18 → 2026-12-16 (-33d) | 15d → 20d |  | -21.1d → -14d | MLTX-02-004-PR-10520, MLTX-02-004-PR-10690, MLTX-02-004-PR-10800, MLTX-02-004-PR-10500, MLTX-02-004-PR-10820, MLTX-02-004-PR-10640, MLTX-02-004-PR-10780, MLTX-02-004-PR-10480, MLTX-02-004-PR-10460, MLTX-02-004-PR-10360, MLTX-02-004-PR-11010 → MLTX-02-004-PR-10690, MLTX-02-004-PR-10520 |
| 14 | **POWER OUTLETS/SWITCHES** | 2026-11-29 → 2026-10-28 (-32d) | 2027-01-04 → 2026-11-09 (-56d) |  |  |  |  |
| MLTX-02-004-PR-10710 | PO for Power Outlets/Switches | 2026-11-29 → 2026-10-28 A (-32d) | 2026-12-06 → 2026-10-31 A (-36d) |  | 0% → 100% | -13.1d → none | MLTX-02-004-PR-10690, MLTX-02-004-EN-9710, MLTX-02-004-PR-10300, MLTX-02-004-PR-10380, MLTX-02-004-PR-10320 → MLTX-02-004-PR-10320, MLTX-02-004-PR-10690 |
| MLTX-02-004-PR-10720 | Material Delivery for Power Outlets/Switches | 2026-12-06 → 2026-11-08 A (-28d) | 2027-01-04 → 2026-11-09 A (-56d) | 25d → 15d | 0% → 100% | -13.1d → none | MLTX-02-004-PR-10710, MLTX-02-004-PR-10450 → MLTX-02-004-PR-10710 |
| LSC | **LANDSCAPE WORKS** | 2026-05-16 → 2026-05-07 (-9d) | 2027-01-04 → 2026-12-10 (-25d) |  |  |  |  |
| 7 | **INTERLOCKING PAVING** | 2026-08-26 → 2026-05-07 (-111d) | 2026-08-26 → 2026-11-10 (+76d) |  |  |  |  |
| MLTX-02-004-PR-10750 | PO for Interlocking Block Pavers | 2026-08-26 A → 2026-05-07 A (-111d) | 2026-08-26 A → 2026-05-07 A (-111d) | 5d → 1d |  |  |  |
| MLTX-02-004-PR-10760 | Material Delivery for Interlocking Block Pavers | 2026-08-26 A → 2026-11-05 A (+71d) | 2026-08-26 A → 2026-11-10 A (+76d) | 12d → 10d |  |  | MLTX-02-004-PR-10750, MLTX-02-004-PR-10910 → MLTX-02-004-PR-10750 |
| 9 | **CURBSTONE** | 2026-07-14 → 2026-05-07 (-68d) | 2026-07-23 → 2026-08-19 (+27d) |  |  |  |  |
| MLTX-02-004-PR-10890 | PO for Curbstone | 2026-07-14 A → 2026-05-07 A (-68d) | 2026-07-14 A → 2026-05-07 A (-68d) | 5d → 1d |  |  |  |
| MLTX-02-004-PR-10900 | Material Delivery for Curbstone | 2026-07-23 A → 2026-08-18 A (+26d) | 2026-07-23 A → 2026-08-19 A (+27d) | 12d → 10d |  |  |  |
| 1 | **PAVEMENT MARKING** | 2026-12-06 → 2026-07-18 (-141d) | 2026-12-23 → 2026-12-05 (-18d) |  |  |  |  |
| MLTX-02-004-PR-10040 | PO for Pavement Markings | 2026-12-06 → 2026-07-18 A (-141d) | 2026-12-12 → 2026-07-18 A (-147d) |  | 0% → 100% | -11.1d → none | MLTX-02-004-EN-9120, MLTX-02-004-PR-10710 → MLTX-02-004-EN-9120 |
| MLTX-02-004-PR-10050 | Material Delivery for Pavement Markings | 2026-12-12 → 2026-11-24 (-18d) | 2026-12-23 → 2026-12-05 (-18d) |  |  | -11.1d → -39d |  |
| 2 | **TRAFFIC SIGNS** | 2026-10-13 → 2026-07-18 (-87d) | 2026-11-09 → 2026-12-03 (+24d) |  |  |  |  |
| MLTX-02-004-PR-10060 | PO for Traffic Signs | 2026-10-13 A → 2026-07-18 A (-87d) | 2026-10-13 A → 2026-07-18 A (-87d) | 15d → 5d |  |  | MLTX-02-004-EN-9090, MLTX-02-004-PR-10910, MLTX-02-004-PR-9960 → MLTX-02-004-EN-9090 |
| MLTX-02-004-PR-10080 | Material Delivery for Traffic Signs | 2026-11-09 A → 2026-11-24 (+15d) | 2026-11-09 A → 2026-12-03 (+24d) | 10d → 9d | 100% → 0% | none → 45d | MLTX-02-004-PR-10060, MLTX-02-004-PR-10420, MLTX-02-004-PR-10010 → MLTX-02-004-PR-10060 |
| 3 | **IRRIGATION PIPES/SPRINKLERS** | 2026-10-13 → 2026-07-18 (-87d) | 2026-11-09 → 2026-08-19 (-82d) |  |  |  |  |
| MLTX-02-004-PR-10090 | PO for Irrigation Pipes/Sprinkles | 2026-10-13 A → 2026-07-18 A (-87d) | 2026-10-13 A → 2026-07-18 A (-87d) |  |  |  | MLTX-02-004-EN-9140, MLTX-02-004-PR-10450 → MLTX-02-004-EN-9140 |
| MLTX-02-004-PR-10100 | Material Delivery for Irrigation Pipes/Sprinkles | 2026-11-08 A → 2026-08-19 A (-81d) | 2026-11-09 A → 2026-08-19 A (-82d) |  |  |  | MLTX-02-004-PR-10090, MLTX-02-004-PR-10340, MLTX-02-004-PR-10060 → MLTX-02-004-PR-10090 |
| 5 | **AGRICULTURE SOIL** | 2026-10-21 → 2026-07-18 (-95d) | 2026-10-21 → 2026-11-10 (+20d) |  |  |  |  |
| MLTX-02-004-PR-10850 | PO for Agriculture Soil | 2026-10-21 A → 2026-07-18 A (-95d) | 2026-10-21 A → 2026-07-18 A (-95d) | 15d → 5d |  |  |  |
| MLTX-02-004-PR-10860 | Material Delivery for Agriculture Soil | 2026-10-21 A → 2026-11-05 A (+15d) | 2026-10-21 A → 2026-11-10 A (+20d) | 22d → 12d |  |  | MLTX-02-004-PR-10850, MLTX-02-004-PR-10450, MLTX-02-004-PR-10200, MLTX-02-004-PR-10400 → MLTX-02-004-PR-10850 |

| ID | Task | Start | Finish | Duration | Complete | Total float | Predecessors | Other |
| --- | --- | --- | --- | --- | --- | --- | --- | --- |
| 8 | **TRACK SURFACE** | 2026-05-16 → 2026-06-24 (+39d) | 2027-01-04 → 2026-11-10 (-55d) |  |  |  |  |  |
| MLTX-02-004-PR-10870 | PO for Track Surface | 2026-05-16 A → 2026-06-24 A (+39d) | 2026-05-20 A → 2026-06-24 A (+35d) | 5d → 1d |  |  | MLTX-02-004-EN-9120, MLTX-02-004-EN-10910, MLTX-02-004-EN-10850 → MLTX-02-004-EN-9830 |  |
| MLTX-02-004-PR-10880 | Material Delivery for Track Surface | 2026-12-23 → 2026-11-05 A (-48d) | 2027-01-04 → 2026-11-10 A (-55d) |  | 0% → 100% | -11.1d → none | MLTX-02-004-EN-9830, MLTX-02-004-PR-10870, MLTX-02-004-PR-10040, MLTX-02-004-PR-10050, MLTX-02-004-PR-10450 → MLTX-02-004-PR-10860 |  |
| 10 | **GRASS/TREES** | 2026-05-17 → 2026-07-18 (+62d) | 2026-11-07 → 2026-12-10 (+33d) |  |  |  |  |  |
| MLTX-02-004-PR-10910 | PO for Grass/Trees | 2026-05-17 A → 2026-07-18 A (+62d) | 2026-05-20 A → 2026-07-18 A (+59d) |  |  |  | MLTX-02-004-PR-10870, MLTX-02-004-EN-9870 → MLTX-02-004-EN-9870 |  |
| MLTX-02-004-PR-10920 | Material Delivery for Grass/Trees | 2026-10-25 A → 2026-11-24 (+30d) | 2026-11-07 A → 2026-12-10 (+33d) |  | 100% → 0% | none → 39d | MLTX-02-004-PR-10910, MLTX-02-004-PR-10450 → MLTX-02-004-PR-10910 |  |
| 6 | **CABLES** | 2026-08-26 → 2026-07-22 (-35d) | 2026-09-15 → 2026-09-14 (-1d) |  |  |  |  |  |
| MLTX-02-004-PR-10730 | PO for Cables | 2026-08-26 A → 2026-07-22 A (-35d) | 2026-08-26 A → 2026-07-22 A (-35d) |  |  |  | MLTX-02-004-EN-9730 → MLTX-02-004-EN-9730, MLTX-02-004-PR-10040 |  |
| MLTX-02-004-PR-10740 | Material Delivery for Cables | 2026-09-15 A → 2026-09-13 A (-2d) | 2026-09-15 A → 2026-09-14 A (-1d) |  |  |  | MLTX-02-004-PR-10730 → MLTX-02-004-PR-10080, MLTX-02-004-PR-10920, MLTX-02-004-PR-10730 |  |
| LLI | **LONG LEAD ITEM** | 2026-08-26 → 2026-06-13 (-74d) | 2026-12-19 → 2027-01-20 (+32d) |  |  |  |  |  |
| PLG | **PLAYGROUND WORKS** | 2026-10-13 → 2026-06-13 (-122d) | 2026-12-19 → 2027-01-20 (+32d) |  |  |  |  |  |
| 6 | **STEEL TENSION CABLES** | 2026-10-13 → 2026-06-13 (-122d) | 2026-12-19 → 2026-06-24 (-178d) |  |  |  |  |  |
| MLTX-02-004-PR-10550 | PO for Steel Tension Cables | 2026-10-13 A → 2026-06-13 A (-122d) | 2026-10-13 A → 2026-06-13 A (-122d) | 8d → 1d |  |  | MLTX-02-004-EN-9880, MLTX-02-004-PR-10530 → MLTX-02-004-EN-11190 | resources Purchaser [230 h] → Purchaser [300 h] |
| MLTX-02-004-PR-10930 | Material Fabrication for Steel Tension Cables | 2026-10-13 A → 2026-06-15 A (-120d) | 2026-10-13 A → 2026-06-18 A (-117d) |  |  |  | MLTX-02-004-PR-10550 → MLTX-02-004-EN-9450, MLTX-02-004-EN-9570, MLTX-02-004-EN-9880, MLTX-02-004-EN-9890, MLTX-02-004-EN-9900, MLTX-02-004-EN-9910, MLTX-02-004-EN-9950, MLTX-02-004-EN-9530, MLTX-02-004-PR-10550 | resources Purchaser [229.1 h] → Purchaser [300 h] |
| MLTX-02-004-PR-10560 | Material Delivery for Steel Tension Cables | 2026-11-23 → 2026-06-18 A (-158d) | 2026-12-10 → 2026-06-20 A (-173d) | 15d → 30d | 0% → 100% | -27.1d → none | MLTX-02-004-PR-10930, MLTX-02-004-PR-10740 → MLTX-02-004-PR-10930 | resources Purchaser [200 h] → Purchaser [294.3 h] |
| MLTX-02-004-PR-10970 | Staging time | 2026-12-10 → 2026-06-21 A (-172d) | 2026-12-19 → 2026-06-24 A (-178d) |  | 0% → 100% | -27.1d → none | MLTX-02-004-PR-10560, MLTX-02-004-PR-10610 → MLTX-02-004-PR-10560 | resources Purchaser [200 h] → Purchaser [290 h] |
| 7 | **EMERGENCY DOORS** | 2026-10-13 → 2026-07-18 (-87d) | 2026-12-14 → 2026-12-28 (+14d) |  |  |  |  |  |
| MLTX-02-004-PR-10570 | PO for Emergency Doors | 2026-10-13 A → 2026-07-18 A (-87d) | 2026-10-13 A → 2026-07-18 A (-87d) | 10d → 5d |  |  | MLTX-02-004-PR-10930, MLTX-02-004-EN-9890 → MLTX-02-004-PR-10730 |  |
| MLTX-02-004-PR-10940 | Material Fabrication for Emergency Doors | 2026-10-13 A → 2026-11-24 (+42d) | 2026-10-13 A → 2026-12-05 (+53d) | 20d → 10d | 100% → 0% | none → -86d |  |  |
| MLTX-02-004-PR-10580 | Material Delivery for Emergency Doors | 2026-11-23 → 2026-12-06 (+13d) | 2026-12-10 → 2026-12-22 (+12d) |  |  | -5.1d → -86d | MLTX-02-004-PR-10940, MLTX-02-004-PR-9960 → MLTX-02-004-PR-10940 |  |
| MLTX-02-004-PR-10980 | Staging time | 2026-12-10 → 2026-12-23 (+13d) | 2026-12-14 → 2026-12-28 (+14d) | 3d → 5d |  | -0.1d → -86d | MLTX-02-004-PR-10580, MLTX-02-004-PR-11010 → MLTX-02-004-PR-10580, MLTX-02-004-PR-10970 |  |
| 8 | **PRESSURE UNITS** | 2026-10-13 → 2026-06-16 (-119d) | 2026-12-19 → 2027-01-20 (+32d) |  |  |  |  |  |
| MLTX-02-004-PR-10590 | PO for Pressure Units | 2026-10-13 A → 2026-06-16 A (-119d) | 2026-10-13 A → 2026-06-16 A (-119d) |  |  |  | MLTX-02-004-EN-9900, MLTX-02-004-PR-10930, MLTX-02-004-PR-10610 → MLTX-02-004-PR-10730 |  |
| MLTX-02-004-PR-10950 | Material Fabrication for Pressure Units | 2026-10-13 A → 2026-11-24 (+42d) | 2026-10-13 A → 2026-12-16 (+64d) | 10d → 20d | 100% → 0% | none → -57d |  |  |
| MLTX-02-004-PR-10600 | Material Delivery for Pressure Units | 2026-11-23 → 2026-12-17 (+24d) | 2026-12-05 → 2027-01-14 (+40d) | 10d → 25d |  | -5.1d → -57d | MLTX-02-004-PR-10950, MLTX-02-004-PR-10960 → MLTX-02-004-PR-10950 |  |
| MLTX-02-004-PR-10990 | Staging time | 2026-12-07 → 2027-01-16 (+40d) | 2026-12-19 → 2027-01-20 (+32d) | 10d → 5d |  | -7.1d → -57d | MLTX-02-004-PR-10600, MLTX-02-004-PR-10620 → MLTX-02-004-PR-10600, MLTX-02-004-PR-10560 |  |
| 9 | **AIR LOCK DOORS** | 2026-10-13 → 2026-06-16 (-119d) | 2026-12-16 → 2027-01-20 (+35d) |  |  |  |  |  |
| MLTX-02-004-PR-10610 | PO for Lock Doors | 2026-10-13 A → 2026-06-16 A (-119d) | 2026-10-13 A → 2026-06-16 A (-119d) |  |  |  | MLTX-02-004-PR-10930, MLTX-02-004-EN-9910, MLTX-02-004-PR-9950 → MLTX-02-004-PR-10930 |  |
| MLTX-02-004-PR-10960 | Material Fabrication for Lock Doors | 2026-10-13 A → 2026-11-24 (+42d) | 2026-10-13 A → 2026-12-16 (+64d) | 15d → 20d | 100% → 0% | none → -31d | MLTX-02-004-PR-10610, MLTX-02-004-PR-10470 → MLTX-02-004-PR-10610 |  |
| MLTX-02-004-PR-10620 | Material Delivery for Lock Doors | 2026-11-23 → 2026-12-17 (+24d) | 2026-12-07 → 2027-01-14 (+38d) | 12d → 25d |  | -7.1d → -31d | MLTX-02-004-PR-10960, MLTX-02-004-PR-9960 → MLTX-02-004-PR-10960 |  |
| MLTX-02-004-PR-11000 | Staging time | 2026-12-10 → 2027-01-16 (+37d) | 2026-12-16 → 2027-01-20 (+35d) |  |  | -5.1d → -31d | MLTX-02-004-PR-10620, MLTX-02-004-PR-10580 → MLTX-02-004-PR-10620, MLTX-02-004-PR-10560 |  |
| LSC | **LANDSCAPE WORKS** | 2026-08-26 → 2026-06-18 (-69d) | 2026-09-15 → 2026-10-07 (+22d) |  |  |  |  |  |
| 4 | **LIGHT POLES** | 2026-08-26 → 2026-06-18 (-69d) | 2026-09-15 → 2026-10-07 (+22d) |  |  |  |  |  |
| MLTX-02-004-PR-9940 | PO for Lighting poles | 2026-08-26 A → 2026-06-18 A (-69d) | 2026-08-26 A → 2026-06-18 A (-69d) | 10d → 1d |  |  | MLTX-02-004-EN-8980, MLTX-02-004-PR-10730 → MLTX-02-004-EN-8980 |  |
| MLTX-02-004-PR-9950 | Material Fabrication for Lighting poles | 2026-08-26 A → 2026-09-29 A (+34d) | 2026-08-26 A → 2026-09-29 A (+34d) |  |  |  | MLTX-02-004-PR-10760, MLTX-02-004-PR-9940 → MLTX-02-004-PR-10960, MLTX-02-004-PR-11720, MLTX-02-004-PR-9940, MLTX-02-004-PR-10760 |  |
| MLTX-02-004-PR-9960 | Material Delivery for Lighting poles | 2026-09-15 A → 2026-09-30 A (+15d) | 2026-09-15 A → 2026-10-05 A (+20d) | 30d → 25d |  |  |  |  |
| MLTX-02-004-PR-11010 | Staging time | 2026-09-15 A → 2026-10-05 A (+20d) | 2026-09-15 A → 2026-10-07 A (+22d) | 15d → 5d |  |  |  |  |
| T & C | **TESTING & COMMISSIONING** | 2027-03-14 → 2026-12-24 (-80d) |  |  |  |  |  |  |
| MLTX-02-004-TC-11900 | Testing and Commissioning for MEP Works for Toilet/Service Building | 2027-03-16 → 2026-12-24 (-82d) | 2027-03-20 → 2027-01-21 (-58d) | 3d → 25d |  | -61.1d → -7d | MLTX-02-004-CN-12960, MLTX-02-004-CN-13270, MLTX-02-004-CN-13260, MLTX-02-004-CN-13160, MLTX-02-004-CN-13220, MLTX-02-004-CN-12950, MLTX-02-004-CN-13180, MLTX-02-004-CN-12730, MLTX-02-004-CN-12700, MLTX-02-004-CN-12910, Installing and Finish Works of Panel Boards, MLTX-02-004-CN-12890, MLTX-02-004-CN-12241, MLTX-02-004-CN-12970, MLTX-02-004-CN-12820, MLTX-02-004-CN-12770, Installation of DI Cover for Tank, MLTX-02-004-CN-12870, MLTX-02-004-CN-12810, MLTX-02-004-CN-12670 FF, MLTX-02-004-CN-13040 FF, MLTX-02-004-CN-13060 FF, Installation of MODON Logo on the entrance FF, MLTX-02-004-CN-12990 FF, Traffic Signs Posts and Poles Installation FF, MLTX-02-004-CN-12790, MLTX-02-004-PR-10420, MLTX-02-004-PR-10400, MLTX-02-004-CN-12690, MLTX-02-004-CN-13050, MLTX-02-004-CN-12750, MLTX-02-004-CN-13030, MLTX-02-004-PR-10440, MLTX-02-004-EN-11200, MLTX-02-004-CN-13140, MLTX-02-004-CN-13000 → MLTX-02-004-CN-13220, MLTX-02-004-CN-11380, MLTX-02-004-CN-13060 | resources QA/QC Engineer [1400 h] → QA/QC Engineer [1420 h] |
| MLTX-02-004-TC-11890 | Testing and Commissioning for MEP Works for Playground Area | 2027-03-14 → 2027-03-02 (-12d) | 2027-03-20 → 2027-03-23 (+3d) | 5d → 16d |  | -61.1d → -55d | MLTX-02-004-CN-12340, MLTX-02-004-CN-13220, MLTX-02-004-CN-12420, MLTX-02-004-CN-12241, MLTX-02-004-CN-10220 FF, MLTX-02-004-CN-11960 FF, MLTX-02-004-CN-12270 FF, MLTX-02-004-CN-12210 FF, Traffic Signs Posts and Poles Installation FF → MLTX-02-004-CN-12420, MLTX-02-004-TC-11880, MLTX-02-004-CN-12340 | resources QA/QC Engineer [1400 h] → QA/QC Engineer [1420 h] |
| MLTX-02-004-TC-11910 | Testing and Commissioning for MEP Works for Landscape Works | 2027-03-15 → 2027-03-08 (-7d) | 2027-03-23 → 2027-03-16 (-7d) | 7d → 5d |  | -64.1d → -44d | Interlock Installation (8 Cm) for Parking Area (Including Finishing Works), MLTX-02-004-CN-12241, MLTX-02-004-CN-11910 FF, MLTX-02-004-CN-12480 FF, MLTX-02-004-CN-12060 FF, Traffic Signs Posts and Poles Installation FF, MLTX-02-004-CN-11920 FF, MLTX-02-004-CN-11930 FF → MLTX-02-004-CN-12040, MLTX-02-004-CN-13160 | resources QA/QC Engineer [1392.9 h] → QA/QC Engineer [1432.8 h] |
| PRO C & DEM | **PROJECT CLOSEOUT & DEMOBILIZATION** | 2027-02-11 → 2027-02-02 (-9d) | 2027-03-29 → 2027-05-03 (+35d) |  |  |  |  |  |
| 1 | **As-Built DWGs** | 2027-02-11 → 2027-02-02 (-9d) | 2027-03-20 → 2027-05-01 (+42d) |  |  |  |  |  |
| 1 | **As-Built DWGs Submittals** | 2027-02-11 → 2027-02-02 (-9d) | 2027-03-03 → 2027-04-26 (+54d) |  |  |  |  |  |
| MLTX-02-004-CO-12010 | As-Built DWGs Submittal for Toilet/Service Building Works | 2027-03-01 → 2027-02-02 (-27d) | 2027-03-03 → 2027-02-06 (-25d) | 2d → 4d |  | -55.1d → -16d | MLTX-02-004-TC-11870 SS, MLTX-02-004-TC-11930 SS, MLTX-02-004-CN-10670 → MLTX-02-004-TC-11930, MLTX-02-004-TC-11940 SS, MLTX-02-004-TC-11870, MLTX-02-004-TC-11900 |  |
| MLTX-02-004-CO-12020 | As-Built DWGs Submittal for Landscape Works | 2027-02-11 → 2027-03-08 (+25d) | 2027-02-16 → 2027-03-15 (+27d) |  |  | -43.1d → -44d | MLTX-02-004-TC-11880 SS, MLTX-02-004-CN-13740 → MLTX-02-004-TC-11940 SS, MLTX-02-004-TC-11880, MLTX-02-004-TC-11910 SS |  |
| MLTX-02-004-CO-12000 | As-Built DWGs Submittal for Playground Area Works | 2027-02-24 → 2027-04-22 (+57d) | 2027-02-27 → 2027-04-26 (+58d) | 2d → 4d |  | -51.1d → -80d | MLTX-02-004-TC-11860 SS, Finishing Asphalt & Concrete Surface (Padel Playground) → MLTX-02-004-TC-11920, MLTX-02-004-TC-11940 SS, MLTX-02-004-TC-11860, MLTX-02-004-TC-11890 |  |
| 2 | **As-Built DWGs Approvals** | 2027-02-16 → 2027-02-07 (-9d) | 2027-03-20 → 2027-05-01 (+42d) |  |  |  |  |  |
| MLTX-02-004-CO-12050 | As-Built DWGs Approval for Toilet/Service Building Works | 2027-03-16 → 2027-02-07 (-37d) | 2027-03-20 → 2027-02-10 (-38d) | 3d → 4d |  | -62.1d → -16d | MLTX-02-004-CN-12340, MLTX-02-004-CO-12010, MLTX-02-004-CN-13390, MLTX-02-004-CO-12090 → MLTX-02-004-CO-12010 |  |
| MLTX-02-004-CO-12060 | As-Built DWGs Approval for Landscape Works | 2027-02-16 → 2027-03-16 (+28d) | 2027-02-20 → 2027-03-20 (+28d) | 3d → 4d |  | -42.1d → -44d | MLTX-02-004-CO-12020, MLTX-02-004-CN-14140 → MLTX-02-004-CO-12020 |  |
| MLTX-02-004-CO-12040 | As-Built DWGs Approval for Playground Area Works | 2027-02-27 → 2027-04-27 (+59d) | 2027-03-02 → 2027-05-01 (+60d) | 3d → 4d |  | -50.1d → -80d | MLTX-02-004-CO-12000, MLTX-02-004-MS-1100 → MLTX-02-004-CO-12000 |  |
| 2 | **Demobilization** | 2027-03-15 → 2027-04-27 (+43d) | 2027-03-29 → 2027-05-03 (+35d) |  |  |  |  |  |
| MLTX-02-004-CO-12080 | Demobilization of Manpower | 2027-03-15 → 2027-04-27 (+43d) | 2027-03-16 → 2027-04-28 (+43d) | 1d → 2d |  | -62.1d → -80d | MLTX-02-004-CO-12020, MLTX-02-004-CO-12010, MLTX-02-004-CO-12000, MLTX-02-004-TC-11910 SS, MLTX-02-004-CN-13390 → MLTX-02-004-TC-11940, MLTX-02-004-CO-12020, MLTX-02-004-CO-12010, MLTX-02-004-CO-12000 |  |
| MLTX-02-004-CO-12090 | Removal of Equipment from Site | 2027-03-15 → 2027-04-27 (+43d) | 2027-03-16 → 2027-04-28 (+43d) | 1d → 2d |  | -62.1d → -80d | MLTX-02-004-CO-12080 SS, MLTX-02-004-CO-12080 FF, MLTX-02-004-CN-13390 → MLTX-02-004-CO-12080 SS, MLTX-02-004-CO-12080 FF | resources Labor [830.1 h] → Labor [900 h] |
| MLTX-02-004-CO-12100 | Site Clean Up | 2027-03-27 → 2027-04-29 (+33d) | 2027-03-28 → 2027-05-01 (+34d) | 1d → 2d |  | -69.1d → -80d | MLTX-02-004-CO-12090, MLTX-02-004-CN-13470 → MLTX-02-004-CO-12090 | resources Labor [841.56 h]; Driver [58.44 h]; Forklift [50 h]; Bobcat [160 h] → Labor [930.95 h]; Driver [64.65 h]; Forklift [50 h]; Bobcat [160 h] |
| MLTX-02-004-CO-12110 | Restoration of Ground Surfaces | 2027-03-28 → 2027-05-02 (+35d) | 2027-03-29 → 2027-05-03 (+35d) | 1d → 2d |  | -69.1d → -80d | MLTX-02-004-CO-12060, MLTX-02-004-CO-12100, MLTX-02-004-CO-12040, MLTX-02-004-CO-12050, MLTX-02-004-TC-11860, MLTX-02-004-MS-1130 → MLTX-02-004-CO-12100, MLTX-02-004-CO-12060, MLTX-02-004-CO-12040, MLTX-02-004-CO-12050 |  |
