# Improvement of Waad Al Shamal Industrial City Fence & Gates - B1 - B1

How a schedule from Primavera P6 changed from version to version. A marks actual dates.

## Version 1 (data date 2026-05-06, saved 2026-07-20, file WAS1-05-006 -BL (11).xer)

Note of the change: Renumber project folders 01–23 in order (after removing projects 12 and 25)

| ID | WBS | Task | Duration | Start | Finish | Predecessors | Total float |
| --- | --- | --- | --- | --- | --- | --- | --- |
|  | 1 | **Key Milestones** |  | 2026-05-06 | 2026-10-05 |  |  |
|  | 1 | **General Milestones** |  | 2026-05-06 | 2026-10-05 |  |  |
| WAD.S.1080 |  | Project Start | 0d | 2026-05-06 | 2026-05-06 |  | 0d |
| WAD.S.6490 |  | Project Finish | 0d | 2026-10-05 | 2026-10-05 | WAD.S.1320 FF, WAD.S.3850 FF, WAD.S.5070 FF, WAD.S.6250 FF, WAD.S.3860 FF, WAD.S.6110 FF, WAD.S.5870 FF, WAD.S.5490, WAD.S.4030, WAD.S.2980, WAD.S.3870, WAD.S.3380, WAD.S.1000, WAD.S.1030, WAD.S.1040, WAD.S.1050, WAD.S.1060, WAD.S.1070, WAD.S.1180, WAD.S.1220, WAD.S.1260, WAD.S.1300, WAD.S.1310, WAD.S.4810, WAD.S.4990, WAD.S.3730, WAD.S.3890, WAD.S.4160, WAD.S.4780, WAD.S.5080, WAD.S.3900, WAD.S.4130, WAD.S.4150, WAD.S.4560, WAD.S.4620, WAD.S.4630, WAD.S.4640, WAD.S.4650, WAD.S.4790, WAD.S.3950, WAD.S.4730, WAD.S.4830, WAD.S.4850, WAD.S.3920, WAD.S.4090, WAD.S.5990, WAD.S.6340, WAD.S.6120, WAD.S.6480, WAD.S.4890, WAD.S.3960, WAD.S.4100, WAD.S.5760, WAD.S.5770, WAD.S.7540, WAD.S.6560, WAD.S.6590, WAD.S.7240, WAD.S.7250, WAD.S.1210, WAD.S.5540, WAD.S.2530, WAD.S.1470, WAD.S.7550, WAD.S.7560 | 0d |
|  | 2 | **Contractual Milestones** |  | 2026-05-06 | 2026-10-05 |  |  |
| WAD.S.1470 |  | Site Handover | 0d | 2026-05-06 | 2026-05-06 | WAD.S.1080 | 128d |
| WAD.S.7550 |  | Contract Schedule (Baseline Program) | 0d | 2026-05-06 | 2026-05-06 | WAD.S.1030 SS | 128d |
| WAD.S.1320 |  | Completion of Moblization | 0d | 2026-05-31 | 2026-05-31 | WAD.S.1280 | 109.5d |
| WAD.S.3850 |  | Completion of Fences | 0d | 2026-08-26 | 2026-08-26 | WAD.S.1080, WAD.S.3380 | 34d |
| WAD.S.3860 |  | Completion of GUARD HOUSE 1 | 0d | 2026-08-26 | 2026-08-26 | WAD.S.3850 FF | 34d |
| WAD.S.5070 |  | Completion of Engineering Works | 0d | 2026-09-22 | 2026-09-22 | WAD.S.1330 FF, WAD.S.4840 | 11d |
| WAD.S.6110 |  | Completion of EXT. WORKS | 0d | 2026-09-27 | 2026-09-27 | WAD.S.4990 | 7d |
| WAD.S.6250 |  | Completion of Procurment Works | 0d | 2026-09-28 | 2026-09-28 | WAD.S.1080, WAD.S.4660 | 6d |
| WAD.S.7560 |  | Testing & Commissioning | 0d | 2026-10-05 | 2026-10-05 | WAD.S.5490 FF | 0d |
|  | 2 | **Mobilization** |  | 2026-05-06 | 2026-05-31 |  |  |
|  | 2 | **Site Layout Plan** |  | 2026-05-11 | 2026-05-13 |  |  |
| WAD.S.1120 |  | Site Office Layout Drawing Proposal Submittal | 1d | 2026-05-11 | 2026-05-11 | WAD.S.1110 | 0d |
| WAD.S.1130 |  | Site Office Layout Drawing Review & Approval | 2d | 2026-05-12 | 2026-05-13 | WAD.S.1120 | 0d |
|  | 6 | **Construct Site Access Roads** |  | 2026-05-14 | 2026-05-20 |  |  |
| WAD.S.1150 |  | Site Preparation | 1d | 2026-05-14 | 2026-05-14 | WAD.S.1130 | 0d |
| WAD.S.1160 |  | Grading & Leveling | 2d | 2026-05-16 | 2026-05-17 | WAD.S.1150 | 2.5d |
| WAD.S.1200 |  | Temporary Access Road | 3d | 2026-05-17 | 2026-05-20 | WAD.S.1160 SS+1.25d, WAD.S.1150 | 2.5d |
|  | 7 | **Construct Site Office Fence** |  | 2026-05-18 | 2026-05-31 |  |  |
| WAD.S.1230 |  | Excavation for Fence Foundation | 4d | 2026-05-18 | 2026-05-23 | WAD.S.1200 SS+1.25d | 2.5d |
| WAD.S.1270 |  | Installation of Fence Posts | 4d | 2026-05-19 | 2026-05-24 | WAD.S.1230 SS+1.25d | 2.75d |
| WAD.S.1280 |  | Installation of Fence Mesh | 4d | 2026-05-23 | 2026-05-31 | WAD.S.1270 SS+2.5d, WAD.S.1230 | 2.5d |
|  | 8 | **Construct Site Offices** |  | 2026-05-18 | 2026-05-20 |  |  |
| WAD.S.1210 |  | Installation of Site Offices | 3d | 2026-05-18 | 2026-05-20 | WAD.S.1200 SS, WAD.S.1130, WAD.S.1160 | 115d |
| WAD.S.1240 |  | MEP Works | 2d | 2026-05-18 | 2026-05-19 | WAD.S.1160 | 5d |
| WAD.S.1260 |  | Installation of Furniture | 3d | 2026-05-18 | 2026-05-20 | WAD.S.1240 SS, WAD.S.1160 | 5d |
|  | 3 | **Mobilization of Manpower** |  | 2026-05-16 | 2026-05-21 |  |  |
| WAD.S.1170 |  | Mobilization of Manpower | 6d | 2026-05-16 | 2026-05-21 | WAD.S.1150 SS, WAD.S.1150, WAD.S.1150 FF | 1d |
|  | 4 | **Mobilization of Equipment** |  | 2026-05-16 | 2026-05-21 |  |  |
| WAD.S.1180 |  | Mobilization of Tools & Equipment | 6d | 2026-05-16 | 2026-05-21 | WAD.S.1170 SS, WAD.S.1150 | 1d |
|  | 5 | **Site Survey** |  | 2026-05-06 | 2026-05-10 |  |  |
| WAD.S.1020 |  | Site Survey | 2d | 2026-05-06 | 2026-05-07 | WAD.S.1080 SS | 0d |
| WAD.S.1110 |  | Survey Report | 2d | 2026-05-09 | 2026-05-10 | WAD.S.1020 | 0d |
|  | 3 | **Preliminary Submittals** |  | 2026-05-06 | 2026-05-30 |  |  |
| WAD.S.1000 |  | Insurances | 18d | 2026-05-06 | 2026-05-30 | WAD.S.1080 | 3d |
| WAD.S.1010 |  | Performance Bonds | 10d | 2026-05-06 | 2026-05-17 | WAD.S.1080 | 1d |
| WAD.S.1030 |  | Contract Schedule (Baseline Program) | 13d | 2026-05-06 | 2026-05-20 | WAD.S.1080 | 2d |
| WAD.S.1040 |  | HSE Plan | 12d | 2026-05-06 | 2026-05-19 | WAD.S.1080 | 3d |
| WAD.S.1050 |  | Quality Control Plan | 10d | 2026-05-06 | 2026-05-17 | WAD.S.1080, WAD.S.1010 FF | 2d |
| WAD.S.1060 |  | Project Organization Chart | 12d | 2026-05-06 | 2026-05-19 | WAD.S.1080, WAD.S.1040 FF | 3d |
| WAD.S.1070 |  | Submission of Staff CVs | 10d | 2026-05-06 | 2026-05-17 | WAD.S.1080, WAD.S.1050 FF | 2d |
|  | 6 | **Engineering** |  | 2026-05-06 | 2026-09-22 |  |  |
|  | 3 | **Shop Drawings** |  | 2026-05-06 | 2026-06-11 |  |  |
|  | 2 | **Prepare & Submit** |  | 2026-05-06 | 2026-06-02 |  |  |
| WAD.S.1090 |  | FENCES Shop Drawings (Prepare & Submit) | 10d | 2026-05-06 | 2026-05-17 | WAD.S.1080, WAD.S.1070 FF | 2d |
| WAD.S.1140 |  | GUARD HOUSE 1 Shop Drawings (Prepare & Submit) | 10d | 2026-05-12 | 2026-05-23 | WAD.S.1090 SS+3d, WAD.S.1060 FF, WAD.S.1030 FF, WAD.S.1180 FF, WAD.S.1120 | 0d |
| WAD.S.1190 |  | GUARD HOUSE 1 Shop Drawings (Prepare & Submit) | 10d | 2026-05-16 | 2026-05-30 | WAD.S.1140 SS+3d, WAD.S.1260 FF, WAD.S.1150 | 0d |
| WAD.S.1250 |  | EXT. WORKS Shop Drawings (Prepare & Submit) | 10d | 2026-05-19 | 2026-06-02 | WAD.S.1190 SS+3d, WAD.S.1000 FF, WAD.S.1280 FF, WAD.S.1010 | 0d |
|  | 7 | **Review & Approve** |  | 2026-05-18 | 2026-06-11 |  |  |
| WAD.S.1220 |  | FENCES Shop Drawings (Review & Approve) | 8d | 2026-05-18 | 2026-05-30 | WAD.S.1090, WAD.S.1090 FF | 3d |
| WAD.S.1300 |  | GUARD HOUSE 1 Shop Drawings (Review & Approve) | 8d | 2026-05-31 | 2026-06-08 | WAD.S.1140, WAD.S.1220, WAD.S.1190 | 3d |
| WAD.S.1310 |  | GUARD HOUSE 1 Shop Drawings (Review & Approve) | 8d | 2026-05-31 | 2026-06-08 | WAD.S.1190, WAD.S.1300 FF, WAD.S.1190 FF | 3d |
| WAD.S.1330 |  | EXT. WORKS Shop Drawings (Review & Approve) | 8d | 2026-06-03 | 2026-06-11 | WAD.S.1250, WAD.S.1310 FF | 0d |
|  | 1 | **Material Submittal** |  | 2026-06-22 | 2026-09-22 |  |  |
|  | 1 | **Material Prepare & Submit** |  | 2026-06-22 | 2026-09-15 |  |  |
|  | 1 | **Short Lead Items** |  | 2026-06-22 | 2026-09-15 |  |  |
| WAD.S.1350 |  | Backfilling Works (Material Prepare & Submit) | 4d | 2026-06-22 | 2026-06-25 | WAD.S.1080 SS+37d | 25d |
| WAD.S.1360 |  | structural steel beams, posts and rods for wall fence (Material Prepare & Submit) (FENCES) | 4d | 2026-06-22 | 2026-06-25 | WAD.S.1080 SS+37d | 25d |
| WAD.S.1400 |  | tubes, bolts, nuts and steel plates to strengthened the wall fence and posts (Material Prepare & Submit) (FENCES) | 4d | 2026-06-27 | 2026-06-30 | WAD.S.1080 SS+37d, WAD.S.1360 | 25d |
| WAD.S.1500 |  | bitumen waterproofing paint on concrete surfaces (Material Prepare & Submit) (FENCES) | 4d | 2026-07-01 | 2026-07-05 | WAD.S.1080 SS+37d, WAD.S.1400 | 25d |
| WAD.S.2630 |  | Manhole depth not exceeding 4.0m (Material Prepare & Submit) (GUARD HOUSE) | 4d | 2026-08-15 | 2026-08-18 | WAD.S.1080 SS+83d | 19d |
| WAD.S.2690 |  | GRP Pipes laid in trenches(Material Prepare & Submit) (GUARD HOUS | 4d | 2026-08-19 | 2026-08-23 | WAD.S.1080 SS+87d, WAD.S.1400 | 0d |
| WAD.S.2700 |  | 100 mm GRP pipe service connections (Material Prepare & Submit) (GUARD HOUSE) | 4d | 2026-08-19 | 2026-08-23 | WAD.S.1080 SS+87d, WAD.S.1400 | 3d |
| WAD.S.2830 |  | Concrete Masonry (200mm thick ) (Material Prepare & Submit) (GUARD HOUSE) | 4d | 2026-08-24 | 2026-08-27 | WAD.S.1080 SS+91d, WAD.S.2700 | 4d |
| WAD.S.2880 |  | Concrete Masonry (100mm thick ) (Material Prepare & Submit) (GUARD HOUSE) | 4d | 2026-08-25 | 2026-08-29 | WAD.S.1080 SS+92d, WAD.S.2700 | 24d |
| WAD.S.2900 |  | SIDEWALKS AND CURBS (Material Prepare & Submit) (GUARD HOUSE) | 4d | 2026-08-25 | 2026-08-29 | WAD.S.1080 SS+92d, WAD.S.2700 | 5d |

| ID | WBS | Task | Duration | Start | Finish | Predecessors | Total float |
| --- | --- | --- | --- | --- | --- | --- | --- |
| WAD.S.3070 |  | GROUNDING (Material Prepare & Submit) (GUARD HOUSE) | 4d | 2026-08-29 | 2026-09-01 | WAD.S.1080 SS+95d, WAD.S.2830 | 20d |
| WAD.S.3080 |  | ROAD WORKS (Material Prepare & Submit) (GUARD HOUSE) | 4d | 2026-08-29 | 2026-09-01 | WAD.S.1080 SS+94d, WAD.S.2830 | 4d |
| WAD.S.3580 |  | FIRE PROTECTION SYSTEM (fire extinguisher) (Material Prepare & Submit) (GUARD HOUSE) | 4d | 2026-09-02 | 2026-09-06 | WAD.S.1080 SS+99d | 14d |
| WAD.S.4700 |  | UNDERGROUND DISTRIBUTION SYSTEM (Material Prepare & Submit) (GUARD HOUSE) | 4d | 2026-09-12 | 2026-09-15 | WAD.S.1080 SS+107d | 8d |
|  | 2 | **Long Lead Items** |  | 2026-07-15 | 2026-09-07 |  |  |
| WAD.S.1410 |  | fix galvanized steel chain link gate including all necessary associated (Material Prepare & Submit) (FENCES) | 4d | 2026-07-15 | 2026-07-19 | WAD.S.1080 SS+57d, WAD.S.1360 | 11d |
| WAD.S.1490 |  | Intrusion Detection system including processor control units items and joints (Material Prepare & Submit) (FENCES) | 4d | 2026-07-20 | 2026-07-23 | WAD.S.1080 SS+60d, WAD.S.1410 | 11d |
| WAD.S.1520 |  | Handholes\ Manholes (Material Prepare & Submit) (FENCES) | 4d | 2026-07-25 | 2026-07-28 | WAD.S.1080 SS+62d, WAD.S.1490 | 33d |
| WAD.S.1580 |  | structural steel members and plates for main sliding gates (Material Prepare & Submit) (FENCES) | 4d | 2026-07-28 | 2026-08-01 | WAD.S.1080 SS+68d | 1d |
| WAD.S.2840 |  | ceramic floor tiles (Material Prepare & Submit) (GUARD HOUSE) | 4d | 2026-08-24 | 2026-08-27 | WAD.S.1080 SS+91d, WAD.S.2700 | 8d |
| WAD.S.2850 |  | Riyadh stone cladding (Material Prepare & Submit) (GUARD HOUSE) | 4d | 2026-08-24 | 2026-08-27 | WAD.S.1080 SS+91d, WAD.S.2700 | 9d |
| WAD.S.2860 |  | UPS (Material Prepare & Submit) (GUARD HOUSE) | 4d | 2026-08-24 | 2026-08-27 | WAD.S.1080 SS+91d, WAD.S.2700 | 6d |
| WAD.S.2890 |  | Panel boards (Material Prepare & Submit) (GUARD HOUSE) | 4d | 2026-08-25 | 2026-08-29 | WAD.S.1080 SS+92d, WAD.S.2700 | 4d |
| WAD.S.3030 |  | PANTRY CABINET (Material Prepare & Submit) (GUARD HOUSE) | 4d | 2026-08-29 | 2026-09-01 | WAD.S.1080 SS+94d, WAD.S.2860 | 6d |
| WAD.S.3040 |  | 20mm thick black granite (Material Prepare & Submit) (GUARD HOUSE) | 4d | 2026-08-29 | 2026-09-01 | WAD.S.1080 SS+94d, WAD.S.2860 | 10d |
| WAD.S.3050 |  | Workstation chair (Material Prepare & Submit) (GUARD HOUSE) | 4d | 2026-08-29 | 2026-09-01 | WAD.S.1080 SS+95d | 0d |
| WAD.S.3060 |  | Safety Disconnect Switches complete with busbar, frame box (Material Prepare & Submit) (GUARD HOUSE) | 4d | 2026-08-29 | 2026-09-01 | WAD.S.1080 SS+94d, WAD.S.2860 | 6d |
| WAD.S.3150 |  | folding & sliding mounter combination ladder for building maintenance purpose (Material Prepare & Submit) (GUARD HOUSE) | 4d | 2026-08-30 | 2026-09-02 | WAD.S.1080 SS+95d, WAD.S.2890 | 7d |
| WAD.S.3160 |  | overflow galvanized steel roof scupper (Material Prepare & Submit) (GUARD HOUSE) | 4d | 2026-08-30 | 2026-09-02 | WAD.S.1080 SS+96d | 7d |
| WAD.S.3170 |  | counter desk (Material Prepare & Submit) (GUARD HOUSE) | 4d | 2026-08-30 | 2026-09-02 | WAD.S.1080 SS+96d | 5d |
| WAD.S.3180 |  | install ceramic wall tiles (Material Prepare & Submit) (GUARD HOUSE) | 4d | 2026-08-30 | 2026-09-02 | WAD.S.1080 SS+96d | 7d |
| WAD.S.3190 |  | PANEL SIGNAGE (Material Prepare & Submit) (GUARD HOUSE) | 4d | 2026-08-30 | 2026-09-02 | WAD.S.1080 SS+96d | 6d |
| WAD.S.3200 |  | COMMUNICATIONS BACKBONE CABLING (Material Prepare & Submit) (GUARD HOUSE) | 4d | 2026-08-30 | 2026-09-02 | WAD.S.1080 SS+96d | 9d |
| WAD.S.3210 |  | card reader IN/OUT (Material Prepare & Submit) (GUARD HOUSE) | 4d | 2026-08-30 | 2026-09-02 | WAD.S.1080 SS+96d | 4d |
| WAD.S.3220 |  | WATER SUPPLY SYSTEM (Material Prepare & Submit) (GUARD HOUSE) | 4d | 2026-08-30 | 2026-09-02 | WAD.S.1080 SS+96d | 6d |
| WAD.S.3230 |  | SEWER AND DRAINAGE SYSTEM (Material Prepare & Submit) (GUARD HOUSE) | 4d | 2026-08-30 | 2026-09-02 | WAD.S.1080 SS+95d, WAD.S.2890 | 5d |
| WAD.S.3240 |  | SUPPLY AND INSTALL PLUMBING FIXTURES (Material Prepare & Submit) (GUARD HOUSE) | 4d | 2026-08-30 | 2026-09-02 | WAD.S.1080 SS+96d | 0d |
| WAD.S.3250 |  | HEATING, VENTILATION AND AIR CONDITIONING (Material Prepare & Submit) (GUARD HOUSE) | 4d | 2026-08-30 | 2026-09-02 | WAD.S.1080 SS+95d, WAD.S.2890 | 5d |
| WAD.S.3300 |  | heavy steel cover with frame for tanks (Material Prepare & Submit) (GUARD HOUSE) | 4d | 2026-08-31 | 2026-09-03 | WAD.S.1080 SS+97d, WAD.S.2890 | 8d |
| WAD.S.3310 |  | HOLLOW METAL DOORS AND FRAMES (Material Prepare & Submit) (GUARD HOUSE) | 4d | 2026-08-31 | 2026-09-03 | WAD.S.1080 SS+97d, WAD.S.2890 | 7d |
| WAD.S.3320 |  | ALUMINIUM DOORS (Material Prepare & Submit) (GUARD HOUSE) | 4d | 2026-08-31 | 2026-09-03 | WAD.S.1080 SS+97d, WAD.S.2890 | 8d |
| WAD.S.3330 |  | TOILET AND BATH ACCESSROIES (Material Prepare & Submit) (GUARD HOUSE) | 4d | 2026-08-31 | 2026-09-03 | WAD.S.1080 SS+97d, WAD.S.2890 | 8d |
| WAD.S.3340 |  | Waste Receptacle (Material Prepare & Submit) (GUARD HOUSE) | 4d | 2026-08-31 | 2026-09-03 | WAD.S.1080 SS+97d, WAD.S.2890 | 5d |
| WAD.S.3350 |  | LIGHTING FIXTURES (Material Prepare & Submit) (GUARD HOUSE) | 4d | 2026-08-31 | 2026-09-03 | WAD.S.1080 SS+97d, WAD.S.2890 | 6d |
| WAD.S.3360 |  | Access control panel (Material Prepare & Submit) (GUARD HOUSE) | 4d | 2026-08-31 | 2026-09-03 | WAD.S.1080 SS+97d, WAD.S.2890 | 5d |
| WAD.S.3370 |  | VIDEO SURVEILLANCE (Material Prepare & Submit) (GUARD HOUSE) | 4d | 2026-08-31 | 2026-09-03 | WAD.S.1080 SS+97d, WAD.S.2890 | 3d |
| WAD.S.3560 |  | aluminum framed double glazed windows (Material Prepare & Submit) (GUARD HOUSE) | 4d | 2026-09-02 | 2026-09-06 | WAD.S.1080 SS+98d, WAD.S.3050 | 4d |
| WAD.S.3570 |  | Roller blind (Material Prepare & Submit) (GUARD HOUSE) | 4d | 2026-09-02 | 2026-09-06 | WAD.S.1080 SS+99d, WAD.S.3050 | 0d |
| WAD.S.3590 |  | DATA COMMUNICATIONS (Material Prepare & Submit) (GUARD HOUSE) | 4d | 2026-09-02 | 2026-09-06 | WAD.S.1080 SS+98d, WAD.S.3050 | 6d |
| WAD.S.3710 |  | COMPUTERS AND RELATED PERIPHERALS (Material Prepare & Submit) (GUARD HOUSE) | 4d | 2026-09-03 | 2026-09-07 | WAD.S.1080 SS+100d, WAD.S.3050 | 5d |
|  | 2 | **Material Review & Approve** |  | 2026-06-27 | 2026-09-22 |  |  |
|  | 1 | **Short Lead Items** |  | 2026-06-27 | 2026-09-22 |  |  |
| WAD.S.1380 |  | Backfilling Works (Material Review & Approve) | 6d | 2026-06-27 | 2026-07-02 | WAD.S.1350 | 25d |
| WAD.S.1390 |  | structural steel beams, posts and rods for wall fence (Material Review & Approve) (FENCES) | 6d | 2026-06-27 | 2026-07-02 | WAD.S.1360 | 42d |
| WAD.S.1440 |  | tubes, bolts, nuts and steel plates to strengthened the wall fence and posts (Material Review & Approve) (FENCES) | 6d | 2026-07-01 | 2026-07-07 | WAD.S.1400 | 44d |
| WAD.S.1550 |  | bitumen waterproofing paint on concrete surfaces (Material Review & Approve) (FENCES) | 6d | 2026-07-06 | 2026-07-12 | WAD.S.1500 | 25d |
| WAD.S.2680 |  | Manhole depth not exceeding 4.0m (Material Review & Approve) (GUARD HOUSE) | 6d | 2026-08-19 | 2026-08-25 | WAD.S.2630 | 19d |
| WAD.S.2810 |  | GRP Pipes laid in trenches(Material Review & Approve) (GUARD HOUS | 6d | 2026-08-24 | 2026-08-30 | WAD.S.2690 | 0d |
| WAD.S.2820 |  | 100 mm GRP pipe service connections(Material Review & Approve) (GUARD HOUSE) | 6d | 2026-08-24 | 2026-08-30 | WAD.S.2700 | 3d |
| WAD.S.2990 |  | Concrete Masonry (200mm thick ) (Material Review & Approve) (GUARD HOUSE) | 6d | 2026-08-29 | 2026-09-03 | WAD.S.2830 | 24d |
| WAD.S.3120 |  | Concrete Masonry (100mm thick ) (Material Review & Approve) (GUARD HOUSE) | 6d | 2026-08-30 | 2026-09-05 | WAD.S.2880 | 24d |
| WAD.S.3140 |  | SIDEWALKS AND CURBS (Material Review & Approve) (GUARD HOUSE) | 6d | 2026-08-30 | 2026-09-05 | WAD.S.2900 | 5d |
| WAD.S.3540 |  | GROUNDING (Material Review & Approve) (GUARD HOUSE) | 6d | 2026-09-02 | 2026-09-08 | WAD.S.3070 | 20d |
| WAD.S.3550 |  | ROAD WORKS (Material Review & Approve) (GUARD HOUSE) | 6d | 2026-09-02 | 2026-09-08 | WAD.S.3080 | 4d |
| WAD.S.4060 |  | FIRE PROTECTION SYSTEM (fire extinguisher) (Material Review & Approve) (GUARD HOUSE) | 6d | 2026-09-07 | 2026-09-13 | WAD.S.3580 | 14d |
| WAD.S.4840 |  | UNDERGROUND DISTRIBUTION SYSTEM (Material Review & Approve) (GUARD HOUSE) | 6d | 2026-09-16 | 2026-09-22 | WAD.S.4700 | 8d |
|  | 2 | **Long Lead Items** |  | 2026-07-20 | 2026-09-14 |  |  |
| WAD.S.1480 |  | fix galvanized steel chain link gate including all necessary associated (Material Review & Approve) (FENCES) | 6d | 2026-07-20 | 2026-07-26 | WAD.S.1410 | 11d |
| WAD.S.1510 |  | Intrusion Detection system including processor control units items and joints (Material Review & Approve) (FENCES) | 6d | 2026-07-25 | 2026-07-30 | WAD.S.1490 | 11d |
| WAD.S.1650 |  | Handholes\ Manholes (Material Review & Approve) (FENCES) | 6d | 2026-07-29 | 2026-08-04 | WAD.S.1520 | 33d |
| WAD.S.2190 |  | structural steel members and plates for main sliding gates (Material Review & Approve) (FENCES) | 6d | 2026-08-02 | 2026-08-08 | WAD.S.1580 | 1d |
| WAD.S.3000 |  | ceramic floor tiles (Material Review & Approve) (GUARD HOUSE) | 6d | 2026-08-29 | 2026-09-03 | WAD.S.2840 | 8d |
| WAD.S.3010 |  | install Riyadh stone cladding (Material Review & Approve) (GUARD HOUSE) | 6d | 2026-08-29 | 2026-09-03 | WAD.S.2850 | 9d |
| WAD.S.3020 |  | UPS (Material Review & Approve) (GUARD HOUSE) | 6d | 2026-08-29 | 2026-09-03 | WAD.S.2860 | 7d |
| WAD.S.3130 |  | Panel boards (Material Review & Approve) (GUARD HOUSE) | 6d | 2026-08-30 | 2026-09-05 | WAD.S.2890 | 8d |
| WAD.S.3500 |  | PANTRY CABINET (Material Review & Approve) (GUARD HOUSE) | 6d | 2026-09-02 | 2026-09-08 | WAD.S.3030 | 6d |
| WAD.S.3510 |  | 20mm thick black granite (Material Review & Approve) (GUARD HOUSE) | 6d | 2026-09-02 | 2026-09-08 | WAD.S.3040 | 10d |
| WAD.S.3520 |  | Workstation chair (Material Review & Approve) (GUARD HOUSE) | 6d | 2026-09-02 | 2026-09-08 | WAD.S.3050 | 6d |
| WAD.S.3530 |  | Safety Disconnect Switches complete with busbar, frame box (Material Review & Approve) (GUARD HOUSE) | 6d | 2026-09-02 | 2026-09-08 | WAD.S.3060 | 6d |
| WAD.S.3600 |  | folding & sliding mounter combination ladder for building maintenance purpose (Material Review & Approve) (GUARD HOUSE) | 6d | 2026-09-03 | 2026-09-09 | WAD.S.3150 | 7d |

| ID | WBS | Task | Duration | Start | Finish | Predecessors | Total float |
| --- | --- | --- | --- | --- | --- | --- | --- |
| WAD.S.3610 |  | overflow galvanized steel roof scupper (Material Review & Approve) (GUARD HOUSE) | 6d | 2026-09-03 | 2026-09-09 | WAD.S.3160 | 7d |
| WAD.S.3620 |  | counter desk (Material Review & Approve) (GUARD HOUSE) | 6d | 2026-09-03 | 2026-09-09 | WAD.S.3170 | 5d |
| WAD.S.3630 |  | install ceramic wall tiles (Material Review & Approve) (GUARD HOUSE) | 6d | 2026-09-03 | 2026-09-09 | WAD.S.3180 | 7d |
| WAD.S.3640 |  | PANEL SIGNAGE (Material Review & Approve) (GUARD HOUSE) | 6d | 2026-09-03 | 2026-09-09 | WAD.S.3190 | 6d |
| WAD.S.3650 |  | COMMUNICATIONS BACKBONE CABLING (Material Review & Approve) (GUARD HOUSE) | 6d | 2026-09-03 | 2026-09-09 | WAD.S.3200 | 9d |
| WAD.S.3660 |  | card reader IN/OUT (Material Review & Approve) (GUARD HOUSE) | 6d | 2026-09-03 | 2026-09-09 | WAD.S.3210 | 4d |
| WAD.S.3670 |  | WATER SUPPLY SYSTEM (Material Review & Approve) (GUARD HOUSE) | 6d | 2026-09-03 | 2026-09-09 | WAD.S.3220 | 6d |
| WAD.S.3680 |  | SEWER AND DRAINAGE SYSTEM (Material Review & Approve) (GUARD HOUSE) | 6d | 2026-09-03 | 2026-09-09 | WAD.S.3230 | 5d |
| WAD.S.3690 |  | SUPPLY AND INSTALL PLUMBING FIXTURES (Material Review & Approve) (GUARD HOUSE) | 6d | 2026-09-03 | 2026-09-09 | WAD.S.3240 | 0d |
| WAD.S.3700 |  | HEATING, VENTILATION AND AIR CONDITIONING (Material Review & Approve) (GUARD HOUSE) | 6d | 2026-09-03 | 2026-09-09 | WAD.S.3250 | 5d |
| WAD.S.3770 |  | heavy steel cover with frame for tanks (Material Review & Approve) (GUARD HOUSE) | 6d | 2026-09-05 | 2026-09-10 | WAD.S.3300 | 8d |
| WAD.S.3780 |  | HOLLOW METAL DOORS AND FRAMES (Material Review & Approve) (GUARD HOUSE) | 6d | 2026-09-05 | 2026-09-10 | WAD.S.3310 | 7d |
| WAD.S.3790 |  | ALUMINIUM DOORS (Material Review & Approve) (GUARD HOUSE) | 6d | 2026-09-05 | 2026-09-10 | WAD.S.3320 | 8d |
| WAD.S.3800 |  | TOILET AND BATH ACCESSROIES (Material Review & Approve) (GUARD HOUSE) | 6d | 2026-09-05 | 2026-09-10 | WAD.S.3330 | 8d |
| WAD.S.3810 |  | Waste Receptacle (Material Review & Approve) (GUARD HOUSE) | 6d | 2026-09-05 | 2026-09-10 | WAD.S.3340 | 5d |
| WAD.S.3820 |  | LIGHTING FIXTURES (Material Review & Approve) (GUARD HOUSE) | 6d | 2026-09-05 | 2026-09-10 | WAD.S.3350 | 6d |
| WAD.S.3830 |  | Access control panel (Material Review & Approve) (GUARD HOUSE) | 6d | 2026-09-05 | 2026-09-10 | WAD.S.3360 | 5d |
| WAD.S.3840 |  | VIDEO SURVEILLANCE (Material Review & Approve) (GUARD HOUSE) | 6d | 2026-09-05 | 2026-09-10 | WAD.S.3370 | 3d |
| WAD.S.4040 |  | aluminum framed double glazed windows (Material Review & Approve) (GUARD HOUSE) | 6d | 2026-09-07 | 2026-09-13 | WAD.S.3560 | 4d |
| WAD.S.4050 |  | Roller blind (Material Review & Approve) (GUARD HOUSE) | 6d | 2026-09-07 | 2026-09-13 | WAD.S.3570 | 0d |
| WAD.S.4070 |  | DATA COMMUNICATIONS (Material Review & Approve) (GUARD HOUSE) | 6d | 2026-09-07 | 2026-09-13 | WAD.S.3590 | 6d |
| WAD.S.4080 |  | COMPUTERS AND RELATED PERIPHERALS (Material Review & Approve) (GUARD HOUSE) | 6d | 2026-09-08 | 2026-09-14 | WAD.S.3710 | 5d |
|  | 7 | **Procurement** |  | 2026-07-04 | 2026-09-28 |  |  |
|  | 5 | **Fabrication & Delivery** |  | 2026-07-04 | 2026-09-28 |  |  |
|  | 1 | **Short Lead Items** |  | 2026-07-04 | 2026-09-26 |  |  |
| WAD.S.1420 |  | Backfilling Works | 4d | 2026-07-04 | 2026-07-07 | WAD.S.1080 SS, WAD.S.1380 | 25d |
| WAD.S.1430 |  | structural steel beams, posts and rods for wall fence (FENCES) | 4d | 2026-07-04 | 2026-07-07 | WAD.S.1080 SS, WAD.S.1390 | 42d |
| WAD.S.1540 |  | tubes, bolts, nuts and steel plates to strengthened the wall fence and posts (FENCES) | 3d | 2026-07-08 | 2026-07-11 | WAD.S.1080 SS, WAD.S.1440 | 44d |
| WAD.S.2180 |  | bitumen waterproofing paint on concrete surfaces (FENCES) | 4d | 2026-07-13 | 2026-07-16 | WAD.S.1080 SS, WAD.S.1550 | 25d |
| WAD.S.2970 |  | Manhole depth not exceeding 4.0m (GUARD HOUSE) | 8d | 2026-08-26 | 2026-09-03 | WAD.S.1080 SS, WAD.S.2680 | 19d |
| WAD.S.3280 |  | GRP Pipes laid in trenches(Fabrication & Delivery) (GUARD HOUSE) | 6d | 2026-08-31 | 2026-09-06 | WAD.S.1080 SS, WAD.S.2810 | 0d |
| WAD.S.3290 |  | 100 mm GRP pipe service connections (GUARD HOUSE) | 6d | 2026-08-31 | 2026-09-06 | WAD.S.1080 SS, WAD.S.2820 | 3d |
| WAD.S.3730 |  | Concrete Masonry (200mm thick ) (GUARD HOUSE) | 3d | 2026-09-05 | 2026-09-07 | WAD.S.1080 SS, WAD.S.2990 | 24d |
| WAD.S.3890 |  | Concrete Masonry (100mm thick ) (GUARD HOUSE) | 2d | 2026-09-06 | 2026-09-07 | WAD.S.1080 SS, WAD.S.3120 | 24d |
| WAD.S.3910 |  | SIDEWALKS AND CURBS (GUARD HOUSE) | 7d | 2026-09-06 | 2026-09-13 | WAD.S.1080 SS, WAD.S.3140 | 5d |
| WAD.S.4160 |  | GROUNDING (GUARD HOUSE) | 3d | 2026-09-09 | 2026-09-12 | WAD.S.1080 SS, WAD.S.3540 | 20d |
| WAD.S.4170 |  | ROAD WORKS (GUARD HOUSE) | 6d | 2026-09-09 | 2026-09-15 | WAD.S.1080 SS, WAD.S.3550 | 4d |
| WAD.S.4780 |  | FIRE PROTECTION SYSTEM (fire extinguisher) (GUARD HOUSE) | 5d | 2026-09-14 | 2026-09-19 | WAD.S.1080 SS, WAD.S.4060 | 14d |
| WAD.S.5080 |  | UNDERGROUND DISTRIBUTION SYSTEM (GUARD HOUSE) | 3d | 2026-09-23 | 2026-09-26 | WAD.S.1080 SS, WAD.S.4840 | 8d |
|  | 2 | **Long Lead Items** |  | 2026-07-27 | 2026-09-28 |  |  |
| WAD.S.1570 |  | fix galvanized steel chain link gate including all necessary associated (FENCES) | 15d | 2026-07-27 | 2026-08-12 | WAD.S.1080 SS, WAD.S.1480 | 11d |
| WAD.S.2170 |  | Intrusion Detection system including processor control units items and joints (FENCES) | 12d | 2026-08-01 | 2026-08-13 | WAD.S.1080 SS, WAD.S.1510 | 11d |
| WAD.S.2260 |  | Handholes\ Manholes (FENCES) | 12d | 2026-08-05 | 2026-08-18 | WAD.S.1080 SS, WAD.S.1650 | 33d |
| WAD.S.2470 |  | structural steel members and plates for main sliding gates (FENCES) | 14d | 2026-08-09 | 2026-08-24 | WAD.S.1080 SS, WAD.S.2190 | 1d |
| WAD.S.3740 |  | ceramic floor tiles (GUARD HOUSE) | 12d | 2026-09-05 | 2026-09-17 | WAD.S.1080 SS, WAD.S.3000 | 8d |
| WAD.S.3750 |  | install Riyadh stone cladding (GUARD HOUSE) | 12d | 2026-09-05 | 2026-09-17 | WAD.S.1080 SS, WAD.S.3010 | 9d |
| WAD.S.3760 |  | UPS (GUARD HOUSE) | 18d | 2026-09-05 | 2026-09-24 | WAD.S.1080 SS, WAD.S.3020 | 7d |
| WAD.S.3900 |  | Panel boards (GUARD HOUSE) | 18d | 2026-09-06 | 2026-09-26 | WAD.S.1080 SS, WAD.S.3130 | 8d |
| WAD.S.4120 |  | PANTRY CABINET (GUARD HOUSE) | 15d | 2026-09-09 | 2026-09-26 | WAD.S.1080 SS, WAD.S.3500 | 6d |
| WAD.S.4130 |  | 20mm thick black granite (GUARD HOUSE) | 13d | 2026-09-09 | 2026-09-23 | WAD.S.1080 SS, WAD.S.3510 | 10d |
| WAD.S.4140 |  | Workstation chair (GUARD HOUSE) | 16d | 2026-09-09 | 2026-09-27 | WAD.S.1080 SS, WAD.S.3520 | 6d |
| WAD.S.4150 |  | Safety Disconnect Switches complete with busbar, frame box (GUARD HOUSE) | 17d | 2026-09-09 | 2026-09-28 | WAD.S.1080 SS, WAD.S.3530 | 6d |
| WAD.S.4510 |  | folding & sliding mounter combination ladder for building maintenance purpose (GUARD HOUSE) | 13d | 2026-09-10 | 2026-09-24 | WAD.S.1080 SS, WAD.S.3600 | 7d |
| WAD.S.4520 |  | overflow galvanized steel roof scupper (GUARD HOUSE) | 13d | 2026-09-10 | 2026-09-24 | WAD.S.1080 SS, WAD.S.3610 | 7d |
| WAD.S.4530 |  | counter desk (GUARD HOUSE) | 14d | 2026-09-10 | 2026-09-26 | WAD.S.1080 SS, WAD.S.3620 | 5d |
| WAD.S.4540 |  | install ceramic wall tiles (GUARD HOUSE) | 12d | 2026-09-10 | 2026-09-23 | WAD.S.1080 SS, WAD.S.3630 | 7d |
| WAD.S.4550 |  | PANEL SIGNAGE (GUARD HOUSE) | 14d | 2026-09-10 | 2026-09-26 | WAD.S.1080 SS, WAD.S.3640 | 6d |
| WAD.S.4560 |  | COMMUNICATIONS BACKBONE CABLING (GUARD HOUSE) | 13d | 2026-09-10 | 2026-09-24 | WAD.S.1080 SS, WAD.S.3650 | 9d |
| WAD.S.4570 |  | card reader IN/OUT (GUARD HOUSE) | 15d | 2026-09-10 | 2026-09-27 | WAD.S.1080 SS, WAD.S.3660 | 4d |
| WAD.S.4580 |  | WATER SUPPLY SYSTEM (GUARD HOUSE) | 13d | 2026-09-10 | 2026-09-24 | WAD.S.1080 SS, WAD.S.3670 | 6d |
| WAD.S.4590 |  | SEWER AND DRAINAGE SYSTEM (GUARD HOUSE) | 14d | 2026-09-10 | 2026-09-26 | WAD.S.1080 SS, WAD.S.3680 | 5d |
| WAD.S.4600 |  | SUPPLY PLUMBING FIXTURES (GUARD HOUSE) | 13d | 2026-09-10 | 2026-09-24 | WAD.S.1080 SS, WAD.S.3690 | 0d |
| WAD.S.4610 |  | HEATING, VENTILATION AND AIR CONDITIONING (GUARD HOUSE) | 14d | 2026-09-10 | 2026-09-26 | WAD.S.1080 SS, WAD.S.3700 | 5d |
| WAD.S.4620 |  | heavy steel cover with frame for tanks (GUARD HOUSE) | 13d | 2026-09-12 | 2026-09-26 | WAD.S.1080 SS, WAD.S.3770 | 8d |
| WAD.S.4630 |  | HOLLOW METAL DOORS AND FRAMES (GUARD HOUSE) | 14d | 2026-09-12 | 2026-09-27 | WAD.S.1080 SS, WAD.S.3780 | 7d |
| WAD.S.4640 |  | ALUMINIUM DOORS (GUARD HOUSE) | 13d | 2026-09-12 | 2026-09-26 | WAD.S.1080 SS, WAD.S.3790 | 8d |
| WAD.S.4650 |  | TOILET AND BATH ACCESSROIES (GUARD HOUSE) | 13d | 2026-09-12 | 2026-09-26 | WAD.S.1080 SS, WAD.S.3800 | 8d |
| WAD.S.4660 |  | Waste Receptacle (GUARD HOUSE) | 15d | 2026-09-12 | 2026-09-28 | WAD.S.1080 SS, WAD.S.3810 | 5d |
| WAD.S.4670 |  | LIGHTING FIXTURES (GUARD HOUSE) | 12d | 2026-09-12 | 2026-09-24 | WAD.S.1080 SS, WAD.S.3820 | 6d |
| WAD.S.4680 |  | Access control panel (GUARD HOUSE) | 14d | 2026-09-12 | 2026-09-27 | WAD.S.1080 SS, WAD.S.3830 | 5d |

| ID | WBS | Task | Duration | Start | Finish | Predecessors | Total float |
| --- | --- | --- | --- | --- | --- | --- | --- |
| WAD.S.4690 |  | VIDEO SURVEILLANCE (GUARD HOUSE) | 14d | 2026-09-12 | 2026-09-27 | WAD.S.1080 SS, WAD.S.3840 | 3d |
| WAD.S.4760 |  | aluminum framed double glazed windows (GUARD HOUSE) | 12d | 2026-09-14 | 2026-09-27 | WAD.S.1080 SS, WAD.S.4040 | 4d |
| WAD.S.4770 |  | Roller blind (GUARD HOUSE) | 12d | 2026-09-14 | 2026-09-27 | WAD.S.1080 SS, WAD.S.4050 | 0d |
| WAD.S.4790 |  | DATA COMMUNICATIONS (GUARD HOUSE) | 13d | 2026-09-14 | 2026-09-28 | WAD.S.1080 SS, WAD.S.4070 | 6d |
| WAD.S.4820 |  | COMPUTERS AND RELATED PERIPHERALS (GUARD HOUSE) | 10d | 2026-09-15 | 2026-09-26 | WAD.S.1080 SS, WAD.S.4080 | 5d |
|  | 8 | **Construction** |  | 2026-06-27 | 2026-10-05 |  |  |
|  | 1 | **FENCES** |  | 2026-06-27 | 2026-10-05 |  |  |
|  | 1 | **SITE WORKS** |  | 2026-06-27 | 2026-08-26 |  |  |
| WAD.S.1340 |  | Demolition Works | 10d | 2026-06-27 | 2026-07-07 | WAD.S.1010, WAD.S.1330 FS+12d | 0d |
| WAD.S.1370 |  | Excavation Works | 15d | 2026-07-08 | 2026-07-25 | WAD.S.1340 | 0d |
| WAD.S.1530 |  | Backfilling Works Before Foundation | 18d | 2026-07-26 | 2026-08-15 | WAD.S.1370, WAD.S.1420 | 10d |
| WAD.S.3380 |  | Backfilling Works After Foundation | 5d | 2026-08-22 | 2026-08-26 | WAD.S.1560, WAD.S.2330 | 34d |
|  | 2 | **CONCRETE WORKS** |  | 2026-07-26 | 2026-09-12 |  |  |
|  | 1 | **Part 1** |  | 2026-07-26 | 2026-08-18 |  |  |
| WAD.S.1560 |  | cast in place reinforced concrete for the sub-structures - Part 1 | 21d | 2026-07-26 | 2026-08-18 | WAD.S.1370 | 0d |
|  | 2 | **Part 2** |  | 2026-08-19 | 2026-09-12 |  |  |
| WAD.S.2720 |  | cast in place reinforced concrete for the sub-structures - Part 2 | 21d | 2026-08-19 | 2026-09-12 | WAD.S.1560 | 0d |
|  | 3 | **THERMAL & MOISTURE PROTECTION** |  | 2026-07-28 | 2026-09-14 |  |  |
|  | 1 | **Part 1** |  | 2026-07-28 | 2026-08-20 |  |  |
| WAD.S.2330 |  | Applying 2 coats of bitumen waterproofing paint on concrete surfaces - Part 1 | 21d | 2026-07-28 | 2026-08-20 | WAD.S.2180, WAD.S.1560 FF+2d | 16d |
|  | 2 | **Part 2** |  | 2026-08-22 | 2026-09-14 |  |  |
| WAD.S.3420 |  | Applying 2 coats of bitumen waterproofing paint on concrete surfaces - Part 2 | 21d | 2026-08-22 | 2026-09-14 | WAD.S.2330 | 16d |
|  | 6 | **SPECIAL CONSTRUCTION- STRUCTURAL STEEL** |  | 2026-08-25 | 2026-10-05 |  |  |
|  | 1 | **Part 1** |  | 2026-08-25 | 2026-10-05 |  |  |
| WAD.S.2870 |  | install structural steel beams, posts and rods for wall fence - Part 1 | 21d | 2026-08-25 | 2026-09-17 | WAD.S.1430, WAD.S.1560 SS, WAD.S.1570, WAD.S.2470 | 1d |
| WAD.S.3260 |  | Install tubes, bolts, nuts and steel plates to strengthened the wall fence and posts - Part 1 | 21d | 2026-08-31 | 2026-09-23 | WAD.S.2870 SS+5d, WAD.S.1540 | 1d |
| WAD.S.3870 |  | fix galvanized steel chain link fence wall; including steel tube framing and posts, turn buckle - Part 1 | 21d | 2026-09-06 | 2026-09-29 | WAD.S.3260 SS+5d | 1d |
| WAD.S.4720 |  | galvanized steel chain link gates Installation - Part 1 | 20d | 2026-09-13 | 2026-10-05 | WAD.S.3870 SS+5d, WAD.S.2720 | 0d |
|  | 2 | **Part 2** |  | 2026-08-25 | 2026-10-05 |  |  |
| WAD.S.2920 |  | install structural steel beams, posts and rods for wall fence - Part 2 | 21d | 2026-08-25 | 2026-09-17 | WAD.S.2870 SS | 8d |
| WAD.S.3430 |  | Install tubes, bolts, nuts and steel plates to strengthened the wall fence and posts - Part 2 | 21d | 2026-08-31 | 2026-09-23 | WAD.S.3260 SS | 7d |
| WAD.S.3950 |  | fix galvanized steel chain link fence wall; including steel tube framing and posts, turn buckle - Part 2 | 21d | 2026-09-06 | 2026-09-29 | WAD.S.3870 SS | 5d |
| WAD.S.4730 |  | galvanized steel chain link gates Installation - Part 2 | 20d | 2026-09-13 | 2026-10-05 | WAD.S.4720 SS | 0d |
|  | 8 | **ELECTRICAL WORKS** |  | 2026-08-16 | 2026-09-23 |  |  |
| WAD.S.2640 |  | Intrusion Detection system including processor control units items and joints - 1st Fix | 9d | 2026-08-16 | 2026-08-25 | WAD.S.1530, WAD.S.2170 | 10d |
| WAD.S.2950 |  | Fiber Optic Outdoor Cable | 8d | 2026-08-26 | 2026-09-03 | WAD.S.2640 | 10d |
| WAD.S.2960 |  | Road crossing ducts for Fiber Optic Cable | 7d | 2026-08-26 | 2026-09-02 | WAD.S.2640 | 25d |
| WAD.S.2980 |  | install 50mm diameter high-density polyethylene (HDPE) pipe including the require pipe fittings for connection, | 8d | 2026-08-29 | 2026-09-06 | WAD.S.2960 SS+2d, WAD.S.2260 | 25d |
| WAD.S.3720 |  | Fiber Optic Outdoor Cable To Close The Loop | 9d | 2026-09-05 | 2026-09-14 | WAD.S.2950 | 10d |
| WAD.S.4810 |  | Handholes\ Manholes | 8d | 2026-09-15 | 2026-09-23 | WAD.S.3720 | 10d |
|  | 4 | **ELECTRICAL GATE BARRIER** |  | 2026-09-15 | 2026-09-23 |  |  |
| WAD.S.4830 |  | Install, Electrical gate barrier complete (cables, conduits, pipes, pulling cables in the conduits) | 8d | 2026-09-15 | 2026-09-23 | WAD.S.3720 | 10d |
|  | 2 | **GUARD HOUSE 1** |  | 2026-07-19 | 2026-10-01 |  |  |
|  | 1 | **SITE WORKS** |  | 2026-07-19 | 2026-09-21 |  |  |
|  | 4 | **Guard Rooms & Gates** |  | 2026-07-19 | 2026-08-06 |  |  |
| WAD.S.1450 |  | Excavation for guard rooms | 8d | 2026-07-19 | 2026-07-27 | WAD.S.1080 FS+60d | 0d |
| WAD.S.1590 |  | Replacment Under Foundation | 2d | 2026-07-28 | 2026-07-29 | WAD.S.1450 | 0d |
| WAD.S.2270 |  | Backfilling Under G.Beam | 2d | 2026-08-05 | 2026-08-06 | WAD.S.1820 | 7d |
| WAD.S.2280 |  | Backfilling Under S.O.G | 2d | 2026-08-05 | 2026-08-06 | WAD.S.1820 | 29d |
|  | 5 | **Guard Rooms & Gates (CONCRETE Works)** |  | 2026-07-28 | 2026-09-21 |  |  |
| WAD.S.1600 |  | 50 mm thickness lean concrete under the foundation. | 3d | 2026-07-28 | 2026-07-30 | WAD.S.1590 SS | 0d |
| WAD.S.1820 |  | Isolated Footings & Column Neck | 5d | 2026-07-30 | 2026-08-04 | WAD.S.1600 SS+2d | 0d |
| WAD.S.2340 |  | 50 mm thickness lean concrete under grade beams. | 3d | 2026-08-08 | 2026-08-10 | WAD.S.2270 | 7d |
| WAD.S.2600 |  | Grade beams | 5d | 2026-08-11 | 2026-08-16 | WAD.S.2340 | 7d |
| WAD.S.2650 |  | Columns | 4d | 2026-08-17 | 2026-08-20 | WAD.S.2600 | 7d |
| WAD.S.2710 |  | Raft and R.C. walls | 5d | 2026-08-19 | 2026-08-24 | WAD.S.2650 SS+2d | 7d |
| WAD.S.2750 |  | Roof Slab | 8d | 2026-08-22 | 2026-08-30 | WAD.S.2760 SS, WAD.S.2650 | 7d |
| WAD.S.2760 |  | Beams | 8d | 2026-08-22 | 2026-08-30 | WAD.S.2650 | 7d |
| WAD.S.3390 |  | Provide and cast concrete floor slab on grade | 5d | 2026-08-31 | 2026-09-05 | WAD.S.2600 SS+2d, WAD.S.2280, WAD.S.2760 | 9d |
| WAD.S.3400 |  | Concrete Pad | 3d | 2026-08-31 | 2026-09-02 | WAD.S.2760 | 11d |
| WAD.S.3410 |  | Tanks Raft | 5d | 2026-08-31 | 2026-09-05 | WAD.S.2750 | 9d |
| WAD.S.3940 |  | Tanks Walls | 5d | 2026-09-06 | 2026-09-10 | WAD.S.3410, WAD.S.3390, WAD.S.3400 | 9d |
| WAD.S.4850 |  | Tanks Slab | 4d | 2026-09-17 | 2026-09-21 | WAD.S.3940, WAD.S.4710 | 12d |
|  | 3 | **MASONRY UNIT** |  | 2026-08-25 | 2026-08-27 |  |  |
| WAD.S.2910 |  | install Concrete Masonry Unit (CMU) for walls | 3d | 2026-08-25 | 2026-08-27 | WAD.S.2750 SS+3d, WAD.S.2710 | 7d |
|  | 6 | **THERMAL & MOISTURE PROTECTION** |  | 2026-09-06 | 2026-09-09 |  |  |
|  | 1 | **THERMAL & MOISTURE PROTECTION - Foundation** |  | 2026-09-06 | 2026-09-09 |  |  |
| WAD.S.3920 |  | apply 2 coats of bitumen waterproofing paint on concrete surface in contact with soil | 2d | 2026-09-06 | 2026-09-07 | WAD.S.3930 SS | 24d |
| WAD.S.3930 |  | install liquid applied waterproofing coating; single-component pitch modified polyurethane | 2d | 2026-09-06 | 2026-09-07 | WAD.S.2340 FS+22d | 22d |
| WAD.S.4090 |  | install geotextile sheet | 2d | 2026-09-08 | 2026-09-09 | WAD.S.3930 | 22d |

| ID | WBS | Task | Duration | Start | Finish | Predecessors | Total float |
| --- | --- | --- | --- | --- | --- | --- | --- |
|  | 7 | **ROOFING SYSTEM** |  | 2026-09-09 | 2026-09-21 |  |  |
| WAD.S.4180 |  | install liquid applied waterproofing coating single-component pitch modified polyurethane based elastomeric | 11d | 2026-09-09 | 2026-09-21 | WAD.S.3090 SS+10d | 7d |
| WAD.S.4190 |  | install 4mm thick APP modified bituminous membrane - single layer | 11d | 2026-09-09 | 2026-09-21 | WAD.S.4280 SS | 7d |
| WAD.S.4200 |  | install 75mm thick rigid insulation (extruded polystyrene) | 11d | 2026-09-09 | 2026-09-21 | WAD.S.4190 SS | 7d |
| WAD.S.4210 |  | cast in place foam concrete screed, 50mm thick minimum; laid to fall and cross fall | 11d | 2026-09-09 | 2026-09-21 | WAD.S.4200 SS | 7d |
| WAD.S.4220 |  | install 300 micron polyethylene sheet | 11d | 2026-09-09 | 2026-09-21 | WAD.S.4210 SS | 7d |
| WAD.S.4230 |  | install 50mm thick loose gravel toppings | 11d | 2026-09-09 | 2026-09-21 | WAD.S.4220 SS | 7d |
| WAD.S.4240 |  | install high density polyisocynurate cover board | 11d | 2026-09-09 | 2026-09-21 | WAD.S.4230 SS | 7d |
| WAD.S.4250 |  | install UV resistant geotextile sheet | 11d | 2026-09-09 | 2026-09-21 | WAD.S.4240 SS | 7d |
| WAD.S.4260 |  | fixing 3mm thick extruded aluminum flashing 40mm with sealant and all other accessories | 11d | 2026-09-09 | 2026-09-21 | WAD.S.4250 SS | 7d |
| WAD.S.4270 |  | install Terrazzo tiles | 11d | 2026-09-09 | 2026-09-21 | WAD.S.4260 SS | 7d |
|  | 2 | **THERMAL & MOISTURE PROTECTION - Tanks** |  | 2026-09-09 | 2026-09-21 |  |  |
| WAD.S.4280 |  | lay epoxy 2 coating for inner surfaces for bottom of the roof | 11d | 2026-09-09 | 2026-09-21 | WAD.S.4180 SS | 7d |
| WAD.S.4710 |  | install water stop for tanks according to the drawings and specification | 5d | 2026-09-12 | 2026-09-16 | WAD.S.3940 | 9d |
|  | 9 | **FINISHES** |  | 2026-08-29 | 2026-09-27 |  |  |
| WAD.S.3090 |  | install concrete plastering | 4d | 2026-08-29 | 2026-09-01 | WAD.S.2910 | 7d |
| WAD.S.4940 |  | install ceramic floor tiles | 3d | 2026-09-19 | 2026-09-21 | WAD.S.1810 FF, WAD.S.3740, WAD.S.2920 | 8d |
| WAD.S.4950 |  | install granite flooring | 2d | 2026-09-19 | 2026-09-20 | WAD.S.4940 SS | 8d |
| WAD.S.5010 |  | install granite saddles and thresholds | 3d | 2026-09-19 | 2026-09-21 | WAD.S.5040 SS, WAD.S.4710 | 8d |
| WAD.S.5020 |  | install Riyadh stone cladding | 3d | 2026-09-19 | 2026-09-21 | WAD.S.5030 FF, WAD.S.3750 | 9d |
| WAD.S.5030 |  | install 3mm steel CNC laser cut panels | 3d | 2026-09-19 | 2026-09-21 | WAD.S.5060 FF | 9d |
| WAD.S.5040 |  | gypsum board suspended ceiling | 5d | 2026-09-19 | 2026-09-23 | WAD.S.4950 SS | 8d |
| WAD.S.5060 |  | install aluminum cladding | 2d | 2026-09-20 | 2026-09-21 | WAD.S.5010 FF | 9d |
| WAD.S.5120 |  | install ceramic wall tiles | 3d | 2026-09-24 | 2026-09-27 | WAD.S.4950 SS, WAD.S.4540, WAD.S.3430 | 7d |
| WAD.S.5530 |  | install two coats of acrylic paint on internal walls | 2d | 2026-09-26 | 2026-09-27 | WAD.S.5120 FF, WAD.S.3420 | 7d |
| WAD.S.5540 |  | install two coats of acrylic paint (suitable for exterior use) on external | 2d | 2026-09-26 | 2026-09-27 | WAD.S.5530 SS | 7d |
|  | 13 | **MECHANICAL WORKS** |  | 2026-07-30 | 2026-09-29 |  |  |
|  | 1 | **MECHANICAL WORKS - 1st Fix** |  | 2026-07-30 | 2026-08-10 |  |  |
| WAD.S.1660 |  | WATER SUPPLY SYSTEM - 1st Fix | 10d | 2026-07-30 | 2026-08-10 | WAD.S.1680 SS | 0d |
| WAD.S.1670 |  | SEWER AND DRAINAGE SYSTEM - 1st Fix | 10d | 2026-07-30 | 2026-08-10 | WAD.S.1660 SS | 0d |
| WAD.S.1680 |  | IRRIGATION SYSTEM - 1st Fix | 10d | 2026-07-30 | 2026-08-10 | WAD.S.1820 SS | 0d |
| WAD.S.1710 |  | HEATING, VENTILATION AND AIR CONDITIONING - 1st Fix | 10d | 2026-07-30 | 2026-08-10 | WAD.S.1670 SS | 0d |
| WAD.S.1720 |  | Exhaust fans - 1st Fix | 10d | 2026-07-30 | 2026-08-10 | WAD.S.1710 SS | 0d |
|  | 2 | **MECHANICAL WORKS - Final Fix** |  | 2026-09-24 | 2026-09-29 |  |  |
| WAD.S.5130 |  | installation of Fire extinguishers as per drawings, specifications | 3d | 2026-09-24 | 2026-09-27 | WAD.S.1720, WAD.S.5060, WAD.S.5030, WAD.S.4270 FS+2d | 7d |
| WAD.S.5140 |  | gully traps with heavy duty cover | 3d | 2026-09-24 | 2026-09-27 | WAD.S.5130 FF | 7d |
| WAD.S.5150 |  | chamber with heavy duty cover | 3d | 2026-09-24 | 2026-09-27 | WAD.S.5140 FF | 7d |
| WAD.S.5160 |  | INSTALL PLUMBING FIXTURES | 3d | 2026-09-24 | 2026-09-27 | WAD.S.5150 FF | 7d |
| WAD.S.5910 |  | HEATING, VENTILATION AND AIR CONDITIONING - Final Fix | 3d | 2026-09-27 | 2026-09-29 | WAD.S.5160 FF, WAD.S.4610 | 5d |
| WAD.S.5920 |  | Exhaust fans - Final Fix | 3d | 2026-09-27 | 2026-09-29 | WAD.S.5910 FF | 5d |
| WAD.S.5930 |  | Bulbblers and Spreyers of IRRIGATION SYSTEM | 3d | 2026-09-27 | 2026-09-29 | WAD.S.5920 FF | 5d |
| WAD.S.5980 |  | WATER SUPPLY SYSTEM - Final Fix | 3d | 2026-09-27 | 2026-09-29 | WAD.S.5930 FF, WAD.S.4590, WAD.S.4580 | 5d |
| WAD.S.5990 |  | IRRIGATION SYSTEM - Final Fix | 3d | 2026-09-27 | 2026-09-29 | WAD.S.5980 FF | 5d |
|  | 15 | **ELECTRICAL WORKS** |  | 2026-07-30 | 2026-10-01 |  |  |
|  | 1 | **ELECTRICAL WORKS - 1st Fix** |  | 2026-07-30 | 2026-08-10 |  |  |
| WAD.S.1690 |  | LIGHTING AND POWER TYPE PANELBOARDS - 1st Fix | 10d | 2026-07-30 | 2026-08-10 | WAD.S.1720 SS | 44d |
| WAD.S.1700 |  | UPS 3KVA (installed inside the rack) - 1st Fix | 10d | 2026-07-30 | 2026-08-10 | WAD.S.1690 SS | 44d |
| WAD.S.1730 |  | power source with built-in photocell sensor for automatic electrical connection during day/light times - 1st Fix | 10d | 2026-07-30 | 2026-08-10 | WAD.S.1700 SS | 44d |
| WAD.S.1740 |  | UNDERGROUND DISTRIBUTION SYSTEM - 1st Fix | 10d | 2026-07-30 | 2026-08-10 | WAD.S.1730 SS | 44d |
| WAD.S.1750 |  | LIGHTING FIXTURES - 1st Fix | 10d | 2026-07-30 | 2026-08-10 | WAD.S.1740 SS | 44d |
| WAD.S.1760 |  | installation of Wiring devices includes switches and Receptacle outlets complete with device boxes - 1st Fix | 10d | 2026-07-30 | 2026-08-10 | WAD.S.1750 SS | 44d |
| WAD.S.1770 |  | GROUNDING - 1st Fix | 10d | 2026-07-30 | 2026-08-10 | WAD.S.1760 SS | 44d |
| WAD.S.1780 |  | card reader IN/OUT - 1st Fix | 10d | 2026-07-30 | 2026-08-10 | WAD.S.1770 SS | 44d |
| WAD.S.1790 |  | CCTV cameras - 1st Fix | 10d | 2026-07-30 | 2026-08-10 | WAD.S.1780 SS | 44d |
| WAD.S.1800 |  | Access control panel - 1st Fix | 10d | 2026-07-30 | 2026-08-10 | WAD.S.1790 SS | 44d |
| WAD.S.1810 |  | fire alarm system including wires, conduit and other materials - 1st Fix | 10d | 2026-07-30 | 2026-08-10 | WAD.S.1800 SS | 44d |
|  | 2 | **ELECTRICAL WORKS - Final Fix** |  | 2026-09-27 | 2026-10-01 |  |  |
| WAD.S.5940 |  | power source with built-in photocell sensor for automatic electrical connection during day/light times - Final Fix | 3d | 2026-09-27 | 2026-09-29 | WAD.S.5980 FF | 5d |
| WAD.S.5950 |  | LIGHTING FIXTURES - Final Fix | 3d | 2026-09-27 | 2026-09-29 | WAD.S.6140 FF, WAD.S.4670 | 5d |
| WAD.S.5960 |  | GROUNDING - Final Fix | 3d | 2026-09-27 | 2026-09-29 | WAD.S.6150 FF, WAD.S.1810, WAD.S.5020 | 5d |
| WAD.S.5970 |  | 12-Port, SMF, Fiber Optic Patch Panels; | 4d | 2026-09-27 | 2026-09-30 | WAD.S.6170 FF | 4d |
| WAD.S.6140 |  | UNDERGROUND DISTRIBUTION SYSTEM - Final Fix | 2d | 2026-09-28 | 2026-09-29 | WAD.S.5940 FF | 5d |
| WAD.S.6150 |  | installation of Wiring devices includes switches and Receptacle outlets complete with device boxes - Final Fix | 2d | 2026-09-28 | 2026-09-29 | WAD.S.5950 FF | 5d |
| WAD.S.6160 |  | card reader IN/OUT - Final Fix | 3d | 2026-09-28 | 2026-09-30 | WAD.S.5960 FF, WAD.S.4570 | 4d |
| WAD.S.6170 |  | 12-Port CAT6A UTP fully loaded patch panel | 3d | 2026-09-28 | 2026-09-30 | WAD.S.6270 FF | 4d |
| WAD.S.6180 |  | COMPUTERS AND RELATED PERIPHERALS | 3d | 2026-09-28 | 2026-09-30 | WAD.S.5970 FF, WAD.S.4820 | 4d |
| WAD.S.6190 |  | VIDEO SURVEILLANCE | 4d | 2026-09-28 | 2026-10-01 | WAD.S.6180 FF, WAD.S.4690 | 3d |
| WAD.S.6200 |  | CCTV storage system, as specified; | 4d | 2026-09-28 | 2026-10-01 | WAD.S.6290 FF | 3d |
| WAD.S.6270 |  | Access control panel - Final Fix | 2d | 2026-09-29 | 2026-09-30 | WAD.S.6160 FF, WAD.S.4680 | 4d |
| WAD.S.6280 |  | Central (Headend) System Components; | 3d | 2026-09-29 | 2026-10-01 | WAD.S.6190 FF | 3d |

| ID | WBS | Task | Duration | Start | Finish | Predecessors | Total float |
| --- | --- | --- | --- | --- | --- | --- | --- |
| WAD.S.6290 |  | VSS System, as specified; | 3d | 2026-09-29 | 2026-10-01 | WAD.S.6280 FF | 3d |
| WAD.S.6300 |  | CCTV cameras - Final Fix | 3d | 2026-09-29 | 2026-10-01 | WAD.S.6200 FF | 3d |
| WAD.S.6310 |  | ELECTRICAL GATE BARRIER | 3d | 2026-09-29 | 2026-10-01 | WAD.S.6420 FF | 3d |
| WAD.S.6320 |  | fire alarm system including wires, conduit and other materials - Final Fix | 3d | 2026-09-29 | 2026-10-01 | WAD.S.6430 FF | 3d |
| WAD.S.6330 |  | Analog addressable fire alarm control panel with battery | 3d | 2026-09-29 | 2026-10-01 | WAD.S.6320 FF | 3d |
| WAD.S.6340 |  | LIGHTING AND POWER TYPE PANELBOARDS - Final Fix | 3d | 2026-09-29 | 2026-10-01 | WAD.S.6440 FF | 3d |
| WAD.S.6420 |  | 20A , ATS ( Automatic transfer switch) for UPS | 2d | 2026-09-30 | 2026-10-01 | WAD.S.6300 FF, WAD.S.3760 | 3d |
| WAD.S.6430 |  | LIGHTNING PROTECTION | 2d | 2026-09-30 | 2026-10-01 | WAD.S.6310 FF | 3d |
| WAD.S.6440 |  | Intelligent Ionization / Photoelectric smoke and heat detector with base | 2d | 2026-09-30 | 2026-10-01 | WAD.S.6330 FF | 3d |
|  | 4 | **METALS** |  | 2026-09-26 | 2026-09-27 |  |  |
| WAD.S.5500 |  | folding & sliding mounter combination ladder for building maintenance purpose | 2d | 2026-09-26 | 2026-09-27 | WAD.S.5040, WAD.S.4510 | 7d |
| WAD.S.5510 |  | install of overflow galvanized steel roof scupper with gray color with angular secondary support | 2d | 2026-09-26 | 2026-09-27 | WAD.S.5500 SS, WAD.S.4520 | 7d |
| WAD.S.5520 |  | install heavy steel cover with frame including all necessary fixings | 2d | 2026-09-26 | 2026-09-27 | WAD.S.5510 SS | 7d |
|  | 5 | **WOODS AND PLASTICS** |  | 2026-09-27 | 2026-09-29 |  |  |
| WAD.S.5880 |  | PANTRY CABINET | 2d | 2026-09-27 | 2026-09-28 | WAD.S.5520 SS, WAD.S.4120 | 6d |
| WAD.S.5890 |  | COUNTER DESK | 3d | 2026-09-27 | 2026-09-29 | WAD.S.5880 FF, WAD.S.4530 | 5d |
|  | 8 | **DOORS & WINDOWS** |  | 2026-09-22 | 2026-09-30 |  |  |
| WAD.S.5050 |  | install hollow metal door | 4d | 2026-09-22 | 2026-09-26 | WAD.S.5010 | 8d |
| WAD.S.5900 |  | Install Aluminum Door | 3d | 2026-09-27 | 2026-09-29 | WAD.S.5890 SS | 5d |
| WAD.S.6120 |  | Install aluminum framed double glazed windows | 3d | 2026-09-28 | 2026-09-30 | WAD.S.5050 SS, WAD.S.4760 | 4d |
|  | 10 | **SPECIALTIES** |  | 2026-09-28 | 2026-10-01 |  |  |
| WAD.S.6130 |  | TOILET ACCESSROIES | 2d | 2026-09-28 | 2026-09-29 | WAD.S.5980 SS, WAD.S.5900 FF | 5d |
| WAD.S.6410 |  | PANEL SIGNAGE | 2d | 2026-09-30 | 2026-10-01 | WAD.S.6130 SS, WAD.S.6440 FF, WAD.S.4550 | 3d |
|  | 11 | **FURNISHINGS** |  | 2026-10-01 | 2026-10-01 |  |  |
| WAD.S.6450 |  | Workstation chair | 1d | 2026-10-01 | 2026-10-01 | WAD.S.6410 FF, WAD.S.4140 | 3d |
| WAD.S.6460 |  | Workstation table | 1d | 2026-10-01 | 2026-10-01 | WAD.S.6450 SS | 3d |
| WAD.S.6470 |  | Roller blind | 1d | 2026-10-01 | 2026-10-01 | WAD.S.6460 SS | 3d |
| WAD.S.6480 |  | Waste Receptacle | 1d | 2026-10-01 | 2026-10-01 | WAD.S.6470 SS, WAD.S.4660 | 3d |
|  | 3 | **GUARD HOUSE 2** |  | 2026-07-19 | 2026-09-28 |  |  |
|  | 1 | **SITE WORKS** |  | 2026-07-19 | 2026-09-21 |  |  |
|  | 4 | **Guard Rooms & Gates** |  | 2026-07-19 | 2026-08-06 |  |  |
| WAD.S.1460 |  | Excavation for guard rooms | 8d | 2026-07-19 | 2026-07-27 | WAD.S.1080 FS+60d | 0d |
| WAD.S.1610 |  | Replacment Under Foundation | 2d | 2026-07-28 | 2026-07-29 | WAD.S.1460 | 0d |
| WAD.S.2290 |  | Backfilling Under G.Beam | 2d | 2026-08-05 | 2026-08-06 | WAD.S.1990 | 0d |
| WAD.S.2300 |  | Backfilling Under S.O.G | 2d | 2026-08-05 | 2026-08-06 | WAD.S.1990 | 24d |
|  | 5 | **Guard Rooms & Gates (CONCRETE Works)** |  | 2026-07-28 | 2026-09-21 |  |  |
| WAD.S.1620 |  | 50 mm thickness lean concrete under the foundation. | 3d | 2026-07-28 | 2026-07-30 | WAD.S.1610 SS | 0d |
| WAD.S.1990 |  | Isolated Footings & Column Neck | 5d | 2026-07-30 | 2026-08-04 | WAD.S.1620 SS+2d | 0d |
| WAD.S.2400 |  | 50 mm thickness lean concrete under grade beams. | 3d | 2026-08-08 | 2026-08-10 | WAD.S.2290 | 0d |
| WAD.S.2610 |  | Grade beams | 5d | 2026-08-11 | 2026-08-16 | WAD.S.2400, WAD.S.1720 | 0d |
| WAD.S.2660 |  | Columns | 4d | 2026-08-17 | 2026-08-20 | WAD.S.2610 | 0d |
| WAD.S.2730 |  | Raft and R.C. walls | 5d | 2026-08-19 | 2026-08-24 | WAD.S.2660 SS+2d | 0d |
| WAD.S.2770 |  | Roof Slab | 8d | 2026-08-22 | 2026-08-30 | WAD.S.2780 SS, WAD.S.2660 | 0d |
| WAD.S.2780 |  | Beams | 8d | 2026-08-22 | 2026-08-30 | WAD.S.2660 | 0d |
| WAD.S.3440 |  | Provide and cast concrete floor slab on grade | 5d | 2026-08-31 | 2026-09-05 | WAD.S.2610 SS+2d, WAD.S.2300, WAD.S.2780 | 4d |
| WAD.S.3450 |  | Concrete Pad | 3d | 2026-08-31 | 2026-09-02 | WAD.S.2780 | 6d |
| WAD.S.3460 |  | Tanks Raft | 5d | 2026-08-31 | 2026-09-05 | WAD.S.2770 | 4d |
| WAD.S.3980 |  | Tanks Walls | 5d | 2026-09-06 | 2026-09-10 | WAD.S.3460, WAD.S.3440, WAD.S.3450 | 4d |
| WAD.S.4890 |  | Tanks Slab | 4d | 2026-09-17 | 2026-09-21 | WAD.S.3980, WAD.S.4740 | 12d |
|  | 3 | **MASONRY UNIT** |  | 2026-08-25 | 2026-08-27 |  |  |
| WAD.S.2930 |  | install Concrete Masonry Unit (CMU) for walls | 3d | 2026-08-25 | 2026-08-27 | WAD.S.2770 SS+3d, WAD.S.2730 | 0d |
|  | 6 | **THERMAL & MOISTURE PROTECTION** |  | 2026-09-06 | 2026-09-09 |  |  |
|  | 1 | **THERMAL & MOISTURE PROTECTION - Foundation** |  | 2026-09-06 | 2026-09-09 |  |  |
| WAD.S.3960 |  | apply 2 coats of bitumen waterproofing paint on concrete surface in contact with soil | 2d | 2026-09-06 | 2026-09-07 | WAD.S.3970 SS | 24d |
| WAD.S.3970 |  | install liquid applied waterproofing coating; single-component pitch modified polyurethane | 2d | 2026-09-06 | 2026-09-07 | WAD.S.2400 FS+22d | 22d |
| WAD.S.4100 |  | install geotextile sheet | 2d | 2026-09-08 | 2026-09-09 | WAD.S.3970 | 22d |
|  | 7 | **ROOFING SYSTEM** |  | 2026-09-09 | 2026-09-21 |  |  |
| WAD.S.4290 |  | install liquid applied waterproofing coating single-component pitch modified polyurethane based elastomeric | 11d | 2026-09-09 | 2026-09-21 | WAD.S.3100 SS+10d | 0d |
| WAD.S.4300 |  | install 4mm thick APP modified bituminous membrane - single layer | 11d | 2026-09-09 | 2026-09-21 | WAD.S.4390 SS | 0d |
| WAD.S.4310 |  | install 75mm thick rigid insulation (extruded polystyrene) | 11d | 2026-09-09 | 2026-09-21 | WAD.S.4300 SS | 0d |
| WAD.S.4320 |  | cast in place foam concrete screed, 50mm thick minimum; laid to fall and cross fall | 11d | 2026-09-09 | 2026-09-21 | WAD.S.4310 SS | 0d |
| WAD.S.4330 |  | install 300 micron polyethylene sheet | 11d | 2026-09-09 | 2026-09-21 | WAD.S.4320 SS | 0d |
| WAD.S.4340 |  | install 50mm thick loose gravel toppings | 11d | 2026-09-09 | 2026-09-21 | WAD.S.4330 SS | 0d |
| WAD.S.4350 |  | install high density polyisocynurate cover board | 11d | 2026-09-09 | 2026-09-21 | WAD.S.4340 SS | 0d |
| WAD.S.4360 |  | install UV resistant geotextile sheet | 11d | 2026-09-09 | 2026-09-21 | WAD.S.4350 SS | 0d |
| WAD.S.4370 |  | fixing 3mm thick extruded aluminum flashing 40mm with sealant and all other accessories | 11d | 2026-09-09 | 2026-09-21 | WAD.S.4360 SS | 0d |
| WAD.S.4380 |  | install Terrazzo tiles | 11d | 2026-09-09 | 2026-09-21 | WAD.S.4370 SS | 0d |
|  | 2 | **THERMAL & MOISTURE PROTECTION - Tanks** |  | 2026-09-09 | 2026-09-21 |  |  |
| WAD.S.4390 |  | lay epoxy 2 coating for inner surfaces for bottom of the roof | 11d | 2026-09-09 | 2026-09-21 | WAD.S.4290 SS | 0d |
| WAD.S.4740 |  | install water stop for tanks according to the drawings and specification | 5d | 2026-09-12 | 2026-09-16 | WAD.S.3980 | 4d |

| ID | WBS | Task | Duration | Start | Finish | Predecessors | Total float |
| --- | --- | --- | --- | --- | --- | --- | --- |
|  | 9 | **FINISHES** |  | 2026-08-08 | 2026-09-20 |  |  |
| WAD.S.2370 |  | install ceramic floor tiles | 3d | 2026-08-08 | 2026-08-10 | WAD.S.1980 FF | 48d |
| WAD.S.2380 |  | install granite flooring | 2d | 2026-08-08 | 2026-08-09 | WAD.S.2370 SS | 48d |
| WAD.S.2390 |  | install ceramic wall tiles | 3d | 2026-08-08 | 2026-08-10 | WAD.S.2380 SS | 48d |
| WAD.S.2520 |  | install two coats of acrylic paint on internal walls | 2d | 2026-08-09 | 2026-08-10 | WAD.S.2390 FF | 48d |
| WAD.S.2530 |  | install two coats of acrylic paint (suitable for exterior use) on external | 2d | 2026-08-09 | 2026-08-10 | WAD.S.2520 SS | 48d |
| WAD.S.3100 |  | install concrete plastering | 4d | 2026-08-29 | 2026-09-01 | WAD.S.2930 | 0d |
| WAD.S.2240 |  | gypsum board suspended ceiling | 4d | 2026-09-03 | 2026-09-07 | WAD.S.3450 | 16d |
| WAD.S.4860 |  | install granite saddles and thresholds | 3d | 2026-09-17 | 2026-09-20 | WAD.S.2240 SS, WAD.S.4740 | 4d |
| WAD.S.4870 |  | install Riyadh stone cladding | 3d | 2026-09-17 | 2026-09-20 | WAD.S.4880 FF | 4d |
| WAD.S.4880 |  | install 3mm steel CNC laser cut panels | 3d | 2026-09-17 | 2026-09-20 | WAD.S.4960 FF | 4d |
| WAD.S.4960 |  | install aluminum cladding | 2d | 2026-09-19 | 2026-09-20 | WAD.S.4860 FF | 4d |
|  | 13 | **MECHANICAL WORKS** |  | 2026-07-30 | 2026-09-28 |  |  |
|  | 1 | **MECHANICAL WORKS - 1st Fix** |  | 2026-07-30 | 2026-08-10 |  |  |
| WAD.S.1830 |  | WATER SUPPLY SYSTEM - 1st Fix | 10d | 2026-07-30 | 2026-08-10 | WAD.S.1850 SS | 39d |
| WAD.S.1840 |  | SEWER AND DRAINAGE SYSTEM - 1st Fix | 10d | 2026-07-30 | 2026-08-10 | WAD.S.1830 SS | 39d |
| WAD.S.1850 |  | IRRIGATION SYSTEM - 1st Fix | 10d | 2026-07-30 | 2026-08-10 | WAD.S.1990 SS | 39d |
| WAD.S.1880 |  | HEATING, VENTILATION AND AIR CONDITIONING - 1st Fix | 10d | 2026-07-30 | 2026-08-10 | WAD.S.1840 SS | 39d |
| WAD.S.1890 |  | Exhaust fans - 1st Fix | 10d | 2026-07-30 | 2026-08-10 | WAD.S.1880 SS | 39d |
|  | 2 | **MECHANICAL WORKS - Final Fix** |  | 2026-09-26 | 2026-09-28 |  |  |
| WAD.S.5560 |  | installation of Fire extinguishers as per drawings, specifications | 3d | 2026-09-26 | 2026-09-28 | WAD.S.1890, WAD.S.4960, WAD.S.4880, WAD.S.4380 FS+3d | 0d |
| WAD.S.5570 |  | gully traps with heavy duty cover | 3d | 2026-09-26 | 2026-09-28 | WAD.S.5560 FF | 0d |
| WAD.S.5580 |  | chamber with heavy duty cover | 3d | 2026-09-26 | 2026-09-28 | WAD.S.5570 FF | 0d |
| WAD.S.5590 |  | INSTALL PLUMBING FIXTURES | 3d | 2026-09-26 | 2026-09-28 | WAD.S.5580 FF, WAD.S.4600 | 0d |
| WAD.S.5600 |  | HEATING, VENTILATION AND AIR CONDITIONING - Final Fix | 3d | 2026-09-26 | 2026-09-28 | WAD.S.5590 FF | 0d |
| WAD.S.5610 |  | Exhaust fans - Final Fix | 3d | 2026-09-26 | 2026-09-28 | WAD.S.5600 FF | 0d |
| WAD.S.5620 |  | Bulbblers and Spreyers of IRRIGATION SYSTEM | 3d | 2026-09-26 | 2026-09-28 | WAD.S.5610 FF | 0d |
| WAD.S.5750 |  | WATER SUPPLY SYSTEM - Final Fix | 3d | 2026-09-26 | 2026-09-28 | WAD.S.5620 FF | 0d |
| WAD.S.5760 |  | IRRIGATION SYSTEM - Final Fix | 3d | 2026-09-26 | 2026-09-28 | WAD.S.5750 FF | 6d |
|  | 15 | **ELECTRICAL WORKS** |  | 2026-07-30 | 2026-09-28 |  |  |
|  | 1 | **ELECTRICAL WORKS - 1st Fix** |  | 2026-07-30 | 2026-08-10 |  |  |
| WAD.S.1860 |  | LIGHTING AND POWER TYPE PANELBOARDS - 1st Fix | 10d | 2026-07-30 | 2026-08-10 | WAD.S.1890 SS | 39d |
| WAD.S.1870 |  | UPS 3KVA (installed inside the rack) - 1st Fix | 10d | 2026-07-30 | 2026-08-10 | WAD.S.1860 SS | 39d |
| WAD.S.1900 |  | power source with built-in photocell sensor for automatic electrical connection during day/light times - 1st Fix | 10d | 2026-07-30 | 2026-08-10 | WAD.S.1870 SS | 39d |
| WAD.S.1910 |  | UNDERGROUND DISTRIBUTION SYSTEM - 1st Fix | 10d | 2026-07-30 | 2026-08-10 | WAD.S.1900 SS | 39d |
| WAD.S.1920 |  | LIGHTING FIXTURES - 1st Fix | 10d | 2026-07-30 | 2026-08-10 | WAD.S.1910 SS | 39d |
| WAD.S.1930 |  | installation of Wiring devices includes switches and Receptacle outlets complete with device boxes - 1st Fix | 10d | 2026-07-30 | 2026-08-10 | WAD.S.1920 SS | 39d |
| WAD.S.1940 |  | GROUNDING - 1st Fix | 10d | 2026-07-30 | 2026-08-10 | WAD.S.1930 SS | 39d |
| WAD.S.1950 |  | card reader IN/OUT - 1st Fix | 10d | 2026-07-30 | 2026-08-10 | WAD.S.1940 SS | 39d |
| WAD.S.1960 |  | CCTV cameras - 1st Fix | 10d | 2026-07-30 | 2026-08-10 | WAD.S.1950 SS | 39d |
| WAD.S.1970 |  | Access control panel - 1st Fix | 10d | 2026-07-30 | 2026-08-10 | WAD.S.1960 SS | 39d |
| WAD.S.1980 |  | fire alarm system including wires, conduit and other materials - 1st Fix | 10d | 2026-07-30 | 2026-08-10 | WAD.S.1970 SS | 39d |
|  | 2 | **ELECTRICAL WORKS - Final Fix** |  | 2026-09-24 | 2026-09-28 |  |  |
| WAD.S.5170 |  | 12-Port, SMF, Fiber Optic Patch Panels; | 4d | 2026-09-24 | 2026-09-28 | WAD.S.5670 FF | 0d |
| WAD.S.5180 |  | VIDEO SURVEILLANCE | 4d | 2026-09-24 | 2026-09-28 | WAD.S.5680 FF | 0d |
| WAD.S.5190 |  | CCTV storage system, as specified; | 4d | 2026-09-24 | 2026-09-28 | WAD.S.5700 FF | 0d |
| WAD.S.5630 |  | power source with built-in photocell sensor for automatic electrical connection during day/light times - Final Fix | 3d | 2026-09-26 | 2026-09-28 | WAD.S.5750 FF | 0d |
| WAD.S.5640 |  | LIGHTING FIXTURES - Final Fix | 3d | 2026-09-26 | 2026-09-28 | WAD.S.6010 FF | 0d |
| WAD.S.5650 |  | GROUNDING - Final Fix | 3d | 2026-09-26 | 2026-09-28 | WAD.S.6020 FF, WAD.S.1980, WAD.S.4870 | 0d |
| WAD.S.5660 |  | card reader IN/OUT - Final Fix | 3d | 2026-09-26 | 2026-09-28 | WAD.S.5650 FF | 0d |
| WAD.S.5670 |  | 12-Port CAT6A UTP fully loaded patch panel | 3d | 2026-09-26 | 2026-09-28 | WAD.S.6030 FF | 0d |
| WAD.S.5680 |  | COMPUTERS AND RELATED PERIPHERALS | 3d | 2026-09-26 | 2026-09-28 | WAD.S.5170 FF | 0d |
| WAD.S.5690 |  | Central (Headend) System Components; | 3d | 2026-09-26 | 2026-09-28 | WAD.S.5180 FF | 0d |
| WAD.S.5700 |  | VSS System, as specified; | 3d | 2026-09-26 | 2026-09-28 | WAD.S.5690 FF | 0d |
| WAD.S.5710 |  | CCTV cameras - Final Fix | 3d | 2026-09-26 | 2026-09-28 | WAD.S.5190 FF | 0d |
| WAD.S.5720 |  | ELECTRICAL GATE BARRIER | 3d | 2026-09-26 | 2026-09-28 | WAD.S.6040 FF | 0d |
| WAD.S.5730 |  | fire alarm system including wires, conduit and other materials - Final Fix | 3d | 2026-09-26 | 2026-09-28 | WAD.S.6050 FF | 0d |
| WAD.S.5740 |  | Analog addressable fire alarm control panel with battery | 3d | 2026-09-26 | 2026-09-28 | WAD.S.5730 FF | 0d |
| WAD.S.5770 |  | LIGHTING AND POWER TYPE PANELBOARDS - Final Fix | 3d | 2026-09-26 | 2026-09-28 | WAD.S.6060 FF | 6d |
| WAD.S.6010 |  | UNDERGROUND DISTRIBUTION SYSTEM - Final Fix | 2d | 2026-09-27 | 2026-09-28 | WAD.S.5630 FF | 0d |
| WAD.S.6020 |  | installation of Wiring devices includes switches and Receptacle outlets complete with device boxes - Final Fix | 2d | 2026-09-27 | 2026-09-28 | WAD.S.5640 FF | 0d |
| WAD.S.6030 |  | Access control panel - Final Fix | 2d | 2026-09-27 | 2026-09-28 | WAD.S.5660 FF | 0d |
| WAD.S.6040 |  | 20A , ATS ( Automatic transfer switch) for UPS | 2d | 2026-09-27 | 2026-09-28 | WAD.S.5710 FF | 0d |
| WAD.S.6050 |  | LIGHTNING PROTECTION | 2d | 2026-09-27 | 2026-09-28 | WAD.S.5720 FF | 0d |
| WAD.S.6060 |  | Intelligent Ionization / Photoelectric smoke and heat detector with base | 2d | 2026-09-27 | 2026-09-28 | WAD.S.5740 FF | 0d |
|  | 4 | **METALS** |  | 2026-09-08 | 2026-09-09 |  |  |
| WAD.S.2480 |  | folding & sliding mounter combination ladder for building maintenance purpose | 2d | 2026-09-08 | 2026-09-09 | WAD.S.2240 | 16d |
| WAD.S.2490 |  | install of overflow galvanized steel roof scupper with gray color with angular secondary support | 2d | 2026-09-08 | 2026-09-09 | WAD.S.2480 SS | 16d |
| WAD.S.2500 |  | install heavy steel cover with frame including all necessary fixings | 2d | 2026-09-08 | 2026-09-09 | WAD.S.2490 SS | 16d |
|  | 5 | **WOODS AND PLASTICS** |  | 2026-09-07 | 2026-09-09 |  |  |

| ID | WBS | Task | Duration | Start | Finish | Predecessors | Total float |
| --- | --- | --- | --- | --- | --- | --- | --- |
| WAD.S.2350 |  | COUNTER DESK | 3d | 2026-09-07 | 2026-09-09 | WAD.S.2510 FF | 16d |
| WAD.S.2510 |  | PANTRY CABINET | 2d | 2026-09-08 | 2026-09-09 | WAD.S.2500 SS | 16d |
|  | 8 | **DOORS & WINDOWS** |  | 2026-09-07 | 2026-09-12 |  |  |
| WAD.S.2360 |  | Install Aluminum Door | 3d | 2026-09-07 | 2026-09-09 | WAD.S.2350 SS | 16d |
| WAD.S.2200 |  | install hollow metal door | 4d | 2026-09-08 | 2026-09-12 | WAD.S.2510 SS | 17d |
| WAD.S.2210 |  | Install aluminum framed double glazed windows | 3d | 2026-09-08 | 2026-09-10 | WAD.S.2200 SS | 17d |
|  | 10 | **SPECIALTIES** |  | 2026-09-26 | 2026-09-28 |  |  |
| WAD.S.5550 |  | TOILET ACCESSROIES | 2d | 2026-09-26 | 2026-09-27 | WAD.S.5750 SS, WAD.S.2360 FF | 1d |
| WAD.S.6000 |  | PANEL SIGNAGE | 2d | 2026-09-27 | 2026-09-28 | WAD.S.5550 SS, WAD.S.6060 FF | 0d |
|  | 11 | **FURNISHINGS** |  | 2026-09-28 | 2026-09-28 |  |  |
| WAD.S.6210 |  | Workstation chair | 1d | 2026-09-28 | 2026-09-28 | WAD.S.6000 FF | 0d |
| WAD.S.6220 |  | Workstation table | 1d | 2026-09-28 | 2026-09-28 | WAD.S.6210 SS | 0d |
| WAD.S.6230 |  | Roller blind | 1d | 2026-09-28 | 2026-09-28 | WAD.S.6220 SS, WAD.S.4770 | 0d |
| WAD.S.6240 |  | Waste Receptacle | 1d | 2026-09-28 | 2026-09-28 | WAD.S.6230 SS | 0d |
|  | 5 | **GUARD HOUSE 3** |  | 2026-07-19 | 2026-09-28 |  |  |
|  | 1 | **SITE WORKS** |  | 2026-07-19 | 2026-09-21 |  |  |
|  | 4 | **Guard Rooms & Gates** |  | 2026-07-19 | 2026-08-06 |  |  |
| WAD.S.7380 |  | Excavation for guard rooms | 8d | 2026-07-19 | 2026-07-27 | WAD.S.1080 FS+60d | 0d |
| WAD.S.7390 |  | Replacment Under Foundation | 2d | 2026-07-28 | 2026-07-29 | WAD.S.7380 | 0d |
| WAD.S.7400 |  | Backfilling Under G.Beam | 2d | 2026-08-05 | 2026-08-06 | WAD.S.7450 | 0d |
| WAD.S.7410 |  | Backfilling Under S.O.G | 2d | 2026-08-05 | 2026-08-06 | WAD.S.7450 | 24d |
|  | 5 | **Guard Rooms & Gates (CONCRETE Works)** |  | 2026-07-28 | 2026-09-21 |  |  |
| WAD.S.7430 |  | 50 mm thickness lean concrete under the foundation. | 3d | 2026-07-28 | 2026-07-30 | WAD.S.7390 SS | 0d |
| WAD.S.7450 |  | Isolated Footings & Column Neck | 5d | 2026-07-30 | 2026-08-04 | WAD.S.7430 SS+2d | 0d |
| WAD.S.7420 |  | 50 mm thickness lean concrete under grade beams. | 3d | 2026-08-08 | 2026-08-10 | WAD.S.7400 | 0d |
| WAD.S.7460 |  | Grade beams | 5d | 2026-08-11 | 2026-08-16 | WAD.S.7420, WAD.S.1720 | 0d |
| WAD.S.7470 |  | Columns | 4d | 2026-08-17 | 2026-08-20 | WAD.S.7460 | 0d |
| WAD.S.7510 |  | Raft and R.C. walls | 5d | 2026-08-19 | 2026-08-24 | WAD.S.7470 SS+2d | 0d |
| WAD.S.7490 |  | Roof Slab | 8d | 2026-08-22 | 2026-08-30 | WAD.S.7500 SS, WAD.S.7470 | 0d |
| WAD.S.7500 |  | Beams | 8d | 2026-08-22 | 2026-08-30 | WAD.S.7470 | 0d |
| WAD.S.7440 |  | Provide and cast concrete floor slab on grade | 5d | 2026-08-31 | 2026-09-05 | WAD.S.7460 SS+2d, WAD.S.7410, WAD.S.7500 | 4d |
| WAD.S.7480 |  | Concrete Pad | 3d | 2026-08-31 | 2026-09-02 | WAD.S.7500 | 6d |
| WAD.S.7520 |  | Tanks Raft | 5d | 2026-08-31 | 2026-09-05 | WAD.S.7490 | 4d |
| WAD.S.7530 |  | Tanks Walls | 5d | 2026-09-06 | 2026-09-10 | WAD.S.7520, WAD.S.7440, WAD.S.7480 | 4d |
| WAD.S.7540 |  | Tanks Slab | 4d | 2026-09-17 | 2026-09-21 | WAD.S.7530, WAD.S.6600, WAD.S.2210 | 12d |
|  | 3 | **MASONRY UNIT** |  | 2026-08-25 | 2026-08-27 |  |  |
| WAD.S.6500 |  | install Concrete Masonry Unit (CMU) for walls | 3d | 2026-08-25 | 2026-08-27 | WAD.S.7490 SS+3d, WAD.S.7510 | 0d |
|  | 6 | **THERMAL & MOISTURE PROTECTION** |  | 2026-09-06 | 2026-09-09 |  |  |
|  | 1 | **THERMAL & MOISTURE PROTECTION - Foundation** |  | 2026-09-06 | 2026-09-09 |  |  |
| WAD.S.6560 |  | apply 2 coats of bitumen waterproofing paint on concrete surface in contact with soil | 2d | 2026-09-06 | 2026-09-07 | WAD.S.6580 SS | 24d |
| WAD.S.6580 |  | install liquid applied waterproofing coating; single-component pitch modified polyurethane | 2d | 2026-09-06 | 2026-09-07 | WAD.S.7420 FS+22d | 22d |
| WAD.S.6590 |  | install geotextile sheet | 2d | 2026-09-08 | 2026-09-09 | WAD.S.6580 | 22d |
|  | 7 | **ROOFING SYSTEM** |  | 2026-09-09 | 2026-09-21 |  |  |
| WAD.S.6570 |  | install liquid applied waterproofing coating single-component pitch modified polyurethane based elastomeric | 11d | 2026-09-09 | 2026-09-21 | WAD.S.6760 SS+10d | 0d |
| WAD.S.6610 |  | install 4mm thick APP modified bituminous membrane - single layer | 11d | 2026-09-09 | 2026-09-21 | WAD.S.7370 SS | 0d |
| WAD.S.6620 |  | install 75mm thick rigid insulation (extruded polystyrene) | 11d | 2026-09-09 | 2026-09-21 | WAD.S.6610 SS | 0d |
| WAD.S.6630 |  | cast in place foam concrete screed, 50mm thick minimum; laid to fall and cross fall | 11d | 2026-09-09 | 2026-09-21 | WAD.S.6620 SS | 0d |
| WAD.S.6640 |  | install 300 micron polyethylene sheet | 11d | 2026-09-09 | 2026-09-21 | WAD.S.6630 SS | 0d |
| WAD.S.6650 |  | install 50mm thick loose gravel toppings | 11d | 2026-09-09 | 2026-09-21 | WAD.S.6640 SS | 0d |
| WAD.S.6660 |  | install high density polyisocynurate cover board | 11d | 2026-09-09 | 2026-09-21 | WAD.S.6650 SS | 0d |
| WAD.S.6670 |  | install UV resistant geotextile sheet | 11d | 2026-09-09 | 2026-09-21 | WAD.S.6660 SS | 0d |
| WAD.S.6680 |  | fixing 3mm thick extruded aluminum flashing 40mm with sealant and all other accessories | 11d | 2026-09-09 | 2026-09-21 | WAD.S.6670 SS | 0d |
| WAD.S.6690 |  | install Terrazzo tiles | 11d | 2026-09-09 | 2026-09-21 | WAD.S.6680 SS | 0d |
|  | 2 | **THERMAL & MOISTURE PROTECTION - Tanks** |  | 2026-09-09 | 2026-09-21 |  |  |
| WAD.S.7370 |  | lay epoxy 2 coating for inner surfaces for bottom of the roof | 11d | 2026-09-09 | 2026-09-21 | WAD.S.6570 SS | 0d |
| WAD.S.6600 |  | install water stop for tanks according to the drawings and specification | 5d | 2026-09-12 | 2026-09-16 | WAD.S.7530 | 4d |
|  | 9 | **FINISHES** |  | 2026-08-08 | 2026-09-20 |  |  |
| WAD.S.6730 |  | install ceramic floor tiles | 3d | 2026-08-08 | 2026-08-10 | WAD.S.7360 FF | 2d |
| WAD.S.6740 |  | install granite flooring | 2d | 2026-08-08 | 2026-08-09 | WAD.S.6730 SS | 2d |
| WAD.S.6770 |  | install ceramic wall tiles | 3d | 2026-08-08 | 2026-08-10 | WAD.S.6740 SS | 2d |
| WAD.S.6780 |  | install two coats of acrylic paint on internal walls | 2d | 2026-08-09 | 2026-08-10 | WAD.S.6770 FF | 2d |
| WAD.S.6790 |  | install two coats of acrylic paint (suitable for exterior use) on external | 2d | 2026-08-09 | 2026-08-10 | WAD.S.6780 SS | 2d |
| WAD.S.6760 |  | install concrete plastering | 4d | 2026-08-29 | 2026-09-01 | WAD.S.6500 | 0d |
| WAD.S.6830 |  | gypsum board suspended ceiling | 4d | 2026-09-03 | 2026-09-07 | WAD.S.7480 | 13d |
| WAD.S.6750 |  | install granite saddles and thresholds | 3d | 2026-09-17 | 2026-09-20 | WAD.S.6830 SS, WAD.S.6600 | 4d |
| WAD.S.6800 |  | install Riyadh stone cladding | 3d | 2026-09-17 | 2026-09-20 | WAD.S.6820 FF | 4d |
| WAD.S.6820 |  | install 3mm steel CNC laser cut panels | 3d | 2026-09-17 | 2026-09-20 | WAD.S.6810 FF | 4d |
| WAD.S.6810 |  | install aluminum cladding | 2d | 2026-09-19 | 2026-09-20 | WAD.S.6750 FF | 4d |
|  | 13 | **MECHANICAL WORKS** |  | 2026-07-30 | 2026-09-28 |  |  |
|  | 1 | **MECHANICAL WORKS - 1st Fix** |  | 2026-07-30 | 2026-08-10 |  |  |

| ID | WBS | Task | Duration | Start | Finish | Predecessors | Total float |
| --- | --- | --- | --- | --- | --- | --- | --- |
| WAD.S.6910 |  | WATER SUPPLY SYSTEM - 1st Fix | 10d | 2026-07-30 | 2026-08-10 | WAD.S.6980 SS | 2d |
| WAD.S.6920 |  | SEWER AND DRAINAGE SYSTEM - 1st Fix | 10d | 2026-07-30 | 2026-08-10 | WAD.S.6910 SS | 2d |
| WAD.S.6980 |  | IRRIGATION SYSTEM - 1st Fix | 10d | 2026-07-30 | 2026-08-10 | WAD.S.7450 SS | 2d |
| WAD.S.7260 |  | HEATING, VENTILATION AND AIR CONDITIONING - 1st Fix | 10d | 2026-07-30 | 2026-08-10 | WAD.S.6920 SS | 2d |
| WAD.S.7270 |  | Exhaust fans - 1st Fix | 10d | 2026-07-30 | 2026-08-10 | WAD.S.7260 SS | 2d |
|  | 2 | **MECHANICAL WORKS - Final Fix** |  | 2026-09-26 | 2026-09-28 |  |  |
| WAD.S.6900 |  | installation of Fire extinguishers as per drawings, specifications | 3d | 2026-09-26 | 2026-09-28 | WAD.S.7270, WAD.S.6810, WAD.S.6820, WAD.S.6690 FS+3d | 0d |
| WAD.S.6930 |  | gully traps with heavy duty cover | 3d | 2026-09-26 | 2026-09-28 | WAD.S.6900 FF | 0d |
| WAD.S.6940 |  | chamber with heavy duty cover | 3d | 2026-09-26 | 2026-09-28 | WAD.S.6930 FF | 0d |
| WAD.S.6950 |  | INSTALL PLUMBING FIXTURES | 3d | 2026-09-26 | 2026-09-28 | WAD.S.6940 FF, WAD.S.4600 | 0d |
| WAD.S.6960 |  | HEATING, VENTILATION AND AIR CONDITIONING - Final Fix | 3d | 2026-09-26 | 2026-09-28 | WAD.S.6950 FF | 0d |
| WAD.S.6970 |  | Exhaust fans - Final Fix | 3d | 2026-09-26 | 2026-09-28 | WAD.S.6960 FF | 0d |
| WAD.S.6990 |  | Bulbblers and Spreyers of IRRIGATION SYSTEM | 3d | 2026-09-26 | 2026-09-28 | WAD.S.6970 FF | 0d |
| WAD.S.7230 |  | WATER SUPPLY SYSTEM - Final Fix | 3d | 2026-09-26 | 2026-09-28 | WAD.S.6990 FF | 0d |
| WAD.S.7240 |  | IRRIGATION SYSTEM - Final Fix | 3d | 2026-09-26 | 2026-09-28 | WAD.S.7230 FF | 6d |
|  | 15 | **ELECTRICAL WORKS** |  | 2026-07-30 | 2026-09-28 |  |  |
|  | 1 | **ELECTRICAL WORKS - 1st Fix** |  | 2026-07-30 | 2026-08-10 |  |  |
| WAD.S.7000 |  | LIGHTING AND POWER TYPE PANELBOARDS - 1st Fix | 10d | 2026-07-30 | 2026-08-10 | WAD.S.7270 SS | 2d |
| WAD.S.7010 |  | UPS 3KVA (installed inside the rack) - 1st Fix | 10d | 2026-07-30 | 2026-08-10 | WAD.S.7000 SS | 2d |
| WAD.S.7280 |  | power source with built-in photocell sensor for automatic electrical connection during day/light times - 1st Fix | 10d | 2026-07-30 | 2026-08-10 | WAD.S.7010 SS | 2d |
| WAD.S.7290 |  | UNDERGROUND DISTRIBUTION SYSTEM - 1st Fix | 10d | 2026-07-30 | 2026-08-10 | WAD.S.7280 SS | 2d |
| WAD.S.7300 |  | LIGHTING FIXTURES - 1st Fix | 10d | 2026-07-30 | 2026-08-10 | WAD.S.7290 SS | 2d |
| WAD.S.7310 |  | installation of Wiring devices includes switches and Receptacle outlets complete with device boxes - 1st Fix | 10d | 2026-07-30 | 2026-08-10 | WAD.S.7300 SS | 2d |
| WAD.S.7320 |  | GROUNDING - 1st Fix | 10d | 2026-07-30 | 2026-08-10 | WAD.S.7310 SS | 2d |
| WAD.S.7330 |  | card reader IN/OUT - 1st Fix | 10d | 2026-07-30 | 2026-08-10 | WAD.S.7320 SS | 2d |
| WAD.S.7340 |  | CCTV cameras - 1st Fix | 10d | 2026-07-30 | 2026-08-10 | WAD.S.7330 SS | 2d |
| WAD.S.7350 |  | Access control panel - 1st Fix | 10d | 2026-07-30 | 2026-08-10 | WAD.S.7340 SS | 2d |
| WAD.S.7360 |  | fire alarm system including wires, conduit and other materials - 1st Fix | 10d | 2026-07-30 | 2026-08-10 | WAD.S.7350 SS | 2d |
|  | 2 | **ELECTRICAL WORKS - Final Fix** |  | 2026-09-24 | 2026-09-28 |  |  |
| WAD.S.7100 |  | 12-Port, SMF, Fiber Optic Patch Panels; | 4d | 2026-09-24 | 2026-09-28 | WAD.S.7090 FF | 0d |
| WAD.S.7120 |  | VIDEO SURVEILLANCE | 4d | 2026-09-24 | 2026-09-28 | WAD.S.7110 FF | 0d |
| WAD.S.7150 |  | CCTV storage system, as specified; | 4d | 2026-09-24 | 2026-09-28 | WAD.S.7140 FF | 0d |
| WAD.S.7020 |  | power source with built-in photocell sensor for automatic electrical connection during day/light times - Final Fix | 3d | 2026-09-26 | 2026-09-28 | WAD.S.7230 FF | 0d |
| WAD.S.7040 |  | LIGHTING FIXTURES - Final Fix | 3d | 2026-09-26 | 2026-09-28 | WAD.S.7030 FF | 0d |
| WAD.S.7060 |  | GROUNDING - Final Fix | 3d | 2026-09-26 | 2026-09-28 | WAD.S.7050 FF, WAD.S.7360, WAD.S.6800 | 0d |
| WAD.S.7070 |  | card reader IN/OUT - Final Fix | 3d | 2026-09-26 | 2026-09-28 | WAD.S.7060 FF | 0d |
| WAD.S.7090 |  | 12-Port CAT6A UTP fully loaded patch panel | 3d | 2026-09-26 | 2026-09-28 | WAD.S.7080 FF | 0d |
| WAD.S.7110 |  | COMPUTERS AND RELATED PERIPHERALS | 3d | 2026-09-26 | 2026-09-28 | WAD.S.7100 FF | 0d |
| WAD.S.7130 |  | Central (Headend) System Components; | 3d | 2026-09-26 | 2026-09-28 | WAD.S.7120 FF | 0d |
| WAD.S.7140 |  | VSS System, as specified; | 3d | 2026-09-26 | 2026-09-28 | WAD.S.7130 FF | 0d |
| WAD.S.7160 |  | CCTV cameras - Final Fix | 3d | 2026-09-26 | 2026-09-28 | WAD.S.7150 FF | 0d |
| WAD.S.7180 |  | ELECTRICAL GATE BARRIER | 3d | 2026-09-26 | 2026-09-28 | WAD.S.7170 FF | 0d |
| WAD.S.7200 |  | fire alarm system including wires, conduit and other materials - Final Fix | 3d | 2026-09-26 | 2026-09-28 | WAD.S.7190 FF | 0d |
| WAD.S.7210 |  | Analog addressable fire alarm control panel with battery | 3d | 2026-09-26 | 2026-09-28 | WAD.S.7200 FF | 0d |
| WAD.S.7250 |  | LIGHTING AND POWER TYPE PANELBOARDS - Final Fix | 3d | 2026-09-26 | 2026-09-28 | WAD.S.7220 FF | 6d |
| WAD.S.7030 |  | UNDERGROUND DISTRIBUTION SYSTEM - Final Fix | 2d | 2026-09-27 | 2026-09-28 | WAD.S.7020 FF | 0d |
| WAD.S.7050 |  | installation of Wiring devices includes switches and Receptacle outlets complete with device boxes - Final Fix | 2d | 2026-09-27 | 2026-09-28 | WAD.S.7040 FF | 0d |
| WAD.S.7080 |  | Access control panel - Final Fix | 2d | 2026-09-27 | 2026-09-28 | WAD.S.7070 FF | 0d |
| WAD.S.7170 |  | 20A , ATS ( Automatic transfer switch) for UPS | 2d | 2026-09-27 | 2026-09-28 | WAD.S.7160 FF | 0d |
| WAD.S.7190 |  | LIGHTNING PROTECTION | 2d | 2026-09-27 | 2026-09-28 | WAD.S.7180 FF | 0d |
| WAD.S.7220 |  | Intelligent Ionization / Photoelectric smoke and heat detector with base | 2d | 2026-09-27 | 2026-09-28 | WAD.S.7210 FF | 0d |
|  | 4 | **METALS** |  | 2026-09-08 | 2026-09-09 |  |  |
| WAD.S.6510 |  | folding & sliding mounter combination ladder for building maintenance purpose | 2d | 2026-09-08 | 2026-09-09 | WAD.S.6830 | 13d |
| WAD.S.6520 |  | install of overflow galvanized steel roof scupper with gray color with angular secondary support | 2d | 2026-09-08 | 2026-09-09 | WAD.S.6510 SS | 13d |
| WAD.S.6530 |  | install heavy steel cover with frame including all necessary fixings | 2d | 2026-09-08 | 2026-09-09 | WAD.S.6520 SS | 13d |
|  | 5 | **WOODS AND PLASTICS** |  | 2026-09-07 | 2026-09-09 |  |  |
| WAD.S.6550 |  | COUNTER DESK | 3d | 2026-09-07 | 2026-09-09 | WAD.S.6540 FF | 16d |
| WAD.S.6540 |  | PANTRY CABINET | 2d | 2026-09-08 | 2026-09-09 | WAD.S.6530 SS | 13d |
|  | 8 | **DOORS & WINDOWS** |  | 2026-09-07 | 2026-09-12 |  |  |
| WAD.S.6700 |  | Install Aluminum Door | 3d | 2026-09-07 | 2026-09-09 | WAD.S.6550 SS | 16d |
| WAD.S.6710 |  | install hollow metal door | 4d | 2026-09-08 | 2026-09-12 | WAD.S.6540 SS | 13d |
| WAD.S.6720 |  | Install aluminum framed double glazed windows | 3d | 2026-09-08 | 2026-09-10 | WAD.S.6710 SS | 13d |
|  | 10 | **SPECIALTIES** |  | 2026-09-26 | 2026-09-28 |  |  |
| WAD.S.6840 |  | TOILET ACCESSROIES | 2d | 2026-09-26 | 2026-09-27 | WAD.S.7230 SS, WAD.S.6700 FF, WAD.S.6720 | 1d |
| WAD.S.6850 |  | PANEL SIGNAGE | 2d | 2026-09-27 | 2026-09-28 | WAD.S.6840 SS, WAD.S.7220 FF | 0d |
|  | 11 | **FURNISHINGS** |  | 2026-09-28 | 2026-09-28 |  |  |
| WAD.S.6860 |  | Workstation chair | 1d | 2026-09-28 | 2026-09-28 | WAD.S.6850 FF | 0d |
| WAD.S.6870 |  | Workstation table | 1d | 2026-09-28 | 2026-09-28 | WAD.S.6860 SS | 0d |
| WAD.S.6880 |  | Roller blind | 1d | 2026-09-28 | 2026-09-28 | WAD.S.6870 SS, WAD.S.4770 | 0d |
| WAD.S.6890 |  | Waste Receptacle | 1d | 2026-09-28 | 2026-09-28 | WAD.S.6880 SS | 0d |

| ID | WBS | Task | Duration | Start | Finish | Predecessors | Total float |
| --- | --- | --- | --- | --- | --- | --- | --- |
|  | 4 | **EXT. WORKS** |  | 2026-08-11 | 2026-09-27 |  |  |
|  | 1 | **EXTERNAL WORKS** |  | 2026-08-11 | 2026-09-27 |  |  |
| WAD.S.1100 |  | Excavation Works | 15d | 2026-08-11 | 2026-08-27 | WAD.S.1080, WAD.S.7360, WAD.S.6790 | 2d |
| WAD.S.1290 |  | 40 mm Pipes | 12d | 2026-08-29 | 2026-09-10 | WAD.S.1100 | 2d |
| WAD.S.3270 |  | GRP Pipes laid in trenches | 12d | 2026-08-31 | 2026-09-13 | WAD.S.1290 FF, WAD.S.3280 SS | 0d |
| WAD.S.3880 |  | 100 mm Pipe in trench not exceeding 2.00 m depth to invert | 7d | 2026-09-06 | 2026-09-13 | WAD.S.3270 FF | 0d |
| WAD.S.4020 |  | install 100 mm GRP pipe service connections between building sewage inspection chamber and main wastewater line | 8d | 2026-09-07 | 2026-09-15 | WAD.S.3880 FF, WAD.S.3290 | 3d |
| WAD.S.4030 |  | Manhole depth not exceeding 4.0m | 8d | 2026-09-07 | 2026-09-15 | WAD.S.4020 FF, WAD.S.2970 | 17d |
| WAD.S.4800 |  | Backfilling Works | 5d | 2026-09-14 | 2026-09-19 | WAD.S.3880 | 0d |
| WAD.S.4980 |  | SIDEWALKS AND CURBS | 7d | 2026-09-20 | 2026-09-27 | WAD.S.3910, WAD.S.4020, WAD.S.4800 | 0d |
| WAD.S.4990 |  | ROAD WORKS | 7d | 2026-09-20 | 2026-09-27 | WAD.S.4980 FF, WAD.S.4170 | 1d |
| WAD.S.5000 |  | install flag pole 6 M height | 5d | 2026-09-20 | 2026-09-24 | WAD.S.4980 SS | 0d |
|  | 4 | **Testing & Commissioning** |  | 2026-09-26 | 2026-10-05 |  |  |
| WAD.S.5440 |  | Testing & Commissioning - Electrical Systems | 9d | 2026-09-26 | 2026-10-05 | WAD.S.4020, WAD.S.5000 | 0d |
| WAD.S.5490 |  | Testing & Commissioning - Mechanical Systems | 9d | 2026-09-26 | 2026-10-05 | WAD.S.5440 SS | 0d |
|  | 1 | **Engineering** |  | 2026-09-26 | 2026-10-05 |  |  |
|  | 1 | **As-Built Drawings** |  | 2026-09-26 | 2026-10-04 |  |  |
| WAD.S.5430 |  | Prepare & Submit | 4d | 2026-09-26 | 2026-09-29 | WAD.S.5440 SS, WAD.S.6240 FF+1d, WAD.S.6890 FF+1d | 0d |
| WAD.S.6260 |  | Review & Approve | 6d | 2026-09-28 | 2026-10-04 | WAD.S.4990 | 1d |
|  | 2 | **Operational Spares** |  | 2026-09-26 | 2026-10-05 |  |  |
| WAD.S.5450 |  | Prepare & Submit | 4d | 2026-09-26 | 2026-09-29 | WAD.S.5430 SS | 0d |
| WAD.S.6350 |  | Inspection | 5d | 2026-09-30 | 2026-10-05 | WAD.S.5450 | 0d |
| WAD.S.6370 |  | Acceptance | 5d | 2026-09-30 | 2026-10-05 | WAD.S.6350 FF | 0d |
|  | 3 | **Warranties and Guarantees** |  | 2026-09-26 | 2026-10-05 |  |  |
| WAD.S.5460 |  | Prepare & Submit | 4d | 2026-09-26 | 2026-09-29 | WAD.S.5440 SS | 0d |
| WAD.S.6360 |  | Review & Approve | 5d | 2026-09-30 | 2026-10-05 | WAD.S.5460 | 0d |
|  | 2 | **Training and Manuals** |  | 2026-09-26 | 2026-10-05 |  |  |
|  | 1 | **Training** |  | 2026-09-26 | 2026-10-05 |  |  |
| WAD.S.5470 |  | Prepare & Submit | 4d | 2026-09-26 | 2026-09-29 | WAD.S.5450 SS | 0d |
| WAD.S.6380 |  | Review & Approve | 5d | 2026-09-30 | 2026-10-05 | WAD.S.5470 | 0d |
| WAD.S.6400 |  | Fabrication & Delivery | 5d | 2026-09-30 | 2026-10-05 | WAD.S.6380 FF | 0d |
|  | 2 | **Manuals** |  | 2026-09-26 | 2026-10-05 |  |  |
| WAD.S.5480 |  | Prepare & Submit | 4d | 2026-09-26 | 2026-09-29 | WAD.S.5440 SS | 0d |
| WAD.S.6390 |  | Review & Approve | 5d | 2026-09-30 | 2026-10-05 | WAD.S.5480 | 0d |
|  | 3 | **Demobilization** |  | 2026-09-27 | 2026-10-05 |  |  |
| WAD.S.5850 |  | Demobilize | 8d | 2026-09-27 | 2026-10-05 | WAD.S.6390 FF | 0d |
|  | 4 | **Snaglist Rectification** |  | 2026-09-27 | 2026-10-05 |  |  |
| WAD.S.5860 |  | Snaglist Rectification | 8d | 2026-09-27 | 2026-10-05 | WAD.S.5440 FF, WAD.S.5850 FF | 0d |
| WAD.S.5870 |  | Initial Handing Over | 8d | 2026-09-27 | 2026-10-05 | WAD.S.6260 FF, WAD.S.6370 FF, WAD.S.6360 FF, WAD.S.6400 FF, WAD.S.6390 FF, WAD.S.5860 FF | 0d |

## Version 2 (data date 2026-09-28, saved 2026-09-29, file WAS1-05-006 -Improvement of Waad Al Shamal Industrial City Fence & Gates-DD28-09-2026.xer)

Note of the change: Renumber project folders 01–23 in order (after removing projects 12 and 25)

Last finish 2026-10-05 → 2026-11-25 (+51d). Complete tasks 0 → 115.

Added:

| ID | Task | Duration | Start | Finish | Predecessors | Resources |
| --- | --- | --- | --- | --- | --- | --- |
| ` | Installation of Site Offices | 3d | 2026-07-01 A | 2026-07-09 A | WAD.S.1200 SS, WAD.S.1130, WAD.S.1160 | Moblization Labors [197.07 h] |

Changed:

| ID | Task | Start | Finish | Complete | Total float | Predecessors |
| --- | --- | --- | --- | --- | --- | --- |
| 1 | **Key Milestones** | 2026-05-06 → 2026-07-07 (+62d) | 2026-10-05 → 2026-11-25 (+51d) |  |  |  |
| 1 | **General Milestones** | 2026-05-06 → 2026-07-07 (+62d) | 2026-10-05 → 2026-11-25 (+51d) |  |  |  |
| WAD.S.1080 | Project Start | 2026-05-06 → 2026-07-07 A (+62d) | 2026-05-06 → 2026-07-07 A (+62d) | 0% → 100% | 0d → none |  |
| WAD.S.6490 | Project Finish | 2026-10-05 → 2026-11-25 (+51d) | 2026-10-05 → 2026-11-25 (+51d) |  | 0d → -44d | WAD.S.1320 FF, WAD.S.3850 FF, WAD.S.5070 FF, WAD.S.6250 FF, WAD.S.3860 FF, WAD.S.6110 FF, WAD.S.5870 FF, WAD.S.5490, WAD.S.4030, WAD.S.2980, WAD.S.3870, WAD.S.3380, WAD.S.1000, WAD.S.1030, WAD.S.1040, WAD.S.1050, WAD.S.1060, WAD.S.1070, WAD.S.1180, WAD.S.1220, WAD.S.1260, WAD.S.1300, WAD.S.1310, WAD.S.4810, WAD.S.4990, WAD.S.3730, WAD.S.3890, WAD.S.4160, WAD.S.4780, WAD.S.5080, WAD.S.3900, WAD.S.4130, WAD.S.4150, WAD.S.4560, WAD.S.4620, WAD.S.4630, WAD.S.4640, WAD.S.4650, WAD.S.4790, WAD.S.3950, WAD.S.4730, WAD.S.4830, WAD.S.4850, WAD.S.3920, WAD.S.4090, WAD.S.5990, WAD.S.6340, WAD.S.6120, WAD.S.6480, WAD.S.4890, WAD.S.3960, WAD.S.4100, WAD.S.5760, WAD.S.5770, WAD.S.7540, WAD.S.6560, WAD.S.6590, WAD.S.7240, WAD.S.7250, WAD.S.1210, WAD.S.5540, WAD.S.2530, WAD.S.1470, WAD.S.7550, WAD.S.7560 → WAD.S.1320 FF, WAD.S.3850 FF, WAD.S.5070 FF, WAD.S.6250 FF, WAD.S.3860 FF, WAD.S.6110 FF, WAD.S.5870 FF, WAD.S.5490, WAD.S.4030, WAD.S.2980, WAD.S.3870, WAD.S.3380, WAD.S.1000, WAD.S.1030, WAD.S.1040, WAD.S.1050, WAD.S.1060, WAD.S.1070, WAD.S.1180, WAD.S.1220, WAD.S.1260, WAD.S.1300, WAD.S.1310, WAD.S.4810, WAD.S.4990, WAD.S.3730, WAD.S.3890, WAD.S.4160, WAD.S.4780, WAD.S.5080, WAD.S.3900, WAD.S.4130, WAD.S.4150, WAD.S.4560, WAD.S.4620, WAD.S.4630, WAD.S.4640, WAD.S.4650, WAD.S.4790, WAD.S.3950, WAD.S.4730, WAD.S.4830, WAD.S.4850, WAD.S.3920, WAD.S.4090, WAD.S.5990, WAD.S.6340, WAD.S.6120, WAD.S.6480, WAD.S.4890, WAD.S.3960, WAD.S.4100, WAD.S.5760, WAD.S.5770, WAD.S.7540, WAD.S.6560, WAD.S.6590, WAD.S.7240, WAD.S.7250, WAD.S.1210, WAD.S.5540, WAD.S.2530, WAD.S.1470, WAD.S.7550, WAD.S.7560, `, WAD.S.7550 FF |
| 2 | **Contractual Milestones** | 2026-05-06 → 2026-07-07 (+62d) | 2026-10-05 → 2026-11-25 (+51d) |  |  |  |
| WAD.S.1470 | Site Handover | 2026-05-06 → 2026-07-07 A (+62d) | 2026-05-06 → 2026-07-07 A (+62d) | 0% → 100% | 128d → none |  |
| WAD.S.7550 | Contract Schedule (Baseline Program) | 2026-05-06 → 2026-07-07 A (+62d) | 2026-05-06 → 2026-07-07 A (+62d) | 0% → 100% | 128d → none | WAD.S.1030 SS → WAD.S.1030 SS, WAD.S.1030 FF |
| WAD.S.1320 | Completion of Moblization | 2026-05-31 → 2026-07-09 A (+39d) | 2026-05-31 → 2026-07-09 A (+39d) | 0% → 100% | 109.5d → none |  |
| WAD.S.3850 | Completion of Fences | 2026-08-26 → 2026-10-01 (+36d) | 2026-08-26 → 2026-10-01 (+36d) |  | 34d → 3.23d |  |
| WAD.S.3860 | Completion of GUARD HOUSE 1 | 2026-08-26 → 2026-10-01 (+36d) | 2026-08-26 → 2026-10-01 (+36d) |  | 34d → 3.23d |  |
| WAD.S.5070 | Completion of Engineering Works | 2026-09-22 → 2026-10-06 (+14d) | 2026-09-22 → 2026-10-06 (+14d) |  | 11d → -0.6d |  |
| WAD.S.6250 | Completion of Procurment Works | 2026-09-28 → 2026-10-27 (+29d) | 2026-09-28 → 2026-10-27 (+29d) |  | 6d → -18.8d |  |
| WAD.S.6110 | Completion of EXT. WORKS | 2026-09-27 → 2026-11-17 (+51d) | 2026-09-27 → 2026-11-17 (+51d) |  | 7d → -37d |  |
| WAD.S.7560 | Testing & Commissioning | 2026-10-05 → 2026-11-25 (+51d) | 2026-10-05 → 2026-11-25 (+51d) |  | 0d → -44d |  |
| 2 | **Mobilization** | 2026-05-06 → 2026-07-01 (+56d) | 2026-05-31 → 2026-07-19 (+49d) |  |  |  |
| 2 | **Site Layout Plan** | 2026-05-11 → 2026-07-06 (+56d) | 2026-05-13 → 2026-07-19 (+67d) |  |  |  |
| WAD.S.1130 | Site Office Layout Drawing Review & Approval | 2026-05-12 → 2026-07-06 A (+55d) | 2026-05-13 → 2026-07-19 A (+67d) | 0% → 100% | 0d → none |  |
| WAD.S.1120 | Site Office Layout Drawing Proposal Submittal | 2026-05-11 → 2026-07-19 A (+69d) | 2026-05-11 → 2026-07-19 A (+69d) | 0% → 100% | 0d → none |  |
| 6 | **Construct Site Access Roads** | 2026-05-14 → 2026-07-06 (+53d) | 2026-05-20 → 2026-07-19 (+60d) |  |  |  |
| WAD.S.1150 | Site Preparation | 2026-05-14 → 2026-07-06 A (+53d) | 2026-05-14 → 2026-07-19 A (+66d) | 0% → 100% | 0d → none |  |
| WAD.S.1160 | Grading & Leveling | 2026-05-16 → 2026-07-06 A (+51d) | 2026-05-17 → 2026-07-19 A (+63d) | 0% → 100% | 2.5d → none |  |
| WAD.S.1200 | Temporary Access Road | 2026-05-17 → 2026-07-06 A (+50d) | 2026-05-20 → 2026-07-19 A (+60d) | 0% → 100% | 2.5d → none |  |
| 7 | **Construct Site Office Fence** | 2026-05-18 → 2026-07-06 (+49d) | 2026-05-31 → 2026-07-19 (+49d) |  |  |  |
| WAD.S.1230 | Excavation for Fence Foundation | 2026-05-18 → 2026-07-06 A (+49d) | 2026-05-23 → 2026-07-19 A (+57d) | 0% → 100% | 2.5d → none |  |
| WAD.S.1270 | Installation of Fence Posts | 2026-05-19 → 2026-07-06 A (+48d) | 2026-05-24 → 2026-07-19 A (+56d) | 0% → 100% | 2.75d → none |  |
| WAD.S.1280 | Installation of Fence Mesh | 2026-05-23 → 2026-07-06 A (+44d) | 2026-05-31 → 2026-07-19 A (+49d) | 0% → 100% | 2.5d → none |  |
| 8 | **Construct Site Offices** | 2026-05-18 → 2026-07-01 (+44d) | 2026-05-20 → 2026-07-19 (+60d) |  |  |  |
| WAD.S.1210 | Installation of Site Offices | 2026-05-18 → 2026-07-06 A (+49d) | 2026-05-20 → 2026-07-19 A (+60d) | 0% → 100% | 115d → none |  |
| WAD.S.1240 | MEP Works | 2026-05-18 → 2026-07-06 A (+49d) | 2026-05-19 → 2026-07-19 A (+61d) | 0% → 100% | 5d → none |  |
| WAD.S.1260 | Installation of Furniture | 2026-05-18 → 2026-07-06 A (+49d) | 2026-05-20 → 2026-07-19 A (+60d) | 0% → 100% | 5d → none |  |
| 3 | **Mobilization of Manpower** | 2026-05-16 → 2026-07-06 (+51d) | 2026-05-21 → 2026-07-19 (+59d) |  |  |  |
| WAD.S.1170 | Mobilization of Manpower | 2026-05-16 → 2026-07-06 A (+51d) | 2026-05-21 → 2026-07-19 A (+59d) | 0% → 100% | 1d → none |  |
| 4 | **Mobilization of Equipment** | 2026-05-16 → 2026-07-06 (+51d) | 2026-05-21 → 2026-07-19 (+59d) |  |  |  |
| WAD.S.1180 | Mobilization of Tools & Equipment | 2026-05-16 → 2026-07-06 A (+51d) | 2026-05-21 → 2026-07-19 A (+59d) | 0% → 100% | 1d → none |  |
| 5 | **Site Survey** | 2026-05-06 → 2026-07-14 (+69d) | 2026-05-10 → 2026-07-18 (+69d) |  |  |  |
| WAD.S.1020 | Site Survey | 2026-05-06 → 2026-07-14 A (+69d) | 2026-05-07 → 2026-07-15 A (+69d) | 0% → 100% | 0d → none |  |
| WAD.S.1110 | Survey Report | 2026-05-09 → 2026-07-16 A (+68d) | 2026-05-10 → 2026-07-18 A (+69d) | 0% → 100% | 0d → none |  |
| 3 | **Preliminary Submittals** | 2026-05-06 → 2026-07-06 (+61d) | 2026-05-30 → 2026-07-19 (+50d) |  |  |  |
| WAD.S.1000 | Insurances | 2026-05-06 → 2026-07-06 A (+61d) | 2026-05-30 → 2026-07-19 A (+50d) | 0% → 100% | 3d → none |  |
| WAD.S.1010 | Performance Bonds | 2026-05-06 → 2026-07-06 A (+61d) | 2026-05-17 → 2026-07-19 A (+63d) | 0% → 100% | 1d → none |  |
| WAD.S.1030 | Contract Schedule (Baseline Program) | 2026-05-06 → 2026-07-06 A (+61d) | 2026-05-20 → 2026-07-19 A (+60d) | 0% → 100% | 2d → none |  |
| WAD.S.1040 | HSE Plan | 2026-05-06 → 2026-07-06 A (+61d) | 2026-05-19 → 2026-07-19 A (+61d) | 0% → 100% | 3d → none |  |
| WAD.S.1050 | Quality Control Plan | 2026-05-06 → 2026-07-06 A (+61d) | 2026-05-17 → 2026-07-19 A (+63d) | 0% → 100% | 2d → none |  |
| WAD.S.1060 | Project Organization Chart | 2026-05-06 → 2026-07-06 A (+61d) | 2026-05-19 → 2026-07-19 A (+61d) | 0% → 100% | 3d → none |  |
| WAD.S.1070 | Submission of Staff CVs | 2026-05-06 → 2026-07-06 A (+61d) | 2026-05-17 → 2026-07-19 A (+63d) | 0% → 100% | 2d → none |  |
| 6 | **Engineering** | 2026-05-06 → 2026-06-16 (+41d) | 2026-09-22 → 2026-10-10 (+18d) |  |  |  |
| 3 | **Shop Drawings** | 2026-05-06 → 2026-06-16 (+41d) | 2026-06-11 → 2026-09-10 (+91d) |  |  |  |
| 2 | **Prepare & Submit** | 2026-05-06 → 2026-07-05 (+60d) | 2026-06-02 → 2026-09-05 (+95d) |  |  |  |
| WAD.S.1250 | EXT. WORKS Shop Drawings (Prepare & Submit) | 2026-05-19 → 2026-07-05 A (+47d) | 2026-06-02 → 2026-09-05 A (+95d) | 0% → 100% | 0d → none |  |
| WAD.S.1090 | FENCES Shop Drawings (Prepare & Submit) | 2026-05-06 → 2026-07-06 A (+61d) | 2026-05-17 → 2026-07-19 A (+63d) | 0% → 100% | 2d → none |  |
| WAD.S.1140 | GUARD HOUSE 1 Shop Drawings (Prepare & Submit) | 2026-05-12 → 2026-07-13 A (+62d) | 2026-05-23 → 2026-08-31 A (+100d) | 0% → 100% | 0d → none |  |
| WAD.S.1190 | GUARD HOUSE 1 Shop Drawings (Prepare & Submit) | 2026-05-16 → 2026-07-16 A (+61d) | 2026-05-30 → 2026-08-31 A (+93d) | 0% → 100% | 0d → none |  |
| 7 | **Review & Approve** | 2026-05-18 → 2026-06-16 (+29d) | 2026-06-11 → 2026-09-10 (+91d) |  |  |  |
| WAD.S.1220 | FENCES Shop Drawings (Review & Approve) | 2026-05-18 → 2026-06-16 A (+29d) | 2026-05-30 → 2026-06-22 A (+23d) | 0% → 100% | 3d → none |  |
| WAD.S.1300 | GUARD HOUSE 1 Shop Drawings (Review & Approve) | 2026-05-31 → 2026-07-13 A (+43d) | 2026-06-08 → 2026-09-01 A (+85d) | 0% → 100% | 3d → none | WAD.S.1140, WAD.S.1220, WAD.S.1190 → WAD.S.1140, WAD.S.1220, WAD.S.1190, WAD.S.1220 SS, WAD.S.1140 SS, WAD.S.1190 SS |
| WAD.S.1310 | GUARD HOUSE 1 Shop Drawings (Review & Approve) | 2026-05-31 → 2026-07-13 A (+43d) | 2026-06-08 → 2026-09-05 A (+89d) | 0% → 100% | 3d → none | WAD.S.1190, WAD.S.1300 FF, WAD.S.1190 FF → WAD.S.1190, WAD.S.1300 FF, WAD.S.1190 FF, WAD.S.1190 SS |
| WAD.S.1330 | EXT. WORKS Shop Drawings (Review & Approve) | 2026-06-03 → 2026-07-13 A (+40d) | 2026-06-11 → 2026-09-10 A (+91d) | 0% → 100% | 0d → none | WAD.S.1250, WAD.S.1310 FF → WAD.S.1250, WAD.S.1310 FF, WAD.S.1250 SS, WAD.S.1310 SS |
| 1 | **Material Submittal** | 2026-06-22 → 2026-06-25 (+3d) | 2026-09-22 → 2026-10-10 (+18d) |  |  |  |
| 1 | **Material Prepare & Submit** | 2026-06-22 → 2026-07-05 (+13d) | 2026-09-15 → 2026-10-03 (+18d) |  |  |  |
| 1 | **Short Lead Items** | 2026-06-22 → 2026-07-06 (+14d) | 2026-09-15 → 2026-10-01 (+16d) |  |  |  |
| WAD.S.1360 | structural steel beams, posts and rods for wall fence (Material Prepare & Submit) (FENCES) | 2026-06-22 → 2026-07-06 A (+14d) | 2026-06-25 → 2026-07-19 A (+24d) | 0% → 100% | 25d → none |  |
| WAD.S.1400 | tubes, bolts, nuts and steel plates to strengthened the wall fence and posts (Material Prepare & Submit) (FENCES) | 2026-06-27 → 2026-07-06 A (+9d) | 2026-06-30 → 2026-07-19 A (+19d) | 0% → 100% | 25d → none |  |
| WAD.S.1500 | bitumen waterproofing paint on concrete surfaces (Material Prepare & Submit) (FENCES) | 2026-07-01 → 2026-07-06 A (+5d) | 2026-07-05 → 2026-07-19 A (+14d) | 0% → 100% | 25d → none |  |
| WAD.S.3070 | GROUNDING (Material Prepare & Submit) (GUARD HOUSE) | 2026-08-29 → 2026-07-06 A (-54d) | 2026-09-01 → 2026-07-19 A (-44d) | 0% → 100% | 20d → none |  |
| WAD.S.3080 | ROAD WORKS (Material Prepare & Submit) (GUARD HOUSE) | 2026-08-29 → 2026-07-06 A (-54d) | 2026-09-01 → 2026-07-19 A (-44d) | 0% → 100% | 4d → none |  |
| WAD.S.3580 | FIRE PROTECTION SYSTEM (fire extinguisher) (Material Prepare & Submit) (GUARD HOUSE) | 2026-09-02 → 2026-07-06 A (-58d) | 2026-09-06 → 2026-07-19 A (-49d) | 0% → 100% | 14d → none |  |
| WAD.S.2830 | Concrete Masonry (200mm thick ) (Material Prepare & Submit) (GUARD HOUSE) | 2026-08-24 → 2026-07-14 A (-41d) | 2026-08-27 → 2026-07-16 A (-42d) | 0% → 100% | 4d → none |  |
| WAD.S.2880 | Concrete Masonry (100mm thick ) (Material Prepare & Submit) (GUARD HOUSE) | 2026-08-25 → 2026-07-14 A (-42d) | 2026-08-29 → 2026-07-16 A (-44d) | 0% → 100% | 24d → none |  |
| WAD.S.1350 | Backfilling Works (Material Prepare & Submit) | 2026-06-22 → 2026-08-09 A (+48d) | 2026-06-25 → 2026-08-12 A (+48d) | 0% → 100% | 25d → none | WAD.S.1080 SS+37d → WAD.S.1080 SS |
| WAD.S.2630 | Manhole depth not exceeding 4.0m (Material Prepare & Submit) (GUARD HOUSE) | 2026-08-15 → 2026-09-14 A (+30d) | 2026-08-18 → 2026-09-29 (+42d) | 0% → 60% | 19d → -12.6d | WAD.S.1080 SS+83d → WAD.S.1080 SS+58d |

| ID | Task | Start | Finish | Complete | Total float | Predecessors |
| --- | --- | --- | --- | --- | --- | --- |
| WAD.S.2690 | GRP Pipes laid in trenches(Material Prepare & Submit) (GUARD HOUS | 2026-08-19 → 2026-09-14 A (+26d) | 2026-08-23 → 2026-09-29 (+37d) | 0% → 60% | 0d → -25.6d | WAD.S.1080 SS+87d, WAD.S.1400 → WAD.S.1080 SS+40d, WAD.S.1400 |
| WAD.S.2700 | 100 mm GRP pipe service connections (Material Prepare & Submit) (GUARD HOUSE) | 2026-08-19 → 2026-09-14 A (+26d) | 2026-08-23 → 2026-09-29 (+37d) | 0% → 60% | 3d → -25.8d | WAD.S.1080 SS+87d, WAD.S.1400 → WAD.S.1080 SS+45d, WAD.S.1400 |
| WAD.S.2900 | SIDEWALKS AND CURBS (Material Prepare & Submit) (GUARD HOUSE) | 2026-08-25 → 2026-09-19 A (+25d) | 2026-08-29 → 2026-10-01 (+33d) | 0% → 60% | 5d → -19.7d | WAD.S.1080 SS+92d, WAD.S.2700 → WAD.S.1080 SS+45d, WAD.S.2700 |
| WAD.S.4700 | UNDERGROUND DISTRIBUTION SYSTEM (Material Prepare & Submit) (GUARD HOUSE) | 2026-09-12 → 2026-09-27 A (+15d) | 2026-09-15 → 2026-09-29 (+14d) | 0% → 60% | 8d → -2.1d | WAD.S.1080 SS+107d → WAD.S.1080 SS+70d |
| 2 | **Long Lead Items** | 2026-07-15 → 2026-07-05 (-10d) | 2026-09-07 → 2026-10-03 (+26d) |  |  |  |
| WAD.S.1490 | Intrusion Detection system including processor control units items and joints (Material Prepare & Submit) (FENCES) | 2026-07-20 → 2026-07-05 A (-15d) | 2026-07-23 → 2026-09-28 (+67d) | 0% → 85% | 11d → -34.5d | WAD.S.1080 SS+60d, WAD.S.1410 → WAD.S.1080 SS+35d, WAD.S.1410 |
| WAD.S.3220 | WATER SUPPLY SYSTEM (Material Prepare & Submit) (GUARD HOUSE) | 2026-08-30 → 2026-07-05 A (-56d) | 2026-09-02 → 2026-09-29 (+27d) | 0% → 70% | 6d → -12.1d | WAD.S.1080 SS+96d → WAD.S.1080 SS+62d |
| WAD.S.3230 | SEWER AND DRAINAGE SYSTEM (Material Prepare & Submit) (GUARD HOUSE) | 2026-08-30 → 2026-07-05 A (-56d) | 2026-09-02 → 2026-10-03 (+31d) | 0% → 70% | 5d → -15.3d | WAD.S.1080 SS+95d, WAD.S.2890 → WAD.S.1080 SS+63d, WAD.S.2890 |
| WAD.S.3250 | HEATING, VENTILATION AND AIR CONDITIONING (Material Prepare & Submit) (GUARD HOUSE) | 2026-08-30 → 2026-07-05 A (-56d) | 2026-09-02 → 2026-10-01 (+29d) | 0% → 80% | 5d → -14.9d | WAD.S.1080 SS+95d, WAD.S.2890 → WAD.S.1080 SS+66d, WAD.S.2890 |
| WAD.S.1410 | fix galvanized steel chain link gate including all necessary associated (Material Prepare & Submit) (FENCES) | 2026-07-15 → 2026-07-06 A (-9d) | 2026-07-19 A | 0% → 100% | 11d → none |  |
| WAD.S.1580 | structural steel members and plates for main sliding gates (Material Prepare & Submit) (FENCES) | 2026-07-28 → 2026-07-06 A (-22d) | 2026-08-01 → 2026-07-19 A (-13d) | 0% → 100% | 1d → none |  |
| WAD.S.1520 | Handholes\ Manholes (Material Prepare & Submit) (FENCES) | 2026-07-25 → 2026-09-08 A (+45d) | 2026-07-28 → 2026-09-29 (+63d) | 0% → 85% | 33d → -14.2d | WAD.S.1080 SS+62d, WAD.S.1490 → WAD.S.1080 SS+54d, WAD.S.1490 |
| WAD.S.3150 | folding & sliding mounter combination ladder for building maintenance purpose (Material Prepare & Submit) (GUARD HOUSE) | 2026-08-30 → 2026-09-08 A (+9d) | 2026-09-02 → 2026-10-03 (+31d) | 0% → 70% | 7d → -25.4d | WAD.S.1080 SS+95d, WAD.S.2890 → WAD.S.1080 SS+50d, WAD.S.2890 |
| WAD.S.3050 | Workstation chair (Material Prepare & Submit) (GUARD HOUSE) | 2026-08-29 → 2026-09-14 A (+16d) | 2026-09-01 → 2026-09-29 (+28d) | 0% → 60% | 0d → -21.2d | WAD.S.1080 SS+95d → WAD.S.1080 SS+50d |
| WAD.S.3160 | overflow galvanized steel roof scupper (Material Prepare & Submit) (GUARD HOUSE) | 2026-08-30 → 2026-09-14 A (+15d) | 2026-09-02 → 2026-09-29 (+27d) | 0% → 60% | 7d → -22.6d | WAD.S.1080 SS+96d → WAD.S.1080 SS+50d |
| WAD.S.3170 | counter desk (Material Prepare & Submit) (GUARD HOUSE) | 2026-08-30 → 2026-09-14 A (+15d) | 2026-09-02 → 2026-09-29 (+27d) | 0% → 60% | 5d → -22.6d | WAD.S.1080 SS+96d → WAD.S.1080 SS+50d |
| WAD.S.3180 | install ceramic wall tiles (Material Prepare & Submit) (GUARD HOUSE) | 2026-08-30 → 2026-09-14 A (+15d) | 2026-09-02 → 2026-09-29 (+27d) | 0% → 60% | 7d → -22.6d | WAD.S.1080 SS+96d → WAD.S.1080 SS+50d |
| WAD.S.3190 | PANEL SIGNAGE (Material Prepare & Submit) (GUARD HOUSE) | 2026-08-30 → 2026-09-14 A (+15d) | 2026-09-02 → 2026-09-29 (+27d) | 0% → 60% | 6d → -22.6d | WAD.S.1080 SS+96d → WAD.S.1080 SS+50d |
| WAD.S.3200 | COMMUNICATIONS BACKBONE CABLING (Material Prepare & Submit) (GUARD HOUSE) | 2026-08-30 → 2026-09-14 A (+15d) | 2026-09-02 → 2026-09-29 (+27d) | 0% → 60% | 9d → -22.6d | WAD.S.1080 SS+96d → WAD.S.1080 SS+50d |
| WAD.S.3210 | card reader IN/OUT (Material Prepare & Submit) (GUARD HOUSE) | 2026-08-30 → 2026-09-14 A (+15d) | 2026-09-02 → 2026-09-29 (+27d) | 0% → 60% | 4d → -18.6d | WAD.S.1080 SS+96d → WAD.S.1080 SS+52d |
| WAD.S.3240 | SUPPLY AND INSTALL PLUMBING FIXTURES (Material Prepare & Submit) (GUARD HOUSE) | 2026-08-30 → 2026-09-14 A (+15d) | 2026-09-02 → 2026-09-29 (+27d) | 0% → 60% | 0d → -18.1d | WAD.S.1080 SS+96d → WAD.S.1080 SS+53d |
| WAD.S.2840 | ceramic floor tiles (Material Prepare & Submit) (GUARD HOUSE) | 2026-08-24 → 2026-09-19 A (+26d) | 2026-08-27 → 2026-10-01 (+35d) | 0% → 60% | 8d → -20.2d | WAD.S.1080 SS+91d, WAD.S.2700 → WAD.S.1080 SS+53d, WAD.S.2700 |
| WAD.S.2850 | Riyadh stone cladding (Material Prepare & Submit) (GUARD HOUSE) | 2026-08-24 → 2026-09-19 A (+26d) | 2026-08-27 → 2026-10-01 (+35d) | 0% → 60% | 9d → -24.2d | WAD.S.1080 SS+91d, WAD.S.2700 → WAD.S.1080 SS+53d, WAD.S.2700 |
| WAD.S.2860 | UPS (Material Prepare & Submit) (GUARD HOUSE) | 2026-08-24 → 2026-09-19 A (+26d) | 2026-08-27 → 2026-10-01 (+35d) | 0% → 60% | 6d → -25.8d | WAD.S.1080 SS+91d, WAD.S.2700 → WAD.S.1080 SS+45d, WAD.S.2700 |
| WAD.S.2890 | Panel boards (Material Prepare & Submit) (GUARD HOUSE) | 2026-08-25 → 2026-09-19 A (+25d) | 2026-08-29 → 2026-10-01 (+33d) | 0% → 60% | 4d → -25.4d | WAD.S.1080 SS+92d, WAD.S.2700 → WAD.S.1080 SS+42d, WAD.S.2700 |
| WAD.S.3560 | aluminum framed double glazed windows (Material Prepare & Submit) (GUARD HOUSE) | 2026-09-02 → 2026-09-19 A (+17d) | 2026-09-06 → 2026-10-01 (+25d) | 0% → 60% | 4d → -17.2d | WAD.S.1080 SS+98d, WAD.S.3050 → WAD.S.1080 SS+55d, WAD.S.3050 |
| WAD.S.3570 | Roller blind (Material Prepare & Submit) (GUARD HOUSE) | 2026-09-02 → 2026-09-19 A (+17d) | 2026-09-06 → 2026-10-01 (+25d) | 0% → 60% | 0d → -21.2d | WAD.S.1080 SS+99d, WAD.S.3050 → WAD.S.1080 SS+55d, WAD.S.3050 |
| WAD.S.3590 | DATA COMMUNICATIONS (Material Prepare & Submit) (GUARD HOUSE) | 2026-09-02 → 2026-09-19 A (+17d) | 2026-09-06 → 2026-10-01 (+25d) | 0% → 60% | 6d → -15.2d | WAD.S.1080 SS+98d, WAD.S.3050 → WAD.S.1080 SS+55d, WAD.S.3050 |
| WAD.S.3710 | COMPUTERS AND RELATED PERIPHERALS (Material Prepare & Submit) (GUARD HOUSE) | 2026-09-03 → 2026-09-19 A (+16d) | 2026-09-07 → 2026-10-01 (+24d) | 0% → 60% | 5d → -15.2d | WAD.S.1080 SS+100d, WAD.S.3050 → WAD.S.1080 SS+50d, WAD.S.3050 |
| WAD.S.3030 | PANTRY CABINET (Material Prepare & Submit) (GUARD HOUSE) | 2026-08-29 → 2026-09-23 A (+25d) | 2026-09-01 → 2026-10-03 (+32d) | 0% → 60% | 6d → -25.8d | WAD.S.1080 SS+94d, WAD.S.2860 → WAD.S.1080 SS+50d, WAD.S.2860 |
| WAD.S.3040 | 20mm thick black granite (Material Prepare & Submit) (GUARD HOUSE) | 2026-08-29 → 2026-09-23 A (+25d) | 2026-09-01 → 2026-10-03 (+32d) | 0% → 60% | 10d → -10.3d | WAD.S.1080 SS+94d, WAD.S.2860 → WAD.S.1080 SS+60d, WAD.S.2860 |
| WAD.S.3060 | Safety Disconnect Switches complete with busbar, frame box (Material Prepare & Submit) (GUARD HOUSE) | 2026-08-29 → 2026-09-23 A (+25d) | 2026-09-01 → 2026-10-03 (+32d) | 0% → 60% | 6d → -19.8d | WAD.S.1080 SS+94d, WAD.S.2860 → WAD.S.1080 SS+50d, WAD.S.2860 |
| WAD.S.3300 | heavy steel cover with frame for tanks (Material Prepare & Submit) (GUARD HOUSE) | 2026-08-31 → 2026-09-23 A (+23d) | 2026-09-03 → 2026-10-03 (+30d) | 0% → 60% | 8d → -16.8d | WAD.S.1080 SS+97d, WAD.S.2890 → WAD.S.1080 SS+63d, WAD.S.2890 |
| WAD.S.3310 | HOLLOW METAL DOORS AND FRAMES (Material Prepare & Submit) (GUARD HOUSE) | 2026-08-31 → 2026-09-23 A (+23d) | 2026-09-03 → 2026-10-03 (+30d) | 0% → 60% | 7d → -17.8d | WAD.S.1080 SS+97d, WAD.S.2890 → WAD.S.1080 SS+55d, WAD.S.2890 |
| WAD.S.3320 | ALUMINIUM DOORS (Material Prepare & Submit) (GUARD HOUSE) | 2026-08-31 → 2026-09-23 A (+23d) | 2026-09-03 → 2026-10-03 (+30d) | 0% → 60% | 8d → -16.8d | WAD.S.1080 SS+97d, WAD.S.2890 → WAD.S.1080 SS+55d, WAD.S.2890 |
| WAD.S.3330 | TOILET AND BATH ACCESSROIES (Material Prepare & Submit) (GUARD HOUSE) | 2026-08-31 → 2026-09-23 A (+23d) | 2026-09-03 → 2026-10-03 (+30d) | 0% → 60% | 8d → -11.7d | WAD.S.1080 SS+97d, WAD.S.2890 → WAD.S.1080 SS+60d, WAD.S.2890 |
| WAD.S.3340 | Waste Receptacle (Material Prepare & Submit) (GUARD HOUSE) | 2026-08-31 → 2026-09-23 A (+23d) | 2026-09-03 → 2026-10-03 (+30d) | 0% → 60% | 5d → -19.8d | WAD.S.1080 SS+97d, WAD.S.2890 → WAD.S.1080 SS+55d, WAD.S.2890 |
| WAD.S.3350 | LIGHTING FIXTURES (Material Prepare & Submit) (GUARD HOUSE) | 2026-08-31 → 2026-09-23 A (+23d) | 2026-09-03 → 2026-10-03 (+30d) | 0% → 60% | 6d → -18.8d | WAD.S.1080 SS+97d, WAD.S.2890 → WAD.S.1080 SS+55d, WAD.S.2890 |
| WAD.S.3360 | Access control panel (Material Prepare & Submit) (GUARD HOUSE) | 2026-08-31 → 2026-09-23 A (+23d) | 2026-09-03 → 2026-10-03 (+30d) | 0% → 60% | 5d → -19.8d | WAD.S.1080 SS+97d, WAD.S.2890 → WAD.S.1080 SS+55d, WAD.S.2890 |
| WAD.S.3370 | VIDEO SURVEILLANCE (Material Prepare & Submit) (GUARD HOUSE) | 2026-08-31 → 2026-09-23 A (+23d) | 2026-09-03 → 2026-10-03 (+30d) | 0% → 60% | 3d → -21.8d | WAD.S.1080 SS+97d, WAD.S.2890 → WAD.S.1080 SS+55d, WAD.S.2890 |
| 2 | **Material Review & Approve** | 2026-06-27 → 2026-06-25 (-2d) | 2026-09-22 → 2026-10-10 (+18d) |  |  |  |
| 1 | **Short Lead Items** | 2026-06-27 → 2026-07-06 (+9d) | 2026-09-22 → 2026-10-08 (+16d) |  |  |  |
| WAD.S.1390 | structural steel beams, posts and rods for wall fence (Material Review & Approve) (FENCES) | 2026-06-27 → 2026-07-06 A (+9d) | 2026-07-02 → 2026-07-19 A (+17d) | 0% → 100% | 42d → none |  |
| WAD.S.1440 | tubes, bolts, nuts and steel plates to strengthened the wall fence and posts (Material Review & Approve) (FENCES) | 2026-07-01 → 2026-07-06 A (+5d) | 2026-07-07 → 2026-07-19 A (+12d) | 0% → 100% | 44d → none |  |
| WAD.S.1550 | bitumen waterproofing paint on concrete surfaces (Material Review & Approve) (FENCES) | 2026-07-06 A | 2026-07-12 → 2026-07-19 A (+7d) | 0% → 100% | 25d → none |  |
| WAD.S.2990 | Concrete Masonry (200mm thick ) (Material Review & Approve) (GUARD HOUSE) | 2026-08-29 → 2026-07-06 A (-54d) | 2026-09-03 → 2026-07-19 A (-46d) | 0% → 100% | 24d → none |  |
| WAD.S.3120 | Concrete Masonry (100mm thick ) (Material Review & Approve) (GUARD HOUSE) | 2026-08-30 → 2026-07-06 A (-55d) | 2026-09-05 → 2026-07-19 A (-48d) | 0% → 100% | 24d → none |  |
| WAD.S.3540 | GROUNDING (Material Review & Approve) (GUARD HOUSE) | 2026-09-02 → 2026-07-06 A (-58d) | 2026-09-08 → 2026-07-19 A (-51d) | 0% → 100% | 20d → none |  |
| WAD.S.4060 | FIRE PROTECTION SYSTEM (fire extinguisher) (Material Review & Approve) (GUARD HOUSE) | 2026-09-07 → 2026-07-06 A (-63d) | 2026-09-13 → 2026-07-19 A (-56d) | 0% → 100% | 14d → none |  |
| WAD.S.3550 | ROAD WORKS (Material Review & Approve) (GUARD HOUSE) | 2026-09-02 → 2026-07-15 A (-49d) | 2026-09-08 → 2026-10-01 (+23d) | 0% → 60% | 4d → -13d |  |
| WAD.S.2810 | GRP Pipes laid in trenches(Material Review & Approve) (GUARD HOUS | 2026-08-24 → 2026-08-02 A (-22d) | 2026-08-30 → 2026-08-02 A (-28d) | 0% → 100% | 0d → none |  |
| WAD.S.2820 | 100 mm GRP pipe service connections(Material Review & Approve) (GUARD HOUSE) | 2026-08-24 → 2026-08-02 A (-22d) | 2026-08-30 → 2026-08-02 A (-28d) | 0% → 100% | 3d → none |  |
| WAD.S.1380 | Backfilling Works (Material Review & Approve) | 2026-06-27 → 2026-08-12 A (+46d) | 2026-07-02 → 2026-08-18 A (+47d) | 0% → 100% | 25d → none |  |
| WAD.S.2680 | Manhole depth not exceeding 4.0m (Material Review & Approve) (GUARD HOUSE) | 2026-08-19 → 2026-09-29 (+41d) | 2026-08-25 → 2026-10-06 (+42d) |  | 19d → -12.6d |  |
| WAD.S.4840 | UNDERGROUND DISTRIBUTION SYSTEM (Material Review & Approve) (GUARD HOUSE) | 2026-09-16 → 2026-09-29 (+13d) | 2026-09-22 → 2026-10-06 (+14d) |  | 8d → -2.1d |  |
| WAD.S.3140 | SIDEWALKS AND CURBS (Material Review & Approve) (GUARD HOUSE) | 2026-08-30 → 2026-10-01 (+32d) | 2026-09-05 → 2026-10-08 (+33d) |  | 5d → -19.7d |  |
| 2 | **Long Lead Items** | 2026-07-20 → 2026-06-25 (-25d) | 2026-09-14 → 2026-10-10 (+26d) |  |  |  |
| WAD.S.1480 | fix galvanized steel chain link gate including all necessary associated (Material Review & Approve) (FENCES) | 2026-07-20 → 2026-06-25 A (-25d) | 2026-07-26 → 2026-06-27 A (-29d) | 0% → 100% | 11d → none |  |
| WAD.S.1510 | Intrusion Detection system including processor control units items and joints (Material Review & Approve) (FENCES) | 2026-07-25 → 2026-07-05 A (-20d) | 2026-07-30 → 2026-09-29 (+61d) | 0% → 85% | 11d → -34.5d | WAD.S.1490 → WAD.S.1490, WAD.S.1490 SS |
| WAD.S.3670 | WATER SUPPLY SYSTEM (Material Review & Approve) (GUARD HOUSE) | 2026-09-03 → 2026-07-05 A (-60d) | 2026-09-09 → 2026-09-30 (+21d) | 0% → 85% | 6d → -12.1d | WAD.S.3220 → WAD.S.3220, WAD.S.3220 SS |
| WAD.S.3680 | SEWER AND DRAINAGE SYSTEM (Material Review & Approve) (GUARD HOUSE) | 2026-09-03 → 2026-07-05 A (-60d) | 2026-09-09 → 2026-10-04 (+25d) | 0% → 85% | 5d → -15.3d | WAD.S.3230 → WAD.S.3230, WAD.S.3670 SS, WAD.S.3230 SS |
| WAD.S.3700 | HEATING, VENTILATION AND AIR CONDITIONING (Material Review & Approve) (GUARD HOUSE) | 2026-09-03 → 2026-07-05 A (-60d) | 2026-09-09 → 2026-10-03 (+24d) | 0% → 85% | 5d → -14.9d | WAD.S.3250 → WAD.S.3250, WAD.S.3250 SS |
| WAD.S.2190 | structural steel members and plates for main sliding gates (Material Review & Approve) (FENCES) | 2026-08-02 → 2026-07-06 A (-27d) | 2026-08-08 → 2026-07-19 A (-20d) | 0% → 100% | 1d → none |  |
| WAD.S.3800 | TOILET AND BATH ACCESSROIES (Material Review & Approve) (GUARD HOUSE) | 2026-09-05 → 2026-07-12 A (-55d) | 2026-09-10 → 2026-10-04 (+24d) | 0% → 85% | 8d → -11.7d |  |
| WAD.S.3690 | SUPPLY AND INSTALL PLUMBING FIXTURES (Material Review & Approve) (GUARD HOUSE) | 2026-09-03 → 2026-07-13 A (-52d) | 2026-09-09 → 2026-10-10 (+31d) | 0% → 75% | 0d → -25.8d | WAD.S.3240 → WAD.S.3240, WAD.S.3240 FF, WAD.S.3650 FF |
| WAD.S.3530 | Safety Disconnect Switches complete with busbar, frame box (Material Review & Approve) (GUARD HOUSE) | 2026-09-02 → 2026-07-28 A (-36d) | 2026-09-08 → 2026-08-01 A (-38d) | 0% → 100% | 6d → none | WAD.S.3060 → WAD.S.3060, WAD.S.3500 FF |
| WAD.S.1650 | Handholes\ Manholes (Material Review & Approve) (FENCES) | 2026-07-29 → 2026-09-29 (+62d) | 2026-08-04 → 2026-10-06 (+63d) |  | 33d → -14.2d |  |
| WAD.S.3000 | ceramic floor tiles (Material Review & Approve) (GUARD HOUSE) | 2026-08-29 → 2026-10-01 (+33d) | 2026-09-03 → 2026-10-08 (+35d) |  | 8d → -20.2d |  |
| WAD.S.3010 | install Riyadh stone cladding (Material Review & Approve) (GUARD HOUSE) | 2026-08-29 → 2026-10-01 (+33d) | 2026-09-03 → 2026-10-08 (+35d) |  | 9d → -24.2d |  |
| WAD.S.3020 | UPS (Material Review & Approve) (GUARD HOUSE) | 2026-08-29 → 2026-10-01 (+33d) | 2026-09-03 → 2026-10-08 (+35d) |  | 7d → -13.2d |  |

| ID | Task | Start | Finish | Complete | Total float | Predecessors |
| --- | --- | --- | --- | --- | --- | --- |
| WAD.S.3130 | Panel boards (Material Review & Approve) (GUARD HOUSE) | 2026-08-30 → 2026-10-01 (+32d) | 2026-09-05 → 2026-10-08 (+33d) |  | 8d → -24.2d | WAD.S.2890 → WAD.S.2890, WAD.S.3010 FF |
| WAD.S.3660 | card reader IN/OUT (Material Review & Approve) (GUARD HOUSE) | 2026-09-03 → 2026-10-01 (+28d) | 2026-09-09 → 2026-10-08 (+29d) |  | 4d → -20.2d | WAD.S.3210 → WAD.S.3210, WAD.S.3000 FF |
| WAD.S.4040 | aluminum framed double glazed windows (Material Review & Approve) (GUARD HOUSE) | 2026-09-07 → 2026-10-01 (+24d) | 2026-09-13 → 2026-10-08 (+25d) |  | 4d → -17.2d |  |
| WAD.S.4050 | Roller blind (Material Review & Approve) (GUARD HOUSE) | 2026-09-07 → 2026-10-01 (+24d) | 2026-09-13 → 2026-10-08 (+25d) |  | 0d → -21.2d |  |
| WAD.S.4070 | DATA COMMUNICATIONS (Material Review & Approve) (GUARD HOUSE) | 2026-09-07 → 2026-10-01 (+24d) | 2026-09-13 → 2026-10-08 (+25d) |  | 6d → -15.2d |  |
| WAD.S.4080 | COMPUTERS AND RELATED PERIPHERALS (Material Review & Approve) (GUARD HOUSE) | 2026-09-08 → 2026-10-01 (+23d) | 2026-09-14 → 2026-10-08 (+24d) |  | 5d → -15.2d |  |
| WAD.S.3500 | PANTRY CABINET (Material Review & Approve) (GUARD HOUSE) | 2026-09-02 → 2026-10-03 (+31d) | 2026-09-08 → 2026-10-10 (+32d) |  | 6d → -25.8d | WAD.S.3030 → WAD.S.3030, WAD.S.3130 FF |
| WAD.S.3510 | 20mm thick black granite (Material Review & Approve) (GUARD HOUSE) | 2026-09-02 → 2026-10-03 (+31d) | 2026-09-08 → 2026-10-10 (+32d) |  | 10d → -10.3d | WAD.S.3040 → WAD.S.3040, WAD.S.3020 FF |
| WAD.S.3520 | Workstation chair (Material Review & Approve) (GUARD HOUSE) | 2026-09-02 → 2026-10-03 (+31d) | 2026-09-08 → 2026-10-10 (+32d) |  | 6d → -12.8d | WAD.S.3050 → WAD.S.3050, WAD.S.3500 FF |
| WAD.S.3600 | folding & sliding mounter combination ladder for building maintenance purpose (Material Review & Approve) (GUARD HOUSE) | 2026-09-03 → 2026-10-03 (+30d) | 2026-09-09 → 2026-10-10 (+31d) |  | 7d → -25.8d | WAD.S.3150 → WAD.S.3150, WAD.S.3530 FF |
| WAD.S.3610 | overflow galvanized steel roof scupper (Material Review & Approve) (GUARD HOUSE) | 2026-09-03 → 2026-10-03 (+30d) | 2026-09-09 → 2026-10-10 (+31d) |  | 7d → -25.8d | WAD.S.3160 → WAD.S.3160, WAD.S.3600 FF |
| WAD.S.3620 | counter desk (Material Review & Approve) (GUARD HOUSE) | 2026-09-03 → 2026-10-03 (+30d) | 2026-09-09 → 2026-10-10 (+31d) |  | 5d → -25.8d | WAD.S.3170 → WAD.S.3170, WAD.S.3610 FF |
| WAD.S.3630 | install ceramic wall tiles (Material Review & Approve) (GUARD HOUSE) | 2026-09-03 → 2026-10-03 (+30d) | 2026-09-09 → 2026-10-10 (+31d) |  | 7d → -25.8d | WAD.S.3180 → WAD.S.3180, WAD.S.3620 FF |
| WAD.S.3640 | PANEL SIGNAGE (Material Review & Approve) (GUARD HOUSE) | 2026-09-03 → 2026-10-03 (+30d) | 2026-09-09 → 2026-10-10 (+31d) |  | 6d → -25.8d | WAD.S.3190 → WAD.S.3190, WAD.S.3630 FF |
| WAD.S.3650 | COMMUNICATIONS BACKBONE CABLING (Material Review & Approve) (GUARD HOUSE) | 2026-09-03 → 2026-10-03 (+30d) | 2026-09-09 → 2026-10-10 (+31d) |  | 9d → -25.8d | WAD.S.3200 → WAD.S.3200, WAD.S.3640 FF |
| WAD.S.3770 | heavy steel cover with frame for tanks (Material Review & Approve) (GUARD HOUSE) | 2026-09-05 → 2026-10-03 (+28d) | 2026-09-10 → 2026-10-10 (+30d) |  | 8d → -16.8d | WAD.S.3300 → WAD.S.3300, WAD.S.3670 FF |
| WAD.S.3780 | HOLLOW METAL DOORS AND FRAMES (Material Review & Approve) (GUARD HOUSE) | 2026-09-05 → 2026-10-03 (+28d) | 2026-09-10 → 2026-10-10 (+30d) |  | 7d → -17.8d | WAD.S.3310 → WAD.S.3310, WAD.S.3310 FF |
| WAD.S.3790 | ALUMINIUM DOORS (Material Review & Approve) (GUARD HOUSE) | 2026-09-05 → 2026-10-03 (+28d) | 2026-09-10 → 2026-10-10 (+30d) |  | 8d → -16.8d | WAD.S.3320 → WAD.S.3320, WAD.S.3320 FF |
| WAD.S.3810 | Waste Receptacle (Material Review & Approve) (GUARD HOUSE) | 2026-09-05 → 2026-10-03 (+28d) | 2026-09-10 → 2026-10-10 (+30d) |  | 5d → -19.8d |  |
| WAD.S.3820 | LIGHTING FIXTURES (Material Review & Approve) (GUARD HOUSE) | 2026-09-05 → 2026-10-03 (+28d) | 2026-09-10 → 2026-10-10 (+30d) |  | 6d → -18.8d |  |
| WAD.S.3830 | Access control panel (Material Review & Approve) (GUARD HOUSE) | 2026-09-05 → 2026-10-03 (+28d) | 2026-09-10 → 2026-10-10 (+30d) |  | 5d → -19.8d |  |
| WAD.S.3840 | VIDEO SURVEILLANCE (Material Review & Approve) (GUARD HOUSE) | 2026-09-05 → 2026-10-03 (+28d) | 2026-09-10 → 2026-10-10 (+30d) |  | 3d → -21.8d |  |
| 7 | **Procurement** | 2026-07-04 → 2026-06-08 (-26d) | 2026-09-28 → 2026-10-27 (+29d) |  |  |  |
| 5 | **Fabrication & Delivery** | 2026-07-04 → 2026-06-08 (-26d) | 2026-09-28 → 2026-10-27 (+29d) |  |  |  |
| 1 | **Short Lead Items** | 2026-07-04 → 2026-06-08 (-26d) | 2026-09-26 → 2026-10-12 (+16d) |  |  |  |
| WAD.S.1430 | structural steel beams, posts and rods for wall fence (FENCES) | 2026-07-04 → 2026-06-08 A (-26d) | 2026-07-07 → 2026-09-28 (+83d) | 0% → 95% | 42d → -20.2d |  |
| WAD.S.1540 | tubes, bolts, nuts and steel plates to strengthened the wall fence and posts (FENCES) | 2026-07-08 → 2026-06-09 A (-29d) | 2026-07-11 → 2026-09-28 (+79d) | 0% → 95% | 44d → -20.15d |  |
| WAD.S.3730 | Concrete Masonry (200mm thick ) (GUARD HOUSE) | 2026-09-05 → 2026-08-08 A (-28d) | 2026-09-07 → 2026-08-08 A (-30d) | 0% → 100% | 24d → none |  |
| WAD.S.3890 | Concrete Masonry (100mm thick ) (GUARD HOUSE) | 2026-09-06 → 2026-08-08 A (-29d) | 2026-09-07 → 2026-08-08 A (-30d) | 0% → 100% | 24d → none |  |
| WAD.S.2180 | bitumen waterproofing paint on concrete surfaces (FENCES) | 2026-07-13 → 2026-08-17 A (+35d) | 2026-07-16 → 2026-08-20 A (+35d) | 0% → 100% | 25d → none |  |
| WAD.S.1420 | Backfilling Works | 2026-07-04 → 2026-08-18 A (+45d) | 2026-07-07 → 2026-08-22 A (+46d) | 0% → 100% | 25d → none |  |
| WAD.S.3280 | GRP Pipes laid in trenches(Fabrication & Delivery) (GUARD HOUSE) | 2026-08-31 → 2026-09-19 A (+19d) | 2026-09-06 → 2026-09-24 A (+18d) | 0% → 100% | 0d → none |  |
| WAD.S.4780 | FIRE PROTECTION SYSTEM (fire extinguisher) (GUARD HOUSE) | 2026-09-14 → 2026-09-23 A (+9d) | 2026-09-19 → 2026-09-30 (+11d) | 0% → 50% | 14d → 4.5d |  |
| WAD.S.3290 | 100 mm GRP pipe service connections (GUARD HOUSE) | 2026-08-31 → 2026-09-24 A (+24d) | 2026-09-06 → 2026-10-03 (+27d) | 0% → 50% | 3d → -19.6d |  |
| WAD.S.4160 | GROUNDING (GUARD HOUSE) | 2026-09-09 → 2026-09-24 A (+15d) | 2026-09-12 → 2026-10-01 (+19d) | 0% → 50% | 20d → 3.9d |  |
| WAD.S.4170 | ROAD WORKS (GUARD HOUSE) | 2026-09-09 → 2026-09-28 A (+19d) | 2026-09-15 → 2026-10-05 (+20d) | 0% → 50% | 4d → -13d |  |
| WAD.S.2970 | Manhole depth not exceeding 4.0m (GUARD HOUSE) | 2026-08-26 → 2026-10-01 A (+36d) | 2026-09-03 → 2026-10-11 (+38d) | 0% → 50% | 19d → -12.6d |  |
| WAD.S.3910 | SIDEWALKS AND CURBS (GUARD HOUSE) | 2026-09-06 → 2026-10-04 A (+28d) | 2026-09-13 → 2026-10-12 (+29d) | 0% → 50% | 5d → -19.7d |  |
| WAD.S.5080 | UNDERGROUND DISTRIBUTION SYSTEM (GUARD HOUSE) | 2026-09-23 → 2026-10-05 A (+12d) | 2026-09-26 → 2026-10-08 (+12d) | 0% → 50% | 8d → -2.1d |  |
| 2 | **Long Lead Items** | 2026-07-27 → 2026-08-22 (+26d) | 2026-09-28 → 2026-10-27 (+29d) |  |  |  |
| WAD.S.1570 | fix galvanized steel chain link gate including all necessary associated (FENCES) | 2026-07-27 → 2026-08-22 A (+26d) | 2026-08-12 → 2026-09-28 (+47d) | 0% → 95% | 11d → -20.75d |  |
| WAD.S.2470 | structural steel members and plates for main sliding gates (FENCES) | 2026-08-09 → 2026-09-09 A (+31d) | 2026-08-24 → 2026-09-28 (+35d) | 0% → 95% | 1d → -20.7d |  |
| WAD.S.2170 | Intrusion Detection system including processor control units items and joints (FENCES) | 2026-08-01 → 2026-09-24 A (+54d) | 2026-08-13 → 2026-10-06 (+54d) | 0% → 50% | 11d → -34.5d |  |
| WAD.S.4580 | WATER SUPPLY SYSTEM (GUARD HOUSE) | 2026-09-10 → 2026-09-30 (+20d) | 2026-09-24 → 2026-10-15 (+21d) |  | 6d → -11.1d |  |
| WAD.S.2260 | Handholes\ Manholes (FENCES) | 2026-08-05 → 2026-10-01 A (+57d) | 2026-08-18 → 2026-10-13 (+56d) | 0% → 50% | 33d → -14.2d |  |
| WAD.S.4610 | HEATING, VENTILATION AND AIR CONDITIONING (GUARD HOUSE) | 2026-09-10 → 2026-10-03 (+23d) | 2026-09-26 → 2026-10-19 (+23d) |  | 5d → -14.9d |  |
| WAD.S.3740 | ceramic floor tiles (GUARD HOUSE) | 2026-09-05 → 2026-10-04 A (+29d) | 2026-09-17 → 2026-10-15 (+28d) | 0% → 50% | 8d → -15.2d |  |
| WAD.S.3750 | install Riyadh stone cladding (GUARD HOUSE) | 2026-09-05 → 2026-10-04 A (+29d) | 2026-09-17 → 2026-10-15 (+28d) | 0% → 50% | 9d → -14.2d |  |
| WAD.S.3760 | UPS (GUARD HOUSE) | 2026-09-05 → 2026-10-04 A (+29d) | 2026-09-24 → 2026-10-19 (+25d) | 0% → 50% | 7d → -13.2d |  |
| WAD.S.3900 | Panel boards (GUARD HOUSE) | 2026-09-06 → 2026-10-04 A (+28d) | 2026-09-26 → 2026-10-19 (+23d) | 0% → 50% | 8d → -11.2d |  |
| WAD.S.4590 | SEWER AND DRAINAGE SYSTEM (GUARD HOUSE) | 2026-09-10 → 2026-10-04 (+24d) | 2026-09-26 → 2026-10-20 (+24d) |  | 5d → -15.3d |  |
| WAD.S.4650 | TOILET AND BATH ACCESSROIES (GUARD HOUSE) | 2026-09-12 → 2026-10-04 (+22d) | 2026-09-26 → 2026-10-19 (+23d) |  | 8d → -11.7d |  |
| WAD.S.4120 | PANTRY CABINET (GUARD HOUSE) | 2026-09-09 → 2026-10-05 A (+26d) | 2026-09-26 → 2026-10-19 (+23d) | 0% → 50% | 6d → -13.3d |  |
| WAD.S.4130 | 20mm thick black granite (GUARD HOUSE) | 2026-09-09 → 2026-10-05 A (+26d) | 2026-09-23 → 2026-10-18 (+25d) | 0% → 50% | 10d → -10.3d |  |
| WAD.S.4140 | Workstation chair (GUARD HOUSE) | 2026-09-09 → 2026-10-06 A (+27d) | 2026-09-27 → 2026-10-19 (+22d) | 0% → 50% | 6d → -12.8d |  |
| WAD.S.4150 | Safety Disconnect Switches complete with busbar, frame box (GUARD HOUSE) | 2026-09-09 → 2026-10-06 A (+27d) | 2026-09-28 → 2026-10-20 (+22d) | 0% → 50% | 6d → -12.3d |  |
| WAD.S.4510 | folding & sliding mounter combination ladder for building maintenance purpose (GUARD HOUSE) | 2026-09-10 → 2026-10-06 A (+26d) | 2026-09-24 → 2026-10-18 (+24d) | 0% → 50% | 7d → -12.3d |  |
| WAD.S.4520 | overflow galvanized steel roof scupper (GUARD HOUSE) | 2026-09-10 → 2026-10-07 A (+27d) | 2026-09-24 → 2026-10-18 (+24d) | 0% → 50% | 7d → -12.3d |  |
| WAD.S.4530 | counter desk (GUARD HOUSE) | 2026-09-10 → 2026-10-07 A (+27d) | 2026-09-26 → 2026-10-18 (+22d) | 0% → 50% | 5d → -13.8d |  |
| WAD.S.4540 | install ceramic wall tiles (GUARD HOUSE) | 2026-09-10 → 2026-10-07 A (+27d) | 2026-09-23 → 2026-10-17 (+24d) | 0% → 50% | 7d → -12.8d |  |
| WAD.S.4570 | card reader IN/OUT (GUARD HOUSE) | 2026-09-10 → 2026-10-08 (+28d) | 2026-09-27 → 2026-10-26 (+29d) |  | 4d → -20.2d |  |
| WAD.S.4760 | aluminum framed double glazed windows (GUARD HOUSE) | 2026-09-14 → 2026-10-08 (+24d) | 2026-09-27 → 2026-10-22 (+25d) |  | 4d → -17.2d |  |
| WAD.S.4770 | Roller blind (GUARD HOUSE) | 2026-09-14 → 2026-10-08 (+24d) | 2026-09-27 → 2026-10-22 (+25d) |  | 0d → -21.2d |  |
| WAD.S.4790 | DATA COMMUNICATIONS (GUARD HOUSE) | 2026-09-14 → 2026-10-08 (+24d) | 2026-09-28 → 2026-10-24 (+26d) |  | 6d → -15.2d |  |
| WAD.S.4820 | COMPUTERS AND RELATED PERIPHERALS (GUARD HOUSE) | 2026-09-15 → 2026-10-08 (+23d) | 2026-09-26 → 2026-10-20 (+24d) |  | 5d → -15.2d |  |
| WAD.S.4550 | PANEL SIGNAGE (GUARD HOUSE) | 2026-09-10 → 2026-10-10 (+30d) | 2026-09-26 → 2026-10-26 (+30d) |  | 6d → -19.8d |  |
| WAD.S.4560 | COMMUNICATIONS BACKBONE CABLING (GUARD HOUSE) | 2026-09-10 → 2026-10-10 (+30d) | 2026-09-24 → 2026-10-25 (+31d) |  | 9d → -16.8d |  |
| WAD.S.4600 | SUPPLY PLUMBING FIXTURES (GUARD HOUSE) | 2026-09-10 → 2026-10-10 (+30d) | 2026-09-24 → 2026-10-25 (+31d) |  | 0d → -25.8d |  |
| WAD.S.4620 | heavy steel cover with frame for tanks (GUARD HOUSE) | 2026-09-12 → 2026-10-10 (+28d) | 2026-09-26 → 2026-10-25 (+29d) |  | 8d → -16.8d |  |
| WAD.S.4630 | HOLLOW METAL DOORS AND FRAMES (GUARD HOUSE) | 2026-09-12 → 2026-10-10 (+28d) | 2026-09-27 → 2026-10-26 (+29d) |  | 7d → -17.8d |  |

| ID | Task | Start | Finish | Complete | Total float | Predecessors |
| --- | --- | --- | --- | --- | --- | --- |
| WAD.S.4640 | ALUMINIUM DOORS (GUARD HOUSE) | 2026-09-12 → 2026-10-10 (+28d) | 2026-09-26 → 2026-10-25 (+29d) |  | 8d → -16.8d |  |
| WAD.S.4660 | Waste Receptacle (GUARD HOUSE) | 2026-09-12 → 2026-10-10 (+28d) | 2026-09-28 → 2026-10-27 (+29d) |  | 5d → -19.8d |  |
| WAD.S.4670 | LIGHTING FIXTURES (GUARD HOUSE) | 2026-09-12 → 2026-10-10 (+28d) | 2026-09-24 → 2026-10-24 (+30d) |  | 6d → -18.8d |  |
| WAD.S.4680 | Access control panel (GUARD HOUSE) | 2026-09-12 → 2026-10-10 (+28d) | 2026-09-27 → 2026-10-26 (+29d) |  | 5d → -19.8d |  |
| WAD.S.4690 | VIDEO SURVEILLANCE (GUARD HOUSE) | 2026-09-12 → 2026-10-10 (+28d) | 2026-09-27 → 2026-10-26 (+29d) |  | 3d → -21.8d |  |
| 8 | **Construction** | 2026-06-27 → 2026-06-08 (-19d) | 2026-10-05 → 2026-11-17 (+43d) |  |  |  |
| 1 | **FENCES** | 2026-06-27 → 2026-07-06 (+9d) | 2026-10-05 → 2026-11-15 (+41d) |  |  |  |
| 1 | **SITE WORKS** | 2026-06-27 → 2026-07-06 (+9d) | 2026-08-26 → 2026-09-28 (+33d) |  |  |  |
| WAD.S.1340 | Demolition Works | 2026-06-27 → 2026-07-06 A (+9d) | 2026-07-07 → 2026-07-19 A (+12d) | 0% → 100% | 0d → none | WAD.S.1010, WAD.S.1330 FS+12d → WAD.S.1010, WAD.S.1330 FS+12d, WAD.S.1330 SS+12d |
| WAD.S.1370 | Excavation Works | 2026-07-08 → 2026-07-11 A (+3d) | 2026-07-25 → 2026-09-28 (+65d) | 0% → 98% | 0d → -27.3d |  |
| WAD.S.1530 | Backfilling Works Before Foundation | 2026-07-26 → 2026-08-01 A (+6d) | 2026-08-15 → 2026-09-05 A (+21d) | 0% → 100% | 10d → none |  |
| WAD.S.3380 | Backfilling Works After Foundation | 2026-08-22 → 2026-09-01 A (+10d) | 2026-08-26 → 2026-09-05 A (+10d) | 0% → 100% | 34d → none |  |
| 2 | **CONCRETE WORKS** | 2026-07-26 → 2026-07-09 (-17d) | 2026-09-12 → 2026-10-01 (+19d) |  |  |  |
| 1 | **Part 1** | 2026-07-26 → 2026-07-09 (-17d) | 2026-08-18 → 2026-09-29 (+42d) |  |  |  |
| WAD.S.1560 | cast in place reinforced concrete for the sub-structures - Part 1 | 2026-07-26 → 2026-07-09 A (-17d) | 2026-08-18 → 2026-09-29 (+42d) | 0% → 93% | 0d → -20.3d | WAD.S.1370 → WAD.S.1370, WAD.S.1370 SS |
| 2 | **Part 2** | 2026-08-19 → 2026-07-09 (-41d) | 2026-09-12 → 2026-10-01 (+19d) |  |  |  |
| WAD.S.2720 | cast in place reinforced concrete for the sub-structures - Part 2 | 2026-08-19 → 2026-07-09 A (-41d) | 2026-09-12 → 2026-10-01 (+19d) | 0% → 93% | 0d → -15.24d | WAD.S.1560 → WAD.S.1560, WAD.S.1560 SS |
| 3 | **THERMAL & MOISTURE PROTECTION** | 2026-07-28 → 2026-08-18 (+21d) | 2026-09-14 → 2026-10-17 (+33d) |  |  |  |
| 1 | **Part 1** | 2026-07-28 → 2026-08-18 (+21d) | 2026-08-20 → 2026-10-01 (+42d) |  |  |  |
| WAD.S.2330 | Applying 2 coats of bitumen waterproofing paint on concrete surfaces - Part 1 | 2026-07-28 → 2026-08-18 A (+21d) | 2026-08-20 → 2026-10-01 (+42d) | 0% → 89% | 16d → -11.79d |  |
| 2 | **Part 2** | 2026-08-22 → 2026-10-01 (+40d) | 2026-09-14 → 2026-10-17 (+33d) |  |  |  |
| WAD.S.3420 | Applying 2 coats of bitumen waterproofing paint on concrete surfaces - Part 2 | 2026-08-22 → 2026-10-01 A (+40d) | 2026-09-14 → 2026-10-17 (+33d) | 0% → 38% | 16d → -11.79d |  |
| 6 | **SPECIAL CONSTRUCTION- STRUCTURAL STEEL** | 2026-08-25 → 2026-08-31 (+6d) | 2026-10-05 → 2026-10-26 (+21d) |  |  |  |
| 1 | **Part 1** | 2026-08-25 → 2026-08-31 (+6d) | 2026-10-05 → 2026-10-10 (+5d) |  |  |  |
| WAD.S.2870 | install structural steel beams, posts and rods for wall fence - Part 1 | 2026-08-25 → 2026-08-31 A (+6d) | 2026-09-17 → 2026-09-24 A (+7d) | 0% → 100% | 1d → none |  |
| WAD.S.3260 | Install tubes, bolts, nuts and steel plates to strengthened the wall fence and posts - Part 1 | 2026-08-31 → 2026-09-26 A (+26d) | 2026-09-23 → 2026-09-30 A (+7d) | 0% → 100% | 1d → none |  |
| WAD.S.3870 | fix galvanized steel chain link fence wall; including steel tube framing and posts, turn buckle - Part 1 | 2026-09-06 → 2026-10-01 A (+25d) | 2026-09-29 → 2026-10-05 A (+6d) | 0% → 100% | 1d → none |  |
| WAD.S.4720 | galvanized steel chain link gates Installation - Part 1 | 2026-09-13 → 2026-10-07 A (+24d) | 2026-10-05 → 2026-10-10 (+5d) | 0% → 75% | 0d → -17.75d |  |
| 2 | **Part 2** | 2026-08-25 → 2026-09-21 (+27d) | 2026-10-05 → 2026-10-26 (+21d) |  |  |  |
| WAD.S.2920 | install structural steel beams, posts and rods for wall fence - Part 2 | 2026-08-25 → 2026-09-21 A (+27d) | 2026-09-17 → 2026-10-03 (+16d) | 0% → 80% | 8d → -4.95d |  |
| WAD.S.3430 | Install tubes, bolts, nuts and steel plates to strengthened the wall fence and posts - Part 2 | 2026-08-31 → 2026-09-26 A (+26d) | 2026-09-23 → 2026-10-06 (+13d) | 0% → 70% | 7d → -3.05d |  |
| WAD.S.3950 | fix galvanized steel chain link fence wall; including steel tube framing and posts, turn buckle - Part 2 | 2026-09-06 → 2026-10-01 A (+25d) | 2026-09-29 → 2026-10-07 (+8d) | 0% → 65% | 5d → -1.1d |  |
| WAD.S.4730 | galvanized steel chain link gates Installation - Part 2 | 2026-09-13 → 2026-10-07 A (+24d) | 2026-10-05 → 2026-10-26 (+21d) | 0% → 5% | 0d → -17.75d |  |
| 8 | **ELECTRICAL WORKS** | 2026-08-16 → 2026-10-06 (+51d) | 2026-09-23 → 2026-11-15 (+53d) |  |  |  |
| WAD.S.2640 | Intrusion Detection system including processor control units items and joints - 1st Fix | 2026-08-16 → 2026-10-06 (+51d) | 2026-08-25 → 2026-10-17 (+53d) |  | 10d → -34.5d |  |
| WAD.S.2950 | Fiber Optic Outdoor Cable | 2026-08-26 → 2026-10-17 (+52d) | 2026-09-03 → 2026-10-26 (+53d) |  | 10d → -34.5d |  |
| WAD.S.2960 | Road crossing ducts for Fiber Optic Cable | 2026-08-26 → 2026-10-17 (+52d) | 2026-09-02 → 2026-10-25 (+53d) |  | 25d → -19.5d |  |
| WAD.S.2980 | install 50mm diameter high-density polyethylene (HDPE) pipe including the require pipe fittings for connection, | 2026-08-29 → 2026-10-19 (+51d) | 2026-09-06 → 2026-10-28 (+52d) |  | 25d → -19.5d |  |
| WAD.S.3720 | Fiber Optic Outdoor Cable To Close The Loop | 2026-09-05 → 2026-10-26 (+51d) | 2026-09-14 → 2026-11-05 (+52d) |  | 10d → -34.5d |  |
| WAD.S.4810 | Handholes\ Manholes | 2026-09-15 → 2026-11-05 (+51d) | 2026-09-23 → 2026-11-15 (+53d) |  | 10d → -34.5d |  |
| 4 | **ELECTRICAL GATE BARRIER** | 2026-09-15 → 2026-11-05 (+51d) | 2026-09-23 → 2026-11-15 (+53d) |  |  |  |
| WAD.S.4830 | Install, Electrical gate barrier complete (cables, conduits, pipes, pulling cables in the conduits) | 2026-09-15 → 2026-11-05 (+51d) | 2026-09-23 → 2026-11-15 (+53d) |  | 10d → -34.5d |  |
| 2 | **GUARD HOUSE 1** | 2026-07-19 → 2026-07-06 (-13d) | 2026-10-01 → 2026-10-31 (+30d) |  |  |  |
| 1 | **SITE WORKS** | 2026-07-19 → 2026-07-06 (-13d) | 2026-09-21 → 2026-10-19 (+28d) |  |  |  |
| 4 | **Guard Rooms & Gates** | 2026-07-19 → 2026-07-06 (-13d) | 2026-08-06 → 2026-09-08 (+33d) |  |  |  |
| WAD.S.1450 | Excavation for guard rooms | 2026-07-19 → 2026-07-06 A (-13d) | 2026-07-27 → 2026-07-19 A (-8d) | 0% → 100% | 0d → none |  |
| WAD.S.1590 | Replacment Under Foundation | 2026-07-28 → 2026-08-02 A (+5d) | 2026-07-29 → 2026-08-04 A (+6d) | 0% → 100% | 0d → none |  |
| WAD.S.2270 | Backfilling Under G.Beam | 2026-08-05 → 2026-08-11 A (+6d) | 2026-08-06 → 2026-08-31 A (+25d) | 0% → 100% | 7d → none | WAD.S.1820 → WAD.S.1820, WAD.S.1820 SS, WAD.S.1300 FF-1d |
| WAD.S.2280 | Backfilling Under S.O.G | 2026-08-05 → 2026-09-07 A (+33d) | 2026-08-06 → 2026-09-08 A (+33d) | 0% → 100% | 29d → none | WAD.S.1820 → WAD.S.1820, WAD.S.1820 SS |
| 5 | **Guard Rooms & Gates (CONCRETE Works)** | 2026-07-28 → 2026-07-12 (-16d) | 2026-09-21 → 2026-10-19 (+28d) |  |  |  |
| WAD.S.1820 | Isolated Footings & Column Neck | 2026-07-30 → 2026-07-12 A (-18d) | 2026-08-04 → 2026-08-08 A (+4d) | 0% → 100% | 0d → none | WAD.S.1600 SS+2d → WAD.S.1600 SS+2d, WAD.S.1600 FF+2d |
| WAD.S.1600 | 50 mm thickness lean concrete under the foundation. | 2026-07-28 → 2026-08-04 A (+7d) | 2026-07-30 → 2026-08-06 A (+7d) | 0% → 100% | 0d → none |  |
| WAD.S.2340 | 50 mm thickness lean concrete under grade beams. | 2026-08-08 → 2026-08-31 A (+23d) | 2026-08-10 → 2026-09-03 A (+24d) | 0% → 100% | 7d → none |  |
| WAD.S.2600 | Grade beams | 2026-08-11 → 2026-09-03 A (+23d) | 2026-08-16 → 2026-09-09 A (+24d) | 0% → 100% | 7d → none |  |
| WAD.S.2710 | Raft and R.C. walls | 2026-08-19 → 2026-09-05 A (+17d) | 2026-08-24 → 2026-09-09 A (+16d) | 0% → 100% | 7d → none |  |
| WAD.S.2750 | Roof Slab | 2026-08-22 → 2026-09-06 A (+15d) | 2026-08-30 → 2026-09-08 A (+9d) | 0% → 100% | 7d → none |  |
| WAD.S.2760 | Beams | 2026-08-22 → 2026-09-06 A (+15d) | 2026-08-30 → 2026-09-08 A (+9d) | 0% → 100% | 7d → none |  |
| WAD.S.2650 | Columns | 2026-08-17 → 2026-09-09 A (+23d) | 2026-08-20 → 2026-09-14 A (+25d) | 0% → 100% | 7d → none |  |
| WAD.S.3400 | Concrete Pad | 2026-08-31 → 2026-09-12 A (+12d) | 2026-09-02 → 2026-09-14 A (+12d) | 0% → 100% | 11d → none |  |
| WAD.S.3390 | Provide and cast concrete floor slab on grade | 2026-08-31 → 2026-09-19 A (+19d) | 2026-09-05 → 2026-09-22 A (+17d) | 0% → 100% | 9d → none |  |
| WAD.S.3410 | Tanks Raft | 2026-08-31 → 2026-09-28 (+28d) | 2026-09-05 → 2026-10-03 (+28d) |  | 9d → -15d |  |
| WAD.S.3940 | Tanks Walls | 2026-09-06 → 2026-10-04 (+28d) | 2026-09-10 → 2026-10-08 (+28d) |  | 9d → -15d |  |
| WAD.S.4850 | Tanks Slab | 2026-09-17 → 2026-10-15 (+28d) | 2026-09-21 → 2026-10-19 (+28d) |  | 12d → -12d |  |
| 3 | **MASONRY UNIT** | 2026-08-25 → 2026-09-12 (+18d) | 2026-08-27 → 2026-09-27 (+31d) |  |  |  |
| WAD.S.2910 | install Concrete Masonry Unit (CMU) for walls | 2026-08-25 → 2026-09-12 A (+18d) | 2026-08-27 → 2026-09-27 A (+31d) | 0% → 100% | 7d → none |  |
| 6 | **THERMAL & MOISTURE PROTECTION** | 2026-09-06 → 2026-09-16 (+10d) | 2026-09-09 → 2026-10-04 (+25d) |  |  |  |
| 1 | **THERMAL & MOISTURE PROTECTION - Foundation** | 2026-09-06 → 2026-09-16 (+10d) | 2026-09-09 → 2026-10-04 (+25d) |  |  |  |
| WAD.S.3920 | apply 2 coats of bitumen waterproofing paint on concrete surface in contact with soil | 2026-09-06 → 2026-09-16 A (+10d) | 2026-09-07 → 2026-09-19 A (+12d) | 0% → 100% | 24d → none |  |
| WAD.S.3930 | install liquid applied waterproofing coating; single-component pitch modified polyurethane | 2026-09-06 → 2026-09-29 (+23d) | 2026-09-07 → 2026-10-01 (+24d) |  | 22d → 1.3d |  |
| WAD.S.4090 | install geotextile sheet | 2026-09-08 → 2026-10-01 (+23d) | 2026-09-09 → 2026-10-04 (+25d) |  | 22d → 1.3d |  |

| ID | Task | Start | Finish | Complete | Total float |
| --- | --- | --- | --- | --- | --- |
| 7 | **ROOFING SYSTEM** | 2026-09-09 → 2026-10-10 (+31d) | 2026-09-21 → 2026-10-21 (+30d) |  |  |
| WAD.S.4180 | install liquid applied waterproofing coating single-component pitch modified polyurethane based elastomeric | 2026-09-09 → 2026-10-10 (+31d) | 2026-09-21 → 2026-10-21 (+30d) |  | 7d → -17.5d |
| WAD.S.4190 | install 4mm thick APP modified bituminous membrane - single layer | 2026-09-09 → 2026-10-10 (+31d) | 2026-09-21 → 2026-10-21 (+30d) |  | 7d → -17.5d |
| WAD.S.4200 | install 75mm thick rigid insulation (extruded polystyrene) | 2026-09-09 → 2026-10-10 (+31d) | 2026-09-21 → 2026-10-21 (+30d) |  | 7d → -17.5d |
| WAD.S.4210 | cast in place foam concrete screed, 50mm thick minimum; laid to fall and cross fall | 2026-09-09 → 2026-10-10 (+31d) | 2026-09-21 → 2026-10-21 (+30d) |  | 7d → -17.5d |
| WAD.S.4220 | install 300 micron polyethylene sheet | 2026-09-09 → 2026-10-10 (+31d) | 2026-09-21 → 2026-10-21 (+30d) |  | 7d → -17.5d |
| WAD.S.4230 | install 50mm thick loose gravel toppings | 2026-09-09 → 2026-10-10 (+31d) | 2026-09-21 → 2026-10-21 (+30d) |  | 7d → -17.5d |
| WAD.S.4240 | install high density polyisocynurate cover board | 2026-09-09 → 2026-10-10 (+31d) | 2026-09-21 → 2026-10-21 (+30d) |  | 7d → -17.5d |
| WAD.S.4250 | install UV resistant geotextile sheet | 2026-09-09 → 2026-10-10 (+31d) | 2026-09-21 → 2026-10-21 (+30d) |  | 7d → -17.5d |
| WAD.S.4260 | fixing 3mm thick extruded aluminum flashing 40mm with sealant and all other accessories | 2026-09-09 → 2026-10-10 (+31d) | 2026-09-21 → 2026-10-21 (+30d) |  | 7d → -17.5d |
| WAD.S.4270 | install Terrazzo tiles | 2026-09-09 → 2026-10-10 (+31d) | 2026-09-21 → 2026-10-21 (+30d) |  | 7d → -17.5d |
| 2 | **THERMAL & MOISTURE PROTECTION - Tanks** | 2026-09-09 → 2026-10-10 (+31d) | 2026-09-21 → 2026-10-21 (+30d) |  |  |
| WAD.S.4280 | lay epoxy 2 coating for inner surfaces for bottom of the roof | 2026-09-09 → 2026-10-10 (+31d) | 2026-09-21 → 2026-10-21 (+30d) |  | 7d → -17.5d |
| WAD.S.4710 | install water stop for tanks according to the drawings and specification | 2026-09-12 → 2026-10-10 (+28d) | 2026-09-16 → 2026-10-14 (+28d) |  | 9d → -15d |
| 9 | **FINISHES** | 2026-08-29 → 2026-09-28 (+30d) | 2026-09-27 → 2026-10-21 (+24d) |  |  |
| WAD.S.3090 | install concrete plastering | 2026-08-29 → 2026-09-28 (+30d) | 2026-09-01 → 2026-10-01 (+30d) |  | 7d → -17.5d |
| WAD.S.4940 | install ceramic floor tiles | 2026-09-19 → 2026-10-15 (+26d) | 2026-09-21 → 2026-10-19 (+28d) |  | 8d → -15.2d |
| WAD.S.4950 | install granite flooring | 2026-09-19 → 2026-10-15 (+26d) | 2026-09-20 → 2026-10-18 (+28d) |  | 8d → -15.2d |
| WAD.S.5010 | install granite saddles and thresholds | 2026-09-19 → 2026-10-15 (+26d) | 2026-09-21 → 2026-10-19 (+28d) |  | 8d → -15.2d |
| WAD.S.5020 | install Riyadh stone cladding | 2026-09-19 → 2026-10-15 (+26d) | 2026-09-21 → 2026-10-19 (+28d) |  | 9d → -14.2d |
| WAD.S.5030 | install 3mm steel CNC laser cut panels | 2026-09-19 → 2026-10-15 (+26d) | 2026-09-21 → 2026-10-19 (+28d) |  | 9d → -14.2d |
| WAD.S.5040 | gypsum board suspended ceiling | 2026-09-19 → 2026-10-15 (+26d) | 2026-09-23 → 2026-10-21 (+28d) |  | 8d → -15.2d |
| WAD.S.5060 | install aluminum cladding | 2026-09-20 → 2026-10-17 (+27d) | 2026-09-21 → 2026-10-19 (+28d) |  | 9d → -14.2d |
| WAD.S.5120 | install ceramic wall tiles | 2026-09-24 → 2026-10-17 (+23d) | 2026-09-27 → 2026-10-20 (+23d) |  | 7d → -12.8d |
| WAD.S.5530 | install two coats of acrylic paint on internal walls | 2026-09-26 → 2026-10-18 (+22d) | 2026-09-27 → 2026-10-20 (+23d) |  | 7d → -12.8d |
| WAD.S.5540 | install two coats of acrylic paint (suitable for exterior use) on external | 2026-09-26 → 2026-10-18 (+22d) | 2026-09-27 → 2026-10-20 (+23d) |  | 7d → -12.8d |
| 13 | **MECHANICAL WORKS** | 2026-07-30 → 2026-09-21 (+53d) | 2026-09-29 → 2026-10-26 (+27d) |  |  |
| 1 | **MECHANICAL WORKS - 1st Fix** | 2026-07-30 → 2026-09-21 (+53d) | 2026-08-10 → 2026-10-05 (+56d) |  |  |
| WAD.S.1660 | WATER SUPPLY SYSTEM - 1st Fix | 2026-07-30 → 2026-09-21 A (+53d) | 2026-08-10 → 2026-10-05 (+56d) | 0% → 35% | 0d → -36d |
| WAD.S.1670 | SEWER AND DRAINAGE SYSTEM - 1st Fix | 2026-07-30 → 2026-09-21 A (+53d) | 2026-08-10 → 2026-09-29 (+50d) | 0% → 80% | 0d → -36d |
| WAD.S.1680 | IRRIGATION SYSTEM - 1st Fix | 2026-07-30 → 2026-09-21 A (+53d) | 2026-08-10 → 2026-10-05 (+56d) | 0% → 35% | 0d → -36d |
| WAD.S.1710 | HEATING, VENTILATION AND AIR CONDITIONING - 1st Fix | 2026-07-30 → 2026-09-21 A (+53d) | 2026-08-10 → 2026-10-05 (+56d) | 0% → 35% | 0d → -36d |
| WAD.S.1720 | Exhaust fans - 1st Fix | 2026-07-30 → 2026-09-21 A (+53d) | 2026-08-10 → 2026-10-05 (+56d) | 0% → 35% | 0d → -36d |
| 2 | **MECHANICAL WORKS - Final Fix** | 2026-09-24 → 2026-10-22 (+28d) | 2026-09-29 → 2026-10-26 (+27d) |  |  |
| WAD.S.5910 | HEATING, VENTILATION AND AIR CONDITIONING - Final Fix | 2026-09-27 → 2026-10-22 (+25d) | 2026-09-29 → 2026-10-26 (+27d) |  | 5d → -17.5d |
| WAD.S.5920 | Exhaust fans - Final Fix | 2026-09-27 → 2026-10-22 (+25d) | 2026-09-29 → 2026-10-26 (+27d) |  | 5d → -17.5d |
| WAD.S.5930 | Bulbblers and Spreyers of IRRIGATION SYSTEM | 2026-09-27 → 2026-10-22 (+25d) | 2026-09-29 → 2026-10-26 (+27d) |  | 5d → -17.5d |
| WAD.S.5980 | WATER SUPPLY SYSTEM - Final Fix | 2026-09-27 → 2026-10-22 (+25d) | 2026-09-29 → 2026-10-26 (+27d) |  | 5d → -17.5d |
| WAD.S.5990 | IRRIGATION SYSTEM - Final Fix | 2026-09-27 → 2026-10-22 (+25d) | 2026-09-29 → 2026-10-26 (+27d) |  | 5d → -17.5d |
| WAD.S.5130 | installation of Fire extinguishers as per drawings, specifications | 2026-09-24 → 2026-10-24 A (+30d) | 2026-09-27 → 2026-10-26 (+29d) | 0% → 50% | 7d → -17.5d |
| WAD.S.5140 | gully traps with heavy duty cover | 2026-09-24 → 2026-10-24 A (+30d) | 2026-09-27 → 2026-10-26 (+29d) | 0% → 50% | 7d → -17.5d |
| WAD.S.5150 | chamber with heavy duty cover | 2026-09-24 → 2026-10-24 A (+30d) | 2026-09-27 → 2026-10-26 (+29d) | 0% → 50% | 7d → -17.5d |
| WAD.S.5160 | INSTALL PLUMBING FIXTURES | 2026-09-24 → 2026-10-24 A (+30d) | 2026-09-27 → 2026-10-26 (+29d) | 0% → 50% | 7d → -17.5d |
| 15 | **ELECTRICAL WORKS** | 2026-07-30 → 2026-09-06 (+38d) | 2026-10-01 → 2026-10-31 (+30d) |  |  |
| 1 | **ELECTRICAL WORKS - 1st Fix** | 2026-07-30 → 2026-09-06 (+38d) | 2026-08-10 → 2026-10-03 (+54d) |  |  |
| WAD.S.1770 | GROUNDING - 1st Fix | 2026-07-30 → 2026-09-06 A (+38d) | 2026-08-10 → 2026-10-03 (+54d) | 0% → 50% | 44d → -2d |
| WAD.S.1740 | UNDERGROUND DISTRIBUTION SYSTEM - 1st Fix | 2026-07-30 → 2026-09-21 A (+53d) | 2026-08-10 → 2026-10-03 (+54d) | 0% → 50% | 44d → -2d |
| WAD.S.1750 | LIGHTING FIXTURES - 1st Fix | 2026-07-30 → 2026-09-21 A (+53d) | 2026-08-10 → 2026-10-03 (+54d) | 0% → 50% | 44d → -2d |
| WAD.S.1690 | LIGHTING AND POWER TYPE PANELBOARDS - 1st Fix | 2026-07-30 → 2026-09-27 A (+59d) | 2026-08-10 → 2026-10-03 (+54d) | 0% → 50% | 44d → -2d |
| WAD.S.1700 | UPS 3KVA (installed inside the rack) - 1st Fix | 2026-07-30 → 2026-09-27 A (+59d) | 2026-08-10 → 2026-10-03 (+54d) | 0% → 50% | 44d → -2d |
| WAD.S.1730 | power source with built-in photocell sensor for automatic electrical connection during day/light times - 1st Fix | 2026-07-30 → 2026-09-27 A (+59d) | 2026-08-10 → 2026-10-03 (+54d) | 0% → 50% | 44d → -2d |
| WAD.S.1760 | installation of Wiring devices includes switches and Receptacle outlets complete with device boxes - 1st Fix | 2026-07-30 → 2026-09-27 A (+59d) | 2026-08-10 → 2026-10-03 (+54d) | 0% → 50% | 44d → -2d |
| WAD.S.1780 | card reader IN/OUT - 1st Fix | 2026-07-30 → 2026-09-27 A (+59d) | 2026-08-10 → 2026-10-03 (+54d) | 0% → 50% | 44d → -2d |
| WAD.S.1790 | CCTV cameras - 1st Fix | 2026-07-30 → 2026-09-27 A (+59d) | 2026-08-10 → 2026-10-03 (+54d) | 0% → 50% | 44d → -2d |
| WAD.S.1800 | Access control panel - 1st Fix | 2026-07-30 → 2026-09-27 A (+59d) | 2026-08-10 → 2026-10-03 (+54d) | 0% → 50% | 44d → -2d |
| WAD.S.1810 | fire alarm system including wires, conduit and other materials - 1st Fix | 2026-07-30 → 2026-09-27 A (+59d) | 2026-08-10 → 2026-10-03 (+54d) | 0% → 50% | 44d → -2d |
| 2 | **ELECTRICAL WORKS - Final Fix** | 2026-09-27 → 2026-10-22 (+25d) | 2026-10-01 → 2026-10-31 (+30d) |  |  |
| WAD.S.5940 | power source with built-in photocell sensor for automatic electrical connection during day/light times - Final Fix | 2026-09-27 → 2026-10-22 (+25d) | 2026-09-29 → 2026-10-26 (+27d) |  | 5d → -17.5d |
| WAD.S.6140 | UNDERGROUND DISTRIBUTION SYSTEM - Final Fix | 2026-09-28 → 2026-10-24 (+26d) | 2026-09-29 → 2026-10-26 (+27d) |  | 5d → -17.5d |
| WAD.S.5950 | LIGHTING FIXTURES - Final Fix | 2026-09-27 → 2026-10-24 (+27d) | 2026-09-29 → 2026-10-27 (+28d) |  | 5d → -18.8d |
| WAD.S.5960 | GROUNDING - Final Fix | 2026-09-27 → 2026-10-24 (+27d) | 2026-09-29 → 2026-10-27 (+28d) |  | 5d → -18.8d |
| WAD.S.5970 | 12-Port, SMF, Fiber Optic Patch Panels; | 2026-09-27 → 2026-10-25 (+28d) | 2026-09-30 → 2026-10-29 (+29d) |  | 4d → -20.2d |
| WAD.S.6150 | installation of Wiring devices includes switches and Receptacle outlets complete with device boxes - Final Fix | 2026-09-28 → 2026-10-25 (+27d) | 2026-09-29 → 2026-10-27 (+28d) |  | 5d → -18.8d |
| WAD.S.6160 | card reader IN/OUT - Final Fix | 2026-09-28 → 2026-10-26 (+28d) | 2026-09-30 → 2026-10-29 (+29d) |  | 4d → -20.2d |
| WAD.S.6170 | 12-Port CAT6A UTP fully loaded patch panel | 2026-09-28 → 2026-10-26 (+28d) | 2026-09-30 → 2026-10-29 (+29d) |  | 4d → -20.2d |
| WAD.S.6180 | COMPUTERS AND RELATED PERIPHERALS | 2026-09-28 → 2026-10-26 (+28d) | 2026-09-30 → 2026-10-29 (+29d) |  | 4d → -20.2d |
| WAD.S.6190 | VIDEO SURVEILLANCE | 2026-09-28 → 2026-10-26 (+28d) | 2026-10-01 → 2026-10-31 (+30d) |  | 3d → -21.8d |
| WAD.S.6200 | CCTV storage system, as specified; | 2026-09-28 → 2026-10-26 (+28d) | 2026-10-01 → 2026-10-31 (+30d) |  | 3d → -21.8d |
| WAD.S.6270 | Access control panel - Final Fix | 2026-09-29 → 2026-10-27 (+28d) | 2026-09-30 → 2026-10-29 (+29d) |  | 4d → -20.2d |
| WAD.S.6280 | Central (Headend) System Components; | 2026-09-29 → 2026-10-27 (+28d) | 2026-10-01 → 2026-10-31 (+30d) |  | 3d → -21.8d |

| ID | Task | Start | Finish | Complete | Total float | Predecessors |
| --- | --- | --- | --- | --- | --- | --- |
| WAD.S.6290 | VSS System, as specified; | 2026-09-29 → 2026-10-27 (+28d) | 2026-10-01 → 2026-10-31 (+30d) |  | 3d → -21.8d |  |
| WAD.S.6300 | CCTV cameras - Final Fix | 2026-09-29 → 2026-10-27 (+28d) | 2026-10-01 → 2026-10-31 (+30d) |  | 3d → -21.8d |  |
| WAD.S.6310 | ELECTRICAL GATE BARRIER | 2026-09-29 → 2026-10-27 (+28d) | 2026-10-01 → 2026-10-31 (+30d) |  | 3d → -21.8d |  |
| WAD.S.6320 | fire alarm system including wires, conduit and other materials - Final Fix | 2026-09-29 → 2026-10-27 (+28d) | 2026-10-01 → 2026-10-31 (+30d) |  | 3d → -21.8d |  |
| WAD.S.6330 | Analog addressable fire alarm control panel with battery | 2026-09-29 → 2026-10-27 (+28d) | 2026-10-01 → 2026-10-31 (+30d) |  | 3d → -21.8d |  |
| WAD.S.6340 | LIGHTING AND POWER TYPE PANELBOARDS - Final Fix | 2026-09-29 → 2026-10-27 (+28d) | 2026-10-01 → 2026-10-31 (+30d) |  | 3d → -21.8d |  |
| WAD.S.6420 | 20A , ATS ( Automatic transfer switch) for UPS | 2026-09-30 → 2026-10-28 (+28d) | 2026-10-01 → 2026-10-31 (+30d) |  | 3d → -21.8d |  |
| WAD.S.6430 | LIGHTNING PROTECTION | 2026-09-30 → 2026-10-28 (+28d) | 2026-10-01 → 2026-10-31 (+30d) |  | 3d → -21.8d |  |
| WAD.S.6440 | Intelligent Ionization / Photoelectric smoke and heat detector with base | 2026-09-30 → 2026-10-28 (+28d) | 2026-10-01 → 2026-10-31 (+30d) |  | 3d → -21.8d |  |
| 4 | **METALS** | 2026-09-26 → 2026-10-21 (+25d) | 2026-09-27 → 2026-10-24 (+27d) |  |  |  |
| WAD.S.5500 | folding & sliding mounter combination ladder for building maintenance purpose | 2026-09-26 → 2026-10-21 (+25d) | 2026-09-27 → 2026-10-24 (+27d) |  | 7d → -15.2d |  |
| WAD.S.5510 | install of overflow galvanized steel roof scupper with gray color with angular secondary support | 2026-09-26 → 2026-10-21 (+25d) | 2026-09-27 → 2026-10-24 (+27d) |  | 7d → -15.2d |  |
| WAD.S.5520 | install heavy steel cover with frame including all necessary fixings | 2026-09-26 → 2026-10-21 (+25d) | 2026-09-27 → 2026-10-24 (+27d) |  | 7d → -15.2d |  |
| 5 | **WOODS AND PLASTICS** | 2026-09-27 → 2026-10-20 (+23d) | 2026-09-29 → 2026-10-24 (+25d) |  |  |  |
| WAD.S.5890 | COUNTER DESK | 2026-09-27 → 2026-10-20 (+23d) | 2026-09-29 → 2026-10-24 (+25d) |  | 5d → -15.2d |  |
| WAD.S.5880 | PANTRY CABINET | 2026-09-27 → 2026-10-21 (+24d) | 2026-09-28 → 2026-10-24 (+26d) |  | 6d → -15.2d |  |
| 8 | **DOORS & WINDOWS** | 2026-09-22 → 2026-10-19 (+27d) | 2026-09-30 → 2026-10-26 (+26d) |  |  |  |
| WAD.S.5050 | install hollow metal door | 2026-09-22 → 2026-10-19 (+27d) | 2026-09-26 → 2026-10-24 (+28d) |  | 8d → -15.2d |  |
| WAD.S.5900 | Install Aluminum Door | 2026-09-27 → 2026-10-20 (+23d) | 2026-09-29 → 2026-10-24 (+25d) |  | 5d → -15.2d | WAD.S.5890 SS → WAD.S.5890 SS, WAD.S.5060 |
| WAD.S.6120 | Install aluminum framed double glazed windows | 2026-09-28 → 2026-10-22 (+24d) | 2026-09-30 → 2026-10-26 (+26d) |  | 4d → -17.2d |  |
| 10 | **SPECIALTIES** | 2026-09-28 → 2026-10-22 (+24d) | 2026-10-01 → 2026-10-31 (+30d) |  |  |  |
| WAD.S.6130 | TOILET ACCESSROIES | 2026-09-28 → 2026-10-22 (+24d) | 2026-09-29 → 2026-10-25 (+26d) |  | 5d → -16.5d |  |
| WAD.S.6410 | PANEL SIGNAGE | 2026-09-30 → 2026-10-28 (+28d) | 2026-10-01 → 2026-10-31 (+30d) |  | 3d → -21.8d |  |
| 11 | **FURNISHINGS** | 2026-10-01 → 2026-10-29 (+28d) | 2026-10-01 → 2026-10-31 (+30d) |  |  |  |
| WAD.S.6450 | Workstation chair | 2026-10-01 → 2026-10-29 (+28d) | 2026-10-01 → 2026-10-31 (+30d) |  | 3d → -21.8d |  |
| WAD.S.6460 | Workstation table | 2026-10-01 → 2026-10-29 (+28d) | 2026-10-01 → 2026-10-31 (+30d) |  | 3d → -21.8d |  |
| WAD.S.6470 | Roller blind | 2026-10-01 → 2026-10-29 (+28d) | 2026-10-01 → 2026-10-31 (+30d) |  | 3d → -21.8d |  |
| WAD.S.6480 | Waste Receptacle | 2026-10-01 → 2026-10-29 (+28d) | 2026-10-01 → 2026-10-31 (+30d) |  | 3d → -21.8d |  |
| 3 | **GUARD HOUSE 2** | 2026-07-19 → 2026-06-08 (-41d) | 2026-09-28 → 2026-11-07 (+40d) |  |  |  |
| 1 | **SITE WORKS** | 2026-07-19 → 2026-06-08 (-41d) | 2026-09-21 → 2026-10-27 (+36d) |  |  |  |
| 4 | **Guard Rooms & Gates** | 2026-07-19 → 2026-07-11 (-8d) | 2026-08-06 → 2026-09-29 (+54d) |  |  |  |
| WAD.S.1460 | Excavation for guard rooms | 2026-07-19 → 2026-07-11 A (-8d) | 2026-07-27 → 2026-07-23 A (-4d) | 0% → 100% | 0d → none | WAD.S.1080 FS+60d → WAD.S.1080 FS+17d |
| WAD.S.1610 | Replacment Under Foundation | 2026-07-28 → 2026-08-04 A (+7d) | 2026-07-29 → 2026-08-04 A (+6d) | 0% → 100% | 0d → none |  |
| WAD.S.2290 | Backfilling Under G.Beam | 2026-08-05 → 2026-08-11 A (+6d) | 2026-08-06 → 2026-09-16 A (+41d) | 0% → 100% | 0d → none |  |
| WAD.S.2300 | Backfilling Under S.O.G | 2026-08-05 → 2026-09-28 (+54d) | 2026-08-06 → 2026-09-29 (+54d) |  | 24d → -19.5d |  |
| 5 | **Guard Rooms & Gates (CONCRETE Works)** | 2026-07-28 → 2026-06-08 (-50d) | 2026-09-21 → 2026-10-27 (+36d) |  |  |  |
| WAD.S.2780 | Beams | 2026-08-22 → 2026-06-08 A (-75d) | 2026-08-30 → 2026-10-04 A (+35d) | 0% → 100% | 0d → none |  |
| WAD.S.1990 | Isolated Footings & Column Neck | 2026-07-30 → 2026-07-11 A (-19d) | 2026-08-04 → 2026-08-08 A (+4d) | 0% → 100% | 0d → none | WAD.S.1620 SS+2d → WAD.S.1620 SS+2d, WAD.S.1620 FF+2d |
| WAD.S.1620 | 50 mm thickness lean concrete under the foundation. | 2026-07-28 → 2026-08-04 A (+7d) | 2026-07-30 → 2026-08-06 A (+7d) | 0% → 100% | 0d → none |  |
| WAD.S.2770 | Roof Slab | 2026-08-22 → 2026-08-17 A (-5d) | 2026-08-30 → 2026-10-04 A (+35d) | 0% → 100% | 0d → none |  |
| WAD.S.2400 | 50 mm thickness lean concrete under grade beams. | 2026-08-08 → 2026-09-08 A (+31d) | 2026-08-10 → 2026-09-12 A (+33d) | 0% → 100% | 0d → none |  |
| WAD.S.2610 | Grade beams | 2026-08-11 → 2026-09-24 A (+44d) | 2026-08-16 → 2026-09-30 A (+45d) | 0% → 100% | 0d → none |  |
| WAD.S.2660 | Columns | 2026-08-17 → 2026-09-29 A (+43d) | 2026-08-20 → 2026-10-04 A (+45d) | 0% → 100% | 0d → none |  |
| WAD.S.3440 | Provide and cast concrete floor slab on grade | 2026-08-31 → 2026-10-04 A (+34d) | 2026-09-05 → 2026-10-07 (+32d) | 0% → 50% | 4d → -24d |  |
| WAD.S.3450 | Concrete Pad | 2026-08-31 → 2026-10-04 A (+34d) | 2026-09-02 → 2026-10-07 A (+35d) | 0% → 100% | 6d → none |  |
| WAD.S.2730 | Raft and R.C. walls | 2026-08-19 → 2026-10-05 A (+47d) | 2026-08-24 → 2026-10-10 A (+47d) | 0% → 100% | 0d → none |  |
| WAD.S.3460 | Tanks Raft | 2026-08-31 → 2026-10-05 (+35d) | 2026-09-05 → 2026-10-11 (+36d) |  | 4d → -26.5d |  |
| WAD.S.3980 | Tanks Walls | 2026-09-06 → 2026-10-11 (+35d) | 2026-09-10 → 2026-10-17 (+37d) |  | 4d → -26.5d |  |
| WAD.S.4890 | Tanks Slab | 2026-09-17 → 2026-10-22 (+35d) | 2026-09-21 → 2026-10-27 (+36d) |  | 12d → -18.5d |  |
| 3 | **MASONRY UNIT** | 2026-08-25 → 2026-10-04 (+40d) | 2026-08-27 → 2026-10-06 (+40d) |  |  |  |
| WAD.S.2930 | install Concrete Masonry Unit (CMU) for walls | 2026-08-25 → 2026-10-04 A (+40d) | 2026-08-27 → 2026-10-06 (+40d) | 0% → 50% | 0d → -34d |  |
| 6 | **THERMAL & MOISTURE PROTECTION** | 2026-09-06 → 2026-09-16 (+10d) | 2026-09-09 → 2026-10-12 (+33d) |  |  |  |
| 1 | **THERMAL & MOISTURE PROTECTION - Foundation** | 2026-09-06 → 2026-09-16 (+10d) | 2026-09-09 → 2026-10-12 (+33d) |  |  |  |
| WAD.S.3960 | apply 2 coats of bitumen waterproofing paint on concrete surface in contact with soil | 2026-09-06 → 2026-09-16 A (+10d) | 2026-09-07 → 2026-09-19 A (+12d) | 0% → 100% | 24d → none |  |
| WAD.S.3970 | install liquid applied waterproofing coating; single-component pitch modified polyurethane | 2026-09-06 → 2026-10-07 (+31d) | 2026-09-07 → 2026-10-10 (+33d) |  | 22d → -5.1d |  |
| WAD.S.4100 | install geotextile sheet | 2026-09-08 → 2026-10-10 (+32d) | 2026-09-09 → 2026-10-12 (+33d) |  | 22d → -5.1d |  |
| 7 | **ROOFING SYSTEM** | 2026-09-09 → 2026-10-17 (+38d) | 2026-09-21 → 2026-10-31 (+40d) |  |  |  |
| WAD.S.4290 | install liquid applied waterproofing coating single-component pitch modified polyurethane based elastomeric | 2026-09-09 → 2026-10-19 (+40d) | 2026-09-21 → 2026-10-31 (+40d) |  | 0d → -34d |  |
| WAD.S.4300 | install 4mm thick APP modified bituminous membrane - single layer | 2026-09-09 → 2026-10-19 (+40d) | 2026-09-21 → 2026-10-31 (+40d) |  | 0d → -34d |  |
| WAD.S.4310 | install 75mm thick rigid insulation (extruded polystyrene) | 2026-09-09 → 2026-10-19 (+40d) | 2026-09-21 → 2026-10-31 (+40d) |  | 0d → -34d |  |
| WAD.S.4320 | cast in place foam concrete screed, 50mm thick minimum; laid to fall and cross fall | 2026-09-09 → 2026-10-19 (+40d) | 2026-09-21 → 2026-10-31 (+40d) |  | 0d → -34d |  |
| WAD.S.4330 | install 300 micron polyethylene sheet | 2026-09-09 → 2026-10-19 (+40d) | 2026-09-21 → 2026-10-31 (+40d) |  | 0d → -34d |  |
| WAD.S.4340 | install 50mm thick loose gravel toppings | 2026-09-09 → 2026-10-19 (+40d) | 2026-09-21 → 2026-10-31 (+40d) |  | 0d → -34d |  |
| WAD.S.4350 | install high density polyisocynurate cover board | 2026-09-09 → 2026-10-19 (+40d) | 2026-09-21 → 2026-10-31 (+40d) |  | 0d → -34d |  |
| WAD.S.4360 | install UV resistant geotextile sheet | 2026-09-09 → 2026-10-19 (+40d) | 2026-09-21 → 2026-10-31 (+40d) |  | 0d → -34d |  |
| WAD.S.4370 | fixing 3mm thick extruded aluminum flashing 40mm with sealant and all other accessories | 2026-09-09 → 2026-10-19 (+40d) | 2026-09-21 → 2026-10-31 (+40d) |  | 0d → -34d |  |
| WAD.S.4380 | install Terrazzo tiles | 2026-09-09 → 2026-10-19 (+40d) | 2026-09-21 → 2026-10-31 (+40d) |  | 0d → -34d |  |
| 2 | **THERMAL & MOISTURE PROTECTION - Tanks** | 2026-09-09 → 2026-10-17 (+38d) | 2026-09-21 → 2026-10-31 (+40d) |  |  |  |
| WAD.S.4740 | install water stop for tanks according to the drawings and specification | 2026-09-12 → 2026-10-17 (+35d) | 2026-09-16 → 2026-10-22 (+36d) |  | 4d → -26.5d |  |
| WAD.S.4390 | lay epoxy 2 coating for inner surfaces for bottom of the roof | 2026-09-09 → 2026-10-19 (+40d) | 2026-09-21 → 2026-10-31 (+40d) |  | 0d → -34d |  |

| ID | Task | Start | Finish | Total float | Predecessors |
| --- | --- | --- | --- | --- | --- |
| 9 | **FINISHES** | 2026-08-08 → 2026-10-05 (+58d) | 2026-09-20 → 2026-10-26 (+36d) |  |  |
| WAD.S.2240 | gypsum board suspended ceiling | 2026-09-03 → 2026-10-05 (+32d) | 2026-09-07 → 2026-10-10 (+33d) | 16d → -11.5d |  |
| WAD.S.2370 | install ceramic floor tiles | 2026-08-08 → 2026-10-06 (+59d) | 2026-08-10 → 2026-10-08 (+59d) | 48d → -3d |  |
| WAD.S.2380 | install granite flooring | 2026-08-08 → 2026-10-06 (+59d) | 2026-08-09 → 2026-10-07 (+59d) | 48d → -3d |  |
| WAD.S.2390 | install ceramic wall tiles | 2026-08-08 → 2026-10-06 (+59d) | 2026-08-10 → 2026-10-08 (+59d) | 48d → -3d |  |
| WAD.S.2520 | install two coats of acrylic paint on internal walls | 2026-08-09 → 2026-10-07 (+59d) | 2026-08-10 → 2026-10-08 (+59d) | 48d → -3d |  |
| WAD.S.2530 | install two coats of acrylic paint (suitable for exterior use) on external | 2026-08-09 → 2026-10-07 (+59d) | 2026-08-10 → 2026-10-08 (+59d) | 48d → -3d |  |
| WAD.S.3100 | install concrete plastering | 2026-08-29 → 2026-10-07 (+39d) | 2026-09-01 → 2026-10-11 (+40d) | 0d → -34d |  |
| WAD.S.4860 | install granite saddles and thresholds | 2026-09-17 → 2026-10-22 (+35d) | 2026-09-20 → 2026-10-26 (+36d) | 4d → -26.5d |  |
| WAD.S.4870 | install Riyadh stone cladding | 2026-09-17 → 2026-10-22 (+35d) | 2026-09-20 → 2026-10-26 (+36d) | 4d → -26.5d |  |
| WAD.S.4880 | install 3mm steel CNC laser cut panels | 2026-09-17 → 2026-10-22 (+35d) | 2026-09-20 → 2026-10-26 (+36d) | 4d → -26.5d |  |
| WAD.S.4960 | install aluminum cladding | 2026-09-19 → 2026-10-24 (+35d) | 2026-09-20 → 2026-10-26 (+36d) | 4d → -26.5d |  |
| 13 | **MECHANICAL WORKS** | 2026-07-30 → 2026-09-28 (+60d) | 2026-09-28 → 2026-11-07 (+40d) |  |  |
| 1 | **MECHANICAL WORKS - 1st Fix** | 2026-07-30 → 2026-09-28 (+60d) | 2026-08-10 → 2026-10-08 (+59d) |  |  |
| WAD.S.1830 | WATER SUPPLY SYSTEM - 1st Fix | 2026-07-30 → 2026-09-28 (+60d) | 2026-08-10 → 2026-10-08 (+59d) | 39d → -12d |  |
| WAD.S.1840 | SEWER AND DRAINAGE SYSTEM - 1st Fix | 2026-07-30 → 2026-09-28 (+60d) | 2026-08-10 → 2026-10-08 (+59d) | 39d → -12d |  |
| WAD.S.1850 | IRRIGATION SYSTEM - 1st Fix | 2026-07-30 → 2026-09-28 (+60d) | 2026-08-10 → 2026-10-08 (+59d) | 39d → -12d | WAD.S.1990 SS → WAD.S.1990 SS, WAD.S.1990 FF |
| WAD.S.1880 | HEATING, VENTILATION AND AIR CONDITIONING - 1st Fix | 2026-07-30 → 2026-09-28 (+60d) | 2026-08-10 → 2026-10-08 (+59d) | 39d → -12d |  |
| WAD.S.1890 | Exhaust fans - 1st Fix | 2026-07-30 → 2026-09-28 (+60d) | 2026-08-10 → 2026-10-08 (+59d) | 39d → -12d |  |
| 2 | **MECHANICAL WORKS - Final Fix** | 2026-09-26 → 2026-11-04 (+39d) | 2026-09-28 → 2026-11-07 (+40d) |  |  |
| WAD.S.5560 | installation of Fire extinguishers as per drawings, specifications | 2026-09-26 → 2026-11-04 (+39d) | 2026-09-28 → 2026-11-07 (+40d) | 0d → -34d |  |
| WAD.S.5570 | gully traps with heavy duty cover | 2026-09-26 → 2026-11-04 (+39d) | 2026-09-28 → 2026-11-07 (+40d) | 0d → -34d |  |
| WAD.S.5580 | chamber with heavy duty cover | 2026-09-26 → 2026-11-04 (+39d) | 2026-09-28 → 2026-11-07 (+40d) | 0d → -34d |  |
| WAD.S.5590 | INSTALL PLUMBING FIXTURES | 2026-09-26 → 2026-11-04 (+39d) | 2026-09-28 → 2026-11-07 (+40d) | 0d → -34d |  |
| WAD.S.5600 | HEATING, VENTILATION AND AIR CONDITIONING - Final Fix | 2026-09-26 → 2026-11-04 (+39d) | 2026-09-28 → 2026-11-07 (+40d) | 0d → -34d |  |
| WAD.S.5610 | Exhaust fans - Final Fix | 2026-09-26 → 2026-11-04 (+39d) | 2026-09-28 → 2026-11-07 (+40d) | 0d → -34d |  |
| WAD.S.5620 | Bulbblers and Spreyers of IRRIGATION SYSTEM | 2026-09-26 → 2026-11-04 (+39d) | 2026-09-28 → 2026-11-07 (+40d) | 0d → -34d |  |
| WAD.S.5750 | WATER SUPPLY SYSTEM - Final Fix | 2026-09-26 → 2026-11-04 (+39d) | 2026-09-28 → 2026-11-07 (+40d) | 0d → -34d |  |
| WAD.S.5760 | IRRIGATION SYSTEM - Final Fix | 2026-09-26 → 2026-11-04 (+39d) | 2026-09-28 → 2026-11-07 (+40d) | 6d → -28d |  |
| 15 | **ELECTRICAL WORKS** | 2026-07-30 → 2026-09-28 (+60d) | 2026-09-28 → 2026-11-07 (+40d) |  |  |
| 1 | **ELECTRICAL WORKS - 1st Fix** | 2026-07-30 → 2026-09-28 (+60d) | 2026-08-10 → 2026-10-08 (+59d) |  |  |
| WAD.S.1860 | LIGHTING AND POWER TYPE PANELBOARDS - 1st Fix | 2026-07-30 → 2026-09-28 (+60d) | 2026-08-10 → 2026-10-08 (+59d) | 39d → -12d |  |
| WAD.S.1870 | UPS 3KVA (installed inside the rack) - 1st Fix | 2026-07-30 → 2026-09-28 (+60d) | 2026-08-10 → 2026-10-08 (+59d) | 39d → -12d |  |
| WAD.S.1900 | power source with built-in photocell sensor for automatic electrical connection during day/light times - 1st Fix | 2026-07-30 → 2026-09-28 (+60d) | 2026-08-10 → 2026-10-08 (+59d) | 39d → -12d |  |
| WAD.S.1910 | UNDERGROUND DISTRIBUTION SYSTEM - 1st Fix | 2026-07-30 → 2026-09-28 (+60d) | 2026-08-10 → 2026-10-08 (+59d) | 39d → -12d |  |
| WAD.S.1920 | LIGHTING FIXTURES - 1st Fix | 2026-07-30 → 2026-09-28 (+60d) | 2026-08-10 → 2026-10-08 (+59d) | 39d → -12d |  |
| WAD.S.1930 | installation of Wiring devices includes switches and Receptacle outlets complete with device boxes - 1st Fix | 2026-07-30 → 2026-09-28 (+60d) | 2026-08-10 → 2026-10-08 (+59d) | 39d → -12d |  |
| WAD.S.1940 | GROUNDING - 1st Fix | 2026-07-30 → 2026-09-28 (+60d) | 2026-08-10 → 2026-10-08 (+59d) | 39d → -12d |  |
| WAD.S.1950 | card reader IN/OUT - 1st Fix | 2026-07-30 → 2026-09-28 (+60d) | 2026-08-10 → 2026-10-08 (+59d) | 39d → -12d |  |
| WAD.S.1960 | CCTV cameras - 1st Fix | 2026-07-30 → 2026-09-28 (+60d) | 2026-08-10 → 2026-10-08 (+59d) | 39d → -12d |  |
| WAD.S.1970 | Access control panel - 1st Fix | 2026-07-30 → 2026-09-28 (+60d) | 2026-08-10 → 2026-10-08 (+59d) | 39d → -12d |  |
| WAD.S.1980 | fire alarm system including wires, conduit and other materials - 1st Fix | 2026-07-30 → 2026-09-28 (+60d) | 2026-08-10 → 2026-10-08 (+59d) | 39d → -12d |  |
| 2 | **ELECTRICAL WORKS - Final Fix** | 2026-09-24 → 2026-11-03 (+40d) | 2026-09-28 → 2026-11-07 (+40d) |  |  |
| WAD.S.5170 | 12-Port, SMF, Fiber Optic Patch Panels; | 2026-09-24 → 2026-11-03 (+40d) | 2026-09-28 → 2026-11-07 (+40d) | 0d → -34d |  |
| WAD.S.5180 | VIDEO SURVEILLANCE | 2026-09-24 → 2026-11-03 (+40d) | 2026-09-28 → 2026-11-07 (+40d) | 0d → -34d |  |
| WAD.S.5190 | CCTV storage system, as specified; | 2026-09-24 → 2026-11-03 (+40d) | 2026-09-28 → 2026-11-07 (+40d) | 0d → -34d |  |
| WAD.S.5630 | power source with built-in photocell sensor for automatic electrical connection during day/light times - Final Fix | 2026-09-26 → 2026-11-04 (+39d) | 2026-09-28 → 2026-11-07 (+40d) | 0d → -34d |  |
| WAD.S.5640 | LIGHTING FIXTURES - Final Fix | 2026-09-26 → 2026-11-04 (+39d) | 2026-09-28 → 2026-11-07 (+40d) | 0d → -34d |  |
| WAD.S.5650 | GROUNDING - Final Fix | 2026-09-26 → 2026-11-04 (+39d) | 2026-09-28 → 2026-11-07 (+40d) | 0d → -34d |  |
| WAD.S.5660 | card reader IN/OUT - Final Fix | 2026-09-26 → 2026-11-04 (+39d) | 2026-09-28 → 2026-11-07 (+40d) | 0d → -34d |  |
| WAD.S.5670 | 12-Port CAT6A UTP fully loaded patch panel | 2026-09-26 → 2026-11-04 (+39d) | 2026-09-28 → 2026-11-07 (+40d) | 0d → -34d |  |
| WAD.S.5680 | COMPUTERS AND RELATED PERIPHERALS | 2026-09-26 → 2026-11-04 (+39d) | 2026-09-28 → 2026-11-07 (+40d) | 0d → -34d |  |
| WAD.S.5690 | Central (Headend) System Components; | 2026-09-26 → 2026-11-04 (+39d) | 2026-09-28 → 2026-11-07 (+40d) | 0d → -34d |  |
| WAD.S.5700 | VSS System, as specified; | 2026-09-26 → 2026-11-04 (+39d) | 2026-09-28 → 2026-11-07 (+40d) | 0d → -34d |  |
| WAD.S.5710 | CCTV cameras - Final Fix | 2026-09-26 → 2026-11-04 (+39d) | 2026-09-28 → 2026-11-07 (+40d) | 0d → -34d |  |
| WAD.S.5720 | ELECTRICAL GATE BARRIER | 2026-09-26 → 2026-11-04 (+39d) | 2026-09-28 → 2026-11-07 (+40d) | 0d → -34d |  |
| WAD.S.5730 | fire alarm system including wires, conduit and other materials - Final Fix | 2026-09-26 → 2026-11-04 (+39d) | 2026-09-28 → 2026-11-07 (+40d) | 0d → -34d |  |
| WAD.S.5740 | Analog addressable fire alarm control panel with battery | 2026-09-26 → 2026-11-04 (+39d) | 2026-09-28 → 2026-11-07 (+40d) | 0d → -34d |  |
| WAD.S.5770 | LIGHTING AND POWER TYPE PANELBOARDS - Final Fix | 2026-09-26 → 2026-11-04 (+39d) | 2026-09-28 → 2026-11-07 (+40d) | 6d → -28d |  |
| WAD.S.6010 | UNDERGROUND DISTRIBUTION SYSTEM - Final Fix | 2026-09-27 → 2026-11-05 (+39d) | 2026-09-28 → 2026-11-07 (+40d) | 0d → -34d |  |
| WAD.S.6020 | installation of Wiring devices includes switches and Receptacle outlets complete with device boxes - Final Fix | 2026-09-27 → 2026-11-05 (+39d) | 2026-09-28 → 2026-11-07 (+40d) | 0d → -34d |  |
| WAD.S.6030 | Access control panel - Final Fix | 2026-09-27 → 2026-11-05 (+39d) | 2026-09-28 → 2026-11-07 (+40d) | 0d → -34d |  |
| WAD.S.6040 | 20A , ATS ( Automatic transfer switch) for UPS | 2026-09-27 → 2026-11-05 (+39d) | 2026-09-28 → 2026-11-07 (+40d) | 0d → -34d |  |
| WAD.S.6050 | LIGHTNING PROTECTION | 2026-09-27 → 2026-11-05 (+39d) | 2026-09-28 → 2026-11-07 (+40d) | 0d → -34d |  |
| WAD.S.6060 | Intelligent Ionization / Photoelectric smoke and heat detector with base | 2026-09-27 → 2026-11-05 (+39d) | 2026-09-28 → 2026-11-07 (+40d) | 0d → -34d |  |
| 4 | **METALS** | 2026-09-08 → 2026-10-10 (+32d) | 2026-09-09 → 2026-10-12 (+33d) |  |  |
| WAD.S.2480 | folding & sliding mounter combination ladder for building maintenance purpose | 2026-09-08 → 2026-10-10 (+32d) | 2026-09-09 → 2026-10-12 (+33d) | 16d → -11.5d |  |
| WAD.S.2490 | install of overflow galvanized steel roof scupper with gray color with angular secondary support | 2026-09-08 → 2026-10-10 (+32d) | 2026-09-09 → 2026-10-12 (+33d) | 16d → -11.5d |  |
| WAD.S.2500 | install heavy steel cover with frame including all necessary fixings | 2026-09-08 → 2026-10-10 (+32d) | 2026-09-09 → 2026-10-12 (+33d) | 16d → -11.5d |  |
| 5 | **WOODS AND PLASTICS** | 2026-09-07 → 2026-10-08 (+31d) | 2026-09-09 → 2026-10-12 (+33d) |  |  |

| ID | Task | Start | Finish | Complete | Total float | Predecessors |
| --- | --- | --- | --- | --- | --- | --- |
| WAD.S.2350 | COUNTER DESK | 2026-09-07 → 2026-10-08 (+31d) | 2026-09-09 → 2026-10-12 (+33d) |  | 16d → -11.5d |  |
| WAD.S.2510 | PANTRY CABINET | 2026-09-08 → 2026-10-10 (+32d) | 2026-09-09 → 2026-10-12 (+33d) |  | 16d → -11.5d |  |
| 8 | **DOORS & WINDOWS** | 2026-09-07 → 2026-10-08 (+31d) | 2026-09-12 → 2026-10-14 (+32d) |  |  |  |
| WAD.S.2360 | Install Aluminum Door | 2026-09-07 → 2026-10-08 (+31d) | 2026-09-09 → 2026-10-12 (+33d) |  | 16d → -11.5d |  |
| WAD.S.2200 | install hollow metal door | 2026-09-08 → 2026-10-10 (+32d) | 2026-09-12 → 2026-10-14 (+32d) |  | 17d → -10.5d |  |
| WAD.S.2210 | Install aluminum framed double glazed windows | 2026-09-08 → 2026-10-10 (+32d) | 2026-09-10 → 2026-10-13 (+33d) |  | 17d → -10.5d |  |
| 10 | **SPECIALTIES** | 2026-09-26 → 2026-11-04 (+39d) | 2026-09-28 → 2026-11-07 (+40d) |  |  |  |
| WAD.S.5550 | TOILET ACCESSROIES | 2026-09-26 → 2026-11-04 (+39d) | 2026-09-27 → 2026-11-05 (+39d) |  | 1d → -33d |  |
| WAD.S.6000 | PANEL SIGNAGE | 2026-09-27 → 2026-11-05 (+39d) | 2026-09-28 → 2026-11-07 (+40d) |  | 0d → -34d |  |
| 11 | **FURNISHINGS** | 2026-09-28 → 2026-11-07 (+40d) | 2026-09-28 → 2026-11-07 (+40d) |  |  |  |
| WAD.S.6210 | Workstation chair | 2026-09-28 → 2026-11-07 (+40d) | 2026-09-28 → 2026-11-07 (+40d) |  | 0d → -34d |  |
| WAD.S.6220 | Workstation table | 2026-09-28 → 2026-11-07 (+40d) | 2026-09-28 → 2026-11-07 (+40d) |  | 0d → -34d |  |
| WAD.S.6230 | Roller blind | 2026-09-28 → 2026-11-07 (+40d) | 2026-09-28 → 2026-11-07 (+40d) |  | 0d → -34d |  |
| WAD.S.6240 | Waste Receptacle | 2026-09-28 → 2026-11-07 (+40d) | 2026-09-28 → 2026-11-07 (+40d) |  | 0d → -34d |  |
| 5 | **GUARD HOUSE 3** | 2026-07-19 → 2026-07-11 (-8d) | 2026-09-28 → 2026-11-05 (+38d) |  |  |  |
| 1 | **SITE WORKS** | 2026-07-19 → 2026-07-11 (-8d) | 2026-09-21 → 2026-10-27 (+36d) |  |  |  |
| 4 | **Guard Rooms & Gates** | 2026-07-19 → 2026-07-16 (-3d) | 2026-08-06 → 2026-09-08 (+33d) |  |  |  |
| WAD.S.7380 | Excavation for guard rooms | 2026-07-19 → 2026-07-16 A (-3d) | 2026-07-27 → 2026-07-23 A (-4d) | 0% → 100% | 0d → none | WAD.S.1080 FS+60d → WAD.S.1080 FS+20d |
| WAD.S.7390 | Replacment Under Foundation | 2026-07-28 → 2026-08-04 A (+7d) | 2026-07-29 → 2026-08-04 A (+6d) | 0% → 100% | 0d → none |  |
| WAD.S.7400 | Backfilling Under G.Beam | 2026-08-05 → 2026-08-11 A (+6d) | 2026-08-06 → 2026-08-31 A (+25d) | 0% → 100% | 0d → none |  |
| WAD.S.7410 | Backfilling Under S.O.G | 2026-08-05 → 2026-09-07 A (+33d) | 2026-08-06 → 2026-09-08 A (+33d) | 0% → 100% | 24d → none |  |
| 5 | **Guard Rooms & Gates (CONCRETE Works)** | 2026-07-28 → 2026-07-11 (-17d) | 2026-09-21 → 2026-10-27 (+36d) |  |  |  |
| WAD.S.7450 | Isolated Footings & Column Neck | 2026-07-30 → 2026-07-11 A (-19d) | 2026-08-04 → 2026-08-08 A (+4d) | 0% → 100% | 0d → none | WAD.S.7430 SS+2d → WAD.S.7430 SS+2d, WAD.S.7430 FF+2d |
| WAD.S.7430 | 50 mm thickness lean concrete under the foundation. | 2026-07-28 → 2026-08-04 A (+7d) | 2026-07-30 → 2026-08-06 A (+7d) | 0% → 100% | 0d → none |  |
| WAD.S.7420 | 50 mm thickness lean concrete under grade beams. | 2026-08-08 → 2026-08-31 A (+23d) | 2026-08-10 → 2026-09-03 A (+24d) | 0% → 100% | 0d → none |  |
| WAD.S.7490 | Roof Slab | 2026-08-22 → 2026-09-06 A (+15d) | 2026-08-30 → 2026-09-20 A (+21d) | 0% → 100% | 0d → none |  |
| WAD.S.7500 | Beams | 2026-08-22 → 2026-09-06 A (+15d) | 2026-08-30 → 2026-09-20 A (+21d) | 0% → 100% | 0d → none |  |
| WAD.S.7460 | Grade beams | 2026-08-11 → 2026-09-10 A (+30d) | 2026-08-16 → 2026-09-15 A (+30d) | 0% → 100% | 0d → none |  |
| WAD.S.7470 | Columns | 2026-08-17 → 2026-09-16 A (+30d) | 2026-08-20 → 2026-09-20 A (+31d) | 0% → 100% | 0d → none |  |
| WAD.S.7510 | Raft and R.C. walls | 2026-08-19 → 2026-09-16 A (+28d) | 2026-08-24 → 2026-09-24 A (+31d) | 0% → 100% | 0d → none |  |
| WAD.S.7480 | Concrete Pad | 2026-08-31 → 2026-09-23 A (+23d) | 2026-09-02 → 2026-09-26 A (+24d) | 0% → 100% | 6d → none |  |
| WAD.S.7440 | Provide and cast concrete floor slab on grade | 2026-08-31 → 2026-10-03 A (+33d) | 2026-09-05 → 2026-10-07 A (+32d) | 0% → 100% | 4d → none |  |
| WAD.S.7520 | Tanks Raft | 2026-08-31 → 2026-10-05 (+35d) | 2026-09-05 → 2026-10-11 (+36d) |  | 4d → -26.5d |  |
| WAD.S.7530 | Tanks Walls | 2026-09-06 → 2026-10-11 (+35d) | 2026-09-10 → 2026-10-17 (+37d) |  | 4d → -26.5d |  |
| WAD.S.7540 | Tanks Slab | 2026-09-17 → 2026-10-22 (+35d) | 2026-09-21 → 2026-10-27 (+36d) |  | 12d → -18.5d |  |
| 3 | **MASONRY UNIT** | 2026-08-25 → 2026-09-23 (+29d) | 2026-08-27 → 2026-10-04 (+38d) |  |  |  |
| WAD.S.6500 | install Concrete Masonry Unit (CMU) for walls | 2026-08-25 → 2026-09-23 A (+29d) | 2026-08-27 → 2026-10-04 A (+38d) | 0% → 100% | 0d → none |  |
| 6 | **THERMAL & MOISTURE PROTECTION** | 2026-09-06 → 2026-09-16 (+10d) | 2026-09-09 → 2026-10-04 (+25d) |  |  |  |
| 1 | **THERMAL & MOISTURE PROTECTION - Foundation** | 2026-09-06 → 2026-09-16 (+10d) | 2026-09-09 → 2026-10-04 (+25d) |  |  |  |
| WAD.S.6560 | apply 2 coats of bitumen waterproofing paint on concrete surface in contact with soil | 2026-09-06 → 2026-09-16 A (+10d) | 2026-09-07 → 2026-09-19 A (+12d) | 0% → 100% | 24d → none |  |
| WAD.S.6580 | install liquid applied waterproofing coating; single-component pitch modified polyurethane | 2026-09-06 → 2026-09-29 (+23d) | 2026-09-07 → 2026-10-01 (+24d) |  | 22d → 1.9d |  |
| WAD.S.6590 | install geotextile sheet | 2026-09-08 → 2026-10-01 (+23d) | 2026-09-09 → 2026-10-04 (+25d) |  | 22d → 1.9d |  |
| 7 | **ROOFING SYSTEM** | 2026-09-09 → 2026-10-17 (+38d) | 2026-09-21 → 2026-10-29 (+38d) |  |  |  |
| WAD.S.6570 | install liquid applied waterproofing coating single-component pitch modified polyurethane based elastomeric | 2026-09-09 → 2026-10-17 (+38d) | 2026-09-21 → 2026-10-29 (+38d) |  | 0d → -32.5d |  |
| WAD.S.6610 | install 4mm thick APP modified bituminous membrane - single layer | 2026-09-09 → 2026-10-17 (+38d) | 2026-09-21 → 2026-10-29 (+38d) |  | 0d → -32.5d |  |
| WAD.S.6620 | install 75mm thick rigid insulation (extruded polystyrene) | 2026-09-09 → 2026-10-17 (+38d) | 2026-09-21 → 2026-10-29 (+38d) |  | 0d → -32.5d |  |
| WAD.S.6630 | cast in place foam concrete screed, 50mm thick minimum; laid to fall and cross fall | 2026-09-09 → 2026-10-17 (+38d) | 2026-09-21 → 2026-10-29 (+38d) |  | 0d → -32.5d |  |
| WAD.S.6640 | install 300 micron polyethylene sheet | 2026-09-09 → 2026-10-17 (+38d) | 2026-09-21 → 2026-10-29 (+38d) |  | 0d → -32.5d |  |
| WAD.S.6650 | install 50mm thick loose gravel toppings | 2026-09-09 → 2026-10-17 (+38d) | 2026-09-21 → 2026-10-29 (+38d) |  | 0d → -32.5d |  |
| WAD.S.6660 | install high density polyisocynurate cover board | 2026-09-09 → 2026-10-17 (+38d) | 2026-09-21 → 2026-10-29 (+38d) |  | 0d → -32.5d |  |
| WAD.S.6670 | install UV resistant geotextile sheet | 2026-09-09 → 2026-10-17 (+38d) | 2026-09-21 → 2026-10-29 (+38d) |  | 0d → -32.5d |  |
| WAD.S.6680 | fixing 3mm thick extruded aluminum flashing 40mm with sealant and all other accessories | 2026-09-09 → 2026-10-17 (+38d) | 2026-09-21 → 2026-10-29 (+38d) |  | 0d → -32.5d |  |
| WAD.S.6690 | install Terrazzo tiles | 2026-09-09 → 2026-10-17 (+38d) | 2026-09-21 → 2026-10-29 (+38d) |  | 0d → -32.5d |  |
| 2 | **THERMAL & MOISTURE PROTECTION - Tanks** | 2026-09-09 → 2026-10-17 (+38d) | 2026-09-21 → 2026-10-29 (+38d) |  |  |  |
| WAD.S.6600 | install water stop for tanks according to the drawings and specification | 2026-09-12 → 2026-10-17 (+35d) | 2026-09-16 → 2026-10-22 (+36d) |  | 4d → -26.5d |  |
| WAD.S.7370 | lay epoxy 2 coating for inner surfaces for bottom of the roof | 2026-09-09 → 2026-10-17 (+38d) | 2026-09-21 → 2026-10-29 (+38d) |  | 0d → -32.5d |  |
| 9 | **FINISHES** | 2026-08-08 → 2026-09-30 (+53d) | 2026-09-20 → 2026-10-26 (+36d) |  |  |  |
| WAD.S.6730 | install ceramic floor tiles | 2026-08-08 → 2026-09-30 (+53d) | 2026-08-10 → 2026-10-03 (+54d) |  | 2d → -44d |  |
| WAD.S.6740 | install granite flooring | 2026-08-08 → 2026-09-30 (+53d) | 2026-08-09 → 2026-10-01 (+53d) |  | 2d → -44d |  |
| WAD.S.6770 | install ceramic wall tiles | 2026-08-08 → 2026-09-30 (+53d) | 2026-08-10 → 2026-10-03 (+54d) |  | 2d → -44d |  |
| WAD.S.6780 | install two coats of acrylic paint on internal walls | 2026-08-09 → 2026-10-01 (+53d) | 2026-08-10 → 2026-10-03 (+54d) |  | 2d → -44d |  |
| WAD.S.6790 | install two coats of acrylic paint (suitable for exterior use) on external | 2026-08-09 → 2026-10-01 (+53d) | 2026-08-10 → 2026-10-03 (+54d) |  | 2d → -44d |  |
| WAD.S.6760 | install concrete plastering | 2026-08-29 → 2026-10-05 (+37d) | 2026-09-01 → 2026-10-10 (+39d) |  | 0d → -32.5d |  |
| WAD.S.6830 | gypsum board suspended ceiling | 2026-09-03 → 2026-10-05 (+32d) | 2026-09-07 → 2026-10-10 (+33d) |  | 13d → -14.5d |  |
| WAD.S.6750 | install granite saddles and thresholds | 2026-09-17 → 2026-10-22 (+35d) | 2026-09-20 → 2026-10-26 (+36d) |  | 4d → -26.5d |  |
| WAD.S.6800 | install Riyadh stone cladding | 2026-09-17 → 2026-10-22 (+35d) | 2026-09-20 → 2026-10-26 (+36d) |  | 4d → -26.5d |  |
| WAD.S.6820 | install 3mm steel CNC laser cut panels | 2026-09-17 → 2026-10-22 (+35d) | 2026-09-20 → 2026-10-26 (+36d) |  | 4d → -26.5d |  |
| WAD.S.6810 | install aluminum cladding | 2026-09-19 → 2026-10-24 (+35d) | 2026-09-20 → 2026-10-26 (+36d) |  | 4d → -26.5d |  |
| 13 | **MECHANICAL WORKS** | 2026-07-30 → 2026-09-21 (+53d) | 2026-09-28 → 2026-11-05 (+38d) |  |  |  |
| 1 | **MECHANICAL WORKS - 1st Fix** | 2026-07-30 → 2026-09-21 (+53d) | 2026-08-10 → 2026-10-04 (+55d) |  |  |  |

| ID | Task | Start | Finish | Complete | Total float | Predecessors |
| --- | --- | --- | --- | --- | --- | --- |
| WAD.S.6910 | WATER SUPPLY SYSTEM - 1st Fix | 2026-07-30 → 2026-09-21 A (+53d) | 2026-08-10 → 2026-10-04 (+55d) | 0% → 45% | 2d → -44d |  |
| WAD.S.6920 | SEWER AND DRAINAGE SYSTEM - 1st Fix | 2026-07-30 → 2026-09-21 A (+53d) | 2026-08-10 → 2026-09-29 (+50d) | 0% → 80% | 2d → -44d |  |
| WAD.S.6980 | IRRIGATION SYSTEM - 1st Fix | 2026-07-30 → 2026-09-21 A (+53d) | 2026-08-10 → 2026-10-04 (+55d) | 0% → 45% | 2d → -44d | WAD.S.7450 SS → WAD.S.7450 SS, WAD.S.7450 |
| WAD.S.7260 | HEATING, VENTILATION AND AIR CONDITIONING - 1st Fix | 2026-07-30 → 2026-09-21 A (+53d) | 2026-08-10 → 2026-10-04 (+55d) | 0% → 45% | 2d → -44d |  |
| WAD.S.7270 | Exhaust fans - 1st Fix | 2026-07-30 → 2026-09-21 A (+53d) | 2026-08-10 → 2026-10-04 (+55d) | 0% → 45% | 2d → -44d |  |
| 2 | **MECHANICAL WORKS - Final Fix** | 2026-09-26 → 2026-11-02 (+37d) | 2026-09-28 → 2026-11-05 (+38d) |  |  |  |
| WAD.S.6900 | installation of Fire extinguishers as per drawings, specifications | 2026-09-26 → 2026-11-02 (+37d) | 2026-09-28 → 2026-11-05 (+38d) |  | 0d → -32.5d |  |
| WAD.S.6930 | gully traps with heavy duty cover | 2026-09-26 → 2026-11-02 (+37d) | 2026-09-28 → 2026-11-05 (+38d) |  | 0d → -32.5d |  |
| WAD.S.6940 | chamber with heavy duty cover | 2026-09-26 → 2026-11-02 (+37d) | 2026-09-28 → 2026-11-05 (+38d) |  | 0d → -32.5d |  |
| WAD.S.6950 | INSTALL PLUMBING FIXTURES | 2026-09-26 → 2026-11-02 (+37d) | 2026-09-28 → 2026-11-05 (+38d) |  | 0d → -32.5d |  |
| WAD.S.6960 | HEATING, VENTILATION AND AIR CONDITIONING - Final Fix | 2026-09-26 → 2026-11-02 (+37d) | 2026-09-28 → 2026-11-05 (+38d) |  | 0d → -32.5d |  |
| WAD.S.6970 | Exhaust fans - Final Fix | 2026-09-26 → 2026-11-02 (+37d) | 2026-09-28 → 2026-11-05 (+38d) |  | 0d → -32.5d |  |
| WAD.S.6990 | Bulbblers and Spreyers of IRRIGATION SYSTEM | 2026-09-26 → 2026-11-02 (+37d) | 2026-09-28 → 2026-11-05 (+38d) |  | 0d → -32.5d |  |
| WAD.S.7230 | WATER SUPPLY SYSTEM - Final Fix | 2026-09-26 → 2026-11-02 (+37d) | 2026-09-28 → 2026-11-05 (+38d) |  | 0d → -32.5d |  |
| WAD.S.7240 | IRRIGATION SYSTEM - Final Fix | 2026-09-26 → 2026-11-02 (+37d) | 2026-09-28 → 2026-11-05 (+38d) |  | 6d → -26.5d |  |
| 15 | **ELECTRICAL WORKS** | 2026-07-30 → 2026-09-06 (+38d) | 2026-09-28 → 2026-11-05 (+38d) |  |  |  |
| 1 | **ELECTRICAL WORKS - 1st Fix** | 2026-07-30 → 2026-09-06 (+38d) | 2026-08-10 → 2026-10-03 (+54d) |  |  |  |
| WAD.S.7320 | GROUNDING - 1st Fix | 2026-07-30 → 2026-09-06 A (+38d) | 2026-08-10 → 2026-10-03 (+54d) | 0% → 50% | 2d → -44d |  |
| WAD.S.7290 | UNDERGROUND DISTRIBUTION SYSTEM - 1st Fix | 2026-07-30 → 2026-09-21 A (+53d) | 2026-08-10 → 2026-10-03 (+54d) | 0% → 50% | 2d → -44d |  |
| WAD.S.7300 | LIGHTING FIXTURES - 1st Fix | 2026-07-30 → 2026-09-21 A (+53d) | 2026-08-10 → 2026-10-03 (+54d) | 0% → 50% | 2d → -44d |  |
| WAD.S.7000 | LIGHTING AND POWER TYPE PANELBOARDS - 1st Fix | 2026-07-30 → 2026-09-27 A (+59d) | 2026-08-10 → 2026-10-03 (+54d) | 0% → 50% | 2d → -44d |  |
| WAD.S.7010 | UPS 3KVA (installed inside the rack) - 1st Fix | 2026-07-30 → 2026-09-27 A (+59d) | 2026-08-10 → 2026-10-03 (+54d) | 0% → 50% | 2d → -44d |  |
| WAD.S.7280 | power source with built-in photocell sensor for automatic electrical connection during day/light times - 1st Fix | 2026-07-30 → 2026-09-27 A (+59d) | 2026-08-10 → 2026-10-03 (+54d) | 0% → 50% | 2d → -44d |  |
| WAD.S.7310 | installation of Wiring devices includes switches and Receptacle outlets complete with device boxes - 1st Fix | 2026-07-30 → 2026-09-27 A (+59d) | 2026-08-10 → 2026-10-03 (+54d) | 0% → 50% | 2d → -44d |  |
| WAD.S.7330 | card reader IN/OUT - 1st Fix | 2026-07-30 → 2026-09-27 A (+59d) | 2026-08-10 → 2026-10-03 (+54d) | 0% → 50% | 2d → -44d |  |
| WAD.S.7340 | CCTV cameras - 1st Fix | 2026-07-30 → 2026-09-27 A (+59d) | 2026-08-10 → 2026-10-03 (+54d) | 0% → 50% | 2d → -44d |  |
| WAD.S.7350 | Access control panel - 1st Fix | 2026-07-30 → 2026-09-27 A (+59d) | 2026-08-10 → 2026-10-03 (+54d) | 0% → 50% | 2d → -44d |  |
| WAD.S.7360 | fire alarm system including wires, conduit and other materials - 1st Fix | 2026-07-30 → 2026-09-27 A (+59d) | 2026-08-10 → 2026-10-03 (+54d) | 0% → 50% | 2d → -44d |  |
| 2 | **ELECTRICAL WORKS - Final Fix** | 2026-09-24 → 2026-11-01 (+38d) | 2026-09-28 → 2026-11-05 (+38d) |  |  |  |
| WAD.S.7100 | 12-Port, SMF, Fiber Optic Patch Panels; | 2026-09-24 → 2026-11-01 (+38d) | 2026-09-28 → 2026-11-05 (+38d) |  | 0d → -32.5d |  |
| WAD.S.7120 | VIDEO SURVEILLANCE | 2026-09-24 → 2026-11-01 (+38d) | 2026-09-28 → 2026-11-05 (+38d) |  | 0d → -32.5d |  |
| WAD.S.7150 | CCTV storage system, as specified; | 2026-09-24 → 2026-11-01 (+38d) | 2026-09-28 → 2026-11-05 (+38d) |  | 0d → -32.5d |  |
| WAD.S.7020 | power source with built-in photocell sensor for automatic electrical connection during day/light times - Final Fix | 2026-09-26 → 2026-11-02 (+37d) | 2026-09-28 → 2026-11-05 (+38d) |  | 0d → -32.5d |  |
| WAD.S.7040 | LIGHTING FIXTURES - Final Fix | 2026-09-26 → 2026-11-02 (+37d) | 2026-09-28 → 2026-11-05 (+38d) |  | 0d → -32.5d |  |
| WAD.S.7060 | GROUNDING - Final Fix | 2026-09-26 → 2026-11-02 (+37d) | 2026-09-28 → 2026-11-05 (+38d) |  | 0d → -32.5d |  |
| WAD.S.7070 | card reader IN/OUT - Final Fix | 2026-09-26 → 2026-11-02 (+37d) | 2026-09-28 → 2026-11-05 (+38d) |  | 0d → -32.5d |  |
| WAD.S.7090 | 12-Port CAT6A UTP fully loaded patch panel | 2026-09-26 → 2026-11-02 (+37d) | 2026-09-28 → 2026-11-05 (+38d) |  | 0d → -32.5d |  |
| WAD.S.7110 | COMPUTERS AND RELATED PERIPHERALS | 2026-09-26 → 2026-11-02 (+37d) | 2026-09-28 → 2026-11-05 (+38d) |  | 0d → -32.5d |  |
| WAD.S.7130 | Central (Headend) System Components; | 2026-09-26 → 2026-11-02 (+37d) | 2026-09-28 → 2026-11-05 (+38d) |  | 0d → -32.5d |  |
| WAD.S.7140 | VSS System, as specified; | 2026-09-26 → 2026-11-02 (+37d) | 2026-09-28 → 2026-11-05 (+38d) |  | 0d → -32.5d |  |
| WAD.S.7160 | CCTV cameras - Final Fix | 2026-09-26 → 2026-11-02 (+37d) | 2026-09-28 → 2026-11-05 (+38d) |  | 0d → -32.5d |  |
| WAD.S.7180 | ELECTRICAL GATE BARRIER | 2026-09-26 → 2026-11-02 (+37d) | 2026-09-28 → 2026-11-05 (+38d) |  | 0d → -32.5d |  |
| WAD.S.7200 | fire alarm system including wires, conduit and other materials - Final Fix | 2026-09-26 → 2026-11-02 (+37d) | 2026-09-28 → 2026-11-05 (+38d) |  | 0d → -32.5d |  |
| WAD.S.7210 | Analog addressable fire alarm control panel with battery | 2026-09-26 → 2026-11-02 (+37d) | 2026-09-28 → 2026-11-05 (+38d) |  | 0d → -32.5d |  |
| WAD.S.7250 | LIGHTING AND POWER TYPE PANELBOARDS - Final Fix | 2026-09-26 → 2026-11-02 (+37d) | 2026-09-28 → 2026-11-05 (+38d) |  | 6d → -26.5d |  |
| WAD.S.7030 | UNDERGROUND DISTRIBUTION SYSTEM - Final Fix | 2026-09-27 → 2026-11-03 (+37d) | 2026-09-28 → 2026-11-05 (+38d) |  | 0d → -32.5d |  |
| WAD.S.7050 | installation of Wiring devices includes switches and Receptacle outlets complete with device boxes - Final Fix | 2026-09-27 → 2026-11-03 (+37d) | 2026-09-28 → 2026-11-05 (+38d) |  | 0d → -32.5d |  |
| WAD.S.7080 | Access control panel - Final Fix | 2026-09-27 → 2026-11-03 (+37d) | 2026-09-28 → 2026-11-05 (+38d) |  | 0d → -32.5d |  |
| WAD.S.7170 | 20A , ATS ( Automatic transfer switch) for UPS | 2026-09-27 → 2026-11-03 (+37d) | 2026-09-28 → 2026-11-05 (+38d) |  | 0d → -32.5d |  |
| WAD.S.7190 | LIGHTNING PROTECTION | 2026-09-27 → 2026-11-03 (+37d) | 2026-09-28 → 2026-11-05 (+38d) |  | 0d → -32.5d |  |
| WAD.S.7220 | Intelligent Ionization / Photoelectric smoke and heat detector with base | 2026-09-27 → 2026-11-03 (+37d) | 2026-09-28 → 2026-11-05 (+38d) |  | 0d → -32.5d |  |
| 4 | **METALS** | 2026-09-08 → 2026-10-10 (+32d) | 2026-09-09 → 2026-10-12 (+33d) |  |  |  |
| WAD.S.6510 | folding & sliding mounter combination ladder for building maintenance purpose | 2026-09-08 → 2026-10-10 (+32d) | 2026-09-09 → 2026-10-12 (+33d) |  | 13d → -14.5d |  |
| WAD.S.6520 | install of overflow galvanized steel roof scupper with gray color with angular secondary support | 2026-09-08 → 2026-10-10 (+32d) | 2026-09-09 → 2026-10-12 (+33d) |  | 13d → -14.5d |  |
| WAD.S.6530 | install heavy steel cover with frame including all necessary fixings | 2026-09-08 → 2026-10-10 (+32d) | 2026-09-09 → 2026-10-12 (+33d) |  | 13d → -14.5d |  |
| 5 | **WOODS AND PLASTICS** | 2026-09-07 → 2026-10-08 (+31d) | 2026-09-09 → 2026-10-12 (+33d) |  |  |  |
| WAD.S.6550 | COUNTER DESK | 2026-09-07 → 2026-10-08 (+31d) | 2026-09-09 → 2026-10-12 (+33d) |  | 16d → -11.5d |  |
| WAD.S.6540 | PANTRY CABINET | 2026-09-08 → 2026-10-10 (+32d) | 2026-09-09 → 2026-10-12 (+33d) |  | 13d → -14.5d |  |
| 8 | **DOORS & WINDOWS** | 2026-09-07 → 2026-10-08 (+31d) | 2026-09-12 → 2026-10-14 (+32d) |  |  |  |
| WAD.S.6700 | Install Aluminum Door | 2026-09-07 → 2026-10-08 (+31d) | 2026-09-09 → 2026-10-12 (+33d) |  | 16d → -11.5d |  |
| WAD.S.6710 | install hollow metal door | 2026-09-08 → 2026-10-10 (+32d) | 2026-09-12 → 2026-10-14 (+32d) |  | 13d → -14.5d |  |
| WAD.S.6720 | Install aluminum framed double glazed windows | 2026-09-08 → 2026-10-10 (+32d) | 2026-09-10 → 2026-10-13 (+33d) |  | 13d → -14.5d |  |
| 10 | **SPECIALTIES** | 2026-09-26 → 2026-11-02 (+37d) | 2026-09-28 → 2026-11-05 (+38d) |  |  |  |
| WAD.S.6840 | TOILET ACCESSROIES | 2026-09-26 → 2026-11-02 (+37d) | 2026-09-27 → 2026-11-04 (+38d) |  | 1d → -31.5d |  |
| WAD.S.6850 | PANEL SIGNAGE | 2026-09-27 → 2026-11-03 (+37d) | 2026-09-28 → 2026-11-05 (+38d) |  | 0d → -32.5d |  |
| 11 | **FURNISHINGS** | 2026-09-28 → 2026-11-04 (+37d) | 2026-09-28 → 2026-11-05 (+38d) |  |  |  |
| WAD.S.6860 | Workstation chair | 2026-09-28 → 2026-11-04 (+37d) | 2026-09-28 → 2026-11-05 (+38d) |  | 0d → -32.5d |  |
| WAD.S.6870 | Workstation table | 2026-09-28 → 2026-11-04 (+37d) | 2026-09-28 → 2026-11-05 (+38d) |  | 0d → -32.5d |  |
| WAD.S.6880 | Roller blind | 2026-09-28 → 2026-11-04 (+37d) | 2026-09-28 → 2026-11-05 (+38d) |  | 0d → -32.5d |  |
| WAD.S.6890 | Waste Receptacle | 2026-09-28 → 2026-11-04 (+37d) | 2026-09-28 → 2026-11-05 (+38d) |  | 0d → -32.5d |  |

| ID | Task | Start | Finish | Total float |
| --- | --- | --- | --- | --- |
| 4 | **EXT. WORKS** | 2026-08-11 → 2026-10-04 (+54d) | 2026-09-27 → 2026-11-17 (+51d) |  |
| 1 | **EXTERNAL WORKS** | 2026-08-11 → 2026-10-04 (+54d) | 2026-09-27 → 2026-11-17 (+51d) |  |
| WAD.S.1100 | Excavation Works | 2026-08-11 → 2026-10-04 (+54d) | 2026-08-27 → 2026-10-20 (+54d) | 2d → -44d |
| WAD.S.1290 | 40 mm Pipes | 2026-08-29 → 2026-10-21 (+53d) | 2026-09-10 → 2026-11-03 (+54d) | 2d → -44d |
| WAD.S.3270 | GRP Pipes laid in trenches | 2026-08-31 → 2026-10-21 (+51d) | 2026-09-13 → 2026-11-03 (+51d) | 0d → -44d |
| WAD.S.4020 | install 100 mm GRP pipe service connections between building sewage inspection chamber and main wastewater line | 2026-09-07 → 2026-10-26 (+49d) | 2026-09-15 → 2026-11-03 (+49d) | 3d → -39d |
| WAD.S.4030 | Manhole depth not exceeding 4.0m | 2026-09-07 → 2026-10-26 (+49d) | 2026-09-15 → 2026-11-03 (+49d) | 17d → -25d |
| WAD.S.3880 | 100 mm Pipe in trench not exceeding 2.00 m depth to invert | 2026-09-06 → 2026-10-27 (+51d) | 2026-09-13 → 2026-11-03 (+51d) | 0d → -44d |
| WAD.S.4800 | Backfilling Works | 2026-09-14 → 2026-11-04 (+51d) | 2026-09-19 → 2026-11-09 (+51d) | 0d → -44d |
| WAD.S.4980 | SIDEWALKS AND CURBS | 2026-09-20 → 2026-11-10 (+51d) | 2026-09-27 → 2026-11-17 (+51d) | 0d → -44d |
| WAD.S.4990 | ROAD WORKS | 2026-09-20 → 2026-11-10 (+51d) | 2026-09-27 → 2026-11-17 (+51d) | 1d → -43d |
| WAD.S.5000 | install flag pole 6 M height | 2026-09-20 → 2026-11-10 (+51d) | 2026-09-24 → 2026-11-15 (+52d) | 0d → -44d |
| 4 | **Testing & Commissioning** | 2026-09-26 → 2026-11-16 (+51d) | 2026-10-05 → 2026-11-25 (+51d) |  |
| WAD.S.5440 | Testing & Commissioning - Electrical Systems | 2026-09-26 → 2026-11-16 (+51d) | 2026-10-05 → 2026-11-25 (+51d) | 0d → -44d |
| WAD.S.5490 | Testing & Commissioning - Mechanical Systems | 2026-09-26 → 2026-11-16 (+51d) | 2026-10-05 → 2026-11-25 (+51d) | 0d → -44d |
| 1 | **Engineering** | 2026-09-26 → 2026-11-16 (+51d) | 2026-10-05 → 2026-11-25 (+51d) |  |
| 1 | **As-Built Drawings** | 2026-09-26 → 2026-11-16 (+51d) | 2026-10-04 → 2026-11-24 (+51d) |  |
| WAD.S.5430 | Prepare & Submit | 2026-09-26 → 2026-11-16 (+51d) | 2026-09-29 → 2026-11-19 (+51d) | 0d → -44d |
| WAD.S.6260 | Review & Approve | 2026-09-28 → 2026-11-18 (+51d) | 2026-10-04 → 2026-11-24 (+51d) | 1d → -43d |
| 2 | **Operational Spares** | 2026-09-26 → 2026-11-16 (+51d) | 2026-10-05 → 2026-11-25 (+51d) |  |
| WAD.S.5450 | Prepare & Submit | 2026-09-26 → 2026-11-16 (+51d) | 2026-09-29 → 2026-11-19 (+51d) | 0d → -44d |
| WAD.S.6350 | Inspection | 2026-09-30 → 2026-11-21 (+52d) | 2026-10-05 → 2026-11-25 (+51d) | 0d → -44d |
| WAD.S.6370 | Acceptance | 2026-09-30 → 2026-11-21 (+52d) | 2026-10-05 → 2026-11-25 (+51d) | 0d → -44d |
| 3 | **Warranties and Guarantees** | 2026-09-26 → 2026-11-16 (+51d) | 2026-10-05 → 2026-11-25 (+51d) |  |
| WAD.S.5460 | Prepare & Submit | 2026-09-26 → 2026-11-16 (+51d) | 2026-09-29 → 2026-11-19 (+51d) | 0d → -44d |
| WAD.S.6360 | Review & Approve | 2026-09-30 → 2026-11-21 (+52d) | 2026-10-05 → 2026-11-25 (+51d) | 0d → -44d |
| 2 | **Training and Manuals** | 2026-09-26 → 2026-11-16 (+51d) | 2026-10-05 → 2026-11-25 (+51d) |  |
| 1 | **Training** | 2026-09-26 → 2026-11-16 (+51d) | 2026-10-05 → 2026-11-25 (+51d) |  |
| WAD.S.5470 | Prepare & Submit | 2026-09-26 → 2026-11-16 (+51d) | 2026-09-29 → 2026-11-19 (+51d) | 0d → -44d |
| WAD.S.6380 | Review & Approve | 2026-09-30 → 2026-11-21 (+52d) | 2026-10-05 → 2026-11-25 (+51d) | 0d → -44d |
| WAD.S.6400 | Fabrication & Delivery | 2026-09-30 → 2026-11-21 (+52d) | 2026-10-05 → 2026-11-25 (+51d) | 0d → -44d |
| 2 | **Manuals** | 2026-09-26 → 2026-11-16 (+51d) | 2026-10-05 → 2026-11-25 (+51d) |  |
| WAD.S.5480 | Prepare & Submit | 2026-09-26 → 2026-11-16 (+51d) | 2026-09-29 → 2026-11-19 (+51d) | 0d → -44d |
| WAD.S.6390 | Review & Approve | 2026-09-30 → 2026-11-21 (+52d) | 2026-10-05 → 2026-11-25 (+51d) | 0d → -44d |
| 3 | **Demobilization** | 2026-09-27 → 2026-11-17 (+51d) | 2026-10-05 → 2026-11-25 (+51d) |  |
| WAD.S.5850 | Demobilize | 2026-09-27 → 2026-11-17 (+51d) | 2026-10-05 → 2026-11-25 (+51d) | 0d → -44d |
| 4 | **Snaglist Rectification** | 2026-09-27 → 2026-11-17 (+51d) | 2026-10-05 → 2026-11-25 (+51d) |  |
| WAD.S.5860 | Snaglist Rectification | 2026-09-27 → 2026-11-17 (+51d) | 2026-10-05 → 2026-11-25 (+51d) | 0d → -44d |
| WAD.S.5870 | Initial Handing Over | 2026-09-27 → 2026-11-17 (+51d) | 2026-10-05 → 2026-11-25 (+51d) | 0d → -44d |

## Version 3 (data date 2026-10-05, saved 2026-10-06, file WAS1-05-006 -Improvement of Waad Al Shamal Industrial City Fence & Gates-DD06-10-2026 (1).xer)

Note of the change: Renumber project folders 01–23 in order (after removing projects 12 and 25)

Last finish 2026-11-25 → 2026-12-01 (+6d). Complete tasks 115 → 150.

Changed:

| ID | Task | Start | Finish | Total float |
| --- | --- | --- | --- | --- |
| 1 | **Key Milestones** |  | 2026-11-25 → 2026-12-01 (+6d) |  |
| 1 | **General Milestones** |  | 2026-11-25 → 2026-12-01 (+6d) |  |
| WAD.S.6490 | Project Finish | 2026-11-25 → 2026-12-01 (+6d) | 2026-11-25 → 2026-12-01 (+6d) | -44d → -49d |
| 2 | **Contractual Milestones** |  | 2026-11-25 → 2026-12-01 (+6d) |  |
| WAD.S.3850 | Completion of Fences | 2026-10-01 → 2026-10-08 (+7d) | 2026-10-01 → 2026-10-08 (+7d) | 3.23d → -2.84d |
| WAD.S.3860 | Completion of GUARD HOUSE 1 | 2026-10-01 → 2026-10-08 (+7d) | 2026-10-01 → 2026-10-08 (+7d) | 3.23d → -2.84d |
| WAD.S.5070 | Completion of Engineering Works | 2026-10-06 → 2026-10-14 (+8d) | 2026-10-06 → 2026-10-14 (+8d) | -0.6d → -7.6d |
| WAD.S.6110 | Completion of EXT. WORKS | 2026-11-17 → 2026-11-23 (+6d) | 2026-11-17 → 2026-11-23 (+6d) | -37d → -42d |
| WAD.S.7560 | Testing & Commissioning | 2026-11-25 → 2026-12-01 (+6d) | 2026-11-25 → 2026-12-01 (+6d) | -44d → -49d |
| 6 | **Engineering** |  | 2026-10-10 → 2026-10-18 (+8d) |  |
| 1 | **Material Submittal** |  | 2026-10-10 → 2026-10-18 (+8d) |  |
| 1 | **Material Prepare & Submit** |  | 2026-10-03 → 2026-10-11 (+8d) |  |
| 1 | **Short Lead Items** |  | 2026-10-01 → 2026-10-10 (+9d) |  |
| WAD.S.2630 | Manhole depth not exceeding 4.0m (Material Prepare & Submit) (GUARD HOUSE) |  | 2026-09-29 → 2026-10-07 (+8d) | -12.6d → -18d |
| WAD.S.2690 | GRP Pipes laid in trenches(Material Prepare & Submit) (GUARD HOUS |  | 2026-09-29 → 2026-10-07 (+8d) | -25.6d → -32.6d |
| WAD.S.2700 | 100 mm GRP pipe service connections (Material Prepare & Submit) (GUARD HOUSE) |  | 2026-09-29 → 2026-10-07 (+8d) | -25.8d → -26.3d |
| WAD.S.2900 | SIDEWALKS AND CURBS (Material Prepare & Submit) (GUARD HOUSE) |  | 2026-10-01 → 2026-10-10 (+9d) | -19.7d → -25.3d |
| WAD.S.4700 | UNDERGROUND DISTRIBUTION SYSTEM (Material Prepare & Submit) (GUARD HOUSE) |  | 2026-09-29 → 2026-10-07 (+8d) | -2.1d → -8.5d |
| 2 | **Long Lead Items** |  | 2026-10-03 → 2026-10-11 (+8d) |  |
| WAD.S.1490 | Intrusion Detection system including processor control units items and joints (Material Prepare & Submit) (FENCES) |  | 2026-09-28 → 2026-10-06 (+8d) | -34.5d → -34.7d |
| WAD.S.3220 | WATER SUPPLY SYSTEM (Material Prepare & Submit) (GUARD HOUSE) |  | 2026-09-29 → 2026-10-07 (+8d) |  |
| WAD.S.3230 | SEWER AND DRAINAGE SYSTEM (Material Prepare & Submit) (GUARD HOUSE) |  | 2026-10-03 → 2026-10-11 (+8d) |  |
| WAD.S.3250 | HEATING, VENTILATION AND AIR CONDITIONING (Material Prepare & Submit) (GUARD HOUSE) |  | 2026-10-01 → 2026-10-10 (+9d) |  |
| WAD.S.1520 | Handholes\ Manholes (Material Prepare & Submit) (FENCES) |  | 2026-09-29 → 2026-10-07 (+8d) | -14.2d → -18.8d |
| WAD.S.3150 | folding & sliding mounter combination ladder for building maintenance purpose (Material Prepare & Submit) (GUARD HOUSE) |  | 2026-10-03 → 2026-10-11 (+8d) | -25.4d → -25.9d |
| WAD.S.3050 | Workstation chair (Material Prepare & Submit) (GUARD HOUSE) |  | 2026-09-29 → 2026-10-07 (+8d) | -21.2d → -22.2d |
| WAD.S.3160 | overflow galvanized steel roof scupper (Material Prepare & Submit) (GUARD HOUSE) |  | 2026-09-29 → 2026-10-07 (+8d) | -22.6d → -23.1d |
| WAD.S.3170 | counter desk (Material Prepare & Submit) (GUARD HOUSE) |  | 2026-09-29 → 2026-10-07 (+8d) | -22.6d → -23.1d |
| WAD.S.3180 | install ceramic wall tiles (Material Prepare & Submit) (GUARD HOUSE) |  | 2026-09-29 → 2026-10-07 (+8d) | -22.6d → -23.1d |
| WAD.S.3190 | PANEL SIGNAGE (Material Prepare & Submit) (GUARD HOUSE) |  | 2026-09-29 → 2026-10-07 (+8d) | -22.6d → -23.1d |
| WAD.S.3200 | COMMUNICATIONS BACKBONE CABLING (Material Prepare & Submit) (GUARD HOUSE) |  | 2026-09-29 → 2026-10-07 (+8d) | -22.6d → -23.1d |
| WAD.S.3210 | card reader IN/OUT (Material Prepare & Submit) (GUARD HOUSE) |  | 2026-09-29 → 2026-10-07 (+8d) | -18.6d → -18.1d |
| WAD.S.3240 | SUPPLY AND INSTALL PLUMBING FIXTURES (Material Prepare & Submit) (GUARD HOUSE) |  | 2026-09-29 → 2026-10-07 (+8d) | -18.1d → -18.6d |
| WAD.S.2840 | ceramic floor tiles (Material Prepare & Submit) (GUARD HOUSE) |  | 2026-10-01 → 2026-10-10 (+9d) | -20.2d → -19.8d |
| WAD.S.2850 | Riyadh stone cladding (Material Prepare & Submit) (GUARD HOUSE) |  | 2026-10-01 → 2026-10-10 (+9d) | -24.2d → -24.7d |
| WAD.S.2860 | UPS (Material Prepare & Submit) (GUARD HOUSE) |  | 2026-10-01 → 2026-10-10 (+9d) | -25.8d → -26.3d |
| WAD.S.2890 | Panel boards (Material Prepare & Submit) (GUARD HOUSE) |  | 2026-10-01 → 2026-10-10 (+9d) | -25.4d → -25.9d |
| WAD.S.3560 | aluminum framed double glazed windows (Material Prepare & Submit) (GUARD HOUSE) |  | 2026-10-01 → 2026-10-10 (+9d) | -17.2d → -18.2d |
| WAD.S.3570 | Roller blind (Material Prepare & Submit) (GUARD HOUSE) |  | 2026-10-01 → 2026-10-10 (+9d) | -21.2d → -22.2d |
| WAD.S.3590 | DATA COMMUNICATIONS (Material Prepare & Submit) (GUARD HOUSE) |  | 2026-10-01 → 2026-10-10 (+9d) | -15.2d → -15.7d |
| WAD.S.3710 | COMPUTERS AND RELATED PERIPHERALS (Material Prepare & Submit) (GUARD HOUSE) |  | 2026-10-01 → 2026-10-10 (+9d) | -15.2d → -17.2d |
| WAD.S.3030 | PANTRY CABINET (Material Prepare & Submit) (GUARD HOUSE) |  | 2026-10-03 → 2026-10-11 (+8d) | -25.8d → -26.3d |
| WAD.S.3040 | 20mm thick black granite (Material Prepare & Submit) (GUARD HOUSE) |  | 2026-10-03 → 2026-10-11 (+8d) | -10.3d → -17.3d |
| WAD.S.3060 | Safety Disconnect Switches complete with busbar, frame box (Material Prepare & Submit) (GUARD HOUSE) |  | 2026-10-03 → 2026-10-11 (+8d) | -19.8d → -20.3d |
| WAD.S.3300 | heavy steel cover with frame for tanks (Material Prepare & Submit) (GUARD HOUSE) |  | 2026-10-03 → 2026-10-11 (+8d) | -16.8d → -17.3d |
| WAD.S.3310 | HOLLOW METAL DOORS AND FRAMES (Material Prepare & Submit) (GUARD HOUSE) |  | 2026-10-03 → 2026-10-11 (+8d) |  |
| WAD.S.3320 | ALUMINIUM DOORS (Material Prepare & Submit) (GUARD HOUSE) |  | 2026-10-03 → 2026-10-11 (+8d) | -16.8d → -17.3d |
| WAD.S.3330 | TOILET AND BATH ACCESSROIES (Material Prepare & Submit) (GUARD HOUSE) |  | 2026-10-03 → 2026-10-11 (+8d) | -11.7d → -12.2d |
| WAD.S.3340 | Waste Receptacle (Material Prepare & Submit) (GUARD HOUSE) |  | 2026-10-03 → 2026-10-11 (+8d) | -19.8d → -19.3d |
| WAD.S.3350 | LIGHTING FIXTURES (Material Prepare & Submit) (GUARD HOUSE) |  | 2026-10-03 → 2026-10-11 (+8d) | -18.8d → -19.8d |
| WAD.S.3360 | Access control panel (Material Prepare & Submit) (GUARD HOUSE) |  | 2026-10-03 → 2026-10-11 (+8d) |  |
| WAD.S.3370 | VIDEO SURVEILLANCE (Material Prepare & Submit) (GUARD HOUSE) |  | 2026-10-03 → 2026-10-11 (+8d) |  |
| 2 | **Material Review & Approve** |  | 2026-10-10 → 2026-10-18 (+8d) |  |
| 1 | **Short Lead Items** |  | 2026-10-08 → 2026-10-17 (+9d) |  |
| WAD.S.3550 | ROAD WORKS (Material Review & Approve) (GUARD HOUSE) |  | 2026-10-01 → 2026-10-10 (+9d) | -13d → -18.8d |
| WAD.S.2680 | Manhole depth not exceeding 4.0m (Material Review & Approve) (GUARD HOUSE) | 2026-09-29 → 2026-10-07 (+8d) | 2026-10-06 → 2026-10-14 (+8d) | -12.6d → -18d |
| WAD.S.4840 | UNDERGROUND DISTRIBUTION SYSTEM (Material Review & Approve) (GUARD HOUSE) | 2026-09-29 → 2026-10-07 (+8d) | 2026-10-06 → 2026-10-14 (+8d) | -2.1d → -8.5d |
| WAD.S.3140 | SIDEWALKS AND CURBS (Material Review & Approve) (GUARD HOUSE) | 2026-10-01 → 2026-10-10 (+9d) | 2026-10-08 → 2026-10-17 (+9d) | -19.7d → -25.3d |
| 2 | **Long Lead Items** |  | 2026-10-10 → 2026-10-18 (+8d) |  |
| WAD.S.1510 | Intrusion Detection system including processor control units items and joints (Material Review & Approve) (FENCES) |  | 2026-09-29 → 2026-10-07 (+8d) | -34.5d → -34.7d |
| WAD.S.3670 | WATER SUPPLY SYSTEM (Material Review & Approve) (GUARD HOUSE) |  | 2026-09-30 → 2026-10-08 (+8d) |  |
| WAD.S.3680 | SEWER AND DRAINAGE SYSTEM (Material Review & Approve) (GUARD HOUSE) |  | 2026-10-04 → 2026-10-12 (+8d) |  |
| WAD.S.3700 | HEATING, VENTILATION AND AIR CONDITIONING (Material Review & Approve) (GUARD HOUSE) |  | 2026-10-03 → 2026-10-11 (+8d) |  |
| WAD.S.3800 | TOILET AND BATH ACCESSROIES (Material Review & Approve) (GUARD HOUSE) |  | 2026-10-04 → 2026-10-12 (+8d) | -11.7d → -12.2d |
| WAD.S.3690 | SUPPLY AND INSTALL PLUMBING FIXTURES (Material Review & Approve) (GUARD HOUSE) |  | 2026-10-10 → 2026-10-18 (+8d) | -25.8d → -26.3d |
| WAD.S.1650 | Handholes\ Manholes (Material Review & Approve) (FENCES) | 2026-09-29 → 2026-10-07 (+8d) | 2026-10-06 → 2026-10-14 (+8d) | -14.2d → -18.8d |
| WAD.S.3000 | ceramic floor tiles (Material Review & Approve) (GUARD HOUSE) | 2026-10-01 → 2026-10-10 (+9d) | 2026-10-08 → 2026-10-17 (+9d) | -20.2d → -19.8d |
| WAD.S.3010 | install Riyadh stone cladding (Material Review & Approve) (GUARD HOUSE) | 2026-10-01 → 2026-10-10 (+9d) | 2026-10-08 → 2026-10-17 (+9d) | -24.2d → -24.7d |
| WAD.S.3020 | UPS (Material Review & Approve) (GUARD HOUSE) | 2026-10-01 → 2026-10-10 (+9d) | 2026-10-08 → 2026-10-17 (+9d) | -13.2d → -20.2d |
| WAD.S.3130 | Panel boards (Material Review & Approve) (GUARD HOUSE) | 2026-10-01 → 2026-10-10 (+9d) | 2026-10-08 → 2026-10-17 (+9d) | -24.2d → -24.7d |

| ID | Task | Start | Finish | Complete | Total float |
| --- | --- | --- | --- | --- | --- |
| WAD.S.3660 | card reader IN/OUT (Material Review & Approve) (GUARD HOUSE) | 2026-10-01 → 2026-10-10 (+9d) | 2026-10-08 → 2026-10-17 (+9d) |  | -20.2d → -19.7d |
| WAD.S.4040 | aluminum framed double glazed windows (Material Review & Approve) (GUARD HOUSE) | 2026-10-01 → 2026-10-10 (+9d) | 2026-10-08 → 2026-10-17 (+9d) |  | -17.2d → -18.2d |
| WAD.S.4050 | Roller blind (Material Review & Approve) (GUARD HOUSE) | 2026-10-01 → 2026-10-10 (+9d) | 2026-10-08 → 2026-10-17 (+9d) |  | -21.2d → -22.2d |
| WAD.S.4070 | DATA COMMUNICATIONS (Material Review & Approve) (GUARD HOUSE) | 2026-10-01 → 2026-10-10 (+9d) | 2026-10-08 → 2026-10-17 (+9d) |  | -15.2d → -15.7d |
| WAD.S.4080 | COMPUTERS AND RELATED PERIPHERALS (Material Review & Approve) (GUARD HOUSE) | 2026-10-01 → 2026-10-10 (+9d) | 2026-10-08 → 2026-10-17 (+9d) |  | -15.2d → -17.2d |
| WAD.S.3500 | PANTRY CABINET (Material Review & Approve) (GUARD HOUSE) | 2026-10-03 → 2026-10-11 (+8d) | 2026-10-10 → 2026-10-18 (+8d) |  | -25.8d → -26.3d |
| WAD.S.3510 | 20mm thick black granite (Material Review & Approve) (GUARD HOUSE) | 2026-10-03 → 2026-10-11 (+8d) | 2026-10-10 → 2026-10-18 (+8d) |  | -10.3d → -17.3d |
| WAD.S.3520 | Workstation chair (Material Review & Approve) (GUARD HOUSE) | 2026-10-03 → 2026-10-11 (+8d) | 2026-10-10 → 2026-10-18 (+8d) |  | -12.8d → -19.8d |
| WAD.S.3600 | folding & sliding mounter combination ladder for building maintenance purpose (Material Review & Approve) (GUARD HOUSE) | 2026-10-03 → 2026-10-11 (+8d) | 2026-10-10 → 2026-10-18 (+8d) |  | -25.8d → -26.3d |
| WAD.S.3610 | overflow galvanized steel roof scupper (Material Review & Approve) (GUARD HOUSE) | 2026-10-03 → 2026-10-11 (+8d) | 2026-10-10 → 2026-10-18 (+8d) |  | -25.8d → -26.3d |
| WAD.S.3620 | counter desk (Material Review & Approve) (GUARD HOUSE) | 2026-10-03 → 2026-10-11 (+8d) | 2026-10-10 → 2026-10-18 (+8d) |  | -25.8d → -26.3d |
| WAD.S.3630 | install ceramic wall tiles (Material Review & Approve) (GUARD HOUSE) | 2026-10-03 → 2026-10-11 (+8d) | 2026-10-10 → 2026-10-18 (+8d) |  | -25.8d → -26.3d |
| WAD.S.3640 | PANEL SIGNAGE (Material Review & Approve) (GUARD HOUSE) | 2026-10-03 → 2026-10-11 (+8d) | 2026-10-10 → 2026-10-18 (+8d) |  | -25.8d → -26.3d |
| WAD.S.3650 | COMMUNICATIONS BACKBONE CABLING (Material Review & Approve) (GUARD HOUSE) | 2026-10-03 → 2026-10-11 (+8d) | 2026-10-10 → 2026-10-18 (+8d) |  | -25.8d → -26.3d |
| WAD.S.3770 | heavy steel cover with frame for tanks (Material Review & Approve) (GUARD HOUSE) | 2026-10-03 → 2026-10-11 (+8d) | 2026-10-10 → 2026-10-18 (+8d) |  | -16.8d → -17.3d |
| WAD.S.3780 | HOLLOW METAL DOORS AND FRAMES (Material Review & Approve) (GUARD HOUSE) | 2026-10-03 → 2026-10-11 (+8d) | 2026-10-10 → 2026-10-18 (+8d) |  |  |
| WAD.S.3790 | ALUMINIUM DOORS (Material Review & Approve) (GUARD HOUSE) | 2026-10-03 → 2026-10-11 (+8d) | 2026-10-10 → 2026-10-18 (+8d) |  | -16.8d → -17.3d |
| WAD.S.3810 | Waste Receptacle (Material Review & Approve) (GUARD HOUSE) | 2026-10-03 → 2026-10-11 (+8d) | 2026-10-10 → 2026-10-18 (+8d) |  | -19.8d → -19.3d |
| WAD.S.3820 | LIGHTING FIXTURES (Material Review & Approve) (GUARD HOUSE) | 2026-10-03 → 2026-10-11 (+8d) | 2026-10-10 → 2026-10-18 (+8d) |  | -18.8d → -19.8d |
| WAD.S.3830 | Access control panel (Material Review & Approve) (GUARD HOUSE) | 2026-10-03 → 2026-10-11 (+8d) | 2026-10-10 → 2026-10-18 (+8d) |  |  |
| WAD.S.3840 | VIDEO SURVEILLANCE (Material Review & Approve) (GUARD HOUSE) | 2026-10-03 → 2026-10-11 (+8d) | 2026-10-10 → 2026-10-18 (+8d) |  |  |
| 7 | **Procurement** |  | 2026-10-27 → 2026-10-28 (+1d) |  |  |
| 5 | **Fabrication & Delivery** |  | 2026-10-27 → 2026-10-28 (+1d) |  |  |
| 1 | **Short Lead Items** |  | 2026-10-12 → 2026-10-19 (+7d) |  |  |
| WAD.S.1430 | structural steel beams, posts and rods for wall fence (FENCES) |  | 2026-09-28 → 2026-10-06 (+8d) |  | -20.2d → -16.2d |
| WAD.S.1540 | tubes, bolts, nuts and steel plates to strengthened the wall fence and posts (FENCES) |  | 2026-09-28 → 2026-10-06 (+8d) |  | -20.15d → -16.15d |
| WAD.S.4780 | FIRE PROTECTION SYSTEM (fire extinguisher) (GUARD HOUSE) |  | 2026-09-30 → 2026-10-07 (+7d) | 50% → 70% | 4.5d → -1.5d |
| WAD.S.3290 | 100 mm GRP pipe service connections (GUARD HOUSE) |  | 2026-10-03 → 2026-10-10 (+7d) | 50% → 70% | -19.6d → -25.4d |
| WAD.S.4160 | GROUNDING (GUARD HOUSE) |  | 2026-10-01 → 2026-10-08 (+7d) | 50% → 70% | 3.9d → -2.5d |
| WAD.S.4170 | ROAD WORKS (GUARD HOUSE) |  | 2026-10-05 → 2026-10-12 (+7d) | 50% → 70% | -13d → -18.8d |
| WAD.S.2970 | Manhole depth not exceeding 4.0m (GUARD HOUSE) |  | 2026-10-11 → 2026-10-17 (+6d) | 50% → 70% | -12.6d → -18d |
| WAD.S.3910 | SIDEWALKS AND CURBS (GUARD HOUSE) |  | 2026-10-12 → 2026-10-19 (+7d) | 50% → 70% | -19.7d → -25.3d |
| WAD.S.5080 | UNDERGROUND DISTRIBUTION SYSTEM (GUARD HOUSE) |  | 2026-10-08 → 2026-10-15 (+7d) | 50% → 70% | -2.1d → -8.5d |
| 2 | **Long Lead Items** |  | 2026-10-27 → 2026-10-28 (+1d) |  |  |
| WAD.S.1570 | fix galvanized steel chain link gate including all necessary associated (FENCES) |  | 2026-09-28 → 2026-10-06 (+8d) |  | -20.75d → -16.75d |
| WAD.S.2470 | structural steel members and plates for main sliding gates (FENCES) |  | 2026-09-28 → 2026-10-06 (+8d) |  | -20.7d → -16.7d |
| WAD.S.2170 | Intrusion Detection system including processor control units items and joints (FENCES) |  | 2026-10-06 → 2026-10-12 (+6d) | 50% → 70% | -34.5d → -34.7d |
| WAD.S.4580 | WATER SUPPLY SYSTEM (GUARD HOUSE) | 2026-09-30 → 2026-10-01 A (+1d) |  | 0% → 50% | -11.1d → -11.6d |
| WAD.S.2260 | Handholes\ Manholes (FENCES) |  | 2026-10-13 → 2026-10-18 (+5d) | 50% → 70% | -14.2d → -18.8d |
| WAD.S.3740 | ceramic floor tiles (GUARD HOUSE) |  | 2026-10-15 → 2026-10-20 (+5d) | 50% → 70% | -15.2d → -19.8d |
| WAD.S.3750 | install Riyadh stone cladding (GUARD HOUSE) |  | 2026-10-15 → 2026-10-20 (+5d) | 50% → 70% | -14.2d → -18.8d |
| WAD.S.3760 | UPS (GUARD HOUSE) |  | 2026-10-19 → 2026-10-27 (+8d) |  | -13.2d → -20.2d |
| WAD.S.3900 | Panel boards (GUARD HOUSE) |  | 2026-10-19 → 2026-10-27 (+8d) |  | -11.2d → -18.2d |
| WAD.S.4610 | HEATING, VENTILATION AND AIR CONDITIONING (GUARD HOUSE) | 2026-10-03 → 2026-10-04 A (+1d) |  | 0% → 50% |  |
| WAD.S.4590 | SEWER AND DRAINAGE SYSTEM (GUARD HOUSE) | 2026-10-04 → 2026-10-05 A (+1d) |  | 0% → 50% |  |
| WAD.S.4650 | TOILET AND BATH ACCESSROIES (GUARD HOUSE) | 2026-10-04 → 2026-10-05 A (+1d) | 2026-10-19 → 2026-10-20 (+1d) | 0% → 50% | -11.7d → -12.2d |
| WAD.S.4120 | PANTRY CABINET (GUARD HOUSE) |  | 2026-10-19 → 2026-10-27 (+8d) |  | -13.3d → -20.3d |
| WAD.S.4130 | 20mm thick black granite (GUARD HOUSE) |  | 2026-10-18 → 2026-10-26 (+8d) |  | -10.3d → -17.3d |
| WAD.S.4140 | Workstation chair (GUARD HOUSE) |  | 2026-10-19 → 2026-10-27 (+8d) |  | -12.8d → -19.8d |
| WAD.S.4150 | Safety Disconnect Switches complete with busbar, frame box (GUARD HOUSE) |  | 2026-10-20 → 2026-10-28 (+8d) |  | -12.3d → -19.3d |
| WAD.S.4510 | folding & sliding mounter combination ladder for building maintenance purpose (GUARD HOUSE) |  | 2026-10-18 → 2026-10-26 (+8d) |  | -12.3d → -19.3d |
| WAD.S.4520 | overflow galvanized steel roof scupper (GUARD HOUSE) |  | 2026-10-18 → 2026-10-26 (+8d) |  | -12.3d → -19.3d |
| WAD.S.4530 | counter desk (GUARD HOUSE) |  | 2026-10-18 → 2026-10-26 (+8d) |  | -13.8d → -20.8d |
| WAD.S.4540 | install ceramic wall tiles (GUARD HOUSE) |  | 2026-10-17 → 2026-10-25 (+8d) |  | -12.8d → -19.8d |
| WAD.S.4570 | card reader IN/OUT (GUARD HOUSE) | 2026-10-08 → 2026-10-10 A (+2d) | 2026-10-26 → 2026-10-25 (-1d) | 0% → 50% | -20.2d → -19.7d |
| WAD.S.4760 | aluminum framed double glazed windows (GUARD HOUSE) | 2026-10-08 → 2026-10-10 A (+2d) | 2026-10-22 → 2026-10-24 (+2d) | 0% → 50% | -17.2d → -18.2d |
| WAD.S.4770 | Roller blind (GUARD HOUSE) | 2026-10-08 → 2026-10-10 A (+2d) | 2026-10-22 → 2026-10-24 (+2d) | 0% → 50% | -21.2d → -22.2d |
| WAD.S.4790 | DATA COMMUNICATIONS (GUARD HOUSE) | 2026-10-08 → 2026-10-10 A (+2d) |  | 0% → 50% | -15.2d → -15.7d |
| WAD.S.4820 | COMPUTERS AND RELATED PERIPHERALS (GUARD HOUSE) | 2026-10-08 → 2026-10-10 A (+2d) | 2026-10-20 → 2026-10-22 (+2d) | 0% → 50% | -15.2d → -17.2d |
| WAD.S.4550 | PANEL SIGNAGE (GUARD HOUSE) | 2026-10-10 → 2026-10-11 A (+1d) |  | 0% → 50% |  |
| WAD.S.4560 | COMMUNICATIONS BACKBONE CABLING (GUARD HOUSE) | 2026-10-10 → 2026-10-11 A (+1d) | 2026-10-25 → 2026-10-26 (+1d) | 0% → 50% | -16.8d → -17.3d |
| WAD.S.4600 | SUPPLY PLUMBING FIXTURES (GUARD HOUSE) | 2026-10-10 → 2026-10-11 A (+1d) | 2026-10-25 → 2026-10-26 (+1d) | 0% → 50% | -25.8d → -26.3d |
| WAD.S.4620 | heavy steel cover with frame for tanks (GUARD HOUSE) | 2026-10-10 → 2026-10-11 A (+1d) | 2026-10-25 → 2026-10-26 (+1d) | 0% → 50% | -16.8d → -17.3d |
| WAD.S.4630 | HOLLOW METAL DOORS AND FRAMES (GUARD HOUSE) | 2026-10-10 → 2026-10-11 A (+1d) |  | 0% → 50% |  |
| WAD.S.4640 | ALUMINIUM DOORS (GUARD HOUSE) | 2026-10-10 → 2026-10-11 A (+1d) | 2026-10-25 → 2026-10-26 (+1d) | 0% → 50% | -16.8d → -17.3d |
| WAD.S.4660 | Waste Receptacle (GUARD HOUSE) | 2026-10-10 → 2026-10-11 A (+1d) |  | 0% → 50% | -19.8d → -19.3d |
| WAD.S.4670 | LIGHTING FIXTURES (GUARD HOUSE) | 2026-10-10 → 2026-10-11 A (+1d) | 2026-10-24 → 2026-10-25 (+1d) | 0% → 50% | -18.8d → -19.8d |
| WAD.S.4680 | Access control panel (GUARD HOUSE) | 2026-10-10 → 2026-10-11 A (+1d) |  | 0% → 50% |  |
| WAD.S.4690 | VIDEO SURVEILLANCE (GUARD HOUSE) | 2026-10-10 → 2026-10-11 A (+1d) |  | 0% → 50% |  |
| 8 | **Construction** | 2026-06-08 → 2025-11-11 (-209d) | 2026-11-17 → 2026-11-23 (+6d) |  |  |

| ID | Task | Start | Finish | Complete | Total float |
| --- | --- | --- | --- | --- | --- |
| 1 | **FENCES** | 2026-07-06 → 2025-11-11 (-237d) |  |  |  |
| 1 | **SITE WORKS** |  | 2026-09-28 → 2026-10-04 (+6d) |  |  |
| WAD.S.1370 | Excavation Works |  | 2026-09-28 → 2026-10-04 A (+6d) | 98% → 100% | -27.3d → none |
| 2 | **CONCRETE WORKS** |  | 2026-10-01 → 2026-10-07 (+6d) |  |  |
| 1 | **Part 1** |  | 2026-09-29 → 2026-10-06 (+7d) |  |  |
| WAD.S.1560 | cast in place reinforced concrete for the sub-structures - Part 1 |  | 2026-09-29 → 2026-10-06 (+7d) | 93% → 96% | -20.3d → -16.68d |
| 2 | **Part 2** |  | 2026-10-01 → 2026-10-07 (+6d) |  |  |
| WAD.S.2720 | cast in place reinforced concrete for the sub-structures - Part 2 |  | 2026-10-01 → 2026-10-07 (+6d) | 93% → 96% | -15.24d → -16.68d |
| 3 | **THERMAL & MOISTURE PROTECTION** |  | 2026-10-17 → 2026-10-12 (-5d) |  |  |
| 1 | **Part 1** |  | 2026-10-01 → 2026-10-08 (+7d) |  |  |
| WAD.S.2330 | Applying 2 coats of bitumen waterproofing paint on concrete surfaces - Part 1 |  | 2026-10-01 → 2026-10-08 (+7d) |  | -11.79d → -7.15d |
| 2 | **Part 2** |  | 2026-10-17 → 2026-10-12 (-5d) |  |  |
| WAD.S.3420 | Applying 2 coats of bitumen waterproofing paint on concrete surfaces - Part 2 |  | 2026-10-17 → 2026-10-12 (-5d) | 38% → 89% | -11.79d → -7.15d |
| 6 | **SPECIAL CONSTRUCTION- STRUCTURAL STEEL** |  | 2026-10-26 → 2026-10-25 (-1d) |  |  |
| 1 | **Part 1** |  | 2026-10-10 → 2026-10-11 (+1d) |  |  |
| WAD.S.4720 | galvanized steel chain link gates Installation - Part 1 |  | 2026-10-10 → 2026-10-11 (+1d) | 75% → 88% | -17.75d → -16.75d |
| 2 | **Part 2** |  | 2026-10-26 → 2026-10-25 (-1d) |  |  |
| WAD.S.2920 | install structural steel beams, posts and rods for wall fence - Part 2 |  | 2026-10-03 → 2026-10-10 (+7d) | 80% → 88% | -4.95d → -10.27d |
| WAD.S.3430 | Install tubes, bolts, nuts and steel plates to strengthened the wall fence and posts - Part 2 |  | 2026-10-06 → 2026-10-10 (+4d) | 70% → 88% | -3.05d → -6.27d |
| WAD.S.3950 | fix galvanized steel chain link fence wall; including steel tube framing and posts, turn buckle - Part 2 |  | 2026-10-07 → 2026-10-10 (+3d) | 65% → 88% | -1.1d → -3.27d |
| WAD.S.4730 | galvanized steel chain link gates Installation - Part 2 |  | 2026-10-26 → 2026-10-25 (-1d) | 5% → 25% | -17.75d → -16.75d |
| 8 | **ELECTRICAL WORKS** | 2026-10-06 → 2025-11-11 (-329d) | 2026-11-15 → 2026-11-07 (-8d) |  |  |
| WAD.S.4810 | Handholes\ Manholes | 2026-11-05 → 2025-11-11 A (-359d) | 2026-11-15 → 2026-11-07 (-8d) | 0% → 88% | -34.5d → -27.66d |
| WAD.S.2640 | Intrusion Detection system including processor control units items and joints - 1st Fix | 2026-10-06 → 2026-10-12 (+6d) | 2026-10-17 → 2026-10-22 (+5d) |  | -34.5d → -34.7d |
| WAD.S.2960 | Road crossing ducts for Fiber Optic Cable | 2026-10-17 → 2026-10-22 (+5d) | 2026-10-25 → 2026-10-31 (+6d) |  | -19.5d → -24.1d |
| WAD.S.2950 | Fiber Optic Outdoor Cable | 2026-10-17 → 2026-10-22 A (+5d) |  | 0% → 55% | -34.5d → -34.7d |
| WAD.S.2980 | install 50mm diameter high-density polyethylene (HDPE) pipe including the require pipe fittings for connection, | 2026-10-19 → 2026-10-25 (+6d) | 2026-10-28 → 2026-11-03 (+6d) |  | -19.5d → -24.1d |
| 2 | **GUARD HOUSE 1** |  | 2026-10-31 → 2026-11-01 (+1d) |  |  |
| 1 | **SITE WORKS** |  | 2026-10-19 → 2026-10-26 (+7d) |  |  |
| 5 | **Guard Rooms & Gates (CONCRETE Works)** |  | 2026-10-19 → 2026-10-26 (+7d) |  |  |
| WAD.S.3410 | Tanks Raft | 2026-09-28 → 2026-10-06 (+8d) | 2026-10-03 → 2026-10-11 (+8d) |  | -15d → -20.25d |
| WAD.S.3940 | Tanks Walls | 2026-10-04 → 2026-10-12 (+8d) | 2026-10-08 → 2026-10-17 (+9d) |  | -15d → -20.25d |
| WAD.S.4850 | Tanks Slab | 2026-10-15 → 2026-10-21 (+6d) | 2026-10-19 → 2026-10-26 (+7d) |  | -12d → -17.25d |
| 6 | **THERMAL & MOISTURE PROTECTION** |  | 2026-10-04 → 2026-10-10 (+6d) |  |  |
| 1 | **THERMAL & MOISTURE PROTECTION - Foundation** |  | 2026-10-04 → 2026-10-10 (+6d) |  |  |
| WAD.S.3930 | install liquid applied waterproofing coating; single-component pitch modified polyurethane | 2026-09-29 → 2026-10-06 (+7d) | 2026-10-01 → 2026-10-07 (+6d) |  | 1.3d → -4d |
| WAD.S.4090 | install geotextile sheet | 2026-10-01 → 2026-10-08 (+7d) | 2026-10-04 → 2026-10-10 (+6d) |  | 1.3d → -4d |
| 7 | **ROOFING SYSTEM** | 2026-10-10 → 2026-10-15 (+5d) | 2026-10-21 → 2026-10-27 (+6d) |  |  |
| WAD.S.4180 | install liquid applied waterproofing coating single-component pitch modified polyurethane based elastomeric | 2026-10-10 → 2026-10-15 (+5d) | 2026-10-21 → 2026-10-27 (+6d) |  | -17.5d → -22.5d |
| WAD.S.4190 | install 4mm thick APP modified bituminous membrane - single layer | 2026-10-10 → 2026-10-15 (+5d) | 2026-10-21 → 2026-10-27 (+6d) |  | -17.5d → -22.5d |
| WAD.S.4200 | install 75mm thick rigid insulation (extruded polystyrene) | 2026-10-10 → 2026-10-15 (+5d) | 2026-10-21 → 2026-10-27 (+6d) |  | -17.5d → -22.5d |
| WAD.S.4210 | cast in place foam concrete screed, 50mm thick minimum; laid to fall and cross fall | 2026-10-10 → 2026-10-15 (+5d) | 2026-10-21 → 2026-10-27 (+6d) |  | -17.5d → -22.5d |
| WAD.S.4220 | install 300 micron polyethylene sheet | 2026-10-10 → 2026-10-15 (+5d) | 2026-10-21 → 2026-10-27 (+6d) |  | -17.5d → -22.5d |
| WAD.S.4230 | install 50mm thick loose gravel toppings | 2026-10-10 → 2026-10-15 (+5d) | 2026-10-21 → 2026-10-27 (+6d) |  | -17.5d → -22.5d |
| WAD.S.4240 | install high density polyisocynurate cover board | 2026-10-10 → 2026-10-15 (+5d) | 2026-10-21 → 2026-10-27 (+6d) |  | -17.5d → -22.5d |
| WAD.S.4250 | install UV resistant geotextile sheet | 2026-10-10 → 2026-10-15 (+5d) | 2026-10-21 → 2026-10-27 (+6d) |  | -17.5d → -22.5d |
| WAD.S.4260 | fixing 3mm thick extruded aluminum flashing 40mm with sealant and all other accessories | 2026-10-10 → 2026-10-15 (+5d) | 2026-10-21 → 2026-10-27 (+6d) |  | -17.5d → -22.5d |
| WAD.S.4270 | install Terrazzo tiles | 2026-10-10 → 2026-10-15 (+5d) | 2026-10-21 → 2026-10-27 (+6d) |  | -17.5d → -22.5d |
| 2 | **THERMAL & MOISTURE PROTECTION - Tanks** | 2026-10-10 → 2026-10-15 (+5d) | 2026-10-21 → 2026-10-24 (+3d) |  |  |
| WAD.S.4280 | lay epoxy 2 coating for inner surfaces for bottom of the roof | 2026-10-10 → 2026-10-15 A (+5d) | 2026-10-21 → 2026-10-24 (+3d) | 0% → 35% | -17.5d → -22.5d |
| WAD.S.4710 | install water stop for tanks according to the drawings and specification | 2026-10-10 → 2026-10-15 A (+5d) | 2026-10-14 → 2026-10-21 (+7d) | 0% → 35% | -15d → -20.25d |
| 9 | **FINISHES** | 2026-09-28 → 2026-10-04 (+6d) | 2026-10-21 → 2026-10-28 (+7d) |  |  |
| WAD.S.3090 | install concrete plastering | 2026-09-28 → 2026-10-04 A (+6d) | 2026-10-01 → 2026-10-06 (+5d) | 0% → 90% | -17.5d → -22.5d |
| WAD.S.4940 | install ceramic floor tiles | 2026-10-15 → 2026-10-20 (+5d) | 2026-10-19 → 2026-10-24 (+5d) |  | -15.2d → -19.8d |
| WAD.S.4950 | install granite flooring | 2026-10-15 → 2026-10-20 (+5d) | 2026-10-18 → 2026-10-22 (+4d) |  | -15.2d → -19.8d |
| WAD.S.5040 | gypsum board suspended ceiling | 2026-10-15 → 2026-10-20 (+5d) | 2026-10-21 → 2026-10-26 (+5d) |  | -15.2d → -19.8d |
| WAD.S.5010 | install granite saddles and thresholds | 2026-10-15 → 2026-10-21 (+6d) | 2026-10-19 → 2026-10-25 (+6d) |  | -15.2d → -20.25d |
| WAD.S.5020 | install Riyadh stone cladding | 2026-10-15 → 2026-10-21 (+6d) | 2026-10-19 → 2026-10-25 (+6d) |  | -14.2d → -19.25d |
| WAD.S.5030 | install 3mm steel CNC laser cut panels | 2026-10-15 → 2026-10-21 (+6d) | 2026-10-19 → 2026-10-25 (+6d) |  | -14.2d → -19.25d |
| WAD.S.5060 | install aluminum cladding | 2026-10-17 → 2026-10-22 (+5d) | 2026-10-19 → 2026-10-25 (+6d) |  | -14.2d → -19.25d |
| WAD.S.5120 | install ceramic wall tiles | 2026-10-17 → 2026-10-25 (+8d) | 2026-10-20 → 2026-10-28 (+8d) |  | -12.8d → -19.8d |
| WAD.S.5530 | install two coats of acrylic paint on internal walls | 2026-10-18 → 2026-10-26 (+8d) | 2026-10-20 → 2026-10-28 (+8d) |  | -12.8d → -19.8d |
| WAD.S.5540 | install two coats of acrylic paint (suitable for exterior use) on external | 2026-10-18 → 2026-10-26 (+8d) | 2026-10-20 → 2026-10-28 (+8d) |  | -12.8d → -19.8d |
| 13 | **MECHANICAL WORKS** |  | 2026-10-26 → 2026-11-01 (+6d) |  |  |
| 1 | **MECHANICAL WORKS - 1st Fix** |  | 2026-10-05 → 2026-10-11 (+6d) |  |  |
| WAD.S.1660 | WATER SUPPLY SYSTEM - 1st Fix |  | 2026-10-05 → 2026-10-11 A (+6d) | 35% → 100% | -36d → none |
| WAD.S.1670 | SEWER AND DRAINAGE SYSTEM - 1st Fix |  | 2026-09-29 → 2026-10-05 A (+6d) | 80% → 100% | -36d → none |
| WAD.S.1680 | IRRIGATION SYSTEM - 1st Fix |  | 2026-10-05 → 2026-10-11 A (+6d) | 35% → 100% | -36d → none |
| WAD.S.1710 | HEATING, VENTILATION AND AIR CONDITIONING - 1st Fix |  | 2026-10-05 → 2026-10-11 A (+6d) | 35% → 100% | -36d → none |
| WAD.S.1720 | Exhaust fans - 1st Fix |  | 2026-10-05 → 2026-10-11 A (+6d) | 35% → 100% | -36d → none |

| ID | Task | Start | Finish | Complete | Total float |
| --- | --- | --- | --- | --- | --- |
| 2 | **MECHANICAL WORKS - Final Fix** | 2026-10-22 → 2026-10-24 (+2d) | 2026-10-26 → 2026-11-01 (+6d) |  |  |
| WAD.S.5130 | installation of Fire extinguishers as per drawings, specifications |  | 2026-10-26 → 2026-11-01 (+6d) |  | -17.5d → -22.5d |
| WAD.S.5140 | gully traps with heavy duty cover |  | 2026-10-26 → 2026-11-01 (+6d) |  | -17.5d → -22.5d |
| WAD.S.5150 | chamber with heavy duty cover |  | 2026-10-26 → 2026-11-01 (+6d) |  | -17.5d → -22.5d |
| WAD.S.5160 | INSTALL PLUMBING FIXTURES |  | 2026-10-26 → 2026-11-01 (+6d) |  | -17.5d → -22.5d |
| WAD.S.5910 | HEATING, VENTILATION AND AIR CONDITIONING - Final Fix | 2026-10-22 → 2026-10-28 (+6d) | 2026-10-26 → 2026-11-01 (+6d) |  | -17.5d → -22.5d |
| WAD.S.5920 | Exhaust fans - Final Fix | 2026-10-22 → 2026-10-28 (+6d) | 2026-10-26 → 2026-11-01 (+6d) |  | -17.5d → -22.5d |
| WAD.S.5930 | Bulbblers and Spreyers of IRRIGATION SYSTEM | 2026-10-22 → 2026-10-28 (+6d) | 2026-10-26 → 2026-11-01 (+6d) |  | -17.5d → -22.5d |
| WAD.S.5980 | WATER SUPPLY SYSTEM - Final Fix | 2026-10-22 → 2026-10-28 (+6d) | 2026-10-26 → 2026-11-01 (+6d) |  | -17.5d → -22.5d |
| WAD.S.5990 | IRRIGATION SYSTEM - Final Fix | 2026-10-22 → 2026-10-28 (+6d) | 2026-10-26 → 2026-11-01 (+6d) |  | -17.5d → -22.5d |
| 15 | **ELECTRICAL WORKS** |  | 2026-10-31 → 2026-11-01 (+1d) |  |  |
| 1 | **ELECTRICAL WORKS - 1st Fix** |  | 2026-10-03 → 2026-10-08 (+5d) |  |  |
| WAD.S.1770 | GROUNDING - 1st Fix |  | 2026-10-03 → 2026-10-08 A (+5d) | 50% → 100% | -2d → none |
| WAD.S.1740 | UNDERGROUND DISTRIBUTION SYSTEM - 1st Fix |  | 2026-10-03 → 2026-10-08 A (+5d) | 50% → 100% | -2d → none |
| WAD.S.1750 | LIGHTING FIXTURES - 1st Fix |  | 2026-10-03 → 2026-10-08 A (+5d) | 50% → 100% | -2d → none |
| WAD.S.1690 | LIGHTING AND POWER TYPE PANELBOARDS - 1st Fix |  | 2026-10-03 → 2026-10-08 A (+5d) | 50% → 100% | -2d → none |
| WAD.S.1700 | UPS 3KVA (installed inside the rack) - 1st Fix |  | 2026-10-03 → 2026-10-08 A (+5d) | 50% → 100% | -2d → none |
| WAD.S.1730 | power source with built-in photocell sensor for automatic electrical connection during day/light times - 1st Fix |  | 2026-10-03 → 2026-10-08 A (+5d) | 50% → 100% | -2d → none |
| WAD.S.1760 | installation of Wiring devices includes switches and Receptacle outlets complete with device boxes - 1st Fix |  | 2026-10-03 → 2026-10-08 A (+5d) | 50% → 100% | -2d → none |
| WAD.S.1780 | card reader IN/OUT - 1st Fix |  | 2026-10-03 → 2026-10-08 A (+5d) | 50% → 100% | -2d → none |
| WAD.S.1790 | CCTV cameras - 1st Fix |  | 2026-10-03 → 2026-10-08 A (+5d) | 50% → 100% | -2d → none |
| WAD.S.1800 | Access control panel - 1st Fix |  | 2026-10-03 → 2026-10-08 A (+5d) | 50% → 100% | -2d → none |
| WAD.S.1810 | fire alarm system including wires, conduit and other materials - 1st Fix |  | 2026-10-03 → 2026-10-08 A (+5d) | 50% → 100% | -2d → none |
| 2 | **ELECTRICAL WORKS - Final Fix** | 2026-10-22 → 2026-10-27 (+5d) | 2026-10-31 → 2026-11-01 (+1d) |  |  |
| WAD.S.5970 | 12-Port, SMF, Fiber Optic Patch Panels; | 2026-10-25 → 2026-10-27 (+2d) | 2026-10-29 → 2026-11-01 (+3d) |  | -20.2d → -22.5d |
| WAD.S.6190 | VIDEO SURVEILLANCE | 2026-10-26 → 2026-10-27 (+1d) | 2026-10-31 → 2026-11-01 (+1d) |  | -21.8d → -22.5d |
| WAD.S.6200 | CCTV storage system, as specified; | 2026-10-26 → 2026-10-27 (+1d) | 2026-10-31 → 2026-11-01 (+1d) |  | -21.8d → -22.5d |
| WAD.S.5940 | power source with built-in photocell sensor for automatic electrical connection during day/light times - Final Fix | 2026-10-22 → 2026-10-28 (+6d) | 2026-10-26 → 2026-11-01 (+6d) |  | -17.5d → -22.5d |
| WAD.S.5950 | LIGHTING FIXTURES - Final Fix | 2026-10-24 → 2026-10-28 (+4d) | 2026-10-27 → 2026-11-01 (+5d) |  | -18.8d → -22.5d |
| WAD.S.5960 | GROUNDING - Final Fix | 2026-10-24 → 2026-10-28 (+4d) | 2026-10-27 → 2026-11-01 (+5d) |  | -18.8d → -22.5d |
| WAD.S.6160 | card reader IN/OUT - Final Fix | 2026-10-26 → 2026-10-28 (+2d) | 2026-10-29 → 2026-11-01 (+3d) |  | -20.2d → -22.5d |
| WAD.S.6170 | 12-Port CAT6A UTP fully loaded patch panel | 2026-10-26 → 2026-10-28 (+2d) | 2026-10-29 → 2026-11-01 (+3d) |  | -20.2d → -22.5d |
| WAD.S.6180 | COMPUTERS AND RELATED PERIPHERALS | 2026-10-26 → 2026-10-28 (+2d) | 2026-10-29 → 2026-11-01 (+3d) |  | -20.2d → -22.5d |
| WAD.S.6280 | Central (Headend) System Components; | 2026-10-27 → 2026-10-28 (+1d) | 2026-10-31 → 2026-11-01 (+1d) |  | -21.8d → -22.5d |
| WAD.S.6290 | VSS System, as specified; | 2026-10-27 → 2026-10-28 (+1d) | 2026-10-31 → 2026-11-01 (+1d) |  | -21.8d → -22.5d |
| WAD.S.6300 | CCTV cameras - Final Fix | 2026-10-27 → 2026-10-28 (+1d) | 2026-10-31 → 2026-11-01 (+1d) |  | -21.8d → -22.5d |
| WAD.S.6310 | ELECTRICAL GATE BARRIER | 2026-10-27 → 2026-10-28 (+1d) | 2026-10-31 → 2026-11-01 (+1d) |  | -21.8d → -22.5d |
| WAD.S.6320 | fire alarm system including wires, conduit and other materials - Final Fix | 2026-10-27 → 2026-10-28 (+1d) | 2026-10-31 → 2026-11-01 (+1d) |  | -21.8d → -22.5d |
| WAD.S.6330 | Analog addressable fire alarm control panel with battery | 2026-10-27 → 2026-10-28 (+1d) | 2026-10-31 → 2026-11-01 (+1d) |  | -21.8d → -22.5d |
| WAD.S.6340 | LIGHTING AND POWER TYPE PANELBOARDS - Final Fix | 2026-10-27 → 2026-10-28 (+1d) | 2026-10-31 → 2026-11-01 (+1d) |  | -21.8d → -22.5d |
| WAD.S.6140 | UNDERGROUND DISTRIBUTION SYSTEM - Final Fix | 2026-10-24 → 2026-10-29 (+5d) | 2026-10-26 → 2026-11-01 (+6d) |  | -17.5d → -22.5d |
| WAD.S.6150 | installation of Wiring devices includes switches and Receptacle outlets complete with device boxes - Final Fix | 2026-10-25 → 2026-10-29 (+4d) | 2026-10-27 → 2026-11-01 (+5d) |  | -18.8d → -22.5d |
| WAD.S.6270 | Access control panel - Final Fix | 2026-10-27 → 2026-10-29 (+2d) | 2026-10-29 → 2026-11-01 (+3d) |  | -20.2d → -22.5d |
| WAD.S.6420 | 20A , ATS ( Automatic transfer switch) for UPS | 2026-10-28 → 2026-10-29 (+1d) | 2026-10-31 → 2026-11-01 (+1d) |  | -21.8d → -22.5d |
| WAD.S.6430 | LIGHTNING PROTECTION | 2026-10-28 → 2026-10-29 (+1d) | 2026-10-31 → 2026-11-01 (+1d) |  | -21.8d → -22.5d |
| WAD.S.6440 | Intelligent Ionization / Photoelectric smoke and heat detector with base | 2026-10-28 → 2026-10-29 (+1d) | 2026-10-31 → 2026-11-01 (+1d) |  | -21.8d → -22.5d |
| 4 | **METALS** | 2026-10-21 → 2026-10-26 (+5d) | 2026-10-24 → 2026-10-28 (+4d) |  |  |
| WAD.S.5500 | folding & sliding mounter combination ladder for building maintenance purpose | 2026-10-21 → 2026-10-26 (+5d) | 2026-10-24 → 2026-10-28 (+4d) |  | -15.2d → -19.8d |
| WAD.S.5510 | install of overflow galvanized steel roof scupper with gray color with angular secondary support | 2026-10-21 → 2026-10-26 (+5d) | 2026-10-24 → 2026-10-28 (+4d) |  | -15.2d → -19.8d |
| WAD.S.5520 | install heavy steel cover with frame including all necessary fixings | 2026-10-21 → 2026-10-26 (+5d) | 2026-10-24 → 2026-10-28 (+4d) |  | -15.2d → -19.8d |
| 5 | **WOODS AND PLASTICS** | 2026-10-20 → 2026-10-26 (+6d) | 2026-10-24 → 2026-10-29 (+5d) |  |  |
| WAD.S.5890 | COUNTER DESK | 2026-10-20 → 2026-10-26 (+6d) | 2026-10-24 → 2026-10-29 (+5d) |  | -15.2d → -20.8d |
| WAD.S.5880 | PANTRY CABINET | 2026-10-21 → 2026-10-27 (+6d) | 2026-10-24 → 2026-10-29 (+5d) |  | -15.2d → -20.3d |
| 8 | **DOORS & WINDOWS** | 2026-10-19 → 2026-10-25 (+6d) | 2026-10-26 → 2026-10-29 (+3d) |  |  |
| WAD.S.5050 | install hollow metal door | 2026-10-19 → 2026-10-25 (+6d) | 2026-10-24 → 2026-10-29 (+5d) |  | -15.2d → -20.25d |
| WAD.S.6120 | Install aluminum framed double glazed windows | 2026-10-22 → 2026-10-25 (+3d) | 2026-10-26 → 2026-10-28 (+2d) |  | -17.2d → -19.25d |
| WAD.S.5900 | Install Aluminum Door | 2026-10-20 → 2026-10-26 (+6d) | 2026-10-24 → 2026-10-29 (+5d) |  | -15.2d → -20.8d |
| 10 | **SPECIALTIES** | 2026-10-22 → 2026-10-28 (+6d) | 2026-10-31 → 2026-11-01 (+1d) |  |  |
| WAD.S.6130 | TOILET ACCESSROIES | 2026-10-22 → 2026-10-28 (+6d) | 2026-10-25 → 2026-10-31 (+6d) |  | -16.5d → -21.5d |
| WAD.S.6410 | PANEL SIGNAGE | 2026-10-28 → 2026-10-29 (+1d) | 2026-10-31 → 2026-11-01 (+1d) |  | -21.8d → -22.5d |
| 11 | **FURNISHINGS** | 2026-10-29 → 2026-10-31 (+2d) | 2026-10-31 → 2026-11-01 (+1d) |  |  |
| WAD.S.6450 | Workstation chair | 2026-10-29 → 2026-10-31 (+2d) | 2026-10-31 → 2026-11-01 (+1d) |  | -21.8d → -22.5d |
| WAD.S.6460 | Workstation table | 2026-10-29 → 2026-10-31 (+2d) | 2026-10-31 → 2026-11-01 (+1d) |  | -21.8d → -22.5d |
| WAD.S.6470 | Roller blind | 2026-10-29 → 2026-10-31 (+2d) | 2026-10-31 → 2026-11-01 (+1d) |  | -21.8d → -22.5d |
| WAD.S.6480 | Waste Receptacle | 2026-10-29 → 2026-10-31 (+2d) | 2026-10-31 → 2026-11-01 (+1d) |  | -21.8d → -22.5d |
| 1 | **SITE WORKS** |  | 2026-10-27 → 2026-10-26 (-1d) |  |  |
| 4 | **Guard Rooms & Gates** |  | 2026-09-29 → 2026-10-05 (+6d) |  |  |
| WAD.S.2300 | Backfilling Under S.O.G | 2026-09-28 → 2026-10-04 A (+6d) | 2026-09-29 → 2026-10-05 A (+6d) | 0% → 100% | -19.5d → none |
| 5 | **Guard Rooms & Gates (CONCRETE Works)** |  | 2026-10-27 → 2026-10-26 (-1d) |  |  |
| WAD.S.3440 | Provide and cast concrete floor slab on grade |  | 2026-10-07 → 2026-10-13 A (+6d) | 50% → 100% | -24d → none |

| ID | Task | Start | Finish | Complete | Total float |
| --- | --- | --- | --- | --- | --- |
| WAD.S.3460 | Tanks Raft | 2026-10-05 → 2026-10-06 (+1d) |  |  | -26.5d → -25.25d |
| WAD.S.3980 | Tanks Walls | 2026-10-11 → 2026-10-12 (+1d) |  |  | -26.5d → -25.25d |
| WAD.S.4890 | Tanks Slab | 2026-10-22 → 2026-10-21 (-1d) | 2026-10-27 → 2026-10-26 (-1d) |  | -18.5d → -17.25d |
| WAD.S.2930 | install Concrete Masonry Unit (CMU) for walls |  |  | 50% → 80% | -34d → -33.6d |
| 7 | **ROOFING SYSTEM** | 2026-10-17 → 2026-10-18 (+1d) |  |  |  |
| WAD.S.4290 | install liquid applied waterproofing coating single-component pitch modified polyurethane based elastomeric | 2026-10-19 → 2026-10-18 (-1d) |  |  | -34d → -33.6d |
| WAD.S.4300 | install 4mm thick APP modified bituminous membrane - single layer | 2026-10-19 → 2026-10-18 (-1d) |  |  | -34d → -33.6d |
| WAD.S.4310 | install 75mm thick rigid insulation (extruded polystyrene) | 2026-10-19 → 2026-10-18 (-1d) |  |  | -34d → -33.6d |
| WAD.S.4320 | cast in place foam concrete screed, 50mm thick minimum; laid to fall and cross fall | 2026-10-19 → 2026-10-18 (-1d) |  |  | -34d → -33.6d |
| WAD.S.4330 | install 300 micron polyethylene sheet | 2026-10-19 → 2026-10-18 (-1d) |  |  | -34d → -33.6d |
| WAD.S.4340 | install 50mm thick loose gravel toppings | 2026-10-19 → 2026-10-18 (-1d) |  |  | -34d → -33.6d |
| WAD.S.4350 | install high density polyisocynurate cover board | 2026-10-19 → 2026-10-18 (-1d) |  |  | -34d → -33.6d |
| WAD.S.4360 | install UV resistant geotextile sheet | 2026-10-19 → 2026-10-18 (-1d) |  |  | -34d → -33.6d |
| WAD.S.4370 | fixing 3mm thick extruded aluminum flashing 40mm with sealant and all other accessories | 2026-10-19 → 2026-10-18 (-1d) |  |  | -34d → -33.6d |
| WAD.S.4380 | install Terrazzo tiles | 2026-10-19 → 2026-10-18 (-1d) |  |  | -34d → -33.6d |
| 2 | **THERMAL & MOISTURE PROTECTION - Tanks** | 2026-10-17 → 2026-10-18 (+1d) |  |  |  |
| WAD.S.4390 | lay epoxy 2 coating for inner surfaces for bottom of the roof | 2026-10-19 → 2026-10-18 (-1d) |  |  | -34d → -33.6d |
| WAD.S.4740 | install water stop for tanks according to the drawings and specification | 2026-10-17 → 2026-10-22 A (+5d) | 2026-10-22 → 2026-10-21 (-1d) | 0% → 35% | -26.5d → -25.25d |
| 9 | **FINISHES** | 2026-10-05 → 2026-10-06 (+1d) | 2026-10-26 → 2026-10-25 (-1d) |  |  |
| WAD.S.2240 | gypsum board suspended ceiling | 2026-10-05 → 2026-10-06 (+1d) |  |  | -11.5d → -12d |
| WAD.S.3100 | install concrete plastering | 2026-10-07 → 2026-10-13 A (+6d) | 2026-10-11 → 2026-10-10 (-1d) | 0% → 20% | -34d → -33.6d |
| WAD.S.2370 | install ceramic floor tiles | 2026-10-06 → 2026-10-14 (+8d) | 2026-10-08 → 2026-10-17 (+9d) |  | -3d → -10d |
| WAD.S.2380 | install granite flooring | 2026-10-06 → 2026-10-14 (+8d) | 2026-10-07 → 2026-10-15 (+8d) |  | -3d → -10d |
| WAD.S.2390 | install ceramic wall tiles | 2026-10-06 → 2026-10-14 (+8d) | 2026-10-08 → 2026-10-17 (+9d) |  | -3d → -10d |
| WAD.S.2520 | install two coats of acrylic paint on internal walls | 2026-10-07 → 2026-10-15 (+8d) | 2026-10-08 → 2026-10-17 (+9d) |  | -3d → -10d |
| WAD.S.2530 | install two coats of acrylic paint (suitable for exterior use) on external | 2026-10-07 → 2026-10-15 (+8d) | 2026-10-08 → 2026-10-17 (+9d) |  | -3d → -10d |
| WAD.S.4860 | install granite saddles and thresholds | 2026-10-22 → 2026-10-21 (-1d) | 2026-10-26 → 2026-10-25 (-1d) |  | -26.5d → -25.25d |
| WAD.S.4870 | install Riyadh stone cladding | 2026-10-22 → 2026-10-21 (-1d) | 2026-10-26 → 2026-10-25 (-1d) |  | -26.5d → -25.25d |
| WAD.S.4880 | install 3mm steel CNC laser cut panels | 2026-10-22 → 2026-10-21 (-1d) | 2026-10-26 → 2026-10-25 (-1d) |  | -26.5d → -25.25d |
| WAD.S.4960 | install aluminum cladding | 2026-10-24 → 2026-10-22 (-2d) | 2026-10-26 → 2026-10-25 (-1d) |  | -26.5d → -25.25d |
| 13 | **MECHANICAL WORKS** | 2026-09-28 → 2026-10-04 (+6d) |  |  |  |
| 1 | **MECHANICAL WORKS - 1st Fix** | 2026-09-28 → 2026-10-04 (+6d) | 2026-10-08 → 2026-10-15 (+7d) |  |  |
| WAD.S.1830 | WATER SUPPLY SYSTEM - 1st Fix | 2026-09-28 → 2026-10-04 A (+6d) | 2026-10-08 → 2026-10-15 (+7d) | 0% → 15% | -12d → -19d |
| WAD.S.1840 | SEWER AND DRAINAGE SYSTEM - 1st Fix | 2026-09-28 → 2026-10-04 A (+6d) | 2026-10-08 → 2026-10-15 (+7d) | 0% → 15% | -12d → -19d |
| WAD.S.1850 | IRRIGATION SYSTEM - 1st Fix | 2026-09-28 → 2026-10-04 A (+6d) | 2026-10-08 → 2026-10-15 (+7d) | 0% → 15% | -12d → -19d |
| WAD.S.1880 | HEATING, VENTILATION AND AIR CONDITIONING - 1st Fix | 2026-09-28 → 2026-10-04 A (+6d) | 2026-10-08 → 2026-10-15 (+7d) | 0% → 15% | -12d → -19d |
| WAD.S.1890 | Exhaust fans - 1st Fix | 2026-09-28 → 2026-10-04 A (+6d) | 2026-10-08 → 2026-10-15 (+7d) | 0% → 15% | -12d → -19d |
| 2 | **MECHANICAL WORKS - Final Fix** | 2026-11-04 → 2026-11-03 (-1d) |  |  |  |
| WAD.S.5560 | installation of Fire extinguishers as per drawings, specifications | 2026-11-04 → 2026-11-03 (-1d) |  |  | -34d → -33.6d |
| WAD.S.5570 | gully traps with heavy duty cover | 2026-11-04 → 2026-11-03 (-1d) |  |  | -34d → -33.6d |
| WAD.S.5580 | chamber with heavy duty cover | 2026-11-04 → 2026-11-03 (-1d) |  |  | -34d → -33.6d |
| WAD.S.5590 | INSTALL PLUMBING FIXTURES | 2026-11-04 → 2026-11-03 (-1d) |  |  | -34d → -33.6d |
| WAD.S.5600 | HEATING, VENTILATION AND AIR CONDITIONING - Final Fix | 2026-11-04 → 2026-11-03 (-1d) |  |  | -34d → -33.6d |
| WAD.S.5610 | Exhaust fans - Final Fix | 2026-11-04 → 2026-11-03 (-1d) |  |  | -34d → -33.6d |
| WAD.S.5620 | Bulbblers and Spreyers of IRRIGATION SYSTEM | 2026-11-04 → 2026-11-03 (-1d) |  |  | -34d → -33.6d |
| WAD.S.5750 | WATER SUPPLY SYSTEM - Final Fix | 2026-11-04 → 2026-11-03 (-1d) |  |  | -34d → -33.6d |
| WAD.S.5760 | IRRIGATION SYSTEM - Final Fix | 2026-11-04 → 2026-11-03 (-1d) |  |  | -28d → -27.6d |
| 15 | **ELECTRICAL WORKS** | 2026-09-28 → 2026-10-06 (+8d) |  |  |  |
| 1 | **ELECTRICAL WORKS - 1st Fix** | 2026-09-28 → 2026-10-06 (+8d) | 2026-10-08 → 2026-10-17 (+9d) |  |  |
| WAD.S.1860 | LIGHTING AND POWER TYPE PANELBOARDS - 1st Fix | 2026-09-28 → 2026-10-06 (+8d) | 2026-10-08 → 2026-10-17 (+9d) |  | -12d → -19d |
| WAD.S.1870 | UPS 3KVA (installed inside the rack) - 1st Fix | 2026-09-28 → 2026-10-06 (+8d) | 2026-10-08 → 2026-10-17 (+9d) |  | -12d → -19d |
| WAD.S.1900 | power source with built-in photocell sensor for automatic electrical connection during day/light times - 1st Fix | 2026-09-28 → 2026-10-06 (+8d) | 2026-10-08 → 2026-10-17 (+9d) |  | -12d → -19d |
| WAD.S.1910 | UNDERGROUND DISTRIBUTION SYSTEM - 1st Fix | 2026-09-28 → 2026-10-06 (+8d) | 2026-10-08 → 2026-10-17 (+9d) |  | -12d → -19d |
| WAD.S.1920 | LIGHTING FIXTURES - 1st Fix | 2026-09-28 → 2026-10-06 (+8d) | 2026-10-08 → 2026-10-17 (+9d) |  | -12d → -19d |
| WAD.S.1930 | installation of Wiring devices includes switches and Receptacle outlets complete with device boxes - 1st Fix | 2026-09-28 → 2026-10-06 (+8d) | 2026-10-08 → 2026-10-17 (+9d) |  | -12d → -19d |
| WAD.S.1940 | GROUNDING - 1st Fix | 2026-09-28 → 2026-10-06 (+8d) | 2026-10-08 → 2026-10-17 (+9d) |  | -12d → -19d |
| WAD.S.1950 | card reader IN/OUT - 1st Fix | 2026-09-28 → 2026-10-06 (+8d) | 2026-10-08 → 2026-10-17 (+9d) |  | -12d → -19d |
| WAD.S.1960 | CCTV cameras - 1st Fix | 2026-09-28 → 2026-10-06 (+8d) | 2026-10-08 → 2026-10-17 (+9d) |  | -12d → -19d |
| WAD.S.1970 | Access control panel - 1st Fix | 2026-09-28 → 2026-10-06 (+8d) | 2026-10-08 → 2026-10-17 (+9d) |  | -12d → -19d |
| WAD.S.1980 | fire alarm system including wires, conduit and other materials - 1st Fix | 2026-09-28 → 2026-10-06 (+8d) | 2026-10-08 → 2026-10-17 (+9d) |  | -12d → -19d |
| 2 | **ELECTRICAL WORKS - Final Fix** | 2026-11-03 → 2026-11-02 (-1d) |  |  |  |
| WAD.S.5170 | 12-Port, SMF, Fiber Optic Patch Panels; | 2026-11-03 → 2026-11-02 (-1d) |  |  | -34d → -33.6d |
| WAD.S.5180 | VIDEO SURVEILLANCE | 2026-11-03 → 2026-11-02 (-1d) |  |  | -34d → -33.6d |
| WAD.S.5190 | CCTV storage system, as specified; | 2026-11-03 → 2026-11-02 (-1d) |  |  | -34d → -33.6d |
| WAD.S.5630 | power source with built-in photocell sensor for automatic electrical connection during day/light times - Final Fix | 2026-11-04 → 2026-11-03 (-1d) |  |  | -34d → -33.6d |
| WAD.S.5640 | LIGHTING FIXTURES - Final Fix | 2026-11-04 → 2026-11-03 (-1d) |  |  | -34d → -33.6d |
| WAD.S.5650 | GROUNDING - Final Fix | 2026-11-04 → 2026-11-03 (-1d) |  |  | -34d → -33.6d |
| WAD.S.5660 | card reader IN/OUT - Final Fix | 2026-11-04 → 2026-11-03 (-1d) |  |  | -34d → -33.6d |
| WAD.S.5670 | 12-Port CAT6A UTP fully loaded patch panel | 2026-11-04 → 2026-11-03 (-1d) |  |  | -34d → -33.6d |
| WAD.S.5680 | COMPUTERS AND RELATED PERIPHERALS | 2026-11-04 → 2026-11-03 (-1d) |  |  | -34d → -33.6d |

| ID | Task | Start | Finish | Complete | Total float |
| --- | --- | --- | --- | --- | --- |
| WAD.S.5690 | Central (Headend) System Components; | 2026-11-04 → 2026-11-03 (-1d) |  |  | -34d → -33.6d |
| WAD.S.5700 | VSS System, as specified; | 2026-11-04 → 2026-11-03 (-1d) |  |  | -34d → -33.6d |
| WAD.S.5710 | CCTV cameras - Final Fix | 2026-11-04 → 2026-11-03 (-1d) |  |  | -34d → -33.6d |
| WAD.S.5720 | ELECTRICAL GATE BARRIER | 2026-11-04 → 2026-11-03 (-1d) |  |  | -34d → -33.6d |
| WAD.S.5730 | fire alarm system including wires, conduit and other materials - Final Fix | 2026-11-04 → 2026-11-03 (-1d) |  |  | -34d → -33.6d |
| WAD.S.5740 | Analog addressable fire alarm control panel with battery | 2026-11-04 → 2026-11-03 (-1d) |  |  | -34d → -33.6d |
| WAD.S.5770 | LIGHTING AND POWER TYPE PANELBOARDS - Final Fix | 2026-11-04 → 2026-11-03 (-1d) |  |  | -28d → -27.6d |
| WAD.S.6010 | UNDERGROUND DISTRIBUTION SYSTEM - Final Fix | 2026-11-05 → 2026-11-04 (-1d) |  |  | -34d → -33.6d |
| WAD.S.6020 | installation of Wiring devices includes switches and Receptacle outlets complete with device boxes - Final Fix | 2026-11-05 → 2026-11-04 (-1d) |  |  | -34d → -33.6d |
| WAD.S.6030 | Access control panel - Final Fix | 2026-11-05 → 2026-11-04 (-1d) |  |  | -34d → -33.6d |
| WAD.S.6040 | 20A , ATS ( Automatic transfer switch) for UPS | 2026-11-05 → 2026-11-04 (-1d) |  |  | -34d → -33.6d |
| WAD.S.6050 | LIGHTNING PROTECTION | 2026-11-05 → 2026-11-04 (-1d) |  |  | -34d → -33.6d |
| WAD.S.6060 | Intelligent Ionization / Photoelectric smoke and heat detector with base | 2026-11-05 → 2026-11-04 (-1d) |  |  | -34d → -33.6d |
| 4 | **METALS** | 2026-10-10 → 2026-10-11 (+1d) |  |  |  |
| WAD.S.2480 | folding & sliding mounter combination ladder for building maintenance purpose | 2026-10-10 → 2026-10-11 (+1d) |  |  | -11.5d → -12d |
| WAD.S.2490 | install of overflow galvanized steel roof scupper with gray color with angular secondary support | 2026-10-10 → 2026-10-11 (+1d) |  |  | -11.5d → -12d |
| WAD.S.2500 | install heavy steel cover with frame including all necessary fixings | 2026-10-10 → 2026-10-11 (+1d) |  |  | -11.5d → -12d |
| 5 | **WOODS AND PLASTICS** | 2026-10-08 → 2026-10-10 (+2d) |  |  |  |
| WAD.S.2350 | COUNTER DESK | 2026-10-08 → 2026-10-10 (+2d) |  |  | -11.5d → -12d |
| WAD.S.2510 | PANTRY CABINET | 2026-10-10 → 2026-10-11 (+1d) |  |  | -11.5d → -12d |
| 8 | **DOORS & WINDOWS** | 2026-10-08 → 2026-10-10 (+2d) |  |  |  |
| WAD.S.2360 | Install Aluminum Door | 2026-10-08 → 2026-10-10 (+2d) |  |  | -11.5d → -12d |
| WAD.S.2200 | install hollow metal door | 2026-10-10 → 2026-10-11 (+1d) |  |  | -10.5d → -11d |
| WAD.S.2210 | Install aluminum framed double glazed windows | 2026-10-10 → 2026-10-11 (+1d) |  |  | -10.5d → -11d |
| 10 | **SPECIALTIES** | 2026-11-04 → 2026-11-03 (-1d) |  |  |  |
| WAD.S.5550 | TOILET ACCESSROIES | 2026-11-04 → 2026-11-03 (-1d) |  |  | -33d → -32.6d |
| WAD.S.6000 | PANEL SIGNAGE | 2026-11-05 → 2026-11-04 (-1d) |  |  | -34d → -33.6d |
| 11 | **FURNISHINGS** | 2026-11-07 → 2026-11-05 (-2d) |  |  |  |
| WAD.S.6210 | Workstation chair | 2026-11-07 → 2026-11-05 (-2d) |  |  | -34d → -33.6d |
| WAD.S.6220 | Workstation table | 2026-11-07 → 2026-11-05 (-2d) |  |  | -34d → -33.6d |
| WAD.S.6230 | Roller blind | 2026-11-07 → 2026-11-05 (-2d) |  |  | -34d → -33.6d |
| WAD.S.6240 | Waste Receptacle | 2026-11-07 → 2026-11-05 (-2d) |  |  | -34d → -33.6d |
| 1 | **SITE WORKS** |  | 2026-10-27 → 2026-10-26 (-1d) |  |  |
| 5 | **Guard Rooms & Gates (CONCRETE Works)** |  | 2026-10-27 → 2026-10-26 (-1d) |  |  |
| WAD.S.7520 | Tanks Raft | 2026-10-05 → 2026-10-06 (+1d) |  |  | -26.5d → -25.25d |
| WAD.S.7530 | Tanks Walls | 2026-10-11 → 2026-10-12 (+1d) |  |  | -26.5d → -25.25d |
| WAD.S.7540 | Tanks Slab | 2026-10-22 → 2026-10-21 (-1d) | 2026-10-27 → 2026-10-26 (-1d) |  | -18.5d → -17.25d |
| 6 | **THERMAL & MOISTURE PROTECTION** |  | 2026-10-04 → 2026-10-10 (+6d) |  |  |
| 1 | **THERMAL & MOISTURE PROTECTION - Foundation** |  | 2026-10-04 → 2026-10-10 (+6d) |  |  |
| WAD.S.6580 | install liquid applied waterproofing coating; single-component pitch modified polyurethane | 2026-09-29 → 2026-10-06 (+7d) | 2026-10-01 → 2026-10-07 (+6d) |  | 1.9d → -4d |
| WAD.S.6590 | install geotextile sheet | 2026-10-01 → 2026-10-08 (+7d) | 2026-10-04 → 2026-10-10 (+6d) |  | 1.9d → -4d |
| 7 | **ROOFING SYSTEM** | 2026-10-17 → 2026-10-18 (+1d) |  |  |  |
| WAD.S.6570 | install liquid applied waterproofing coating single-component pitch modified polyurethane based elastomeric | 2026-10-17 → 2026-10-18 (+1d) |  |  | -32.5d → -33d |
| WAD.S.6610 | install 4mm thick APP modified bituminous membrane - single layer | 2026-10-17 → 2026-10-18 (+1d) |  |  | -32.5d → -33d |
| WAD.S.6620 | install 75mm thick rigid insulation (extruded polystyrene) | 2026-10-17 → 2026-10-18 (+1d) |  |  | -32.5d → -33d |
| WAD.S.6630 | cast in place foam concrete screed, 50mm thick minimum; laid to fall and cross fall | 2026-10-17 → 2026-10-18 (+1d) |  |  | -32.5d → -33d |
| WAD.S.6640 | install 300 micron polyethylene sheet | 2026-10-17 → 2026-10-18 (+1d) |  |  | -32.5d → -33d |
| WAD.S.6650 | install 50mm thick loose gravel toppings | 2026-10-17 → 2026-10-18 (+1d) |  |  | -32.5d → -33d |
| WAD.S.6660 | install high density polyisocynurate cover board | 2026-10-17 → 2026-10-18 (+1d) |  |  | -32.5d → -33d |
| WAD.S.6670 | install UV resistant geotextile sheet | 2026-10-17 → 2026-10-18 (+1d) |  |  | -32.5d → -33d |
| WAD.S.6680 | fixing 3mm thick extruded aluminum flashing 40mm with sealant and all other accessories | 2026-10-17 → 2026-10-18 (+1d) |  |  | -32.5d → -33d |
| WAD.S.6690 | install Terrazzo tiles | 2026-10-17 → 2026-10-18 (+1d) |  |  | -32.5d → -33d |
| 2 | **THERMAL & MOISTURE PROTECTION - Tanks** | 2026-10-17 → 2026-10-22 (+5d) | 2026-10-29 → 2026-10-26 (-3d) |  |  |
| WAD.S.6600 | install water stop for tanks according to the drawings and specification | 2026-10-17 → 2026-10-22 A (+5d) | 2026-10-22 → 2026-10-21 (-1d) | 0% → 35% | -26.5d → -25.25d |
| WAD.S.7370 | lay epoxy 2 coating for inner surfaces for bottom of the roof | 2026-10-17 → 2026-10-22 A (+5d) | 2026-10-29 → 2026-10-26 (-3d) | 0% → 35% | -32.5d → -33d |
| 9 | **FINISHES** | 2026-09-30 → 2026-10-06 (+6d) | 2026-10-26 → 2026-10-25 (-1d) |  |  |
| WAD.S.6730 | install ceramic floor tiles | 2026-09-30 → 2026-10-06 (+6d) | 2026-10-03 → 2026-10-08 (+5d) |  | -44d → -49d |
| WAD.S.6740 | install granite flooring | 2026-09-30 → 2026-10-06 (+6d) | 2026-10-01 → 2026-10-07 (+6d) |  | -44d → -49d |
| WAD.S.6770 | install ceramic wall tiles | 2026-09-30 → 2026-10-06 (+6d) | 2026-10-03 → 2026-10-08 (+5d) |  | -44d → -49d |
| WAD.S.6830 | gypsum board suspended ceiling | 2026-10-05 → 2026-10-06 (+1d) |  |  | -14.5d → -15d |
| WAD.S.6780 | install two coats of acrylic paint on internal walls | 2026-10-01 → 2026-10-07 (+6d) | 2026-10-03 → 2026-10-08 (+5d) |  | -44d → -49d |
| WAD.S.6790 | install two coats of acrylic paint (suitable for exterior use) on external | 2026-10-01 → 2026-10-07 (+6d) | 2026-10-03 → 2026-10-08 (+5d) |  | -44d → -49d |
| WAD.S.6760 | install concrete plastering | 2026-10-05 → 2026-10-11 A (+6d) | 2026-10-10 → 2026-10-06 (-4d) | 0% → 90% | -32.5d → -33d |
| WAD.S.6750 | install granite saddles and thresholds | 2026-10-22 → 2026-10-21 (-1d) | 2026-10-26 → 2026-10-25 (-1d) |  | -26.5d → -25.25d |
| WAD.S.6800 | install Riyadh stone cladding | 2026-10-22 → 2026-10-21 (-1d) | 2026-10-26 → 2026-10-25 (-1d) |  | -26.5d → -25.25d |
| WAD.S.6820 | install 3mm steel CNC laser cut panels | 2026-10-22 → 2026-10-21 (-1d) | 2026-10-26 → 2026-10-25 (-1d) |  | -26.5d → -25.25d |
| WAD.S.6810 | install aluminum cladding | 2026-10-24 → 2026-10-22 (-2d) | 2026-10-26 → 2026-10-25 (-1d) |  | -26.5d → -25.25d |
| 1 | **MECHANICAL WORKS - 1st Fix** |  | 2026-10-04 → 2026-10-10 (+6d) |  |  |
| WAD.S.6910 | WATER SUPPLY SYSTEM - 1st Fix |  | 2026-10-04 → 2026-10-10 A (+6d) | 45% → 100% | -44d → none |
| WAD.S.6920 | SEWER AND DRAINAGE SYSTEM - 1st Fix |  | 2026-09-29 → 2026-10-05 A (+6d) | 80% → 100% | -44d → none |

| ID | Task | Start | Finish | Complete | Total float |
| --- | --- | --- | --- | --- | --- |
| WAD.S.6980 | IRRIGATION SYSTEM - 1st Fix |  | 2026-10-04 → 2026-10-10 A (+6d) | 45% → 100% | -44d → none |
| WAD.S.7260 | HEATING, VENTILATION AND AIR CONDITIONING - 1st Fix |  | 2026-10-04 → 2026-10-10 A (+6d) | 45% → 100% | -44d → none |
| WAD.S.7270 | Exhaust fans - 1st Fix |  | 2026-10-04 → 2026-10-10 A (+6d) | 45% → 100% | -44d → none |
| 2 | **MECHANICAL WORKS - Final Fix** | 2026-11-02 → 2026-11-03 (+1d) |  |  |  |
| WAD.S.6900 | installation of Fire extinguishers as per drawings, specifications | 2026-11-02 → 2026-11-03 (+1d) |  |  | -32.5d → -33d |
| WAD.S.6930 | gully traps with heavy duty cover | 2026-11-02 → 2026-11-03 (+1d) |  |  | -32.5d → -33d |
| WAD.S.6940 | chamber with heavy duty cover | 2026-11-02 → 2026-11-03 (+1d) |  |  | -32.5d → -33d |
| WAD.S.6950 | INSTALL PLUMBING FIXTURES | 2026-11-02 → 2026-11-03 (+1d) |  |  | -32.5d → -33d |
| WAD.S.6960 | HEATING, VENTILATION AND AIR CONDITIONING - Final Fix | 2026-11-02 → 2026-11-03 (+1d) |  |  | -32.5d → -33d |
| WAD.S.6970 | Exhaust fans - Final Fix | 2026-11-02 → 2026-11-03 (+1d) |  |  | -32.5d → -33d |
| WAD.S.6990 | Bulbblers and Spreyers of IRRIGATION SYSTEM | 2026-11-02 → 2026-11-03 (+1d) |  |  | -32.5d → -33d |
| WAD.S.7230 | WATER SUPPLY SYSTEM - Final Fix | 2026-11-02 → 2026-11-03 (+1d) |  |  | -32.5d → -33d |
| WAD.S.7240 | IRRIGATION SYSTEM - Final Fix | 2026-11-02 → 2026-11-03 (+1d) |  |  | -26.5d → -27d |
| 1 | **ELECTRICAL WORKS - 1st Fix** |  | 2026-10-03 → 2026-10-08 (+5d) |  |  |
| WAD.S.7320 | GROUNDING - 1st Fix |  | 2026-10-03 → 2026-10-08 A (+5d) | 50% → 100% | -44d → none |
| WAD.S.7290 | UNDERGROUND DISTRIBUTION SYSTEM - 1st Fix |  | 2026-10-03 → 2026-10-08 A (+5d) | 50% → 100% | -44d → none |
| WAD.S.7300 | LIGHTING FIXTURES - 1st Fix |  | 2026-10-03 → 2026-10-08 A (+5d) | 50% → 100% | -44d → none |
| WAD.S.7000 | LIGHTING AND POWER TYPE PANELBOARDS - 1st Fix |  | 2026-10-03 → 2026-10-08 A (+5d) | 50% → 100% | -44d → none |
| WAD.S.7010 | UPS 3KVA (installed inside the rack) - 1st Fix |  | 2026-10-03 → 2026-10-08 A (+5d) | 50% → 100% | -44d → none |
| WAD.S.7280 | power source with built-in photocell sensor for automatic electrical connection during day/light times - 1st Fix |  | 2026-10-03 → 2026-10-08 A (+5d) | 50% → 100% | -44d → none |
| WAD.S.7310 | installation of Wiring devices includes switches and Receptacle outlets complete with device boxes - 1st Fix |  | 2026-10-03 → 2026-10-08 A (+5d) | 50% → 100% | -44d → none |
| WAD.S.7330 | card reader IN/OUT - 1st Fix |  | 2026-10-03 → 2026-10-08 A (+5d) | 50% → 100% | -44d → none |
| WAD.S.7340 | CCTV cameras - 1st Fix |  | 2026-10-03 → 2026-10-08 A (+5d) | 50% → 100% | -44d → none |
| WAD.S.7350 | Access control panel - 1st Fix |  | 2026-10-03 → 2026-10-08 A (+5d) | 50% → 100% | -44d → none |
| WAD.S.7360 | fire alarm system including wires, conduit and other materials - 1st Fix |  | 2026-10-03 → 2026-10-08 A (+5d) | 50% → 100% | -44d → none |
| 2 | **ELECTRICAL WORKS - Final Fix** | 2026-11-01 → 2026-11-02 (+1d) |  |  |  |
| WAD.S.7100 | 12-Port, SMF, Fiber Optic Patch Panels; | 2026-11-01 → 2026-11-02 (+1d) |  |  | -32.5d → -33d |
| WAD.S.7120 | VIDEO SURVEILLANCE | 2026-11-01 → 2026-11-02 (+1d) |  |  | -32.5d → -33d |
| WAD.S.7150 | CCTV storage system, as specified; | 2026-11-01 → 2026-11-02 (+1d) |  |  | -32.5d → -33d |
| WAD.S.7020 | power source with built-in photocell sensor for automatic electrical connection during day/light times - Final Fix | 2026-11-02 → 2026-11-03 (+1d) |  |  | -32.5d → -33d |
| WAD.S.7040 | LIGHTING FIXTURES - Final Fix | 2026-11-02 → 2026-11-03 (+1d) |  |  | -32.5d → -33d |
| WAD.S.7060 | GROUNDING - Final Fix | 2026-11-02 → 2026-11-03 (+1d) |  |  | -32.5d → -33d |
| WAD.S.7070 | card reader IN/OUT - Final Fix | 2026-11-02 → 2026-11-03 (+1d) |  |  | -32.5d → -33d |
| WAD.S.7090 | 12-Port CAT6A UTP fully loaded patch panel | 2026-11-02 → 2026-11-03 (+1d) |  |  | -32.5d → -33d |
| WAD.S.7110 | COMPUTERS AND RELATED PERIPHERALS | 2026-11-02 → 2026-11-03 (+1d) |  |  | -32.5d → -33d |
| WAD.S.7130 | Central (Headend) System Components; | 2026-11-02 → 2026-11-03 (+1d) |  |  | -32.5d → -33d |
| WAD.S.7140 | VSS System, as specified; | 2026-11-02 → 2026-11-03 (+1d) |  |  | -32.5d → -33d |
| WAD.S.7160 | CCTV cameras - Final Fix | 2026-11-02 → 2026-11-03 (+1d) |  |  | -32.5d → -33d |
| WAD.S.7180 | ELECTRICAL GATE BARRIER | 2026-11-02 → 2026-11-03 (+1d) |  |  | -32.5d → -33d |
| WAD.S.7200 | fire alarm system including wires, conduit and other materials - Final Fix | 2026-11-02 → 2026-11-03 (+1d) |  |  | -32.5d → -33d |
| WAD.S.7210 | Analog addressable fire alarm control panel with battery | 2026-11-02 → 2026-11-03 (+1d) |  |  | -32.5d → -33d |
| WAD.S.7250 | LIGHTING AND POWER TYPE PANELBOARDS - Final Fix | 2026-11-02 → 2026-11-03 (+1d) |  |  | -26.5d → -27d |
| WAD.S.7030 | UNDERGROUND DISTRIBUTION SYSTEM - Final Fix | 2026-11-03 → 2026-11-04 (+1d) |  |  | -32.5d → -33d |
| WAD.S.7050 | installation of Wiring devices includes switches and Receptacle outlets complete with device boxes - Final Fix | 2026-11-03 → 2026-11-04 (+1d) |  |  | -32.5d → -33d |
| WAD.S.7080 | Access control panel - Final Fix | 2026-11-03 → 2026-11-04 (+1d) |  |  | -32.5d → -33d |
| WAD.S.7170 | 20A , ATS ( Automatic transfer switch) for UPS | 2026-11-03 → 2026-11-04 (+1d) |  |  | -32.5d → -33d |
| WAD.S.7190 | LIGHTNING PROTECTION | 2026-11-03 → 2026-11-04 (+1d) |  |  | -32.5d → -33d |
| WAD.S.7220 | Intelligent Ionization / Photoelectric smoke and heat detector with base | 2026-11-03 → 2026-11-04 (+1d) |  |  | -32.5d → -33d |
| 4 | **METALS** | 2026-10-10 → 2026-10-11 (+1d) |  |  |  |
| WAD.S.6510 | folding & sliding mounter combination ladder for building maintenance purpose | 2026-10-10 → 2026-10-11 (+1d) |  |  | -14.5d → -15d |
| WAD.S.6520 | install of overflow galvanized steel roof scupper with gray color with angular secondary support | 2026-10-10 → 2026-10-11 (+1d) |  |  | -14.5d → -15d |
| WAD.S.6530 | install heavy steel cover with frame including all necessary fixings | 2026-10-10 → 2026-10-11 (+1d) |  |  | -14.5d → -15d |
| 5 | **WOODS AND PLASTICS** | 2026-10-08 → 2026-10-10 (+2d) |  |  |  |
| WAD.S.6550 | COUNTER DESK | 2026-10-08 → 2026-10-10 (+2d) |  |  | -11.5d → -12d |
| WAD.S.6540 | PANTRY CABINET | 2026-10-10 → 2026-10-11 (+1d) |  |  | -14.5d → -15d |
| 8 | **DOORS & WINDOWS** | 2026-10-08 → 2026-10-10 (+2d) |  |  |  |
| WAD.S.6700 | Install Aluminum Door | 2026-10-08 → 2026-10-10 (+2d) |  |  | -11.5d → -12d |
| WAD.S.6710 | install hollow metal door | 2026-10-10 → 2026-10-11 (+1d) |  |  | -14.5d → -15d |
| WAD.S.6720 | Install aluminum framed double glazed windows | 2026-10-10 → 2026-10-11 (+1d) |  |  | -14.5d → -15d |
| 10 | **SPECIALTIES** | 2026-11-02 → 2026-11-03 (+1d) |  |  |  |
| WAD.S.6840 | TOILET ACCESSROIES | 2026-11-02 → 2026-11-03 (+1d) |  |  | -31.5d → -32d |
| WAD.S.6850 | PANEL SIGNAGE | 2026-11-03 → 2026-11-04 (+1d) |  |  | -32.5d → -33d |
| 11 | **FURNISHINGS** | 2026-11-04 → 2026-11-05 (+1d) |  |  |  |
| WAD.S.6860 | Workstation chair | 2026-11-04 → 2026-11-05 (+1d) |  |  | -32.5d → -33d |
| WAD.S.6870 | Workstation table | 2026-11-04 → 2026-11-05 (+1d) |  |  | -32.5d → -33d |
| WAD.S.6880 | Roller blind | 2026-11-04 → 2026-11-05 (+1d) |  |  | -32.5d → -33d |
| WAD.S.6890 | Waste Receptacle | 2026-11-04 → 2026-11-05 (+1d) |  |  | -32.5d → -33d |
| 4 | **EXT. WORKS** | 2026-10-04 → 2026-10-10 (+6d) | 2026-11-17 → 2026-11-23 (+6d) |  |  |
| 1 | **EXTERNAL WORKS** | 2026-10-04 → 2026-10-10 (+6d) | 2026-11-17 → 2026-11-23 (+6d) |  |  |
| WAD.S.1100 | Excavation Works | 2026-10-04 → 2026-10-10 (+6d) | 2026-10-20 → 2026-10-26 (+6d) |  | -44d → -49d |

| ID | Task | Start | Finish | Total float |
| --- | --- | --- | --- | --- |
| WAD.S.1290 | 40 mm Pipes | 2026-10-21 → 2026-10-27 (+6d) | 2026-11-03 → 2026-11-09 (+6d) | -44d → -49d |
| WAD.S.3270 | GRP Pipes laid in trenches | 2026-10-21 → 2026-10-27 (+6d) | 2026-11-03 → 2026-11-09 (+6d) | -44d → -49d |
| WAD.S.4020 | install 100 mm GRP pipe service connections between building sewage inspection chamber and main wastewater line | 2026-10-26 → 2026-11-01 (+6d) | 2026-11-03 → 2026-11-09 (+6d) | -39d → -44d |
| WAD.S.4030 | Manhole depth not exceeding 4.0m | 2026-10-26 → 2026-11-01 (+6d) | 2026-11-03 → 2026-11-09 (+6d) | -25d → -30d |
| WAD.S.3880 | 100 mm Pipe in trench not exceeding 2.00 m depth to invert | 2026-10-27 → 2026-11-02 (+6d) | 2026-11-03 → 2026-11-09 (+6d) | -44d → -49d |
| WAD.S.4800 | Backfilling Works | 2026-11-04 → 2026-11-10 (+6d) | 2026-11-09 → 2026-11-15 (+6d) | -44d → -49d |
| WAD.S.4980 | SIDEWALKS AND CURBS | 2026-11-10 → 2026-11-16 (+6d) | 2026-11-17 → 2026-11-23 (+6d) | -44d → -49d |
| WAD.S.4990 | ROAD WORKS | 2026-11-10 → 2026-11-16 (+6d) | 2026-11-17 → 2026-11-23 (+6d) | -43d → -48d |
| WAD.S.5000 | install flag pole 6 M height | 2026-11-10 → 2026-11-16 (+6d) | 2026-11-15 → 2026-11-21 (+6d) | -44d → -49d |
| 4 | **Testing & Commissioning** | 2026-11-16 → 2026-11-22 (+6d) | 2026-11-25 → 2026-12-01 (+6d) |  |
| WAD.S.5440 | Testing & Commissioning - Electrical Systems | 2026-11-16 → 2026-11-22 (+6d) | 2026-11-25 → 2026-12-01 (+6d) | -44d → -49d |
| WAD.S.5490 | Testing & Commissioning - Mechanical Systems | 2026-11-16 → 2026-11-22 (+6d) | 2026-11-25 → 2026-12-01 (+6d) | -44d → -49d |
| 1 | **Engineering** | 2026-11-16 → 2026-11-22 (+6d) | 2026-11-25 → 2026-12-01 (+6d) |  |
| 1 | **As-Built Drawings** | 2026-11-16 → 2026-11-22 (+6d) | 2026-11-24 → 2026-11-30 (+6d) |  |
| WAD.S.5430 | Prepare & Submit | 2026-11-16 → 2026-11-22 (+6d) | 2026-11-19 → 2026-11-25 (+6d) | -44d → -49d |
| WAD.S.6260 | Review & Approve | 2026-11-18 → 2026-11-24 (+6d) | 2026-11-24 → 2026-11-30 (+6d) | -43d → -48d |
| 2 | **Operational Spares** | 2026-11-16 → 2026-11-22 (+6d) | 2026-11-25 → 2026-12-01 (+6d) |  |
| WAD.S.5450 | Prepare & Submit | 2026-11-16 → 2026-11-22 (+6d) | 2026-11-19 → 2026-11-25 (+6d) | -44d → -49d |
| WAD.S.6350 | Inspection | 2026-11-21 → 2026-11-26 (+5d) | 2026-11-25 → 2026-12-01 (+6d) | -44d → -49d |
| WAD.S.6370 | Acceptance | 2026-11-21 → 2026-11-26 (+5d) | 2026-11-25 → 2026-12-01 (+6d) | -44d → -49d |
| 3 | **Warranties and Guarantees** | 2026-11-16 → 2026-11-22 (+6d) | 2026-11-25 → 2026-12-01 (+6d) |  |
| WAD.S.5460 | Prepare & Submit | 2026-11-16 → 2026-11-22 (+6d) | 2026-11-19 → 2026-11-25 (+6d) | -44d → -49d |
| WAD.S.6360 | Review & Approve | 2026-11-21 → 2026-11-26 (+5d) | 2026-11-25 → 2026-12-01 (+6d) | -44d → -49d |
| 2 | **Training and Manuals** | 2026-11-16 → 2026-11-22 (+6d) | 2026-11-25 → 2026-12-01 (+6d) |  |
| 1 | **Training** | 2026-11-16 → 2026-11-22 (+6d) | 2026-11-25 → 2026-12-01 (+6d) |  |
| WAD.S.5470 | Prepare & Submit | 2026-11-16 → 2026-11-22 (+6d) | 2026-11-19 → 2026-11-25 (+6d) | -44d → -49d |
| WAD.S.6380 | Review & Approve | 2026-11-21 → 2026-11-26 (+5d) | 2026-11-25 → 2026-12-01 (+6d) | -44d → -49d |
| WAD.S.6400 | Fabrication & Delivery | 2026-11-21 → 2026-11-26 (+5d) | 2026-11-25 → 2026-12-01 (+6d) | -44d → -49d |
| 2 | **Manuals** | 2026-11-16 → 2026-11-22 (+6d) | 2026-11-25 → 2026-12-01 (+6d) |  |
| WAD.S.5480 | Prepare & Submit | 2026-11-16 → 2026-11-22 (+6d) | 2026-11-19 → 2026-11-25 (+6d) | -44d → -49d |
| WAD.S.6390 | Review & Approve | 2026-11-21 → 2026-11-26 (+5d) | 2026-11-25 → 2026-12-01 (+6d) | -44d → -49d |
| 3 | **Demobilization** | 2026-11-17 → 2026-11-23 (+6d) | 2026-11-25 → 2026-12-01 (+6d) |  |
| WAD.S.5850 | Demobilize | 2026-11-17 → 2026-11-23 (+6d) | 2026-11-25 → 2026-12-01 (+6d) | -44d → -49d |
| 4 | **Snaglist Rectification** | 2026-11-17 → 2026-11-23 (+6d) | 2026-11-25 → 2026-12-01 (+6d) |  |
| WAD.S.5860 | Snaglist Rectification | 2026-11-17 → 2026-11-23 (+6d) | 2026-11-25 → 2026-12-01 (+6d) | -44d → -49d |
| WAD.S.5870 | Initial Handing Over | 2026-11-17 → 2026-11-23 (+6d) | 2026-11-25 → 2026-12-01 (+6d) | -44d → -49d |

## Version 4 (data date 2026-10-12, saved 2026-10-13, file WAS1-05-006 -Improvement of Waad Al Shamal Industrial City Fence & Gates-DD12-10-2026.xer)

Note of the change: Renumber project folders 01–23 in order (after removing projects 12 and 25)

Last finish 2026-12-01 → 2026-12-06 (+5d). Complete tasks 150 → 195.

Changed:

| ID | Task | Start | Finish | Total float |
| --- | --- | --- | --- | --- |
| 1 | **Key Milestones** |  | 2026-12-01 → 2026-12-06 (+5d) |  |
| 1 | **General Milestones** |  | 2026-12-01 → 2026-12-06 (+5d) |  |
| WAD.S.6490 | Project Finish | 2026-12-01 → 2026-12-06 (+5d) | 2026-12-01 → 2026-12-06 (+5d) | -49d → -53d |
| 2 | **Contractual Milestones** |  | 2026-12-01 → 2026-12-06 (+5d) |  |
| WAD.S.3850 | Completion of Fences | 2026-10-08 → 2026-10-15 (+7d) | 2026-10-08 → 2026-10-15 (+7d) | -2.84d → -8.42d |
| WAD.S.3860 | Completion of GUARD HOUSE 1 | 2026-10-08 → 2026-10-15 (+7d) | 2026-10-08 → 2026-10-15 (+7d) | -2.84d → -8.42d |
| WAD.S.5070 | Completion of Engineering Works | 2026-10-14 → 2026-10-21 (+7d) | 2026-10-14 → 2026-10-21 (+7d) | -7.6d → -13.6d |
| WAD.S.6250 | Completion of Procurment Works | 2026-10-27 → 2026-11-03 (+7d) | 2026-10-27 → 2026-11-03 (+7d) | -18.3d → -24.3d |
| WAD.S.6110 | Completion of EXT. WORKS | 2026-11-23 → 2026-11-28 (+5d) | 2026-11-23 → 2026-11-28 (+5d) | -42d → -46d |
| WAD.S.7560 | Testing & Commissioning | 2026-12-01 → 2026-12-06 (+5d) | 2026-12-01 → 2026-12-06 (+5d) | -49d → -53d |
| 6 | **Engineering** |  | 2026-10-18 → 2026-10-25 (+7d) |  |
| 1 | **Material Submittal** |  | 2026-10-18 → 2026-10-25 (+7d) |  |
| 1 | **Material Prepare & Submit** |  | 2026-10-11 → 2026-10-18 (+7d) |  |
| 1 | **Short Lead Items** |  | 2026-10-10 → 2026-10-17 (+7d) |  |
| WAD.S.2630 | Manhole depth not exceeding 4.0m (Material Prepare & Submit) (GUARD HOUSE) |  | 2026-10-07 → 2026-10-14 (+7d) | -18d → -24d |
| WAD.S.2690 | GRP Pipes laid in trenches(Material Prepare & Submit) (GUARD HOUS |  | 2026-10-07 → 2026-10-14 (+7d) | -32.6d → -38.6d |
| WAD.S.2700 | 100 mm GRP pipe service connections (Material Prepare & Submit) (GUARD HOUSE) |  | 2026-10-07 → 2026-10-14 (+7d) | -26.3d → -32.3d |
| WAD.S.2900 | SIDEWALKS AND CURBS (Material Prepare & Submit) (GUARD HOUSE) |  | 2026-10-10 → 2026-10-17 (+7d) | -25.3d → -31.3d |
| WAD.S.4700 | UNDERGROUND DISTRIBUTION SYSTEM (Material Prepare & Submit) (GUARD HOUSE) |  | 2026-10-07 → 2026-10-14 (+7d) | -8.5d → -14.5d |
| 2 | **Long Lead Items** |  | 2026-10-11 → 2026-10-18 (+7d) |  |
| WAD.S.1490 | Intrusion Detection system including processor control units items and joints (Material Prepare & Submit) (FENCES) |  | 2026-10-06 → 2026-10-13 (+7d) | -34.7d → -40.7d |
| WAD.S.3220 | WATER SUPPLY SYSTEM (Material Prepare & Submit) (GUARD HOUSE) |  | 2026-10-07 → 2026-10-14 (+7d) | -12.1d → -18.1d |
| WAD.S.3230 | SEWER AND DRAINAGE SYSTEM (Material Prepare & Submit) (GUARD HOUSE) |  | 2026-10-11 → 2026-10-18 (+7d) | -15.3d → -21.3d |
| WAD.S.3250 | HEATING, VENTILATION AND AIR CONDITIONING (Material Prepare & Submit) (GUARD HOUSE) |  | 2026-10-10 → 2026-10-17 (+7d) | -14.9d → -20.9d |
| WAD.S.1520 | Handholes\ Manholes (Material Prepare & Submit) (FENCES) |  | 2026-10-07 → 2026-10-14 (+7d) | -18.8d → -24.8d |
| WAD.S.3150 | folding & sliding mounter combination ladder for building maintenance purpose (Material Prepare & Submit) (GUARD HOUSE) |  | 2026-10-11 → 2026-10-18 (+7d) | -25.9d → -31.9d |
| WAD.S.3050 | Workstation chair (Material Prepare & Submit) (GUARD HOUSE) |  | 2026-10-07 → 2026-10-14 (+7d) | -22.2d → -28.2d |
| WAD.S.3160 | overflow galvanized steel roof scupper (Material Prepare & Submit) (GUARD HOUSE) |  | 2026-10-07 → 2026-10-14 (+7d) | -23.1d → -29.1d |
| WAD.S.3170 | counter desk (Material Prepare & Submit) (GUARD HOUSE) |  | 2026-10-07 → 2026-10-14 (+7d) | -23.1d → -29.1d |
| WAD.S.3180 | install ceramic wall tiles (Material Prepare & Submit) (GUARD HOUSE) |  | 2026-10-07 → 2026-10-14 (+7d) | -23.1d → -29.1d |
| WAD.S.3190 | PANEL SIGNAGE (Material Prepare & Submit) (GUARD HOUSE) |  | 2026-10-07 → 2026-10-14 (+7d) | -23.1d → -29.1d |
| WAD.S.3200 | COMMUNICATIONS BACKBONE CABLING (Material Prepare & Submit) (GUARD HOUSE) |  | 2026-10-07 → 2026-10-14 (+7d) | -23.1d → -29.1d |
| WAD.S.3210 | card reader IN/OUT (Material Prepare & Submit) (GUARD HOUSE) |  | 2026-10-07 → 2026-10-14 (+7d) | -18.1d → -24.1d |
| WAD.S.3240 | SUPPLY AND INSTALL PLUMBING FIXTURES (Material Prepare & Submit) (GUARD HOUSE) |  | 2026-10-07 → 2026-10-14 (+7d) | -18.6d → -24.6d |
| WAD.S.2840 | ceramic floor tiles (Material Prepare & Submit) (GUARD HOUSE) |  | 2026-10-10 → 2026-10-17 (+7d) | -19.8d → -25.8d |
| WAD.S.2850 | Riyadh stone cladding (Material Prepare & Submit) (GUARD HOUSE) |  | 2026-10-10 → 2026-10-17 (+7d) | -24.7d → -30.7d |
| WAD.S.2860 | UPS (Material Prepare & Submit) (GUARD HOUSE) |  | 2026-10-10 → 2026-10-17 (+7d) | -26.3d → -32.3d |
| WAD.S.2890 | Panel boards (Material Prepare & Submit) (GUARD HOUSE) |  | 2026-10-10 → 2026-10-17 (+7d) | -25.9d → -31.9d |
| WAD.S.3560 | aluminum framed double glazed windows (Material Prepare & Submit) (GUARD HOUSE) |  | 2026-10-10 → 2026-10-17 (+7d) | -18.2d → -24.2d |
| WAD.S.3570 | Roller blind (Material Prepare & Submit) (GUARD HOUSE) |  | 2026-10-10 → 2026-10-17 (+7d) | -22.2d → -28.2d |
| WAD.S.3590 | DATA COMMUNICATIONS (Material Prepare & Submit) (GUARD HOUSE) |  | 2026-10-10 → 2026-10-17 (+7d) | -15.7d → -21.7d |
| WAD.S.3710 | COMPUTERS AND RELATED PERIPHERALS (Material Prepare & Submit) (GUARD HOUSE) |  | 2026-10-10 → 2026-10-17 (+7d) | -17.2d → -23.2d |
| WAD.S.3030 | PANTRY CABINET (Material Prepare & Submit) (GUARD HOUSE) |  | 2026-10-11 → 2026-10-18 (+7d) | -26.3d → -32.3d |
| WAD.S.3040 | 20mm thick black granite (Material Prepare & Submit) (GUARD HOUSE) |  | 2026-10-11 → 2026-10-18 (+7d) | -17.3d → -23.3d |
| WAD.S.3060 | Safety Disconnect Switches complete with busbar, frame box (Material Prepare & Submit) (GUARD HOUSE) |  | 2026-10-11 → 2026-10-18 (+7d) | -20.3d → -26.3d |
| WAD.S.3300 | heavy steel cover with frame for tanks (Material Prepare & Submit) (GUARD HOUSE) |  | 2026-10-11 → 2026-10-18 (+7d) | -17.3d → -23.3d |
| WAD.S.3310 | HOLLOW METAL DOORS AND FRAMES (Material Prepare & Submit) (GUARD HOUSE) |  | 2026-10-11 → 2026-10-18 (+7d) | -17.8d → -23.8d |
| WAD.S.3320 | ALUMINIUM DOORS (Material Prepare & Submit) (GUARD HOUSE) |  | 2026-10-11 → 2026-10-18 (+7d) | -17.3d → -23.3d |
| WAD.S.3330 | TOILET AND BATH ACCESSROIES (Material Prepare & Submit) (GUARD HOUSE) |  | 2026-10-11 → 2026-10-18 (+7d) | -12.2d → -18.2d |
| WAD.S.3340 | Waste Receptacle (Material Prepare & Submit) (GUARD HOUSE) |  | 2026-10-11 → 2026-10-18 (+7d) | -19.3d → -25.3d |
| WAD.S.3350 | LIGHTING FIXTURES (Material Prepare & Submit) (GUARD HOUSE) |  | 2026-10-11 → 2026-10-18 (+7d) | -19.8d → -25.8d |
| WAD.S.3360 | Access control panel (Material Prepare & Submit) (GUARD HOUSE) |  | 2026-10-11 → 2026-10-18 (+7d) | -19.8d → -25.8d |
| WAD.S.3370 | VIDEO SURVEILLANCE (Material Prepare & Submit) (GUARD HOUSE) |  | 2026-10-11 → 2026-10-18 (+7d) | -21.8d → -27.8d |
| 2 | **Material Review & Approve** |  | 2026-10-18 → 2026-10-25 (+7d) |  |
| 1 | **Short Lead Items** |  | 2026-10-17 → 2026-10-24 (+7d) |  |
| WAD.S.3550 | ROAD WORKS (Material Review & Approve) (GUARD HOUSE) |  | 2026-10-10 → 2026-10-17 (+7d) | -18.8d → -24.8d |
| WAD.S.2680 | Manhole depth not exceeding 4.0m (Material Review & Approve) (GUARD HOUSE) | 2026-10-07 → 2026-10-14 (+7d) | 2026-10-14 → 2026-10-21 (+7d) | -18d → -24d |
| WAD.S.4840 | UNDERGROUND DISTRIBUTION SYSTEM (Material Review & Approve) (GUARD HOUSE) | 2026-10-07 → 2026-10-14 (+7d) | 2026-10-14 → 2026-10-21 (+7d) | -8.5d → -14.5d |
| WAD.S.3140 | SIDEWALKS AND CURBS (Material Review & Approve) (GUARD HOUSE) | 2026-10-10 → 2026-10-17 (+7d) | 2026-10-17 → 2026-10-24 (+7d) | -25.3d → -31.3d |
| 2 | **Long Lead Items** |  | 2026-10-18 → 2026-10-25 (+7d) |  |
| WAD.S.1510 | Intrusion Detection system including processor control units items and joints (Material Review & Approve) (FENCES) |  | 2026-10-07 → 2026-10-14 (+7d) | -34.7d → -40.7d |
| WAD.S.3670 | WATER SUPPLY SYSTEM (Material Review & Approve) (GUARD HOUSE) |  | 2026-10-08 → 2026-10-15 (+7d) | -12.1d → -18.1d |
| WAD.S.3680 | SEWER AND DRAINAGE SYSTEM (Material Review & Approve) (GUARD HOUSE) |  | 2026-10-12 → 2026-10-19 (+7d) | -15.3d → -21.3d |
| WAD.S.3700 | HEATING, VENTILATION AND AIR CONDITIONING (Material Review & Approve) (GUARD HOUSE) |  | 2026-10-11 → 2026-10-18 (+7d) | -14.9d → -20.9d |
| WAD.S.3800 | TOILET AND BATH ACCESSROIES (Material Review & Approve) (GUARD HOUSE) |  | 2026-10-12 → 2026-10-19 (+7d) | -12.2d → -18.2d |
| WAD.S.3690 | SUPPLY AND INSTALL PLUMBING FIXTURES (Material Review & Approve) (GUARD HOUSE) |  | 2026-10-18 → 2026-10-25 (+7d) | -26.3d → -32.3d |
| WAD.S.1650 | Handholes\ Manholes (Material Review & Approve) (FENCES) | 2026-10-07 → 2026-10-14 (+7d) | 2026-10-14 → 2026-10-21 (+7d) | -18.8d → -24.8d |
| WAD.S.3000 | ceramic floor tiles (Material Review & Approve) (GUARD HOUSE) | 2026-10-10 → 2026-10-17 (+7d) | 2026-10-17 → 2026-10-24 (+7d) | -19.8d → -25.8d |
| WAD.S.3010 | install Riyadh stone cladding (Material Review & Approve) (GUARD HOUSE) | 2026-10-10 → 2026-10-17 (+7d) | 2026-10-17 → 2026-10-24 (+7d) | -24.7d → -30.7d |
| WAD.S.3020 | UPS (Material Review & Approve) (GUARD HOUSE) | 2026-10-10 → 2026-10-17 (+7d) | 2026-10-17 → 2026-10-24 (+7d) | -20.2d → -26.2d |

| ID | Task | Start | Finish | Complete | Total float |
| --- | --- | --- | --- | --- | --- |
| WAD.S.3130 | Panel boards (Material Review & Approve) (GUARD HOUSE) | 2026-10-10 → 2026-10-17 (+7d) | 2026-10-17 → 2026-10-24 (+7d) |  | -24.7d → -30.7d |
| WAD.S.3660 | card reader IN/OUT (Material Review & Approve) (GUARD HOUSE) | 2026-10-10 → 2026-10-17 (+7d) | 2026-10-17 → 2026-10-24 (+7d) |  | -19.7d → -25.7d |
| WAD.S.4040 | aluminum framed double glazed windows (Material Review & Approve) (GUARD HOUSE) | 2026-10-10 → 2026-10-17 (+7d) | 2026-10-17 → 2026-10-24 (+7d) |  | -18.2d → -24.2d |
| WAD.S.4050 | Roller blind (Material Review & Approve) (GUARD HOUSE) | 2026-10-10 → 2026-10-17 (+7d) | 2026-10-17 → 2026-10-24 (+7d) |  | -22.2d → -28.2d |
| WAD.S.4070 | DATA COMMUNICATIONS (Material Review & Approve) (GUARD HOUSE) | 2026-10-10 → 2026-10-17 (+7d) | 2026-10-17 → 2026-10-24 (+7d) |  | -15.7d → -21.7d |
| WAD.S.4080 | COMPUTERS AND RELATED PERIPHERALS (Material Review & Approve) (GUARD HOUSE) | 2026-10-10 → 2026-10-17 (+7d) | 2026-10-17 → 2026-10-24 (+7d) |  | -17.2d → -23.2d |
| WAD.S.3500 | PANTRY CABINET (Material Review & Approve) (GUARD HOUSE) | 2026-10-11 → 2026-10-18 (+7d) | 2026-10-18 → 2026-10-25 (+7d) |  | -26.3d → -32.3d |
| WAD.S.3510 | 20mm thick black granite (Material Review & Approve) (GUARD HOUSE) | 2026-10-11 → 2026-10-18 (+7d) | 2026-10-18 → 2026-10-25 (+7d) |  | -17.3d → -23.3d |
| WAD.S.3520 | Workstation chair (Material Review & Approve) (GUARD HOUSE) | 2026-10-11 → 2026-10-18 (+7d) | 2026-10-18 → 2026-10-25 (+7d) |  | -19.8d → -25.8d |
| WAD.S.3600 | folding & sliding mounter combination ladder for building maintenance purpose (Material Review & Approve) (GUARD HOUSE) | 2026-10-11 → 2026-10-18 (+7d) | 2026-10-18 → 2026-10-25 (+7d) |  | -26.3d → -32.3d |
| WAD.S.3610 | overflow galvanized steel roof scupper (Material Review & Approve) (GUARD HOUSE) | 2026-10-11 → 2026-10-18 (+7d) | 2026-10-18 → 2026-10-25 (+7d) |  | -26.3d → -32.3d |
| WAD.S.3620 | counter desk (Material Review & Approve) (GUARD HOUSE) | 2026-10-11 → 2026-10-18 (+7d) | 2026-10-18 → 2026-10-25 (+7d) |  | -26.3d → -32.3d |
| WAD.S.3630 | install ceramic wall tiles (Material Review & Approve) (GUARD HOUSE) | 2026-10-11 → 2026-10-18 (+7d) | 2026-10-18 → 2026-10-25 (+7d) |  | -26.3d → -32.3d |
| WAD.S.3640 | PANEL SIGNAGE (Material Review & Approve) (GUARD HOUSE) | 2026-10-11 → 2026-10-18 (+7d) | 2026-10-18 → 2026-10-25 (+7d) |  | -26.3d → -32.3d |
| WAD.S.3650 | COMMUNICATIONS BACKBONE CABLING (Material Review & Approve) (GUARD HOUSE) | 2026-10-11 → 2026-10-18 (+7d) | 2026-10-18 → 2026-10-25 (+7d) |  | -26.3d → -32.3d |
| WAD.S.3770 | heavy steel cover with frame for tanks (Material Review & Approve) (GUARD HOUSE) | 2026-10-11 → 2026-10-18 (+7d) | 2026-10-18 → 2026-10-25 (+7d) |  | -17.3d → -23.3d |
| WAD.S.3780 | HOLLOW METAL DOORS AND FRAMES (Material Review & Approve) (GUARD HOUSE) | 2026-10-11 → 2026-10-18 (+7d) | 2026-10-18 → 2026-10-25 (+7d) |  | -17.8d → -23.8d |
| WAD.S.3790 | ALUMINIUM DOORS (Material Review & Approve) (GUARD HOUSE) | 2026-10-11 → 2026-10-18 (+7d) | 2026-10-18 → 2026-10-25 (+7d) |  | -17.3d → -23.3d |
| WAD.S.3810 | Waste Receptacle (Material Review & Approve) (GUARD HOUSE) | 2026-10-11 → 2026-10-18 (+7d) | 2026-10-18 → 2026-10-25 (+7d) |  | -19.3d → -25.3d |
| WAD.S.3820 | LIGHTING FIXTURES (Material Review & Approve) (GUARD HOUSE) | 2026-10-11 → 2026-10-18 (+7d) | 2026-10-18 → 2026-10-25 (+7d) |  | -19.8d → -25.8d |
| WAD.S.3830 | Access control panel (Material Review & Approve) (GUARD HOUSE) | 2026-10-11 → 2026-10-18 (+7d) | 2026-10-18 → 2026-10-25 (+7d) |  | -19.8d → -25.8d |
| WAD.S.3840 | VIDEO SURVEILLANCE (Material Review & Approve) (GUARD HOUSE) | 2026-10-11 → 2026-10-18 (+7d) | 2026-10-18 → 2026-10-25 (+7d) |  | -21.8d → -27.8d |
| 7 | **Procurement** |  | 2026-10-28 → 2026-11-04 (+7d) |  |  |
| 5 | **Fabrication & Delivery** |  | 2026-10-28 → 2026-11-04 (+7d) |  |  |
| 1 | **Short Lead Items** |  | 2026-10-19 → 2026-10-26 (+7d) |  |  |
| WAD.S.1430 | structural steel beams, posts and rods for wall fence (FENCES) |  | 2026-10-06 → 2026-10-13 (+7d) |  | -16.2d → -17.2d |
| WAD.S.1540 | tubes, bolts, nuts and steel plates to strengthened the wall fence and posts (FENCES) |  | 2026-10-06 → 2026-10-13 (+7d) |  | -16.15d → -17.15d |
| WAD.S.4780 | FIRE PROTECTION SYSTEM (fire extinguisher) (GUARD HOUSE) |  | 2026-10-07 → 2026-10-14 (+7d) | 70% → 85% | -1.5d → -7.5d |
| WAD.S.3290 | 100 mm GRP pipe service connections (GUARD HOUSE) |  | 2026-10-10 → 2026-10-17 (+7d) | 70% → 85% | -25.4d → -31.4d |
| WAD.S.4160 | GROUNDING (GUARD HOUSE) |  | 2026-10-08 → 2026-10-15 (+7d) | 70% → 85% | -2.5d → -8.5d |
| WAD.S.4170 | ROAD WORKS (GUARD HOUSE) |  | 2026-10-12 → 2026-10-19 (+7d) | 70% → 85% | -18.8d → -24.8d |
| WAD.S.2970 | Manhole depth not exceeding 4.0m (GUARD HOUSE) |  | 2026-10-17 → 2026-10-24 (+7d) | 70% → 85% | -18d → -24d |
| WAD.S.3910 | SIDEWALKS AND CURBS (GUARD HOUSE) |  | 2026-10-19 → 2026-10-26 (+7d) | 70% → 85% | -25.3d → -31.3d |
| WAD.S.5080 | UNDERGROUND DISTRIBUTION SYSTEM (GUARD HOUSE) |  | 2026-10-15 → 2026-10-22 (+7d) | 70% → 85% | -8.5d → -14.5d |
| 2 | **Long Lead Items** |  | 2026-10-28 → 2026-11-04 (+7d) |  |  |
| WAD.S.1570 | fix galvanized steel chain link gate including all necessary associated (FENCES) |  | 2026-10-06 → 2026-10-13 (+7d) |  | -16.75d → -17.75d |
| WAD.S.2470 | structural steel members and plates for main sliding gates (FENCES) |  | 2026-10-06 → 2026-10-13 (+7d) |  | -16.7d → -17.7d |
| WAD.S.2170 | Intrusion Detection system including processor control units items and joints (FENCES) |  | 2026-10-12 → 2026-10-19 (+7d) | 70% → 80% | -34.7d → -40.7d |
| WAD.S.4580 | WATER SUPPLY SYSTEM (GUARD HOUSE) |  | 2026-10-15 → 2026-10-22 (+7d) |  | -11.6d → -17.6d |
| WAD.S.2260 | Handholes\ Manholes (FENCES) |  | 2026-10-18 → 2026-10-25 (+7d) | 70% → 80% | -18.8d → -24.8d |
| WAD.S.3740 | ceramic floor tiles (GUARD HOUSE) |  | 2026-10-20 → 2026-10-27 (+7d) | 70% → 80% | -19.8d → -25.8d |
| WAD.S.3750 | install Riyadh stone cladding (GUARD HOUSE) |  | 2026-10-20 → 2026-10-27 (+7d) | 70% → 80% | -18.8d → -21.8d |
| WAD.S.3760 | UPS (GUARD HOUSE) |  | 2026-10-27 → 2026-11-03 (+7d) | 50% → 70% | -20.2d → -26.2d |
| WAD.S.3900 | Panel boards (GUARD HOUSE) |  | 2026-10-27 → 2026-11-03 (+7d) | 50% → 70% | -18.2d → -24.2d |
| WAD.S.4610 | HEATING, VENTILATION AND AIR CONDITIONING (GUARD HOUSE) |  | 2026-10-19 → 2026-10-26 (+7d) |  | -14.9d → -20.9d |
| WAD.S.4590 | SEWER AND DRAINAGE SYSTEM (GUARD HOUSE) |  | 2026-10-20 → 2026-10-27 (+7d) |  | -15.3d → -21.3d |
| WAD.S.4650 | TOILET AND BATH ACCESSROIES (GUARD HOUSE) |  | 2026-10-20 → 2026-10-27 (+7d) |  | -12.2d → -18.2d |
| WAD.S.4120 | PANTRY CABINET (GUARD HOUSE) |  | 2026-10-27 → 2026-11-03 (+7d) | 50% → 70% | -20.3d → -26.3d |
| WAD.S.4130 | 20mm thick black granite (GUARD HOUSE) |  | 2026-10-26 → 2026-11-02 (+7d) | 50% → 70% | -17.3d → -23.3d |
| WAD.S.4140 | Workstation chair (GUARD HOUSE) |  | 2026-10-27 → 2026-11-03 (+7d) | 50% → 70% | -19.8d → -25.8d |
| WAD.S.4150 | Safety Disconnect Switches complete with busbar, frame box (GUARD HOUSE) |  | 2026-10-28 → 2026-11-04 (+7d) | 50% → 70% | -19.3d → -25.3d |
| WAD.S.4510 | folding & sliding mounter combination ladder for building maintenance purpose (GUARD HOUSE) |  | 2026-10-26 → 2026-11-02 (+7d) | 50% → 70% | -19.3d → -25.3d |
| WAD.S.4520 | overflow galvanized steel roof scupper (GUARD HOUSE) |  | 2026-10-26 → 2026-11-02 (+7d) | 50% → 70% | -19.3d → -25.3d |
| WAD.S.4530 | counter desk (GUARD HOUSE) |  | 2026-10-26 → 2026-11-02 (+7d) | 50% → 70% | -20.8d → -26.8d |
| WAD.S.4540 | install ceramic wall tiles (GUARD HOUSE) |  | 2026-10-25 → 2026-11-01 (+7d) | 50% → 70% | -19.8d → -22.8d |
| WAD.S.4570 | card reader IN/OUT (GUARD HOUSE) |  | 2026-10-25 → 2026-11-01 (+7d) |  | -19.7d → -25.7d |
| WAD.S.4760 | aluminum framed double glazed windows (GUARD HOUSE) |  | 2026-10-24 → 2026-10-31 (+7d) |  | -18.2d → -24.2d |
| WAD.S.4770 | Roller blind (GUARD HOUSE) |  | 2026-10-24 → 2026-10-31 (+7d) |  | -22.2d → -28.2d |
| WAD.S.4790 | DATA COMMUNICATIONS (GUARD HOUSE) |  | 2026-10-24 → 2026-10-31 (+7d) |  | -15.7d → -21.7d |
| WAD.S.4820 | COMPUTERS AND RELATED PERIPHERALS (GUARD HOUSE) |  | 2026-10-22 → 2026-10-29 (+7d) |  | -17.2d → -23.2d |
| WAD.S.4550 | PANEL SIGNAGE (GUARD HOUSE) |  | 2026-10-26 → 2026-11-02 (+7d) |  | -19.8d → -25.8d |
| WAD.S.4560 | COMMUNICATIONS BACKBONE CABLING (GUARD HOUSE) |  | 2026-10-26 → 2026-11-02 (+7d) |  | -17.3d → -23.3d |
| WAD.S.4600 | SUPPLY PLUMBING FIXTURES (GUARD HOUSE) |  | 2026-10-26 → 2026-11-02 (+7d) |  | -26.3d → -32.3d |
| WAD.S.4620 | heavy steel cover with frame for tanks (GUARD HOUSE) |  | 2026-10-26 → 2026-11-02 (+7d) |  | -17.3d → -23.3d |
| WAD.S.4630 | HOLLOW METAL DOORS AND FRAMES (GUARD HOUSE) |  | 2026-10-26 → 2026-11-02 (+7d) |  | -17.8d → -23.8d |
| WAD.S.4640 | ALUMINIUM DOORS (GUARD HOUSE) |  | 2026-10-26 → 2026-11-02 (+7d) |  | -17.3d → -23.3d |
| WAD.S.4660 | Waste Receptacle (GUARD HOUSE) |  | 2026-10-27 → 2026-11-03 (+7d) |  | -19.3d → -25.3d |
| WAD.S.4670 | LIGHTING FIXTURES (GUARD HOUSE) |  | 2026-10-25 → 2026-11-01 (+7d) |  | -19.8d → -25.8d |
| WAD.S.4680 | Access control panel (GUARD HOUSE) |  | 2026-10-26 → 2026-11-02 (+7d) |  | -19.8d → -25.8d |
| WAD.S.4690 | VIDEO SURVEILLANCE (GUARD HOUSE) |  | 2026-10-26 → 2026-11-02 (+7d) |  | -21.8d → -27.8d |

| ID | Task | Start | Finish | Complete | Total float |
| --- | --- | --- | --- | --- | --- |
| 8 | **Construction** | 2025-11-11 → 2025-04-07 (-218d) | 2026-11-23 → 2026-11-28 (+5d) |  |  |
| 1 | **FENCES** |  | 2026-11-15 → 2026-11-22 (+7d) |  |  |
| 2 | **CONCRETE WORKS** |  | 2026-10-07 → 2026-10-13 (+6d) |  |  |
| 1 | **Part 1** |  | 2026-10-06 → 2026-10-13 (+7d) |  |  |
| WAD.S.1560 | cast in place reinforced concrete for the sub-structures - Part 1 |  | 2026-10-06 → 2026-10-13 (+7d) | 96% → 98% | -16.68d → -17.84d |
| 2 | **Part 2** |  | 2026-10-07 → 2026-10-13 (+6d) |  |  |
| WAD.S.2720 | cast in place reinforced concrete for the sub-structures - Part 2 |  | 2026-10-07 → 2026-10-13 (+6d) | 96% → 98% | -16.68d → -17.84d |
| 3 | **THERMAL & MOISTURE PROTECTION** |  | 2026-10-12 → 2026-10-17 (+5d) |  |  |
| WAD.S.2330 | Applying 2 coats of bitumen waterproofing paint on concrete surfaces - Part 1 |  | 2026-10-08 A | 89% → 100% | -7.15d → none |
| 2 | **Part 2** |  | 2026-10-12 → 2026-10-17 (+5d) |  |  |
| WAD.S.3420 | Applying 2 coats of bitumen waterproofing paint on concrete surfaces - Part 2 |  | 2026-10-12 → 2026-10-17 (+5d) | 89% → 97% | -7.15d → -10.05d |
| 6 | **SPECIAL CONSTRUCTION- STRUCTURAL STEEL** |  | 2026-10-25 → 2026-10-26 (+1d) |  |  |
| 1 | **Part 1** |  | 2026-10-11 → 2026-10-14 (+3d) |  |  |
| WAD.S.4720 | galvanized steel chain link gates Installation - Part 1 |  | 2026-10-11 → 2026-10-14 (+3d) | 88% → 96% | -16.75d → -17.84d |
| 2 | **Part 2** |  | 2026-10-25 → 2026-10-26 (+1d) |  |  |
| WAD.S.2920 | install structural steel beams, posts and rods for wall fence - Part 2 |  | 2026-10-10 → 2026-10-15 (+5d) | 88% → 94% | -10.27d → -15.01d |
| WAD.S.3430 | Install tubes, bolts, nuts and steel plates to strengthened the wall fence and posts - Part 2 |  | 2026-10-10 → 2026-10-15 (+5d) | 88% → 93% | -6.27d → -8.22d |
| WAD.S.3950 | fix galvanized steel chain link fence wall; including steel tube framing and posts, turn buckle - Part 2 |  | 2026-10-10 → 2026-10-15 (+5d) | 88% → 93% | -3.27d → -8.22d |
| WAD.S.4730 | galvanized steel chain link gates Installation - Part 2 |  | 2026-10-25 → 2026-10-26 (+1d) | 25% → 75% | -16.75d → -17.84d |
| 8 | **ELECTRICAL WORKS** |  | 2026-11-07 → 2026-11-14 (+7d) |  |  |
| WAD.S.4810 | Handholes\ Manholes |  | 2026-11-07 → 2026-11-14 (+7d) |  | -27.66d → -33.66d |
| WAD.S.2640 | Intrusion Detection system including processor control units items and joints - 1st Fix | 2026-10-12 → 2026-10-19 (+7d) | 2026-10-22 → 2026-10-29 (+7d) |  | -34.7d → -40.7d |
| WAD.S.2950 | Fiber Optic Outdoor Cable |  | 2026-10-26 → 2026-11-02 (+7d) | 55% → 65% | -34.7d → -40.7d |
| WAD.S.2960 | Road crossing ducts for Fiber Optic Cable | 2026-10-22 → 2026-10-29 (+7d) | 2026-10-31 → 2026-11-07 (+7d) |  | -24.1d → -30.1d |
| WAD.S.2980 | install 50mm diameter high-density polyethylene (HDPE) pipe including the require pipe fittings for connection, | 2026-10-25 → 2026-11-01 (+7d) | 2026-11-03 → 2026-11-10 (+7d) |  | -24.1d → -30.1d |
| WAD.S.3720 | Fiber Optic Outdoor Cable To Close The Loop | 2026-10-26 → 2026-11-02 (+7d) | 2026-11-05 → 2026-11-12 (+7d) |  | -34.7d → -40.7d |
| 4 | **ELECTRICAL GATE BARRIER** | 2026-11-05 → 2026-11-12 (+7d) | 2026-11-15 → 2026-11-22 (+7d) |  |  |
| WAD.S.4830 | Install, Electrical gate barrier complete (cables, conduits, pipes, pulling cables in the conduits) | 2026-11-05 → 2026-11-12 (+7d) | 2026-11-15 → 2026-11-22 (+7d) |  | -34.7d → -40.7d |
| 2 | **GUARD HOUSE 1** |  | 2026-11-01 → 2026-11-07 (+6d) |  |  |
| 1 | **SITE WORKS** |  | 2026-10-26 → 2026-10-20 (-6d) |  |  |
| 5 | **Guard Rooms & Gates (CONCRETE Works)** |  | 2026-10-26 → 2026-10-20 (-6d) |  |  |
| WAD.S.3410 | Tanks Raft | 2026-10-06 A | 2026-10-11 A | 0% → 100% | -20.25d → none |
| WAD.S.3940 | Tanks Walls | 2026-10-12 A | 2026-10-17 → 2026-10-15 (-2d) | 0% → 65% | -20.25d → -15.5d |
| WAD.S.4850 | Tanks Slab | 2026-10-21 → 2026-10-15 (-6d) | 2026-10-26 → 2026-10-20 (-6d) |  | -17.25d → -12.5d |
| 6 | **THERMAL & MOISTURE PROTECTION** |  | 2026-10-10 → 2026-10-13 (+3d) |  |  |
| 1 | **THERMAL & MOISTURE PROTECTION - Foundation** |  | 2026-10-10 → 2026-10-13 (+3d) |  |  |
| WAD.S.3930 | install liquid applied waterproofing coating; single-component pitch modified polyurethane | 2026-10-06 A | 2026-10-07 → 2026-10-13 (+6d) | 0% → 65% | -4d → -7d |
| WAD.S.4090 | install geotextile sheet | 2026-10-08 A | 2026-10-10 A | 0% → 100% | -4d → none |
| WAD.S.4210 | cast in place foam concrete screed, 50mm thick minimum; laid to fall and cross fall | 2026-10-15 A | 2026-10-27 → 2026-10-19 (-8d) | 0% → 85% | -22.5d → -19d |
| WAD.S.4270 | install Terrazzo tiles | 2026-10-15 A | 2026-10-27 A | 0% → 100% | -22.5d → none |
| 2 | **THERMAL & MOISTURE PROTECTION - Tanks** |  | 2026-10-24 → 2026-10-22 (-2d) |  |  |
| WAD.S.4280 | lay epoxy 2 coating for inner surfaces for bottom of the roof |  | 2026-10-24 → 2026-10-22 (-2d) | 35% → 65% | -22.5d → -19d |
| WAD.S.4710 | install water stop for tanks according to the drawings and specification |  | 2026-10-21 → 2026-10-20 A (-1d) | 35% → 100% | -20.25d → none |
| 9 | **FINISHES** |  | 2026-10-28 → 2026-11-02 (+5d) |  |  |
| WAD.S.3090 | install concrete plastering |  | 2026-10-06 A | 90% → 100% | -22.5d → none |
| WAD.S.4950 | install granite flooring | 2026-10-20 A | 2026-10-22 A | 0% → 100% | -19.8d → none |
| WAD.S.5020 | install Riyadh stone cladding | 2026-10-21 A | 2026-10-25 A | 0% → 100% | -19.25d → none |
| WAD.S.5030 | install 3mm steel CNC laser cut panels | 2026-10-21 A | 2026-10-25 A | 0% → 100% | -19.25d → none |
| WAD.S.5060 | install aluminum cladding | 2026-10-22 A | 2026-10-25 A | 0% → 100% | -19.25d → none |
| WAD.S.5120 | install ceramic wall tiles | 2026-10-25 A | 2026-10-28 A | 0% → 100% | -19.8d → none |
| WAD.S.5530 | install two coats of acrylic paint on internal walls | 2026-10-26 A | 2026-10-28 → 2026-11-01 (+4d) | 0% → 60% | -19.8d → -22.8d |
| WAD.S.5540 | install two coats of acrylic paint (suitable for exterior use) on external | 2026-10-26 A | 2026-10-28 → 2026-11-01 (+4d) | 0% → 60% | -19.8d → -22.8d |
| WAD.S.4940 | install ceramic floor tiles | 2026-10-20 → 2026-10-27 (+7d) | 2026-10-24 → 2026-10-31 (+7d) |  | -19.8d → -25.8d |
| WAD.S.5010 | install granite saddles and thresholds | 2026-10-21 → 2026-10-27 (+6d) | 2026-10-25 → 2026-10-31 (+6d) |  | -20.25d → -25.8d |
| WAD.S.5040 | gypsum board suspended ceiling | 2026-10-20 → 2026-10-27 (+7d) | 2026-10-26 → 2026-11-02 (+7d) |  | -19.8d → -25.8d |
| 13 | **MECHANICAL WORKS** |  | 2026-11-01 → 2026-11-02 (+1d) |  |  |
| 2 | **MECHANICAL WORKS - Final Fix** |  | 2026-11-01 → 2026-11-02 (+1d) |  |  |
| WAD.S.5130 | installation of Fire extinguishers as per drawings, specifications |  | 2026-11-01 → 2026-11-02 (+1d) |  | -22.5d → -23.3d |
| WAD.S.5140 | gully traps with heavy duty cover |  | 2026-11-01 → 2026-11-02 (+1d) |  | -22.5d → -23.3d |
| WAD.S.5150 | chamber with heavy duty cover |  | 2026-11-01 → 2026-11-02 (+1d) |  | -22.5d → -23.3d |
| WAD.S.5160 | INSTALL PLUMBING FIXTURES |  | 2026-11-01 → 2026-11-02 (+1d) |  | -22.5d → -23.3d |
| WAD.S.5910 | HEATING, VENTILATION AND AIR CONDITIONING - Final Fix | 2026-10-28 → 2026-10-29 (+1d) | 2026-11-01 → 2026-11-02 (+1d) |  | -22.5d → -23.3d |
| WAD.S.5920 | Exhaust fans - Final Fix | 2026-10-28 → 2026-10-29 (+1d) | 2026-11-01 → 2026-11-02 (+1d) |  | -22.5d → -23.3d |
| WAD.S.5930 | Bulbblers and Spreyers of IRRIGATION SYSTEM | 2026-10-28 → 2026-10-29 (+1d) | 2026-11-01 → 2026-11-02 (+1d) |  | -22.5d → -23.3d |
| WAD.S.5980 | WATER SUPPLY SYSTEM - Final Fix | 2026-10-28 → 2026-10-29 (+1d) | 2026-11-01 → 2026-11-02 (+1d) |  | -22.5d → -23.3d |
| WAD.S.5990 | IRRIGATION SYSTEM - Final Fix | 2026-10-28 → 2026-10-29 (+1d) | 2026-11-01 → 2026-11-02 (+1d) |  | -22.5d → -23.3d |
| 15 | **ELECTRICAL WORKS** |  | 2026-11-01 → 2026-11-07 (+6d) |  |  |
| 2 | **ELECTRICAL WORKS - Final Fix** | 2026-10-27 → 2026-10-29 (+2d) | 2026-11-01 → 2026-11-07 (+6d) |  |  |
| WAD.S.5940 | power source with built-in photocell sensor for automatic electrical connection during day/light times - Final Fix | 2026-10-28 → 2026-10-29 (+1d) | 2026-11-01 → 2026-11-02 (+1d) |  | -22.5d → -23.3d |
| WAD.S.6140 | UNDERGROUND DISTRIBUTION SYSTEM - Final Fix | 2026-10-29 → 2026-10-31 (+2d) | 2026-11-01 → 2026-11-02 (+1d) |  | -22.5d → -23.3d |

| ID | Task | Start | Finish | Complete | Total float |
| --- | --- | --- | --- | --- | --- |
| WAD.S.5970 | 12-Port, SMF, Fiber Optic Patch Panels; | 2026-10-27 → 2026-10-31 (+4d) | 2026-11-01 → 2026-11-04 (+3d) |  | -22.5d → -25.8d |
| WAD.S.5950 | LIGHTING FIXTURES - Final Fix | 2026-10-28 → 2026-11-01 (+4d) | 2026-11-01 → 2026-11-04 (+3d) |  | -22.5d → -25.8d |
| WAD.S.5960 | GROUNDING - Final Fix | 2026-10-28 → 2026-11-01 (+4d) | 2026-11-01 → 2026-11-04 (+3d) |  | -22.5d → -25.8d |
| WAD.S.6160 | card reader IN/OUT - Final Fix | 2026-10-28 → 2026-11-01 (+4d) | 2026-11-01 → 2026-11-04 (+3d) |  | -22.5d → -25.8d |
| WAD.S.6170 | 12-Port CAT6A UTP fully loaded patch panel | 2026-10-28 → 2026-11-01 (+4d) | 2026-11-01 → 2026-11-04 (+3d) |  | -22.5d → -25.8d |
| WAD.S.6180 | COMPUTERS AND RELATED PERIPHERALS | 2026-10-28 → 2026-11-01 (+4d) | 2026-11-01 → 2026-11-04 (+3d) |  | -22.5d → -25.8d |
| WAD.S.6150 | installation of Wiring devices includes switches and Receptacle outlets complete with device boxes - Final Fix | 2026-10-29 → 2026-11-02 (+4d) | 2026-11-01 → 2026-11-04 (+3d) |  | -22.5d → -25.8d |
| WAD.S.6190 | VIDEO SURVEILLANCE | 2026-10-27 → 2026-11-02 (+6d) | 2026-11-01 → 2026-11-07 (+6d) |  | -22.5d → -27.8d |
| WAD.S.6200 | CCTV storage system, as specified; | 2026-10-27 → 2026-11-02 (+6d) | 2026-11-01 → 2026-11-07 (+6d) |  | -22.5d → -27.8d |
| WAD.S.6270 | Access control panel - Final Fix | 2026-10-29 → 2026-11-02 (+4d) | 2026-11-01 → 2026-11-04 (+3d) |  | -22.5d → -25.8d |
| WAD.S.6280 | Central (Headend) System Components; | 2026-10-28 → 2026-11-03 (+6d) | 2026-11-01 → 2026-11-07 (+6d) |  | -22.5d → -27.8d |
| WAD.S.6290 | VSS System, as specified; | 2026-10-28 → 2026-11-03 (+6d) | 2026-11-01 → 2026-11-07 (+6d) |  | -22.5d → -27.8d |
| WAD.S.6300 | CCTV cameras - Final Fix | 2026-10-28 → 2026-11-03 (+6d) | 2026-11-01 → 2026-11-07 (+6d) |  | -22.5d → -27.8d |
| WAD.S.6310 | ELECTRICAL GATE BARRIER | 2026-10-28 → 2026-11-03 (+6d) | 2026-11-01 → 2026-11-07 (+6d) |  | -22.5d → -27.8d |
| WAD.S.6320 | fire alarm system including wires, conduit and other materials - Final Fix | 2026-10-28 → 2026-11-03 (+6d) | 2026-11-01 → 2026-11-07 (+6d) |  | -22.5d → -27.8d |
| WAD.S.6330 | Analog addressable fire alarm control panel with battery | 2026-10-28 → 2026-11-03 (+6d) | 2026-11-01 → 2026-11-07 (+6d) |  | -22.5d → -27.8d |
| WAD.S.6340 | LIGHTING AND POWER TYPE PANELBOARDS - Final Fix | 2026-10-28 → 2026-11-03 (+6d) | 2026-11-01 → 2026-11-07 (+6d) |  | -22.5d → -27.8d |
| WAD.S.6420 | 20A , ATS ( Automatic transfer switch) for UPS | 2026-10-29 → 2026-11-04 (+6d) | 2026-11-01 → 2026-11-07 (+6d) |  | -22.5d → -27.8d |
| WAD.S.6430 | LIGHTNING PROTECTION | 2026-10-29 → 2026-11-04 (+6d) | 2026-11-01 → 2026-11-07 (+6d) |  | -22.5d → -27.8d |
| WAD.S.6440 | Intelligent Ionization / Photoelectric smoke and heat detector with base | 2026-10-29 → 2026-11-04 (+6d) | 2026-11-01 → 2026-11-07 (+6d) |  | -22.5d → -27.8d |
| 4 | **METALS** |  | 2026-10-28 → 2026-11-04 (+7d) |  |  |
| WAD.S.5510 | install of overflow galvanized steel roof scupper with gray color with angular secondary support | 2026-10-26 A | 2026-10-28 → 2026-11-03 (+6d) | 0% → 50% | -19.8d → -25.8d |
| WAD.S.5500 | folding & sliding mounter combination ladder for building maintenance purpose | 2026-10-26 → 2026-11-02 (+7d) | 2026-10-28 → 2026-11-04 (+7d) |  | -19.8d → -25.8d |
| WAD.S.5520 | install heavy steel cover with frame including all necessary fixings | 2026-10-26 → 2026-11-02 (+7d) | 2026-10-28 → 2026-11-04 (+7d) |  | -19.8d → -25.8d |
| 5 | **WOODS AND PLASTICS** | 2026-10-26 → 2026-11-02 (+7d) | 2026-10-29 → 2026-11-05 (+7d) |  |  |
| WAD.S.5890 | COUNTER DESK | 2026-10-26 → 2026-11-02 (+7d) | 2026-10-29 → 2026-11-05 (+7d) |  | -20.8d → -26.8d |
| WAD.S.5880 | PANTRY CABINET | 2026-10-27 → 2026-11-03 (+7d) | 2026-10-29 → 2026-11-05 (+7d) |  | -20.3d → -26.3d |
| 8 | **DOORS & WINDOWS** | 2026-10-25 → 2026-10-31 (+6d) | 2026-10-29 → 2026-11-05 (+7d) |  |  |
| WAD.S.5050 | install hollow metal door | 2026-10-25 → 2026-10-31 (+6d) | 2026-10-29 → 2026-11-04 (+6d) |  | -20.25d → -25.8d |
| WAD.S.6120 | Install aluminum framed double glazed windows | 2026-10-25 → 2026-10-31 (+6d) | 2026-10-28 → 2026-11-03 (+6d) |  | -19.25d → -24.8d |
| WAD.S.5900 | Install Aluminum Door | 2026-10-26 → 2026-11-02 (+7d) | 2026-10-29 → 2026-11-05 (+7d) |  | -20.8d → -26.8d |
| 10 | **SPECIALTIES** | 2026-10-28 → 2026-11-03 (+6d) | 2026-11-01 → 2026-11-07 (+6d) |  |  |
| WAD.S.6130 | TOILET ACCESSROIES | 2026-10-28 → 2026-11-03 (+6d) | 2026-10-31 → 2026-11-05 (+5d) |  | -21.5d → -26.8d |
| WAD.S.6410 | PANEL SIGNAGE | 2026-10-29 → 2026-11-04 (+6d) | 2026-11-01 → 2026-11-07 (+6d) |  | -22.5d → -27.8d |
| 11 | **FURNISHINGS** | 2026-10-31 → 2026-11-05 (+5d) | 2026-11-01 → 2026-11-07 (+6d) |  |  |
| WAD.S.6450 | Workstation chair | 2026-10-31 → 2026-11-05 (+5d) | 2026-11-01 → 2026-11-07 (+6d) |  | -22.5d → -27.8d |
| WAD.S.6460 | Workstation table | 2026-10-31 → 2026-11-05 (+5d) | 2026-11-01 → 2026-11-07 (+6d) |  | -22.5d → -27.8d |
| WAD.S.6470 | Roller blind | 2026-10-31 → 2026-11-05 (+5d) | 2026-11-01 → 2026-11-07 (+6d) |  | -22.5d → -27.8d |
| WAD.S.6480 | Waste Receptacle | 2026-10-31 → 2026-11-05 (+5d) | 2026-11-01 → 2026-11-07 (+6d) |  | -22.5d → -27.8d |
| 3 | **GUARD HOUSE 2** | 2026-06-08 → 2025-04-07 (-427d) | 2026-11-07 → 2026-11-05 (-2d) |  |  |
| 1 | **SITE WORKS** |  | 2026-10-26 → 2026-10-20 (-6d) |  |  |
| 5 | **Guard Rooms & Gates (CONCRETE Works)** |  | 2026-10-26 → 2026-10-20 (-6d) |  |  |
| WAD.S.3460 | Tanks Raft | 2026-10-06 A | 2026-10-11 A | 0% → 100% | -25.25d → none |
| WAD.S.3980 | Tanks Walls | 2026-10-12 A | 2026-10-17 → 2026-10-15 (-2d) | 0% → 65% | -25.25d → -20.5d |
| WAD.S.4890 | Tanks Slab | 2026-10-21 → 2026-10-15 (-6d) | 2026-10-26 → 2026-10-20 (-6d) |  | -17.25d → -12.5d |
| WAD.S.2930 | install Concrete Masonry Unit (CMU) for walls |  | 2026-10-06 A | 80% → 100% | -33.6d → none |
| 6 | **THERMAL & MOISTURE PROTECTION** |  | 2026-10-12 → 2026-10-14 (+2d) |  |  |
| 1 | **THERMAL & MOISTURE PROTECTION - Foundation** |  | 2026-10-12 → 2026-10-14 (+2d) |  |  |
| WAD.S.4100 | install geotextile sheet | 2026-10-10 A | 2026-10-12 A | 0% → 100% | -5.1d → none |
| WAD.S.3970 | install liquid applied waterproofing coating; single-component pitch modified polyurethane | 2026-10-07 → 2026-10-13 (+6d) | 2026-10-10 → 2026-10-14 (+4d) |  | -5.1d → -8d |
| 7 | **ROOFING SYSTEM** | 2026-10-18 → 2026-06-09 (-131d) |  |  |  |
| WAD.S.4320 | cast in place foam concrete screed, 50mm thick minimum; laid to fall and cross fall | 2026-10-18 → 2026-06-09 A (-131d) | 2026-10-31 → 2026-10-17 (-14d) | 0% → 75% | -33.6d → -18d |
| WAD.S.4290 | install liquid applied waterproofing coating single-component pitch modified polyurethane based elastomeric | 2026-10-18 → 2026-10-13 (-5d) | 2026-10-31 → 2026-10-25 (-6d) |  | -33.6d → -18d |
| WAD.S.4300 | install 4mm thick APP modified bituminous membrane - single layer | 2026-10-18 → 2026-10-13 (-5d) | 2026-10-31 → 2026-10-25 (-6d) |  | -33.6d → -18d |
| WAD.S.4310 | install 75mm thick rigid insulation (extruded polystyrene) | 2026-10-18 → 2026-10-13 (-5d) | 2026-10-31 → 2026-10-25 (-6d) |  | -33.6d → -18d |
| WAD.S.4330 | install 300 micron polyethylene sheet | 2026-10-18 → 2026-10-13 (-5d) | 2026-10-31 → 2026-10-25 (-6d) |  | -33.6d → -18d |
| WAD.S.4340 | install 50mm thick loose gravel toppings | 2026-10-18 → 2026-10-13 (-5d) | 2026-10-31 → 2026-10-25 (-6d) |  | -33.6d → -18d |
| WAD.S.4350 | install high density polyisocynurate cover board | 2026-10-18 → 2026-10-13 (-5d) | 2026-10-31 → 2026-10-25 (-6d) |  | -33.6d → -18d |
| WAD.S.4360 | install UV resistant geotextile sheet | 2026-10-18 → 2026-10-13 (-5d) | 2026-10-31 → 2026-10-25 (-6d) |  | -33.6d → -18d |
| WAD.S.4370 | fixing 3mm thick extruded aluminum flashing 40mm with sealant and all other accessories | 2026-10-18 → 2026-10-13 (-5d) | 2026-10-31 → 2026-10-25 (-6d) |  | -33.6d → -18d |
| WAD.S.4380 | install Terrazzo tiles | 2026-10-18 A | 2026-10-31 A | 0% → 100% | -33.6d → none |
| 2 | **THERMAL & MOISTURE PROTECTION - Tanks** |  | 2026-10-31 → 2026-10-22 (-9d) |  |  |
| WAD.S.4390 | lay epoxy 2 coating for inner surfaces for bottom of the roof | 2026-10-18 A | 2026-10-31 → 2026-10-21 (-10d) | 0% → 45% | -33.6d → -18d |
| WAD.S.4740 | install water stop for tanks according to the drawings and specification |  | 2026-10-21 → 2026-10-22 A (+1d) | 35% → 100% | -25.25d → none |
| 9 | **FINISHES** | 2026-10-06 → 2025-04-07 (-547d) |  |  |  |
| WAD.S.3100 | install concrete plastering | 2026-10-13 A → 2025-04-07 A (-554d) | 2026-10-10 → 2026-10-14 (+4d) | 20% → 65% | -33.6d → -18d |
| WAD.S.2240 | gypsum board suspended ceiling | 2026-10-06 → 2026-10-13 (+7d) | 2026-10-10 → 2026-10-17 (+7d) |  | -12d → -18d |
| WAD.S.2370 | install ceramic floor tiles | 2026-10-14 → 2026-10-13 (-1d) | 2026-10-17 → 2026-10-15 (-2d) |  | -10d → -9d |
| WAD.S.2380 | install granite flooring | 2026-10-14 → 2026-10-13 (-1d) | 2026-10-15 → 2026-10-14 (-1d) |  | -10d → -9d |
| WAD.S.2390 | install ceramic wall tiles | 2026-10-14 → 2026-10-13 (-1d) | 2026-10-17 → 2026-10-15 (-2d) |  | -10d → -9d |

| ID | Task | Start | Finish | Complete | Total float |
| --- | --- | --- | --- | --- | --- |
| WAD.S.2520 | install two coats of acrylic paint on internal walls | 2026-10-15 → 2026-10-14 (-1d) | 2026-10-17 → 2026-10-15 (-2d) |  | -10d → -9d |
| WAD.S.2530 | install two coats of acrylic paint (suitable for exterior use) on external | 2026-10-15 → 2026-10-14 (-1d) | 2026-10-17 → 2026-10-15 (-2d) |  | -10d → -9d |
| WAD.S.4860 | install granite saddles and thresholds | 2026-10-21 → 2026-10-15 (-6d) | 2026-10-25 → 2026-10-19 (-6d) |  | -25.25d → -20.5d |
| WAD.S.4870 | install Riyadh stone cladding | 2026-10-21 A | 2026-10-25 A | 0% → 100% | -25.25d → none |
| WAD.S.4880 | install 3mm steel CNC laser cut panels | 2026-10-21 A | 2026-10-25 A | 0% → 100% | -25.25d → none |
| WAD.S.4960 | install aluminum cladding | 2026-10-22 A | 2026-10-25 A | 0% → 100% | -25.25d → none |
| 13 | **MECHANICAL WORKS** |  | 2026-11-07 → 2026-11-05 (-2d) |  |  |
| WAD.S.1830 | WATER SUPPLY SYSTEM - 1st Fix |  | 2026-10-15 → 2026-10-11 A (-4d) | 15% → 100% | -19d → none |
| WAD.S.1840 | SEWER AND DRAINAGE SYSTEM - 1st Fix |  | 2026-10-15 A | 15% → 100% | -19d → none |
| WAD.S.1850 | IRRIGATION SYSTEM - 1st Fix |  | 2026-10-15 A | 15% → 100% | -19d → none |
| WAD.S.1880 | HEATING, VENTILATION AND AIR CONDITIONING - 1st Fix |  | 2026-10-15 A | 15% → 100% | -19d → none |
| WAD.S.1890 | Exhaust fans - 1st Fix |  | 2026-10-15 A | 15% → 100% | -19d → none |
| 2 | **MECHANICAL WORKS - Final Fix** | 2026-11-03 → 2026-10-19 (-15d) | 2026-11-07 → 2026-11-05 (-2d) |  |  |
| WAD.S.5560 | installation of Fire extinguishers as per drawings, specifications | 2026-11-03 → 2026-10-19 (-15d) | 2026-11-07 → 2026-10-22 (-16d) |  | -33.6d → -20.5d |
| WAD.S.5570 | gully traps with heavy duty cover | 2026-11-03 → 2026-10-19 (-15d) | 2026-11-07 → 2026-10-22 (-16d) |  | -33.6d → -20.5d |
| WAD.S.5580 | chamber with heavy duty cover | 2026-11-03 → 2026-10-19 (-15d) | 2026-11-07 → 2026-10-22 (-16d) |  | -33.6d → -20.5d |
| WAD.S.5590 | INSTALL PLUMBING FIXTURES | 2026-11-03 → 2026-11-02 (-1d) | 2026-11-07 → 2026-11-05 (-2d) |  | -33.6d → -32.3d |
| WAD.S.5600 | HEATING, VENTILATION AND AIR CONDITIONING - Final Fix | 2026-11-03 → 2026-11-02 (-1d) | 2026-11-07 → 2026-11-05 (-2d) |  | -33.6d → -32.3d |
| WAD.S.5610 | Exhaust fans - Final Fix | 2026-11-03 → 2026-11-02 (-1d) | 2026-11-07 → 2026-11-05 (-2d) |  | -33.6d → -32.3d |
| WAD.S.5620 | Bulbblers and Spreyers of IRRIGATION SYSTEM | 2026-11-03 → 2026-11-02 (-1d) | 2026-11-07 → 2026-11-05 (-2d) |  | -33.6d → -32.3d |
| WAD.S.5750 | WATER SUPPLY SYSTEM - Final Fix | 2026-11-03 → 2026-11-02 (-1d) | 2026-11-07 → 2026-11-05 (-2d) |  | -33.6d → -32.3d |
| WAD.S.5760 | IRRIGATION SYSTEM - Final Fix | 2026-11-03 → 2026-11-02 (-1d) | 2026-11-07 → 2026-11-05 (-2d) |  | -27.6d → -26.3d |
| 15 | **ELECTRICAL WORKS** |  | 2026-11-07 → 2026-11-05 (-2d) |  |  |
| WAD.S.1860 | LIGHTING AND POWER TYPE PANELBOARDS - 1st Fix | 2026-10-06 A | 2026-10-17 A | 0% → 100% | -19d → none |
| WAD.S.1870 | UPS 3KVA (installed inside the rack) - 1st Fix | 2026-10-06 A | 2026-10-17 A | 0% → 100% | -19d → none |
| WAD.S.1900 | power source with built-in photocell sensor for automatic electrical connection during day/light times - 1st Fix | 2026-10-06 A | 2026-10-17 A | 0% → 100% | -19d → none |
| WAD.S.1910 | UNDERGROUND DISTRIBUTION SYSTEM - 1st Fix | 2026-10-06 A | 2026-10-17 A | 0% → 100% | -19d → none |
| WAD.S.1920 | LIGHTING FIXTURES - 1st Fix | 2026-10-06 A | 2026-10-17 A | 0% → 100% | -19d → none |
| WAD.S.1930 | installation of Wiring devices includes switches and Receptacle outlets complete with device boxes - 1st Fix | 2026-10-06 A | 2026-10-17 A | 0% → 100% | -19d → none |
| WAD.S.1940 | GROUNDING - 1st Fix | 2026-10-06 A | 2026-10-17 A | 0% → 100% | -19d → none |
| WAD.S.1950 | card reader IN/OUT - 1st Fix | 2026-10-06 A | 2026-10-17 A | 0% → 100% | -19d → none |
| WAD.S.1960 | CCTV cameras - 1st Fix | 2026-10-06 A | 2026-10-17 A | 0% → 100% | -19d → none |
| WAD.S.1970 | Access control panel - 1st Fix | 2026-10-06 A | 2026-10-17 A | 0% → 100% | -19d → none |
| WAD.S.1980 | fire alarm system including wires, conduit and other materials - 1st Fix | 2026-10-06 A | 2026-10-17 A | 0% → 100% | -19d → none |
| 2 | **ELECTRICAL WORKS - Final Fix** | 2026-11-02 → 2026-11-01 (-1d) | 2026-11-07 → 2026-11-05 (-2d) |  |  |
| WAD.S.5170 | 12-Port, SMF, Fiber Optic Patch Panels; | 2026-11-02 → 2026-11-01 (-1d) | 2026-11-07 → 2026-11-05 (-2d) |  | -33.6d → -32.3d |
| WAD.S.5180 | VIDEO SURVEILLANCE | 2026-11-02 → 2026-11-01 (-1d) | 2026-11-07 → 2026-11-05 (-2d) |  | -33.6d → -32.3d |
| WAD.S.5190 | CCTV storage system, as specified; | 2026-11-02 → 2026-11-01 (-1d) | 2026-11-07 → 2026-11-05 (-2d) |  | -33.6d → -32.3d |
| WAD.S.5630 | power source with built-in photocell sensor for automatic electrical connection during day/light times - Final Fix | 2026-11-03 → 2026-11-02 (-1d) | 2026-11-07 → 2026-11-05 (-2d) |  | -33.6d → -32.3d |
| WAD.S.5640 | LIGHTING FIXTURES - Final Fix | 2026-11-03 → 2026-11-02 (-1d) | 2026-11-07 → 2026-11-05 (-2d) |  | -33.6d → -32.3d |
| WAD.S.5650 | GROUNDING - Final Fix | 2026-11-03 → 2026-11-02 (-1d) | 2026-11-07 → 2026-11-05 (-2d) |  | -33.6d → -32.3d |
| WAD.S.5660 | card reader IN/OUT - Final Fix | 2026-11-03 → 2026-11-02 (-1d) | 2026-11-07 → 2026-11-05 (-2d) |  | -33.6d → -32.3d |
| WAD.S.5670 | 12-Port CAT6A UTP fully loaded patch panel | 2026-11-03 → 2026-11-02 (-1d) | 2026-11-07 → 2026-11-05 (-2d) |  | -33.6d → -32.3d |
| WAD.S.5680 | COMPUTERS AND RELATED PERIPHERALS | 2026-11-03 → 2026-11-02 (-1d) | 2026-11-07 → 2026-11-05 (-2d) |  | -33.6d → -32.3d |
| WAD.S.5690 | Central (Headend) System Components; | 2026-11-03 → 2026-11-02 (-1d) | 2026-11-07 → 2026-11-05 (-2d) |  | -33.6d → -32.3d |
| WAD.S.5700 | VSS System, as specified; | 2026-11-03 → 2026-11-02 (-1d) | 2026-11-07 → 2026-11-05 (-2d) |  | -33.6d → -32.3d |
| WAD.S.5710 | CCTV cameras - Final Fix | 2026-11-03 → 2026-11-02 (-1d) | 2026-11-07 → 2026-11-05 (-2d) |  | -33.6d → -32.3d |
| WAD.S.5720 | ELECTRICAL GATE BARRIER | 2026-11-03 → 2026-11-02 (-1d) | 2026-11-07 → 2026-11-05 (-2d) |  | -33.6d → -32.3d |
| WAD.S.5730 | fire alarm system including wires, conduit and other materials - Final Fix | 2026-11-03 → 2026-11-02 (-1d) | 2026-11-07 → 2026-11-05 (-2d) |  | -33.6d → -32.3d |
| WAD.S.5740 | Analog addressable fire alarm control panel with battery | 2026-11-03 → 2026-11-02 (-1d) | 2026-11-07 → 2026-11-05 (-2d) |  | -33.6d → -32.3d |
| WAD.S.5770 | LIGHTING AND POWER TYPE PANELBOARDS - Final Fix | 2026-11-03 → 2026-11-02 (-1d) | 2026-11-07 → 2026-11-05 (-2d) |  | -27.6d → -26.3d |
| WAD.S.6010 | UNDERGROUND DISTRIBUTION SYSTEM - Final Fix | 2026-11-04 → 2026-11-03 (-1d) | 2026-11-07 → 2026-11-05 (-2d) |  | -33.6d → -32.3d |
| WAD.S.6020 | installation of Wiring devices includes switches and Receptacle outlets complete with device boxes - Final Fix | 2026-11-04 → 2026-11-03 (-1d) | 2026-11-07 → 2026-11-05 (-2d) |  | -33.6d → -32.3d |
| WAD.S.6030 | Access control panel - Final Fix | 2026-11-04 → 2026-11-03 (-1d) | 2026-11-07 → 2026-11-05 (-2d) |  | -33.6d → -32.3d |
| WAD.S.6040 | 20A , ATS ( Automatic transfer switch) for UPS | 2026-11-04 → 2026-11-03 (-1d) | 2026-11-07 → 2026-11-05 (-2d) |  | -33.6d → -32.3d |
| WAD.S.6050 | LIGHTNING PROTECTION | 2026-11-04 → 2026-11-03 (-1d) | 2026-11-07 → 2026-11-05 (-2d) |  | -33.6d → -32.3d |
| WAD.S.6060 | Intelligent Ionization / Photoelectric smoke and heat detector with base | 2026-11-04 → 2026-11-03 (-1d) | 2026-11-07 → 2026-11-05 (-2d) |  | -33.6d → -32.3d |
| 4 | **METALS** |  | 2026-10-12 → 2026-10-19 (+7d) |  |  |
| WAD.S.2490 | install of overflow galvanized steel roof scupper with gray color with angular secondary support | 2026-10-11 A | 2026-10-12 → 2026-10-18 (+6d) | 0% → 65% | -12d → -18d |
| WAD.S.2480 | folding & sliding mounter combination ladder for building maintenance purpose | 2026-10-11 → 2026-10-18 (+7d) | 2026-10-12 → 2026-10-19 (+7d) |  | -12d → -18d |
| WAD.S.2500 | install heavy steel cover with frame including all necessary fixings | 2026-10-11 → 2026-10-18 (+7d) | 2026-10-12 → 2026-10-19 (+7d) |  | -12d → -18d |
| 5 | **WOODS AND PLASTICS** | 2026-10-10 → 2026-10-17 (+7d) | 2026-10-12 → 2026-10-19 (+7d) |  |  |
| WAD.S.2350 | COUNTER DESK | 2026-10-10 → 2026-10-17 (+7d) | 2026-10-12 → 2026-10-19 (+7d) |  | -12d → -18d |
| WAD.S.2510 | PANTRY CABINET | 2026-10-11 → 2026-10-18 (+7d) | 2026-10-12 → 2026-10-19 (+7d) |  | -12d → -18d |
| 8 | **DOORS & WINDOWS** | 2026-10-10 → 2026-10-17 (+7d) | 2026-10-14 → 2026-10-21 (+7d) |  |  |
| WAD.S.2360 | Install Aluminum Door | 2026-10-10 → 2026-10-17 (+7d) | 2026-10-12 → 2026-10-19 (+7d) |  | -12d → -18d |
| WAD.S.2200 | install hollow metal door | 2026-10-11 → 2026-10-18 (+7d) | 2026-10-14 → 2026-10-21 (+7d) |  | -11d → -17d |
| WAD.S.2210 | Install aluminum framed double glazed windows | 2026-10-11 → 2026-10-18 (+7d) | 2026-10-13 → 2026-10-20 (+7d) |  | -11d → -17d |
| 10 | **SPECIALTIES** | 2026-11-03 → 2026-11-02 (-1d) | 2026-11-07 → 2026-11-05 (-2d) |  |  |
| WAD.S.5550 | TOILET ACCESSROIES | 2026-11-03 → 2026-11-02 (-1d) | 2026-11-05 → 2026-11-04 (-1d) |  | -32.6d → -31.3d |

| ID | Task | Start | Finish | Complete | Total float |
| --- | --- | --- | --- | --- | --- |
| WAD.S.6000 | PANEL SIGNAGE | 2026-11-04 → 2026-11-03 (-1d) | 2026-11-07 → 2026-11-05 (-2d) |  | -33.6d → -32.3d |
| 11 | **FURNISHINGS** | 2026-11-05 → 2026-11-04 (-1d) | 2026-11-07 → 2026-11-05 (-2d) |  |  |
| WAD.S.6210 | Workstation chair | 2026-11-05 → 2026-11-04 (-1d) | 2026-11-07 → 2026-11-05 (-2d) |  | -33.6d → -32.3d |
| WAD.S.6220 | Workstation table | 2026-11-05 → 2026-11-04 (-1d) | 2026-11-07 → 2026-11-05 (-2d) |  | -33.6d → -32.3d |
| WAD.S.6230 | Roller blind | 2026-11-05 → 2026-11-04 (-1d) | 2026-11-07 → 2026-11-05 (-2d) |  | -33.6d → -32.3d |
| WAD.S.6240 | Waste Receptacle | 2026-11-05 → 2026-11-04 (-1d) | 2026-11-07 → 2026-11-05 (-2d) |  | -33.6d → -32.3d |
| 1 | **SITE WORKS** |  | 2026-10-26 → 2026-10-25 (-1d) |  |  |
| 5 | **Guard Rooms & Gates (CONCRETE Works)** |  | 2026-10-26 → 2026-10-25 (-1d) |  |  |
| WAD.S.7520 | Tanks Raft | 2026-10-06 A | 2026-10-11 A | 0% → 100% | -25.25d → none |
| WAD.S.7530 | Tanks Walls | 2026-10-12 A | 2026-10-17 → 2026-10-15 (-2d) | 0% → 65% | -25.25d → -20.5d |
| WAD.S.7540 | Tanks Slab |  | 2026-10-26 → 2026-10-25 (-1d) |  | -17.25d → -17d |
| 6 | **THERMAL & MOISTURE PROTECTION** |  | 2026-10-10 → 2026-10-13 (+3d) |  |  |
| 1 | **THERMAL & MOISTURE PROTECTION - Foundation** |  | 2026-10-10 → 2026-10-13 (+3d) |  |  |
| WAD.S.6580 | install liquid applied waterproofing coating; single-component pitch modified polyurethane | 2026-10-06 A | 2026-10-07 → 2026-10-13 (+6d) | 0% → 65% | -4d → -7d |
| WAD.S.6590 | install geotextile sheet | 2026-10-08 A | 2026-10-10 A | 0% → 100% | -4d → none |
| 7 | **ROOFING SYSTEM** |  | 2026-10-29 → 2026-11-04 (+6d) |  |  |
| WAD.S.6630 | cast in place foam concrete screed, 50mm thick minimum; laid to fall and cross fall | 2026-10-18 A | 2026-10-29 → 2026-10-26 (-3d) | 0% → 75% | -33d → -26.5d |
| WAD.S.6690 | install Terrazzo tiles | 2026-10-18 A | 2026-10-29 A | 0% → 100% | -33d → none |
| WAD.S.6570 | install liquid applied waterproofing coating single-component pitch modified polyurethane based elastomeric | 2026-10-18 → 2026-10-22 (+4d) | 2026-10-29 → 2026-11-04 (+6d) |  | -33d → -26.5d |
| WAD.S.6610 | install 4mm thick APP modified bituminous membrane - single layer | 2026-10-18 → 2026-10-22 (+4d) | 2026-10-29 → 2026-11-04 (+6d) |  | -33d → -26.5d |
| WAD.S.6620 | install 75mm thick rigid insulation (extruded polystyrene) | 2026-10-18 → 2026-10-22 (+4d) | 2026-10-29 → 2026-11-04 (+6d) |  | -33d → -26.5d |
| WAD.S.6640 | install 300 micron polyethylene sheet | 2026-10-18 → 2026-10-22 (+4d) | 2026-10-29 → 2026-11-04 (+6d) |  | -33d → -26.5d |
| WAD.S.6650 | install 50mm thick loose gravel toppings | 2026-10-18 → 2026-10-22 (+4d) | 2026-10-29 → 2026-11-04 (+6d) |  | -33d → -26.5d |
| WAD.S.6660 | install high density polyisocynurate cover board | 2026-10-18 → 2026-10-22 (+4d) | 2026-10-29 → 2026-11-04 (+6d) |  | -33d → -26.5d |
| WAD.S.6670 | install UV resistant geotextile sheet | 2026-10-18 → 2026-10-22 (+4d) | 2026-10-29 → 2026-11-04 (+6d) |  | -33d → -26.5d |
| WAD.S.6680 | fixing 3mm thick extruded aluminum flashing 40mm with sealant and all other accessories | 2026-10-18 → 2026-10-22 (+4d) | 2026-10-29 → 2026-11-04 (+6d) |  | -33d → -26.5d |
| 2 | **THERMAL & MOISTURE PROTECTION - Tanks** |  | 2026-10-26 → 2026-10-31 (+5d) |  |  |
| WAD.S.6600 | install water stop for tanks according to the drawings and specification |  | 2026-10-21 → 2026-10-22 A (+1d) | 35% → 100% | -25.25d → none |
| WAD.S.7370 | lay epoxy 2 coating for inner surfaces for bottom of the roof |  | 2026-10-26 → 2026-10-31 (+5d) |  | -33d → -26.5d |
| WAD.S.6740 | install granite flooring | 2026-10-06 A | 2026-10-07 A | 0% → 100% | -49d → none |
| WAD.S.6770 | install ceramic wall tiles | 2026-10-06 A | 2026-10-08 A | 0% → 100% | -49d → none |
| WAD.S.6780 | install two coats of acrylic paint on internal walls | 2026-10-07 A | 2026-10-08 → 2026-10-13 (+5d) | 0% → 65% | -49d → -53d |
| WAD.S.6790 | install two coats of acrylic paint (suitable for exterior use) on external | 2026-10-07 A | 2026-10-08 → 2026-10-13 (+5d) | 0% → 65% | -49d → -53d |
| WAD.S.6760 | install concrete plastering |  | 2026-10-06 → 2026-10-11 A (+5d) | 90% → 100% | -33d → none |
| WAD.S.6730 | install ceramic floor tiles | 2026-10-06 → 2026-10-13 (+7d) | 2026-10-08 → 2026-10-15 (+7d) |  | -49d → -52d |
| WAD.S.6830 | gypsum board suspended ceiling | 2026-10-06 → 2026-10-13 (+7d) | 2026-10-10 → 2026-10-17 (+7d) |  | -15d → -21d |
| WAD.S.6750 | install granite saddles and thresholds | 2026-10-21 → 2026-10-15 (-6d) | 2026-10-25 → 2026-10-19 (-6d) |  | -25.25d → -20.5d |
| WAD.S.6800 | install Riyadh stone cladding | 2026-10-21 A | 2026-10-25 A | 0% → 100% | -25.25d → none |
| WAD.S.6820 | install 3mm steel CNC laser cut panels | 2026-10-21 A | 2026-10-25 A | 0% → 100% | -25.25d → none |
| WAD.S.6810 | install aluminum cladding | 2026-10-22 A | 2026-10-25 A | 0% → 100% | -25.25d → none |
| 2 | **MECHANICAL WORKS - Final Fix** | 2026-11-03 → 2026-10-26 (-8d) |  |  |  |
| WAD.S.6900 | installation of Fire extinguishers as per drawings, specifications | 2026-11-03 → 2026-10-26 (-8d) | 2026-11-05 → 2026-10-29 (-7d) |  | -33d → -26.5d |
| WAD.S.6930 | gully traps with heavy duty cover | 2026-11-03 → 2026-10-26 (-8d) | 2026-11-05 → 2026-10-29 (-7d) |  | -33d → -26.5d |
| WAD.S.6940 | chamber with heavy duty cover | 2026-11-03 → 2026-10-26 (-8d) | 2026-11-05 → 2026-10-29 (-7d) |  | -33d → -26.5d |
| WAD.S.6950 | INSTALL PLUMBING FIXTURES | 2026-11-03 → 2026-11-02 (-1d) |  |  | -33d → -32.3d |
| WAD.S.6970 | Exhaust fans - Final Fix | 2026-11-03 → 2026-11-02 (-1d) |  |  | -33d → -32.3d |
| WAD.S.6990 | Bulbblers and Spreyers of IRRIGATION SYSTEM | 2026-11-03 → 2026-11-02 (-1d) |  |  | -33d → -32.3d |
| WAD.S.7230 | WATER SUPPLY SYSTEM - Final Fix | 2026-11-03 → 2026-11-02 (-1d) |  |  | -33d → -32.3d |
| WAD.S.7240 | IRRIGATION SYSTEM - Final Fix | 2026-11-03 → 2026-11-02 (-1d) |  |  | -27d → -26.3d |
| WAD.S.6960 | HEATING, VENTILATION AND AIR CONDITIONING - Final Fix | 2026-11-03 A |  | 0% → 35% | -33d → -32.3d |
| 2 | **ELECTRICAL WORKS - Final Fix** | 2026-11-02 → 2026-11-01 (-1d) |  |  |  |
| WAD.S.7100 | 12-Port, SMF, Fiber Optic Patch Panels; | 2026-11-02 → 2026-11-01 (-1d) |  |  | -33d → -32.3d |
| WAD.S.7120 | VIDEO SURVEILLANCE | 2026-11-02 → 2026-11-01 (-1d) |  |  | -33d → -32.3d |
| WAD.S.7150 | CCTV storage system, as specified; | 2026-11-02 → 2026-11-01 (-1d) |  |  | -33d → -32.3d |
| WAD.S.7020 | power source with built-in photocell sensor for automatic electrical connection during day/light times - Final Fix | 2026-11-03 → 2026-11-02 (-1d) |  |  | -33d → -32.3d |
| WAD.S.7040 | LIGHTING FIXTURES - Final Fix | 2026-11-03 → 2026-11-02 (-1d) |  |  | -33d → -32.3d |
| WAD.S.7060 | GROUNDING - Final Fix | 2026-11-03 → 2026-11-02 (-1d) |  |  | -33d → -32.3d |
| WAD.S.7070 | card reader IN/OUT - Final Fix | 2026-11-03 → 2026-11-02 (-1d) |  |  | -33d → -32.3d |
| WAD.S.7090 | 12-Port CAT6A UTP fully loaded patch panel | 2026-11-03 → 2026-11-02 (-1d) |  |  | -33d → -32.3d |
| WAD.S.7110 | COMPUTERS AND RELATED PERIPHERALS | 2026-11-03 → 2026-11-02 (-1d) |  |  | -33d → -32.3d |
| WAD.S.7130 | Central (Headend) System Components; | 2026-11-03 → 2026-11-02 (-1d) |  |  | -33d → -32.3d |
| WAD.S.7140 | VSS System, as specified; | 2026-11-03 → 2026-11-02 (-1d) |  |  | -33d → -32.3d |
| WAD.S.7160 | CCTV cameras - Final Fix | 2026-11-03 → 2026-11-02 (-1d) |  |  | -33d → -32.3d |
| WAD.S.7180 | ELECTRICAL GATE BARRIER | 2026-11-03 → 2026-11-02 (-1d) |  |  | -33d → -32.3d |
| WAD.S.7200 | fire alarm system including wires, conduit and other materials - Final Fix | 2026-11-03 → 2026-11-02 (-1d) |  |  | -33d → -32.3d |
| WAD.S.7210 | Analog addressable fire alarm control panel with battery | 2026-11-03 → 2026-11-02 (-1d) |  |  | -33d → -32.3d |
| WAD.S.7250 | LIGHTING AND POWER TYPE PANELBOARDS - Final Fix | 2026-11-03 → 2026-11-02 (-1d) |  |  | -27d → -26.3d |
| WAD.S.7030 | UNDERGROUND DISTRIBUTION SYSTEM - Final Fix | 2026-11-04 → 2026-11-03 (-1d) |  |  | -33d → -32.3d |
| WAD.S.7050 | installation of Wiring devices includes switches and Receptacle outlets complete with device boxes - Final Fix | 2026-11-04 → 2026-11-03 (-1d) |  |  | -33d → -32.3d |
| WAD.S.7080 | Access control panel - Final Fix | 2026-11-04 → 2026-11-03 (-1d) |  |  | -33d → -32.3d |

| ID | Task | Start | Finish | Complete | Total float |
| --- | --- | --- | --- | --- | --- |
| WAD.S.7170 | 20A , ATS ( Automatic transfer switch) for UPS | 2026-11-04 → 2026-11-03 (-1d) |  |  | -33d → -32.3d |
| WAD.S.7190 | LIGHTNING PROTECTION | 2026-11-04 → 2026-11-03 (-1d) |  |  | -33d → -32.3d |
| WAD.S.7220 | Intelligent Ionization / Photoelectric smoke and heat detector with base | 2026-11-04 → 2026-11-03 (-1d) |  |  | -33d → -32.3d |
| 4 | **METALS** |  | 2026-10-12 → 2026-10-19 (+7d) |  |  |
| WAD.S.6520 | install of overflow galvanized steel roof scupper with gray color with angular secondary support | 2026-10-11 A | 2026-10-12 → 2026-10-18 (+6d) | 0% → 60% | -15d → -21d |
| WAD.S.6510 | folding & sliding mounter combination ladder for building maintenance purpose | 2026-10-11 → 2026-10-18 (+7d) | 2026-10-12 → 2026-10-19 (+7d) |  | -15d → -21d |
| WAD.S.6530 | install heavy steel cover with frame including all necessary fixings | 2026-10-11 → 2026-10-18 (+7d) | 2026-10-12 → 2026-10-19 (+7d) |  | -15d → -21d |
| 5 | **WOODS AND PLASTICS** | 2026-10-10 → 2026-10-17 (+7d) | 2026-10-12 → 2026-10-19 (+7d) |  |  |
| WAD.S.6550 | COUNTER DESK | 2026-10-10 → 2026-10-17 (+7d) | 2026-10-12 → 2026-10-19 (+7d) |  | -12d → -18d |
| WAD.S.6540 | PANTRY CABINET | 2026-10-11 → 2026-10-18 (+7d) | 2026-10-12 → 2026-10-19 (+7d) |  | -15d → -21d |
| 8 | **DOORS & WINDOWS** | 2026-10-10 → 2026-10-17 (+7d) | 2026-10-14 → 2026-10-21 (+7d) |  |  |
| WAD.S.6700 | Install Aluminum Door | 2026-10-10 → 2026-10-17 (+7d) | 2026-10-12 → 2026-10-19 (+7d) |  | -12d → -18d |
| WAD.S.6710 | install hollow metal door | 2026-10-11 → 2026-10-18 (+7d) | 2026-10-14 → 2026-10-21 (+7d) |  | -15d → -21d |
| WAD.S.6720 | Install aluminum framed double glazed windows | 2026-10-11 → 2026-10-18 (+7d) | 2026-10-13 → 2026-10-20 (+7d) |  | -15d → -21d |
| 10 | **SPECIALTIES** | 2026-11-03 → 2026-11-02 (-1d) |  |  |  |
| WAD.S.6840 | TOILET ACCESSROIES | 2026-11-03 → 2026-11-02 (-1d) |  |  | -32d → -31.3d |
| WAD.S.6850 | PANEL SIGNAGE | 2026-11-04 → 2026-11-03 (-1d) |  |  | -33d → -32.3d |
| 11 | **FURNISHINGS** | 2026-11-05 → 2026-11-04 (-1d) |  |  |  |
| WAD.S.6860 | Workstation chair | 2026-11-05 → 2026-11-04 (-1d) |  |  | -33d → -32.3d |
| WAD.S.6870 | Workstation table | 2026-11-05 → 2026-11-04 (-1d) |  |  | -33d → -32.3d |
| WAD.S.6880 | Roller blind | 2026-11-05 → 2026-11-04 (-1d) |  |  | -33d → -32.3d |
| WAD.S.6890 | Waste Receptacle | 2026-11-05 → 2026-11-04 (-1d) |  |  | -33d → -32.3d |
| 4 | **EXT. WORKS** | 2026-10-10 → 2026-10-14 (+4d) | 2026-11-23 → 2026-11-28 (+5d) |  |  |
| 1 | **EXTERNAL WORKS** | 2026-10-10 → 2026-10-14 (+4d) | 2026-11-23 → 2026-11-28 (+5d) |  |  |
| WAD.S.1100 | Excavation Works | 2026-10-10 → 2026-10-14 (+4d) | 2026-10-26 → 2026-10-31 (+5d) |  | -49d → -53d |
| WAD.S.1290 | 40 mm Pipes | 2026-10-27 → 2026-11-01 (+5d) | 2026-11-09 → 2026-11-14 (+5d) |  | -49d → -53d |
| WAD.S.3270 | GRP Pipes laid in trenches | 2026-10-27 → 2026-11-01 (+5d) | 2026-11-09 → 2026-11-14 (+5d) |  | -49d → -53d |
| WAD.S.4020 | install 100 mm GRP pipe service connections between building sewage inspection chamber and main wastewater line | 2026-11-01 → 2026-11-05 (+4d) | 2026-11-09 → 2026-11-14 (+5d) |  | -44d → -48d |
| WAD.S.4030 | Manhole depth not exceeding 4.0m | 2026-11-01 → 2026-11-05 (+4d) | 2026-11-09 → 2026-11-14 (+5d) |  | -30d → -34d |
| WAD.S.3880 | 100 mm Pipe in trench not exceeding 2.00 m depth to invert | 2026-11-02 → 2026-11-07 (+5d) | 2026-11-09 → 2026-11-14 (+5d) |  | -49d → -53d |
| WAD.S.4800 | Backfilling Works | 2026-11-10 → 2026-11-15 (+5d) | 2026-11-15 → 2026-11-19 (+4d) |  | -49d → -53d |
| WAD.S.4980 | SIDEWALKS AND CURBS | 2026-11-16 → 2026-11-21 (+5d) | 2026-11-23 → 2026-11-28 (+5d) |  | -49d → -53d |
| WAD.S.4990 | ROAD WORKS | 2026-11-16 → 2026-11-21 (+5d) | 2026-11-23 → 2026-11-28 (+5d) |  | -48d → -52d |
| WAD.S.5000 | install flag pole 6 M height | 2026-11-16 → 2026-11-21 (+5d) | 2026-11-21 → 2026-11-25 (+4d) |  | -49d → -53d |
| 4 | **Testing & Commissioning** | 2026-11-22 → 2026-11-26 (+4d) | 2026-12-01 → 2026-12-06 (+5d) |  |  |
| WAD.S.5440 | Testing & Commissioning - Electrical Systems | 2026-11-22 → 2026-11-26 (+4d) | 2026-12-01 → 2026-12-06 (+5d) |  | -49d → -53d |
| WAD.S.5490 | Testing & Commissioning - Mechanical Systems | 2026-11-22 → 2026-11-26 (+4d) | 2026-12-01 → 2026-12-06 (+5d) |  | -49d → -53d |
| 1 | **Engineering** | 2026-11-22 → 2026-11-26 (+4d) | 2026-12-01 → 2026-12-06 (+5d) |  |  |
| 1 | **As-Built Drawings** | 2026-11-22 → 2026-11-26 (+4d) | 2026-11-30 → 2026-12-05 (+5d) |  |  |
| WAD.S.5430 | Prepare & Submit | 2026-11-22 → 2026-11-26 (+4d) | 2026-11-25 → 2026-11-30 (+5d) |  | -49d → -53d |
| WAD.S.6260 | Review & Approve | 2026-11-24 → 2026-11-29 (+5d) | 2026-11-30 → 2026-12-05 (+5d) |  | -48d → -52d |
| 2 | **Operational Spares** | 2026-11-22 → 2026-11-26 (+4d) | 2026-12-01 → 2026-12-06 (+5d) |  |  |
| WAD.S.5450 | Prepare & Submit | 2026-11-22 → 2026-11-26 (+4d) | 2026-11-25 → 2026-11-30 (+5d) |  | -49d → -53d |
| WAD.S.6350 | Inspection | 2026-11-26 → 2026-12-01 (+5d) | 2026-12-01 → 2026-12-06 (+5d) |  | -49d → -53d |
| WAD.S.6370 | Acceptance | 2026-11-26 → 2026-12-01 (+5d) | 2026-12-01 → 2026-12-06 (+5d) |  | -49d → -53d |
| 3 | **Warranties and Guarantees** | 2026-11-22 → 2026-11-26 (+4d) | 2026-12-01 → 2026-12-06 (+5d) |  |  |
| WAD.S.5460 | Prepare & Submit | 2026-11-22 → 2026-11-26 (+4d) | 2026-11-25 → 2026-11-30 (+5d) |  | -49d → -53d |
| WAD.S.6360 | Review & Approve | 2026-11-26 → 2026-12-01 (+5d) | 2026-12-01 → 2026-12-06 (+5d) |  | -49d → -53d |
| 2 | **Training and Manuals** | 2026-11-22 → 2026-11-26 (+4d) | 2026-12-01 → 2026-12-06 (+5d) |  |  |
| 1 | **Training** | 2026-11-22 → 2026-11-26 (+4d) | 2026-12-01 → 2026-12-06 (+5d) |  |  |
| WAD.S.5470 | Prepare & Submit | 2026-11-22 → 2026-11-26 (+4d) | 2026-11-25 → 2026-11-30 (+5d) |  | -49d → -53d |
| WAD.S.6380 | Review & Approve | 2026-11-26 → 2026-12-01 (+5d) | 2026-12-01 → 2026-12-06 (+5d) |  | -49d → -53d |
| WAD.S.6400 | Fabrication & Delivery | 2026-11-26 → 2026-12-01 (+5d) | 2026-12-01 → 2026-12-06 (+5d) |  | -49d → -53d |
| 2 | **Manuals** | 2026-11-22 → 2026-11-26 (+4d) | 2026-12-01 → 2026-12-06 (+5d) |  |  |
| WAD.S.5480 | Prepare & Submit | 2026-11-22 → 2026-11-26 (+4d) | 2026-11-25 → 2026-11-30 (+5d) |  | -49d → -53d |
| WAD.S.6390 | Review & Approve | 2026-11-26 → 2026-12-01 (+5d) | 2026-12-01 → 2026-12-06 (+5d) |  | -49d → -53d |
| 3 | **Demobilization** | 2026-11-23 → 2026-11-28 (+5d) | 2026-12-01 → 2026-12-06 (+5d) |  |  |
| WAD.S.5850 | Demobilize | 2026-11-23 → 2026-11-28 (+5d) | 2026-12-01 → 2026-12-06 (+5d) |  | -49d → -53d |
| 4 | **Snaglist Rectification** | 2026-11-23 → 2026-11-28 (+5d) | 2026-12-01 → 2026-12-06 (+5d) |  |  |
| WAD.S.5860 | Snaglist Rectification | 2026-11-23 → 2026-11-28 (+5d) | 2026-12-01 → 2026-12-06 (+5d) |  | -49d → -53d |
| WAD.S.5870 | Initial Handing Over | 2026-11-23 → 2026-11-28 (+5d) | 2026-12-01 → 2026-12-06 (+5d) |  | -49d → -53d |

## Version 5 (data date 2026-10-17, saved 2026-10-20, file WAS1-05-006 -Improvement of Waad Al Shamal Industrial City Fence & Gates-DD19-10-2026.xer)

Note of the change: Renumber project folders 01–23 in order (after removing projects 12 and 25)

Last finish 2026-12-06 → 2026-12-10 (+4d). Complete tasks 195 → 233.

Changed:

| ID | Task | Start | Finish | Total float |
| --- | --- | --- | --- | --- |
| 1 | **Key Milestones** |  | 2026-12-06 → 2026-12-10 (+4d) |  |
| 1 | **General Milestones** |  | 2026-12-06 → 2026-12-10 (+4d) |  |
| WAD.S.6490 | Project Finish | 2026-12-06 → 2026-12-10 (+4d) | 2026-12-06 → 2026-12-10 (+4d) | -53d → -56.4d |
| 2 | **Contractual Milestones** |  | 2026-12-06 → 2026-12-10 (+4d) |  |
| WAD.S.3850 | Completion of Fences | 2026-10-15 → 2026-10-20 (+5d) | 2026-10-15 → 2026-10-20 (+5d) | -8.42d → -12.42d |
| WAD.S.3860 | Completion of GUARD HOUSE 1 | 2026-10-15 → 2026-10-20 (+5d) | 2026-10-15 → 2026-10-20 (+5d) | -8.42d → -12.42d |
| WAD.S.5070 | Completion of Engineering Works | 2026-10-21 → 2026-10-26 (+5d) | 2026-10-21 → 2026-10-26 (+5d) | -13.6d → -17.6d |
| WAD.S.6250 | Completion of Procurment Works | 2026-11-03 → 2026-11-08 (+5d) | 2026-11-03 → 2026-11-08 (+5d) | -24.3d → -28.3d |
| WAD.S.6110 | Completion of EXT. WORKS | 2026-11-28 → 2026-12-02 (+4d) | 2026-11-28 → 2026-12-02 (+4d) | -46d → -49.4d |
| WAD.S.7560 | Testing & Commissioning | 2026-12-06 → 2026-12-10 (+4d) | 2026-12-06 → 2026-12-10 (+4d) | -53d → -56.4d |
| 6 | **Engineering** |  | 2026-10-25 → 2026-10-29 (+4d) |  |
| 1 | **Material Submittal** |  | 2026-10-25 → 2026-10-29 (+4d) |  |
| 1 | **Material Prepare & Submit** |  | 2026-10-18 → 2026-10-22 (+4d) |  |
| 1 | **Short Lead Items** |  | 2026-10-17 → 2026-10-21 (+4d) |  |
| WAD.S.2630 | Manhole depth not exceeding 4.0m (Material Prepare & Submit) (GUARD HOUSE) |  | 2026-10-14 → 2026-10-19 (+5d) | -24d → -26.8d |
| WAD.S.2690 | GRP Pipes laid in trenches(Material Prepare & Submit) (GUARD HOUS |  | 2026-10-14 → 2026-10-19 (+5d) | -38.6d → -42.6d |
| WAD.S.2700 | 100 mm GRP pipe service connections (Material Prepare & Submit) (GUARD HOUSE) |  | 2026-10-14 → 2026-10-19 (+5d) | -32.3d → -36.3d |
| WAD.S.2900 | SIDEWALKS AND CURBS (Material Prepare & Submit) (GUARD HOUSE) |  | 2026-10-17 → 2026-10-21 (+4d) | -31.3d → -34.25d |
| WAD.S.4700 | UNDERGROUND DISTRIBUTION SYSTEM (Material Prepare & Submit) (GUARD HOUSE) |  | 2026-10-14 → 2026-10-19 (+5d) | -14.5d → -18.05d |
| 2 | **Long Lead Items** |  | 2026-10-18 → 2026-10-22 (+4d) |  |
| WAD.S.1490 | Intrusion Detection system including processor control units items and joints (Material Prepare & Submit) (FENCES) |  | 2026-10-13 → 2026-10-18 (+5d) |  |
| WAD.S.3220 | WATER SUPPLY SYSTEM (Material Prepare & Submit) (GUARD HOUSE) |  | 2026-10-14 → 2026-10-19 (+5d) | -18.1d → -22.1d |
| WAD.S.3230 | SEWER AND DRAINAGE SYSTEM (Material Prepare & Submit) (GUARD HOUSE) |  | 2026-10-18 → 2026-10-22 (+4d) | -21.3d → -25.3d |
| WAD.S.3250 | HEATING, VENTILATION AND AIR CONDITIONING (Material Prepare & Submit) (GUARD HOUSE) |  | 2026-10-17 → 2026-10-21 (+4d) | -20.9d → -24.9d |
| WAD.S.1520 | Handholes\ Manholes (Material Prepare & Submit) (FENCES) |  | 2026-10-14 → 2026-10-19 (+5d) | -24.8d → -27.6d |
| WAD.S.3150 | folding & sliding mounter combination ladder for building maintenance purpose (Material Prepare & Submit) (GUARD HOUSE) |  | 2026-10-18 → 2026-10-22 (+4d) | -31.9d → -35.9d |
| WAD.S.3050 | Workstation chair (Material Prepare & Submit) (GUARD HOUSE) |  | 2026-10-14 → 2026-10-19 (+5d) | -28.2d → -32.2d |
| WAD.S.3160 | overflow galvanized steel roof scupper (Material Prepare & Submit) (GUARD HOUSE) |  | 2026-10-14 → 2026-10-19 (+5d) | -29.1d → -33.1d |
| WAD.S.3170 | counter desk (Material Prepare & Submit) (GUARD HOUSE) |  | 2026-10-14 → 2026-10-19 (+5d) | -29.1d → -33.1d |
| WAD.S.3180 | install ceramic wall tiles (Material Prepare & Submit) (GUARD HOUSE) |  | 2026-10-14 → 2026-10-19 (+5d) | -29.1d → -33.1d |
| WAD.S.3190 | PANEL SIGNAGE (Material Prepare & Submit) (GUARD HOUSE) |  | 2026-10-14 → 2026-10-19 (+5d) | -29.1d → -33.1d |
| WAD.S.3200 | COMMUNICATIONS BACKBONE CABLING (Material Prepare & Submit) (GUARD HOUSE) |  | 2026-10-14 → 2026-10-19 (+5d) | -29.1d → -33.1d |
| WAD.S.3210 | card reader IN/OUT (Material Prepare & Submit) (GUARD HOUSE) |  | 2026-10-14 → 2026-10-19 (+5d) | -24.1d → -28.1d |
| WAD.S.3240 | SUPPLY AND INSTALL PLUMBING FIXTURES (Material Prepare & Submit) (GUARD HOUSE) |  | 2026-10-14 → 2026-10-19 (+5d) | -24.6d → -28.6d |
| WAD.S.2840 | ceramic floor tiles (Material Prepare & Submit) (GUARD HOUSE) |  | 2026-10-17 → 2026-10-21 (+4d) | -25.8d → -29.7d |
| WAD.S.2850 | Riyadh stone cladding (Material Prepare & Submit) (GUARD HOUSE) |  | 2026-10-17 → 2026-10-21 (+4d) | -30.7d → -34.7d |
| WAD.S.2860 | UPS (Material Prepare & Submit) (GUARD HOUSE) |  | 2026-10-17 → 2026-10-21 (+4d) | -32.3d → -36.3d |
| WAD.S.2890 | Panel boards (Material Prepare & Submit) (GUARD HOUSE) |  | 2026-10-17 → 2026-10-21 (+4d) | -31.9d → -35.9d |
| WAD.S.3560 | aluminum framed double glazed windows (Material Prepare & Submit) (GUARD HOUSE) |  | 2026-10-17 → 2026-10-21 (+4d) | -24.2d → -28.2d |
| WAD.S.3570 | Roller blind (Material Prepare & Submit) (GUARD HOUSE) |  | 2026-10-17 → 2026-10-21 (+4d) | -28.2d → -32.2d |
| WAD.S.3590 | DATA COMMUNICATIONS (Material Prepare & Submit) (GUARD HOUSE) |  | 2026-10-17 → 2026-10-21 (+4d) | -21.7d → -25.7d |
| WAD.S.3710 | COMPUTERS AND RELATED PERIPHERALS (Material Prepare & Submit) (GUARD HOUSE) |  | 2026-10-17 → 2026-10-21 (+4d) | -23.2d → -27.2d |
| WAD.S.3030 | PANTRY CABINET (Material Prepare & Submit) (GUARD HOUSE) |  | 2026-10-18 → 2026-10-22 (+4d) | -32.3d → -36.3d |
| WAD.S.3040 | 20mm thick black granite (Material Prepare & Submit) (GUARD HOUSE) |  | 2026-10-18 → 2026-10-22 (+4d) | -23.3d → -24.7d |
| WAD.S.3060 | Safety Disconnect Switches complete with busbar, frame box (Material Prepare & Submit) (GUARD HOUSE) |  | 2026-10-18 → 2026-10-22 (+4d) | -26.3d → -30.3d |
| WAD.S.3300 | heavy steel cover with frame for tanks (Material Prepare & Submit) (GUARD HOUSE) |  | 2026-10-18 → 2026-10-22 (+4d) | -23.3d → -27.3d |
| WAD.S.3310 | HOLLOW METAL DOORS AND FRAMES (Material Prepare & Submit) (GUARD HOUSE) |  | 2026-10-18 → 2026-10-22 (+4d) | -23.8d → -27.8d |
| WAD.S.3320 | ALUMINIUM DOORS (Material Prepare & Submit) (GUARD HOUSE) |  | 2026-10-18 → 2026-10-22 (+4d) | -23.3d → -27.3d |
| WAD.S.3330 | TOILET AND BATH ACCESSROIES (Material Prepare & Submit) (GUARD HOUSE) |  | 2026-10-18 → 2026-10-22 (+4d) | -18.2d → -22.2d |
| WAD.S.3340 | Waste Receptacle (Material Prepare & Submit) (GUARD HOUSE) |  | 2026-10-18 → 2026-10-22 (+4d) | -25.3d → -29.3d |
| WAD.S.3350 | LIGHTING FIXTURES (Material Prepare & Submit) (GUARD HOUSE) |  | 2026-10-18 → 2026-10-22 (+4d) | -25.8d → -29.8d |
| WAD.S.3360 | Access control panel (Material Prepare & Submit) (GUARD HOUSE) |  | 2026-10-18 → 2026-10-22 (+4d) | -25.8d → -29.8d |
| WAD.S.3370 | VIDEO SURVEILLANCE (Material Prepare & Submit) (GUARD HOUSE) |  | 2026-10-18 → 2026-10-22 (+4d) | -27.8d → -31.8d |
| 2 | **Material Review & Approve** |  | 2026-10-25 → 2026-10-29 (+4d) |  |
| 1 | **Short Lead Items** |  | 2026-10-24 → 2026-10-28 (+4d) |  |
| WAD.S.3550 | ROAD WORKS (Material Review & Approve) (GUARD HOUSE) |  | 2026-10-17 → 2026-10-21 (+4d) | -24.8d → -27.9d |
| WAD.S.2680 | Manhole depth not exceeding 4.0m (Material Review & Approve) (GUARD HOUSE) | 2026-10-14 → 2026-10-19 (+5d) | 2026-10-21 → 2026-10-26 (+5d) | -24d → -26.8d |
| WAD.S.4840 | UNDERGROUND DISTRIBUTION SYSTEM (Material Review & Approve) (GUARD HOUSE) | 2026-10-14 → 2026-10-19 (+5d) | 2026-10-21 → 2026-10-26 (+5d) | -14.5d → -18.05d |
| WAD.S.3140 | SIDEWALKS AND CURBS (Material Review & Approve) (GUARD HOUSE) | 2026-10-17 → 2026-10-21 (+4d) | 2026-10-24 → 2026-10-28 (+4d) | -31.3d → -34.25d |
| 2 | **Long Lead Items** |  | 2026-10-25 → 2026-10-29 (+4d) |  |
| WAD.S.1510 | Intrusion Detection system including processor control units items and joints (Material Review & Approve) (FENCES) |  | 2026-10-14 → 2026-10-19 (+5d) |  |
| WAD.S.3670 | WATER SUPPLY SYSTEM (Material Review & Approve) (GUARD HOUSE) |  | 2026-10-15 → 2026-10-20 (+5d) | -18.1d → -22.1d |
| WAD.S.3680 | SEWER AND DRAINAGE SYSTEM (Material Review & Approve) (GUARD HOUSE) |  | 2026-10-19 → 2026-10-24 (+5d) | -21.3d → -25.3d |
| WAD.S.3700 | HEATING, VENTILATION AND AIR CONDITIONING (Material Review & Approve) (GUARD HOUSE) |  | 2026-10-18 → 2026-10-22 (+4d) | -20.9d → -24.9d |
| WAD.S.3800 | TOILET AND BATH ACCESSROIES (Material Review & Approve) (GUARD HOUSE) |  | 2026-10-19 → 2026-10-24 (+5d) | -18.2d → -22.2d |
| WAD.S.3690 | SUPPLY AND INSTALL PLUMBING FIXTURES (Material Review & Approve) (GUARD HOUSE) |  | 2026-10-25 → 2026-10-29 (+4d) | -32.3d → -36.3d |
| WAD.S.1650 | Handholes\ Manholes (Material Review & Approve) (FENCES) | 2026-10-14 → 2026-10-19 (+5d) | 2026-10-21 → 2026-10-26 (+5d) | -24.8d → -27.6d |
| WAD.S.3000 | ceramic floor tiles (Material Review & Approve) (GUARD HOUSE) | 2026-10-17 → 2026-10-21 (+4d) | 2026-10-24 → 2026-10-28 (+4d) | -25.8d → -29.7d |
| WAD.S.3010 | install Riyadh stone cladding (Material Review & Approve) (GUARD HOUSE) | 2026-10-17 → 2026-10-21 (+4d) | 2026-10-24 → 2026-10-28 (+4d) | -30.7d → -34.7d |
| WAD.S.3020 | UPS (Material Review & Approve) (GUARD HOUSE) | 2026-10-17 → 2026-10-21 (+4d) | 2026-10-24 → 2026-10-28 (+4d) | -26.2d → -26.6d |

| ID | Task | Start | Finish | Total float |
| --- | --- | --- | --- | --- |
| WAD.S.3130 | Panel boards (Material Review & Approve) (GUARD HOUSE) | 2026-10-17 → 2026-10-21 (+4d) | 2026-10-24 → 2026-10-28 (+4d) | -30.7d → -34.7d |
| WAD.S.3660 | card reader IN/OUT (Material Review & Approve) (GUARD HOUSE) | 2026-10-17 → 2026-10-21 (+4d) | 2026-10-24 → 2026-10-28 (+4d) | -25.7d → -29.7d |
| WAD.S.4040 | aluminum framed double glazed windows (Material Review & Approve) (GUARD HOUSE) | 2026-10-17 → 2026-10-21 (+4d) | 2026-10-24 → 2026-10-28 (+4d) | -24.2d → -28.2d |
| WAD.S.4050 | Roller blind (Material Review & Approve) (GUARD HOUSE) | 2026-10-17 → 2026-10-21 (+4d) | 2026-10-24 → 2026-10-28 (+4d) | -28.2d → -32.2d |
| WAD.S.4070 | DATA COMMUNICATIONS (Material Review & Approve) (GUARD HOUSE) | 2026-10-17 → 2026-10-21 (+4d) | 2026-10-24 → 2026-10-28 (+4d) | -21.7d → -25.7d |
| WAD.S.4080 | COMPUTERS AND RELATED PERIPHERALS (Material Review & Approve) (GUARD HOUSE) | 2026-10-17 → 2026-10-21 (+4d) | 2026-10-24 → 2026-10-28 (+4d) | -23.2d → -27.2d |
| WAD.S.3500 | PANTRY CABINET (Material Review & Approve) (GUARD HOUSE) | 2026-10-18 → 2026-10-22 (+4d) | 2026-10-25 → 2026-10-29 (+4d) | -32.3d → -36.3d |
| WAD.S.3510 | 20mm thick black granite (Material Review & Approve) (GUARD HOUSE) | 2026-10-18 → 2026-10-22 (+4d) | 2026-10-25 → 2026-10-29 (+4d) | -23.3d → -24.7d |
| WAD.S.3520 | Workstation chair (Material Review & Approve) (GUARD HOUSE) | 2026-10-18 → 2026-10-22 (+4d) | 2026-10-25 → 2026-10-29 (+4d) | -25.8d → -26.6d |
| WAD.S.3600 | folding & sliding mounter combination ladder for building maintenance purpose (Material Review & Approve) (GUARD HOUSE) | 2026-10-18 → 2026-10-22 (+4d) | 2026-10-25 → 2026-10-29 (+4d) | -32.3d → -36.3d |
| WAD.S.3610 | overflow galvanized steel roof scupper (Material Review & Approve) (GUARD HOUSE) | 2026-10-18 → 2026-10-22 (+4d) | 2026-10-25 → 2026-10-29 (+4d) | -32.3d → -36.3d |
| WAD.S.3620 | counter desk (Material Review & Approve) (GUARD HOUSE) | 2026-10-18 → 2026-10-22 (+4d) | 2026-10-25 → 2026-10-29 (+4d) | -32.3d → -36.3d |
| WAD.S.3630 | install ceramic wall tiles (Material Review & Approve) (GUARD HOUSE) | 2026-10-18 → 2026-10-22 (+4d) | 2026-10-25 → 2026-10-29 (+4d) | -32.3d → -36.3d |
| WAD.S.3640 | PANEL SIGNAGE (Material Review & Approve) (GUARD HOUSE) | 2026-10-18 → 2026-10-22 (+4d) | 2026-10-25 → 2026-10-29 (+4d) | -32.3d → -36.3d |
| WAD.S.3650 | COMMUNICATIONS BACKBONE CABLING (Material Review & Approve) (GUARD HOUSE) | 2026-10-18 → 2026-10-22 (+4d) | 2026-10-25 → 2026-10-29 (+4d) | -32.3d → -36.3d |
| WAD.S.3770 | heavy steel cover with frame for tanks (Material Review & Approve) (GUARD HOUSE) | 2026-10-18 → 2026-10-22 (+4d) | 2026-10-25 → 2026-10-29 (+4d) | -23.3d → -27.3d |
| WAD.S.3780 | HOLLOW METAL DOORS AND FRAMES (Material Review & Approve) (GUARD HOUSE) | 2026-10-18 → 2026-10-22 (+4d) | 2026-10-25 → 2026-10-29 (+4d) | -23.8d → -27.8d |
| WAD.S.3790 | ALUMINIUM DOORS (Material Review & Approve) (GUARD HOUSE) | 2026-10-18 → 2026-10-22 (+4d) | 2026-10-25 → 2026-10-29 (+4d) | -23.3d → -27.3d |
| WAD.S.3810 | Waste Receptacle (Material Review & Approve) (GUARD HOUSE) | 2026-10-18 → 2026-10-22 (+4d) | 2026-10-25 → 2026-10-29 (+4d) | -25.3d → -29.3d |
| WAD.S.3820 | LIGHTING FIXTURES (Material Review & Approve) (GUARD HOUSE) | 2026-10-18 → 2026-10-22 (+4d) | 2026-10-25 → 2026-10-29 (+4d) | -25.8d → -29.8d |
| WAD.S.3830 | Access control panel (Material Review & Approve) (GUARD HOUSE) | 2026-10-18 → 2026-10-22 (+4d) | 2026-10-25 → 2026-10-29 (+4d) | -25.8d → -29.8d |
| WAD.S.3840 | VIDEO SURVEILLANCE (Material Review & Approve) (GUARD HOUSE) | 2026-10-18 → 2026-10-22 (+4d) | 2026-10-25 → 2026-10-29 (+4d) | -27.8d → -31.8d |
| 7 | **Procurement** |  | 2026-11-04 → 2026-11-08 (+4d) |  |
| 5 | **Fabrication & Delivery** |  | 2026-11-04 → 2026-11-08 (+4d) |  |
| 1 | **Short Lead Items** |  | 2026-10-26 → 2026-10-29 (+3d) |  |
| WAD.S.1430 | structural steel beams, posts and rods for wall fence (FENCES) |  | 2026-10-13 → 2026-10-18 (+5d) | -17.2d → -18.46d |
| WAD.S.1540 | tubes, bolts, nuts and steel plates to strengthened the wall fence and posts (FENCES) |  | 2026-10-13 → 2026-10-18 (+5d) | -17.15d → -12.15d |
| WAD.S.4780 | FIRE PROTECTION SYSTEM (fire extinguisher) (GUARD HOUSE) |  | 2026-10-14 → 2026-10-18 (+4d) | -7.5d → -10.75d |
| WAD.S.3290 | 100 mm GRP pipe service connections (GUARD HOUSE) |  | 2026-10-17 → 2026-10-20 (+3d) | -31.4d → -34.5d |
| WAD.S.4160 | GROUNDING (GUARD HOUSE) |  | 2026-10-15 → 2026-10-20 (+5d) | -8.5d → -12.05d |
| WAD.S.4170 | ROAD WORKS (GUARD HOUSE) |  | 2026-10-19 → 2026-10-22 (+3d) | -24.8d → -27.9d |
| WAD.S.2970 | Manhole depth not exceeding 4.0m (GUARD HOUSE) |  | 2026-10-24 → 2026-10-27 (+3d) | -24d → -26.8d |
| WAD.S.3910 | SIDEWALKS AND CURBS (GUARD HOUSE) |  | 2026-10-26 → 2026-10-29 (+3d) | -31.3d → -34.25d |
| WAD.S.5080 | UNDERGROUND DISTRIBUTION SYSTEM (GUARD HOUSE) |  | 2026-10-22 → 2026-10-27 (+5d) | -14.5d → -18.05d |
| 2 | **Long Lead Items** |  | 2026-11-04 → 2026-11-08 (+4d) |  |
| WAD.S.1570 | fix galvanized steel chain link gate including all necessary associated (FENCES) |  | 2026-10-13 → 2026-10-18 (+5d) | -17.75d → -19.01d |
| WAD.S.2470 | structural steel members and plates for main sliding gates (FENCES) |  | 2026-10-13 → 2026-10-18 (+5d) | -17.7d → -18.96d |
| WAD.S.2170 | Intrusion Detection system including processor control units items and joints (FENCES) |  | 2026-10-19 → 2026-10-21 (+2d) |  |
| WAD.S.4580 | WATER SUPPLY SYSTEM (GUARD HOUSE) |  | 2026-10-22 → 2026-10-27 (+5d) | -17.6d → -21.6d |
| WAD.S.2260 | Handholes\ Manholes (FENCES) |  | 2026-10-25 → 2026-10-28 (+3d) | -24.8d → -27.6d |
| WAD.S.3740 | ceramic floor tiles (GUARD HOUSE) |  | 2026-10-27 → 2026-10-31 (+4d) | -25.8d → -28.6d |
| WAD.S.3750 | install Riyadh stone cladding (GUARD HOUSE) |  | 2026-10-27 → 2026-10-31 (+4d) | -21.8d → -24.6d |
| WAD.S.4610 | HEATING, VENTILATION AND AIR CONDITIONING (GUARD HOUSE) |  | 2026-10-26 → 2026-10-31 (+5d) | -20.9d → -24.9d |
| WAD.S.4590 | SEWER AND DRAINAGE SYSTEM (GUARD HOUSE) |  | 2026-10-27 → 2026-11-01 (+5d) | -21.3d → -25.3d |
| WAD.S.4650 | TOILET AND BATH ACCESSROIES (GUARD HOUSE) |  | 2026-10-27 → 2026-11-01 (+5d) | -18.2d → -22.2d |
| WAD.S.4120 | PANTRY CABINET (GUARD HOUSE) |  | 2026-11-03 → 2026-11-04 (+1d) | -26.3d → -27.3d |
| WAD.S.4130 | 20mm thick black granite (GUARD HOUSE) |  | 2026-11-02 → 2026-11-03 (+1d) | -23.3d → -24.7d |
| WAD.S.4140 | Workstation chair (GUARD HOUSE) |  | 2026-11-03 → 2026-11-04 (+1d) | -25.8d → -26.6d |
| WAD.S.4510 | folding & sliding mounter combination ladder for building maintenance purpose (GUARD HOUSE) |  | 2026-11-02 → 2026-11-03 (+1d) | -25.3d → -26.7d |
| WAD.S.4520 | overflow galvanized steel roof scupper (GUARD HOUSE) |  | 2026-11-02 → 2026-11-03 (+1d) | -25.3d → -26.7d |
| WAD.S.4530 | counter desk (GUARD HOUSE) |  | 2026-11-02 → 2026-11-03 (+1d) | -26.8d → -28d |
| WAD.S.4540 | install ceramic wall tiles (GUARD HOUSE) |  | 2026-11-01 → 2026-11-03 (+2d) | -22.8d → -24.4d |
| WAD.S.4570 | card reader IN/OUT (GUARD HOUSE) |  | 2026-11-01 → 2026-11-05 (+4d) | -25.7d → -29.7d |
| WAD.S.4760 | aluminum framed double glazed windows (GUARD HOUSE) |  | 2026-10-31 → 2026-11-04 (+4d) | -24.2d → -28.2d |
| WAD.S.4770 | Roller blind (GUARD HOUSE) |  | 2026-10-31 → 2026-11-04 (+4d) | -28.2d → -32.2d |
| WAD.S.4790 | DATA COMMUNICATIONS (GUARD HOUSE) |  | 2026-10-31 → 2026-11-04 (+4d) | -21.7d → -25.7d |
| WAD.S.4820 | COMPUTERS AND RELATED PERIPHERALS (GUARD HOUSE) |  | 2026-10-29 → 2026-11-03 (+5d) | -23.2d → -27.2d |
| WAD.S.4550 | PANEL SIGNAGE (GUARD HOUSE) |  | 2026-11-02 → 2026-11-07 (+5d) | -25.8d → -29.8d |
| WAD.S.4560 | COMMUNICATIONS BACKBONE CABLING (GUARD HOUSE) |  | 2026-11-02 → 2026-11-07 (+5d) | -23.3d → -27.3d |
| WAD.S.4600 | SUPPLY PLUMBING FIXTURES (GUARD HOUSE) |  | 2026-11-02 → 2026-11-07 (+5d) | -32.3d → -36.3d |
| WAD.S.4620 | heavy steel cover with frame for tanks (GUARD HOUSE) |  | 2026-11-02 → 2026-11-07 (+5d) | -23.3d → -27.3d |
| WAD.S.4630 | HOLLOW METAL DOORS AND FRAMES (GUARD HOUSE) |  | 2026-11-02 → 2026-11-07 (+5d) | -23.8d → -27.8d |
| WAD.S.4640 | ALUMINIUM DOORS (GUARD HOUSE) |  | 2026-11-02 → 2026-11-07 (+5d) | -23.3d → -27.3d |
| WAD.S.4660 | Waste Receptacle (GUARD HOUSE) |  | 2026-11-03 → 2026-11-08 (+5d) | -25.3d → -29.3d |
| WAD.S.4670 | LIGHTING FIXTURES (GUARD HOUSE) |  | 2026-11-01 → 2026-11-05 (+4d) | -25.8d → -29.8d |
| WAD.S.4680 | Access control panel (GUARD HOUSE) |  | 2026-11-02 → 2026-11-07 (+5d) | -25.8d → -29.8d |
| WAD.S.4690 | VIDEO SURVEILLANCE (GUARD HOUSE) |  | 2026-11-02 → 2026-11-07 (+5d) | -27.8d → -31.8d |
| 8 | **Construction** |  | 2026-11-28 → 2026-12-02 (+4d) |  |
| 2 | **CONCRETE WORKS** |  | 2026-10-13 → 2026-10-18 (+5d) |  |
| 1 | **Part 1** |  | 2026-10-13 → 2026-10-18 (+5d) |  |

| ID | Task | Start | Finish | Complete | Total float |
| --- | --- | --- | --- | --- | --- |
| WAD.S.1560 | cast in place reinforced concrete for the sub-structures - Part 1 |  | 2026-10-13 → 2026-10-18 A (+5d) | 98% → 100% | -17.84d → none |
| 2 | **Part 2** |  | 2026-10-13 → 2026-10-18 (+5d) |  |  |
| WAD.S.2720 | cast in place reinforced concrete for the sub-structures - Part 2 |  | 2026-10-13 → 2026-10-18 (+5d) |  | -17.84d → -12.84d |
| 3 | **THERMAL & MOISTURE PROTECTION** |  | 2026-10-17 → 2026-10-21 (+4d) |  |  |
| 2 | **Part 2** |  | 2026-10-17 → 2026-10-21 (+4d) |  |  |
| WAD.S.3420 | Applying 2 coats of bitumen waterproofing paint on concrete surfaces - Part 2 |  | 2026-10-17 → 2026-10-21 (+4d) |  | -10.05d → -13.45d |
| 6 | **SPECIAL CONSTRUCTION- STRUCTURAL STEEL** |  | 2026-10-26 → 2026-10-20 (-6d) |  |  |
| 1 | **Part 1** |  | 2026-10-14 → 2026-10-19 (+5d) |  |  |
| WAD.S.4720 | galvanized steel chain link gates Installation - Part 1 |  | 2026-10-14 → 2026-10-19 (+5d) |  | -17.84d → -12.84d |
| 2 | **Part 2** |  | 2026-10-26 → 2026-10-20 (-6d) |  |  |
| WAD.S.2920 | install structural steel beams, posts and rods for wall fence - Part 2 |  | 2026-10-15 → 2026-10-20 (+5d) | 94% → 98% | -15.01d → -19.01d |
| WAD.S.3430 | Install tubes, bolts, nuts and steel plates to strengthened the wall fence and posts - Part 2 |  | 2026-10-15 → 2026-10-20 (+5d) |  | -8.22d → -12.22d |
| WAD.S.3950 | fix galvanized steel chain link fence wall; including steel tube framing and posts, turn buckle - Part 2 |  | 2026-10-15 → 2026-10-20 (+5d) |  | -8.22d → -12.22d |
| WAD.S.4730 | galvanized steel chain link gates Installation - Part 2 |  | 2026-10-26 → 2026-10-20 (-6d) | 75% → 90% | -17.84d → -12.84d |
| WAD.S.4810 | Handholes\ Manholes |  |  | 88% → 90% | -33.66d → -33.5d |
| WAD.S.2640 | Intrusion Detection system including processor control units items and joints - 1st Fix | 2026-10-19 → 2026-10-21 (+2d) | 2026-10-29 → 2026-11-01 (+3d) |  |  |
| WAD.S.2950 | Fiber Optic Outdoor Cable |  |  | 65% → 93% |  |
| WAD.S.2960 | Road crossing ducts for Fiber Optic Cable | 2026-10-29 → 2026-11-01 (+3d) | 2026-11-07 → 2026-11-09 (+2d) |  | -30.1d → -32.9d |
| WAD.S.2980 | install 50mm diameter high-density polyethylene (HDPE) pipe including the require pipe fittings for connection, | 2026-11-01 → 2026-11-03 A (+2d) | 2026-11-10 → 2026-11-12 A (+2d) | 0% → 100% | -30.1d → none |
| 2 | **GUARD HOUSE 1** |  | 2026-11-07 → 2026-11-11 (+4d) |  |  |
| 1 | **SITE WORKS** |  | 2026-10-20 → 2026-10-22 (+2d) |  |  |
| 5 | **Guard Rooms & Gates (CONCRETE Works)** |  | 2026-10-20 → 2026-10-22 (+2d) |  |  |
| WAD.S.3940 | Tanks Walls |  | 2026-10-15 → 2026-10-18 A (+3d) | 65% → 100% | -15.5d → none |
| WAD.S.4850 | Tanks Slab | 2026-10-15 → 2026-10-18 A (+3d) | 2026-10-20 → 2026-10-22 A (+2d) | 0% → 100% | -12.5d → none |
| 6 | **THERMAL & MOISTURE PROTECTION** |  | 2026-10-13 → 2026-10-18 (+5d) |  |  |
| 1 | **THERMAL & MOISTURE PROTECTION - Foundation** |  | 2026-10-13 → 2026-10-18 (+5d) |  |  |
| WAD.S.3930 | install liquid applied waterproofing coating; single-component pitch modified polyurethane |  | 2026-10-13 → 2026-10-18 A (+5d) | 65% → 100% | -7d → none |
| 7 | **ROOFING SYSTEM** |  | 2026-10-27 → 2026-10-29 (+2d) |  |  |
| WAD.S.4210 | cast in place foam concrete screed, 50mm thick minimum; laid to fall and cross fall |  | 2026-10-19 → 2026-10-18 A (-1d) | 85% → 100% | -19d → none |
| WAD.S.4180 | install liquid applied waterproofing coating single-component pitch modified polyurethane based elastomeric | 2026-10-15 → 2026-10-18 (+3d) | 2026-10-27 → 2026-10-29 (+2d) |  | -19d → -21d |
| WAD.S.4190 | install 4mm thick APP modified bituminous membrane - single layer | 2026-10-15 → 2026-10-18 A (+3d) | 2026-10-27 → 2026-10-29 A (+2d) | 0% → 100% | -19d → none |
| WAD.S.4200 | install 75mm thick rigid insulation (extruded polystyrene) | 2026-10-15 → 2026-10-18 (+3d) | 2026-10-27 → 2026-10-29 (+2d) |  | -19d → -21d |
| WAD.S.4220 | install 300 micron polyethylene sheet | 2026-10-15 → 2026-10-18 (+3d) | 2026-10-27 → 2026-10-29 (+2d) |  | -19d → -21d |
| WAD.S.4230 | install 50mm thick loose gravel toppings | 2026-10-15 → 2026-10-18 (+3d) | 2026-10-27 → 2026-10-29 (+2d) |  | -19d → -21d |
| WAD.S.4240 | install high density polyisocynurate cover board | 2026-10-15 → 2026-10-18 (+3d) | 2026-10-27 → 2026-10-29 (+2d) |  | -19d → -21d |
| WAD.S.4250 | install UV resistant geotextile sheet | 2026-10-15 → 2026-10-18 (+3d) | 2026-10-27 → 2026-10-29 (+2d) |  | -19d → -21d |
| WAD.S.4260 | fixing 3mm thick extruded aluminum flashing 40mm with sealant and all other accessories | 2026-10-15 → 2026-10-18 (+3d) | 2026-10-27 → 2026-10-29 (+2d) |  | -19d → -21d |
| 2 | **THERMAL & MOISTURE PROTECTION - Tanks** |  | 2026-10-22 → 2026-10-20 (-2d) |  |  |
| WAD.S.4280 | lay epoxy 2 coating for inner surfaces for bottom of the roof |  | 2026-10-22 → 2026-10-19 (-3d) | 65% → 88% | -19d → -21d |
| 9 | **FINISHES** |  | 2026-11-02 → 2026-11-05 (+3d) |  |  |
| WAD.S.5530 | install two coats of acrylic paint on internal walls |  | 2026-11-01 → 2026-11-03 (+2d) | 60% → 80% | -22.8d → -24.4d |
| WAD.S.5540 | install two coats of acrylic paint (suitable for exterior use) on external |  | 2026-11-01 → 2026-11-03 (+2d) | 60% → 80% | -22.8d → -24.4d |
| WAD.S.4940 | install ceramic floor tiles | 2026-10-27 → 2026-10-31 (+4d) | 2026-10-31 → 2026-11-03 (+3d) |  | -25.8d → -28.6d |
| WAD.S.5010 | install granite saddles and thresholds | 2026-10-27 → 2026-10-31 (+4d) | 2026-10-31 → 2026-11-03 (+3d) |  | -25.8d → -28.6d |
| WAD.S.5040 | gypsum board suspended ceiling | 2026-10-27 → 2026-10-31 A (+4d) | 2026-11-02 → 2026-11-05 A (+3d) | 0% → 100% | -25.8d → none |
| 13 | **MECHANICAL WORKS** |  | 2026-11-02 → 2026-11-04 (+2d) |  |  |
| 2 | **MECHANICAL WORKS - Final Fix** |  | 2026-11-02 → 2026-11-04 (+2d) |  |  |
| WAD.S.5130 | installation of Fire extinguishers as per drawings, specifications |  | 2026-11-02 → 2026-11-04 (+2d) | 50% → 65% | -23.3d → -25.65d |
| WAD.S.5140 | gully traps with heavy duty cover |  | 2026-11-02 → 2026-11-04 (+2d) | 50% → 70% | -23.3d → -25.65d |
| WAD.S.5150 | chamber with heavy duty cover |  | 2026-11-02 → 2026-11-04 (+2d) | 50% → 70% | -23.3d → -25.65d |
| WAD.S.5160 | INSTALL PLUMBING FIXTURES |  | 2026-11-02 → 2026-11-04 (+2d) | 50% → 65% | -23.3d → -25.65d |
| WAD.S.5910 | HEATING, VENTILATION AND AIR CONDITIONING - Final Fix | 2026-10-29 → 2026-11-01 A (+3d) | 2026-11-02 → 2026-11-04 (+2d) | 0% → 50% | -23.3d → -25.65d |
| WAD.S.5920 | Exhaust fans - Final Fix | 2026-10-29 → 2026-11-01 A (+3d) | 2026-11-02 → 2026-11-03 A (+1d) | 0% → 100% | -23.3d → none |
| WAD.S.5930 | Bulbblers and Spreyers of IRRIGATION SYSTEM | 2026-10-29 → 2026-11-01 A (+3d) | 2026-11-02 → 2026-11-04 A (+2d) | 0% → 100% | -23.3d → none |
| WAD.S.5980 | WATER SUPPLY SYSTEM - Final Fix | 2026-10-29 → 2026-11-01 (+3d) | 2026-11-02 → 2026-11-04 (+2d) |  | -23.3d → -25.65d |
| WAD.S.5990 | IRRIGATION SYSTEM - Final Fix | 2026-10-29 → 2026-11-01 A (+3d) | 2026-11-02 → 2026-11-04 A (+2d) | 0% → 100% | -23.3d → none |
| 15 | **ELECTRICAL WORKS** |  | 2026-11-07 → 2026-11-11 (+4d) |  |  |
| 2 | **ELECTRICAL WORKS - Final Fix** | 2026-10-29 → 2026-11-01 (+3d) | 2026-11-07 → 2026-11-11 (+4d) |  |  |
| WAD.S.5940 | power source with built-in photocell sensor for automatic electrical connection during day/light times - Final Fix | 2026-10-29 → 2026-11-01 (+3d) | 2026-11-02 → 2026-11-04 (+2d) |  | -23.3d → -25.65d |
| WAD.S.6140 | UNDERGROUND DISTRIBUTION SYSTEM - Final Fix | 2026-10-31 → 2026-11-02 (+2d) | 2026-11-02 → 2026-11-04 (+2d) |  | -23.3d → -25.65d |
| WAD.S.5970 | 12-Port, SMF, Fiber Optic Patch Panels; | 2026-10-31 → 2026-11-04 (+4d) | 2026-11-04 → 2026-11-09 (+5d) |  | -25.8d → -29.8d |
| WAD.S.5950 | LIGHTING FIXTURES - Final Fix | 2026-11-01 → 2026-11-05 A (+4d) | 2026-11-04 → 2026-11-09 (+5d) | 0% → 10% | -25.8d → -29.8d |
| WAD.S.5960 | GROUNDING - Final Fix | 2026-11-01 → 2026-11-05 (+4d) | 2026-11-04 → 2026-11-09 (+5d) |  | -25.8d → -29.8d |
| WAD.S.6160 | card reader IN/OUT - Final Fix | 2026-11-01 → 2026-11-05 (+4d) | 2026-11-04 → 2026-11-09 (+5d) |  | -25.8d → -29.8d |
| WAD.S.6170 | 12-Port CAT6A UTP fully loaded patch panel | 2026-11-01 → 2026-11-05 (+4d) | 2026-11-04 → 2026-11-09 (+5d) |  | -25.8d → -29.8d |
| WAD.S.6180 | COMPUTERS AND RELATED PERIPHERALS | 2026-11-01 → 2026-11-05 (+4d) | 2026-11-04 → 2026-11-09 (+5d) |  | -25.8d → -29.8d |
| WAD.S.6150 | installation of Wiring devices includes switches and Receptacle outlets complete with device boxes - Final Fix | 2026-11-02 → 2026-11-07 A (+5d) | 2026-11-04 → 2026-11-09 (+5d) | 0% → 80% | -25.8d → -29.8d |
| WAD.S.6190 | VIDEO SURVEILLANCE | 2026-11-02 → 2026-11-07 (+5d) | 2026-11-07 → 2026-11-11 (+4d) |  | -27.8d → -31.8d |
| WAD.S.6200 | CCTV storage system, as specified; | 2026-11-02 → 2026-11-07 (+5d) | 2026-11-07 → 2026-11-11 (+4d) |  | -27.8d → -31.8d |
| WAD.S.6270 | Access control panel - Final Fix | 2026-11-02 → 2026-11-07 (+5d) | 2026-11-04 → 2026-11-09 (+5d) |  | -25.8d → -29.8d |

| ID | Task | Start | Finish | Complete | Total float |
| --- | --- | --- | --- | --- | --- |
| WAD.S.6280 | Central (Headend) System Components; | 2026-11-03 → 2026-11-08 (+5d) | 2026-11-07 → 2026-11-11 (+4d) |  | -27.8d → -31.8d |
| WAD.S.6290 | VSS System, as specified; | 2026-11-03 → 2026-11-08 (+5d) | 2026-11-07 → 2026-11-11 (+4d) |  | -27.8d → -31.8d |
| WAD.S.6300 | CCTV cameras - Final Fix | 2026-11-03 → 2026-11-08 (+5d) | 2026-11-07 → 2026-11-11 (+4d) |  | -27.8d → -31.8d |
| WAD.S.6310 | ELECTRICAL GATE BARRIER | 2026-11-03 → 2026-11-08 (+5d) | 2026-11-07 → 2026-11-11 (+4d) |  | -27.8d → -31.8d |
| WAD.S.6320 | fire alarm system including wires, conduit and other materials - Final Fix | 2026-11-03 → 2026-11-08 (+5d) | 2026-11-07 → 2026-11-11 (+4d) |  | -27.8d → -31.8d |
| WAD.S.6330 | Analog addressable fire alarm control panel with battery | 2026-11-03 → 2026-11-08 (+5d) | 2026-11-07 → 2026-11-11 (+4d) |  | -27.8d → -31.8d |
| WAD.S.6340 | LIGHTING AND POWER TYPE PANELBOARDS - Final Fix | 2026-11-03 → 2026-11-08 (+5d) | 2026-11-07 → 2026-11-11 (+4d) |  | -27.8d → -31.8d |
| WAD.S.6420 | 20A , ATS ( Automatic transfer switch) for UPS | 2026-11-04 → 2026-11-09 (+5d) | 2026-11-07 → 2026-11-11 (+4d) |  | -27.8d → -31.8d |
| WAD.S.6430 | LIGHTNING PROTECTION | 2026-11-04 → 2026-11-09 (+5d) | 2026-11-07 → 2026-11-11 (+4d) |  | -27.8d → -31.8d |
| WAD.S.6440 | Intelligent Ionization / Photoelectric smoke and heat detector with base | 2026-11-04 → 2026-11-09 (+5d) | 2026-11-07 → 2026-11-11 (+4d) |  | -27.8d → -31.8d |
| 4 | **METALS** |  | 2026-11-04 → 2026-11-08 (+4d) |  |  |
| WAD.S.5510 | install of overflow galvanized steel roof scupper with gray color with angular secondary support |  | 2026-11-03 → 2026-11-07 A (+4d) | 50% → 100% | -25.8d → none |
| WAD.S.5500 | folding & sliding mounter combination ladder for building maintenance purpose | 2026-11-02 → 2026-11-05 (+3d) | 2026-11-04 → 2026-11-08 (+4d) |  | -25.8d → -28.6d |
| WAD.S.5520 | install heavy steel cover with frame including all necessary fixings | 2026-11-02 → 2026-11-05 (+3d) | 2026-11-04 → 2026-11-08 (+4d) |  | -25.8d → -28.6d |
| 5 | **WOODS AND PLASTICS** | 2026-11-02 → 2026-11-04 (+2d) | 2026-11-05 → 2026-11-08 (+3d) |  |  |
| WAD.S.5890 | COUNTER DESK | 2026-11-02 → 2026-11-04 (+2d) | 2026-11-05 → 2026-11-08 (+3d) |  | -26.8d → -28.6d |
| WAD.S.5880 | PANTRY CABINET | 2026-11-03 → 2026-11-05 (+2d) | 2026-11-05 → 2026-11-08 (+3d) |  | -26.3d → -28.6d |
| 8 | **DOORS & WINDOWS** | 2026-10-31 → 2026-11-03 (+3d) | 2026-11-05 → 2026-11-08 (+3d) |  |  |
| WAD.S.5050 | install hollow metal door | 2026-10-31 → 2026-11-03 A (+3d) | 2026-11-04 → 2026-11-08 (+4d) | 0% → 70% | -25.8d → -28.6d |
| WAD.S.6120 | Install aluminum framed double glazed windows | 2026-10-31 → 2026-11-04 A (+4d) | 2026-11-03 → 2026-11-04 A (+1d) | 0% → 100% | -24.8d → none |
| WAD.S.5900 | Install Aluminum Door | 2026-11-02 → 2026-11-04 (+2d) | 2026-11-05 → 2026-11-08 (+3d) |  | -26.8d → -28.6d |
| 10 | **SPECIALTIES** | 2026-11-03 → 2026-11-05 (+2d) | 2026-11-07 → 2026-11-11 (+4d) |  |  |
| WAD.S.6130 | TOILET ACCESSROIES | 2026-11-03 → 2026-11-05 (+2d) | 2026-11-05 → 2026-11-08 (+3d) |  | -26.8d → -28.6d |
| WAD.S.6410 | PANEL SIGNAGE | 2026-11-04 → 2026-11-09 A (+5d) | 2026-11-07 → 2026-11-11 A (+4d) | 0% → 100% | -27.8d → none |
| 11 | **FURNISHINGS** | 2026-11-05 → 2026-11-10 (+5d) | 2026-11-07 → 2026-11-11 (+4d) |  |  |
| WAD.S.6450 | Workstation chair | 2026-11-05 → 2026-11-10 (+5d) | 2026-11-07 → 2026-11-11 (+4d) |  | -27.8d → -31.8d |
| WAD.S.6460 | Workstation table | 2026-11-05 → 2026-11-10 (+5d) | 2026-11-07 → 2026-11-11 (+4d) |  | -27.8d → -31.8d |
| WAD.S.6470 | Roller blind | 2026-11-05 → 2026-11-10 (+5d) | 2026-11-07 → 2026-11-11 (+4d) |  | -27.8d → -31.8d |
| WAD.S.6480 | Waste Receptacle | 2026-11-05 → 2026-11-10 (+5d) | 2026-11-07 → 2026-11-11 (+4d) |  | -27.8d → -31.8d |
| 3 | **GUARD HOUSE 2** |  | 2026-11-05 → 2026-11-10 (+5d) |  |  |
| 1 | **SITE WORKS** |  | 2026-10-20 → 2026-10-22 (+2d) |  |  |
| 5 | **Guard Rooms & Gates (CONCRETE Works)** |  | 2026-10-20 → 2026-10-22 (+2d) |  |  |
| WAD.S.3980 | Tanks Walls |  | 2026-10-15 → 2026-10-18 A (+3d) | 65% → 100% | -20.5d → none |
| WAD.S.4890 | Tanks Slab | 2026-10-15 → 2026-10-18 A (+3d) | 2026-10-20 → 2026-10-22 A (+2d) | 0% → 100% | -12.5d → none |
| 6 | **THERMAL & MOISTURE PROTECTION** |  | 2026-10-14 → 2026-10-19 (+5d) |  |  |
| 1 | **THERMAL & MOISTURE PROTECTION - Foundation** |  | 2026-10-14 → 2026-10-19 (+5d) |  |  |
| WAD.S.3970 | install liquid applied waterproofing coating; single-component pitch modified polyurethane | 2026-10-13 → 2026-10-18 A (+5d) | 2026-10-14 → 2026-10-19 A (+5d) | 0% → 100% | -8d → none |
| WAD.S.4320 | cast in place foam concrete screed, 50mm thick minimum; laid to fall and cross fall |  | 2026-10-17 → 2026-10-19 A (+2d) | 75% → 100% | -18d → none |
| WAD.S.4290 | install liquid applied waterproofing coating single-component pitch modified polyurethane based elastomeric | 2026-10-13 → 2026-10-18 (+5d) | 2026-10-25 → 2026-10-29 (+4d) |  | -18d → -22d |
| WAD.S.4300 | install 4mm thick APP modified bituminous membrane - single layer | 2026-10-13 → 2026-10-18 A (+5d) | 2026-10-25 → 2026-10-29 A (+4d) | 0% → 100% | -18d → none |
| WAD.S.4310 | install 75mm thick rigid insulation (extruded polystyrene) | 2026-10-13 → 2026-10-18 (+5d) | 2026-10-25 → 2026-10-29 (+4d) |  | -18d → -22d |
| WAD.S.4330 | install 300 micron polyethylene sheet | 2026-10-13 → 2026-10-18 (+5d) | 2026-10-25 → 2026-10-29 (+4d) |  | -18d → -22d |
| WAD.S.4340 | install 50mm thick loose gravel toppings | 2026-10-13 → 2026-10-18 (+5d) | 2026-10-25 → 2026-10-29 (+4d) |  | -18d → -22d |
| WAD.S.4350 | install high density polyisocynurate cover board | 2026-10-13 → 2026-10-18 (+5d) | 2026-10-25 → 2026-10-29 (+4d) |  | -18d → -22d |
| WAD.S.4360 | install UV resistant geotextile sheet | 2026-10-13 → 2026-10-18 (+5d) | 2026-10-25 → 2026-10-29 (+4d) |  | -18d → -22d |
| WAD.S.4370 | fixing 3mm thick extruded aluminum flashing 40mm with sealant and all other accessories | 2026-10-13 → 2026-10-18 (+5d) | 2026-10-25 → 2026-10-29 (+4d) |  | -18d → -22d |
| 2 | **THERMAL & MOISTURE PROTECTION - Tanks** | 2026-10-18 → 2026-07-20 (-90d) |  |  |  |
| WAD.S.4390 | lay epoxy 2 coating for inner surfaces for bottom of the roof | 2026-10-18 A → 2026-07-20 A (-90d) |  | 45% → 65% | -18d → -22d |
| WAD.S.3100 | install concrete plastering |  | 2026-10-14 → 2026-10-18 A (+4d) | 65% → 100% | -18d → none |
| WAD.S.2240 | gypsum board suspended ceiling | 2026-10-13 → 2026-10-18 (+5d) | 2026-10-17 → 2026-10-21 (+4d) |  | -18d → -22d |
| WAD.S.2370 | install ceramic floor tiles | 2026-10-13 → 2026-10-18 (+5d) | 2026-10-15 → 2026-10-20 (+5d) |  | -9d → -13d |
| WAD.S.2380 | install granite flooring | 2026-10-13 → 2026-10-18 A (+5d) | 2026-10-14 → 2026-10-19 A (+5d) | 0% → 100% | -9d → none |
| WAD.S.2390 | install ceramic wall tiles | 2026-10-13 → 2026-10-18 A (+5d) | 2026-10-15 → 2026-10-20 A (+5d) | 0% → 100% | -9d → none |
| WAD.S.4860 | install granite saddles and thresholds | 2026-10-15 → 2026-10-18 (+3d) | 2026-10-19 → 2026-10-21 (+2d) |  | -20.5d → -22.75d |
| WAD.S.2520 | install two coats of acrylic paint on internal walls | 2026-10-14 → 2026-10-19 A (+5d) | 2026-10-15 → 2026-10-20 (+5d) | 0% → 70% | -9d → -13d |
| WAD.S.2530 | install two coats of acrylic paint (suitable for exterior use) on external | 2026-10-14 → 2026-10-19 A (+5d) | 2026-10-15 → 2026-10-20 (+5d) | 0% → 70% | -9d → -13d |
| 13 | **MECHANICAL WORKS** |  | 2026-11-05 → 2026-11-10 (+5d) |  |  |
| 2 | **MECHANICAL WORKS - Final Fix** | 2026-10-19 → 2026-10-21 (+2d) | 2026-11-05 → 2026-11-10 (+5d) |  |  |
| WAD.S.5560 | installation of Fire extinguishers as per drawings, specifications | 2026-10-19 → 2026-10-21 (+2d) | 2026-10-22 → 2026-10-25 (+3d) |  | -20.5d → -22.75d |
| WAD.S.5570 | gully traps with heavy duty cover | 2026-10-19 → 2026-10-21 A (+2d) | 2026-10-22 → 2026-10-25 (+3d) | 0% → 70% | -20.5d → -22.75d |
| WAD.S.5580 | chamber with heavy duty cover | 2026-10-19 → 2026-10-21 A (+2d) | 2026-10-22 → 2026-10-25 (+3d) | 0% → 70% | -20.5d → -22.75d |
| WAD.S.5590 | INSTALL PLUMBING FIXTURES | 2026-11-02 → 2026-11-07 (+5d) | 2026-11-05 → 2026-11-10 (+5d) |  | -32.3d → -36.3d |
| WAD.S.5600 | HEATING, VENTILATION AND AIR CONDITIONING - Final Fix | 2026-11-02 → 2026-11-07 A (+5d) | 2026-11-05 → 2026-11-10 (+5d) | 0% → 50% | -32.3d → -36.3d |
| WAD.S.5610 | Exhaust fans - Final Fix | 2026-11-02 → 2026-11-07 A (+5d) | 2026-11-05 → 2026-11-10 A (+5d) | 0% → 100% | -32.3d → none |
| WAD.S.5620 | Bulbblers and Spreyers of IRRIGATION SYSTEM | 2026-11-02 → 2026-11-07 A (+5d) | 2026-11-05 → 2026-11-10 A (+5d) | 0% → 100% | -32.3d → none |
| WAD.S.5750 | WATER SUPPLY SYSTEM - Final Fix | 2026-11-02 → 2026-11-07 (+5d) | 2026-11-05 → 2026-11-10 (+5d) |  | -32.3d → -36.3d |
| WAD.S.5760 | IRRIGATION SYSTEM - Final Fix | 2026-11-02 → 2026-11-07 A (+5d) | 2026-11-05 → 2026-11-10 A (+5d) | 0% → 100% | -26.3d → none |
| 15 | **ELECTRICAL WORKS** |  | 2026-11-05 → 2026-11-10 (+5d) |  |  |
| 2 | **ELECTRICAL WORKS - Final Fix** | 2026-11-01 → 2026-11-05 (+4d) | 2026-11-05 → 2026-11-10 (+5d) |  |  |
| WAD.S.5170 | 12-Port, SMF, Fiber Optic Patch Panels; | 2026-11-01 → 2026-11-05 (+4d) | 2026-11-05 → 2026-11-10 (+5d) |  | -32.3d → -36.3d |

| ID | Task | Start | Finish | Complete | Total float |
| --- | --- | --- | --- | --- | --- |
| WAD.S.5180 | VIDEO SURVEILLANCE | 2026-11-01 → 2026-11-05 (+4d) | 2026-11-05 → 2026-11-10 (+5d) |  | -32.3d → -36.3d |
| WAD.S.5190 | CCTV storage system, as specified; | 2026-11-01 → 2026-11-05 (+4d) | 2026-11-05 → 2026-11-10 (+5d) |  | -32.3d → -36.3d |
| WAD.S.5630 | power source with built-in photocell sensor for automatic electrical connection during day/light times - Final Fix | 2026-11-02 → 2026-11-07 (+5d) | 2026-11-05 → 2026-11-10 (+5d) |  | -32.3d → -36.3d |
| WAD.S.5640 | LIGHTING FIXTURES - Final Fix | 2026-11-02 → 2026-11-07 (+5d) | 2026-11-05 → 2026-11-10 (+5d) |  | -32.3d → -36.3d |
| WAD.S.5650 | GROUNDING - Final Fix | 2026-11-02 → 2026-11-07 (+5d) | 2026-11-05 → 2026-11-10 (+5d) |  | -32.3d → -36.3d |
| WAD.S.5660 | card reader IN/OUT - Final Fix | 2026-11-02 → 2026-11-07 (+5d) | 2026-11-05 → 2026-11-10 (+5d) |  | -32.3d → -36.3d |
| WAD.S.5670 | 12-Port CAT6A UTP fully loaded patch panel | 2026-11-02 → 2026-11-07 (+5d) | 2026-11-05 → 2026-11-10 (+5d) |  | -32.3d → -36.3d |
| WAD.S.5680 | COMPUTERS AND RELATED PERIPHERALS | 2026-11-02 → 2026-11-07 (+5d) | 2026-11-05 → 2026-11-10 (+5d) |  | -32.3d → -36.3d |
| WAD.S.5690 | Central (Headend) System Components; | 2026-11-02 → 2026-11-07 (+5d) | 2026-11-05 → 2026-11-10 (+5d) |  | -32.3d → -36.3d |
| WAD.S.5700 | VSS System, as specified; | 2026-11-02 → 2026-11-07 (+5d) | 2026-11-05 → 2026-11-10 (+5d) |  | -32.3d → -36.3d |
| WAD.S.5710 | CCTV cameras - Final Fix | 2026-11-02 → 2026-11-07 (+5d) | 2026-11-05 → 2026-11-10 (+5d) |  | -32.3d → -36.3d |
| WAD.S.5720 | ELECTRICAL GATE BARRIER | 2026-11-02 → 2026-11-07 (+5d) | 2026-11-05 → 2026-11-10 (+5d) |  | -32.3d → -36.3d |
| WAD.S.5730 | fire alarm system including wires, conduit and other materials - Final Fix | 2026-11-02 → 2026-11-07 (+5d) | 2026-11-05 → 2026-11-10 (+5d) |  | -32.3d → -36.3d |
| WAD.S.5740 | Analog addressable fire alarm control panel with battery | 2026-11-02 → 2026-11-07 (+5d) | 2026-11-05 → 2026-11-10 (+5d) |  | -32.3d → -36.3d |
| WAD.S.5770 | LIGHTING AND POWER TYPE PANELBOARDS - Final Fix | 2026-11-02 → 2026-11-07 (+5d) | 2026-11-05 → 2026-11-10 (+5d) |  | -26.3d → -30.3d |
| WAD.S.6010 | UNDERGROUND DISTRIBUTION SYSTEM - Final Fix | 2026-11-03 → 2026-11-08 (+5d) | 2026-11-05 → 2026-11-10 (+5d) |  | -32.3d → -36.3d |
| WAD.S.6020 | installation of Wiring devices includes switches and Receptacle outlets complete with device boxes - Final Fix | 2026-11-03 → 2026-11-08 (+5d) | 2026-11-05 → 2026-11-10 (+5d) |  | -32.3d → -36.3d |
| WAD.S.6030 | Access control panel - Final Fix | 2026-11-03 → 2026-11-08 (+5d) | 2026-11-05 → 2026-11-10 (+5d) |  | -32.3d → -36.3d |
| WAD.S.6040 | 20A , ATS ( Automatic transfer switch) for UPS | 2026-11-03 → 2026-11-08 (+5d) | 2026-11-05 → 2026-11-10 (+5d) |  | -32.3d → -36.3d |
| WAD.S.6050 | LIGHTNING PROTECTION | 2026-11-03 → 2026-11-08 (+5d) | 2026-11-05 → 2026-11-10 (+5d) |  | -32.3d → -36.3d |
| WAD.S.6060 | Intelligent Ionization / Photoelectric smoke and heat detector with base | 2026-11-03 → 2026-11-08 (+5d) | 2026-11-05 → 2026-11-10 (+5d) |  | -32.3d → -36.3d |
| 4 | **METALS** |  | 2026-10-19 → 2026-10-24 (+5d) |  |  |
| WAD.S.2490 | install of overflow galvanized steel roof scupper with gray color with angular secondary support |  | 2026-10-18 → 2026-10-22 A (+4d) | 65% → 100% | -18d → none |
| WAD.S.2480 | folding & sliding mounter combination ladder for building maintenance purpose | 2026-10-18 → 2026-10-22 (+4d) | 2026-10-19 → 2026-10-24 (+5d) |  | -18d → -22d |
| WAD.S.2500 | install heavy steel cover with frame including all necessary fixings | 2026-10-18 → 2026-10-22 (+4d) | 2026-10-19 → 2026-10-24 (+5d) |  | -18d → -22d |
| 5 | **WOODS AND PLASTICS** | 2026-10-17 → 2026-10-21 (+4d) | 2026-10-19 → 2026-10-24 (+5d) |  |  |
| WAD.S.2350 | COUNTER DESK | 2026-10-17 → 2026-10-21 (+4d) | 2026-10-19 → 2026-10-24 (+5d) |  | -18d → -22d |
| WAD.S.2510 | PANTRY CABINET | 2026-10-18 → 2026-10-22 (+4d) | 2026-10-19 → 2026-10-24 (+5d) |  | -18d → -22d |
| 8 | **DOORS & WINDOWS** | 2026-10-17 → 2026-10-21 (+4d) | 2026-10-21 → 2026-10-26 (+5d) |  |  |
| WAD.S.2360 | Install Aluminum Door | 2026-10-17 → 2026-10-21 (+4d) | 2026-10-19 → 2026-10-24 (+5d) |  | -18d → -22d |
| WAD.S.2200 | install hollow metal door | 2026-10-18 → 2026-10-22 (+4d) | 2026-10-21 → 2026-10-26 (+5d) |  | -17d → -21d |
| WAD.S.2210 | Install aluminum framed double glazed windows | 2026-10-18 → 2026-10-22 A (+4d) | 2026-10-20 → 2026-10-22 A (+2d) | 0% → 100% | -17d → none |
| 10 | **SPECIALTIES** | 2026-11-02 → 2026-11-07 (+5d) | 2026-11-05 → 2026-11-10 (+5d) |  |  |
| WAD.S.5550 | TOILET ACCESSROIES | 2026-11-02 → 2026-11-07 (+5d) | 2026-11-04 → 2026-11-09 (+5d) |  | -31.3d → -35.3d |
| WAD.S.6000 | PANEL SIGNAGE | 2026-11-03 → 2026-11-08 A (+5d) | 2026-11-05 → 2026-11-10 A (+5d) | 0% → 100% | -32.3d → none |
| 11 | **FURNISHINGS** | 2026-11-04 → 2026-11-09 (+5d) | 2026-11-05 → 2026-11-10 (+5d) |  |  |
| WAD.S.6210 | Workstation chair | 2026-11-04 → 2026-11-09 (+5d) | 2026-11-05 → 2026-11-10 (+5d) |  | -32.3d → -36.3d |
| WAD.S.6220 | Workstation table | 2026-11-04 → 2026-11-09 (+5d) | 2026-11-05 → 2026-11-10 (+5d) |  | -32.3d → -36.3d |
| WAD.S.6230 | Roller blind | 2026-11-04 → 2026-11-09 (+5d) | 2026-11-05 → 2026-11-10 (+5d) |  | -32.3d → -36.3d |
| WAD.S.6240 | Waste Receptacle | 2026-11-04 → 2026-11-09 (+5d) | 2026-11-05 → 2026-11-10 (+5d) |  | -32.3d → -36.3d |
| 5 | **GUARD HOUSE 3** |  | 2026-11-05 → 2026-11-10 (+5d) |  |  |
| 1 | **SITE WORKS** |  | 2026-10-25 → 2026-10-29 (+4d) |  |  |
| 5 | **Guard Rooms & Gates (CONCRETE Works)** |  | 2026-10-25 → 2026-10-29 (+4d) |  |  |
| WAD.S.7530 | Tanks Walls |  | 2026-10-15 → 2026-10-18 A (+3d) | 65% → 100% | -20.5d → none |
| WAD.S.7540 | Tanks Slab | 2026-10-21 → 2026-10-26 A (+5d) | 2026-10-25 → 2026-10-29 A (+4d) | 0% → 100% | -17d → none |
| 6 | **THERMAL & MOISTURE PROTECTION** |  | 2026-10-13 → 2026-10-18 (+5d) |  |  |
| 1 | **THERMAL & MOISTURE PROTECTION - Foundation** |  | 2026-10-13 → 2026-10-18 (+5d) |  |  |
| WAD.S.6580 | install liquid applied waterproofing coating; single-component pitch modified polyurethane |  | 2026-10-13 → 2026-10-18 A (+5d) | 65% → 100% | -7d → none |
| WAD.S.6630 | cast in place foam concrete screed, 50mm thick minimum; laid to fall and cross fall |  | 2026-10-26 → 2026-10-24 A (-2d) | 75% → 100% | -26.5d → none |
| WAD.S.6610 | install 4mm thick APP modified bituminous membrane - single layer | 2026-10-22 A | 2026-11-04 A | 0% → 100% | -26.5d → none |
| 2 | **THERMAL & MOISTURE PROTECTION - Tanks** |  | 2026-10-31 → 2026-10-27 (-4d) |  |  |
| WAD.S.7370 | lay epoxy 2 coating for inner surfaces for bottom of the roof |  | 2026-10-31 → 2026-10-27 (-4d) | 35% → 65% |  |
| WAD.S.6780 | install two coats of acrylic paint on internal walls |  | 2026-10-13 → 2026-10-18 (+5d) | 65% → 80% | -53d → -56.4d |
| WAD.S.6790 | install two coats of acrylic paint (suitable for exterior use) on external |  | 2026-10-13 → 2026-10-18 (+5d) | 65% → 80% | -53d → -56.4d |
| WAD.S.6730 | install ceramic floor tiles | 2026-10-13 → 2026-10-18 (+5d) | 2026-10-15 → 2026-10-20 (+5d) |  | -52d → -56d |
| WAD.S.6830 | gypsum board suspended ceiling | 2026-10-13 → 2026-10-18 A (+5d) | 2026-10-17 → 2026-10-21 A (+4d) | 0% → 100% | -21d → none |
| WAD.S.6750 | install granite saddles and thresholds | 2026-10-15 → 2026-10-18 (+3d) | 2026-10-19 → 2026-10-21 (+2d) |  | -20.5d → -22.75d |
| 13 | **MECHANICAL WORKS** |  | 2026-11-05 → 2026-11-10 (+5d) |  |  |
| 2 | **MECHANICAL WORKS - Final Fix** |  | 2026-11-05 → 2026-11-10 (+5d) |  |  |
| WAD.S.6930 | gully traps with heavy duty cover | 2026-10-26 A |  | 0% → 70% |  |
| WAD.S.6940 | chamber with heavy duty cover | 2026-10-26 A |  | 0% → 70% |  |
| WAD.S.6960 | HEATING, VENTILATION AND AIR CONDITIONING - Final Fix |  | 2026-11-05 → 2026-11-10 (+5d) | 35% → 55% | -32.3d → -36.3d |
| WAD.S.6950 | INSTALL PLUMBING FIXTURES | 2026-11-02 → 2026-11-07 (+5d) | 2026-11-05 → 2026-11-10 (+5d) |  | -32.3d → -36.3d |
| WAD.S.6970 | Exhaust fans - Final Fix | 2026-11-02 → 2026-11-07 A (+5d) | 2026-11-05 → 2026-11-08 A (+3d) | 0% → 100% | -32.3d → none |
| WAD.S.6990 | Bulbblers and Spreyers of IRRIGATION SYSTEM | 2026-11-02 → 2026-11-07 (+5d) | 2026-11-05 → 2026-11-10 (+5d) |  | -32.3d → -36.3d |
| WAD.S.7230 | WATER SUPPLY SYSTEM - Final Fix | 2026-11-02 → 2026-11-07 (+5d) | 2026-11-05 → 2026-11-10 (+5d) |  | -32.3d → -36.3d |
| WAD.S.7240 | IRRIGATION SYSTEM - Final Fix | 2026-11-02 → 2026-11-07 (+5d) | 2026-11-05 → 2026-11-10 (+5d) |  | -26.3d → -30.3d |
| 15 | **ELECTRICAL WORKS** |  | 2026-11-05 → 2026-11-10 (+5d) |  |  |
| 2 | **ELECTRICAL WORKS - Final Fix** | 2026-11-01 → 2026-11-05 (+4d) | 2026-11-05 → 2026-11-10 (+5d) |  |  |
| WAD.S.7100 | 12-Port, SMF, Fiber Optic Patch Panels; | 2026-11-01 → 2026-11-05 (+4d) | 2026-11-05 → 2026-11-10 (+5d) |  | -32.3d → -36.3d |

| ID | Task | Start | Finish | Complete | Total float |
| --- | --- | --- | --- | --- | --- |
| WAD.S.7120 | VIDEO SURVEILLANCE | 2026-11-01 → 2026-11-05 (+4d) | 2026-11-05 → 2026-11-10 (+5d) |  | -32.3d → -36.3d |
| WAD.S.7150 | CCTV storage system, as specified; | 2026-11-01 → 2026-11-05 (+4d) | 2026-11-05 → 2026-11-10 (+5d) |  | -32.3d → -36.3d |
| WAD.S.7020 | power source with built-in photocell sensor for automatic electrical connection during day/light times - Final Fix | 2026-11-02 → 2026-11-07 (+5d) | 2026-11-05 → 2026-11-10 (+5d) |  | -32.3d → -36.3d |
| WAD.S.7040 | LIGHTING FIXTURES - Final Fix | 2026-11-02 → 2026-11-07 (+5d) | 2026-11-05 → 2026-11-10 (+5d) |  | -32.3d → -36.3d |
| WAD.S.7060 | GROUNDING - Final Fix | 2026-11-02 → 2026-11-07 (+5d) | 2026-11-05 → 2026-11-10 (+5d) |  | -32.3d → -36.3d |
| WAD.S.7070 | card reader IN/OUT - Final Fix | 2026-11-02 → 2026-11-07 (+5d) | 2026-11-05 → 2026-11-10 (+5d) |  | -32.3d → -36.3d |
| WAD.S.7090 | 12-Port CAT6A UTP fully loaded patch panel | 2026-11-02 → 2026-11-07 (+5d) | 2026-11-05 → 2026-11-10 (+5d) |  | -32.3d → -36.3d |
| WAD.S.7110 | COMPUTERS AND RELATED PERIPHERALS | 2026-11-02 → 2026-11-07 (+5d) | 2026-11-05 → 2026-11-10 (+5d) |  | -32.3d → -36.3d |
| WAD.S.7130 | Central (Headend) System Components; | 2026-11-02 → 2026-11-07 (+5d) | 2026-11-05 → 2026-11-10 (+5d) |  | -32.3d → -36.3d |
| WAD.S.7140 | VSS System, as specified; | 2026-11-02 → 2026-11-07 (+5d) | 2026-11-05 → 2026-11-10 (+5d) |  | -32.3d → -36.3d |
| WAD.S.7160 | CCTV cameras - Final Fix | 2026-11-02 → 2026-11-07 (+5d) | 2026-11-05 → 2026-11-10 (+5d) |  | -32.3d → -36.3d |
| WAD.S.7180 | ELECTRICAL GATE BARRIER | 2026-11-02 → 2026-11-07 (+5d) | 2026-11-05 → 2026-11-10 (+5d) |  | -32.3d → -36.3d |
| WAD.S.7200 | fire alarm system including wires, conduit and other materials - Final Fix | 2026-11-02 → 2026-11-07 (+5d) | 2026-11-05 → 2026-11-10 (+5d) |  | -32.3d → -36.3d |
| WAD.S.7210 | Analog addressable fire alarm control panel with battery | 2026-11-02 → 2026-11-07 (+5d) | 2026-11-05 → 2026-11-10 (+5d) |  | -32.3d → -36.3d |
| WAD.S.7250 | LIGHTING AND POWER TYPE PANELBOARDS - Final Fix | 2026-11-02 → 2026-11-07 (+5d) | 2026-11-05 → 2026-11-10 (+5d) |  | -26.3d → -30.3d |
| WAD.S.7030 | UNDERGROUND DISTRIBUTION SYSTEM - Final Fix | 2026-11-03 → 2026-11-08 (+5d) | 2026-11-05 → 2026-11-10 (+5d) |  | -32.3d → -36.3d |
| WAD.S.7050 | installation of Wiring devices includes switches and Receptacle outlets complete with device boxes - Final Fix | 2026-11-03 → 2026-11-08 A (+5d) | 2026-11-05 → 2026-11-10 (+5d) | 0% → 80% | -32.3d → -36.3d |
| WAD.S.7080 | Access control panel - Final Fix | 2026-11-03 → 2026-11-08 (+5d) | 2026-11-05 → 2026-11-10 (+5d) |  | -32.3d → -36.3d |
| WAD.S.7170 | 20A , ATS ( Automatic transfer switch) for UPS | 2026-11-03 → 2026-11-08 (+5d) | 2026-11-05 → 2026-11-10 (+5d) |  | -32.3d → -36.3d |
| WAD.S.7190 | LIGHTNING PROTECTION | 2026-11-03 → 2026-11-08 (+5d) | 2026-11-05 → 2026-11-10 (+5d) |  | -32.3d → -36.3d |
| WAD.S.7220 | Intelligent Ionization / Photoelectric smoke and heat detector with base | 2026-11-03 → 2026-11-08 (+5d) | 2026-11-05 → 2026-11-10 (+5d) |  | -32.3d → -36.3d |
| 4 | **METALS** |  | 2026-10-19 → 2026-10-24 (+5d) |  |  |
| WAD.S.6520 | install of overflow galvanized steel roof scupper with gray color with angular secondary support |  | 2026-10-18 → 2026-10-22 A (+4d) | 60% → 100% | -21d → none |
| WAD.S.6510 | folding & sliding mounter combination ladder for building maintenance purpose | 2026-10-18 → 2026-10-22 (+4d) | 2026-10-19 → 2026-10-24 (+5d) |  | -21d → -25d |
| WAD.S.6530 | install heavy steel cover with frame including all necessary fixings | 2026-10-18 → 2026-10-22 (+4d) | 2026-10-19 → 2026-10-24 (+5d) |  | -21d → -25d |
| 5 | **WOODS AND PLASTICS** | 2026-10-17 → 2026-10-21 (+4d) | 2026-10-19 → 2026-10-24 (+5d) |  |  |
| WAD.S.6550 | COUNTER DESK | 2026-10-17 → 2026-10-21 (+4d) | 2026-10-19 → 2026-10-24 (+5d) |  | -18d → -22d |
| WAD.S.6540 | PANTRY CABINET | 2026-10-18 → 2026-10-22 (+4d) | 2026-10-19 → 2026-10-24 (+5d) |  | -21d → -25d |
| 8 | **DOORS & WINDOWS** | 2026-10-17 → 2026-10-21 (+4d) | 2026-10-21 → 2026-10-26 (+5d) |  |  |
| WAD.S.6700 | Install Aluminum Door | 2026-10-17 → 2026-10-21 (+4d) | 2026-10-19 → 2026-10-24 (+5d) |  | -18d → -22d |
| WAD.S.6710 | install hollow metal door | 2026-10-18 → 2026-10-22 A (+4d) | 2026-10-21 → 2026-10-26 (+5d) | 0% → 70% | -21d → -25d |
| WAD.S.6720 | Install aluminum framed double glazed windows | 2026-10-18 → 2026-10-22 A (+4d) | 2026-10-20 → 2026-10-22 A (+2d) | 0% → 100% | -21d → none |
| 10 | **SPECIALTIES** | 2026-11-02 → 2026-11-07 (+5d) | 2026-11-05 → 2026-11-10 (+5d) |  |  |
| WAD.S.6840 | TOILET ACCESSROIES | 2026-11-02 → 2026-11-07 (+5d) | 2026-11-04 → 2026-11-09 (+5d) |  | -31.3d → -35.3d |
| WAD.S.6850 | PANEL SIGNAGE | 2026-11-03 → 2026-11-08 A (+5d) | 2026-11-05 → 2026-11-10 A (+5d) | 0% → 100% | -32.3d → none |
| 11 | **FURNISHINGS** | 2026-11-04 → 2026-11-09 (+5d) | 2026-11-05 → 2026-11-10 (+5d) |  |  |
| WAD.S.6860 | Workstation chair | 2026-11-04 → 2026-11-09 (+5d) | 2026-11-05 → 2026-11-10 (+5d) |  | -32.3d → -36.3d |
| WAD.S.6870 | Workstation table | 2026-11-04 → 2026-11-09 (+5d) | 2026-11-05 → 2026-11-10 (+5d) |  | -32.3d → -36.3d |
| WAD.S.6880 | Roller blind | 2026-11-04 → 2026-11-09 (+5d) | 2026-11-05 → 2026-11-10 (+5d) |  | -32.3d → -36.3d |
| WAD.S.6890 | Waste Receptacle | 2026-11-04 → 2026-11-09 (+5d) | 2026-11-05 → 2026-11-10 (+5d) |  | -32.3d → -36.3d |
| 4 | **EXT. WORKS** | 2026-10-14 → 2026-10-18 (+4d) | 2026-11-28 → 2026-12-02 (+4d) |  |  |
| 1 | **EXTERNAL WORKS** | 2026-10-14 → 2026-10-18 (+4d) | 2026-11-28 → 2026-12-02 (+4d) |  |  |
| WAD.S.1100 | Excavation Works | 2026-10-14 → 2026-10-18 (+4d) | 2026-10-31 → 2026-11-04 (+4d) |  | -53d → -56.4d |
| WAD.S.1290 | 40 mm Pipes | 2026-11-01 → 2026-11-04 (+3d) | 2026-11-14 → 2026-11-18 (+4d) |  | -53d → -56.4d |
| WAD.S.3270 | GRP Pipes laid in trenches | 2026-11-01 → 2026-11-04 (+3d) | 2026-11-14 → 2026-11-18 (+4d) |  | -53d → -56.4d |
| WAD.S.4020 | install 100 mm GRP pipe service connections between building sewage inspection chamber and main wastewater line | 2026-11-05 → 2026-11-09 (+4d) | 2026-11-14 → 2026-11-18 (+4d) |  | -48d → -51.4d |
| WAD.S.4030 | Manhole depth not exceeding 4.0m | 2026-11-05 → 2026-11-09 (+4d) | 2026-11-14 → 2026-11-18 (+4d) |  | -34d → -37.4d |
| WAD.S.3880 | 100 mm Pipe in trench not exceeding 2.00 m depth to invert | 2026-11-07 → 2026-11-10 (+3d) | 2026-11-14 → 2026-11-18 (+4d) |  | -53d → -56.4d |
| WAD.S.4800 | Backfilling Works | 2026-11-15 → 2026-11-18 (+3d) | 2026-11-19 → 2026-11-24 (+5d) |  | -53d → -56.4d |
| WAD.S.4980 | SIDEWALKS AND CURBS | 2026-11-21 → 2026-11-24 (+3d) | 2026-11-28 → 2026-12-02 (+4d) |  | -53d → -56.4d |
| WAD.S.4990 | ROAD WORKS | 2026-11-21 → 2026-11-24 (+3d) | 2026-11-28 → 2026-12-02 (+4d) |  | -52d → -55.4d |
| WAD.S.5000 | install flag pole 6 M height | 2026-11-21 → 2026-11-24 (+3d) | 2026-11-25 → 2026-11-30 (+5d) |  | -53d → -56.4d |
| 4 | **Testing & Commissioning** | 2026-11-26 → 2026-11-30 (+4d) | 2026-12-06 → 2026-12-10 (+4d) |  |  |
| WAD.S.5440 | Testing & Commissioning - Electrical Systems | 2026-11-26 → 2026-11-30 (+4d) | 2026-12-06 → 2026-12-10 (+4d) |  | -53d → -56.4d |
| WAD.S.5490 | Testing & Commissioning - Mechanical Systems | 2026-11-26 → 2026-11-30 (+4d) | 2026-12-06 → 2026-12-10 (+4d) |  | -53d → -56.4d |
| 1 | **Engineering** | 2026-11-26 → 2026-11-30 (+4d) | 2026-12-06 → 2026-12-10 (+4d) |  |  |
| 1 | **As-Built Drawings** | 2026-11-26 → 2026-11-30 (+4d) | 2026-12-05 → 2026-12-09 (+4d) |  |  |
| WAD.S.5430 | Prepare & Submit | 2026-11-26 → 2026-11-30 (+4d) | 2026-11-30 → 2026-12-05 (+5d) |  | -53d → -56.4d |
| WAD.S.6260 | Review & Approve | 2026-11-29 → 2026-12-02 (+3d) | 2026-12-05 → 2026-12-09 (+4d) |  | -52d → -55.4d |
| 2 | **Operational Spares** | 2026-11-26 → 2026-11-30 (+4d) | 2026-12-06 → 2026-12-10 (+4d) |  |  |
| WAD.S.5450 | Prepare & Submit | 2026-11-26 → 2026-11-30 (+4d) | 2026-11-30 → 2026-12-05 (+5d) |  | -53d → -56.4d |
| WAD.S.6350 | Inspection | 2026-12-01 → 2026-12-05 (+4d) | 2026-12-06 → 2026-12-10 (+4d) |  | -53d → -56.4d |
| WAD.S.6370 | Acceptance | 2026-12-01 → 2026-12-05 (+4d) | 2026-12-06 → 2026-12-10 (+4d) |  | -53d → -56.4d |
| 3 | **Warranties and Guarantees** | 2026-11-26 → 2026-11-30 (+4d) | 2026-12-06 → 2026-12-10 (+4d) |  |  |
| WAD.S.5460 | Prepare & Submit | 2026-11-26 → 2026-11-30 (+4d) | 2026-11-30 → 2026-12-05 (+5d) |  | -53d → -56.4d |
| WAD.S.6360 | Review & Approve | 2026-12-01 → 2026-12-05 (+4d) | 2026-12-06 → 2026-12-10 (+4d) |  | -53d → -56.4d |
| 2 | **Training and Manuals** | 2026-11-26 → 2026-11-30 (+4d) | 2026-12-06 → 2026-12-10 (+4d) |  |  |
| 1 | **Training** | 2026-11-26 → 2026-11-30 (+4d) | 2026-12-06 → 2026-12-10 (+4d) |  |  |
| WAD.S.5470 | Prepare & Submit | 2026-11-26 → 2026-11-30 (+4d) | 2026-11-30 → 2026-12-05 (+5d) |  | -53d → -56.4d |
| WAD.S.6380 | Review & Approve | 2026-12-01 → 2026-12-05 (+4d) | 2026-12-06 → 2026-12-10 (+4d) |  | -53d → -56.4d |

| ID | Task | Start | Finish | Total float |
| --- | --- | --- | --- | --- |
| WAD.S.6400 | Fabrication & Delivery | 2026-12-01 → 2026-12-05 (+4d) | 2026-12-06 → 2026-12-10 (+4d) | -53d → -56.4d |
| 2 | **Manuals** | 2026-11-26 → 2026-11-30 (+4d) | 2026-12-06 → 2026-12-10 (+4d) |  |
| WAD.S.5480 | Prepare & Submit | 2026-11-26 → 2026-11-30 (+4d) | 2026-11-30 → 2026-12-05 (+5d) | -53d → -56.4d |
| WAD.S.6390 | Review & Approve | 2026-12-01 → 2026-12-05 (+4d) | 2026-12-06 → 2026-12-10 (+4d) | -53d → -56.4d |
| 3 | **Demobilization** | 2026-11-28 → 2026-12-01 (+3d) | 2026-12-06 → 2026-12-10 (+4d) |  |
| WAD.S.5850 | Demobilize | 2026-11-28 → 2026-12-01 (+3d) | 2026-12-06 → 2026-12-10 (+4d) | -53d → -56.4d |
| 4 | **Snaglist Rectification** | 2026-11-28 → 2026-12-01 (+3d) | 2026-12-06 → 2026-12-10 (+4d) |  |
| WAD.S.5860 | Snaglist Rectification | 2026-11-28 → 2026-12-01 (+3d) | 2026-12-06 → 2026-12-10 (+4d) | -53d → -56.4d |
| WAD.S.5870 | Initial Handing Over | 2026-11-28 → 2026-12-01 (+3d) | 2026-12-06 → 2026-12-10 (+4d) | -53d → -56.4d |

## Version 6 (data date 2026-10-26, saved 2026-10-27, file WAS1-05-006 -Improvement of Waad Al Shamal Industrial City Fence & Gates-DD26-10-2026.xer)

Last finish 2026-12-10 → 2026-11-26 (-14d). Complete tasks 233 → 309.

Changed:

| ID | Task | Start | Finish | Complete | Total float |
| --- | --- | --- | --- | --- | --- |
| 1 | **Key Milestones** |  | 2026-12-10 → 2026-11-26 (-14d) |  |  |
| 1 | **General Milestones** |  | 2026-12-10 → 2026-11-26 (-14d) |  |  |
| WAD.S.6490 | Project Finish | 2026-12-10 → 2026-11-26 (-14d) | 2026-12-10 → 2026-11-26 (-14d) |  | -56.4d → -44.46d |
| 2 | **Contractual Milestones** |  | 2026-12-10 → 2026-11-11 (-29d) |  |  |
| WAD.S.3850 | Completion of Fences | 2026-10-20 → 2026-10-27 (+7d) | 2026-10-20 → 2026-10-27 (+7d) |  | -12.42d → -18d |
| WAD.S.3860 | Completion of GUARD HOUSE 1 | 2026-10-20 → 2026-10-27 (+7d) | 2026-10-20 → 2026-10-27 (+7d) |  | -12.42d → -18d |
| WAD.S.5070 | Completion of Engineering Works | 2026-10-26 → 2026-10-28 (+2d) | 2026-10-26 → 2026-10-28 (+2d) |  | -17.6d → -19.5d |
| WAD.S.6250 | Completion of Procurment Works | 2026-11-08 → 2026-11-07 (-1d) | 2026-11-08 → 2026-11-07 (-1d) |  | -28.3d → -27.3d |
| WAD.S.6110 | Completion of EXT. WORKS | 2026-12-02 → 2026-11-08 (-24d) | 2026-12-02 → 2026-11-08 (-24d) |  | -49.4d → -28.9d |
| WAD.S.7560 | Testing & Commissioning | 2026-12-10 → 2026-11-11 (-29d) | 2026-12-10 → 2026-11-11 (-29d) |  | -56.4d → -31.65d |
| 6 | **Engineering** |  | 2026-10-29 → 2026-11-04 (+6d) |  |  |
| 1 | **Material Submittal** |  | 2026-10-29 → 2026-11-04 (+6d) |  |  |
| 1 | **Material Prepare & Submit** |  | 2026-10-22 → 2026-10-28 (+6d) |  |  |
| 1 | **Short Lead Items** |  | 2026-10-21 → 2026-10-28 (+7d) |  |  |
| WAD.S.2630 | Manhole depth not exceeding 4.0m (Material Prepare & Submit) (GUARD HOUSE) |  | 2026-10-19 → 2026-10-27 (+8d) | 60% → 85% | -26.8d → -20.7d |
| WAD.S.2690 | GRP Pipes laid in trenches(Material Prepare & Submit) (GUARD HOUS |  | 2026-10-19 → 2026-10-27 (+8d) | 60% → 85% | -42.6d → -29.5d |
| WAD.S.2700 | 100 mm GRP pipe service connections (Material Prepare & Submit) (GUARD HOUSE) |  | 2026-10-19 → 2026-10-27 (+8d) | 60% → 85% | -36.3d → -34.9d |
| WAD.S.2900 | SIDEWALKS AND CURBS (Material Prepare & Submit) (GUARD HOUSE) |  | 2026-10-21 → 2026-10-28 (+7d) | 60% → 85% | -34.25d → -32.05d |
| WAD.S.4700 | UNDERGROUND DISTRIBUTION SYSTEM (Material Prepare & Submit) (GUARD HOUSE) |  | 2026-10-19 → 2026-10-27 (+8d) | 60% → 85% | -18.05d → -19.95d |
| 2 | **Long Lead Items** |  | 2026-10-22 → 2026-10-28 (+6d) |  |  |
| WAD.S.1490 | Intrusion Detection system including processor control units items and joints (Material Prepare & Submit) (FENCES) |  | 2026-10-18 → 2026-10-27 (+9d) |  | -40.7d → -44.46d |
| WAD.S.3220 | WATER SUPPLY SYSTEM (Material Prepare & Submit) (GUARD HOUSE) |  | 2026-10-19 → 2026-10-27 (+8d) | 70% → 85% | -22.1d → -22.9d |
| WAD.S.3230 | SEWER AND DRAINAGE SYSTEM (Material Prepare & Submit) (GUARD HOUSE) |  | 2026-10-22 → 2026-10-28 (+6d) | 70% → 85% | -25.3d → -24.1d |
| WAD.S.3250 | HEATING, VENTILATION AND AIR CONDITIONING (Material Prepare & Submit) (GUARD HOUSE) |  | 2026-10-21 → 2026-10-28 (+7d) | 80% → 85% | -24.9d → -23.5d |
| WAD.S.1520 | Handholes\ Manholes (Material Prepare & Submit) (FENCES) |  | 2026-10-19 → 2026-10-28 (+9d) |  | -27.6d → -21.3d |
| WAD.S.3150 | folding & sliding mounter combination ladder for building maintenance purpose (Material Prepare & Submit) (GUARD HOUSE) |  | 2026-10-22 → 2026-10-28 (+6d) | 70% → 85% | -35.9d → -34.6d |
| WAD.S.3050 | Workstation chair (Material Prepare & Submit) (GUARD HOUSE) |  | 2026-10-19 → 2026-10-27 (+8d) | 60% → 85% | -32.2d → -33.4d |
| WAD.S.3160 | overflow galvanized steel roof scupper (Material Prepare & Submit) (GUARD HOUSE) |  | 2026-10-19 → 2026-10-27 (+8d) | 60% → 85% | -33.1d → -33.4d |
| WAD.S.3170 | counter desk (Material Prepare & Submit) (GUARD HOUSE) |  | 2026-10-19 → 2026-10-27 (+8d) | 60% → 85% | -33.1d → -33.4d |
| WAD.S.3180 | install ceramic wall tiles (Material Prepare & Submit) (GUARD HOUSE) |  | 2026-10-19 → 2026-10-27 (+8d) | 60% → 85% | -33.1d → -33.4d |
| WAD.S.3190 | PANEL SIGNAGE (Material Prepare & Submit) (GUARD HOUSE) |  | 2026-10-19 → 2026-10-27 (+8d) | 60% → 85% | -33.1d → -33.4d |
| WAD.S.3200 | COMMUNICATIONS BACKBONE CABLING (Material Prepare & Submit) (GUARD HOUSE) |  | 2026-10-19 → 2026-10-27 (+8d) | 60% → 85% | -33.1d → -33.4d |
| WAD.S.3210 | card reader IN/OUT (Material Prepare & Submit) (GUARD HOUSE) |  | 2026-10-19 → 2026-10-27 (+8d) | 60% → 85% | -28.1d → -29.1d |
| WAD.S.3240 | SUPPLY AND INSTALL PLUMBING FIXTURES (Material Prepare & Submit) (GUARD HOUSE) |  | 2026-10-19 → 2026-10-27 (+8d) | 60% → 85% | -28.6d → -28.9d |
| WAD.S.2840 | ceramic floor tiles (Material Prepare & Submit) (GUARD HOUSE) |  | 2026-10-21 → 2026-10-28 (+7d) | 60% → 85% | -29.7d → -24.6d |
| WAD.S.2850 | Riyadh stone cladding (Material Prepare & Submit) (GUARD HOUSE) |  | 2026-10-21 → 2026-10-28 (+7d) | 60% → 85% | -34.7d → -28.9d |
| WAD.S.2860 | UPS (Material Prepare & Submit) (GUARD HOUSE) |  | 2026-10-21 → 2026-10-28 (+7d) | 60% → 85% | -36.3d → -29.5d |
| WAD.S.2890 | Panel boards (Material Prepare & Submit) (GUARD HOUSE) |  | 2026-10-21 → 2026-10-28 (+7d) | 60% → 85% | -35.9d → -34.6d |
| WAD.S.3560 | aluminum framed double glazed windows (Material Prepare & Submit) (GUARD HOUSE) |  | 2026-10-21 → 2026-10-28 (+7d) | 60% → 85% | -28.2d → -26.4d |
| WAD.S.3570 | Roller blind (Material Prepare & Submit) (GUARD HOUSE) |  | 2026-10-21 → 2026-10-28 (+7d) | 60% → 85% | -32.2d → -33.4d |
| WAD.S.3590 | DATA COMMUNICATIONS (Material Prepare & Submit) (GUARD HOUSE) |  | 2026-10-21 → 2026-10-28 (+7d) | 60% → 85% | -25.7d → -26.5d |
| WAD.S.3710 | COMPUTERS AND RELATED PERIPHERALS (Material Prepare & Submit) (GUARD HOUSE) |  | 2026-10-21 → 2026-10-28 (+7d) | 60% → 85% | -27.2d → -29.2d |
| WAD.S.3030 | PANTRY CABINET (Material Prepare & Submit) (GUARD HOUSE) |  | 2026-10-22 → 2026-10-28 (+6d) | 60% → 85% | -36.3d → -29.5d |
| WAD.S.3040 | 20mm thick black granite (Material Prepare & Submit) (GUARD HOUSE) |  | 2026-10-22 → 2026-10-28 (+6d) | 60% → 85% | -24.7d → -22d |
| WAD.S.3060 | Safety Disconnect Switches complete with busbar, frame box (Material Prepare & Submit) (GUARD HOUSE) |  | 2026-10-22 → 2026-10-28 (+6d) | 60% → 85% | -30.3d → -28.6d |
| WAD.S.3300 | heavy steel cover with frame for tanks (Material Prepare & Submit) (GUARD HOUSE) |  | 2026-10-22 → 2026-10-28 (+6d) | 60% → 85% | -27.3d → -27.1d |
| WAD.S.3310 | HOLLOW METAL DOORS AND FRAMES (Material Prepare & Submit) (GUARD HOUSE) |  | 2026-10-22 → 2026-10-28 (+6d) | 60% → 85% | -27.8d → -27.2d |
| WAD.S.3320 | ALUMINIUM DOORS (Material Prepare & Submit) (GUARD HOUSE) |  | 2026-10-22 → 2026-10-28 (+6d) | 60% → 85% | -27.3d → -27.1d |
| WAD.S.3330 | TOILET AND BATH ACCESSROIES (Material Prepare & Submit) (GUARD HOUSE) |  | 2026-10-22 → 2026-10-28 (+6d) | 60% → 85% | -22.2d → -22d |
| WAD.S.3340 | Waste Receptacle (Material Prepare & Submit) (GUARD HOUSE) |  | 2026-10-22 → 2026-10-28 (+6d) | 60% → 85% | -29.3d → -28.3d |
| WAD.S.3350 | LIGHTING FIXTURES (Material Prepare & Submit) (GUARD HOUSE) |  | 2026-10-22 → 2026-10-28 (+6d) | 60% → 85% | -29.8d → -27.6d |
| WAD.S.3360 | Access control panel (Material Prepare & Submit) (GUARD HOUSE) |  | 2026-10-22 → 2026-10-28 (+6d) | 60% → 85% | -29.8d → -29.2d |
| WAD.S.3370 | VIDEO SURVEILLANCE (Material Prepare & Submit) (GUARD HOUSE) |  | 2026-10-22 → 2026-10-28 (+6d) | 60% → 85% | -31.8d → -31.2d |
| 2 | **Material Review & Approve** |  | 2026-10-29 → 2026-11-04 (+6d) |  |  |
| 1 | **Short Lead Items** |  | 2026-10-28 → 2026-10-29 (+1d) |  |  |
| WAD.S.3550 | ROAD WORKS (Material Review & Approve) (GUARD HOUSE) |  | 2026-10-21 → 2026-10-29 (+8d) |  | -27.9d → -34.9d |
| WAD.S.2680 | Manhole depth not exceeding 4.0m (Material Review & Approve) (GUARD HOUSE) | 2026-10-19 A | 2026-10-26 → 2026-10-28 (+2d) | 0% → 85% | -26.8d → -20.7d |
| WAD.S.4840 | UNDERGROUND DISTRIBUTION SYSTEM (Material Review & Approve) (GUARD HOUSE) | 2026-10-19 A | 2026-10-26 → 2026-10-28 (+2d) | 0% → 85% | -18.05d → -19.95d |
| WAD.S.3140 | SIDEWALKS AND CURBS (Material Review & Approve) (GUARD HOUSE) | 2026-10-21 A | 2026-10-28 → 2026-10-29 (+1d) | 0% → 85% | -34.25d → -32.05d |
| 2 | **Long Lead Items** |  | 2026-10-29 → 2026-11-04 (+6d) |  |  |
| WAD.S.1510 | Intrusion Detection system including processor control units items and joints (Material Review & Approve) (FENCES) |  | 2026-10-19 → 2026-10-28 (+9d) |  | -40.7d → -44.46d |
| WAD.S.3670 | WATER SUPPLY SYSTEM (Material Review & Approve) (GUARD HOUSE) |  | 2026-10-20 → 2026-10-28 (+8d) |  | -22.1d → -22.9d |
| WAD.S.3680 | SEWER AND DRAINAGE SYSTEM (Material Review & Approve) (GUARD HOUSE) |  | 2026-10-24 → 2026-10-29 (+5d) |  | -25.3d → -24.1d |
| WAD.S.3700 | HEATING, VENTILATION AND AIR CONDITIONING (Material Review & Approve) (GUARD HOUSE) |  | 2026-10-22 → 2026-10-29 (+7d) |  | -24.9d → -23.5d |
| WAD.S.3800 | TOILET AND BATH ACCESSROIES (Material Review & Approve) (GUARD HOUSE) |  | 2026-10-24 → 2026-10-29 (+5d) |  | -22.2d → -22d |
| WAD.S.3690 | SUPPLY AND INSTALL PLUMBING FIXTURES (Material Review & Approve) (GUARD HOUSE) |  | 2026-10-29 → 2026-11-04 (+6d) |  | -36.3d → -34.6d |
| WAD.S.1650 | Handholes\ Manholes (Material Review & Approve) (FENCES) | 2026-10-19 A | 2026-10-26 → 2026-10-29 (+3d) | 0% → 85% | -27.6d → -21.3d |
| WAD.S.3000 | ceramic floor tiles (Material Review & Approve) (GUARD HOUSE) | 2026-10-21 A | 2026-10-28 → 2026-10-29 (+1d) | 0% → 85% | -29.7d → -24.6d |
| WAD.S.3010 | install Riyadh stone cladding (Material Review & Approve) (GUARD HOUSE) | 2026-10-21 A | 2026-10-28 → 2026-10-29 (+1d) | 0% → 85% | -34.7d → -28.9d |
| WAD.S.3020 | UPS (Material Review & Approve) (GUARD HOUSE) | 2026-10-21 A | 2026-10-28 → 2026-10-29 (+1d) | 0% → 85% | -26.6d → -23.9d |

| ID | Task | Start | Finish | Complete | Total float |
| --- | --- | --- | --- | --- | --- |
| WAD.S.3130 | Panel boards (Material Review & Approve) (GUARD HOUSE) | 2026-10-21 A | 2026-10-28 → 2026-10-29 (+1d) | 0% → 85% | -34.7d → -28.9d |
| WAD.S.3500 | PANTRY CABINET (Material Review & Approve) (GUARD HOUSE) | 2026-10-22 A |  | 0% → 85% | -36.3d → -29.5d |
| WAD.S.3510 | 20mm thick black granite (Material Review & Approve) (GUARD HOUSE) | 2026-10-22 A |  | 0% → 85% | -24.7d → -22d |
| WAD.S.3520 | Workstation chair (Material Review & Approve) (GUARD HOUSE) | 2026-10-22 A |  | 0% → 85% | -26.6d → -23.3d |
| WAD.S.3660 | card reader IN/OUT (Material Review & Approve) (GUARD HOUSE) | 2026-10-21 → 2026-10-27 (+6d) | 2026-10-28 → 2026-11-03 (+6d) |  | -29.7d → -29.1d |
| WAD.S.4040 | aluminum framed double glazed windows (Material Review & Approve) (GUARD HOUSE) | 2026-10-21 → 2026-10-28 (+7d) | 2026-10-28 → 2026-11-04 (+7d) |  | -28.2d → -26.4d |
| WAD.S.4050 | Roller blind (Material Review & Approve) (GUARD HOUSE) | 2026-10-21 → 2026-10-28 (+7d) | 2026-10-28 → 2026-11-04 (+7d) |  | -32.2d → -33.4d |
| WAD.S.4070 | DATA COMMUNICATIONS (Material Review & Approve) (GUARD HOUSE) | 2026-10-21 → 2026-10-28 (+7d) | 2026-10-28 → 2026-11-04 (+7d) |  | -25.7d → -26.5d |
| WAD.S.4080 | COMPUTERS AND RELATED PERIPHERALS (Material Review & Approve) (GUARD HOUSE) | 2026-10-21 → 2026-10-28 (+7d) | 2026-10-28 → 2026-11-04 (+7d) |  | -27.2d → -29.2d |
| WAD.S.3600 | folding & sliding mounter combination ladder for building maintenance purpose (Material Review & Approve) (GUARD HOUSE) | 2026-10-22 → 2026-10-28 (+6d) | 2026-10-29 → 2026-11-04 (+6d) |  | -36.3d → -34.6d |
| WAD.S.3610 | overflow galvanized steel roof scupper (Material Review & Approve) (GUARD HOUSE) | 2026-10-22 → 2026-10-28 (+6d) | 2026-10-29 → 2026-11-04 (+6d) |  | -36.3d → -34.6d |
| WAD.S.3620 | counter desk (Material Review & Approve) (GUARD HOUSE) | 2026-10-22 → 2026-10-28 (+6d) | 2026-10-29 → 2026-11-04 (+6d) |  | -36.3d → -34.6d |
| WAD.S.3630 | install ceramic wall tiles (Material Review & Approve) (GUARD HOUSE) | 2026-10-22 → 2026-10-28 (+6d) | 2026-10-29 → 2026-11-04 (+6d) |  | -36.3d → -34.6d |
| WAD.S.3640 | PANEL SIGNAGE (Material Review & Approve) (GUARD HOUSE) | 2026-10-22 → 2026-10-28 (+6d) | 2026-10-29 → 2026-11-04 (+6d) |  | -36.3d → -34.6d |
| WAD.S.3650 | COMMUNICATIONS BACKBONE CABLING (Material Review & Approve) (GUARD HOUSE) | 2026-10-22 → 2026-10-28 (+6d) | 2026-10-29 → 2026-11-04 (+6d) |  | -36.3d → -34.6d |
| WAD.S.3770 | heavy steel cover with frame for tanks (Material Review & Approve) (GUARD HOUSE) | 2026-10-22 → 2026-10-28 (+6d) | 2026-10-29 → 2026-11-04 (+6d) |  | -27.3d → -27.1d |
| WAD.S.3780 | HOLLOW METAL DOORS AND FRAMES (Material Review & Approve) (GUARD HOUSE) | 2026-10-22 → 2026-10-28 (+6d) | 2026-10-29 → 2026-11-04 (+6d) |  | -27.8d → -27.2d |
| WAD.S.3790 | ALUMINIUM DOORS (Material Review & Approve) (GUARD HOUSE) | 2026-10-22 → 2026-10-28 (+6d) | 2026-10-29 → 2026-11-04 (+6d) |  | -27.3d → -27.1d |
| WAD.S.3810 | Waste Receptacle (Material Review & Approve) (GUARD HOUSE) | 2026-10-22 → 2026-10-28 (+6d) | 2026-10-29 → 2026-11-04 (+6d) |  | -29.3d → -28.3d |
| WAD.S.3820 | LIGHTING FIXTURES (Material Review & Approve) (GUARD HOUSE) | 2026-10-22 → 2026-10-28 (+6d) | 2026-10-29 → 2026-11-04 (+6d) |  | -29.8d → -27.6d |
| WAD.S.3830 | Access control panel (Material Review & Approve) (GUARD HOUSE) | 2026-10-22 → 2026-10-28 (+6d) | 2026-10-29 → 2026-11-04 (+6d) |  | -29.8d → -29.2d |
| WAD.S.3840 | VIDEO SURVEILLANCE (Material Review & Approve) (GUARD HOUSE) | 2026-10-22 → 2026-10-28 (+6d) | 2026-10-29 → 2026-11-04 (+6d) |  | -31.8d → -31.2d |
| 7 | **Procurement** |  | 2026-11-08 → 2026-11-07 (-1d) |  |  |
| 5 | **Fabrication & Delivery** |  | 2026-11-08 → 2026-11-07 (-1d) |  |  |
| 1 | **Short Lead Items** |  | 2026-10-29 → 2026-10-31 (+2d) |  |  |
| WAD.S.1430 | structural steel beams, posts and rods for wall fence (FENCES) |  | 2026-10-18 → 2026-10-27 (+9d) |  | -18.46d → -20.86d |
| WAD.S.1540 | tubes, bolts, nuts and steel plates to strengthened the wall fence and posts (FENCES) |  | 2026-10-18 → 2026-10-27 (+9d) |  | -12.15d → -20.15d |
| WAD.S.4780 | FIRE PROTECTION SYSTEM (fire extinguisher) (GUARD HOUSE) |  | 2026-10-18 → 2026-10-27 (+9d) |  | -10.75d → -18.75d |
| WAD.S.3290 | 100 mm GRP pipe service connections (GUARD HOUSE) |  | 2026-10-20 → 2026-10-28 (+8d) |  | -34.5d → -30.4d |
| WAD.S.4160 | GROUNDING (GUARD HOUSE) |  | 2026-10-20 → 2026-10-28 (+8d) |  | -12.05d → -19.05d |
| WAD.S.4170 | ROAD WORKS (GUARD HOUSE) |  | 2026-10-22 → 2026-10-31 (+9d) |  | -27.9d → -34.9d |
| WAD.S.2970 | Manhole depth not exceeding 4.0m (GUARD HOUSE) |  | 2026-10-27 → 2026-10-29 (+2d) |  | -26.8d → -20.7d |
| WAD.S.3910 | SIDEWALKS AND CURBS (GUARD HOUSE) |  | 2026-10-29 → 2026-10-31 (+2d) |  | -34.25d → -32.05d |
| WAD.S.5080 | UNDERGROUND DISTRIBUTION SYSTEM (GUARD HOUSE) |  | 2026-10-27 → 2026-10-28 (+1d) |  | -18.05d → -19.95d |
| 2 | **Long Lead Items** |  | 2026-11-08 → 2026-11-07 (-1d) |  |  |
| WAD.S.1570 | fix galvanized steel chain link gate including all necessary associated (FENCES) |  | 2026-10-18 → 2026-10-27 (+9d) |  | -19.01d → -21.41d |
| WAD.S.2470 | structural steel members and plates for main sliding gates (FENCES) |  | 2026-10-18 → 2026-10-27 (+9d) |  | -18.96d → -21.36d |
| WAD.S.2170 | Intrusion Detection system including processor control units items and joints (FENCES) |  | 2026-10-21 → 2026-10-29 (+8d) | 80% → 90% | -40.7d → -44.46d |
| WAD.S.4580 | WATER SUPPLY SYSTEM (GUARD HOUSE) |  | 2026-10-27 → 2026-10-29 (+2d) | 50% → 90% | -21.6d → -22.8d |
| WAD.S.2260 | Handholes\ Manholes (FENCES) |  | 2026-10-28 → 2026-10-31 (+3d) | 80% → 90% | -27.6d → -21.3d |
| WAD.S.3740 | ceramic floor tiles (GUARD HOUSE) |  |  | 80% → 90% | -28.6d → -23.75d |
| WAD.S.3750 | install Riyadh stone cladding (GUARD HOUSE) |  |  | 80% → 90% | -24.6d → -21.9d |
| WAD.S.3760 | UPS (GUARD HOUSE) |  | 2026-11-03 → 2026-10-31 (-3d) | 70% → 90% | -26.6d → -23.9d |
| WAD.S.3900 | Panel boards (GUARD HOUSE) |  | 2026-11-03 → 2026-10-31 (-3d) | 70% → 90% | -24.6d → -21.9d |
| WAD.S.4610 | HEATING, VENTILATION AND AIR CONDITIONING (GUARD HOUSE) |  | 2026-10-31 → 2026-11-01 (+1d) | 50% → 90% | -24.9d → -23.5d |
| WAD.S.4590 | SEWER AND DRAINAGE SYSTEM (GUARD HOUSE) |  |  | 50% → 90% | -25.3d → -24.1d |
| WAD.S.4650 | TOILET AND BATH ACCESSROIES (GUARD HOUSE) |  | 2026-11-01 → 2026-10-31 (-1d) | 50% → 90% | -22.2d → -22d |
| WAD.S.4120 | PANTRY CABINET (GUARD HOUSE) |  | 2026-11-04 → 2026-11-01 (-3d) | 70% → 90% | -27.3d → -24.2d |
| WAD.S.4130 | 20mm thick black granite (GUARD HOUSE) |  | 2026-11-03 → 2026-10-31 (-3d) | 70% → 90% | -24.7d → -22d |
| WAD.S.4140 | Workstation chair (GUARD HOUSE) |  | 2026-11-04 → 2026-11-01 (-3d) | 70% → 90% | -26.6d → -23.3d |
| WAD.S.4150 | Safety Disconnect Switches complete with busbar, frame box (GUARD HOUSE) |  | 2026-11-04 → 2026-11-01 (-3d) | 70% → 90% | -25.9d → -22.4d |
| WAD.S.4510 | folding & sliding mounter combination ladder for building maintenance purpose (GUARD HOUSE) |  | 2026-11-03 → 2026-11-07 (+4d) | 70% → 90% | -26.7d → -29.1d |
| WAD.S.4520 | overflow galvanized steel roof scupper (GUARD HOUSE) |  | 2026-11-03 → 2026-11-07 (+4d) | 70% → 85% | -26.7d → -29.75d |
| WAD.S.4530 | counter desk (GUARD HOUSE) |  | 2026-11-03 → 2026-11-07 (+4d) | 70% → 85% | -28d → -30.9d |
| WAD.S.4540 | install ceramic wall tiles (GUARD HOUSE) |  | 2026-11-03 → 2026-11-07 (+4d) | 70% → 85% | -24.4d → -27.8d |
| WAD.S.4570 | card reader IN/OUT (GUARD HOUSE) |  |  | 50% → 90% | -29.7d → -29.1d |
| WAD.S.4760 | aluminum framed double glazed windows (GUARD HOUSE) |  | 2026-11-04 → 2026-11-05 (+1d) | 50% → 90% | -28.2d → -26.4d |
| WAD.S.4770 | Roller blind (GUARD HOUSE) |  | 2026-11-04 → 2026-11-05 (+1d) | 50% → 90% | -32.2d → -33.4d |
| WAD.S.4790 | DATA COMMUNICATIONS (GUARD HOUSE) |  | 2026-11-04 → 2026-11-05 (+1d) | 50% → 90% | -25.7d → -26.5d |
| WAD.S.4820 | COMPUTERS AND RELATED PERIPHERALS (GUARD HOUSE) |  | 2026-11-03 → 2026-11-05 (+2d) | 50% → 90% | -27.2d → -29.2d |
| WAD.S.4550 | PANEL SIGNAGE (GUARD HOUSE) |  |  | 50% → 90% | -29.8d → -27.2d |
| WAD.S.4560 | COMMUNICATIONS BACKBONE CABLING (GUARD HOUSE) |  |  | 50% → 90% | -27.3d → -27.1d |
| WAD.S.4600 | SUPPLY PLUMBING FIXTURES (GUARD HOUSE) |  |  | 50% → 90% | -36.3d → -34.6d |
| WAD.S.4620 | heavy steel cover with frame for tanks (GUARD HOUSE) |  |  | 50% → 90% | -27.3d → -27.1d |
| WAD.S.4630 | HOLLOW METAL DOORS AND FRAMES (GUARD HOUSE) |  |  | 50% → 90% | -27.8d → -27.2d |
| WAD.S.4640 | ALUMINIUM DOORS (GUARD HOUSE) |  |  | 50% → 90% | -27.3d → -27.1d |
| WAD.S.4660 | Waste Receptacle (GUARD HOUSE) |  | 2026-11-08 → 2026-11-07 (-1d) | 50% → 90% | -29.3d → -28.3d |
| WAD.S.4670 | LIGHTING FIXTURES (GUARD HOUSE) |  |  | 50% → 90% | -29.8d → -27.6d |
| WAD.S.4680 | Access control panel (GUARD HOUSE) |  |  | 50% → 90% | -29.8d → -29.2d |
| WAD.S.4690 | VIDEO SURVEILLANCE (GUARD HOUSE) |  |  | 50% → 90% | -31.8d → -31.2d |

| ID | Task | Start | Finish | Complete | Total float |
| --- | --- | --- | --- | --- | --- |
| 8 | **Construction** |  | 2026-12-02 → 2026-11-26 (-6d) |  |  |
| 1 | **FENCES** |  | 2026-11-22 → 2026-11-26 (+4d) |  |  |
| 2 | **CONCRETE WORKS** |  | 2026-10-18 → 2026-10-27 (+9d) |  |  |
| 2 | **Part 2** |  | 2026-10-18 → 2026-10-27 (+9d) |  |  |
| WAD.S.2720 | cast in place reinforced concrete for the sub-structures - Part 2 |  | 2026-10-18 → 2026-10-27 (+9d) | 98% → 99% | -12.84d → -20.21d |
| 3 | **THERMAL & MOISTURE PROTECTION** |  | 2026-10-21 → 2026-10-27 (+6d) |  |  |
| 2 | **Part 2** |  | 2026-10-21 → 2026-10-27 (+6d) |  |  |
| WAD.S.3420 | Applying 2 coats of bitumen waterproofing paint on concrete surfaces - Part 2 |  | 2026-10-21 → 2026-10-27 (+6d) |  | -13.45d → -18.83d |
| 6 | **SPECIAL CONSTRUCTION- STRUCTURAL STEEL** |  | 2026-10-20 → 2026-10-29 (+9d) |  |  |
| WAD.S.4720 | galvanized steel chain link gates Installation - Part 1 |  | 2026-10-19 A | 96% → 100% | -12.84d → none |
| 2 | **Part 2** |  | 2026-10-20 → 2026-10-29 (+9d) |  |  |
| WAD.S.2920 | install structural steel beams, posts and rods for wall fence - Part 2 |  | 2026-10-20 → 2026-10-27 (+7d) | 98% → 99% | -19.01d → -21.41d |
| WAD.S.3430 | Install tubes, bolts, nuts and steel plates to strengthened the wall fence and posts - Part 2 |  | 2026-10-20 → 2026-10-28 (+8d) | 93% → 98% | -12.22d → -19.37d |
| WAD.S.3950 | fix galvanized steel chain link fence wall; including steel tube framing and posts, turn buckle - Part 2 |  | 2026-10-20 → 2026-10-28 (+8d) | 93% → 98% | -12.22d → -19.17d |
| WAD.S.4730 | galvanized steel chain link gates Installation - Part 2 |  | 2026-10-20 → 2026-10-29 (+9d) |  | -12.84d → -20.75d |
| 8 | **ELECTRICAL WORKS** |  | 2026-11-14 → 2026-11-19 (+5d) |  |  |
| WAD.S.4810 | Handholes\ Manholes |  | 2026-11-14 A | 90% → 100% | -33.5d → none |
| WAD.S.2950 | Fiber Optic Outdoor Cable |  | 2026-11-02 → 2026-11-09 (+7d) | 93% → 98% | -40.7d → -44.46d |
| WAD.S.2640 | Intrusion Detection system including processor control units items and joints - 1st Fix | 2026-10-21 → 2026-10-29 (+8d) | 2026-11-01 → 2026-11-09 (+8d) |  | -40.7d → -44.46d |
| WAD.S.2960 | Road crossing ducts for Fiber Optic Cable | 2026-11-01 → 2026-11-09 (+8d) | 2026-11-09 → 2026-11-17 (+8d) |  | -32.9d → -36.7d |
| WAD.S.3720 | Fiber Optic Outdoor Cable To Close The Loop | 2026-11-02 → 2026-11-09 (+7d) | 2026-11-12 → 2026-11-19 (+7d) |  | -40.7d → -44.46d |
| 4 | **ELECTRICAL GATE BARRIER** |  | 2026-11-22 → 2026-11-26 (+4d) |  |  |
| WAD.S.4830 | Install, Electrical gate barrier complete (cables, conduits, pipes, pulling cables in the conduits) | 2026-11-12 A | 2026-11-22 → 2026-11-26 (+4d) | 0% → 30% | -40.7d → -44.46d |
| WAD.S.4180 | install liquid applied waterproofing coating single-component pitch modified polyurethane based elastomeric | 2026-10-18 A | 2026-10-29 A | 0% → 100% | -21d → none |
| WAD.S.4200 | install 75mm thick rigid insulation (extruded polystyrene) | 2026-10-18 A | 2026-10-29 A | 0% → 100% | -21d → none |
| WAD.S.4220 | install 300 micron polyethylene sheet | 2026-10-18 A | 2026-10-29 A | 0% → 100% | -21d → none |
| WAD.S.4230 | install 50mm thick loose gravel toppings | 2026-10-18 A | 2026-10-29 A | 0% → 100% | -21d → none |
| WAD.S.4240 | install high density polyisocynurate cover board | 2026-10-18 A | 2026-10-29 A | 0% → 100% | -21d → none |
| WAD.S.4250 | install UV resistant geotextile sheet | 2026-10-18 A | 2026-10-29 A | 0% → 100% | -21d → none |
| WAD.S.4260 | fixing 3mm thick extruded aluminum flashing 40mm with sealant and all other accessories | 2026-10-18 A | 2026-10-29 A | 0% → 100% | -21d → none |
| WAD.S.4280 | lay epoxy 2 coating for inner surfaces for bottom of the roof |  | 2026-10-19 A | 88% → 100% | -21d → none |
| 9 | **FINISHES** |  | 2026-11-05 → 2026-11-07 (+2d) |  |  |
| WAD.S.5530 | install two coats of acrylic paint on internal walls |  | 2026-11-03 A | 80% → 100% | -24.4d → none |
| WAD.S.5540 | install two coats of acrylic paint (suitable for exterior use) on external |  | 2026-11-03 → 2026-11-07 (+4d) | 80% → 90% | -24.4d → -27.8d |
| WAD.S.4940 | install ceramic floor tiles | 2026-10-31 A | 2026-11-03 A | 0% → 100% | -28.6d → none |
| WAD.S.5010 | install granite saddles and thresholds | 2026-10-31 A | 2026-11-03 A | 0% → 100% | -28.6d → none |
| WAD.S.5130 | installation of Fire extinguishers as per drawings, specifications |  | 2026-11-04 → 2026-11-01 (-3d) |  | -25.65d → -23.75d |
| WAD.S.5140 | gully traps with heavy duty cover |  | 2026-11-04 → 2026-11-03 A (-1d) | 70% → 100% | -25.65d → none |
| WAD.S.5150 | chamber with heavy duty cover |  | 2026-11-04 → 2026-11-03 A (-1d) | 70% → 100% | -25.65d → none |
| WAD.S.5160 | INSTALL PLUMBING FIXTURES |  | 2026-11-04 → 2026-11-01 (-3d) |  | -25.65d → -23.75d |
| WAD.S.5910 | HEATING, VENTILATION AND AIR CONDITIONING - Final Fix |  | 2026-11-04 → 2026-11-03 A (-1d) | 50% → 100% | -25.65d → none |
| WAD.S.5980 | WATER SUPPLY SYSTEM - Final Fix | 2026-11-01 A | 2026-11-04 → 2026-11-01 (-3d) | 0% → 80% | -25.65d → -24.1d |
| WAD.S.5940 | power source with built-in photocell sensor for automatic electrical connection during day/light times - Final Fix | 2026-11-01 A | 2026-11-04 A | 0% → 100% | -25.65d → none |
| WAD.S.6140 | UNDERGROUND DISTRIBUTION SYSTEM - Final Fix | 2026-11-02 A | 2026-11-04 A | 0% → 100% | -25.65d → none |
| WAD.S.5950 | LIGHTING FIXTURES - Final Fix |  | 2026-11-09 → 2026-11-07 (-2d) | 10% → 80% | -29.8d → -27.6d |
| WAD.S.5960 | GROUNDING - Final Fix | 2026-11-05 A | 2026-11-09 → 2026-11-07 (-2d) | 0% → 80% | -29.8d → -27.6d |
| WAD.S.6150 | installation of Wiring devices includes switches and Receptacle outlets complete with device boxes - Final Fix |  | 2026-11-09 → 2026-11-07 (-2d) |  | -29.8d → -27.6d |
| WAD.S.6310 | ELECTRICAL GATE BARRIER | 2026-11-08 A |  | 0% → 30% | -31.8d → -31.2d |
| WAD.S.6320 | fire alarm system including wires, conduit and other materials - Final Fix | 2026-11-08 A | 2026-11-11 A | 0% → 100% | -31.8d → none |
| WAD.S.6330 | Analog addressable fire alarm control panel with battery | 2026-11-08 A | 2026-11-11 A | 0% → 100% | -31.8d → none |
| WAD.S.6340 | LIGHTING AND POWER TYPE PANELBOARDS - Final Fix | 2026-11-08 A |  | 0% → 50% | -31.8d → -31.2d |
| WAD.S.6430 | LIGHTNING PROTECTION | 2026-11-09 A | 2026-11-11 A | 0% → 100% | -31.8d → none |
| WAD.S.6440 | Intelligent Ionization / Photoelectric smoke and heat detector with base | 2026-11-09 A | 2026-11-11 A | 0% → 100% | -31.8d → none |
| 4 | **METALS** |  | 2026-11-08 → 2026-11-09 (+1d) |  |  |
| WAD.S.5500 | folding & sliding mounter combination ladder for building maintenance purpose | 2026-11-05 → 2026-11-07 (+2d) | 2026-11-08 → 2026-11-09 (+1d) |  | -28.6d → -29.1d |
| WAD.S.5520 | install heavy steel cover with frame including all necessary fixings | 2026-11-05 → 2026-11-07 (+2d) | 2026-11-08 → 2026-11-09 (+1d) |  | -28.6d → -29.75d |
| 5 | **WOODS AND PLASTICS** | 2026-11-04 → 2026-11-07 (+3d) | 2026-11-08 → 2026-11-10 (+2d) |  |  |
| WAD.S.5880 | PANTRY CABINET | 2026-11-05 → 2026-11-07 (+2d) | 2026-11-08 → 2026-11-09 (+1d) |  | -28.6d → -29.75d |
| WAD.S.5890 | COUNTER DESK | 2026-11-04 → 2026-11-07 (+3d) | 2026-11-08 → 2026-11-10 (+2d) |  | -28.6d → -30.9d |
| WAD.S.5050 | install hollow metal door |  | 2026-11-08 → 2026-11-04 A (-4d) | 70% → 100% | -28.6d → none |
| WAD.S.5900 | Install Aluminum Door | 2026-11-04 A |  | 0% → 80% | -28.6d → -28.5d |
| WAD.S.4290 | install liquid applied waterproofing coating single-component pitch modified polyurethane based elastomeric | 2026-10-18 A | 2026-10-29 A | 0% → 100% | -22d → none |
| WAD.S.4310 | install 75mm thick rigid insulation (extruded polystyrene) | 2026-10-18 A | 2026-10-29 A | 0% → 100% | -22d → none |
| WAD.S.4330 | install 300 micron polyethylene sheet | 2026-10-18 A | 2026-10-29 A | 0% → 100% | -22d → none |
| WAD.S.4340 | install 50mm thick loose gravel toppings | 2026-10-18 A | 2026-10-29 A | 0% → 100% | -22d → none |
| WAD.S.4350 | install high density polyisocynurate cover board | 2026-10-18 A | 2026-10-29 A | 0% → 100% | -22d → none |
| WAD.S.4360 | install UV resistant geotextile sheet | 2026-10-18 A | 2026-10-29 A | 0% → 100% | -22d → none |
| WAD.S.4370 | fixing 3mm thick extruded aluminum flashing 40mm with sealant and all other accessories | 2026-10-18 A | 2026-10-29 A | 0% → 100% | -22d → none |
| WAD.S.4390 | lay epoxy 2 coating for inner surfaces for bottom of the roof |  | 2026-10-21 A | 65% → 100% | -22d → none |
| 9 | **FINISHES** |  | 2026-10-25 → 2026-10-27 (+2d) |  |  |

| ID | Task | Start | Finish | Complete | Total float |
| --- | --- | --- | --- | --- | --- |
| WAD.S.2240 | gypsum board suspended ceiling | 2026-10-18 A | 2026-10-21 A | 0% → 100% | -22d → none |
| WAD.S.2370 | install ceramic floor tiles | 2026-10-18 A | 2026-10-20 A | 0% → 100% | -13d → none |
| WAD.S.4860 | install granite saddles and thresholds | 2026-10-18 A | 2026-10-21 A | 0% → 100% | -22.75d → none |
| WAD.S.2520 | install two coats of acrylic paint on internal walls |  | 2026-10-20 → 2026-10-19 A (-1d) | 70% → 100% | -13d → none |
| WAD.S.2530 | install two coats of acrylic paint (suitable for exterior use) on external |  | 2026-10-20 → 2026-10-27 (+7d) | 70% → 90% | -13d → -18.2d |
| WAD.S.5570 | gully traps with heavy duty cover |  | 2026-10-25 → 2026-10-22 A (-3d) | 70% → 100% | -22.75d → none |
| WAD.S.5580 | chamber with heavy duty cover |  | 2026-10-25 → 2026-10-22 A (-3d) | 70% → 100% | -22.75d → none |
| WAD.S.5560 | installation of Fire extinguishers as per drawings, specifications | 2026-10-21 → 2026-10-31 (+10d) | 2026-10-25 → 2026-11-02 (+8d) |  | -22.75d → -30d |
| WAD.S.5590 | INSTALL PLUMBING FIXTURES | 2026-11-07 A | 2026-11-10 → 2026-11-08 (-2d) | 0% → 50% | -36.3d → -34.6d |
| WAD.S.5600 | HEATING, VENTILATION AND AIR CONDITIONING - Final Fix |  | 2026-11-10 → 2026-11-08 A (-2d) | 50% → 100% | -36.3d → none |
| WAD.S.5750 | WATER SUPPLY SYSTEM - Final Fix | 2026-11-07 A | 2026-11-10 → 2026-11-08 (-2d) | 0% → 80% | -36.3d → -34.6d |
| 2 | **ELECTRICAL WORKS - Final Fix** | 2026-11-05 → 2026-11-03 (-2d) |  |  |  |
| WAD.S.5170 | 12-Port, SMF, Fiber Optic Patch Panels; | 2026-11-05 → 2026-11-03 (-2d) | 2026-11-10 → 2026-11-08 (-2d) |  | -36.3d → -34.6d |
| WAD.S.5180 | VIDEO SURVEILLANCE | 2026-11-05 → 2026-11-03 (-2d) | 2026-11-10 → 2026-11-08 (-2d) |  | -36.3d → -34.6d |
| WAD.S.5190 | CCTV storage system, as specified; | 2026-11-05 → 2026-11-03 (-2d) | 2026-11-10 → 2026-11-08 (-2d) |  | -36.3d → -34.6d |
| WAD.S.5660 | card reader IN/OUT - Final Fix | 2026-11-07 → 2026-11-04 (-3d) | 2026-11-10 → 2026-11-08 (-2d) |  | -36.3d → -34.6d |
| WAD.S.5670 | 12-Port CAT6A UTP fully loaded patch panel | 2026-11-07 → 2026-11-04 (-3d) | 2026-11-10 → 2026-11-08 (-2d) |  | -36.3d → -34.6d |
| WAD.S.5680 | COMPUTERS AND RELATED PERIPHERALS | 2026-11-07 → 2026-11-04 (-3d) | 2026-11-10 → 2026-11-08 (-2d) |  | -36.3d → -34.6d |
| WAD.S.5690 | Central (Headend) System Components; | 2026-11-07 → 2026-11-04 (-3d) | 2026-11-10 → 2026-11-08 (-2d) |  | -36.3d → -34.6d |
| WAD.S.5700 | VSS System, as specified; | 2026-11-07 → 2026-11-04 (-3d) | 2026-11-10 → 2026-11-08 (-2d) |  | -36.3d → -34.6d |
| WAD.S.5710 | CCTV cameras - Final Fix | 2026-11-07 → 2026-11-04 (-3d) | 2026-11-10 → 2026-11-08 (-2d) |  | -36.3d → -34.6d |
| WAD.S.6030 | Access control panel - Final Fix | 2026-11-08 → 2026-11-05 (-3d) | 2026-11-10 → 2026-11-08 (-2d) |  | -36.3d → -34.6d |
| WAD.S.6040 | 20A , ATS ( Automatic transfer switch) for UPS | 2026-11-08 → 2026-11-05 (-3d) | 2026-11-10 → 2026-11-08 (-2d) |  | -36.3d → -34.6d |
| WAD.S.5630 | power source with built-in photocell sensor for automatic electrical connection during day/light times - Final Fix | 2026-11-07 A | 2026-11-10 A | 0% → 100% | -36.3d → none |
| WAD.S.5640 | LIGHTING FIXTURES - Final Fix | 2026-11-07 A | 2026-11-10 → 2026-11-08 (-2d) | 0% → 80% | -36.3d → -34.6d |
| WAD.S.5650 | GROUNDING - Final Fix | 2026-11-07 A | 2026-11-10 → 2026-11-08 (-2d) | 0% → 80% | -36.3d → -34.6d |
| WAD.S.5720 | ELECTRICAL GATE BARRIER | 2026-11-07 A | 2026-11-10 → 2026-11-08 (-2d) | 0% → 30% | -36.3d → -34.6d |
| WAD.S.5730 | fire alarm system including wires, conduit and other materials - Final Fix | 2026-11-07 A | 2026-11-10 A | 0% → 100% | -36.3d → none |
| WAD.S.5740 | Analog addressable fire alarm control panel with battery | 2026-11-07 A | 2026-11-10 A | 0% → 100% | -36.3d → none |
| WAD.S.5770 | LIGHTING AND POWER TYPE PANELBOARDS - Final Fix | 2026-11-07 A | 2026-11-10 → 2026-11-08 (-2d) | 0% → 50% | -30.3d → -28.6d |
| WAD.S.6010 | UNDERGROUND DISTRIBUTION SYSTEM - Final Fix | 2026-11-08 A | 2026-11-10 A | 0% → 100% | -36.3d → none |
| WAD.S.6020 | installation of Wiring devices includes switches and Receptacle outlets complete with device boxes - Final Fix | 2026-11-08 A | 2026-11-10 → 2026-11-08 (-2d) | 0% → 80% | -36.3d → -34.6d |
| WAD.S.6050 | LIGHTNING PROTECTION | 2026-11-08 A | 2026-11-10 A | 0% → 100% | -36.3d → none |
| WAD.S.6060 | Intelligent Ionization / Photoelectric smoke and heat detector with base | 2026-11-08 A | 2026-11-10 A | 0% → 100% | -36.3d → none |
| 4 | **METALS** |  | 2026-10-24 → 2026-10-28 (+4d) |  |  |
| WAD.S.2480 | folding & sliding mounter combination ladder for building maintenance purpose | 2026-10-22 → 2026-10-27 (+5d) | 2026-10-24 → 2026-10-28 (+4d) |  | -22d → -21.6d |
| WAD.S.2500 | install heavy steel cover with frame including all necessary fixings | 2026-10-22 → 2026-10-27 (+5d) | 2026-10-24 → 2026-10-28 (+4d) |  | -22d → -21.6d |
| 5 | **WOODS AND PLASTICS** | 2026-10-21 → 2026-10-27 (+6d) | 2026-10-24 → 2026-10-29 (+5d) |  |  |
| WAD.S.2350 | COUNTER DESK | 2026-10-21 → 2026-10-27 (+6d) | 2026-10-24 → 2026-10-29 (+5d) |  | -22d → -22.6d |
| WAD.S.2510 | PANTRY CABINET | 2026-10-22 → 2026-10-27 (+5d) | 2026-10-24 → 2026-10-28 (+4d) |  | -22d → -21.6d |
| 8 | **DOORS & WINDOWS** |  | 2026-10-26 → 2026-10-27 (+1d) |  |  |
| WAD.S.2360 | Install Aluminum Door | 2026-10-21 A | 2026-10-24 → 2026-10-27 (+3d) | 0% → 80% | -22d → -22.6d |
| WAD.S.2200 | install hollow metal door | 2026-10-22 A | 2026-10-26 → 2026-10-22 A (-4d) | 0% → 100% | -21d → none |
| 10 | **SPECIALTIES** | 2026-11-07 → 2026-11-08 (+1d) |  |  |  |
| WAD.S.5550 | TOILET ACCESSROIES | 2026-11-07 → 2026-11-08 (+1d) |  |  | -35.3d → -34d |
| 11 | **FURNISHINGS** | 2026-11-09 → 2026-11-07 (-2d) | 2026-11-10 → 2026-11-08 (-2d) |  |  |
| WAD.S.6210 | Workstation chair | 2026-11-09 → 2026-11-07 (-2d) | 2026-11-10 → 2026-11-08 (-2d) |  | -36.3d → -34.6d |
| WAD.S.6220 | Workstation table | 2026-11-09 → 2026-11-07 (-2d) | 2026-11-10 → 2026-11-08 (-2d) |  | -36.3d → -34.6d |
| WAD.S.6230 | Roller blind | 2026-11-09 → 2026-11-07 (-2d) | 2026-11-10 → 2026-11-08 (-2d) |  | -36.3d → -34.6d |
| WAD.S.6240 | Waste Receptacle | 2026-11-09 → 2026-11-07 (-2d) | 2026-11-10 → 2026-11-08 (-2d) |  | -36.3d → -34.6d |
| WAD.S.6570 | install liquid applied waterproofing coating single-component pitch modified polyurethane based elastomeric | 2026-10-22 A | 2026-11-04 A | 0% → 100% | -26.5d → none |
| WAD.S.6620 | install 75mm thick rigid insulation (extruded polystyrene) | 2026-10-22 A | 2026-11-04 A | 0% → 100% | -26.5d → none |
| WAD.S.6640 | install 300 micron polyethylene sheet | 2026-10-22 A | 2026-11-04 A | 0% → 100% | -26.5d → none |
| WAD.S.6650 | install 50mm thick loose gravel toppings | 2026-10-22 A | 2026-11-04 A | 0% → 100% | -26.5d → none |
| WAD.S.6660 | install high density polyisocynurate cover board | 2026-10-22 A | 2026-11-04 A | 0% → 100% | -26.5d → none |
| WAD.S.6670 | install UV resistant geotextile sheet | 2026-10-22 A | 2026-11-04 A | 0% → 100% | -26.5d → none |
| WAD.S.6680 | fixing 3mm thick extruded aluminum flashing 40mm with sealant and all other accessories | 2026-10-22 A | 2026-11-04 A | 0% → 100% | -26.5d → none |
| WAD.S.7370 | lay epoxy 2 coating for inner surfaces for bottom of the roof |  | 2026-10-27 A | 65% → 100% | -26.5d → none |
| 9 | **FINISHES** |  | 2026-10-25 → 2026-10-27 (+2d) |  |  |
| WAD.S.6780 | install two coats of acrylic paint on internal walls |  | 2026-10-18 A | 80% → 100% | -56.4d → none |
| WAD.S.6790 | install two coats of acrylic paint (suitable for exterior use) on external |  | 2026-10-18 → 2026-10-27 (+9d) | 80% → 90% | -56.4d → -29.1d |
| WAD.S.6730 | install ceramic floor tiles | 2026-10-18 A | 2026-10-20 A | 0% → 100% | -56d → none |
| WAD.S.6750 | install granite saddles and thresholds | 2026-10-18 A | 2026-10-21 A | 0% → 100% | -22.75d → none |
| WAD.S.6930 | gully traps with heavy duty cover |  | 2026-10-29 → 2026-10-27 A (-2d) | 70% → 100% | -26.5d → none |
| WAD.S.6940 | chamber with heavy duty cover |  | 2026-10-29 → 2026-10-27 A (-2d) | 70% → 100% | -26.5d → none |
| WAD.S.6900 | installation of Fire extinguishers as per drawings, specifications | 2026-10-26 → 2026-10-31 (+5d) | 2026-10-29 → 2026-11-02 (+4d) |  | -26.5d → -30d |
| WAD.S.6960 | HEATING, VENTILATION AND AIR CONDITIONING - Final Fix |  | 2026-11-10 A | 55% → 100% | -36.3d → none |
| WAD.S.6950 | INSTALL PLUMBING FIXTURES | 2026-11-07 A | 2026-11-10 → 2026-11-08 (-2d) | 0% → 50% | -36.3d → -34.6d |
| WAD.S.6990 | Bulbblers and Spreyers of IRRIGATION SYSTEM | 2026-11-07 A | 2026-11-10 A | 0% → 100% | -36.3d → none |
| WAD.S.7230 | WATER SUPPLY SYSTEM - Final Fix | 2026-11-07 A | 2026-11-10 → 2026-11-08 (-2d) | 0% → 80% | -36.3d → -34.6d |

| ID | Task | Start | Finish | Complete | Total float |
| --- | --- | --- | --- | --- | --- |
| WAD.S.7240 | IRRIGATION SYSTEM - Final Fix | 2026-11-07 A | 2026-11-10 A | 0% → 100% | -30.3d → none |
| 2 | **ELECTRICAL WORKS - Final Fix** | 2026-11-05 → 2026-11-03 (-2d) |  |  |  |
| WAD.S.7100 | 12-Port, SMF, Fiber Optic Patch Panels; | 2026-11-05 → 2026-11-03 (-2d) | 2026-11-10 → 2026-11-08 (-2d) |  | -36.3d → -34.6d |
| WAD.S.7120 | VIDEO SURVEILLANCE | 2026-11-05 → 2026-11-03 (-2d) | 2026-11-10 → 2026-11-08 (-2d) |  | -36.3d → -34.6d |
| WAD.S.7150 | CCTV storage system, as specified; | 2026-11-05 → 2026-11-03 (-2d) | 2026-11-10 → 2026-11-08 (-2d) |  | -36.3d → -34.6d |
| WAD.S.7070 | card reader IN/OUT - Final Fix | 2026-11-07 → 2026-11-04 (-3d) | 2026-11-10 → 2026-11-08 (-2d) |  | -36.3d → -34.6d |
| WAD.S.7090 | 12-Port CAT6A UTP fully loaded patch panel | 2026-11-07 → 2026-11-04 (-3d) | 2026-11-10 → 2026-11-08 (-2d) |  | -36.3d → -34.6d |
| WAD.S.7110 | COMPUTERS AND RELATED PERIPHERALS | 2026-11-07 → 2026-11-04 (-3d) | 2026-11-10 → 2026-11-08 (-2d) |  | -36.3d → -34.6d |
| WAD.S.7130 | Central (Headend) System Components; | 2026-11-07 → 2026-11-04 (-3d) | 2026-11-10 → 2026-11-08 (-2d) |  | -36.3d → -34.6d |
| WAD.S.7140 | VSS System, as specified; | 2026-11-07 → 2026-11-04 (-3d) | 2026-11-10 → 2026-11-08 (-2d) |  | -36.3d → -34.6d |
| WAD.S.7160 | CCTV cameras - Final Fix | 2026-11-07 → 2026-11-04 (-3d) | 2026-11-10 → 2026-11-08 (-2d) |  | -36.3d → -34.6d |
| WAD.S.7080 | Access control panel - Final Fix | 2026-11-08 → 2026-11-05 (-3d) | 2026-11-10 → 2026-11-08 (-2d) |  | -36.3d → -34.6d |
| WAD.S.7170 | 20A , ATS ( Automatic transfer switch) for UPS | 2026-11-08 → 2026-11-05 (-3d) | 2026-11-10 → 2026-11-08 (-2d) |  | -36.3d → -34.6d |
| WAD.S.7020 | power source with built-in photocell sensor for automatic electrical connection during day/light times - Final Fix | 2026-11-07 A | 2026-11-10 A | 0% → 100% | -36.3d → none |
| WAD.S.7040 | LIGHTING FIXTURES - Final Fix | 2026-11-07 A | 2026-11-10 → 2026-11-08 (-2d) | 0% → 80% | -36.3d → -34.6d |
| WAD.S.7060 | GROUNDING - Final Fix | 2026-11-07 A | 2026-11-10 → 2026-11-08 (-2d) | 0% → 80% | -36.3d → -34.6d |
| WAD.S.7180 | ELECTRICAL GATE BARRIER | 2026-11-07 A | 2026-11-10 → 2026-11-08 (-2d) | 0% → 30% | -36.3d → -34.6d |
| WAD.S.7200 | fire alarm system including wires, conduit and other materials - Final Fix | 2026-11-07 A | 2026-11-10 A | 0% → 100% | -36.3d → none |
| WAD.S.7210 | Analog addressable fire alarm control panel with battery | 2026-11-07 A | 2026-11-10 A | 0% → 100% | -36.3d → none |
| WAD.S.7250 | LIGHTING AND POWER TYPE PANELBOARDS - Final Fix | 2026-11-07 A | 2026-11-10 A | 0% → 100% | -30.3d → none |
| WAD.S.7030 | UNDERGROUND DISTRIBUTION SYSTEM - Final Fix | 2026-11-08 A | 2026-11-10 A | 0% → 100% | -36.3d → none |
| WAD.S.7050 | installation of Wiring devices includes switches and Receptacle outlets complete with device boxes - Final Fix |  | 2026-11-10 → 2026-11-08 (-2d) |  | -36.3d → -34.6d |
| WAD.S.7190 | LIGHTNING PROTECTION | 2026-11-08 A | 2026-11-10 A | 0% → 100% | -36.3d → none |
| WAD.S.7220 | Intelligent Ionization / Photoelectric smoke and heat detector with base | 2026-11-08 A | 2026-11-10 A | 0% → 100% | -36.3d → none |
| 4 | **METALS** |  | 2026-10-24 → 2026-10-28 (+4d) |  |  |
| WAD.S.6510 | folding & sliding mounter combination ladder for building maintenance purpose | 2026-10-22 → 2026-10-27 (+5d) | 2026-10-24 → 2026-10-28 (+4d) |  | -25d → -24d |
| WAD.S.6530 | install heavy steel cover with frame including all necessary fixings | 2026-10-22 → 2026-10-27 (+5d) | 2026-10-24 → 2026-10-28 (+4d) |  | -25d → -24d |
| 5 | **WOODS AND PLASTICS** | 2026-10-21 → 2026-10-27 (+6d) | 2026-10-24 → 2026-10-29 (+5d) |  |  |
| WAD.S.6540 | PANTRY CABINET | 2026-10-22 → 2026-10-27 (+5d) | 2026-10-24 → 2026-10-28 (+4d) |  | -25d → -24d |
| WAD.S.6550 | COUNTER DESK | 2026-10-21 → 2026-10-27 (+6d) | 2026-10-24 → 2026-10-29 (+5d) |  | -22d → -22.6d |
| 8 | **DOORS & WINDOWS** |  | 2026-10-26 → 2026-10-27 (+1d) |  |  |
| WAD.S.6700 | Install Aluminum Door | 2026-10-21 A | 2026-10-24 → 2026-10-27 (+3d) | 0% → 80% | -22d → -22.6d |
| WAD.S.6710 | install hollow metal door |  | 2026-10-26 → 2026-10-22 A (-4d) | 70% → 100% | -25d → none |
| 10 | **SPECIALTIES** | 2026-11-07 → 2026-11-08 (+1d) |  |  |  |
| WAD.S.6840 | TOILET ACCESSROIES | 2026-11-07 → 2026-11-08 (+1d) |  |  | -35.3d → -34d |
| 11 | **FURNISHINGS** | 2026-11-09 → 2026-11-07 (-2d) | 2026-11-10 → 2026-11-08 (-2d) |  |  |
| WAD.S.6860 | Workstation chair | 2026-11-09 → 2026-11-07 (-2d) | 2026-11-10 → 2026-11-08 (-2d) |  | -36.3d → -34.6d |
| WAD.S.6870 | Workstation table | 2026-11-09 → 2026-11-07 (-2d) | 2026-11-10 → 2026-11-08 (-2d) |  | -36.3d → -34.6d |
| WAD.S.6880 | Roller blind | 2026-11-09 → 2026-11-07 (-2d) | 2026-11-10 → 2026-11-08 (-2d) |  | -36.3d → -34.6d |
| WAD.S.6890 | Waste Receptacle | 2026-11-09 → 2026-11-07 (-2d) | 2026-11-10 → 2026-11-08 (-2d) |  | -36.3d → -34.6d |
| 4 | **EXT. WORKS** |  | 2026-12-02 → 2026-11-24 (-8d) |  |  |
| 1 | **EXTERNAL WORKS** |  | 2026-12-02 → 2026-11-24 (-8d) |  |  |
| WAD.S.1100 | Excavation Works | 2026-10-18 A | 2026-11-04 A | 0% → 100% | -56.4d → none |
| WAD.S.4990 | ROAD WORKS | 2026-11-24 → 2026-10-31 (-24d) | 2026-12-02 → 2026-11-08 (-24d) |  | -55.4d → -34.9d |
| WAD.S.1290 | 40 mm Pipes | 2026-11-04 A | 2026-11-18 A | 0% → 100% | -56.4d → none |
| WAD.S.3270 | GRP Pipes laid in trenches | 2026-11-04 A | 2026-11-18 A | 0% → 100% | -56.4d → none |
| WAD.S.4020 | install 100 mm GRP pipe service connections between building sewage inspection chamber and main wastewater line | 2026-11-09 A | 2026-11-18 A | 0% → 100% | -51.4d → none |
| WAD.S.4030 | Manhole depth not exceeding 4.0m | 2026-11-09 A | 2026-11-18 A | 0% → 100% | -37.4d → none |
| WAD.S.3880 | 100 mm Pipe in trench not exceeding 2.00 m depth to invert | 2026-11-10 A | 2026-11-18 A | 0% → 100% | -56.4d → none |
| WAD.S.4800 | Backfilling Works | 2026-11-18 A | 2026-11-24 A | 0% → 100% | -56.4d → none |
| WAD.S.4980 | SIDEWALKS AND CURBS | 2026-11-24 A | 2026-12-02 → 2026-11-05 (-27d) | 0% → 30% | -56.4d → -32.05d |
| WAD.S.5000 | install flag pole 6 M height | 2026-11-24 A | 2026-11-30 → 2026-11-01 (-29d) | 0% → 70% | -56.4d → -31.65d |
| 4 | **Testing & Commissioning** | 2026-11-30 → 2026-11-01 (-29d) | 2026-12-10 → 2026-11-15 (-25d) |  |  |
| WAD.S.5440 | Testing & Commissioning - Electrical Systems | 2026-11-30 → 2026-11-01 (-29d) | 2026-12-10 → 2026-11-11 (-29d) |  | -56.4d → -31.65d |
| WAD.S.5490 | Testing & Commissioning - Mechanical Systems | 2026-11-30 → 2026-11-01 (-29d) | 2026-12-10 → 2026-11-11 (-29d) |  | -56.4d → -31.65d |
| 1 | **Engineering** | 2026-11-30 → 2026-11-01 (-29d) | 2026-12-10 → 2026-11-15 (-25d) |  |  |
| 1 | **As-Built Drawings** | 2026-11-30 → 2026-11-04 (-26d) | 2026-12-09 → 2026-11-15 (-24d) |  |  |
| WAD.S.5430 | Prepare & Submit | 2026-11-30 → 2026-11-04 (-26d) | 2026-12-05 → 2026-11-09 (-26d) |  | -56.4d → -34.6d |
| WAD.S.6260 | Review & Approve | 2026-12-02 → 2026-11-08 (-24d) | 2026-12-09 → 2026-11-15 (-24d) |  | -55.4d → -34.9d |
| 2 | **Operational Spares** | 2026-11-30 → 2026-11-04 (-26d) | 2026-12-10 → 2026-11-15 (-25d) |  |  |
| WAD.S.5450 | Prepare & Submit | 2026-11-30 → 2026-11-04 (-26d) | 2026-12-05 → 2026-11-09 (-26d) |  | -56.4d → -34.6d |
| WAD.S.6350 | Inspection | 2026-12-05 → 2026-11-09 (-26d) | 2026-12-10 → 2026-11-15 (-25d) |  | -56.4d → -34.6d |
| WAD.S.6370 | Acceptance | 2026-12-05 → 2026-11-09 (-26d) | 2026-12-10 → 2026-11-15 (-25d) |  | -56.4d → -34.6d |
| 3 | **Warranties and Guarantees** | 2026-11-30 → 2026-11-01 (-29d) | 2026-12-10 → 2026-11-11 (-29d) |  |  |
| WAD.S.5460 | Prepare & Submit | 2026-11-30 → 2026-11-01 (-29d) | 2026-12-05 → 2026-11-05 (-30d) |  | -56.4d → -31.65d |
| WAD.S.6360 | Review & Approve | 2026-12-05 → 2026-11-05 (-30d) | 2026-12-10 → 2026-11-11 (-29d) |  | -56.4d → -31.65d |
| 2 | **Training and Manuals** | 2026-11-30 → 2026-11-01 (-29d) | 2026-12-10 → 2026-11-15 (-25d) |  |  |
| 1 | **Training** | 2026-11-30 → 2026-11-04 (-26d) | 2026-12-10 → 2026-11-15 (-25d) |  |  |
| WAD.S.5470 | Prepare & Submit | 2026-11-30 → 2026-11-04 (-26d) | 2026-12-05 → 2026-11-09 (-26d) |  | -56.4d → -34.6d |
| WAD.S.6380 | Review & Approve | 2026-12-05 → 2026-11-09 (-26d) | 2026-12-10 → 2026-11-15 (-25d) |  | -56.4d → -34.6d |

| ID | Task | Start | Finish | Total float |
| --- | --- | --- | --- | --- |
| WAD.S.6400 | Fabrication & Delivery | 2026-12-05 → 2026-11-09 (-26d) | 2026-12-10 → 2026-11-15 (-25d) | -56.4d → -34.6d |
| 2 | **Manuals** | 2026-11-30 → 2026-11-01 (-29d) | 2026-12-10 → 2026-11-11 (-29d) |  |
| WAD.S.5480 | Prepare & Submit | 2026-11-30 → 2026-11-01 (-29d) | 2026-12-05 → 2026-11-05 (-30d) | -56.4d → -31.65d |
| WAD.S.6390 | Review & Approve | 2026-12-05 → 2026-11-05 (-30d) | 2026-12-10 → 2026-11-11 (-29d) | -56.4d → -31.65d |
| 3 | **Demobilization** | 2026-12-01 → 2026-11-02 (-29d) | 2026-12-10 → 2026-11-11 (-29d) |  |
| WAD.S.5850 | Demobilize | 2026-12-01 → 2026-11-02 (-29d) | 2026-12-10 → 2026-11-11 (-29d) | -56.4d → -31.65d |
| 4 | **Snaglist Rectification** | 2026-12-01 → 2026-11-02 (-29d) | 2026-12-10 → 2026-11-15 (-25d) |  |
| WAD.S.5860 | Snaglist Rectification | 2026-12-01 → 2026-11-02 (-29d) | 2026-12-10 → 2026-11-11 (-29d) | -56.4d → -31.65d |
| WAD.S.5870 | Initial Handing Over | 2026-12-01 → 2026-11-05 (-26d) | 2026-12-10 → 2026-11-15 (-25d) | -56.4d → -34.9d |

## Version 7 (data date 2026-11-02, saved 2026-11-04, file WAS1-05-006 -Improvement of Waad Al Shamal Industrial City Fence & Gates-DD02-11-2026 (1).xer)

Note of the change: Renumber project folders 01–23 in order (after removing projects 12 and 25)

Last finish stays 2026-11-26. Complete tasks 309 → 465.

Changed:

| ID | Task | Start | Finish | Complete | Total float |
| --- | --- | --- | --- | --- | --- |
| 2 | **Contractual Milestones** |  | 2026-11-11 → 2026-11-14 (+3d) |  |  |
| WAD.S.3850 | Completion of Fences | 2026-10-27 → 2026-11-03 (+7d) | 2026-10-27 → 2026-11-03 (+7d) |  | -18d → -24d |
| WAD.S.3860 | Completion of GUARD HOUSE 1 | 2026-10-27 → 2026-11-03 (+7d) | 2026-10-27 → 2026-11-03 (+7d) |  | -18d → -24d |
| WAD.S.5070 | Completion of Engineering Works | 2026-10-28 → 2026-11-03 (+6d) | 2026-10-28 → 2026-11-03 (+6d) |  | -19.5d → -24d |
| WAD.S.6250 | Completion of Procurment Works | 2026-11-07 → 2026-11-03 (-4d) | 2026-11-07 → 2026-11-03 (-4d) |  | -27.3d → -24d |
| WAD.S.6110 | Completion of EXT. WORKS | 2026-11-08 → 2026-11-03 (-5d) | 2026-11-08 → 2026-11-03 (-5d) |  | -28.9d → -24.2d |
| WAD.S.7560 | Testing & Commissioning | 2026-11-11 → 2026-11-14 (+3d) | 2026-11-11 → 2026-11-14 (+3d) |  | -31.65d → -33.2d |
| 6 | **Engineering** |  | 2026-11-04 → 2026-11-09 (+5d) |  |  |
| 1 | **Material Submittal** |  | 2026-11-04 → 2026-11-09 (+5d) |  |  |
| 1 | **Material Prepare & Submit** |  | 2026-10-28 → 2026-11-02 (+5d) |  |  |
| 1 | **Short Lead Items** |  | 2026-10-28 → 2026-11-01 (+4d) |  |  |
| WAD.S.2630 | Manhole depth not exceeding 4.0m (Material Prepare & Submit) (GUARD HOUSE) |  | 2026-10-27 → 2026-11-01 A (+5d) | 85% → 100% | -20.7d → none |
| WAD.S.2690 | GRP Pipes laid in trenches(Material Prepare & Submit) (GUARD HOUS |  | 2026-10-27 → 2026-11-01 A (+5d) | 85% → 100% | -29.5d → none |
| WAD.S.2700 | 100 mm GRP pipe service connections (Material Prepare & Submit) (GUARD HOUSE) |  | 2026-10-27 → 2026-11-01 A (+5d) | 85% → 100% | -34.9d → none |
| WAD.S.2900 | SIDEWALKS AND CURBS (Material Prepare & Submit) (GUARD HOUSE) |  | 2026-10-28 → 2026-11-01 A (+4d) | 85% → 100% | -32.05d → none |
| WAD.S.4700 | UNDERGROUND DISTRIBUTION SYSTEM (Material Prepare & Submit) (GUARD HOUSE) |  | 2026-10-27 → 2026-11-01 A (+5d) | 85% → 100% | -19.95d → none |
| 2 | **Long Lead Items** |  | 2026-10-28 → 2026-11-02 (+5d) |  |  |
| WAD.S.1490 | Intrusion Detection system including processor control units items and joints (Material Prepare & Submit) (FENCES) |  | 2026-10-27 → 2026-11-01 A (+5d) | 85% → 100% | -44.46d → none |
| WAD.S.3220 | WATER SUPPLY SYSTEM (Material Prepare & Submit) (GUARD HOUSE) |  | 2026-10-27 → 2026-11-01 A (+5d) | 85% → 100% | -22.9d → none |
| WAD.S.3230 | SEWER AND DRAINAGE SYSTEM (Material Prepare & Submit) (GUARD HOUSE) |  | 2026-10-28 → 2026-11-02 A (+5d) | 85% → 100% | -24.1d → none |
| WAD.S.3250 | HEATING, VENTILATION AND AIR CONDITIONING (Material Prepare & Submit) (GUARD HOUSE) |  | 2026-10-28 → 2026-11-02 A (+5d) | 85% → 100% | -23.5d → none |
| WAD.S.1520 | Handholes\ Manholes (Material Prepare & Submit) (FENCES) |  | 2026-10-28 → 2026-11-01 A (+4d) | 85% → 100% | -21.3d → none |
| WAD.S.3150 | folding & sliding mounter combination ladder for building maintenance purpose (Material Prepare & Submit) (GUARD HOUSE) |  | 2026-10-28 → 2026-11-02 A (+5d) | 85% → 100% | -34.6d → none |
| WAD.S.3050 | Workstation chair (Material Prepare & Submit) (GUARD HOUSE) |  | 2026-10-27 → 2026-11-01 A (+5d) | 85% → 100% | -33.4d → none |
| WAD.S.3160 | overflow galvanized steel roof scupper (Material Prepare & Submit) (GUARD HOUSE) |  | 2026-10-27 → 2026-11-01 A (+5d) | 85% → 100% | -33.4d → none |
| WAD.S.3170 | counter desk (Material Prepare & Submit) (GUARD HOUSE) |  | 2026-10-27 → 2026-11-01 A (+5d) | 85% → 100% | -33.4d → none |
| WAD.S.3180 | install ceramic wall tiles (Material Prepare & Submit) (GUARD HOUSE) |  | 2026-10-27 → 2026-11-01 A (+5d) | 85% → 100% | -33.4d → none |
| WAD.S.3190 | PANEL SIGNAGE (Material Prepare & Submit) (GUARD HOUSE) |  | 2026-10-27 → 2026-11-01 A (+5d) | 85% → 100% | -33.4d → none |
| WAD.S.3200 | COMMUNICATIONS BACKBONE CABLING (Material Prepare & Submit) (GUARD HOUSE) |  | 2026-10-27 → 2026-11-01 A (+5d) | 85% → 100% | -33.4d → none |
| WAD.S.3210 | card reader IN/OUT (Material Prepare & Submit) (GUARD HOUSE) |  | 2026-10-27 → 2026-11-01 A (+5d) | 85% → 100% | -29.1d → none |
| WAD.S.3240 | SUPPLY AND INSTALL PLUMBING FIXTURES (Material Prepare & Submit) (GUARD HOUSE) |  | 2026-10-27 → 2026-11-01 A (+5d) | 85% → 100% | -28.9d → none |
| WAD.S.2840 | ceramic floor tiles (Material Prepare & Submit) (GUARD HOUSE) |  | 2026-10-28 → 2026-11-01 A (+4d) | 85% → 100% | -24.6d → none |
| WAD.S.2850 | Riyadh stone cladding (Material Prepare & Submit) (GUARD HOUSE) |  | 2026-10-28 → 2026-11-01 A (+4d) | 85% → 100% | -28.9d → none |
| WAD.S.2860 | UPS (Material Prepare & Submit) (GUARD HOUSE) |  | 2026-10-28 → 2026-11-01 A (+4d) | 85% → 100% | -29.5d → none |
| WAD.S.2890 | Panel boards (Material Prepare & Submit) (GUARD HOUSE) |  | 2026-10-28 → 2026-11-01 A (+4d) | 85% → 100% | -34.6d → none |
| WAD.S.3560 | aluminum framed double glazed windows (Material Prepare & Submit) (GUARD HOUSE) |  | 2026-10-28 → 2026-11-01 A (+4d) | 85% → 100% | -26.4d → none |
| WAD.S.3570 | Roller blind (Material Prepare & Submit) (GUARD HOUSE) |  | 2026-10-28 → 2026-11-01 A (+4d) | 85% → 100% | -33.4d → none |
| WAD.S.3590 | DATA COMMUNICATIONS (Material Prepare & Submit) (GUARD HOUSE) |  | 2026-10-28 → 2026-11-01 A (+4d) | 85% → 100% | -26.5d → none |
| WAD.S.3710 | COMPUTERS AND RELATED PERIPHERALS (Material Prepare & Submit) (GUARD HOUSE) |  | 2026-10-28 → 2026-11-01 A (+4d) | 85% → 100% | -29.2d → none |
| WAD.S.3030 | PANTRY CABINET (Material Prepare & Submit) (GUARD HOUSE) |  | 2026-10-28 → 2026-11-02 A (+5d) | 85% → 100% | -29.5d → none |
| WAD.S.3040 | 20mm thick black granite (Material Prepare & Submit) (GUARD HOUSE) |  | 2026-10-28 → 2026-11-02 A (+5d) | 85% → 100% | -22d → none |
| WAD.S.3060 | Safety Disconnect Switches complete with busbar, frame box (Material Prepare & Submit) (GUARD HOUSE) |  | 2026-10-28 → 2026-11-02 A (+5d) | 85% → 100% | -28.6d → none |
| WAD.S.3300 | heavy steel cover with frame for tanks (Material Prepare & Submit) (GUARD HOUSE) |  | 2026-10-28 → 2026-11-02 A (+5d) | 85% → 100% | -27.1d → none |
| WAD.S.3310 | HOLLOW METAL DOORS AND FRAMES (Material Prepare & Submit) (GUARD HOUSE) |  | 2026-10-28 → 2026-11-02 A (+5d) | 85% → 100% | -27.2d → none |
| WAD.S.3320 | ALUMINIUM DOORS (Material Prepare & Submit) (GUARD HOUSE) |  | 2026-10-28 → 2026-11-02 A (+5d) | 85% → 100% | -27.1d → none |
| WAD.S.3330 | TOILET AND BATH ACCESSROIES (Material Prepare & Submit) (GUARD HOUSE) |  | 2026-10-28 → 2026-11-02 A (+5d) | 85% → 100% | -22d → none |
| WAD.S.3340 | Waste Receptacle (Material Prepare & Submit) (GUARD HOUSE) |  | 2026-10-28 → 2026-11-02 A (+5d) | 85% → 100% | -28.3d → none |
| WAD.S.3350 | LIGHTING FIXTURES (Material Prepare & Submit) (GUARD HOUSE) |  | 2026-10-28 → 2026-11-02 A (+5d) | 85% → 100% | -27.6d → none |
| WAD.S.3360 | Access control panel (Material Prepare & Submit) (GUARD HOUSE) |  | 2026-10-28 → 2026-11-02 A (+5d) | 85% → 100% | -29.2d → none |
| WAD.S.3370 | VIDEO SURVEILLANCE (Material Prepare & Submit) (GUARD HOUSE) |  | 2026-10-28 → 2026-11-02 A (+5d) | 85% → 100% | -31.2d → none |
| 2 | **Material Review & Approve** |  | 2026-11-04 → 2026-11-09 (+5d) |  |  |
| 1 | **Short Lead Items** |  | 2026-10-29 → 2026-11-03 (+5d) |  |  |
| WAD.S.3550 | ROAD WORKS (Material Review & Approve) (GUARD HOUSE) |  | 2026-10-29 → 2026-11-03 A (+5d) | 60% → 100% | -34.9d → none |
| WAD.S.2680 | Manhole depth not exceeding 4.0m (Material Review & Approve) (GUARD HOUSE) |  | 2026-10-28 → 2026-11-02 A (+5d) | 85% → 100% | -20.7d → none |
| WAD.S.4840 | UNDERGROUND DISTRIBUTION SYSTEM (Material Review & Approve) (GUARD HOUSE) |  | 2026-10-28 → 2026-11-02 A (+5d) | 85% → 100% | -19.95d → none |
| WAD.S.3140 | SIDEWALKS AND CURBS (Material Review & Approve) (GUARD HOUSE) |  | 2026-10-29 → 2026-11-02 A (+4d) | 85% → 100% | -32.05d → none |
| 2 | **Long Lead Items** |  | 2026-11-04 → 2026-11-09 (+5d) |  |  |
| WAD.S.1510 | Intrusion Detection system including processor control units items and joints (Material Review & Approve) (FENCES) |  | 2026-10-28 → 2026-11-02 A (+5d) | 85% → 100% | -44.46d → none |
| WAD.S.3670 | WATER SUPPLY SYSTEM (Material Review & Approve) (GUARD HOUSE) |  | 2026-10-28 → 2026-11-02 A (+5d) | 85% → 100% | -22.9d → none |
| WAD.S.3680 | SEWER AND DRAINAGE SYSTEM (Material Review & Approve) (GUARD HOUSE) |  | 2026-10-29 → 2026-11-03 A (+5d) | 85% → 100% | -24.1d → none |
| WAD.S.3700 | HEATING, VENTILATION AND AIR CONDITIONING (Material Review & Approve) (GUARD HOUSE) |  | 2026-10-29 → 2026-11-03 A (+5d) | 85% → 100% | -23.5d → none |
| WAD.S.3800 | TOILET AND BATH ACCESSROIES (Material Review & Approve) (GUARD HOUSE) |  | 2026-10-29 → 2026-11-03 A (+5d) | 85% → 100% | -22d → none |
| WAD.S.3690 | SUPPLY AND INSTALL PLUMBING FIXTURES (Material Review & Approve) (GUARD HOUSE) |  | 2026-11-04 → 2026-11-03 A (-1d) | 75% → 100% | -34.6d → none |
| WAD.S.1650 | Handholes\ Manholes (Material Review & Approve) (FENCES) |  | 2026-10-29 → 2026-11-02 A (+4d) | 85% → 100% | -21.3d → none |
| WAD.S.3000 | ceramic floor tiles (Material Review & Approve) (GUARD HOUSE) |  | 2026-10-29 → 2026-11-02 A (+4d) | 85% → 100% | -24.6d → none |
| WAD.S.3010 | install Riyadh stone cladding (Material Review & Approve) (GUARD HOUSE) |  | 2026-10-29 → 2026-11-02 A (+4d) | 85% → 100% | -28.9d → none |
| WAD.S.3020 | UPS (Material Review & Approve) (GUARD HOUSE) |  | 2026-10-29 → 2026-11-02 A (+4d) | 85% → 100% | -23.9d → none |
| WAD.S.3130 | Panel boards (Material Review & Approve) (GUARD HOUSE) |  | 2026-10-29 → 2026-11-02 A (+4d) | 85% → 100% | -28.9d → none |
| WAD.S.3500 | PANTRY CABINET (Material Review & Approve) (GUARD HOUSE) |  | 2026-10-29 → 2026-11-03 A (+5d) | 85% → 100% | -29.5d → none |
| WAD.S.3510 | 20mm thick black granite (Material Review & Approve) (GUARD HOUSE) |  | 2026-10-29 → 2026-11-03 A (+5d) | 85% → 100% | -22d → none |

| ID | Task | Start | Finish | Complete | Total float |
| --- | --- | --- | --- | --- | --- |
| WAD.S.3520 | Workstation chair (Material Review & Approve) (GUARD HOUSE) |  | 2026-10-29 → 2026-11-03 A (+5d) | 85% → 100% | -23.3d → none |
| WAD.S.3660 | card reader IN/OUT (Material Review & Approve) (GUARD HOUSE) | 2026-10-27 A | 2026-11-03 → 2026-11-02 A (-1d) | 0% → 100% | -29.1d → none |
| WAD.S.3600 | folding & sliding mounter combination ladder for building maintenance purpose (Material Review & Approve) (GUARD HOUSE) | 2026-10-28 A | 2026-11-04 → 2026-11-03 A (-1d) | 0% → 100% | -34.6d → none |
| WAD.S.3610 | overflow galvanized steel roof scupper (Material Review & Approve) (GUARD HOUSE) | 2026-10-28 A | 2026-11-04 → 2026-11-03 A (-1d) | 0% → 100% | -34.6d → none |
| WAD.S.3620 | counter desk (Material Review & Approve) (GUARD HOUSE) | 2026-10-28 A | 2026-11-04 → 2026-11-03 A (-1d) | 0% → 100% | -34.6d → none |
| WAD.S.3630 | install ceramic wall tiles (Material Review & Approve) (GUARD HOUSE) | 2026-10-28 A | 2026-11-04 → 2026-11-03 A (-1d) | 0% → 100% | -34.6d → none |
| WAD.S.3640 | PANEL SIGNAGE (Material Review & Approve) (GUARD HOUSE) | 2026-10-28 A | 2026-11-04 → 2026-11-03 A (-1d) | 0% → 100% | -34.6d → none |
| WAD.S.3650 | COMMUNICATIONS BACKBONE CABLING (Material Review & Approve) (GUARD HOUSE) | 2026-10-28 A | 2026-11-04 → 2026-11-03 A (-1d) | 0% → 100% | -34.6d → none |
| WAD.S.3770 | heavy steel cover with frame for tanks (Material Review & Approve) (GUARD HOUSE) | 2026-10-28 A | 2026-11-04 → 2026-11-03 A (-1d) | 0% → 100% | -27.1d → none |
| WAD.S.3780 | HOLLOW METAL DOORS AND FRAMES (Material Review & Approve) (GUARD HOUSE) | 2026-10-28 A | 2026-11-04 → 2026-11-03 A (-1d) | 0% → 100% | -27.2d → none |
| WAD.S.4040 | aluminum framed double glazed windows (Material Review & Approve) (GUARD HOUSE) | 2026-10-28 → 2026-11-02 A (+5d) | 2026-11-04 → 2026-11-08 A (+4d) | 0% → 100% | -26.4d → none |
| WAD.S.4050 | Roller blind (Material Review & Approve) (GUARD HOUSE) | 2026-10-28 → 2026-11-02 A (+5d) | 2026-11-04 → 2026-11-08 A (+4d) | 0% → 100% | -33.4d → none |
| WAD.S.4070 | DATA COMMUNICATIONS (Material Review & Approve) (GUARD HOUSE) | 2026-10-28 → 2026-11-02 A (+5d) | 2026-11-04 → 2026-11-08 A (+4d) | 0% → 100% | -26.5d → none |
| WAD.S.4080 | COMPUTERS AND RELATED PERIPHERALS (Material Review & Approve) (GUARD HOUSE) | 2026-10-28 → 2026-11-02 A (+5d) | 2026-11-04 → 2026-11-08 A (+4d) | 0% → 100% | -29.2d → none |
| WAD.S.3790 | ALUMINIUM DOORS (Material Review & Approve) (GUARD HOUSE) | 2026-10-28 → 2026-11-02 A (+5d) | 2026-11-04 → 2026-11-09 A (+5d) | 0% → 100% | -27.1d → none |
| WAD.S.3810 | Waste Receptacle (Material Review & Approve) (GUARD HOUSE) | 2026-10-28 → 2026-11-02 A (+5d) | 2026-11-04 → 2026-11-09 A (+5d) | 0% → 100% | -28.3d → none |
| WAD.S.3820 | LIGHTING FIXTURES (Material Review & Approve) (GUARD HOUSE) | 2026-10-28 → 2026-11-02 A (+5d) | 2026-11-04 → 2026-11-09 A (+5d) | 0% → 100% | -27.6d → none |
| WAD.S.3830 | Access control panel (Material Review & Approve) (GUARD HOUSE) | 2026-10-28 → 2026-11-02 A (+5d) | 2026-11-04 → 2026-11-09 A (+5d) | 0% → 100% | -29.2d → none |
| WAD.S.3840 | VIDEO SURVEILLANCE (Material Review & Approve) (GUARD HOUSE) | 2026-10-28 → 2026-11-02 A (+5d) | 2026-11-04 → 2026-11-09 A (+5d) | 0% → 100% | -31.2d → none |
| 7 | **Procurement** |  | 2026-11-07 → 2026-11-10 (+3d) |  |  |
| 5 | **Fabrication & Delivery** |  | 2026-11-07 → 2026-11-10 (+3d) |  |  |
| 1 | **Short Lead Items** |  | 2026-10-31 → 2026-11-03 (+3d) |  |  |
| WAD.S.1430 | structural steel beams, posts and rods for wall fence (FENCES) |  | 2026-10-27 → 2026-11-03 (+7d) | 95% → 98% | -20.86d → -25.38d |
| WAD.S.1540 | tubes, bolts, nuts and steel plates to strengthened the wall fence and posts (FENCES) |  | 2026-10-27 → 2026-11-03 (+7d) | 95% → 98% | -20.15d → -24.26d |
| WAD.S.4780 | FIRE PROTECTION SYSTEM (fire extinguisher) (GUARD HOUSE) |  | 2026-10-27 → 2026-11-03 (+7d) | 85% → 98% | -18.75d → -24.1d |
| WAD.S.3290 | 100 mm GRP pipe service connections (GUARD HOUSE) |  | 2026-10-28 → 2026-11-02 A (+5d) | 85% → 100% | -30.4d → none |
| WAD.S.4160 | GROUNDING (GUARD HOUSE) |  | 2026-10-28 → 2026-11-03 (+6d) | 85% → 98% | -19.05d → -24.06d |
| WAD.S.4170 | ROAD WORKS (GUARD HOUSE) |  | 2026-10-31 → 2026-11-03 (+3d) | 85% → 98% | -34.9d → -30.12d |
| WAD.S.2970 | Manhole depth not exceeding 4.0m (GUARD HOUSE) |  | 2026-10-29 → 2026-11-03 (+5d) | 85% → 98% | -20.7d → -24.16d |
| WAD.S.3910 | SIDEWALKS AND CURBS (GUARD HOUSE) |  | 2026-10-31 → 2026-11-03 (+3d) | 85% → 98% | -32.05d → -33.14d |
| WAD.S.5080 | UNDERGROUND DISTRIBUTION SYSTEM (GUARD HOUSE) |  | 2026-10-28 → 2026-11-02 A (+5d) | 85% → 100% | -19.95d → none |
| 2 | **Long Lead Items** |  | 2026-11-07 → 2026-11-10 (+3d) |  |  |
| WAD.S.1570 | fix galvanized steel chain link gate including all necessary associated (FENCES) |  | 2026-10-27 → 2026-11-03 (+7d) | 95% → 98% | -21.41d → -25.6d |
| WAD.S.2470 | structural steel members and plates for main sliding gates (FENCES) |  | 2026-10-27 → 2026-11-03 (+7d) | 95% → 98% | -21.36d → -25.58d |
| WAD.S.2170 | Intrusion Detection system including processor control units items and joints (FENCES) |  | 2026-10-29 → 2026-11-03 (+5d) | 90% → 98% | -44.46d → -44.24d |
| WAD.S.4580 | WATER SUPPLY SYSTEM (GUARD HOUSE) |  | 2026-10-29 → 2026-11-03 A (+5d) | 90% → 100% | -22.8d → none |
| WAD.S.2260 | Handholes\ Manholes (FENCES) |  | 2026-10-31 → 2026-11-03 A (+3d) | 90% → 100% | -21.3d → none |
| WAD.S.3740 | ceramic floor tiles (GUARD HOUSE) |  | 2026-10-31 → 2026-11-03 A (+3d) | 90% → 100% | -23.75d → none |
| WAD.S.3750 | install Riyadh stone cladding (GUARD HOUSE) |  | 2026-10-31 → 2026-11-03 A (+3d) | 90% → 100% | -21.9d → none |
| WAD.S.3760 | UPS (GUARD HOUSE) |  | 2026-10-31 → 2026-11-04 A (+4d) | 90% → 100% | -23.9d → none |
| WAD.S.3900 | Panel boards (GUARD HOUSE) |  | 2026-10-31 → 2026-11-04 A (+4d) | 90% → 100% | -21.9d → none |
| WAD.S.4610 | HEATING, VENTILATION AND AIR CONDITIONING (GUARD HOUSE) |  | 2026-11-01 → 2026-11-04 A (+3d) | 90% → 100% | -23.5d → none |
| WAD.S.4590 | SEWER AND DRAINAGE SYSTEM (GUARD HOUSE) |  | 2026-11-01 → 2026-11-04 A (+3d) | 90% → 100% | -24.1d → none |
| WAD.S.4650 | TOILET AND BATH ACCESSROIES (GUARD HOUSE) |  | 2026-10-31 → 2026-11-04 A (+4d) | 90% → 100% | -22d → none |
| WAD.S.4120 | PANTRY CABINET (GUARD HOUSE) |  | 2026-11-01 → 2026-11-04 A (+3d) | 90% → 100% | -24.2d → none |
| WAD.S.4130 | 20mm thick black granite (GUARD HOUSE) |  | 2026-10-31 → 2026-11-04 A (+4d) | 90% → 100% | -22d → none |
| WAD.S.4140 | Workstation chair (GUARD HOUSE) |  | 2026-11-01 → 2026-11-04 A (+3d) | 90% → 100% | -23.3d → none |
| WAD.S.4150 | Safety Disconnect Switches complete with busbar, frame box (GUARD HOUSE) |  | 2026-11-01 → 2026-11-04 A (+3d) | 90% → 100% | -22.4d → none |
| WAD.S.4510 | folding & sliding mounter combination ladder for building maintenance purpose (GUARD HOUSE) |  | 2026-11-07 → 2026-11-03 (-4d) | 90% → 98% | -29.1d → -25.56d |
| WAD.S.4520 | overflow galvanized steel roof scupper (GUARD HOUSE) |  | 2026-11-07 → 2026-11-05 A (-2d) | 85% → 100% | -29.75d → none |
| WAD.S.4530 | counter desk (GUARD HOUSE) |  | 2026-11-07 → 2026-11-05 A (-2d) | 85% → 100% | -30.9d → none |
| WAD.S.4540 | install ceramic wall tiles (GUARD HOUSE) |  | 2026-11-07 → 2026-11-04 A (-3d) | 85% → 100% | -27.8d → none |
| WAD.S.4570 | card reader IN/OUT (GUARD HOUSE) |  | 2026-11-05 → 2026-11-03 (-2d) | 90% → 98% | -29.1d → -26.5d |
| WAD.S.4760 | aluminum framed double glazed windows (GUARD HOUSE) |  | 2026-11-05 → 2026-11-03 (-2d) | 90% → 98% | -26.4d → -24.24d |
| WAD.S.4770 | Roller blind (GUARD HOUSE) |  | 2026-11-05 → 2026-11-03 (-2d) | 90% → 98% | -33.4d → -30.24d |
| WAD.S.4790 | DATA COMMUNICATIONS (GUARD HOUSE) |  | 2026-11-05 → 2026-11-10 A (+5d) | 90% → 100% | -26.5d → none |
| WAD.S.4820 | COMPUTERS AND RELATED PERIPHERALS (GUARD HOUSE) |  | 2026-11-05 → 2026-11-09 A (+4d) | 90% → 100% | -29.2d → none |
| WAD.S.4550 | PANEL SIGNAGE (GUARD HOUSE) |  | 2026-11-07 → 2026-11-03 (-4d) | 90% → 98% | -27.2d → -24.98d |
| WAD.S.4560 | COMMUNICATIONS BACKBONE CABLING (GUARD HOUSE) |  | 2026-11-07 → 2026-11-04 A (-3d) | 90% → 100% | -27.1d → none |
| WAD.S.4600 | SUPPLY PLUMBING FIXTURES (GUARD HOUSE) |  | 2026-11-07 → 2026-11-04 A (-3d) | 90% → 100% | -34.6d → none |
| WAD.S.4620 | heavy steel cover with frame for tanks (GUARD HOUSE) |  | 2026-11-07 → 2026-11-04 A (-3d) | 90% → 100% | -27.1d → none |
| WAD.S.4630 | HOLLOW METAL DOORS AND FRAMES (GUARD HOUSE) |  | 2026-11-07 → 2026-11-04 (-3d) |  | -27.2d → -25.4d |
| WAD.S.4640 | ALUMINIUM DOORS (GUARD HOUSE) |  | 2026-11-07 → 2026-11-04 (-3d) |  | -27.1d → -25.3d |
| WAD.S.4660 | Waste Receptacle (GUARD HOUSE) |  | 2026-11-07 → 2026-11-10 A (+3d) | 90% → 100% | -28.3d → none |
| WAD.S.4670 | LIGHTING FIXTURES (GUARD HOUSE) |  | 2026-11-05 → 2026-11-10 A (+5d) | 90% → 100% | -27.6d → none |
| WAD.S.4680 | Access control panel (GUARD HOUSE) |  | 2026-11-07 → 2026-11-10 A (+3d) | 90% → 100% | -29.2d → none |
| WAD.S.4690 | VIDEO SURVEILLANCE (GUARD HOUSE) |  | 2026-11-07 → 2026-11-03 (-4d) | 90% → 98% | -31.2d → -26.98d |
| 2 | **CONCRETE WORKS** |  | 2026-10-27 → 2026-11-03 (+7d) |  |  |
| 2 | **Part 2** |  | 2026-10-27 → 2026-11-03 (+7d) |  |  |
| WAD.S.2720 | cast in place reinforced concrete for the sub-structures - Part 2 |  | 2026-10-27 → 2026-11-03 (+7d) |  | -20.21d → -24.21d |

| ID | Task | Start | Finish | Complete | Total float |
| --- | --- | --- | --- | --- | --- |
| 3 | **THERMAL & MOISTURE PROTECTION** |  | 2026-10-27 → 2026-11-03 (+7d) |  |  |
| 2 | **Part 2** |  | 2026-10-27 → 2026-11-03 (+7d) |  |  |
| WAD.S.3420 | Applying 2 coats of bitumen waterproofing paint on concrete surfaces - Part 2 |  | 2026-10-27 → 2026-11-03 (+7d) | 97% → 99% | -18.83d → -24.41d |
| 6 | **SPECIAL CONSTRUCTION- STRUCTURAL STEEL** |  | 2026-10-29 → 2026-11-02 (+4d) |  |  |
| 2 | **Part 2** |  | 2026-10-29 → 2026-11-02 (+4d) |  |  |
| WAD.S.2920 | install structural steel beams, posts and rods for wall fence - Part 2 |  | 2026-10-27 → 2026-11-01 A (+5d) | 99% → 100% | -21.41d → none |
| WAD.S.3430 | Install tubes, bolts, nuts and steel plates to strengthened the wall fence and posts - Part 2 |  | 2026-10-28 → 2026-11-02 A (+5d) | 98% → 100% | -19.37d → none |
| WAD.S.3950 | fix galvanized steel chain link fence wall; including steel tube framing and posts, turn buckle - Part 2 |  | 2026-10-28 → 2026-11-02 A (+5d) | 98% → 100% | -19.17d → none |
| WAD.S.4730 | galvanized steel chain link gates Installation - Part 2 |  | 2026-10-29 A | 90% → 100% | -20.75d → none |
| 8 | **ELECTRICAL WORKS** |  | 2026-11-19 → 2026-11-24 (+5d) |  |  |
| WAD.S.2950 | Fiber Optic Outdoor Cable |  | 2026-11-09 → 2026-11-14 A (+5d) | 98% → 100% | -44.46d → none |
| WAD.S.2640 | Intrusion Detection system including processor control units items and joints - 1st Fix | 2026-10-29 → 2026-11-03 (+5d) | 2026-11-09 → 2026-11-14 (+5d) |  | -44.46d → -44.24d |
| WAD.S.2960 | Road crossing ducts for Fiber Optic Cable | 2026-11-09 → 2026-11-14 (+5d) | 2026-11-17 → 2026-11-22 (+5d) |  | -36.7d → -40.24d |
| WAD.S.3720 | Fiber Optic Outdoor Cable To Close The Loop | 2026-11-09 → 2026-11-14 (+5d) | 2026-11-19 → 2026-11-24 (+5d) |  | -44.46d → -44.24d |
| WAD.S.4830 | Install, Electrical gate barrier complete (cables, conduits, pipes, pulling cables in the conduits) |  |  | 30% → 75% | -44.46d → -44.24d |
| 9 | **FINISHES** |  | 2026-11-07 → 2026-11-05 (-2d) |  |  |
| WAD.S.5540 | install two coats of acrylic paint (suitable for exterior use) on external |  | 2026-11-07 → 2026-11-03 (-4d) |  | -27.8d → -24.5d |
| WAD.S.5130 | installation of Fire extinguishers as per drawings, specifications |  | 2026-11-01 A | 65% → 100% | -23.75d → none |
| WAD.S.5160 | INSTALL PLUMBING FIXTURES |  | 2026-11-01 A | 65% → 100% | -23.75d → none |
| WAD.S.5980 | WATER SUPPLY SYSTEM - Final Fix |  | 2026-11-01 A | 80% → 100% | -24.1d → none |
| WAD.S.5970 | 12-Port, SMF, Fiber Optic Patch Panels; | 2026-11-04 A | 2026-11-09 → 2026-11-05 (-4d) | 0% → 30% | -29.2d → -27.5d |
| WAD.S.6160 | card reader IN/OUT - Final Fix | 2026-11-05 A | 2026-11-09 → 2026-11-04 (-5d) | 0% → 50% | -29.1d → -26.5d |
| WAD.S.6170 | 12-Port CAT6A UTP fully loaded patch panel | 2026-11-05 A | 2026-11-09 → 2026-11-04 (-5d) | 0% → 50% | -29.2d → -26.5d |
| WAD.S.6180 | COMPUTERS AND RELATED PERIPHERALS | 2026-11-05 A | 2026-11-09 → 2026-11-05 (-4d) | 0% → 30% | -29.2d → -27.5d |
| WAD.S.5950 | LIGHTING FIXTURES - Final Fix |  | 2026-11-07 A | 80% → 100% | -27.6d → none |
| WAD.S.5960 | GROUNDING - Final Fix |  | 2026-11-07 → 2026-11-10 A (+3d) | 80% → 100% | -27.6d → none |
| WAD.S.6190 | VIDEO SURVEILLANCE | 2026-11-07 A | 2026-11-11 → 2026-11-05 (-6d) | 0% → 50% | -31.2d → -27.5d |
| WAD.S.6200 | CCTV storage system, as specified; | 2026-11-07 A | 2026-11-11 → 2026-11-05 (-6d) | 0% → 50% | -31.2d → -27.5d |
| WAD.S.6270 | Access control panel - Final Fix | 2026-11-07 A | 2026-11-09 → 2026-11-04 (-5d) | 0% → 50% | -29.2d → -26.5d |
| WAD.S.6150 | installation of Wiring devices includes switches and Receptacle outlets complete with device boxes - Final Fix |  | 2026-11-07 A | 80% → 100% | -27.6d → none |
| WAD.S.6280 | Central (Headend) System Components; | 2026-11-08 A | 2026-11-11 → 2026-11-05 (-6d) | 0% → 50% | -31.2d → -27.5d |
| WAD.S.6290 | VSS System, as specified; | 2026-11-08 A | 2026-11-11 → 2026-11-05 (-6d) | 0% → 50% | -31.2d → -27.5d |
| WAD.S.6300 | CCTV cameras - Final Fix | 2026-11-08 A | 2026-11-11 → 2026-11-05 (-6d) | 0% → 50% | -31.2d → -27.5d |
| WAD.S.6310 | ELECTRICAL GATE BARRIER |  | 2026-11-11 → 2026-11-05 (-6d) | 30% → 50% | -31.2d → -27.5d |
| WAD.S.6340 | LIGHTING AND POWER TYPE PANELBOARDS - Final Fix |  | 2026-11-11 A | 50% → 100% | -31.2d → none |
| WAD.S.6420 | 20A , ATS ( Automatic transfer switch) for UPS | 2026-11-09 A | 2026-11-11 → 2026-11-05 (-6d) | 0% → 30% | -31.2d → -27.5d |
| 4 | **METALS** |  | 2026-11-09 → 2026-11-07 (-2d) |  |  |
| WAD.S.5500 | folding & sliding mounter combination ladder for building maintenance purpose | 2026-11-07 A | 2026-11-09 → 2026-11-07 A (-2d) | 0% → 100% | -29.1d → none |
| WAD.S.5520 | install heavy steel cover with frame including all necessary fixings | 2026-11-07 A | 2026-11-09 → 2026-11-07 A (-2d) | 0% → 100% | -29.75d → none |
| 5 | **WOODS AND PLASTICS** |  | 2026-11-10 → 2026-11-08 (-2d) |  |  |
| WAD.S.5880 | PANTRY CABINET | 2026-11-07 A | 2026-11-09 → 2026-11-08 A (-1d) | 0% → 100% | -29.75d → none |
| WAD.S.5890 | COUNTER DESK | 2026-11-07 A | 2026-11-10 → 2026-11-08 A (-2d) | 0% → 100% | -30.9d → none |
| 8 | **DOORS & WINDOWS** |  | 2026-11-08 → 2026-11-04 (-4d) |  |  |
| WAD.S.5900 | Install Aluminum Door |  | 2026-11-08 → 2026-11-03 (-5d) |  | -28.5d → -25.6d |
| WAD.S.6130 | TOILET ACCESSROIES | 2026-11-05 A | 2026-11-08 → 2026-11-05 A (-3d) | 0% → 100% | -28.5d → none |
| WAD.S.6450 | Workstation chair | 2026-11-10 A | 2026-11-11 A | 0% → 100% | -31.2d → none |
| WAD.S.6460 | Workstation table | 2026-11-10 A | 2026-11-11 A | 0% → 100% | -31.2d → none |
| WAD.S.6470 | Roller blind | 2026-11-10 A | 2026-11-11 → 2026-11-07 (-4d) | 0% → 30% | -31.2d → -27.5d |
| WAD.S.6480 | Waste Receptacle | 2026-11-10 A | 2026-11-11 A | 0% → 100% | -31.2d → none |
| 9 | **FINISHES** |  | 2026-10-27 → 2026-11-03 (+7d) |  |  |
| WAD.S.2530 | install two coats of acrylic paint (suitable for exterior use) on external |  | 2026-10-27 → 2026-11-03 (+7d) |  | -18.2d → -24.2d |
| WAD.S.5560 | installation of Fire extinguishers as per drawings, specifications | 2026-10-31 A | 2026-11-02 A | 0% → 100% | -30d → none |
| WAD.S.5590 | INSTALL PLUMBING FIXTURES |  | 2026-11-08 A | 50% → 100% | -34.6d → none |
| WAD.S.5750 | WATER SUPPLY SYSTEM - Final Fix |  | 2026-11-08 A | 80% → 100% | -34.6d → none |
| 15 | **ELECTRICAL WORKS** | 2026-10-06 → 2026-09-20 (-16d) |  |  |  |
| 2 | **ELECTRICAL WORKS - Final Fix** | 2026-11-03 → 2026-09-20 (-44d) |  |  |  |
| WAD.S.5720 | ELECTRICAL GATE BARRIER | 2026-11-07 A → 2026-09-20 A (-48d) | 2026-11-08 → 2026-11-05 (-3d) | 30% → 50% | -34.6d → -32.1d |
| WAD.S.5170 | 12-Port, SMF, Fiber Optic Patch Panels; | 2026-11-03 A | 2026-11-08 → 2026-11-03 (-5d) | 0% → 80% | -34.6d → -30.8d |
| WAD.S.5180 | VIDEO SURVEILLANCE | 2026-11-03 A | 2026-11-08 → 2026-11-05 (-3d) | 0% → 80% | -34.6d → -32.1d |
| WAD.S.5190 | CCTV storage system, as specified; | 2026-11-03 A | 2026-11-08 → 2026-11-05 (-3d) | 0% → 80% | -34.6d → -32.1d |
| WAD.S.5660 | card reader IN/OUT - Final Fix | 2026-11-04 A | 2026-11-08 → 2026-11-03 (-5d) | 0% → 80% | -34.6d → -30.6d |
| WAD.S.5670 | 12-Port CAT6A UTP fully loaded patch panel | 2026-11-04 A | 2026-11-08 → 2026-11-03 (-5d) | 0% → 80% | -34.6d → -30.6d |
| WAD.S.5680 | COMPUTERS AND RELATED PERIPHERALS | 2026-11-04 A | 2026-11-08 → 2026-11-05 (-3d) | 0% → 30% | -34.6d → -32.1d |
| WAD.S.5690 | Central (Headend) System Components; | 2026-11-04 A | 2026-11-08 → 2026-11-05 (-3d) | 0% → 80% | -34.6d → -32.1d |
| WAD.S.5700 | VSS System, as specified; | 2026-11-04 A | 2026-11-08 → 2026-11-05 (-3d) | 0% → 80% | -34.6d → -32.1d |
| WAD.S.5710 | CCTV cameras - Final Fix | 2026-11-04 A | 2026-11-08 → 2026-11-05 (-3d) | 0% → 80% | -34.6d → -32.1d |
| WAD.S.6030 | Access control panel - Final Fix | 2026-11-05 A | 2026-11-08 → 2026-11-05 A (-3d) | 0% → 100% | -34.6d → none |
| WAD.S.6040 | 20A , ATS ( Automatic transfer switch) for UPS | 2026-11-05 A | 2026-11-08 → 2026-11-05 A (-3d) | 0% → 100% | -34.6d → none |
| WAD.S.5640 | LIGHTING FIXTURES - Final Fix |  | 2026-11-08 A | 80% → 100% | -34.6d → none |
| WAD.S.5650 | GROUNDING - Final Fix |  | 2026-11-08 → 2026-11-07 A (-1d) | 80% → 100% | -34.6d → none |

| ID | Task | Start | Finish | Complete | Total float |
| --- | --- | --- | --- | --- | --- |
| WAD.S.5770 | LIGHTING AND POWER TYPE PANELBOARDS - Final Fix |  | 2026-11-08 A | 50% → 100% | -28.6d → none |
| WAD.S.6020 | installation of Wiring devices includes switches and Receptacle outlets complete with device boxes - Final Fix |  | 2026-11-08 A | 80% → 100% | -34.6d → none |
| 4 | **METALS** |  | 2026-10-28 → 2026-11-02 (+5d) |  |  |
| WAD.S.2480 | folding & sliding mounter combination ladder for building maintenance purpose | 2026-10-27 A | 2026-10-28 → 2026-11-02 A (+5d) | 0% → 100% | -21.6d → none |
| WAD.S.2500 | install heavy steel cover with frame including all necessary fixings | 2026-10-27 A | 2026-10-28 → 2026-11-01 A (+4d) | 0% → 100% | -21.6d → none |
| 5 | **WOODS AND PLASTICS** |  | 2026-10-29 → 2026-10-27 (-2d) |  |  |
| WAD.S.2350 | COUNTER DESK | 2026-10-27 A | 2026-10-29 → 2026-10-27 A (-2d) | 0% → 100% | -22.6d → none |
| WAD.S.2510 | PANTRY CABINET | 2026-10-27 A | 2026-10-28 → 2026-10-27 A (-1d) | 0% → 100% | -21.6d → none |
| 8 | **DOORS & WINDOWS** |  | 2026-10-27 → 2026-11-03 (+7d) |  |  |
| WAD.S.2360 | Install Aluminum Door |  | 2026-10-27 → 2026-11-03 (+7d) |  | -22.6d → -30.6d |
| WAD.S.5550 | TOILET ACCESSROIES | 2026-11-08 A | 2026-11-09 → 2026-11-08 A (-1d) | 0% → 100% | -34d → none |
| WAD.S.6210 | Workstation chair | 2026-11-07 A | 2026-11-08 A | 0% → 100% | -34.6d → none |
| WAD.S.6220 | Workstation table | 2026-11-07 A | 2026-11-08 A | 0% → 100% | -34.6d → none |
| WAD.S.6230 | Roller blind | 2026-11-07 A | 2026-11-08 → 2026-11-05 (-3d) | 0% → 30% | -34.6d → -32.1d |
| WAD.S.6240 | Waste Receptacle | 2026-11-07 A | 2026-11-08 A | 0% → 100% | -34.6d → none |
| 5 | **GUARD HOUSE 3** | 2026-07-11 → 2025-04-14 (-453d) |  |  |  |
| 9 | **FINISHES** |  | 2026-10-27 → 2026-11-03 (+7d) |  |  |
| WAD.S.6790 | install two coats of acrylic paint (suitable for exterior use) on external |  | 2026-10-27 → 2026-11-03 (+7d) |  | -29.1d → -33.2d |
| WAD.S.6900 | installation of Fire extinguishers as per drawings, specifications | 2026-10-31 A | 2026-11-02 A | 0% → 100% | -30d → none |
| WAD.S.6950 | INSTALL PLUMBING FIXTURES |  | 2026-11-08 A | 50% → 100% | -34.6d → none |
| WAD.S.7230 | WATER SUPPLY SYSTEM - Final Fix |  | 2026-11-08 A | 80% → 100% | -34.6d → none |
| 15 | **ELECTRICAL WORKS** | 2026-09-06 → 2025-04-14 (-510d) |  |  |  |
| 2 | **ELECTRICAL WORKS - Final Fix** | 2026-11-03 → 2025-04-14 (-568d) |  |  |  |
| WAD.S.7180 | ELECTRICAL GATE BARRIER | 2026-11-07 A → 2025-04-14 A (-572d) | 2026-11-08 → 2026-11-05 (-3d) | 30% → 80% | -34.6d → -32.1d |
| WAD.S.7100 | 12-Port, SMF, Fiber Optic Patch Panels; | 2026-11-03 A | 2026-11-08 → 2026-11-03 (-5d) | 0% → 80% | -34.6d → -30.8d |
| WAD.S.7120 | VIDEO SURVEILLANCE | 2026-11-03 A | 2026-11-08 → 2026-11-05 (-3d) | 0% → 80% | -34.6d → -32.1d |
| WAD.S.7150 | CCTV storage system, as specified; | 2026-11-03 A | 2026-11-08 → 2026-11-05 (-3d) | 0% → 80% | -34.6d → -32.1d |
| WAD.S.7070 | card reader IN/OUT - Final Fix | 2026-11-04 A | 2026-11-08 → 2026-11-03 (-5d) | 0% → 80% | -34.6d → -30.6d |
| WAD.S.7090 | 12-Port CAT6A UTP fully loaded patch panel | 2026-11-04 A | 2026-11-08 → 2026-11-03 (-5d) | 0% → 80% | -34.6d → -30.6d |
| WAD.S.7110 | COMPUTERS AND RELATED PERIPHERALS | 2026-11-04 A | 2026-11-08 → 2026-11-05 (-3d) | 0% → 30% | -34.6d → -32.1d |
| WAD.S.7130 | Central (Headend) System Components; | 2026-11-04 A | 2026-11-08 → 2026-11-05 (-3d) | 0% → 80% | -34.6d → -32.1d |
| WAD.S.7140 | VSS System, as specified; | 2026-11-04 A | 2026-11-08 → 2026-11-05 (-3d) | 0% → 80% | -34.6d → -32.1d |
| WAD.S.7160 | CCTV cameras - Final Fix | 2026-11-04 A | 2026-11-08 → 2026-11-05 (-3d) | 0% → 80% | -34.6d → -32.1d |
| WAD.S.7080 | Access control panel - Final Fix | 2026-11-05 A | 2026-11-08 → 2026-11-05 A (-3d) | 0% → 100% | -34.6d → none |
| WAD.S.7170 | 20A , ATS ( Automatic transfer switch) for UPS | 2026-11-05 A | 2026-11-08 → 2026-11-05 A (-3d) | 0% → 100% | -34.6d → none |
| WAD.S.7040 | LIGHTING FIXTURES - Final Fix |  | 2026-11-08 A | 80% → 100% | -34.6d → none |
| WAD.S.7060 | GROUNDING - Final Fix |  | 2026-11-08 A | 80% → 100% | -34.6d → none |
| WAD.S.7050 | installation of Wiring devices includes switches and Receptacle outlets complete with device boxes - Final Fix |  | 2026-11-08 A | 80% → 100% | -34.6d → none |
| 4 | **METALS** |  | 2026-10-28 → 2026-11-02 (+5d) |  |  |
| WAD.S.6510 | folding & sliding mounter combination ladder for building maintenance purpose | 2026-10-27 A | 2026-10-28 → 2026-11-02 A (+5d) | 0% → 100% | -24d → none |
| WAD.S.6530 | install heavy steel cover with frame including all necessary fixings | 2026-10-27 A | 2026-10-28 → 2026-11-01 A (+4d) | 0% → 100% | -24d → none |
| 5 | **WOODS AND PLASTICS** |  | 2026-10-29 → 2026-10-27 (-2d) |  |  |
| WAD.S.6540 | PANTRY CABINET | 2026-10-27 A | 2026-10-28 → 2026-10-27 A (-1d) | 0% → 100% | -24d → none |
| WAD.S.6550 | COUNTER DESK | 2026-10-27 A | 2026-10-29 → 2026-10-27 A (-2d) | 0% → 100% | -22.6d → none |
| 8 | **DOORS & WINDOWS** |  | 2026-10-27 → 2026-11-03 (+7d) |  |  |
| WAD.S.6700 | Install Aluminum Door |  | 2026-10-27 → 2026-11-03 (+7d) |  | -22.6d → -30.6d |
| WAD.S.6840 | TOILET ACCESSROIES | 2026-11-08 A | 2026-11-09 → 2026-11-08 A (-1d) | 0% → 100% | -34d → none |
| WAD.S.6860 | Workstation chair | 2026-11-07 A | 2026-11-08 A | 0% → 100% | -34.6d → none |
| WAD.S.6870 | Workstation table | 2026-11-07 A | 2026-11-08 A | 0% → 100% | -34.6d → none |
| WAD.S.6880 | Roller blind | 2026-11-07 A | 2026-11-08 → 2026-11-05 (-3d) | 0% → 30% | -34.6d → -32.1d |
| WAD.S.6890 | Waste Receptacle | 2026-11-07 A | 2026-11-08 A | 0% → 100% | -34.6d → none |
| 4 | **EXT. WORKS** | 2026-10-18 → 2025-04-14 (-552d) |  |  |  |
| 1 | **EXTERNAL WORKS** | 2026-10-18 → 2025-04-14 (-552d) |  |  |  |
| WAD.S.4980 | SIDEWALKS AND CURBS | 2026-11-24 A → 2025-04-14 A (-589d) | 2026-11-05 A | 30% → 100% | -32.05d → none |
| WAD.S.4990 | ROAD WORKS | 2026-10-31 A | 2026-11-08 A | 0% → 100% | -34.9d → none |
| WAD.S.5000 | install flag pole 6 M height |  | 2026-11-01 → 2026-11-24 A (+23d) | 70% → 100% | -31.65d → none |
| 4 | **Testing & Commissioning** | 2026-11-01 → 2026-11-03 (+2d) | 2026-11-15 → 2026-11-14 (-1d) |  |  |
| WAD.S.5440 | Testing & Commissioning - Electrical Systems | 2026-11-01 → 2026-11-03 (+2d) | 2026-11-11 → 2026-11-14 (+3d) |  | -31.65d → -33.2d |
| WAD.S.5490 | Testing & Commissioning - Mechanical Systems | 2026-11-01 → 2026-11-03 (+2d) | 2026-11-11 → 2026-11-14 (+3d) |  | -31.65d → -33.2d |
| 1 | **Engineering** | 2026-11-01 → 2026-11-03 (+2d) | 2026-11-15 → 2026-11-14 (-1d) |  |  |
| 1 | **As-Built Drawings** | 2026-11-04 → 2026-11-03 (-1d) | 2026-11-15 → 2026-11-10 (-5d) |  |  |
| WAD.S.5430 | Prepare & Submit | 2026-11-04 → 2026-11-03 (-1d) | 2026-11-09 → 2026-11-08 (-1d) |  | -34.6d → -33.2d |
| WAD.S.6260 | Review & Approve | 2026-11-08 → 2026-11-03 (-5d) | 2026-11-15 → 2026-11-10 (-5d) |  | -34.9d → -30.2d |
| 2 | **Operational Spares** | 2026-11-04 → 2026-11-03 (-1d) | 2026-11-15 → 2026-11-14 (-1d) |  |  |
| WAD.S.5450 | Prepare & Submit | 2026-11-04 → 2026-11-03 (-1d) | 2026-11-09 → 2026-11-08 (-1d) |  | -34.6d → -33.2d |
| WAD.S.6350 | Inspection | 2026-11-09 → 2026-11-08 (-1d) | 2026-11-15 → 2026-11-14 (-1d) |  | -34.6d → -33.2d |
| WAD.S.6370 | Acceptance | 2026-11-09 → 2026-11-08 (-1d) | 2026-11-15 → 2026-11-14 (-1d) |  | -34.6d → -33.2d |
| 3 | **Warranties and Guarantees** | 2026-11-01 → 2026-11-03 (+2d) | 2026-11-11 → 2026-11-14 (+3d) |  |  |
| WAD.S.5460 | Prepare & Submit | 2026-11-01 → 2026-11-03 (+2d) | 2026-11-05 → 2026-11-08 (+3d) |  | -31.65d → -33.2d |
| WAD.S.6360 | Review & Approve | 2026-11-05 → 2026-11-08 (+3d) | 2026-11-11 → 2026-11-14 (+3d) |  | -31.65d → -33.2d |

| ID | Task | Start | Finish | Total float |
| --- | --- | --- | --- | --- |
| 2 | **Training and Manuals** | 2026-11-01 → 2026-11-03 (+2d) | 2026-11-15 → 2026-11-14 (-1d) |  |
| 1 | **Training** | 2026-11-04 → 2026-11-03 (-1d) | 2026-11-15 → 2026-11-14 (-1d) |  |
| WAD.S.5470 | Prepare & Submit | 2026-11-04 → 2026-11-03 (-1d) | 2026-11-09 → 2026-11-08 (-1d) | -34.6d → -33.2d |
| WAD.S.6380 | Review & Approve | 2026-11-09 → 2026-11-08 (-1d) | 2026-11-15 → 2026-11-14 (-1d) | -34.6d → -33.2d |
| WAD.S.6400 | Fabrication & Delivery | 2026-11-09 → 2026-11-08 (-1d) | 2026-11-15 → 2026-11-14 (-1d) | -34.6d → -33.2d |
| 2 | **Manuals** | 2026-11-01 → 2026-11-03 (+2d) | 2026-11-11 → 2026-11-14 (+3d) |  |
| WAD.S.5480 | Prepare & Submit | 2026-11-01 → 2026-11-03 (+2d) | 2026-11-05 → 2026-11-08 (+3d) | -31.65d → -33.2d |
| WAD.S.6390 | Review & Approve | 2026-11-05 → 2026-11-08 (+3d) | 2026-11-11 → 2026-11-14 (+3d) | -31.65d → -33.2d |
| 3 | **Demobilization** | 2026-11-02 → 2026-11-04 (+2d) | 2026-11-11 → 2026-11-14 (+3d) |  |
| WAD.S.5850 | Demobilize | 2026-11-02 → 2026-11-04 (+2d) | 2026-11-11 → 2026-11-14 (+3d) | -31.65d → -33.2d |
| 4 | **Snaglist Rectification** | 2026-11-02 → 2026-11-04 (+2d) | 2026-11-15 → 2026-11-14 (-1d) |  |
| WAD.S.5860 | Snaglist Rectification | 2026-11-02 → 2026-11-04 (+2d) | 2026-11-11 → 2026-11-14 (+3d) | -31.65d → -33.2d |
| WAD.S.5870 | Initial Handing Over | 2026-11-05 → 2026-11-04 (-1d) | 2026-11-15 → 2026-11-14 (-1d) | -34.9d → -33.2d |

## Version 8 (data date 2026-11-09, saved 2026-11-10, file WAS1-05-006 -Improvement of Waad Al Shamal Industrial City Fence & Gates-DD9-11-2026.xer)

Last finish 2026-11-26 → 2026-11-24 (-2d). Complete tasks 465 → 492.

Changed:

| ID | Task | Start | Finish | Complete | Total float |
| --- | --- | --- | --- | --- | --- |
| 1 | **Key Milestones** |  | 2026-11-26 → 2026-11-19 (-7d) |  |  |
| 1 | **General Milestones** |  | 2026-11-26 → 2026-11-19 (-7d) |  |  |
| WAD.S.6490 | Project Finish | 2026-11-26 → 2026-11-19 (-7d) | 2026-11-26 → 2026-11-19 (-7d) |  | -44.24d → -39d |
| 2 | **Contractual Milestones** |  | 2026-11-14 → 2026-11-19 (+5d) |  |  |
| WAD.S.3850 | Completion of Fences | 2026-11-03 → 2026-11-10 (+7d) | 2026-11-03 → 2026-11-10 (+7d) |  | -24d → -30d |
| WAD.S.3860 | Completion of GUARD HOUSE 1 | 2026-11-03 → 2026-11-10 (+7d) | 2026-11-03 → 2026-11-10 (+7d) |  | -24d → -30d |
| WAD.S.5070 | Completion of Engineering Works | 2026-11-03 → 2026-11-10 (+7d) | 2026-11-03 → 2026-11-10 (+7d) |  | -24d → -30d |
| WAD.S.6110 | Completion of EXT. WORKS | 2026-11-03 → 2026-11-10 (+7d) | 2026-11-03 → 2026-11-10 (+7d) |  | -24.2d → -30d |
| WAD.S.6250 | Completion of Procurment Works | 2026-11-03 → 2026-11-10 (+7d) | 2026-11-03 → 2026-11-10 (+7d) |  | -24d → -30d |
| WAD.S.7560 | Testing & Commissioning | 2026-11-14 → 2026-11-19 (+5d) | 2026-11-14 → 2026-11-19 (+5d) |  | -33.2d → -39d |
| WAD.S.1430 | structural steel beams, posts and rods for wall fence (FENCES) |  | 2026-11-03 A | 98% → 100% | -25.38d → none |
| WAD.S.1540 | tubes, bolts, nuts and steel plates to strengthened the wall fence and posts (FENCES) |  | 2026-11-03 A | 98% → 100% | -24.26d → none |
| WAD.S.4780 | FIRE PROTECTION SYSTEM (fire extinguisher) (GUARD HOUSE) |  | 2026-11-03 A | 98% → 100% | -24.1d → none |
| WAD.S.4160 | GROUNDING (GUARD HOUSE) |  | 2026-11-03 A | 98% → 100% | -24.06d → none |
| WAD.S.4170 | ROAD WORKS (GUARD HOUSE) |  | 2026-11-03 A | 98% → 100% | -30.12d → none |
| WAD.S.2970 | Manhole depth not exceeding 4.0m (GUARD HOUSE) |  | 2026-11-03 A | 98% → 100% | -24.16d → none |
| WAD.S.3910 | SIDEWALKS AND CURBS (GUARD HOUSE) |  | 2026-11-03 A | 98% → 100% | -33.14d → none |
| WAD.S.1570 | fix galvanized steel chain link gate including all necessary associated (FENCES) |  | 2026-11-03 A | 98% → 100% | -25.6d → none |
| WAD.S.2470 | structural steel members and plates for main sliding gates (FENCES) |  | 2026-11-03 A | 98% → 100% | -25.58d → none |
| WAD.S.2170 | Intrusion Detection system including processor control units items and joints (FENCES) |  | 2026-11-03 A | 98% → 100% | -44.24d → none |
| WAD.S.4510 | folding & sliding mounter combination ladder for building maintenance purpose (GUARD HOUSE) |  | 2026-11-03 A | 98% → 100% | -25.56d → none |
| WAD.S.4570 | card reader IN/OUT (GUARD HOUSE) |  | 2026-11-03 A | 98% → 100% | -26.5d → none |
| WAD.S.4760 | aluminum framed double glazed windows (GUARD HOUSE) |  | 2026-11-03 A | 98% → 100% | -24.24d → none |
| WAD.S.4770 | Roller blind (GUARD HOUSE) |  | 2026-11-03 A | 98% → 100% | -30.24d → none |
| WAD.S.4550 | PANEL SIGNAGE (GUARD HOUSE) |  | 2026-11-03 A | 98% → 100% | -24.98d → none |
| WAD.S.4630 | HOLLOW METAL DOORS AND FRAMES (GUARD HOUSE) |  | 2026-11-04 A | 90% → 100% | -25.4d → none |
| WAD.S.4640 | ALUMINIUM DOORS (GUARD HOUSE) |  | 2026-11-04 A | 90% → 100% | -25.3d → none |
| WAD.S.4690 | VIDEO SURVEILLANCE (GUARD HOUSE) |  | 2026-11-03 A | 98% → 100% | -26.98d → none |
| 8 | **Construction** |  | 2026-11-26 → 2026-11-24 (-2d) |  |  |
| 1 | **FENCES** |  | 2026-11-26 → 2026-11-18 (-8d) |  |  |
| WAD.S.2720 | cast in place reinforced concrete for the sub-structures - Part 2 |  | 2026-11-03 A | 99% → 100% | -24.21d → none |
| WAD.S.3420 | Applying 2 coats of bitumen waterproofing paint on concrete surfaces - Part 2 |  | 2026-11-03 A | 99% → 100% | -24.41d → none |
| 8 | **ELECTRICAL WORKS** |  | 2026-11-24 → 2026-11-17 (-7d) |  |  |
| WAD.S.2640 | Intrusion Detection system including processor control units items and joints - 1st Fix | 2026-11-03 A |  | 0% → 65% | -44.24d → -37.26d |
| WAD.S.2960 | Road crossing ducts for Fiber Optic Cable | 2026-11-14 A | 2026-11-22 → 2026-11-15 (-7d) | 0% → 85% | -40.24d → -35.15d |
| WAD.S.3720 | Fiber Optic Outdoor Cable To Close The Loop | 2026-11-14 A | 2026-11-24 → 2026-11-17 (-7d) | 0% → 65% | -44.24d → -37.26d |
| 4 | **ELECTRICAL GATE BARRIER** |  | 2026-11-26 → 2026-11-18 (-8d) |  |  |
| WAD.S.4830 | Install, Electrical gate barrier complete (cables, conduits, pipes, pulling cables in the conduits) |  | 2026-11-26 → 2026-11-18 (-8d) | 75% → 88% | -44.24d → -37.26d |
| 2 | **GUARD HOUSE 1** | 2026-07-06 → 2026-01-04 (-183d) |  |  |  |
| WAD.S.5540 | install two coats of acrylic paint (suitable for exterior use) on external |  | 2026-11-03 A | 90% → 100% | -24.5d → none |
| 15 | **ELECTRICAL WORKS** | 2026-09-06 → 2026-01-04 (-245d) |  |  |  |
| 2 | **ELECTRICAL WORKS - Final Fix** | 2026-11-01 → 2026-01-04 (-301d) |  |  |  |
| WAD.S.5970 | 12-Port, SMF, Fiber Optic Patch Panels; | 2026-11-04 A → 2026-01-04 A (-304d) | 2026-11-05 → 2026-11-10 (+5d) | 30% → 85% | -27.5d → -30.95d |
| WAD.S.6270 | Access control panel - Final Fix | 2026-11-07 A → 2026-05-03 A (-188d) | 2026-11-04 → 2026-11-10 (+6d) | 50% → 80% | -26.5d → -30.95d |
| WAD.S.6190 | VIDEO SURVEILLANCE | 2026-11-07 A → 2026-07-05 A (-125d) | 2026-11-05 → 2026-11-11 (+6d) | 50% → 80% | -27.5d → -31.4d |
| WAD.S.6290 | VSS System, as specified; | 2026-11-08 A → 2026-07-05 A (-126d) | 2026-11-05 → 2026-11-11 (+6d) | 50% → 80% | -27.5d → -31.4d |
| WAD.S.6180 | COMPUTERS AND RELATED PERIPHERALS | 2026-11-05 A → 2026-08-02 A (-95d) | 2026-11-05 → 2026-11-11 (+6d) | 30% → 65% | -27.5d → -31.4d |
| WAD.S.6200 | CCTV storage system, as specified; | 2026-11-07 A → 2026-08-02 A (-97d) | 2026-11-05 → 2026-11-11 (+6d) | 50% → 80% | -27.5d → -31.4d |
| WAD.S.6280 | Central (Headend) System Components; | 2026-11-08 A → 2026-08-02 A (-98d) | 2026-11-05 → 2026-11-11 (+6d) | 50% → 80% | -27.5d → -31.4d |
| WAD.S.6300 | CCTV cameras - Final Fix | 2026-11-08 A → 2026-08-02 A (-98d) | 2026-11-05 → 2026-11-11 (+6d) | 50% → 80% | -27.5d → -31.4d |
| WAD.S.6170 | 12-Port CAT6A UTP fully loaded patch panel | 2026-11-05 A → 2026-08-09 A (-88d) | 2026-11-04 → 2026-11-10 (+6d) | 50% → 80% | -26.5d → -30.95d |
| WAD.S.6160 | card reader IN/OUT - Final Fix | 2026-11-05 A → 2026-08-10 A (-87d) | 2026-11-04 → 2026-11-10 (+6d) | 50% → 80% | -26.5d → -30.95d |
| WAD.S.6310 | ELECTRICAL GATE BARRIER | 2026-11-08 A → 2026-09-14 A (-55d) | 2026-11-05 → 2026-11-11 (+6d) | 50% → 65% | -27.5d → -31.4d |
| WAD.S.6420 | 20A , ATS ( Automatic transfer switch) for UPS |  | 2026-11-05 → 2026-11-09 A (+4d) | 30% → 100% | -27.5d → none |
| WAD.S.5900 | Install Aluminum Door |  | 2026-11-03 → 2026-11-04 A (+1d) | 80% → 100% | -25.6d → none |
| 11 | **FURNISHINGS** | 2026-11-10 → 2026-08-09 (-93d) |  |  |  |
| WAD.S.6470 | Roller blind | 2026-11-10 A → 2026-08-09 A (-93d) | 2026-11-07 → 2026-11-11 (+4d) | 30% → 65% | -27.5d → -31.4d |
| 3 | **GUARD HOUSE 2** |  | 2026-11-10 → 2026-11-11 (+1d) |  |  |
| WAD.S.2530 | install two coats of acrylic paint (suitable for exterior use) on external |  | 2026-11-03 A | 90% → 100% | -24.2d → none |
| 15 | **ELECTRICAL WORKS** | 2026-09-20 → 2026-08-02 (-49d) | 2026-11-10 → 2026-11-11 (+1d) |  |  |
| 2 | **ELECTRICAL WORKS - Final Fix** | 2026-09-20 → 2026-08-02 (-49d) | 2026-11-10 → 2026-11-11 (+1d) |  |  |
| WAD.S.5680 | COMPUTERS AND RELATED PERIPHERALS | 2026-11-04 A → 2026-08-02 A (-94d) | 2026-11-05 → 2026-11-11 (+6d) | 30% → 65% | -32.1d → -36.05d |
| WAD.S.5660 | card reader IN/OUT - Final Fix | 2026-11-04 A → 2026-08-09 A (-87d) | 2026-11-03 → 2026-11-10 (+7d) | 80% → 88% | -30.6d → -35.36d |
| WAD.S.5670 | 12-Port CAT6A UTP fully loaded patch panel | 2026-11-04 A → 2026-09-06 A (-59d) | 2026-11-03 → 2026-11-10 (+7d) | 80% → 88% | -30.6d → -35.36d |
| WAD.S.5720 | ELECTRICAL GATE BARRIER |  | 2026-11-05 → 2026-11-11 (+6d) | 50% → 65% | -32.1d → -36.05d |
| WAD.S.5170 | 12-Port, SMF, Fiber Optic Patch Panels; |  | 2026-11-03 → 2026-11-10 (+7d) | 80% → 85% | -30.8d → -35.6d |
| WAD.S.5180 | VIDEO SURVEILLANCE |  | 2026-11-05 → 2026-11-11 (+6d) | 80% → 85% | -32.1d → -36.05d |
| WAD.S.5190 | CCTV storage system, as specified; |  | 2026-11-05 → 2026-11-11 (+6d) | 80% → 85% | -32.1d → -36.05d |
| WAD.S.5690 | Central (Headend) System Components; |  | 2026-11-05 → 2026-11-11 (+6d) | 80% → 85% | -32.1d → -36.05d |
| WAD.S.5700 | VSS System, as specified; |  | 2026-11-05 → 2026-11-11 (+6d) | 80% → 85% | -32.1d → -36.05d |

| ID | Task | Start | Finish | Complete | Total float |
| --- | --- | --- | --- | --- | --- |
| WAD.S.5710 | CCTV cameras - Final Fix |  | 2026-11-05 → 2026-11-11 (+6d) | 80% → 85% | -32.1d → -36.05d |
| WAD.S.2360 | Install Aluminum Door |  | 2026-11-03 A | 80% → 100% | -30.6d → none |
| 11 | **FURNISHINGS** | 2026-11-07 → 2026-08-17 (-82d) | 2026-11-08 → 2026-11-11 (+3d) |  |  |
| WAD.S.6230 | Roller blind | 2026-11-07 A → 2026-08-17 A (-82d) | 2026-11-05 → 2026-11-11 (+6d) | 30% → 55% | -32.1d → -36.05d |
| 5 | **GUARD HOUSE 3** |  | 2026-11-10 → 2026-11-11 (+1d) |  |  |
| WAD.S.6790 | install two coats of acrylic paint (suitable for exterior use) on external |  | 2026-11-03 A | 90% → 100% | -33.2d → none |
| WAD.S.7180 | ELECTRICAL GATE BARRIER |  | 2026-11-05 → 2026-11-10 (+5d) |  | -32.1d → -35.8d |
| WAD.S.7070 | card reader IN/OUT - Final Fix | 2026-11-04 A → 2026-07-12 A (-115d) | 2026-11-03 → 2026-11-10 (+7d) | 80% → 95% | -30.6d → -35.15d |
| WAD.S.7110 | COMPUTERS AND RELATED PERIPHERALS | 2026-11-04 A → 2026-08-02 A (-94d) | 2026-11-05 → 2026-11-10 (+5d) | 30% → 75% | -32.1d → -35.75d |
| WAD.S.7120 | VIDEO SURVEILLANCE | 2026-11-03 A → 2026-08-02 A (-93d) | 2026-11-05 → 2026-11-10 (+5d) | 80% → 95% | -32.1d → -35.75d |
| WAD.S.7100 | 12-Port, SMF, Fiber Optic Patch Panels; | 2026-11-03 A → 2026-08-03 A (-92d) | 2026-11-03 → 2026-11-10 (+7d) | 80% → 95% | -30.8d → -35.6d |
| WAD.S.7150 | CCTV storage system, as specified; |  | 2026-11-05 → 2026-11-10 (+5d) |  | -32.1d → -35.8d |
| WAD.S.7090 | 12-Port CAT6A UTP fully loaded patch panel |  | 2026-11-03 → 2026-11-10 (+7d) |  | -30.6d → -35.6d |
| WAD.S.7130 | Central (Headend) System Components; |  | 2026-11-05 → 2026-11-10 (+5d) |  | -32.1d → -35.75d |
| WAD.S.7140 | VSS System, as specified; |  | 2026-11-05 → 2026-11-10 (+5d) |  | -32.1d → -35.75d |
| WAD.S.7160 | CCTV cameras - Final Fix |  | 2026-11-05 → 2026-11-10 (+5d) |  | -32.1d → -35.8d |
| WAD.S.6700 | Install Aluminum Door |  | 2026-11-03 A | 80% → 100% | -30.6d → none |
| 11 | **FURNISHINGS** | 2026-11-07 → 2026-09-07 (-61d) | 2026-11-08 → 2026-11-11 (+3d) |  |  |
| WAD.S.6880 | Roller blind | 2026-11-07 A → 2026-09-07 A (-61d) | 2026-11-05 → 2026-11-11 (+6d) | 30% → 50% | -32.1d → -35.8d |
| 4 | **Testing & Commissioning** |  | 2026-11-14 → 2026-11-19 (+5d) |  |  |
| WAD.S.5440 | Testing & Commissioning - Electrical Systems | 2026-11-03 A | 2026-11-14 → 2026-11-19 (+5d) | 0% → 85% | -33.2d → -39d |
| WAD.S.5490 | Testing & Commissioning - Mechanical Systems | 2026-11-03 A | 2026-11-14 → 2026-11-19 (+5d) | 0% → 85% | -33.2d → -39d |
| 1 | **Engineering** |  | 2026-11-14 → 2026-11-19 (+5d) |  |  |
| 1 | **As-Built Drawings** |  | 2026-11-10 → 2026-11-16 (+6d) |  |  |
| WAD.S.5430 | Prepare & Submit | 2026-11-03 A | 2026-11-08 → 2026-11-14 (+6d) | 0% → 85% | -33.2d → -39d |
| WAD.S.6260 | Review & Approve | 2026-11-03 A | 2026-11-10 → 2026-11-16 (+6d) | 0% → 85% | -30.2d → -36d |
| 2 | **Operational Spares** |  | 2026-11-14 → 2026-11-19 (+5d) |  |  |
| WAD.S.5450 | Prepare & Submit | 2026-11-03 A | 2026-11-08 → 2026-11-14 (+6d) | 0% → 85% | -33.2d → -39d |
| WAD.S.6350 | Inspection | 2026-11-08 A | 2026-11-14 → 2026-11-19 (+5d) | 0% → 85% | -33.2d → -39d |
| WAD.S.6370 | Acceptance | 2026-11-08 A | 2026-11-14 → 2026-11-19 (+5d) | 0% → 85% | -33.2d → -39d |
| 3 | **Warranties and Guarantees** |  | 2026-11-14 → 2026-11-19 (+5d) |  |  |
| WAD.S.5460 | Prepare & Submit | 2026-11-03 A | 2026-11-08 → 2026-11-14 (+6d) | 0% → 85% | -33.2d → -39d |
| WAD.S.6360 | Review & Approve | 2026-11-08 A | 2026-11-14 → 2026-11-19 (+5d) | 0% → 85% | -33.2d → -39d |
| 2 | **Training and Manuals** |  | 2026-11-14 → 2026-11-19 (+5d) |  |  |
| 1 | **Training** |  | 2026-11-14 → 2026-11-19 (+5d) |  |  |
| WAD.S.5470 | Prepare & Submit | 2026-11-03 A | 2026-11-08 → 2026-11-14 (+6d) | 0% → 85% | -33.2d → -39d |
| WAD.S.6380 | Review & Approve | 2026-11-08 A | 2026-11-14 → 2026-11-19 (+5d) | 0% → 75% | -33.2d → -39d |
| WAD.S.6400 | Fabrication & Delivery | 2026-11-08 A | 2026-11-14 → 2026-11-19 (+5d) | 0% → 75% | -33.2d → -39d |
| 2 | **Manuals** |  | 2026-11-14 → 2026-11-19 (+5d) |  |  |
| WAD.S.5480 | Prepare & Submit | 2026-11-03 A | 2026-11-08 → 2026-11-14 (+6d) | 0% → 55% | -33.2d → -39d |
| WAD.S.6390 | Review & Approve | 2026-11-08 A | 2026-11-14 → 2026-11-19 (+5d) | 0% → 55% | -33.2d → -39d |
| 3 | **Demobilization** |  | 2026-11-14 → 2026-11-19 (+5d) |  |  |
| WAD.S.5850 | Demobilize | 2026-11-04 A | 2026-11-14 → 2026-11-19 (+5d) | 0% → 55% | -33.2d → -39d |
| 4 | **Snaglist Rectification** |  | 2026-11-14 → 2026-11-19 (+5d) |  |  |
| WAD.S.5860 | Snaglist Rectification | 2026-11-04 A | 2026-11-14 → 2026-11-19 (+5d) | 0% → 55% | -33.2d → -39d |
| WAD.S.5870 | Initial Handing Over | 2026-11-04 A | 2026-11-14 → 2026-11-19 (+5d) | 0% → 55% | -33.2d → -39d |

## Version 9 (data date 2026-11-16, saved 2026-11-17, file WAS1-05-006 -Improvement of Waad Al Shamal Industrial City Fence & Gates-DD16-11-2026.xer)

Last finish 2026-11-24 → 2026-11-26 (+2d). Complete tasks 492 → 517.

Changed:

| ID | Task | Start | Finish | Complete | Total float |
| --- | --- | --- | --- | --- | --- |
| 1 | **Key Milestones** |  | 2026-11-19 → 2026-11-26 (+7d) |  |  |
| 1 | **General Milestones** |  | 2026-11-19 → 2026-11-26 (+7d) |  |  |
| WAD.S.6490 | Project Finish | 2026-11-19 → 2026-11-26 (+7d) | 2026-11-19 → 2026-11-26 (+7d) |  | -39d → -45d |
| 2 | **Contractual Milestones** |  | 2026-11-19 → 2026-11-26 (+7d) |  |  |
| WAD.S.3850 | Completion of Fences | 2026-11-10 → 2026-11-17 (+7d) | 2026-11-10 → 2026-11-17 (+7d) |  | -30d → -36d |
| WAD.S.3860 | Completion of GUARD HOUSE 1 | 2026-11-10 → 2026-11-17 (+7d) | 2026-11-10 → 2026-11-17 (+7d) |  | -30d → -36d |
| WAD.S.5070 | Completion of Engineering Works | 2026-11-10 → 2026-11-17 (+7d) | 2026-11-10 → 2026-11-17 (+7d) |  | -30d → -36d |
| WAD.S.6110 | Completion of EXT. WORKS | 2026-11-10 → 2026-11-17 (+7d) | 2026-11-10 → 2026-11-17 (+7d) |  | -30d → -36d |
| WAD.S.6250 | Completion of Procurment Works | 2026-11-10 → 2026-11-17 (+7d) | 2026-11-10 → 2026-11-17 (+7d) |  | -30d → -36d |
| WAD.S.7560 | Testing & Commissioning | 2026-11-19 → 2026-11-26 (+7d) | 2026-11-19 → 2026-11-26 (+7d) |  | -39d → -45d |
| 8 | **Construction** |  | 2026-11-24 → 2026-11-25 (+1d) |  |  |
| 1 | **FENCES** |  | 2026-11-18 → 2026-11-25 (+7d) |  |  |
| 8 | **ELECTRICAL WORKS** |  | 2026-11-17 → 2026-11-24 (+7d) |  |  |
| WAD.S.2640 | Intrusion Detection system including processor control units items and joints - 1st Fix |  | 2026-11-14 → 2026-11-21 (+7d) |  | -37.26d → -42.3d |
| WAD.S.2960 | Road crossing ducts for Fiber Optic Cable |  | 2026-11-15 → 2026-11-22 A (+7d) | 85% → 100% | -35.15d → none |
| WAD.S.3720 | Fiber Optic Outdoor Cable To Close The Loop |  | 2026-11-17 → 2026-11-24 (+7d) |  | -37.26d → -42.3d |
| 4 | **ELECTRICAL GATE BARRIER** |  | 2026-11-18 → 2026-11-25 (+7d) |  |  |
| WAD.S.4830 | Install, Electrical gate barrier complete (cables, conduits, pipes, pulling cables in the conduits) |  | 2026-11-18 → 2026-11-25 A (+7d) | 88% → 100% | -37.26d → none |
| 2 | **GUARD HOUSE 1** |  | 2026-11-11 → 2026-11-17 (+6d) |  |  |
| 15 | **ELECTRICAL WORKS** |  | 2026-11-11 → 2026-11-17 (+6d) |  |  |
| 2 | **ELECTRICAL WORKS - Final Fix** |  | 2026-11-11 → 2026-11-17 (+6d) |  |  |
| WAD.S.5970 | 12-Port, SMF, Fiber Optic Patch Panels; |  | 2026-11-10 → 2026-11-17 (+7d) | 85% → 95% | -30.95d → -36.6d |
| WAD.S.6270 | Access control panel - Final Fix |  | 2026-11-10 → 2026-11-17 (+7d) | 80% → 95% | -30.95d → -36.24d |
| WAD.S.6190 | VIDEO SURVEILLANCE |  | 2026-11-11 → 2026-11-17 (+6d) | 80% → 95% | -31.4d → -36.6d |
| WAD.S.6290 | VSS System, as specified; |  | 2026-11-11 → 2026-11-17 (+6d) | 80% → 95% | -31.4d → -36.6d |
| WAD.S.6180 | COMPUTERS AND RELATED PERIPHERALS |  | 2026-11-11 → 2026-11-17 (+6d) | 65% → 95% | -31.4d → -36.6d |
| WAD.S.6200 | CCTV storage system, as specified; |  | 2026-11-11 → 2026-11-17 (+6d) | 80% → 95% | -31.4d → -36.6d |
| WAD.S.6280 | Central (Headend) System Components; |  | 2026-11-11 → 2026-11-17 (+6d) | 80% → 95% | -31.4d → -36.6d |
| WAD.S.6300 | CCTV cameras - Final Fix |  | 2026-11-11 → 2026-11-17 (+6d) | 80% → 95% | -31.4d → -36.6d |
| WAD.S.6170 | 12-Port CAT6A UTP fully loaded patch panel |  | 2026-11-10 → 2026-11-17 (+7d) | 80% → 95% | -30.95d → -36.24d |
| WAD.S.6160 | card reader IN/OUT - Final Fix |  | 2026-11-10 → 2026-11-17 (+7d) | 80% → 95% | -30.95d → -36.15d |
| WAD.S.6310 | ELECTRICAL GATE BARRIER |  | 2026-11-11 → 2026-11-10 A (-1d) | 65% → 100% | -31.4d → none |
| WAD.S.6470 | Roller blind |  | 2026-11-11 A | 65% → 100% | -31.4d → none |
| 3 | **GUARD HOUSE 2** |  | 2026-11-11 → 2026-11-18 (+7d) |  |  |
| 15 | **ELECTRICAL WORKS** |  | 2026-11-11 → 2026-11-18 (+7d) |  |  |
| 2 | **ELECTRICAL WORKS - Final Fix** |  | 2026-11-11 → 2026-11-18 (+7d) |  |  |
| WAD.S.5680 | COMPUTERS AND RELATED PERIPHERALS |  | 2026-11-11 → 2026-11-17 (+6d) | 65% → 95% | -36.05d → -41.3d |
| WAD.S.5660 | card reader IN/OUT - Final Fix |  | 2026-11-10 → 2026-11-17 (+7d) | 88% → 95% | -35.36d → -41.3d |
| WAD.S.5670 | 12-Port CAT6A UTP fully loaded patch panel |  | 2026-11-10 A | 88% → 100% | -35.36d → none |
| WAD.S.5720 | ELECTRICAL GATE BARRIER |  | 2026-11-11 → 2026-11-18 A (+7d) | 65% → 100% | -36.05d → none |
| WAD.S.5170 | 12-Port, SMF, Fiber Optic Patch Panels; |  | 2026-11-10 A | 85% → 100% | -35.6d → none |
| WAD.S.5180 | VIDEO SURVEILLANCE |  | 2026-11-11 A | 85% → 100% | -36.05d → none |
| WAD.S.5190 | CCTV storage system, as specified; |  | 2026-11-11 A | 85% → 100% | -36.05d → none |
| WAD.S.5690 | Central (Headend) System Components; |  | 2026-11-11 → 2026-11-10 A (-1d) | 85% → 100% | -36.05d → none |
| WAD.S.5700 | VSS System, as specified; |  | 2026-11-11 → 2026-11-10 A (-1d) | 85% → 100% | -36.05d → none |
| WAD.S.5710 | CCTV cameras - Final Fix |  | 2026-11-11 A | 85% → 100% | -36.05d → none |
| WAD.S.6230 | Roller blind |  | 2026-11-11 A | 55% → 100% | -36.05d → none |
| 5 | **GUARD HOUSE 3** |  | 2026-11-11 → 2026-11-17 (+6d) |  |  |
| 15 | **ELECTRICAL WORKS** |  | 2026-11-10 → 2026-11-17 (+7d) |  |  |
| 2 | **ELECTRICAL WORKS - Final Fix** |  | 2026-11-10 → 2026-11-17 (+7d) |  |  |
| WAD.S.7180 | ELECTRICAL GATE BARRIER |  | 2026-11-10 → 2026-11-17 A (+7d) | 80% → 100% | -35.8d → none |
| WAD.S.7070 | card reader IN/OUT - Final Fix |  | 2026-11-10 → 2026-11-17 (+7d) |  | -35.15d → -41.15d |
| WAD.S.7110 | COMPUTERS AND RELATED PERIPHERALS |  | 2026-11-10 → 2026-11-17 (+7d) | 75% → 95% | -35.75d → -41.3d |
| WAD.S.7120 | VIDEO SURVEILLANCE |  | 2026-11-10 A | 95% → 100% | -35.75d → none |
| WAD.S.7100 | 12-Port, SMF, Fiber Optic Patch Panels; |  | 2026-11-10 A | 95% → 100% | -35.6d → none |
| WAD.S.7150 | CCTV storage system, as specified; |  | 2026-11-10 A | 80% → 100% | -35.8d → none |
| WAD.S.7090 | 12-Port CAT6A UTP fully loaded patch panel |  | 2026-11-10 A | 80% → 100% | -35.6d → none |
| WAD.S.7130 | Central (Headend) System Components; |  | 2026-11-10 A | 80% → 100% | -35.75d → none |
| WAD.S.7140 | VSS System, as specified; |  | 2026-11-10 A | 80% → 100% | -35.75d → none |
| WAD.S.7160 | CCTV cameras - Final Fix |  | 2026-11-10 A | 80% → 100% | -35.8d → none |
| WAD.S.6880 | Roller blind |  | 2026-11-11 A | 50% → 100% | -35.8d → none |
| 4 | **Testing & Commissioning** |  | 2026-11-19 → 2026-11-26 (+7d) |  |  |
| WAD.S.5440 | Testing & Commissioning - Electrical Systems |  | 2026-11-19 → 2026-11-26 (+7d) | 85% → 90% | -39d → -45d |
| WAD.S.5490 | Testing & Commissioning - Mechanical Systems |  | 2026-11-19 → 2026-11-26 (+7d) | 85% → 90% | -39d → -45d |
| 1 | **Engineering** |  | 2026-11-19 → 2026-11-26 (+7d) |  |  |
| 1 | **As-Built Drawings** |  | 2026-11-16 → 2026-11-23 (+7d) |  |  |
| WAD.S.5430 | Prepare & Submit |  | 2026-11-14 → 2026-11-21 (+7d) | 85% → 90% | -39d → -45d |
| WAD.S.6260 | Review & Approve |  | 2026-11-16 → 2026-11-23 (+7d) |  | -36d → -42d |
| 2 | **Operational Spares** |  | 2026-11-19 → 2026-11-26 (+7d) |  |  |
| WAD.S.5450 | Prepare & Submit |  | 2026-11-14 → 2026-11-21 A (+7d) | 85% → 100% | -39d → none |

| ID | Task | Finish | Complete | Total float |
| --- | --- | --- | --- | --- |
| WAD.S.6350 | Inspection | 2026-11-19 → 2026-11-26 A (+7d) | 85% → 100% | -39d → none |
| WAD.S.6370 | Acceptance | 2026-11-19 → 2026-11-26 A (+7d) | 85% → 100% | -39d → none |
| 3 | **Warranties and Guarantees** | 2026-11-19 → 2026-11-26 (+7d) |  |  |
| WAD.S.5460 | Prepare & Submit | 2026-11-14 → 2026-11-21 (+7d) |  | -39d → -45d |
| WAD.S.6360 | Review & Approve | 2026-11-19 → 2026-11-26 (+7d) |  | -39d → -45d |
| 2 | **Training and Manuals** | 2026-11-19 → 2026-11-26 (+7d) |  |  |
| 1 | **Training** | 2026-11-19 → 2026-11-26 (+7d) |  |  |
| WAD.S.5470 | Prepare & Submit | 2026-11-14 → 2026-11-21 (+7d) |  | -39d → -45d |
| WAD.S.6380 | Review & Approve | 2026-11-19 → 2026-11-26 (+7d) |  | -39d → -45d |
| WAD.S.6400 | Fabrication & Delivery | 2026-11-19 → 2026-11-26 (+7d) |  | -39d → -45d |
| 2 | **Manuals** | 2026-11-19 → 2026-11-26 (+7d) |  |  |
| WAD.S.5480 | Prepare & Submit | 2026-11-14 → 2026-11-21 (+7d) |  | -39d → -45d |
| WAD.S.6390 | Review & Approve | 2026-11-19 → 2026-11-26 (+7d) |  | -39d → -45d |
| 3 | **Demobilization** | 2026-11-19 → 2026-11-26 (+7d) |  |  |
| WAD.S.5850 | Demobilize | 2026-11-19 → 2026-11-26 (+7d) |  | -39d → -45d |
| 4 | **Snaglist Rectification** | 2026-11-19 → 2026-11-26 (+7d) |  |  |
| WAD.S.5860 | Snaglist Rectification | 2026-11-19 → 2026-11-26 (+7d) |  | -39d → -45d |
| WAD.S.5870 | Initial Handing Over | 2026-11-19 → 2026-11-26 (+7d) |  | -39d → -45d |
